Task Code,Task Description,Status,WBS,Building,Area,Level,Room,Phase,Subcontractor,Trade,Responsible Person,Bid Package,Planned Start,Planned Finish,Actual Start,Actual Finish,Early Start,Early Finish,Late Start,Late Finish,Remaining Duration (hrs),Planned Duration (hrs),Physical % Complete
MS.ALL.TU.1000,OWNER - TEMPORARY WATER FOR FAB & SUP,Complete,CONTRACTOR MILESTONES,Key Milestones,A5 - Area 2 (Gridlines 6-3),Milestones,,CONSTRUCTION,,Key Milestones,PROJECT MILESTONES,,2024-02-05 07:00,2024-02-05 07:00,2022-07-30 07:00,2022-07-30 07:00,2025-11-20 17:00,2025-11-20 17:00,2025-06-13 08:00,2025-06-13 08:00,0,0,100
CN.SEB1.5030,DS/AD STEEL SPRAY FIREPROOFING SFRM - SEB1- GL 19-22 - C-E L1 CEILING,Complete,CONSTRUCTION,,SUEN-1 - 19-22,DS/AD,,CONSTRUCTION,,Fireproofing,,,2023-12-11 08:00,2023-12-17 14:00,2023-12-11 08:00,2023-12-13 16:00,2025-11-20 17:00,2025-11-20 17:00,2025-11-19 07:00,2025-11-19 07:00,0,56,100
CN.SWA1.1430,IMPACT SCAFFOLDING PLATFORM APPROVAL AND INSTALLATION,Complete,CONSTRUCTION,,SUWS-1 - 18-15,DS/AD,,CONSTRUCTION,,Fireproofing,,,2024-01-22 08:00,2024-02-05 12:00,2024-01-01 08:00,2024-01-10 16:00,2025-11-20 17:00,2025-11-20 17:00,2025-12-05 17:00,2025-12-05 17:00,0,144,100
CN.SEA4.6230,DSAD PENETRATION SUPPORT STEEL FRAMING - SEA4 - GL 9-6 - C-E - L2,Complete,CONSTRUCTION,,SUES-4 - 9-6,DS/AD,,CONSTRUCTION,,,,,2023-11-20 08:00,2023-11-28 08:00,2023-11-20 08:00,2023-11-24 16:00,2025-11-20 17:00,2025-11-20 17:00,2025-06-13 08:00,2025-06-13 08:00,0,40,100
CN.SEA3.6200,DSAD PENETRATION SUPPORT STEEL FRAMING - SEA3 - GL 9-13 - L2 C-E,Complete,CONSTRUCTION,,SUES-3 - 13-9,DS/AD,,CONSTRUCTION,,,,,2023-11-27 08:00,2023-12-02 08:00,2023-11-27 08:00,2023-12-01 16:00,2025-11-20 17:00,2025-11-20 17:00,2025-06-13 08:00,2025-06-13 08:00,0,40,100
CN.SEA5.6280,DSAD PENETRATION SUPPORT STEEL FRAMING - SEA2 - GL 16-13 - L2- C-E,Complete,CONSTRUCTION,,SUES-2 - 16-13,DS/AD,,CONSTRUCTION,,,,,2023-12-04 08:00,2023-12-09 08:00,2023-12-04 08:00,2023-12-08 16:00,2025-11-20 17:00,2025-11-20 17:00,2025-06-13 08:00,2025-06-13 08:00,0,40,100
CN.SEA1.6240,DSAD PENETRATION SUPPORT STEEL FRAMING - SEA1 - GL 19-16 - L2 C-E,Complete,CONSTRUCTION,,SUES-1 - 19-16,DS/AD,,CONSTRUCTION,,,,,2023-12-18 07:00,2023-12-21 17:00,2023-12-18 07:00,2023-12-21 17:00,2025-11-20 17:00,2025-11-20 17:00,2025-06-13 08:00,2025-06-13 08:00,0,40,100
FIZ.EAST.1221,IMPACT - STARCON BASE PLATE WELDING & HORZ BEAM INSTALLS,Complete,CONSTRUCTION,,FIZ3 (East Inner) GL G-E,L4 - SUP Roof - FAB Roof,,CONSTRUCTION,,Cast-in Place Concrete - Baker Concrete,,,2024-01-22 08:00,2024-01-27 14:00,2024-01-01 08:00,2024-03-07 00:00,2025-11-20 17:00,2025-11-20 17:00,2025-12-05 17:00,2025-12-05 17:00,0,56,100
CN.SEA5.1590,DSAD PENETRATION SUPPORT STEEL FRAMING - SEA5 - GL 6-1 - C-E - L3,Complete,CONSTRUCTION,,SUES-5 - 6-1 - FIZ - GL A -E,DS/AD,,CONSTRUCTION,,,,,2023-12-05 07:00,2023-12-09 17:00,2023-12-05 07:00,2023-12-10 10:00,2025-11-20 17:00,2025-11-20 17:00,2025-10-16 07:00,2025-10-16 07:00,0,40,100
CN.SEA5.1600,DSAD PENETRATION SUPPORT STEEL FRAMING - SEA5 - GL 6-1 - C-E - L4,Complete,CONSTRUCTION,,SUES-5 - 6-1 - FIZ - GL A -E,DS/AD,,CONSTRUCTION,,Steel Erection,,,2024-04-23 07:00,2024-04-29 17:00,2024-04-11 07:00,2024-04-17 17:00,2025-11-20 17:00,2025-11-20 17:00,2025-10-16 07:00,2025-10-16 07:00,0,50,100
CN.SEA5.1610,DSAD PENETRATION SUPPORT STEEL FRAMING - SEA5 - GL 6-1 - C-E - L2,Complete,CONSTRUCTION,,SUES-5 - 6-1 - FIZ - GL A -E,DS/AD,,CONSTRUCTION,,,,,2024-02-05 07:00,2024-02-09 17:00,2023-12-19 07:00,2023-12-22 17:00,2025-11-20 17:00,2025-11-20 17:00,2025-10-16 07:00,2025-10-16 07:00,0,40,100
CN.SEB5.1520,DSAD PENETRATION SUPPORT STEEL FRAMING - SEB5 - GL 31-33 - C-E - L3,Complete,CONSTRUCTION,,SUEN-5 - 31-33,DS/AD,,CONSTRUCTION,,,,,2024-06-25 07:00,2024-07-02 17:00,2024-04-08 00:00,2024-04-15 00:00,2025-11-20 17:00,2025-11-20 17:00,2025-10-16 07:00,2025-10-16 07:00,0,50,100
CN.SEB5.1530,DSAD PENETRATION SUPPORT STEEL FRAMING - SEB5 - GL 31-33 - C-E - L2,Complete,CONSTRUCTION,,SUEN-5 - 31-33,DS/AD,,CONSTRUCTION,,,,,2024-03-09 11:00,2024-03-17 11:00,2024-03-09 11:00,2024-03-15 14:00,2025-11-20 17:00,2025-11-20 17:00,2025-10-16 07:00,2025-10-16 07:00,0,40,100
CN.SEB5.1540,DSAD PENETRATION SUPPORT STEEL FRAMING - SEB5 - GL 31-33 - C-E - L4,Complete,CONSTRUCTION,,SUEN-5 - 31-33,DS/AD,,CONSTRUCTION,PERRY & PERRY,Steel Erection,,,2024-07-29 07:00,2024-08-06 17:00,2024-07-27 07:00,2024-08-03 17:00,2025-11-20 17:00,2025-11-20 17:00,2025-10-16 07:00,2025-10-16 07:00,0,70,100
CN.SEB4.1550,DSAD PENETRATION SUPPORT STEEL FRAMING - SEB4 - GL 28-31 - C-E - L3,Complete,CONSTRUCTION,,SUEN-4 - 28-31,DS/AD,,CONSTRUCTION,,Steel Erection,,,2024-07-02 07:00,2024-07-11 17:00,2024-04-08 07:00,2024-04-15 17:00,2025-11-20 17:00,2025-11-20 17:00,2025-10-16 07:00,2025-10-16 07:00,0,50,100
CN.SEB4.1560,DSAD PENETRATION SUPPORT STEEL FRAMING - SEB4 - GL 28-31 - C-E - L2,Complete,CONSTRUCTION,,SUEN-4 - 28-31,DS/AD,,CONSTRUCTION,PERRY & PERRY,,,,2024-07-29 07:00,2024-08-06 17:00,2024-07-27 07:00,2024-08-03 17:00,2025-11-20 17:00,2025-11-20 17:00,2025-10-16 07:00,2025-10-16 07:00,0,70,100
CN.SEB4.1570,DSAD PENETRATION SUPPORT STEEL FRAMING - SEB4 - GL 28-31 - C-E - L4 - TURNED OVER TO SECAI,Complete,CONSTRUCTION,,SUEN-4 - 28-31,DS/AD,,CONSTRUCTION,PERRY & PERRY,Steel Erection,,,2024-11-12 07:00,2024-11-19 17:00,2024-07-29 07:00,2024-08-09 10:00,2025-11-20 17:00,2025-11-20 17:00,2025-10-16 07:00,2025-10-16 07:00,0,50,100
CN.SEB3.1580,DSAD PENETRATION SUPPORT STEEL FRAMING - SEB3 - GL 25-28 - C-E - L3,Complete,CONSTRUCTION,,SUEN-3 - 25-28,DS/AD,,CONSTRUCTION,,TOPPING,,,2024-06-25 07:00,2024-07-02 17:00,2024-04-08 07:00,2024-04-15 17:00,2025-11-20 17:00,2025-11-20 17:00,2025-10-16 07:00,2025-10-16 07:00,0,50,100
CN.SEB3.1590,DSAD PENETRATION SUPPORT STEEL FRAMING - SEB3 - GL 25-28 - C-E - L2,Complete,CONSTRUCTION,,SUEN-3 - 25-28,DS/AD,,CONSTRUCTION,,,,,2024-03-09 08:00,2024-03-17 08:00,2024-02-20 08:00,2024-02-29 11:00,2025-11-20 17:00,2025-11-20 17:00,2025-10-16 07:00,2025-10-16 07:00,0,40,100
CN.SEB3.1600,DSAD & PENETRATION SUPPORT STEEL FRAMING - SEB3 - GL 25-28 - C-E - L4,Complete,CONSTRUCTION,,SUEN-3 - 25-28,DS/AD,,CONSTRUCTION,PERRY & PERRY,Steel Fabricator - W&W,,,2024-07-29 07:00,2024-08-06 17:00,2024-07-27 07:00,2024-08-03 17:00,2025-11-20 17:00,2025-11-20 17:00,2025-10-16 07:00,2025-10-16 07:00,0,70,100
CN.SEB2.1470,DSAD PENETRATION SUPPORT STEEL FRAMING - SEB2 - GL 22-25 - C-E - L3,Complete,CONSTRUCTION,,SUEN-2 - 22-25,DS/AD,,CONSTRUCTION,PERRY & PERRY,,,,2024-07-29 07:00,2024-08-06 17:00,2024-07-27 07:00,2024-08-03 17:00,2025-11-20 17:00,2025-11-20 17:00,2025-10-16 07:00,2025-10-16 07:00,0,70,100
CN.SEB2.1480,DSAD PENETRATION SUPPORT STEEL FRAMING - SEB2 - GL 22-25 - C-E - L2,Complete,CONSTRUCTION,,SUEN-2 - 22-25,DS/AD,,CONSTRUCTION,PERRY & PERRY,,,,2024-05-31 07:00,2024-06-07 17:00,2024-05-06 07:00,2024-06-03 17:00,2025-11-20 17:00,2025-11-20 17:00,2025-10-16 07:00,2025-10-16 07:00,0,50,100
CN.SEB2.1490,DSAD & PENETRATION SUPPORT STEEL FRAMING - SEB2 - GL 22-25 - C-E - L4,Complete,CONSTRUCTION,,SUEN-2 - 22-25,DS/AD,,CONSTRUCTION,,,,,2024-01-22 07:00,2024-01-26 15:00,2024-01-12 10:00,2024-01-14 16:00,2025-11-20 17:00,2025-11-20 17:00,2025-06-13 08:00,2025-06-13 08:00,0,48,100
CN.SEB1.1490,DSAD PENETRATION SUPPORT STEEL FRAMING - SEB1 - GL 19-22 - C-E - L3,Complete,CONSTRUCTION,,SUEN-1 - 19-22,DS/AD,,CONSTRUCTION,PERRY & PERRY,Steel Erector - W&W,,,2024-07-29 07:00,2024-08-06 17:00,2024-07-27 07:00,2024-08-03 17:00,2025-11-20 17:00,2025-11-20 17:00,2025-10-16 07:00,2025-10-16 07:00,0,70,100
CN.SEB1.5020,DSAD PENETRATION SUPPORT STEEL FRAMING - SEB1 - GL 19-22 - C-E - L2,Complete,CONSTRUCTION,,SUEN-1 - 19-22,DS/AD,,CONSTRUCTION,PERRY & PERRY,Steel Erector - W&W,,,2024-06-06 07:00,2024-06-13 17:00,2024-05-06 07:00,2024-06-03 17:00,2025-11-20 17:00,2025-11-20 17:00,2025-10-16 07:00,2025-10-16 07:00,0,50,100
CN.SEB1.5040,DSAD PENETRATION SUPPORT STEEL FRAMING - SEB1 - GL 20- 22 - C-E - L4,Complete,CONSTRUCTION,,SUEN-1 - 19-22,DS/AD,,CONSTRUCTION,PERRY & PERRY,Steel Erector - W&W,,,2024-07-29 07:00,2024-08-06 17:00,2024-07-27 07:00,2024-08-03 17:00,2025-11-20 17:00,2025-11-20 17:00,2025-10-16 07:00,2025-10-16 07:00,0,70,100
CN.SWB1.4750,DSAD PENETRATION SUPPORT STEEL FRAMING - SWB-1- GL 17-21 L2,Complete,CONSTRUCTION,,SUWN-1 - 18-21,DS/AD,,CONSTRUCTION,,Steel Erector - W&W,,,2024-02-29 07:00,2024-03-03 17:00,2024-02-29 07:00,2024-03-01 11:00,2025-11-20 17:00,2025-11-20 17:00,2025-12-05 17:00,2025-12-05 17:00,0,40,100
CN.SWA1.1750,DSAD PENETRATION SUPPORT STEEL FRAMING - SWB-1- GL 18-15 L3,Complete,CONSTRUCTION,,SUWS-1 - 18-15,DS/AD,,CONSTRUCTION,PERRY & PERRY,Steel Erector - W&W,,,2024-05-21 07:00,2024-05-30 17:00,2024-04-29 07:00,2024-06-20 17:00,2025-11-20 17:00,2025-11-20 17:00,2025-12-05 17:00,2025-12-05 17:00,0,50,100
CN.SWA1.1760,DSAD PENETRATION SUPPORT STEEL FRAMING - SWB-1- GL 18-15 L2,Complete,CONSTRUCTION,,SUWS-1 - 18-15,DS/AD,,CONSTRUCTION,,Steel Erector - W&W,,,2024-02-24 15:00,2024-02-29 15:00,2024-02-24 15:00,2024-02-27 08:00,2025-11-20 17:00,2025-11-20 17:00,2025-12-05 17:00,2025-12-05 17:00,0,40,100
CN.SWA1.1770,DSAD PENETRATION SUPPORT STEEL FRAMING - SWB-1- GL 18-15 L4,Complete,CONSTRUCTION,,SUWS-1 - 18-15,DS/AD,,CONSTRUCTION,PERRY & PERRY,Decking & Detail,,,2024-06-07 07:00,2024-06-14 17:00,2024-05-30 07:00,2024-06-04 17:00,2025-11-20 17:00,2025-11-20 17:00,2025-12-05 17:00,2025-12-05 17:00,0,50,100
CN.SWA2.1560,DSAD PENETRATION SUPPORT STEEL FRAMING - SWA-2- GL 15-12 L3,Complete,CONSTRUCTION,,SUWS-2 - 15-12,DS/AD,,CONSTRUCTION,PERRY & PERRY,Steel Erector - W&W,,,2024-05-17 07:00,2024-05-24 17:00,2024-04-27 07:00,2024-06-20 17:00,2025-11-20 17:00,2025-11-20 17:00,2025-12-05 17:00,2025-12-05 17:00,0,50,100
CN.SWA2.1570,DSAD PENETRATION SUPPORT STEEL FRAMING - SWA-2- GL 15-12 L2,Complete,CONSTRUCTION,,SUWS-2 - 15-12,DS/AD,,CONSTRUCTION,,Steel Erector - W&W,,,2024-02-19 15:00,2024-02-24 15:00,2024-02-19 15:00,2024-02-24 16:00,2025-11-20 17:00,2025-11-20 17:00,2025-12-05 17:00,2025-12-05 17:00,0,40,100
CN.SWA2.1580,DSAD PENETRATION SUPPORT STEEL FRAMING - SWA-2- GL 15-12 L4,Complete,CONSTRUCTION,,SUWS-2 - 15-12,DS/AD,,CONSTRUCTION,PERRY & PERRY,Steel Erector - W&W,,,2024-06-21 07:00,2024-06-28 17:00,2024-05-30 07:00,2024-06-04 17:00,2025-11-20 17:00,2025-11-20 17:00,2025-12-05 17:00,2025-12-05 17:00,0,50,100
CN.SWA3.1350,DSAD PENETRATION SUPPORT STEEL FRAMING - SWA-3- GL 12-9 L2,Complete,CONSTRUCTION,,SUWS-3 - 12-9,DS/AD,,CONSTRUCTION,,Steel Erector - W&W,,,2024-02-15 08:00,2024-02-19 08:00,2024-02-15 08:00,2024-02-19 12:00,2025-11-20 17:00,2025-11-20 17:00,2025-12-05 17:00,2025-12-05 17:00,0,40,100
CN.SWA3.1360,DSAD PENETRATION SUPPORT STEEL FRAMING - SWA3 - GL 12-9 - L4,Complete,CONSTRUCTION,,SUWS-3 - 12-9,DS/AD,,CONSTRUCTION,PERRY & PERRY,Steel Erection,,,2024-06-14 07:00,2024-06-21 17:00,2024-05-24 07:00,2024-05-30 17:00,2025-11-20 17:00,2025-11-20 17:00,2025-12-05 17:00,2025-12-05 17:00,0,50,100
CN.SWA4.1600,DSAD PENETRATION SUPPORT STEEL FRAMING - SWA-4- GL 9-6 L3,Complete,CONSTRUCTION,,SUWS-4 - 9-6,DS/AD,,CONSTRUCTION,PERRY & PERRY,Steel Erector - W&W,,,2024-05-16 07:00,2024-05-21 17:00,2024-04-16 07:00,2024-04-20 17:00,2025-11-20 17:00,2025-11-20 17:00,2025-12-05 17:00,2025-12-05 17:00,0,40,100
CN.SWA4.1610,DSAD PENETRATION SUPPORT STEEL FRAMING - SWA-4- GL 9-6 L2,Complete,CONSTRUCTION,,SUWS-4 - 9-6,DS/AD,,CONSTRUCTION,,Steel Erector - W&W,,,2024-02-11 08:00,2024-02-15 08:00,2024-02-11 08:00,2024-02-15 09:00,2025-11-20 17:00,2025-11-20 17:00,2025-12-05 17:00,2025-12-05 17:00,0,40,100
CN.SWA4.1620,DSAD PENETRATION SUPPORT STEEL FRAMING - SWA4 - GL 9-6 - L4,Complete,CONSTRUCTION,,SUWS-4 - 9-6,DS/AD,,CONSTRUCTION,PERRY & PERRY,Steel Erector - W&W,,,2024-06-14 07:00,2024-06-20 09:00,2024-05-24 07:00,2024-05-30 09:00,2025-11-20 17:00,2025-11-20 17:00,2025-12-05 17:00,2025-12-05 17:00,0,32,100
CN.SWA5.1580,DSAD PENETRATION SUPPORT STEEL FRAMING - SWA-5- GL 6-3 L2,Complete,CONSTRUCTION,,FIZ 2 / SUWS 5  (GL6-1) - GL J - N - DATA CENTER 1,DS/AD,,CONSTRUCTION,,Steel Erector - W&W,,,2024-02-06 08:00,2024-02-11 08:00,2024-02-06 08:00,2024-02-11 11:00,2025-11-20 17:00,2025-11-20 17:00,2025-12-05 17:00,2025-12-05 17:00,0,40,100
CN.SWA5.1590,DSAD PENETRATION SUPPORT STEEL FRAMING - SWA5 - GL 6-3 - L4,Complete,CONSTRUCTION,,FIZ 2 / SUWS 5  (GL6-1) - GL J - N - DATA CENTER 1,DS/AD,,CONSTRUCTION,PERRY & PERRY,Steel Erector - W&W,,,2024-07-29 07:00,2024-08-02 17:00,2024-07-29 07:00,2024-08-02 17:00,2025-11-20 17:00,2025-11-20 17:00,2025-12-05 17:00,2025-12-05 17:00,0,50,100
CN.SWB2.6470,DSAD PENETRATION SUPPORT STEEL FRAMING - SWB-2 - GL 21-24 J-K - L2,Complete,CONSTRUCTION,,SUWN-2 - 21-24,DS/AD,,CONSTRUCTION,,Steel Erector - W&W,,,2024-03-04 09:00,2024-03-08 09:00,2024-03-04 09:00,2024-03-08 10:00,2025-11-20 17:00,2025-11-20 17:00,2025-12-05 17:00,2025-12-05 17:00,0,40,100
CN.SWB2.6480,DSAD PENETRATION SUPPORT STEEL FRAMING - SWB-3- GL 24-27 J-K L2,Complete,CONSTRUCTION,,SUWN-3 - 24-27,DS/AD,,CONSTRUCTION,,Steel Erector - W&W,,,2024-03-04 13:00,2024-03-08 13:00,2024-03-04 13:00,2024-03-08 14:00,2025-11-20 17:00,2025-11-20 17:00,2025-12-05 17:00,2025-12-05 17:00,0,40,100
CN.SWB4.6360,DSAD PENETRATION SUPPORT STEEL FRAMING - SWB-4 GL 27-30 K-L L2,Complete,CONSTRUCTION,,SUWN-4 - 27-30,DS/AD,,CONSTRUCTION,,Steel Erector - W&W,,,2024-03-09 08:00,2024-03-11 12:00,2024-03-09 08:00,2024-03-12 15:00,2025-11-20 17:00,2025-11-20 17:00,2025-12-05 17:00,2025-12-05 17:00,0,24,100
CN.SWB5.6430,DSAD PENETRATION SUPPORT STEEL FRAMING - SWB5 -GL 30-33 L2,Complete,CONSTRUCTION,,SUWN-5 - 30-33,DS/AD,,CONSTRUCTION,,Steel Erector - W&W,,,2024-03-09 08:00,2024-03-11 12:00,2024-03-09 08:00,2024-03-12 15:00,2025-11-20 17:00,2025-11-20 17:00,2025-12-05 17:00,2025-12-05 17:00,0,24,100
CN.SEB2.2341,DETAILING AND INSPECTION CLADDING STEEL GL 22-25 - C LINE (DS AREA),Complete,CONSTRUCTION,,SUEN-2 - 22-25,EXTERIOR SKIN,,CONSTRUCTION,,INSULATED METAL PANELS,,,2024-02-26 07:00,2024-03-06 15:00,2024-02-26 07:00,2024-03-05 13:00,2025-11-20 17:00,2025-11-20 17:00,2025-11-17 07:00,2025-11-17 07:00,0,88,100
CN.SWA1.1780,DETAILING AND INSPECTION EXTERIOR - GL 18-15 SWA-1 L LINE (DS AREA),Complete,CONSTRUCTION,,SUWS-1 - 18-15,EXTERIOR SKIN,,CONSTRUCTION,,INSULATED METAL PANELS,,,2024-01-02 09:00,2024-01-07 08:00,2024-01-02 08:00,2024-01-12 16:00,2025-11-20 17:00,2025-11-20 17:00,2025-11-25 07:00,2025-11-25 07:00,0,40,100
CN.SWA2.1590,DETAILING AND INSPECTION EXTERIOR - GL 15-12 SWA-1 L LINE (DS AREA),Complete,CONSTRUCTION,,SUWS-2 - 15-12,EXTERIOR SKIN,,CONSTRUCTION,,INSULATED METAL PANELS,,,2024-01-29 15:00,2024-02-14 09:00,2023-12-01 15:00,2023-12-18 15:00,2025-11-20 17:00,2025-11-20 17:00,2025-11-25 07:00,2025-11-25 07:00,0,144,100
CN.SEA2.1570,ADD FLANGE EXTENSION / CUT GRATING - D LINE GL 16-13,Complete,CONSTRUCTION,,SUES-2 - 16-13,L3 / Waffle Slab Level,DS/AD INTERIORS,CONSTRUCTION,,TBD Architectural Finishes,,,2024-02-06 08:00,2024-02-09 12:00,2024-02-06 08:00,2024-02-09 12:00,2025-11-20 17:00,2025-11-20 17:00,2025-06-13 08:00,2025-06-13 08:00,0,24,100
CN.SEA1.DS.1480,ADD FLANGE EXTENSION / CUT GRATING - D LINE GL 16-19 - L3,Complete,CONSTRUCTION,,SUES-1 - 19-16,L3 / Waffle Slab Level,DS/AD INTERIORS,CONSTRUCTION,,TBD Architectural Finishes,,,2024-03-18 07:00,2024-03-20 11:00,2024-03-18 07:00,2024-03-21 11:00,2025-11-20 17:00,2025-11-20 17:00,2025-11-10 07:00,2025-11-10 07:00,0,24,100
CN.SEB1.1171,ADD FLANGE EXTENSION / CUT GRATING - GL 19-22,Complete,CONSTRUCTION,,SUEN-1 - 19-22,L4 - SUP Roof - FAB Roof,DS/AD INTERIORS,CONSTRUCTION,,,,,2024-03-09 08:00,2024-03-11 12:00,2024-02-01 00:00,2024-02-06 00:00,2025-11-20 17:00,2025-11-20 17:00,2025-06-13 08:00,2025-06-13 08:00,0,24,100
CN.SEB21201,ADD FLANGE EXTENSION / CUT GRATING - D LINE - GL 22-25 - L3,Complete,CONSTRUCTION,,SUEN-2 - 22-25,L3 / Waffle Slab Level,DS/AD INTERIORS,CONSTRUCTION,,,,,2024-03-09 08:00,2024-03-11 12:00,2024-02-07 00:00,2024-02-09 00:00,2025-11-20 17:00,2025-11-20 17:00,2025-06-13 08:00,2025-06-13 08:00,0,24,100
CN.SEB31131,ADD FLANGE EXTENSION / CUT GRATING - GL 25-28 - L3,Complete,CONSTRUCTION,,SUEN-3 - 25-28,L3 / Waffle Slab Level,DS/AD INTERIORS,CONSTRUCTION,,TBD Architectural Finishes,,,2024-03-17 07:00,2024-03-19 11:00,2024-03-15 07:00,2024-03-17 14:00,2025-11-20 17:00,2025-11-20 17:00,2025-06-13 08:00,2025-06-13 08:00,0,24,100
CN.SEB4.1161,ADD FLANGE EXTENSION / CUT GRATING - GL 28-31 - L3 - D LINE,Complete,CONSTRUCTION,,SUEN-4 - 28-31,L3 / Waffle Slab Level,DS/AD INTERIORS,CONSTRUCTION,,TBD Architectural Finishes,,,2024-03-18 09:00,2024-03-20 13:00,2024-03-18 09:00,2024-03-20 13:00,2025-11-20 17:00,2025-11-20 17:00,2025-06-13 08:00,2025-06-13 08:00,0,24,100
CN.SWB1.1330,INSTALL PRIMER SWB-1 ROOF GL 18-21,Complete,CONSTRUCTION,,SUWN-1 - 18-21,L4 - SUP Roof - FAB Roof,,CONSTRUCTION,,TOPPING,,,2024-03-04 15:00,2024-03-05 13:00,2024-03-04 15:00,2024-03-05 13:00,2025-11-20 17:00,2025-11-20 17:00,2025-11-21 07:00,2025-11-21 07:00,0,8,100
CN.SWB1.1340,BASE COAT SWB-1 ROOF GL 18-21,Complete,CONSTRUCTION,,SUWN-1 - 18-21,L4 - SUP Roof - FAB Roof,,CONSTRUCTION,,TOPPING,,,2024-03-17 07:00,2024-03-18 13:00,2024-03-15 08:00,2024-03-16 15:00,2025-11-20 17:00,2025-11-20 17:00,2025-11-21 07:00,2025-11-21 07:00,0,16,100
CN.SWB1.1350,APPLY TOP COAT SWB-1 ROOF GL 18-21,Complete,CONSTRUCTION,,SUWN-1 - 18-21,L4 - SUP Roof - FAB Roof,,CONSTRUCTION,,TOPPING,,,2024-03-19 15:00,2024-03-23 11:00,2024-03-19 15:00,2024-03-21 11:00,2025-11-20 17:00,2025-11-20 17:00,2025-11-21 07:00,2025-11-21 07:00,0,16,100
CN.SWB1.1600,INSTALL CRICKET - SWB-1 ROOF GL 18-21,Complete,CONSTRUCTION,,SUWN-1 - 18-21,L4 - SUP Roof - FAB Roof,,CONSTRUCTION,,TOPPING,,,2024-03-22 15:00,2024-03-28 15:00,2024-03-22 15:00,2024-03-27 17:00,2025-11-20 17:00,2025-11-20 17:00,2025-11-21 07:00,2025-11-21 07:00,0,40,100
CN.SWB1.1610,INSTALL BASE COAT CRICKET - SWB-1 ROOF GL 18-21,Complete,CONSTRUCTION,,SUWN-1 - 18-21,L4 - SUP Roof - FAB Roof,,CONSTRUCTION,,TOPPING,,,2024-04-01 07:00,2024-04-02 13:00,2024-04-01 12:00,2024-04-02 12:00,2025-11-20 17:00,2025-11-20 17:00,2025-11-21 07:00,2025-11-21 07:00,0,16,100
CN.SWB1.1620,INSTALL PRIMER CRICKET - SWB-1 ROOF GL 18-21,Complete,CONSTRUCTION,,SUWN-1 - 18-21,L4 - SUP Roof - FAB Roof,,CONSTRUCTION,,TOPPING,,,2024-03-29 07:00,2024-03-29 15:00,2024-03-29 07:00,2024-03-29 15:00,2025-11-20 17:00,2025-11-20 17:00,2025-11-21 07:00,2025-11-21 07:00,0,8,100
CN.SWB1.1630,INSTALL TOP COAT CRICKET - SWB-1 ROOF GL 18-21,Complete,CONSTRUCTION,,SUWN-1 - 18-21,L4 - SUP Roof - FAB Roof,,CONSTRUCTION,,TOPPING,,,2024-04-05 08:00,2024-04-08 14:00,2024-04-05 08:00,2024-04-05 16:00,2025-11-20 17:00,2025-11-20 17:00,2025-11-21 07:00,2025-11-21 07:00,0,16,100
CN.SWB3.4730,INSTALL BASE COAT - GL 24-26 - L4 - L-N - ROOF,Complete,CONSTRUCTION,,SUWN-3 - 24-27,L4 - SUP Roof - FAB Roof,,CONSTRUCTION,BRAZOS,TOPPING,,,2024-06-10 07:00,2024-06-11 17:00,2024-05-28 07:00,2024-05-29 17:00,2025-11-20 17:00,2025-11-20 17:00,2025-12-05 17:00,2025-12-05 17:00,0,20,100
CN.SWB3.4740,INSTALL TOP COAT - GL 24-26 - L4 - L-N - ROOF,Complete,CONSTRUCTION,,SUWN-3 - 24-27,L4 - SUP Roof - FAB Roof,,CONSTRUCTION,BRAZOS,TOPPING,,,2024-06-07 07:00,2024-06-10 17:00,2024-05-31 07:00,2024-05-31 17:00,2025-11-20 17:00,2025-11-20 17:00,2025-12-05 17:00,2025-12-05 17:00,0,20,100
CN.SWB3.4750,INSTALL BASE COAT CRICKET - GL 24-26 - L4 - L-N - ROOF,Complete,CONSTRUCTION,,SUWN-3 - 24-27,L4 - SUP Roof - FAB Roof,,CONSTRUCTION,BRAZOS,TOPPING,,,2024-06-20 07:00,2024-06-20 17:00,2024-06-03 07:00,2024-06-03 17:00,2025-11-20 17:00,2025-11-20 17:00,2025-12-05 17:00,2025-12-05 17:00,0,10,100
CN.SWB3.4760,INSTALL TOP COAT CRICKET - GL 24-26 - L4 - L-N - ROOF,Complete,CONSTRUCTION,,SUWN-3 - 24-27,L4 - SUP Roof - FAB Roof,,CONSTRUCTION,BRAZOS,TOPPING,,,2024-06-21 07:00,2024-06-21 17:00,2024-06-04 07:00,2024-06-04 17:00,2025-11-20 17:00,2025-11-20 17:00,2025-12-05 17:00,2025-12-05 17:00,0,10,100
CN.SWB3.4790,INSTALL PRIMER - GL 24-26 - L4 - L-N - ROOF,Complete,CONSTRUCTION,,SUWN-3 - 24-27,L4 - SUP Roof - FAB Roof,,CONSTRUCTION,BRAZOS,TOPPING,,,2024-06-07 07:00,2024-06-07 17:00,2024-05-25 07:00,2024-05-25 17:00,2025-11-20 17:00,2025-11-20 17:00,2025-12-05 17:00,2025-12-05 17:00,0,10,100
CN.SWB1.4760,INSTALL PRIMER SWB-1 ROOF GL 12-9,Complete,CONSTRUCTION,,SUWS-3 - 12-9,L4 - SUP Roof - FAB Roof,,CONSTRUCTION,,Roofing,,,2024-02-12 08:00,2024-02-12 16:00,2024-02-01 08:00,2024-02-02 16:00,2025-11-20 17:00,2025-11-20 17:00,2025-11-25 07:00,2025-11-25 07:00,0,8,100
CN.SWB1.4770,APPLY BASE COAT SWB-1 ROOF GL 12-9,Complete,CONSTRUCTION,,SUWS-3 - 12-9,L4 - SUP Roof - FAB Roof,,CONSTRUCTION,,Roofing,,,2024-02-13 08:00,2024-02-14 14:00,2024-02-03 08:00,2024-02-05 16:00,2025-11-20 17:00,2025-11-20 17:00,2025-11-25 07:00,2025-11-25 07:00,0,16,100
CN.SWB1.4780,APPLY TOP COAT SWB-1 ROOF GL 12-9,Complete,CONSTRUCTION,,SUWS-3 - 12-9,L4 - SUP Roof - FAB Roof,,CONSTRUCTION,,Roofing,,,2024-02-15 08:00,2024-02-16 14:00,2024-02-06 08:00,2024-02-08 16:00,2025-11-20 17:00,2025-11-20 17:00,2025-11-25 07:00,2025-11-25 07:00,0,16,100
CN.SWB1.4790,INSTALL CRICKETS SWB-1 ROOF GL 12-9,Complete,CONSTRUCTION,,SUWS-3 - 12-9,L4 - SUP Roof - FAB Roof,,CONSTRUCTION,,TOPPING,,,2024-02-19 08:00,2024-02-21 12:00,2024-02-09 08:00,2024-02-11 16:00,2025-11-20 17:00,2025-11-20 17:00,2025-11-25 07:00,2025-11-25 07:00,0,24,100
CN.SWB1.4810,APPLY BASE COAT CRICKETS SWB-1 ROOF GL 12-9,Complete,CONSTRUCTION,,SUWS-3 - 12-9,L4 - SUP Roof - FAB Roof,,CONSTRUCTION,,TOPPING,,,2024-02-14 07:00,2024-02-14 15:00,2024-02-14 07:00,2024-02-14 15:00,2025-11-20 17:00,2025-11-20 17:00,2025-11-25 07:00,2025-11-25 07:00,0,8,100
CN.SWB1.4800,INSTALL PRIMER CRICKETS SWB-1 ROOF GL 12-9,Complete,CONSTRUCTION,,SUWS-3 - 12-9,L4 - SUP Roof - FAB Roof,,CONSTRUCTION,,TOPPING,,,2024-02-22 08:00,2024-02-23 14:00,2024-02-12 08:00,2024-02-13 16:00,2025-11-20 17:00,2025-11-20 17:00,2025-11-25 07:00,2025-11-25 07:00,0,16,100
CN.SWB1.4820,APPLY TOP COAT CRICKETS SWB-1 ROOF GL 12-9,Complete,CONSTRUCTION,,SUWS-3 - 12-9,L4 - SUP Roof - FAB Roof,,CONSTRUCTION,,TOPPING,,,2024-02-15 15:00,2024-02-16 13:00,2024-02-15 15:00,2024-02-16 13:00,2025-11-20 17:00,2025-11-20 17:00,2025-11-25 07:00,2025-11-25 07:00,0,8,100
CN.SEA1.5340,DETAILING AND INSPECT CLADDING STEEL - SEA1 - GL 19-16 - CLINE (DS AREA) (18~21),Complete,CONSTRUCTION,,SUES-1 - 19-16,EXTERIOR SKIN,,CONSTRUCTION,,INSULATED METAL PANELS,,,2024-02-05 08:00,2024-02-14 08:00,2023-12-19 08:00,2023-12-25 16:00,2025-11-20 17:00,2025-11-20 17:00,2025-09-04 07:00,2025-09-04 07:00,0,80,100
CN.SWA1.1790,PH1- DS/AD FRP SLAB - SWA-1 L2,Complete,CONSTRUCTION,,SUWS-1 - 18-15,DS/AD,,CONSTRUCTION,,,,,2023-12-29 08:00,2024-01-06 09:00,2023-12-29 08:00,2023-12-29 16:00,2025-11-20 17:00,2025-11-20 17:00,2025-11-24 07:00,2025-11-24 07:00,0,40,100
CN.SEA3.6050,IMPACT [C17] - Stop Work - OAC PAD WALLS DELAYED DUE TO SECAI INSTALLING MEP PIPES GL 7-27 SUE,Complete,CONSTRUCTION,,SUES-3 - 13-9,L4 - SUP Roof - FAB Roof,,CONSTRUCTION,,Waterproofing - Preferred,,,2024-01-22 08:00,2024-01-26 08:00,2024-01-02 08:00,2024-03-31 15:00,2025-11-20 17:00,2025-11-20 17:00,2025-12-04 07:00,2025-12-04 07:00,0,40,100
CN.SEB1.6200,IMPACT - MEP OPENING REWORK INSTALL - CLADDING STEEL GL 19-22 - C LINE (DS AREA),Complete,CONSTRUCTION,,SUEN-1 - 19-22,EXTERIOR SKIN,,CONSTRUCTION,,INSULATED METAL PANELS,,,2024-03-02 15:00,2024-03-05 09:00,2024-03-02 15:00,2024-03-06 16:00,2025-11-20 17:00,2025-11-20 17:00,2025-11-21 07:00,2025-11-21 07:00,0,24,100
CN.SEB2.2361,IMPACT - MEP OPENING REWORK INSTALL - CLADDING STEEL GL 22-25 - C LINE (DS AREA),Complete,CONSTRUCTION,,SUEN-2 - 22-25,EXTERIOR SKIN,,CONSTRUCTION,,INSULATED METAL PANELS,,,2024-03-07 07:00,2024-03-09 11:00,2024-03-07 07:00,2024-03-09 12:00,2025-11-20 17:00,2025-11-20 17:00,2025-11-21 07:00,2025-11-21 07:00,0,24,100
CN.SEB2.2371,DS ROOF PARAPET - L6 - SEB1- GL 22-25 - C LINE (DS AREA) (24~27),Complete,CONSTRUCTION,,SUEN-2 - 22-25,EXTERIOR SKIN,,CONSTRUCTION,,INSULATED METAL PANELS,,,2024-02-15 08:00,2024-02-19 08:00,2024-02-15 08:00,2024-02-21 16:00,2025-11-20 17:00,2025-11-20 17:00,2025-12-05 17:00,2025-12-05 17:00,0,40,100
CN.SEB21211,INSTALL TPO ROOFING - SEB2 - GL 21-25 - C-D - L6,Complete,CONSTRUCTION,,SUEN-2 - 22-25,L6 - PENTHOUSE / DS ROOF,,CONSTRUCTION,BRAZOS,,,,2024-09-13 07:00,2024-09-19 17:00,2024-09-09 07:00,2024-09-14 17:00,2025-11-20 17:00,2025-11-20 17:00,2025-12-05 17:00,2025-12-05 17:00,0,40,100
CN.SEB1.6230,INSTALL INSULATED METAL PANEL MODULES - GL 19-22 - E LINE (AD AREA),Complete,CONSTRUCTION,,SUEN-1 - 19-22,DS/AD,,CONSTRUCTION,KOVACH,INSULATED METAL PANELS,,,2024-06-29 07:00,2024-06-30 17:00,2024-06-14 07:00,2024-06-17 17:00,2025-11-20 17:00,2025-11-20 17:00,2025-12-05 17:00,2025-12-05 17:00,0,20,100
CN.SEB2.1500,INSTALL INSULATED METAL PANEL MODULES - GL 22-26 - E LINE (AD AREA),Complete,CONSTRUCTION,,SUEN-2 - 22-25,DS/AD,,CONSTRUCTION,KOVACH,,,,2024-06-14 07:00,2024-06-15 17:00,2024-06-11 07:00,2024-06-13 17:00,2025-11-20 17:00,2025-11-20 17:00,2025-12-05 17:00,2025-12-05 17:00,0,20,100
CN.SEB3.1620,IMPACT - MEP OPENING REWORK INSTALL - CLADDING STEEL GL 25- 28 - C LINE (DS AREA),Complete,CONSTRUCTION,,SUEN-3 - 25-28,EXTERIOR SKIN,,CONSTRUCTION,,INSULATED METAL PANELS,,,2024-03-12 07:00,2024-03-18 11:00,2024-03-12 07:00,2024-03-15 17:00,2025-11-20 17:00,2025-11-20 17:00,2025-11-21 07:00,2025-11-21 07:00,0,24,100
CN.SEB3.1630,DS ROOF PARAPET - SEB3 - GL 25-28 - C LINE (DS AREA) L6 (27~30),Complete,CONSTRUCTION,,SUEN-3 - 25-28,EXTERIOR SKIN,,CONSTRUCTION,,INSULATED METAL PANELS,,,2024-02-15 12:00,2024-02-19 12:00,2024-02-15 12:00,2024-02-22 12:00,2025-11-20 17:00,2025-11-20 17:00,2025-12-05 17:00,2025-12-05 17:00,0,40,100
CN.SEB3.1640,INSTALL TPO ROOFING - SEB3 - GL 28-25 - C-D - L6,Complete,CONSTRUCTION,,SUEN-3 - 25-28,L6 - PENTHOUSE / DS ROOF,,CONSTRUCTION,BRAZOS,TOPPING,,,2024-09-13 07:00,2024-09-19 17:00,2024-09-09 07:00,2024-09-14 17:00,2025-11-20 17:00,2025-11-20 17:00,2025-12-05 17:00,2025-12-05 17:00,0,40,100
CN.SEB4.1300,IMPACT - MEP OPENING REWORK INSTALL - CLADDING STEEL GL 28-31 - C LINE (DS AREA),Complete,CONSTRUCTION,,SUEN-4 - 28-31,EXTERIOR SKIN,,CONSTRUCTION,,INSULATED METAL PANELS,,,2024-03-19 08:00,2024-03-23 12:00,2024-03-18 08:00,2024-03-20 12:00,2025-11-20 17:00,2025-11-20 17:00,2025-11-21 07:00,2025-11-21 07:00,0,24,100
CN.SEB4.1310,DS ROOF PARAPET - SEB3 - GL 28-31 - C LINE (DS AREA) L6 (30~33),Complete,CONSTRUCTION,,SUEN-4 - 28-31,EXTERIOR SKIN,,CONSTRUCTION,,INSULATED METAL PANELS,,,2024-03-01 08:00,2024-03-05 08:00,2024-03-01 08:00,2024-03-05 12:00,2025-11-20 17:00,2025-11-20 17:00,2025-12-05 17:00,2025-12-05 17:00,0,40,100
CN.SEB4.1320,INSTALL TPO ROOFING - SEB4 - GL 28-31 - A-D - L6,Complete,CONSTRUCTION,,SUEN-4 - 28-31,L6 - PENTHOUSE / DS ROOF,,CONSTRUCTION,BRAZOS,TOPPING,,,2024-09-13 07:00,2024-09-19 17:00,2024-09-09 07:00,2024-09-14 17:00,2025-11-20 17:00,2025-11-20 17:00,2025-12-05 17:00,2025-12-05 17:00,0,40,100
CN.SEB5.1310,IMPACT - MEP OPENING REWORK INSTALL - CLADDING STEEL GL 31-33 - C LINE (DS AREA),Complete,CONSTRUCTION,,SUEN-5 - 31-33,EXTERIOR SKIN,,CONSTRUCTION,,INSULATED METAL PANELS,,,2024-04-16 11:00,2024-04-18 15:00,2024-03-12 00:00,2024-03-16 00:00,2025-11-20 17:00,2025-11-20 17:00,2025-11-21 07:00,2025-11-21 07:00,0,24,100
CN.SEB4.1580,INSTALL INSULATED METAL PANEL MODULES - GL 28-31 - E LINE (AD AREA),Complete,CONSTRUCTION,,SUEN-4 - 28-31,DS/AD,,CONSTRUCTION,KOVACH,INSULATED METAL PANELS,,,2024-09-01 07:00,2024-09-03 17:00,2024-08-28 07:00,2024-09-03 17:00,2025-11-20 17:00,2025-11-20 17:00,2025-12-05 17:00,2025-12-05 17:00,0,20,100
CN.SEB5.1550,INSTALL TPO ROOFING - SEB5 - GL 31-33 - CA-D - L6 - NORTH EAST PENTHOUSE,Complete,CONSTRUCTION,,NORTH EAST PENTHOUSE,L6 - PENTHOUSE / DS ROOF,,CONSTRUCTION,BRAZOS,TOPPING,,,2024-12-10 07:00,2024-12-16 17:00,2024-12-10 07:00,2025-03-20 17:00,2025-11-20 17:00,2025-11-20 17:00,2025-12-05 17:00,2025-12-05 17:00,0,40,100
CN.SEA1.5460,IMPACT - MEP OPENING REWORK - CLADDING STEEL GL 19-16 - C LINE (DS AREA),Complete,CONSTRUCTION,,SUES-1 - 19-16,EXTERIOR SKIN,,CONSTRUCTION,,INSULATED METAL PANELS,,,2024-02-29 10:00,2024-03-02 14:00,2024-02-29 10:00,2024-03-02 15:00,2025-11-20 17:00,2025-11-20 17:00,2025-10-29 07:00,2025-10-29 07:00,0,24,100
CN.AB.AR.4820,DS ROOF PARAPET - SEB3 - GL 19-16 - C LINE (DS AREA) L6 (18~21),Complete,CONSTRUCTION,,SUES-1 - 19-16,EXTERIOR SKIN,,CONSTRUCTION,,INSULATED METAL PANELS,,,2024-02-15 08:00,2024-02-17 12:00,2024-02-15 08:00,2024-02-19 16:00,2025-11-20 17:00,2025-11-20 17:00,2025-09-04 07:00,2025-09-04 07:00,0,24,100
CN.SEA1.3050,INSTALL TPO ROOFING - SEA1 - GL 14-17 - C-D - L6,Complete,CONSTRUCTION,,SUES-1 - 19-16,L6 - PENTHOUSE / DS ROOF,,CONSTRUCTION,BRAZOS,TOPPING,,,2024-09-20 07:00,2024-09-26 17:00,2024-09-16 07:00,2024-09-19 17:00,2025-11-20 17:00,2025-11-20 17:00,2025-12-05 17:00,2025-12-05 17:00,0,40,100
CN.SEA2.1590,IMPACT - MEP OPENING REWORK - CLADDING STEEL GL 16-13 - C LINE (DS AREA),Complete,CONSTRUCTION,,SUES-2 - 16-13,EXTERIOR SKIN,,CONSTRUCTION,,INSULATED METAL PANELS,,,2024-02-26 16:00,2024-03-01 10:00,2024-02-26 16:00,2024-03-01 10:00,2025-11-20 17:00,2025-11-20 17:00,2025-10-29 07:00,2025-10-29 07:00,0,24,100
CN.SEA2.6250,DS ROOF PARAPET - SEB3 - GL 16-13 - C LINE (DS AREA) L6 (15~18),Complete,CONSTRUCTION,,SUES-2 - 16-13,EXTERIOR SKIN,,CONSTRUCTION,,INSULATED METAL PANELS,,,2024-02-15 08:00,2024-02-19 08:00,2024-02-15 08:00,2024-02-19 16:00,2025-11-20 17:00,2025-11-20 17:00,2025-12-05 17:00,2025-12-05 17:00,0,40,100
CN.SEA2.1600,INSTALL TPO ROOFING - SEA2 - GL 11-14 - C-D - L6,Complete,CONSTRUCTION,,SUES-2 - 16-13,L6 - PENTHOUSE / DS ROOF,,CONSTRUCTION,BRAZOS,TOPPING,,,2024-09-20 07:00,2024-09-26 17:00,2024-09-16 07:00,2024-09-19 17:00,2025-11-20 17:00,2025-11-20 17:00,2025-12-05 17:00,2025-12-05 17:00,0,40,100
CN.SEA1.3080,INSTALL INSULATED METAL PANEL MODULES - GL 19-16 - E LINE (AD AREA),Complete,CONSTRUCTION,,SUES-1 - 19-16,DS/AD,,CONSTRUCTION,KOVACH,INSULATED METAL PANELS,,,2024-07-01 07:00,2024-07-02 17:00,2024-06-17 07:00,2024-06-19 17:00,2025-11-20 17:00,2025-11-20 17:00,2025-12-05 17:00,2025-12-05 17:00,0,20,100
CN.SEA5.6290,INSTALL INSULATED METAL PANEL MODULES - GL 16-13 - E LINE (AD AREA),Complete,CONSTRUCTION,,SUES-2 - 16-13,DS/AD,,CONSTRUCTION,KOVACH,INSULATED METAL PANELS,,,2024-07-07 07:00,2024-07-08 17:00,2024-06-20 07:00,2024-06-22 17:00,2025-11-20 17:00,2025-11-20 17:00,2025-12-05 17:00,2025-12-05 17:00,0,20,100
CN.SEA3.1680,IMPACT - MEP OPENING REWORK - CLADDING STEEL GL 13-9- C LINE (DS AREA),Complete,CONSTRUCTION,,SUES-3 - 13-9,EXTERIOR SKIN,,CONSTRUCTION,,INSULATED METAL PANELS,,,2024-02-26 07:00,2024-02-29 11:00,2024-02-26 07:00,2024-02-28 11:00,2025-11-20 17:00,2025-11-20 17:00,2025-10-29 07:00,2025-10-29 07:00,0,24,100
IMP.5080,DS ROOF PARAPET - SEB3 - GL 13-9 - C LINE (DS AREA) L6 (9~12),Complete,CONSTRUCTION,,SUES-3 - 13-9,EXTERIOR SKIN,,CONSTRUCTION,,INSULATED METAL PANELS,,,2024-02-26 08:00,2024-03-02 08:00,2024-02-26 08:00,2024-03-02 09:00,2025-11-20 17:00,2025-11-20 17:00,2025-12-05 17:00,2025-12-05 17:00,0,40,100
CN.SEA3.1690,INSTALL TPO ROOFING - SEA3 - GL 7-11 - C-D - L6,Complete,CONSTRUCTION,,SUES-3 - 13-9,L6 - PENTHOUSE / DS ROOF,,CONSTRUCTION,BRAZOS,TOPPING,,,2024-09-20 07:00,2024-09-26 17:00,2024-09-16 07:00,2024-09-19 17:00,2025-11-20 17:00,2025-11-20 17:00,2025-12-05 17:00,2025-12-05 17:00,0,40,100
CN.SEA3.1700,INSTALL INSULATED METAL PANEL MODULES - GL 13-9 - E LINE (AD AREA),Complete,CONSTRUCTION,,SUES-3 - 13-9,DS/AD,,CONSTRUCTION,KOVACH,INSULATED METAL PANELS,,,2024-07-12 07:00,2024-07-13 17:00,2024-06-22 07:00,2024-06-25 17:00,2025-11-20 17:00,2025-11-20 17:00,2025-12-05 17:00,2025-12-05 17:00,0,20,100
CN.SEA4.4440,IMPACT - MEP OPENING REWORK - CLADDING STEEL GL 9-6 - C LINE (DS AREA),Complete,CONSTRUCTION,,SUES-4 - 9-6,EXTERIOR SKIN,,CONSTRUCTION,,INSULATED METAL PANELS,,,2024-02-13 13:00,2024-02-17 13:00,2024-02-13 13:00,2024-02-18 13:00,2025-11-20 17:00,2025-11-20 17:00,2025-10-29 07:00,2025-10-29 07:00,0,40,100
CN.SEA4.1480,DS ROOF PARAPET - SEB3 - GL 13-9 - C LINE (DS AREA) L6 (9~6),Complete,CONSTRUCTION,,SUES-4 - 9-6,EXTERIOR SKIN,,CONSTRUCTION,,INSULATED METAL PANELS,,,2024-02-20 07:00,2024-02-23 11:00,2024-02-20 07:00,2024-02-23 11:00,2025-11-20 17:00,2025-11-20 17:00,2025-12-05 17:00,2025-12-05 17:00,0,24,100
CN.SEA4.6240,INSTALL TPO ROOFING - SEA4 - GL 3-7 - C-D - L6,Complete,CONSTRUCTION,,SUES-4 - 9-6,L6 - PENTHOUSE / DS ROOF,,CONSTRUCTION,BRAZOS,TOPPING,,,2024-10-04 07:00,2024-10-10 17:00,2024-09-16 07:00,2024-09-19 17:00,2025-11-20 17:00,2025-11-20 17:00,2025-12-05 17:00,2025-12-05 17:00,0,40,100
CN.SEA4.6250,INSTALL INSULATED METAL PANEL MODULES - GL 9-6 - E LINE (AD AREA),Complete,CONSTRUCTION,,SUES-4 - 9-6,DS/AD,,CONSTRUCTION,KOVACH,INSULATED METAL PANELS,,,2024-07-18 07:00,2024-07-19 17:00,2024-06-26 07:00,2024-06-28 17:00,2025-11-20 17:00,2025-11-20 17:00,2025-11-21 07:00,2025-11-21 07:00,0,20,100
CN.SEA5.1620,IMPACT - MEP OPENING REWORK INSTALL - CLADDING STEEL GL 6-3 - C LINE (DS AREA),Complete,CONSTRUCTION,,SUES-5 - 6-1 - FIZ - GL A -E,EXTERIOR SKIN,,CONSTRUCTION,,INSULATED METAL PANELS,,,2024-03-18 08:00,2024-03-20 12:00,2024-03-15 08:00,2024-03-18 12:00,2025-11-20 17:00,2025-11-20 17:00,2025-10-29 07:00,2025-10-29 07:00,0,24,100
CN.SEA5.4111,DS ROOF PARAPET - SEB3 - GL 13-9 - C LINE (DS AREA) L6 (3~6),Complete,CONSTRUCTION,,SUES-5 - 6-1 - FIZ - GL A -E,EXTERIOR SKIN,,CONSTRUCTION,,INSULATED METAL PANELS,,,2024-03-01 08:00,2024-03-05 08:00,2024-03-01 08:00,2024-03-04 16:00,2025-11-20 17:00,2025-11-20 17:00,2025-12-05 17:00,2025-12-05 17:00,0,40,100
CN.SEA5.1630,INSTALL TPO ROOFING - SEA5 - GL 3-5 - A-D - L6 - SOUTH EAST PENTHOUSE & DOG HOUSE,Complete,CONSTRUCTION,,SOUTH EAST PENTHOUSE,L6 - PENTHOUSE / DS ROOF,,CONSTRUCTION,BRAZOS,TOPPING,,,2024-10-31 07:00,2024-11-05 17:00,2024-10-31 07:00,2024-11-11 17:00,2025-11-20 17:00,2025-11-20 17:00,2025-12-05 17:00,2025-12-05 17:00,0,40,100
EMB1028,INSTALL INSULATED METAL PANEL MODULES - GL 6-3 - E LINE (AD AREA) [3~4.5 LEAVEOUT FOR FRAMING ISSUE],Complete,CONSTRUCTION,,SUES-5 - 6-1 - FIZ - GL A -E,DS/AD,,CONSTRUCTION,KOVACH,INSULATED METAL PANELS,,,2024-07-06 07:00,2024-07-07 17:00,2024-07-03 07:00,2024-07-05 17:00,2025-11-20 17:00,2025-11-20 17:00,2025-11-21 07:00,2025-11-21 07:00,0,20,100
CN.SWB1.4850,PH1-ROOF LAYER PARAPET(FRAMING & SHEATING RIP ) - SWB4 - GL 12-9 - L4 - N,Complete,CONSTRUCTION,,SUWS-3 - 12-9,L4 - SUP Roof - FAB Roof,,CONSTRUCTION,,INSULATED METAL PANELS,,,2024-02-06 08:00,2024-02-08 14:00,2024-02-06 08:00,2024-02-08 16:00,2025-11-20 17:00,2025-11-20 17:00,2025-12-05 17:00,2025-12-05 17:00,0,16,100
CN.SEB55050,Drywall Clips & AMTS Installs Support Beams - SEB2- GL 22-25 - L4 - D LINE,Complete,CONSTRUCTION,,SUEN-2 - 22-25,L4 - SUP Roof - FAB Roof,DS/AD INTERIORS,CONSTRUCTION,,TBD Architectural Finishes,,,2024-03-23 08:00,2024-03-30 10:00,2024-03-11 00:00,2024-03-21 00:00,2025-11-20 17:00,2025-11-20 17:00,2025-06-13 08:00,2025-06-13 08:00,0,72,100
CN.SEB55060,DS STEEL SPRAY SFRM - SEB2 - GL 22-25 - C-D - L3 CEILING,Complete,CONSTRUCTION,,SUEN-2 - 22-25,L4 - SUP Roof - FAB Roof,DS/AD INTERIORS,CONSTRUCTION,ROLLING PLAINS,Fireproofing,,,2024-05-07 07:00,2024-05-14 17:00,2024-05-07 07:00,2024-05-13 17:00,2025-11-20 17:00,2025-11-20 17:00,2025-12-05 17:00,2025-12-05 17:00,0,50,100
CN.SEB55070,AD STEEL APPLY INTUMESCENT - SEB2 - GL 22-25 - D-E - L3 CEILING,Complete,CONSTRUCTION,,SUEN-2 - 22-25,L4 - SUP Roof - FAB Roof,DS/AD INTERIORS,CONSTRUCTION,ROLLING PLAINS,Fireproofing,,,2024-05-28 07:00,2024-05-31 17:00,2024-05-28 07:00,2024-06-13 17:00,2025-11-20 17:00,2025-11-20 17:00,2025-06-13 08:00,2025-06-13 08:00,0,30,100
CN.SEA3.6610,ADD FLANGE EXTENSION / CUT GRATING - D LINE - GL 13-9,Complete,CONSTRUCTION,,SUES-3 - 13-9,L3 / Waffle Slab Level,DS/AD INTERIORS,CONSTRUCTION,,,,,2024-01-22 08:00,2024-01-24 12:00,2024-01-22 08:00,2024-01-24 16:00,2025-11-20 17:00,2025-11-20 17:00,2025-06-13 08:00,2025-06-13 08:00,0,24,100
A450,IMPACT - MEP OPENINGS REWORK SHOP DRAWING APPROVAL C LINE GL 10-20 (DS AREA),Complete,CONSTRUCTION,,ENCLOSURE,EXTERIOR SKIN,,PRE - CON / BUYOUT / IMPACTS,,INSULATED METAL PANELS,,,2024-01-25 08:00,2024-01-29 16:00,2024-01-25 08:00,2024-02-11 16:00,2025-11-20 17:00,2025-11-20 17:00,2025-10-29 07:00,2025-10-29 07:00,0,48,100
A460,IMPACT - MEP OPENINGS REWORK SHOP DRAWING APPROVAL C LINE GL 3-10 (DS AREA),Complete,CONSTRUCTION,,ENCLOSURE,EXTERIOR SKIN,,PRE - CON / BUYOUT / IMPACTS,,INSULATED METAL PANELS,,,2024-01-25 08:00,2024-01-27 12:00,2024-01-25 08:00,2024-02-11 16:00,2025-11-20 17:00,2025-11-20 17:00,2025-10-29 07:00,2025-10-29 07:00,0,24,100
A470,IMPACT - MEP OPENINGS REWORK SHOP DRAWING APPROVAL D LINE GL 3-33 (AD AREA),Complete,CONSTRUCTION,,ENCLOSURE,EXTERIOR SKIN,,PRE - CON / BUYOUT / IMPACTS,,INSULATED METAL PANELS,,,2024-03-01 08:00,2024-03-12 10:00,2024-03-01 08:00,2024-03-07 16:00,2025-11-20 17:00,2025-11-20 17:00,2025-11-21 07:00,2025-11-21 07:00,0,112,100
A490,IMPACT - MEP OPENINGS REWORK SHOP DRAWING APPROVAL L LINE GL 3-30 (DS AREA),Complete,CONSTRUCTION,,ENCLOSURE,EXTERIOR SKIN,,PRE - CON / BUYOUT / IMPACTS,,INSULATED METAL PANELS,,,2024-03-04 08:00,2024-03-06 12:00,2024-03-04 08:00,2024-03-20 09:00,2025-11-20 17:00,2025-11-20 17:00,2025-11-21 07:00,2025-11-21 07:00,0,24,100
A500,IMPACT - MEP OPENINGS REWORK SHOP DRAWING APPROVAL K LINE GL 3-30 (AD AREA),Complete,CONSTRUCTION,,ENCLOSURE,EXTERIOR SKIN,,PRE - CON / BUYOUT / IMPACTS,,INSULATED METAL PANELS,,,2024-03-18 07:00,2024-03-26 15:00,2024-03-18 07:00,2024-03-28 13:00,2025-11-20 17:00,2025-11-20 17:00,2025-11-21 07:00,2025-11-21 07:00,0,68,100
CN.SEA3.6250,IMPACT - FABRICTION CLADDING STEEL FOR MEP OPENINGS REWORK C LINE GL 10-15 (DS AREA),Complete,CONSTRUCTION,,ENCLOSURE,EXTERIOR SKIN,,PRE - CON / BUYOUT / IMPACTS,,INSULATED METAL PANELS,,,2024-02-13 08:00,2024-02-16 10:00,2024-02-13 08:00,2024-02-16 16:00,2025-11-20 17:00,2025-11-20 17:00,2025-10-29 07:00,2025-10-29 07:00,0,32,100
CN.SEA3.6270,IMPACT - MEP OPENING REWORK INSTALL - CLADDING STEEL GL 13-9 - D LINE (AD AREA),Complete,CONSTRUCTION,,SUES-3 - 13-9,EXTERIOR SKIN,,CONSTRUCTION,PATRIOT,INSULATED METAL PANELS,,,2024-06-14 07:00,2024-06-18 17:00,2024-06-11 07:00,2024-06-15 17:00,2025-11-20 17:00,2025-11-20 17:00,2025-11-21 07:00,2025-11-21 07:00,0,30,100
CN.SEA3.6620,IMPACT - FABRICTION CLADDING STEEL FOR MEP OPENINGS REWORK C LINE GL 15-20 (DS AREA),Complete,CONSTRUCTION,,ENCLOSURE,EXTERIOR SKIN,,PRE - CON / BUYOUT / IMPACTS,,INSULATED METAL PANELS,,,2024-02-19 08:00,2024-02-23 10:00,2024-02-19 08:00,2024-02-26 16:00,2025-11-20 17:00,2025-11-20 17:00,2025-10-29 07:00,2025-10-29 07:00,0,32,100
CN.SEA3.6640,IMPACT - MEP OPENING REWORK INSTALL - CLADDING STEEL GL 16-13 - D LINE (AD AREA),Complete,CONSTRUCTION,,SUES-2 - 16-13,EXTERIOR SKIN,,CONSTRUCTION,PATRIOT,INSULATED METAL PANELS,,,2024-05-24 07:00,2024-05-30 17:00,2024-05-20 07:00,2024-05-27 17:00,2025-11-20 17:00,2025-11-20 17:00,2025-11-21 07:00,2025-11-21 07:00,0,30,100
CN.SEA1.5470,IMPACT - FABRICTION CLADDING STEEL FOR MEP OPENINGS REWORK C LINE GL 20-25 (DS AREA),Complete,CONSTRUCTION,,ENCLOSURE,EXTERIOR SKIN,,PRE - CON / BUYOUT / IMPACTS,,INSULATED METAL PANELS,,,2024-02-19 08:00,2024-02-23 10:00,2024-02-19 08:00,2024-02-26 16:00,2025-11-20 17:00,2025-11-20 17:00,2025-11-21 07:00,2025-11-21 07:00,0,32,100
CN.SEA1.5480,IMPACT - MEP OPENING REWORK INSTALL - CLADDING STEEL GL 19-16 - D LINE (AD AREA) [18~19 LEAVEOUT FOR MEP],Complete,CONSTRUCTION,,SUES-1 - 19-16,EXTERIOR SKIN,,CONSTRUCTION,PATRIOT,INSULATED METAL PANELS,,,2024-05-24 07:00,2024-05-30 17:00,2024-05-18 07:00,2024-05-22 17:00,2025-11-20 17:00,2025-11-20 17:00,2025-11-21 07:00,2025-11-21 07:00,0,30,100
CN.SEA5.1640,IMPACT - FABRICTION CLADDING STEEL FOR MEP OPENINGS REWORK C LINE GL 25-33 (DS AREA),Complete,CONSTRUCTION,,ENCLOSURE,EXTERIOR SKIN,,PRE - CON / BUYOUT / IMPACTS,,INSULATED METAL PANELS,,,2024-02-19 08:00,2024-02-24 08:00,2024-02-19 08:00,2024-02-26 16:00,2025-11-20 17:00,2025-11-20 17:00,2025-11-21 07:00,2025-11-21 07:00,0,40,100
CN.SEA5.1650,IMPACT - MEP OPENING REWORK INSTALL - CLADDING STEEL GL 6-3 - D LINE (AD AREA),Complete,CONSTRUCTION,,SUES-5 - 6-1 - FIZ - GL A -E,EXTERIOR SKIN,,CONSTRUCTION,PATRIOT,INSULATED METAL PANELS,,,2024-06-20 07:00,2024-06-24 17:00,2024-06-11 07:00,2024-06-15 17:00,2025-11-20 17:00,2025-11-20 17:00,2025-11-21 07:00,2025-11-21 07:00,0,30,100
CN.SEA4.1500,IMPACT - FABRICTION CLADDING STEEL FOR MEP OPENINGS REWORK C LINE GL 3-10 (DS AREA),Complete,CONSTRUCTION,,ENCLOSURE,EXTERIOR SKIN,,PRE - CON / BUYOUT / IMPACTS,,INSULATED METAL PANELS,,,2024-02-10 08:00,2024-02-14 08:00,2024-02-10 08:00,2024-02-12 16:00,2025-11-20 17:00,2025-11-20 17:00,2025-10-29 07:00,2025-10-29 07:00,0,40,100
CN.SEA4.4450,IMPACT - MEP OPENING REWORK INSTALL - CLADDING STEEL GL 9-6 - D LINE (AD AREA),Complete,CONSTRUCTION,,SUES-4 - 9-6,EXTERIOR SKIN,,CONSTRUCTION,PATRIOT,INSULATED METAL PANELS,,,2024-06-18 07:00,2024-06-21 17:00,2024-06-11 07:00,2024-06-15 17:00,2025-11-20 17:00,2025-11-20 17:00,2025-11-21 07:00,2025-11-21 07:00,0,30,100
CN.SEB1.1250,IMPACT - FABRICTION CLADDING STEEL FOR MEP OPENINGS REWORK D LINE GL 15-21 (AD AREA),Complete,CONSTRUCTION,,ENCLOSURE,EXTERIOR SKIN,,PRE - CON / BUYOUT / IMPACTS,,INSULATED METAL PANELS,,,2024-03-09 08:00,2024-03-11 12:00,2024-03-09 08:00,2024-03-12 15:00,2025-11-20 17:00,2025-11-20 17:00,2025-11-21 07:00,2025-11-21 07:00,0,24,100
CN.SEB1.6290,IMPACT - MEP OPENING REWORK INSTALL - CLADDING STEEL GL 19-22 - D LINE (AD AREA),Complete,CONSTRUCTION,,SUEN-1 - 19-22,EXTERIOR SKIN,,CONSTRUCTION,PATRIOT,INSULATED METAL PANELS,,,2024-05-03 07:00,2024-05-07 17:00,2024-05-01 07:00,2024-05-17 17:00,2025-11-20 17:00,2025-11-20 17:00,2025-11-21 07:00,2025-11-21 07:00,0,30,100
CN.SEB2.1230,IMPACT - FABRICTION CLADDING STEEL FOR MEP OPENINGS REWORK D LINE GL 21-27 (AD AREA),Complete,CONSTRUCTION,,ENCLOSURE,EXTERIOR SKIN,,PRE - CON / BUYOUT / IMPACTS,,INSULATED METAL PANELS,,,2024-03-09 08:00,2024-03-11 12:00,2024-03-09 08:00,2024-03-12 15:00,2025-11-20 17:00,2025-11-20 17:00,2025-11-21 07:00,2025-11-21 07:00,0,24,100
CN.SEB2.2381,IMPACT - MEP OPENING REWORK INSTALL - CLADDING STEEL GL 22-25 - D LINE (AD AREA),Complete,CONSTRUCTION,,SUEN-2 - 22-25,EXTERIOR SKIN,,CONSTRUCTION,PATRIOT,INSULATED METAL PANELS,,,2024-05-07 07:00,2024-05-10 17:00,2024-04-27 07:00,2024-04-30 17:00,2025-11-20 17:00,2025-11-20 17:00,2025-11-21 07:00,2025-11-21 07:00,0,30,100
CN.SEB3.1610,IMPACT - FABRICTION CLADDING STEEL FOR MEP OPENINGS REWORK D LINE GL 27-33 (AD AREA),Complete,CONSTRUCTION,,ENCLOSURE,EXTERIOR SKIN,,PRE - CON / BUYOUT / IMPACTS,,INSULATED METAL PANELS,,,2024-03-12 15:00,2024-03-19 09:00,2024-03-12 15:00,2024-03-17 12:00,2025-11-20 17:00,2025-11-20 17:00,2025-11-21 07:00,2025-11-21 07:00,0,24,100
CN.SEB3.1660,IMPACT - MEP OPENING REWORK INSTALL - CLADDING STEEL GL 25-28 - D LINE (AD AREA),Complete,CONSTRUCTION,,SUEN-3 - 25-28,EXTERIOR SKIN,,CONSTRUCTION,PATRIOT,INSULATED METAL PANELS,,,2024-05-03 07:00,2024-05-07 17:00,2024-04-12 07:00,2024-04-16 17:00,2025-11-20 17:00,2025-11-20 17:00,2025-11-21 07:00,2025-11-21 07:00,0,30,100
CN.SEB4.1250,IMPACT - FABRICTION CLADDING STEEL FOR MEP OPENINGS REWORK D LINE GL 3-9 (AD AREA),Complete,CONSTRUCTION,,ENCLOSURE,EXTERIOR SKIN,,PRE - CON / BUYOUT / IMPACTS,,,,,2024-03-12 15:00,2024-03-19 09:00,2024-03-12 15:00,2024-03-17 12:00,2025-11-20 17:00,2025-11-20 17:00,2025-11-21 07:00,2025-11-21 07:00,0,24,100
CN.SEB4.1330,IMPACT - MEP OPENING REWORK INSTALL - CLADDING STEEL GL 28-31 - D LINE (AD AREA),Complete,CONSTRUCTION,,SUEN-4 - 28-31,EXTERIOR SKIN,,CONSTRUCTION,PATRIOT,INSULATED METAL PANELS,,,2024-04-17 07:00,2024-04-19 17:00,2024-04-17 07:00,2024-04-22 17:00,2025-11-20 17:00,2025-11-20 17:00,2025-11-21 07:00,2025-11-21 07:00,0,30,100
CN.SEB5.1560,IMPACT - FABRICTION CLADDING STEEL FOR MEP OPENINGS REWORK D LINE GL 9-15 (AD AREA),Complete,CONSTRUCTION,,ENCLOSURE,EXTERIOR SKIN,,PRE - CON / BUYOUT / IMPACTS,,,,,2024-03-12 15:00,2024-03-19 09:00,2024-03-12 15:00,2024-03-17 12:00,2025-11-20 17:00,2025-11-20 17:00,2025-11-21 07:00,2025-11-21 07:00,0,24,100
CN.SEB5.1570,IMPACT - MEP OPENING REWORK INSTALL - CLADDING STEEL GL 31-33 - D LINE (AD AREA),Complete,CONSTRUCTION,,SUEN-5 - 31-33,EXTERIOR SKIN,,CONSTRUCTION,PATRIOT,INSULATED METAL PANELS,,,2024-04-12 07:00,2024-04-16 17:00,2024-04-12 07:00,2024-04-16 17:00,2025-11-20 17:00,2025-11-20 17:00,2025-11-21 07:00,2025-11-21 07:00,0,30,100
CN.SWB2.1300,IMPACT - FABRICTION CLADDING STEEL FOR MEP OPENINGS REWORK L LINE GL 18-24 (DS AREA),Complete,CONSTRUCTION,,ENCLOSURE,EXTERIOR SKIN,,PRE - CON / BUYOUT / IMPACTS,,INSULATED METAL PANELS,,,2024-03-18 15:00,2024-03-23 09:00,2024-03-14 15:00,2024-03-17 09:00,2025-11-20 17:00,2025-11-20 17:00,2025-11-21 07:00,2025-11-21 07:00,0,24,100
CN.SEB1.6610,IMPACT - MEP OPENING REWORK INSTALL - CLADDING STEEL GL 21-24 - L LINE (DS AREA),Complete,CONSTRUCTION,,SUWN-2 - 21-24,EXTERIOR SKIN,,CONSTRUCTION,,INSULATED METAL PANELS,,,2024-03-26 09:30,2024-03-28 13:30,2024-03-26 09:30,2024-04-03 00:00,2025-11-20 17:00,2025-11-20 17:00,2025-11-21 07:00,2025-11-21 07:00,0,24,100
CN.SEB1.6620,IMPACT - MEP OPENING REWORK INSTALL - CLADDING STEEL GL 21-24 - K LINE (AD AREA),Complete,CONSTRUCTION,,SUWN-2 - 21-24,EXTERIOR SKIN,,CONSTRUCTION,PATRIOT,INSULATED METAL PANELS,,,2024-04-29 07:00,2024-05-02 17:00,2024-04-20 07:00,2024-04-22 17:00,2025-11-20 17:00,2025-11-20 17:00,2025-11-21 07:00,2025-11-21 07:00,0,30,100
CN.SWB2.6660,IMPACT - FABRICTION CLADDING STEEL FOR MEP OPENINGS REWORK K LINE GL 21-27 (AD AREA),Complete,CONSTRUCTION,,ENCLOSURE,EXTERIOR SKIN,,PRE - CON / BUYOUT / IMPACTS,,INSULATED METAL PANELS,,,2024-04-01 07:00,2024-04-03 11:00,2024-03-29 07:00,2024-04-06 17:00,2025-11-20 17:00,2025-11-20 17:00,2025-11-21 07:00,2025-11-21 07:00,0,24,100
CN.SEB1.6630,IMPACT - MEP OPENING REWORK INSTALL - CLADDING STEEL GL 24-27 - L LINE (DS AREA),Complete,CONSTRUCTION,,SUWN-3 - 24-27,EXTERIOR SKIN,,CONSTRUCTION,PATRIOT,INSULATED METAL PANELS,,,2024-04-22 07:00,2024-04-24 17:00,2024-04-11 07:00,2024-04-16 17:00,2025-11-20 17:00,2025-11-20 17:00,2025-11-21 07:00,2025-11-21 07:00,0,30,100
CN.SEB1.6640,IMPACT - MEP OPENING REWORK INSTALL - CLADDING STEEL GL 24-27 - K LINE (AD AREA),Complete,CONSTRUCTION,,SUWN-3 - 24-27,EXTERIOR SKIN,,CONSTRUCTION,PATRIOT,INSULATED METAL PANELS,,,2024-04-29 07:00,2024-05-02 17:00,2024-04-15 07:00,2024-04-19 17:00,2025-11-20 17:00,2025-11-20 17:00,2025-11-21 07:00,2025-11-21 07:00,0,30,100
CN.SWB2.6670,IMPACT - FABRICTION CLADDING STEEL FOR MEP OPENINGS REWORK K LINE GL 27-33(AD AREA),Complete,CONSTRUCTION,,ENCLOSURE,EXTERIOR SKIN,,PRE - CON / BUYOUT / IMPACTS,,INSULATED METAL PANELS,,,2024-04-01 07:00,2024-04-03 11:00,2024-03-29 07:00,2024-04-06 17:00,2025-11-20 17:00,2025-11-20 17:00,2025-11-21 07:00,2025-11-21 07:00,0,24,100
CN.SEB1.6650,IMPACT - MEP OPENING REWORK INSTALL - CLADDING STEEL GL 27-31 - L LINE (DS AREA),Complete,CONSTRUCTION,,SUWN-4 - 27-30,EXTERIOR SKIN,,CONSTRUCTION,PATRIOT,INSULATED METAL PANELS,,,2024-04-29 07:00,2024-05-02 17:00,2024-04-24 07:00,2024-04-30 17:00,2025-11-20 17:00,2025-11-20 17:00,2025-11-21 07:00,2025-11-21 07:00,0,30,100
CN.SEB1.6660,IMPACT - MEP OPENING REWORK INSTALL - CLADDING STEEL GL 27-30 - K LINE (AD AREA),Complete,CONSTRUCTION,,SUWN-4 - 27-30,EXTERIOR SKIN,,CONSTRUCTION,PATRIOT,INSULATED METAL PANELS,,,2024-04-29 07:00,2024-05-02 17:00,2024-04-18 07:00,2024-04-25 17:00,2025-11-20 17:00,2025-11-20 17:00,2025-11-21 07:00,2025-11-21 07:00,0,30,100
CN.SWB2.6680,IMPACT - FABRICTION CLADDING STEEL FOR MEP OPENINGS REWORK L LINE GL 24-33 (DS AREA),Complete,CONSTRUCTION,,ENCLOSURE,EXTERIOR SKIN,,PRE - CON / BUYOUT / IMPACTS,,INSULATED METAL PANELS,,,2024-03-17 07:00,2024-03-19 11:00,2024-03-15 07:00,2024-03-17 14:00,2025-11-20 17:00,2025-11-20 17:00,2025-11-21 07:00,2025-11-21 07:00,0,24,100
CN.SEB1.6680,IMPACT - MEP OPENING REWORK INSTALL - CLADDING STEEL GL 30-33 - K LINE (AD AREA),Complete,CONSTRUCTION,,SUWN-5 - 30-33,EXTERIOR SKIN,,CONSTRUCTION,PATRIOT,INSULATED METAL PANELS,,,2024-04-15 07:00,2024-04-17 17:00,2024-04-16 07:00,2024-04-26 17:00,2025-11-20 17:00,2025-11-20 17:00,2025-11-21 07:00,2025-11-21 07:00,0,30,100
CN.SWB2.6690,IMPACT - FABRICTION CLADDING STEEL FOR MEP OPENINGS REWORK L LINE GL 3-10 (DS AREA),Complete,CONSTRUCTION,,ENCLOSURE,EXTERIOR SKIN,,PRE - CON / BUYOUT / IMPACTS,,INSULATED METAL PANELS,,,2024-03-18 08:00,2024-03-25 08:00,2024-03-18 08:00,2024-03-21 09:00,2025-11-20 17:00,2025-11-20 17:00,2025-11-25 07:00,2025-11-25 07:00,0,50,100
CN.SEB1.6690,IMPACT - MEP OPENING REWORK INSTALL - CLADDING STEEL GL 6-5 - L LINE (DS AREA),Complete,CONSTRUCTION,,FIZ 2 / SUWS 5  (GL6-1) - GL J - N - DATA CENTER 1,EXTERIOR SKIN,,CONSTRUCTION,PATRIOT,INSULATED METAL PANELS,,,2024-06-20 07:00,2024-06-24 17:00,2024-06-11 07:00,2024-06-13 17:00,2025-11-20 17:00,2025-11-20 17:00,2025-11-25 07:00,2025-11-25 07:00,0,30,100
CN.SEB1.6700,IMPACT - MEP OPENING REWORK INSTALL - CLADDING STEEL - GL 6-3 - K LINE (AD AREA),Complete,CONSTRUCTION,,FIZ 2 / SUWS 5  (GL6-1) - GL J - N - DATA CENTER 1,EXTERIOR SKIN,,CONSTRUCTION,PATRIOT,INSULATED METAL PANELS,,,2024-05-10 07:00,2024-05-14 17:00,2024-05-08 07:00,2024-05-23 17:00,2025-11-20 17:00,2025-11-20 17:00,2025-11-25 07:00,2025-11-25 07:00,0,30,100
CN.SWB2.6700,IMPACT - FABRICTION CLADDING STEEL FOR MEP OPENINGS REWORK L LINE GL 10-18 (DS AREA),Complete,CONSTRUCTION,,ENCLOSURE,EXTERIOR SKIN,,PRE - CON / BUYOUT / IMPACTS,,INSULATED METAL PANELS,,,2024-03-23 07:00,2024-03-25 11:00,2024-03-22 07:00,2024-03-24 14:00,2025-11-20 17:00,2025-11-20 17:00,2025-11-25 07:00,2025-11-25 07:00,0,24,100
CN.SEB1.6710,IMPACT - MEP OPENING REWORK INSTALL - CLADDING STEEL GL 9-6 - L LINE (DS AREA),Complete,CONSTRUCTION,,SUWS-4 - 9-6,EXTERIOR SKIN,,CONSTRUCTION,PATRIOT,INSULATED METAL PANELS,,,2024-06-13 07:00,2024-06-17 17:00,2024-06-03 07:00,2024-06-13 17:00,2025-11-20 17:00,2025-11-20 17:00,2025-11-25 07:00,2025-11-25 07:00,0,30,100
CN.SEB1.6720,IMPACT - MEP OPENING REWORK INSTALL - CLADDING STEEL - GL 9-6 - K LINE (AD AREA),Complete,CONSTRUCTION,,SUWS-4 - 9-6,EXTERIOR SKIN,,CONSTRUCTION,PATRIOT,INSULATED METAL PANELS,,,2024-05-10 07:00,2024-05-14 17:00,2024-05-08 07:00,2024-05-23 17:00,2025-11-20 17:00,2025-11-20 17:00,2025-11-25 07:00,2025-11-25 07:00,0,30,100
CN.SWB2.6710,IMPACT - FABRICTION CLADDING STEEL FOR MEP OPENINGS REWORK L LINE GL 12-9 (DA AREA),Complete,CONSTRUCTION,,ENCLOSURE,EXTERIOR SKIN,,PRE - CON / BUYOUT / IMPACTS,,INSULATED METAL PANELS,,,2024-03-23 07:00,2024-03-25 11:00,2024-03-22 13:00,2024-03-25 17:00,2025-11-20 17:00,2025-11-20 17:00,2025-11-25 07:00,2025-11-25 07:00,0,24,100
CN.SEB1.6730,IMPACT - MEP OPENING REWORK INSTALL - CLADDING STEEL GL 12-9 - L LINE (DS AREA),Complete,CONSTRUCTION,,SUWS-3 - 12-9,EXTERIOR SKIN,,CONSTRUCTION,PATRIOT,INSULATED METAL PANELS,,,2024-06-07 07:00,2024-06-11 17:00,2024-05-27 07:00,2024-06-13 17:00,2025-11-20 17:00,2025-11-20 17:00,2025-11-25 07:00,2025-11-25 07:00,0,30,100
CN.SEB1.6740,IMPACT - MEP OPENING REWORK INSTALL - CLADDING STEEL - GL 12-9 - K LINE (AD AREA),Complete,CONSTRUCTION,,SUWS-3 - 12-9,EXTERIOR SKIN,,CONSTRUCTION,PATRIOT,INSULATED METAL PANELS,,,2024-05-10 07:00,2024-05-14 17:00,2024-05-08 07:00,2024-05-23 17:00,2025-11-20 17:00,2025-11-20 17:00,2025-11-25 07:00,2025-11-25 07:00,0,30,100
CN.SWB2.6720,IMPACT - FABRICTION CLADDING STEEL FOR MEP OPENINGS REWORK K LINE GL 15-21 (AD AREA),Complete,CONSTRUCTION,,ENCLOSURE,EXTERIOR SKIN,,PRE - CON / BUYOUT / IMPACTS,,INSULATED METAL PANELS,,,2024-04-01 07:00,2024-04-03 11:00,2024-03-29 07:00,2024-04-06 17:00,2025-11-20 17:00,2025-11-20 17:00,2025-11-21 07:00,2025-11-21 07:00,0,24,100
CN.SEB1.6750,IMPACT - MEP OPENING REWORK INSTALL - CLADDING STEEL GL 15-12 - L LINE (DS AREA),Complete,CONSTRUCTION,,SUWS-2 - 15-12,EXTERIOR SKIN,,CONSTRUCTION,PATRIOT,INSULATED METAL PANELS,,,2024-06-17 07:00,2024-06-20 17:00,2024-06-11 07:00,2024-06-13 17:00,2025-11-20 17:00,2025-11-20 17:00,2025-11-25 07:00,2025-11-25 07:00,0,30,100
CN.SEB1.6760,IMPACT - MEP OPENING REWORK INSTALL - CLADDING STEEL GL 12-15 - K LINE (AD AREA),Complete,CONSTRUCTION,,SUWS-2 - 15-12,EXTERIOR SKIN,,CONSTRUCTION,PATRIOT,INSULATED METAL PANELS,,,2024-05-03 07:00,2024-05-07 17:00,2024-05-01 07:00,2024-05-07 17:00,2025-11-20 17:00,2025-11-20 17:00,2025-11-25 07:00,2025-11-25 07:00,0,30,100
CN.SWB2.6730,IMPACT - FABRICTION CLADDING STEEL FOR MEP OPENINGS REWORK K LINE GL 9-15 (AD AREA),Complete,CONSTRUCTION,,ENCLOSURE,EXTERIOR SKIN,,PRE - CON / BUYOUT / IMPACTS,,INSULATED METAL PANELS,,,2024-04-01 07:00,2024-04-03 11:00,2024-03-29 07:00,2024-04-06 17:00,2025-11-20 17:00,2025-11-20 17:00,2025-11-25 07:00,2025-11-25 07:00,0,24,100
CN.SEB1.6770,IMPACT - MEP OPENING REWORK INSTALL - CLADDING STEEL GL 15-18 - L LINE (DS AREA),Complete,CONSTRUCTION,,SUWS-1 - 18-15,EXTERIOR SKIN,,CONSTRUCTION,PATRIOT,INSULATED METAL PANELS,,,2024-06-17 07:00,2024-06-20 17:00,2024-06-11 07:00,2024-06-13 17:00,2025-11-20 17:00,2025-11-20 17:00,2025-11-25 07:00,2025-11-25 07:00,0,30,100
CN.SEB1.6780,IMPACT - MEP OPENING REWORK INSTALL - CLADDING STEEL GL 15-18 - K LINE (AD AREA),Complete,CONSTRUCTION,,SUWS-1 - 18-15,EXTERIOR SKIN,,CONSTRUCTION,PATRIOT,INSULATED METAL PANELS,,,2024-05-03 07:00,2024-05-07 17:00,2024-04-29 07:00,2024-05-02 17:00,2025-11-20 17:00,2025-11-20 17:00,2025-11-25 07:00,2025-11-25 07:00,0,30,100
CN.SWB2.6740,IMPACT - FABRICTION CLADDING STEEL FOR MEP OPENINGS REWORK K LINE GL 3-9 (AD AREA),Complete,CONSTRUCTION,,ENCLOSURE,EXTERIOR SKIN,,PRE - CON / BUYOUT / IMPACTS,,INSULATED METAL PANELS,,,2024-04-01 07:00,2024-04-03 11:00,2024-03-29 07:00,2024-04-06 17:00,2025-11-20 17:00,2025-11-20 17:00,2025-11-25 07:00,2025-11-25 07:00,0,24,100
CN.SEB1.6790,IMPACT - MEP OPENING REWORK INSTALL - CLADDING STEEL GL 18-21 - L LINE (DS AREA),Complete,CONSTRUCTION,,SUWN-1 - 18-21,EXTERIOR SKIN,,CONSTRUCTION,PATRIOT,INSULATED METAL PANELS,,,2024-05-03 07:00,2024-05-07 17:00,2024-05-14 07:00,2024-05-22 07:00,2025-11-20 17:00,2025-11-20 17:00,2025-11-21 07:00,2025-11-21 07:00,0,30,100
CN.SEB1.6800,IMPACT - MEP OPENING REWORK INSTALL - CLADDING STEEL GL 18-21 - K LINE (AD AREA),Complete,CONSTRUCTION,,SUWN-1 - 18-21,EXTERIOR SKIN,,CONSTRUCTION,PATRIOT,INSULATED METAL PANELS,,,2024-04-12 07:00,2024-04-16 17:00,2024-04-12 07:00,2024-04-16 17:00,2025-11-20 17:00,2025-11-20 17:00,2025-11-21 07:00,2025-11-21 07:00,0,30,100
CN.SEA5.6460,IMPACT [S.TIA-11] - WAITING ON MEP LAYOUTS - SEA5 - GL 6-1 - C-E - L4/E,Complete,CONSTRUCTION,,SUES-5 - 6-1 - FIZ - GL A -E,DS/AD,,CONSTRUCTION,,Steel Erector - W&W,,,2024-01-22 07:00,2024-01-25 17:00,2024-01-10 07:00,2024-04-10 17:00,2025-11-20 17:00,2025-11-20 17:00,2025-10-16 07:00,2025-10-16 07:00,0,40,100
CN.SEB1.6810,IMPACT [S.TIA-12] - WAITING ON MEP LAYOUTS - SEB1 - GL 19- 22 - C-E - L4 / INCOMPLETE - CLOSED FOR CCD 310 LAYOUT,Complete,CONSTRUCTION,,SUEN-1 - 19-22,DS/AD,,CONSTRUCTION,SECAI,Steel Erection,,,2024-01-22 07:00,2024-01-26 15:00,2024-01-10 07:00,2024-05-30 17:00,2025-11-20 17:00,2025-11-20 17:00,2025-10-16 07:00,2025-10-16 07:00,0,48,100
CN.SEB3.6560,IMPACT [S.TIA-13] - WAITING ON MEP LAYOUTS - SEB3 - GL 25-28 - C-E - L4 / INCOMPLETE - CLOSED FOR CCD 310 LAYOUT,Complete,CONSTRUCTION,,SUEN-3 - 25-28,DS/AD,,CONSTRUCTION,SECAI,Decking & Detail,,,2024-02-19 07:00,2024-02-21 11:00,2024-01-11 07:00,2024-05-30 17:00,2025-11-20 17:00,2025-11-20 17:00,2025-10-16 07:00,2025-10-16 07:00,0,24,100
CN.SEB4.6500,IMPACT [S.TIA-13] - WAITING ON MEP LAYOUTS - SEB4 - GL 28-31 - C-E - L4 / INCOMPLETE - CLOSED FOR CCD 310 LAYOUT,Complete,CONSTRUCTION,,SUEN-4 - 28-31,DS/AD,,CONSTRUCTION,SECAI,Steel Erection,,,2024-01-23 13:00,2024-01-29 13:00,2024-01-10 07:00,2024-05-30 17:00,2025-11-20 17:00,2025-11-20 17:00,2025-10-16 07:00,2025-10-16 07:00,0,40,100
CN.SEB5.6480,IMPACT [S.TIA-13] - WAITING ON MEP LAYOUTS - SEB5 - GL 31-33 - C-E - L4 / INCOMPLETE - CLOSED FOR CCD 310 LAYOUT,Complete,CONSTRUCTION,,SUEN-5 - 31-33,DS/AD,,CONSTRUCTION,SECAI,Steel Erection,,,2024-01-22 07:00,2024-01-25 17:00,2024-01-10 07:00,2024-05-30 17:00,2025-11-20 17:00,2025-11-20 17:00,2025-10-16 07:00,2025-10-16 07:00,0,40,100
CN.SWA4.1350,IMPACT SECAI MEP LEAVE OUTS GL 7-8 N LINE [SUP EXTERIOR WALL],Complete,CONSTRUCTION,,SUWS-4 - 9-6,EXTERIOR SKIN,,CONSTRUCTION,,INSULATED METAL PANELS,,,2024-03-05 08:00,2024-03-05 08:00,2024-01-24 08:00,2024-01-24 08:00,2025-11-20 17:00,2025-11-20 17:00,2025-12-05 07:00,2025-12-05 07:00,0,0,100
CN.SWA3.1330,IMPACT - SECAI MEP LEAVE OUTS / TANK GL 9-11 A LINE - ES14 - EXPECTED TURNOVER 8/30 (Now 9/23) [SUP EXTERIOR WALL],Complete,CONSTRUCTION,,SUES-3 - 13-9,EXTERIOR SKIN,,CONSTRUCTION,PATRIOT,INSULATED METAL PANELS,,,2024-01-18 08:00,2024-02-01 08:00,2024-01-18 07:00,2024-09-26 17:00,2025-11-20 17:00,2025-11-20 17:00,2025-12-05 17:00,2025-12-05 17:00,0,100,100
CN.SWA3.1870,REMAINING CLADDING STEEL - SWA-3 N LINE [SUP EXTERIOR WALL] GL 9-10 N,Complete,CONSTRUCTION,,SUWS-3 - 12-9,EXTERIOR SKIN,,CONSTRUCTION,,,,,2024-01-22 08:00,2024-01-26 08:00,2024-01-06 08:00,2024-01-14 16:00,2025-11-20 17:00,2025-11-20 17:00,2025-12-05 07:00,2025-12-05 07:00,0,40,100
CN.SEB4.1590,IMPACT [E.TIA-1] - SECAI MEP LEAVEOUT - A LINE [SUP EXTERIOR WALL],Complete,CONSTRUCTION,,SUEN-4 - 28-31,EXTERIOR SKIN,,CONSTRUCTION,,,,,2024-03-07 07:00,2024-03-07 07:00,2024-03-07 07:00,2024-03-07 07:00,2025-11-20 17:00,2025-11-20 17:00,2025-09-30 07:00,2025-09-30 07:00,0,0,100
CN.SEB4.1600,REMAINING INSTALL INSULATED METAL PANEL MODULES - GL 28-29 - A LINE [SUP EXTERIOR WALL],Complete,CONSTRUCTION,,SUEN-4 - 28-31,EXTERIOR SKIN,,CONSTRUCTION,KOVACH,INSULATED METAL PANELS,,,2024-05-24 07:00,2024-05-26 17:00,2024-05-20 07:00,2024-05-23 17:00,2025-11-20 17:00,2025-11-20 17:00,2025-09-30 07:00,2025-09-30 07:00,0,30,100
CN.SWA5.1290,IMPACT [E.TIA-1/E.TIA-7] - SECAI CRANE / LOADING DECKS IN THE WAY - GL 1-4 - N LINE [SUP EXTERIOR WALL],Complete,CONSTRUCTION,,FIZ 2 / SUWS 5  (GL6-1) - GL J - N - DATA CENTER 1,EXTERIOR SKIN,,CONSTRUCTION,PATRIOT,INSULATED METAL PANELS,,,2024-05-24 07:00,2024-06-11 17:00,2024-02-21 07:00,2024-06-15 17:00,2025-11-20 17:00,2025-11-20 17:00,2025-09-04 07:00,2025-09-04 07:00,0,100,100
CN.SWA2.1340,IMPACT - SECAI MEP LEAVE OUTS GL 13-14 - N LINE [SUP EXTERIOR WALL] - [COMMITTED TURNOVER = 05/31/24],Complete,CONSTRUCTION,,SUWS-2 - 15-12,EXTERIOR SKIN,,CONSTRUCTION,PATRIOT,INSULATED METAL PANELS,,,2024-05-31 07:00,2024-06-17 17:00,2024-01-22 07:00,2024-07-15 17:00,2025-11-20 17:00,2025-11-20 17:00,2025-12-04 17:00,2025-12-04 17:00,0,100,100
CN.SWA2.1350,REMAINING CLADDING STEEL GL 13-14 - N LINE [SUP EXTERIOR WALL],Complete,CONSTRUCTION,,SUWS-2 - 15-12,EXTERIOR SKIN,,CONSTRUCTION,PATRIOT,INSULATED METAL PANELS,,,2024-08-08 07:00,2024-08-29 17:00,2024-07-16 07:00,2024-07-18 17:00,2025-11-20 17:00,2025-11-20 17:00,2025-12-04 17:00,2025-12-04 17:00,0,140,100
CN.SWA2.1600,REMAINING INSTALL INSULATED METAL PANEL MODULES - GL 12-15 - N LINE [SUP EXTERIOR WALL],Complete,CONSTRUCTION,,SUWS-2 - 15-12,EXTERIOR SKIN,,CONSTRUCTION,KOVACH,INSULATED METAL PANELS,,,2024-08-10 07:00,2024-08-13 17:00,2024-07-29 07:00,2024-08-06 17:00,2025-11-20 17:00,2025-11-20 17:00,2025-12-04 17:00,2025-12-04 17:00,0,40,100
CN.SWA1.1800,IMPACT SECAI MEP LEAVE OUTS GL 18-17 N LINE [SUP EXTERIOR WALL],Complete,CONSTRUCTION,,SUWS-1 - 18-15,EXTERIOR SKIN,,CONSTRUCTION,,,,,2024-01-09 10:00,2024-01-09 10:00,2023-11-20 08:00,2024-02-01 08:00,2025-11-20 17:00,2025-11-20 17:00,2025-08-26 07:00,2025-08-26 07:00,0,0,100
CN.SWB1.1640,IMPACT - SECAI MEP LEAVE OUTS (BUCK HOIST) GL 18-18.5 - N LINE [SUP EXTERIOR WALL] -(new committed12/30),Complete,CONSTRUCTION,,SUWN-1 - 18-21,EXTERIOR SKIN,,CONSTRUCTION,PATRIOT,INSULATED METAL PANELS,,,2024-05-24 07:00,2024-06-11 17:00,2023-11-20 07:00,2025-01-10 17:00,2025-11-20 17:00,2025-11-20 17:00,2025-12-05 17:00,2025-12-05 17:00,0,100,100
CN.SWB2.1310,IMPACT - SECAI MEP LEAVE OUTS GL 20-21 - N LINE [SUP EXTERIOR WALL],Complete,CONSTRUCTION,,SUWN-2 - 21-24,EXTERIOR SKIN,,CONSTRUCTION,PATRIOT,INSULATED METAL PANELS,,,2024-04-01 07:00,2024-04-01 07:00,2023-11-20 07:00,2024-04-01 07:00,2025-11-20 17:00,2025-11-20 17:00,2025-09-29 07:00,2025-09-29 07:00,0,0,100
CN.SWB3.4940,IMPACT - SECAI MEP LEAVE OUTS GL 26-27 - N LINE [SUP EXTERIOR WALL] [COMMITTED TURNOVER TO YATES = 5/15],Complete,CONSTRUCTION,,SUWN-3 - 24-27,EXTERIOR SKIN,,CONSTRUCTION,PATRIOT,INSULATED METAL PANELS,,,2024-06-14 07:00,2024-09-20 17:00,2023-12-01 07:00,2024-09-09 17:00,2025-11-20 17:00,2025-11-20 17:00,2025-09-29 07:00,2025-09-29 07:00,0,600,100
CN.SEA5.1660,IMPACT - SECAI MEP LEAVE OUTS GL 1-2 A LINE [SUP EXTERIOR WALL],Complete,CONSTRUCTION,,SUES-5 - 6-1 - FIZ - GL A -E,EXTERIOR SKIN,,CONSTRUCTION,,INSULATED METAL PANELS,,,2024-04-02 07:00,2024-04-02 15:00,2024-03-15 07:00,2024-03-30 07:00,2025-11-20 17:00,2025-11-20 17:00,2025-11-21 07:00,2025-11-21 07:00,0,8,100
CN.SWA5.1850,IMPACT - STARCON VERIFY STUB COLUMNS LAYOUTS - SWA-5- GL 6-3 L4E,Complete,CONSTRUCTION,,FIZ 2 / SUWS 5  (GL6-1) - GL J - N - DATA CENTER 1,DS/AD,,CONSTRUCTION,,Steel Erector - W&W,,,2024-01-17 07:00,2024-01-20 17:00,2024-01-16 13:00,2024-01-25 16:00,2025-11-20 17:00,2025-11-20 17:00,2025-06-13 08:00,2025-06-13 08:00,0,40,100
CN.SWA1.6570,IMPACT - WAITING ON MEP LAYOUTS - SWB1 - GL 18-15 L4 / INCOMPLETE - CLOSED FOR CCD 310 LAYOUT,Complete,CONSTRUCTION,,SUWS-1 - 18-15,DS/AD,,CONSTRUCTION,SECAI,Decking & Detail,,,2024-01-22 07:00,2024-01-25 17:00,2024-01-10 07:00,2024-05-29 17:00,2025-11-20 17:00,2025-11-20 17:00,2025-12-05 17:00,2025-12-05 17:00,0,40,100
CN.SWA2.6590,IMPACT [S8] - WAITING ON MEP LAYOUTS - SWA-2- GL 15-12 L4 / INCOMPLETE - CLOSED FOR CCD 310 LAYOUT,Complete,CONSTRUCTION,,SUWS-2 - 15-12,DS/AD,,CONSTRUCTION,SECAI,Steel Erector - W&W,,,2024-01-23 13:00,2024-01-29 13:00,2024-01-10 07:00,2024-05-30 17:00,2025-11-20 17:00,2025-11-20 17:00,2025-12-05 17:00,2025-12-05 17:00,0,40,100
CN.SWA4.6450,IMPACT - WAITING ON MEP LAYOUTS - SWA4- GL 9-6 - L4 / INCOMPLETE - CLOSED FOR CCD 310 LAYOUT,Complete,CONSTRUCTION,,SUWS-4 - 9-6,DS/AD,,CONSTRUCTION,SECAI,Steel Erector - W&W,,,2024-01-26 15:00,2024-01-31 17:00,2024-01-10 07:00,2024-05-23 17:00,2025-11-20 17:00,2025-11-20 17:00,2025-12-05 17:00,2025-12-05 17:00,0,32,100
CN.SWA5.1860,IMPACT - WAITING ON MEP LAYOUTS - SWA5 - GL 6-3 - L4 / INCOMPLETE - CLOSED FOR CCD 310 LAYOUT,Complete,CONSTRUCTION,,FIZ 2 / SUWS 5  (GL6-1) - GL J - N - DATA CENTER 1,DS/AD,,CONSTRUCTION,SECAI,Steel Erector - W&W,,,2024-02-01 09:00,2024-02-07 09:00,2024-01-10 07:00,2024-05-30 17:00,2025-11-20 17:00,2025-11-20 17:00,2025-12-05 17:00,2025-12-05 17:00,0,40,100
CN.SWA2.6600,IMPACT - TINDAL FIXES COMPLETION - SWA2 - GL 15-12 - L3,Complete,CONSTRUCTION,,SUWS-2 - 15-12,L3 / Waffle Slab Level,DS/AD INTERIORS,CONSTRUCTION,SECAI,SOMD,,,2024-01-23 13:00,2024-01-29 13:00,2024-01-10 07:00,2024-05-24 17:00,2025-11-20 17:00,2025-11-20 17:00,2025-12-05 17:00,2025-12-05 17:00,0,40,100
CN.SEB3.6570,IMPACT - DESIGN CHANGE - RETROFIT STEEL APPROVAL DRB-001 SEQ#9991 - SEB3 - GL 32-33 - C-E - L4,Complete,CONSTRUCTION,,SUEN-3 - 25-28,DS/AD,,CONSTRUCTION,W&W,Decking & Detail,,,2024-04-08 07:00,2024-05-09 17:00,2024-01-24 07:00,2024-03-29 17:00,2025-11-20 17:00,2025-11-20 17:00,2025-10-16 07:00,2025-10-16 07:00,0,200,100
CN.SEA5.4121,IMPACT [S.TIA-15] - DESIGN CHANGE - RETROFIT STEEL APPROVAL FABRICATION INSTALL - SEA1 - GL 1-6 - L3 - C-E,Complete,CONSTRUCTION,,SUES-5 - 6-1 - FIZ - GL A -E,DS/AD,,CONSTRUCTION,,Steel Erector - W&W,,,2024-03-25 07:00,2024-04-23 17:00,2024-01-26 00:00,2024-03-22 16:00,2025-11-20 17:00,2025-11-20 17:00,2025-10-16 07:00,2025-10-16 07:00,0,200,100
CN.SEA5.6380,REMAINING DSAD PENETRATION SUPPORT STEEL FRAMING - SEA2 - GL 16-13 - C-E - L3,Complete,CONSTRUCTION,,SUES-2 - 16-13,DS/AD,,CONSTRUCTION,PERRY & PERRY,Decking & Detail,,,2024-04-19 07:00,2024-04-25 17:00,2024-04-15 07:00,2024-04-19 17:00,2025-11-20 17:00,2025-11-20 17:00,2025-10-16 07:00,2025-10-16 07:00,0,50,100
CN.SEB1.5060,IMPACT - DESIGN CHANGE - RETROFIT STEEL APPROVAL FABRICATION INSTALL SEQ#9991 - SEA1 - GL 19-20 - L2-L4,Complete,CONSTRUCTION,,SUEN-1 - 19-22,DS/AD,,CONSTRUCTION,W&W,Steel Erector - W&W,,,2024-02-26 08:00,2024-03-29 08:00,2024-01-15 07:00,2024-06-03 17:00,2025-11-20 17:00,2025-11-20 17:00,2025-12-05 17:00,2025-12-05 17:00,0,200,100
CN.SWA3.1900,IMPACT - DESIGN CHANGE - RETROFIT STEEL APPROVAL FABRICATION INSTALL SEQ#9901 - SWA3 - GL 12-9 - L2-L4,Complete,CONSTRUCTION,,SUWS-3 - 12-9,DS/AD,,CONSTRUCTION,W&W,Steel Erection,,,2024-03-25 07:00,2024-04-23 17:00,2024-02-05 07:00,2024-07-03 17:00,2025-11-20 17:00,2025-11-20 17:00,2025-12-05 17:00,2025-12-05 17:00,0,200,100
CN.SWA5.1900,IMPACT [S.TIA-15] - DESIGN CHANGE - RETROFIT STEEL APPROVAL/FAB/INSTALL DRB-001 SEQ#9940 - SWA5 - GL 1-3 - L4/E,Complete,CONSTRUCTION,,FIZ 2 / SUWS 5  (GL6-1) - GL J - N - DATA CENTER 1,DS/AD,,CONSTRUCTION,W&W,Steel Erector - W&W,,,2024-02-06 13:00,2024-03-05 13:00,2023-11-15 07:00,2023-12-05 17:00,2025-11-20 17:00,2025-11-20 17:00,2025-06-13 08:00,2025-06-13 08:00,0,200,100
CN.SWB5.6120,INSTALL TOP COAT CRICKET - GL 29-31 - L4 - L-N - ROOF (Including Pent house Ramp),Complete,CONSTRUCTION,,SUWN-5 - 30-33,L4 - SUP Roof - FAB Roof,,CONSTRUCTION,BRAZOS,TOPPING,,,2024-12-02 07:00,2024-12-02 17:00,2024-12-02 07:00,2024-12-02 17:00,2025-11-20 17:00,2025-11-20 17:00,2025-12-05 17:00,2025-12-05 17:00,0,10,100
CN.SWA3.1720,IMPACT REMOVE CLADDING STEEL FOR LEAVE OUT - A LINE [SUP EXTERIOR WALL],Complete,CONSTRUCTION,,SUES-3 - 13-9,EXTERIOR SKIN,,CONSTRUCTION,,,,,2024-02-19 07:00,2024-02-23 17:00,2024-02-19 07:00,2024-02-23 17:00,2025-11-20 17:00,2025-11-20 17:00,2025-12-05 17:00,2025-12-05 17:00,0,40,100
CN.SWB1.1650,INSTALL INSULATED METAL PANEL MODULES - GL 17-18.5 - N LINE [SUP EXTERIOR WALL]- (BUCK HOIST),Complete,CONSTRUCTION,,SUWN-1 - 18-21,EXTERIOR SKIN,,CONSTRUCTION,KOVACH,INSULATED METAL PANELS,,,2025-05-06 07:00,2025-05-12 17:00,2025-04-02 07:00,2025-04-11 17:00,2025-11-20 17:00,2025-11-20 17:00,2025-12-05 17:00,2025-12-05 17:00,0,50,100
CN.SWB2.1320,IMPACT [ES 28] - REMAINING CLADDING STEEL AT OPENINGS GL 21-24 - N LINE [SUP EXTERIOR WALL],Complete,CONSTRUCTION,,SUWN-2 - 21-24,EXTERIOR SKIN,,CONSTRUCTION,PATRIOT,INSULATED METAL PANELS,,,2024-04-04 07:00,2024-04-12 17:00,2024-04-04 07:00,2024-04-11 17:00,2025-11-20 17:00,2025-11-20 17:00,2025-09-29 07:00,2025-09-29 07:00,0,50,100
CN.SWB2.1330,REMAINING INSTALL INSULATED METAL PANEL MODULES - GL 21-24 - N LINE [SUP EXTERIOR WALL],Complete,CONSTRUCTION,,SUWN-2 - 21-24,EXTERIOR SKIN,,CONSTRUCTION,KOVACH,INSULATED METAL PANELS,,,2024-05-04 07:00,2024-05-10 17:00,2024-04-30 07:00,2024-05-22 17:00,2025-11-20 17:00,2025-11-20 17:00,2025-09-29 07:00,2025-09-29 07:00,0,50,100
CN.SWA4.1190,Remianing PH1 - CLADDING STEEL - SWA4 - GL 9-6 - N line [SUP EXTERIOR WALL],Complete,CONSTRUCTION,,SUWS-4 - 9-6,EXTERIOR SKIN,,CONSTRUCTION,,INSULATED METAL PANELS,,,2024-03-02 08:00,2024-03-06 08:00,2024-01-24 08:00,2024-01-30 16:00,2025-11-20 17:00,2025-11-20 17:00,2025-12-05 07:00,2025-12-05 07:00,0,40,100
CN.SWA4.1630,REMAINING  INSTALL INSULATED METAL PANEL MODULES - SWA4 - GL 9-6 - N LINE [SUP EXTERIOR WALL],Complete,CONSTRUCTION,,SUWS-4 - 9-6,EXTERIOR SKIN,,CONSTRUCTION,,INSULATED METAL PANELS,,,2024-02-01 08:00,2024-02-05 08:00,2024-02-12 08:00,2024-02-17 16:00,2025-11-20 17:00,2025-11-20 17:00,2025-12-05 07:00,2025-12-05 07:00,0,40,100
CN.SWA4.6550,PH1 - CLADDING STEEL - GL 1-4 - N LINE [SUP EXTERIOR WALL],Complete,CONSTRUCTION,,FIZ 2 / SUWS 5  (GL6-1) - GL J - N - DATA CENTER 1,EXTERIOR SKIN,,CONSTRUCTION,PATRIOT,INSULATED METAL PANELS,,,2024-04-01 07:00,2024-04-05 17:00,2024-04-01 07:00,2024-06-17 17:00,2025-11-20 17:00,2025-11-20 17:00,2025-09-04 07:00,2025-09-04 07:00,0,50,100
CN.SWA4.6560,INSTALL INSULATED METAL PANEL MODULES - GL 1-4 - N LINE [SUP EXTERIOR WALL] (TEMP POWER LEAVE OUT),Complete,CONSTRUCTION,,FIZ 2 / SUWS 5  (GL6-1) - GL J - N - DATA CENTER 1,EXTERIOR SKIN,,CONSTRUCTION,KOVACH,INSULATED METAL PANELS,,,2025-10-01 07:00,2025-10-01 17:00,2025-09-19 07:00,2025-09-19 17:00,2025-11-20 17:00,2025-11-20 17:00,2025-11-26 07:00,2025-11-26 07:00,0,10,100
CN.SEB1.6850,IMPACT [S.TIA-20] - LT-0353 GRATING REPLACEMENT - SEA1 - GL 19-25 - L2,Complete,CONSTRUCTION,,STEEL,L1 - Fndn Slab,,PRE - CON / BUYOUT / IMPACTS,,Steel Erector - W&W,,,2024-02-19 08:00,2024-02-29 08:00,2024-02-16 08:00,2024-02-28 11:00,2025-11-20 17:00,2025-11-20 17:00,2025-10-16 07:00,2025-10-16 07:00,0,80,100
CN.BB31.ST.1200,COLUMN CRACK REPAIR - SURFACE PREP & AMATECH REBAR INSTALL - 1st Priority,Complete,CONSTRUCTION,,B3 - Area 10 (Gridlines 24-27),L2 - SubFab Level,,CONSTRUCTION,,,,,2024-02-20 08:00,2024-02-22 14:00,2024-02-20 08:00,2024-02-21 16:00,2025-11-20 17:00,2025-11-20 17:00,2025-12-05 17:00,2025-12-05 17:00,0,16,100
CN.BB31.ST.1210,"COLUMN CRACK REPAIR FORM, SATURATION & SIKA 211 INJECTION- 1ST Priority",Complete,CONSTRUCTION,,B3 - Area 10 (Gridlines 24-27),L2 - SubFab Level,,CONSTRUCTION,,,,,2024-03-07 08:00,2024-03-08 14:00,2024-03-07 08:00,2024-03-08 14:00,2025-11-20 17:00,2025-11-20 17:00,2025-12-05 17:00,2025-12-05 17:00,0,16,100
CN.BB31.ST.1220,"COLUMN CRACK REPAIR - INSTALL FORM , CURE & REMOVE FORM - 1st Priority",Complete,CONSTRUCTION,,B3 - Area 10 (Gridlines 24-27),L2 - SubFab Level,,CONSTRUCTION,,Pour Concrete,,,2024-03-09 08:00,2024-03-26 10:00,2024-03-09 08:00,2024-03-22 17:00,2025-11-20 17:00,2025-11-20 17:00,2025-12-05 17:00,2025-12-05 17:00,0,112,100
CN.BB31.ST.1230,"COLUMN CRACK REPAIR- PREP, PRIME & LAY CFRP - 1st Priority",Complete,CONSTRUCTION,,B3 - Area 10 (Gridlines 24-27),L2 - SubFab Level,,CONSTRUCTION,,Pour Concrete,,,2024-04-04 08:30,2024-04-04 16:30,2024-04-04 08:30,2024-04-04 16:30,2025-11-20 17:00,2025-11-20 17:00,2025-12-05 17:00,2025-12-05 17:00,0,8,100
CN.BB31.ST.1240,"COLUMN CRACK REPAIR - PULL TEST, REPAIR PULL TEST & PAINT - 1st Priority - B3 - GL 23-27 - L2",Complete,CONSTRUCTION,,B3 - Area 10 (Gridlines 24-27),L2 - SubFab Level,,CONSTRUCTION,INFINITY,Pour Concrete,,,2024-04-24 07:00,2024-04-29 17:00,2024-04-24 07:00,2024-04-27 17:00,2025-11-20 17:00,2025-11-20 17:00,2025-12-05 17:00,2025-12-05 17:00,0,40,100
CN.BB31.ST.1250,COLUMN CRACK REPAIR - SURFACE PREP & AMATECH REBAR INSTALL - 2nd Priority,Complete,CONSTRUCTION,,B1 - Area 8 (Gridlines 18-21),L2 - SubFab Level,,CONSTRUCTION,,,,,2024-02-22 07:00,2024-02-23 13:00,2024-02-21 08:00,2024-02-22 16:00,2025-11-20 17:00,2025-11-20 17:00,2025-12-05 17:00,2025-12-05 17:00,0,16,100
CN.BB31.ST.1260,"COLUMN CRACK REPAIR FORM, SATURATION & SIKA 211 INJECTION- 2nd Priority",Complete,CONSTRUCTION,,B1 - Area 8 (Gridlines 18-21),L2 - SubFab Level,,CONSTRUCTION,,,,,2024-03-09 08:00,2024-03-10 14:00,2024-03-09 08:00,2024-03-10 16:00,2025-11-20 17:00,2025-11-20 17:00,2025-12-05 17:00,2025-12-05 17:00,0,16,100
CN.BB31.ST.1270,"COLUMN CRACK REPAIR - INSTALL FORM , CURE & REMOVE FORM- 2nd Priority",Complete,CONSTRUCTION,,B1 - Area 8 (Gridlines 18-21),L2 - SubFab Level,,CONSTRUCTION,,Pour Concrete,,,2024-03-12 07:00,2024-03-29 09:00,2024-03-12 07:00,2024-03-19 16:00,2025-11-20 17:00,2025-11-20 17:00,2025-12-05 17:00,2025-12-05 17:00,0,112,100
CN.BB31.ST.1290,"COLUMN CRACK REPAIR- PREP, PRIME & LAY CFRP - 2nd Priority",Complete,CONSTRUCTION,,B1 - Area 8 (Gridlines 18-21),L2 - SubFab Level,,CONSTRUCTION,,Pour Concrete,,,2024-03-27 15:00,2024-03-28 13:00,2024-03-27 15:00,2024-04-02 13:00,2025-11-20 17:00,2025-11-20 17:00,2025-12-05 17:00,2025-12-05 17:00,0,8,100
CN.BB31.ST.1300,"COLUMN CRACK REPAIR - PULL TEST, REPAIR PULL TEST & PAINT- 2nd Priority",Complete,CONSTRUCTION,,B1 - Area 8 (Gridlines 18-21),L2 - SubFab Level,,CONSTRUCTION,INFINITY,Pour Concrete,,,2024-05-02 07:00,2024-05-07 17:00,2024-05-02 07:00,2024-05-06 17:00,2025-11-20 17:00,2025-11-20 17:00,2025-12-05 17:00,2025-12-05 17:00,0,40,100
CN.BB31.ST.1310,COLUMN CRACK REPAIR - SURFACE PREP & AMATECH REBAR INSTALL - 3rd Priority,Complete,CONSTRUCTION,,B2 - Area 9 (Gridlines 21-24),L2 - SubFab Level,,CONSTRUCTION,,,,,2024-02-22 08:00,2024-02-23 14:00,2024-02-22 08:00,2024-02-23 16:00,2025-11-20 17:00,2025-11-20 17:00,2025-12-05 17:00,2025-12-05 17:00,0,16,100
CN.BB31.ST.1320,"COLUMN CRACK REPAIR FORM, SATURATION & SIKA 211 INJECTION- 3rd Priority",Complete,CONSTRUCTION,,B2 - Area 9 (Gridlines 21-24),L2 - SubFab Level,,CONSTRUCTION,,,,,2024-03-09 08:00,2024-03-10 14:00,2024-03-09 08:00,2024-03-10 16:00,2025-11-20 17:00,2025-11-20 17:00,2025-12-05 17:00,2025-12-05 17:00,0,16,100
CN.BB31.ST.1330,"COLUMN CRACK REPAIR - INSTALL FORM , CURE & REMOVE FORM- 3rdPriority",Complete,CONSTRUCTION,,B2 - Area 9 (Gridlines 21-24),L2 - SubFab Level,,CONSTRUCTION,,Pour Concrete,,,2024-03-12 07:00,2024-03-29 09:00,2024-03-12 07:00,2024-03-20 16:00,2025-11-20 17:00,2025-11-20 17:00,2025-12-05 17:00,2025-12-05 17:00,0,112,100
CN.BB31.ST.1340,"COLUMN CRACK REPAIR- PREP, PRIME & LAY CFRP - 3rd Priority",Complete,CONSTRUCTION,,B2 - Area 9 (Gridlines 21-24),L2 - SubFab Level,,CONSTRUCTION,,Pour Concrete,,,2024-03-27 07:00,2024-03-27 15:00,2024-03-27 07:00,2024-04-02 15:00,2025-11-20 17:00,2025-11-20 17:00,2025-12-05 17:00,2025-12-05 17:00,0,8,100
CN.BB31.ST.1350,"COLUMN CRACK REPAIR - PULL TEST, REPAIR PULL TEST & PAINT - 3rd Priority - B2 - GL 21-24 - L2",Complete,CONSTRUCTION,,B2 - Area 9 (Gridlines 21-24),L2 - SubFab Level,,CONSTRUCTION,CHERRY COATING,Pour Concrete,,,2024-05-06 07:00,2024-05-10 17:00,2024-05-06 07:00,2024-05-10 17:00,2025-11-20 17:00,2025-11-20 17:00,2025-12-05 17:00,2025-12-05 17:00,0,40,100
CN.BB31.ST.1360,COLUMN CRACK REPAIR - SURFACE PREP & AMATECH REBAR INSTALL - 4th Priority,Complete,CONSTRUCTION,,A1 - Area 6 (Gridlines 18-15),L2 - SubFab Level,,CONSTRUCTION,,,,,2024-02-23 08:00,2024-02-24 14:00,2024-02-23 08:00,2024-02-24 16:00,2025-11-20 17:00,2025-11-20 17:00,2025-12-05 17:00,2025-12-05 17:00,0,16,100
CN.BB31.ST.1370,"COLUMN CRACK REPAIR FORM, SATURATION & SIKA 211 INJECTION- 4th Priority",Complete,CONSTRUCTION,,A1 - Area 6 (Gridlines 18-15),L2 - SubFab Level,,CONSTRUCTION,,,,,2024-03-17 07:00,2024-03-18 13:00,2024-03-13 07:00,2024-03-15 14:00,2025-11-20 17:00,2025-11-20 17:00,2025-12-05 17:00,2025-12-05 17:00,0,16,100
CN.BB31.ST.1380,"COLUMN CRACK REPAIR - INSTALL FORM , CURE & REMOVE FORM- 4thPriority",Complete,CONSTRUCTION,,A1 - Area 6 (Gridlines 18-15),L2 - SubFab Level,,CONSTRUCTION,,Pour Concrete,,,2024-03-17 07:00,2024-03-26 17:00,2024-03-16 08:00,2024-03-22 14:00,2025-11-20 17:00,2025-11-20 17:00,2025-12-05 17:00,2025-12-05 17:00,0,80,100
CN.BB31.ST.1390,"COLUMN CRACK REPAIR- PREP, PRIME & LAY CFRP - 4th Priority",Complete,CONSTRUCTION,,A1 - Area 6 (Gridlines 18-15),L2 - SubFab Level,,CONSTRUCTION,,Pour Concrete,,,2024-03-27 15:00,2024-03-28 13:00,2024-03-27 15:00,2024-04-02 13:00,2025-11-20 17:00,2025-11-20 17:00,2025-12-05 17:00,2025-12-05 17:00,0,8,100
CN.BB31.ST.1400,"COLUMN CRACK REPAIR - PULL TEST, REPAIR PULL TEST & PAINT- 4thPriority",Complete,CONSTRUCTION,,A1 - Area 6 (Gridlines 18-15),L2 - SubFab Level,,CONSTRUCTION,,Pour Concrete,,,2024-04-15 07:00,2024-04-18 09:00,2024-04-08 11:00,2024-04-09 17:00,2025-11-20 17:00,2025-11-20 17:00,2025-12-05 17:00,2025-12-05 17:00,0,32,100
CN.BB31.ST.1410,COLUMN CRACK REPAIR - SURFACE PREP & AMATECH REBAR INSTALL - 5th Priority,Complete,CONSTRUCTION,,A2 - Area 5 (Gridlines 15-12),L2 - SubFab Level,,CONSTRUCTION,,,,,2024-03-09 08:00,2024-03-11 12:00,2024-03-09 08:00,2024-03-12 16:00,2025-11-20 17:00,2025-11-20 17:00,2025-12-05 17:00,2025-12-05 17:00,0,24,100
CN.BB31.ST.1420,"COLUMN CRACK REPAIR FORM, SATURATION & SIKA 211 INJECTION- 5th Priority",Complete,CONSTRUCTION,,A2 - Area 5 (Gridlines 15-12),L2 - SubFab Level,,CONSTRUCTION,,Pour Concrete,,,2024-03-17 07:00,2024-03-19 11:00,2024-03-15 07:00,2024-03-17 16:00,2025-11-20 17:00,2025-11-20 17:00,2025-12-05 17:00,2025-12-05 17:00,0,24,100
CN.BB31.ST.1430,"COLUMN CRACK REPAIR - INSTALL FORM , CURE & REMOVE FORM- 5thPriority",Complete,CONSTRUCTION,,A2 - Area 5 (Gridlines 15-12),L2 - SubFab Level,,CONSTRUCTION,,Pour Concrete,,,2024-03-18 08:00,2024-03-31 10:00,2024-03-18 08:00,2024-03-22 15:00,2025-11-20 17:00,2025-11-20 17:00,2025-12-05 17:00,2025-12-05 17:00,0,112,100
CN.BB31.ST.1440,"COLUMN CRACK REPAIR- PREP, PRIME & LAY CFRP - 5th Priority",Complete,CONSTRUCTION,,A2 - Area 5 (Gridlines 15-12),L2 - SubFab Level,,CONSTRUCTION,,Pour Concrete,,,2024-03-27 13:00,2024-03-29 09:00,2024-03-27 13:00,2024-04-02 09:00,2025-11-20 17:00,2025-11-20 17:00,2025-12-05 17:00,2025-12-05 17:00,0,16,100
CN.BB31.ST.1450,"COLUMN CRACK REPAIR - PULL TEST, REPAIR PULL TEST & PAINT - 5th Priority - A2 - GL 15-12 - L2",Complete,CONSTRUCTION,,A2 - Area 5 (Gridlines 15-12),L2 - SubFab Level,,CONSTRUCTION,INFINITY,Pour Concrete,,,2024-05-10 07:00,2024-05-20 17:00,2024-05-10 07:00,2024-05-16 17:00,2025-11-20 17:00,2025-11-20 17:00,2025-12-05 17:00,2025-12-05 17:00,0,60,100
INT.P2.MW.1300,SHOP DRAWING APPROVAL REVISE & RESUBMIT COUNTER TOPS,Complete,CONSTRUCTION,,COUNTERTOPS,MILLWORK,,PRE - CON / BUYOUT / IMPACTS,H2I,,,,2024-02-29 08:00,2024-03-29 14:00,2024-02-29 07:00,2024-04-04 17:00,2025-11-20 17:00,2025-11-20 17:00,2025-11-20 07:00,2025-11-20 07:00,0,176,100
CN.SEB1.6870,LT-0353 GRATING REPLACEMENT ORDER - SEA1 - GL 19-24 - L2,Complete,CONSTRUCTION,,STEEL,L1 - Fndn Slab,,PRE - CON / BUYOUT / IMPACTS,,Steel Erector - W&W,,,2024-02-19 08:00,2024-02-29 08:00,2024-02-28 07:00,2024-04-04 17:00,2025-11-20 17:00,2025-11-20 17:00,2025-10-16 07:00,2025-10-16 07:00,0,80,100
CN.SWA1.6630,IMPACT - WW CCD 127 L4E ROOF DRAIN PENETRATION STEEL - SWB-1- GL 18-15 - L4E,Complete,CONSTRUCTION,,SUWS-1 - 18-15,DS/AD,,CONSTRUCTION,,Decking & Detail,,,2024-04-25 07:00,2024-05-30 17:00,2024-03-09 07:00,2024-04-01 17:00,2025-11-20 17:00,2025-11-20 17:00,2025-06-13 08:00,2025-06-13 08:00,0,200,100
CN.SWB2.1200,IMPACT - STARCON CRANE IMPACTING EXTERIOR - GL 17-21 - N LINE [SUP EXTERIOR WALL] (COLLAPSED / REMOVED FROM SITE),Complete,CONSTRUCTION,,SUWN-1 - 18-21,EXTERIOR SKIN,,CONSTRUCTION,KOVACH,INSULATED METAL PANELS,,,2024-02-22 08:00,2024-02-28 08:00,2024-02-22 07:00,2024-04-30 17:00,2025-11-20 17:00,2025-11-20 17:00,2025-11-21 07:00,2025-11-21 07:00,0,40,100
CN.AB.AR.2130,INSTALL GRATING AROUND STAIRS - STAIR 21 - MECHANICAL ROOM 1 NORTH - SEA3 - GL 13-9 - C-A - L1,Complete,CONSTRUCTION,,SUES-3 - 13-9,L1 - Fndn Slab,MECH RM 1,CONSTRUCTION,PATRIOT,Steel Erection,,,2023-10-27 07:00,2023-10-30 17:00,2023-10-27 07:00,2023-11-01 17:00,2025-11-20 17:00,2025-11-20 17:00,2025-12-05 17:00,2025-12-05 17:00,0,20,100
CN.SEB15200,INSTALL GRATING AROUND STAIRS - METAL STAIR 20 - SEA1 - GL 18-19 - C-A - L3-L4,Complete,CONSTRUCTION,,SUES-1 - 19-16,L3 / Waffle Slab Level,,CONSTRUCTION,PATRIOT,Steel Erection,,,2024-05-10 07:00,2024-05-13 17:00,2024-05-10 07:00,2024-05-11 17:00,2025-11-20 17:00,2025-11-20 17:00,2025-12-03 07:00,2025-12-03 07:00,0,20,100
CN.SEB3.1251,INSTALL GRATING AROUND STAIRS - - SEB3 - GL 25-28 - L1 - C-A - WAFER I/O,Complete,CONSTRUCTION,,SUEN-3 - 25-28,L1 - Fndn Slab,WAFER I/O RM,CONSTRUCTION,,Steel Erection,,,2024-04-08 07:00,2024-04-11 13:00,2024-03-21 08:00,2024-03-22 15:00,2025-11-20 17:00,2025-11-20 17:00,2025-11-26 07:00,2025-11-26 07:00,0,16,100
CN.SWB5.6820,INSTALL GRATING AROUND STAIR 50 - SWB-5 GL 30-29 - L-K,Not Started,CONSTRUCTION,,SUWN-4 - 27-30,L1 - Fndn Slab,DS/AD INTERIORS,CONSTRUCTION,PATRIOT,Steel Erection,,,2025-11-21 07:00,2025-11-24 17:00,,,2025-11-21 07:00,2025-11-24 17:00,2025-12-04 07:00,2025-12-05 17:00,20,20,0
CN.SWB1.5100,IMPACT EXPANSION JOINT POUR BACK - GL 9 - L4,Complete,CONSTRUCTION,,SUES-3 - 13-9,L4 - SUP Roof - FAB Roof,,CONSTRUCTION,BAKER,TOPPING,,,2024-06-07 07:00,2024-06-14 17:00,2024-05-20 07:00,2024-05-31 17:00,2025-11-20 17:00,2025-11-20 17:00,2025-12-05 17:00,2025-12-05 17:00,0,50,100
CN.SWA3.1950,EXPANSION JOINT WATER PROOFING - GL 9 - L4,Complete,CONSTRUCTION,,SUES-3 - 13-9,L4 - SUP Roof - FAB Roof,,CONSTRUCTION,BRAZOS,TOPPING,,,2024-06-14 07:00,2024-06-21 17:00,2024-06-06 07:00,2024-06-26 17:00,2025-11-20 17:00,2025-11-20 17:00,2025-12-05 17:00,2025-12-05 17:00,0,50,100
CN.SWA3.1960,EXPANSION JOINT TOPPING SLAB - GL 9 - L4,Complete,CONSTRUCTION,,SUES-3 - 13-9,L4 - SUP Roof - FAB Roof,,CONSTRUCTION,BAKER,TOPPING,,,2024-07-01 07:00,2024-07-09 17:00,2024-06-27 07:00,2024-06-27 17:00,2025-11-20 17:00,2025-11-20 17:00,2025-12-05 17:00,2025-12-05 17:00,0,50,100
CN.SWB1.5110,IMPACT EXPANSION JOINT POUR BACK GL 25,Complete,CONSTRUCTION,,SUEN-3 - 25-28,L4 - SUP Roof - FAB Roof,,CONSTRUCTION,BAKER,TOPPING,,,2024-10-04 07:00,2024-10-11 17:00,2023-09-23 07:00,2023-09-26 17:00,2025-11-20 17:00,2025-11-20 17:00,2025-12-05 17:00,2025-12-05 17:00,0,50,100
INT.P1.FP.1240,IMPACT SECAI PLAFORM APPROVAL & INSTALL FOR DS STEEL SPRAY SRFM,Complete,CONSTRUCTION,,Fireproofing,FIREPROOFING,,PRE - CON / BUYOUT / IMPACTS,ROLLING PLAINS,,,,2024-03-11 07:00,2024-04-15 17:00,2024-03-11 07:00,2024-04-08 17:00,2025-11-20 17:00,2025-11-20 17:00,2025-11-21 07:00,2025-11-21 07:00,0,200,100
CN.SEA1.6550,IMPACT [ES-15] - SECAI MEP LEAVEOUT / SUPER DECK IN USE - GL 17-16 - A LINE [SUP EXTERIOR WALL],Complete,CONSTRUCTION,,SUES-1 - 19-16,EXTERIOR SKIN,,CONSTRUCTION,PATRIOT,INSULATED METAL PANELS,,,2024-05-24 07:00,2024-06-24 17:00,2024-03-07 07:00,2024-07-09 17:00,2025-11-20 17:00,2025-11-20 17:00,2025-09-04 07:00,2025-09-04 07:00,0,170,100
CN.SWA5.1300,IMPACT [E.TIA-1/E.TIA-7] - STARCON CRANE / MEP SUPERDECK INTERFERING WITH AREA G 3-1 - N LINE [SUP EXTERIOR WALL],Complete,CONSTRUCTION,,FIZ 2 / SUWS 5  (GL6-1) - GL J - N - DATA CENTER 1,EXTERIOR SKIN,,CONSTRUCTION,,INSULATED METAL PANELS,,,2024-03-25 07:00,2024-04-03 17:00,2024-03-09 07:00,2024-04-01 17:00,2025-11-20 17:00,2025-11-20 17:00,2025-09-04 07:00,2025-09-04 07:00,0,80,100
CN.SWB5.1260,IMPACT - STARTCON CRANE IN THE WAY GL 31-32,Complete,CONSTRUCTION,,SUWN-5 - 30-33,EXTERIOR SKIN,,CONSTRUCTION,,INSULATED METAL PANELS,,,2024-03-18 07:00,2024-03-23 17:00,2024-03-18 07:00,2024-04-01 17:00,2025-11-20 17:00,2025-11-20 17:00,2025-11-21 07:00,2025-11-21 07:00,0,40,100
CN.AB.AR.4300,IMPACT [D25 / D26] - W&W OVERHEAD WORK INTERUPTION - MECHANICAL ROOM 3 SOUTH - SEA1 - GL 19-16 - C-A - L1,Complete,CONSTRUCTION,,SUES-1 - 19-16,L1 - Fndn Slab,MECH RM 2,CONSTRUCTION,SECAI,TBD Architectural Finishes,,,2024-03-11 07:00,2024-03-19 17:00,2024-02-28 07:00,2024-09-02 17:00,2025-11-20 17:00,2025-11-20 17:00,2025-11-24 07:00,2025-11-24 07:00,0,40,100
CN.FIZ1.2140,IMPACT [D46] - AREA BLOCKED BY MEP MATERIAL - FIZ3 - GL 1-3 - E-G - L3,Complete,CONSTRUCTION,,FIZ3 (East Inner) GL G-E,L3 / Waffle Slab Level,FIZ,CONSTRUCTION,SECAI,DRYWALL,,,2024-03-11 07:00,2024-03-19 17:00,2024-02-28 07:00,2024-05-31 17:00,2025-11-20 17:00,2025-11-20 17:00,2025-11-13 17:00,2025-11-13 17:00,0,40,100
CN.SEB1.6890,IMPACT - MEP OPENING REWORK INSPECT - CLADDING STEEL GL 18-21 - L LINE (DS AREA),Complete,CONSTRUCTION,,SUWN-1 - 18-21,EXTERIOR SKIN,,CONSTRUCTION,PATRIOT,INSULATED METAL PANELS,,,2024-05-07 07:00,2024-05-10 17:00,2024-05-23 07:00,2024-06-14 17:00,2025-11-20 17:00,2025-11-20 17:00,2025-11-21 07:00,2025-11-21 07:00,0,30,100
CN.SEB1.6900,PAINT BOLTS - INSULATED METAL PANELS - GL 18-21 - L LINE (DS AREA),Complete,CONSTRUCTION,,SUWN-1 - 18-21,EXTERIOR SKIN,,CONSTRUCTION,ALPHA,INSULATED METAL PANELS,,,2024-06-14 07:00,2024-06-21 17:00,2024-06-17 07:00,2024-06-25 17:00,2025-11-20 17:00,2025-11-20 17:00,2025-11-21 07:00,2025-11-21 07:00,0,50,100
CN.SEB1.6910,PAINT BOLTS - INSULATED METAL PANELS - GL 21-24 - L LINE (DS AREA),Complete,CONSTRUCTION,,SUWN-2 - 21-24,EXTERIOR SKIN,,CONSTRUCTION,ALPHA,INSULATED METAL PANELS,,,2024-04-22 07:00,2024-04-25 17:00,2024-04-17 07:00,2024-04-22 17:00,2025-11-20 17:00,2025-11-20 17:00,2025-11-25 07:00,2025-11-25 07:00,0,40,100
CN.SEB1.6920,IMPACT - MEP OPENING REWORK INSPECT - CLADDING STEEL GL 21-24 - L LINE (DS AREA),Complete,CONSTRUCTION,,SUWN-2 - 21-24,EXTERIOR SKIN,,CONSTRUCTION,,INSULATED METAL PANELS,,,2024-04-04 08:30,2024-04-08 12:30,2024-04-04 08:30,2024-04-06 13:00,2025-11-20 17:00,2025-11-20 17:00,2025-11-25 07:00,2025-11-25 07:00,0,24,100
CN.SWB3.4960,IMPACT - MEP OPENING REWORK INSPECT - CLADDING STEEL GL 24-27 - L LINE (DS AREA),Complete,CONSTRUCTION,,SUWN-3 - 24-27,EXTERIOR SKIN,,CONSTRUCTION,PATRIOT,INSULATED METAL PANELS,,,2024-04-17 07:00,2024-04-19 17:00,2024-04-17 07:00,2024-04-19 17:00,2025-11-20 17:00,2025-11-20 17:00,2025-11-25 07:00,2025-11-25 07:00,0,30,100
CN.SWB3.4970,PAINT BOLTS - INSULATED METAL PANELS - GL 24-27 - L LINE (DS AREA),Complete,CONSTRUCTION,,SUWN-3 - 24-27,EXTERIOR SKIN,,CONSTRUCTION,ALPHA,INSULATED METAL PANELS,,,2024-04-29 07:00,2024-05-03 17:00,2024-04-23 07:00,2024-04-30 17:00,2025-11-20 17:00,2025-11-20 17:00,2025-11-25 07:00,2025-11-25 07:00,0,40,100
CN.SEB1.6930,IMPACT - MEP OPENING REWORK INSPECT - CLADDING STEEL GL 27-31 - L LINE (DS AREA),Complete,CONSTRUCTION,,SUWN-4 - 27-30,EXTERIOR SKIN,,CONSTRUCTION,PATRIOT,INSULATED METAL PANELS,,,2024-05-06 07:00,2024-05-09 17:00,2024-05-01 07:00,2024-05-02 17:00,2025-11-20 17:00,2025-11-20 17:00,2025-11-21 07:00,2025-11-21 07:00,0,30,100
CN.SEB1.6940,PAINT BOLTS - INSULATED METAL PANELS - GL 27-31 - L LINE (DS AREA),Complete,CONSTRUCTION,,SUWN-4 - 27-30,EXTERIOR SKIN,,CONSTRUCTION,ALPHA,INSULATED METAL PANELS,,,2024-05-09 07:00,2024-05-14 17:00,2024-05-02 07:00,2024-05-13 17:00,2025-11-20 17:00,2025-11-20 17:00,2025-11-21 07:00,2025-11-21 07:00,0,40,100
CN.SEB1.6950,IMPACT - MEP OPENING REWORK INSPECT - CLADDING STEEL GL 18-21 - K LINE (AD AREA),Complete,CONSTRUCTION,,SUWN-1 - 18-21,EXTERIOR SKIN,,CONSTRUCTION,PATRIOT,INSULATED METAL PANELS,,,2024-04-17 07:00,2024-04-19 17:00,2024-04-17 07:00,2024-04-18 17:00,2025-11-20 17:00,2025-11-20 17:00,2025-11-21 07:00,2025-11-21 07:00,0,30,100
CN.SEB1.6960,PAINT BOLTS - INSULATED METAL PANELS - GL 18-21 - K LINE (AD AREA),Complete,CONSTRUCTION,,SUWN-1 - 18-21,EXTERIOR SKIN,,CONSTRUCTION,ALPHA,INSULATED METAL PANELS,,,2024-05-20 07:00,2024-05-23 17:00,2024-05-13 07:00,2024-05-20 17:00,2025-11-20 17:00,2025-11-20 17:00,2025-11-21 07:00,2025-11-21 07:00,0,30,100
CN.SEB1.6970,IMPACT - MEP OPENING REWORK INSPECT - CLADDING STEEL GL 21-24 - K LINE (AD AREA),Complete,CONSTRUCTION,,SUWN-2 - 21-24,EXTERIOR SKIN,,CONSTRUCTION,PATRIOT,INSULATED METAL PANELS,,,2024-05-03 07:00,2024-05-07 17:00,2024-04-23 07:00,2024-04-24 17:00,2025-11-20 17:00,2025-11-20 17:00,2025-11-21 07:00,2025-11-21 07:00,0,30,100
CN.SEB1.6980,PAINT BOLTS - INSULATED METAL PANELS - GL 21-24 - K LINE (AD AREA),Complete,CONSTRUCTION,,SUWN-2 - 21-24,EXTERIOR SKIN,,CONSTRUCTION,ALPHA,INSULATED METAL PANELS,,,2024-05-03 07:00,2024-05-07 17:00,2024-04-24 07:00,2024-04-28 11:00,2025-11-20 17:00,2025-11-20 17:00,2025-11-21 07:00,2025-11-21 07:00,0,30,100
CN.SEB1.6990,IMPACT - MEP OPENING REWORK INSPECT - CLADDING STEEL GL 24-27 - K LINE (AD AREA),Complete,CONSTRUCTION,,SUWN-3 - 24-27,EXTERIOR SKIN,,CONSTRUCTION,PATRIOT,INSULATED METAL PANELS,,,2024-05-03 07:00,2024-05-07 17:00,2024-04-20 07:00,2024-04-22 17:00,2025-11-20 17:00,2025-11-20 17:00,2025-11-21 07:00,2025-11-21 07:00,0,30,100
CN.SWB3.4980,PAINT BOLTS - INSULATED METAL PANELS - GL 24-27 - K LINE (AD AREA),Complete,CONSTRUCTION,,SUWN-3 - 24-27,EXTERIOR SKIN,,CONSTRUCTION,ALPHA,INSULATED METAL PANELS,,,2024-05-20 07:00,2024-05-23 17:00,2024-05-11 07:00,2024-05-15 17:00,2025-11-20 17:00,2025-11-20 17:00,2025-11-21 07:00,2025-11-21 07:00,0,30,100
CN.SEB1.7000,IMPACT - MEP OPENING REWORK INSPECT - CLADDING STEEL GL 27-30 - K LINE (AD AREA),Complete,CONSTRUCTION,,SUWN-4 - 27-30,EXTERIOR SKIN,,CONSTRUCTION,PATRIOT,INSULATED METAL PANELS,,,2024-04-29 07:00,2024-05-02 17:00,2024-04-26 07:00,2024-05-01 17:00,2025-11-20 17:00,2025-11-20 17:00,2025-11-21 07:00,2025-11-21 07:00,0,30,100
CN.SEB1.7010,PAINT BOLTS - INSULATED METAL PANELS - GL 27-30 - K LINE (AD AREA),Complete,CONSTRUCTION,,SUWN-4 - 27-30,EXTERIOR SKIN,,CONSTRUCTION,ALPHA,INSULATED METAL PANELS,,,2024-05-10 07:00,2024-05-14 17:00,2024-05-09 07:00,2024-05-13 17:00,2025-11-20 17:00,2025-11-20 17:00,2025-11-21 07:00,2025-11-21 07:00,0,30,100
CN.SEB1.7020,IMPACT - MEP OPENING REWORK INSPECT - CLADDING STEEL GL 30-33 - K LINE (AD AREA),Complete,CONSTRUCTION,,SUWN-5 - 30-33,EXTERIOR SKIN,,CONSTRUCTION,PATRIOT,INSULATED METAL PANELS,,,2024-05-03 07:00,2024-05-07 17:00,2024-04-29 07:00,2024-05-01 17:00,2025-11-20 17:00,2025-11-20 17:00,2025-11-21 07:00,2025-11-21 07:00,0,30,100
CN.SWB5.1300,PAINT BOLTS - INSULATED METAL PANELS - GL 30-33 - K LINE (AD AREA),Complete,CONSTRUCTION,,SUWN-5 - 30-33,EXTERIOR SKIN,,CONSTRUCTION,ALPHA,INSULATED METAL PANELS,,,2024-05-06 07:00,2024-05-09 17:00,2024-05-01 07:00,2024-05-09 17:00,2025-11-20 17:00,2025-11-20 17:00,2025-11-21 07:00,2025-11-21 07:00,0,30,100
CN.SEB1.7040,IMPACT - MEP OPENING REWORK INSPECT - CLADDING STEEL - GL 6-3 - K LINE (AD AREA),Complete,CONSTRUCTION,,FIZ 2 / SUWS 5  (GL6-1) - GL J - N - DATA CENTER 1,EXTERIOR SKIN,,CONSTRUCTION,PATRIOT,INSULATED METAL PANELS,,,2024-06-07 07:00,2024-06-11 17:00,2024-05-31 07:00,2024-06-01 17:00,2025-11-20 17:00,2025-11-20 17:00,2025-11-25 07:00,2025-11-25 07:00,0,30,100
CN.SEB1.7050,IMPACT - MEP OPENING REWORK INSPECT - CLADDING STEEL GL 6-5 - L LINE (DS AREA),Complete,CONSTRUCTION,,FIZ 2 / SUWS 5  (GL6-1) - GL J - N - DATA CENTER 1,EXTERIOR SKIN,,CONSTRUCTION,PATRIOT,INSULATED METAL PANELS,,,2024-06-28 07:00,2024-07-02 17:00,2024-06-21 07:00,2024-06-25 17:00,2025-11-20 17:00,2025-11-20 17:00,2025-11-25 07:00,2025-11-25 07:00,0,30,100
CN.SWA5.1310,PAINT BOLTS - INSULATED METAL PANELS - GL 6-3 - K LINE (AD AREA),Complete,CONSTRUCTION,,FIZ 2 / SUWS 5  (GL6-1) - GL J - N - DATA CENTER 1,EXTERIOR SKIN,,CONSTRUCTION,ALPHA,INSULATED METAL PANELS,,,2024-06-11 07:00,2024-06-14 17:00,2024-06-05 07:00,2024-06-10 17:00,2025-11-20 17:00,2025-11-20 17:00,2025-11-25 07:00,2025-11-25 07:00,0,30,100
CN.SWA5.1910,PAINT BOLTS - INSULATED METAL PANELS - GL 6-5 - L LINE (DS AREA),Complete,CONSTRUCTION,,FIZ 2 / SUWS 5  (GL6-1) - GL J - N - DATA CENTER 1,EXTERIOR SKIN,,CONSTRUCTION,ALPHA,INSULATED METAL PANELS,,,2024-07-15 07:00,2024-07-17 17:00,2024-07-05 07:00,2024-07-11 17:00,2025-11-20 17:00,2025-11-20 17:00,2025-11-25 07:00,2025-11-25 07:00,0,30,100
CN.SEB1.7060,IMPACT - MEP OPENING REWORK INSPECT - CLADDING STEEL GL 9-6 - L LINE (DS AREA),Complete,CONSTRUCTION,,SUWS-4 - 9-6,EXTERIOR SKIN,,CONSTRUCTION,PATRIOT,INSULATED METAL PANELS,,,2024-06-21 07:00,2024-06-25 17:00,2024-06-17 07:00,2024-06-22 17:00,2025-11-20 17:00,2025-11-20 17:00,2025-11-25 07:00,2025-11-25 07:00,0,30,100
CN.SEB1.7070,IMPACT - MEP OPENING REWORK INSPECT - CLADDING STEEL - GL 9-6 - K LINE (AD AREA),Complete,CONSTRUCTION,,SUWS-4 - 9-6,EXTERIOR SKIN,,CONSTRUCTION,PATRIOT,INSULATED METAL PANELS,,,2024-05-28 07:00,2024-05-31 17:00,2024-05-25 07:00,2024-05-29 17:00,2025-11-20 17:00,2025-11-20 17:00,2025-11-25 07:00,2025-11-25 07:00,0,30,100
CN.SEB1.7080,PAINT BOLTS - INSULATED METAL PANELS - GL 9-6 - K LINE (AD AREA),Complete,CONSTRUCTION,,SUWS-4 - 9-6,EXTERIOR SKIN,,CONSTRUCTION,ALPHA,INSULATED METAL PANELS,,,2024-06-10 07:00,2024-06-13 17:00,2024-05-31 07:00,2024-06-03 17:00,2025-11-20 17:00,2025-11-20 17:00,2025-11-25 07:00,2025-11-25 07:00,0,30,100
CN.SEB1.7090,PAINT BOLTS - INSULATED METAL PANELS - GL 9-6 - L LINE (DS AREA),Complete,CONSTRUCTION,,SUWS-4 - 9-6,EXTERIOR SKIN,,CONSTRUCTION,ALPHA,INSULATED METAL PANELS,,,2024-07-08 07:00,2024-07-15 17:00,2024-07-03 07:00,2024-07-11 17:00,2025-11-20 17:00,2025-11-20 17:00,2025-11-25 07:00,2025-11-25 07:00,0,50,100
CN.SEB1.7100,IMPACT - MEP OPENING REWORK INSPECT - CLADDING STEEL GL 12-9 - L LINE (DS AREA),Complete,CONSTRUCTION,,SUWS-3 - 12-9,EXTERIOR SKIN,,CONSTRUCTION,PATRIOT,INSULATED METAL PANELS,,,2024-06-21 07:00,2024-06-25 17:00,2024-06-17 07:00,2024-06-22 17:00,2025-11-20 17:00,2025-11-20 17:00,2025-11-25 07:00,2025-11-25 07:00,0,30,100
CN.SEB1.7110,IMPACT - MEP OPENING REWORK INSPECT - CLADDING STEEL GL - 12-9 - K LINE (AD AREA),Complete,CONSTRUCTION,,SUWS-3 - 12-9,EXTERIOR SKIN,,CONSTRUCTION,PATRIOT,INSULATED METAL PANELS,,,2024-05-28 07:00,2024-05-31 17:00,2024-05-25 07:00,2024-06-01 17:00,2025-11-20 17:00,2025-11-20 17:00,2025-11-25 07:00,2025-11-25 07:00,0,30,100
CN.SWA3.1620,PAINT BOLTS - INSULATED METAL PANELS - GL 12-9 - L LINE (DS AREA),Complete,CONSTRUCTION,,SUWS-3 - 12-9,EXTERIOR SKIN,,CONSTRUCTION,ALPHA,INSULATED METAL PANELS,,,2024-07-05 07:00,2024-07-12 17:00,2024-06-28 07:00,2024-07-03 17:00,2025-11-20 17:00,2025-11-20 17:00,2025-11-25 07:00,2025-11-25 07:00,0,50,100
CN.SWA3.2010,PAINT BOLTS - INSULATED METAL PANELS - GL 12-9 - K LINE (AD AREA),Complete,CONSTRUCTION,,SUWS-3 - 12-9,EXTERIOR SKIN,,CONSTRUCTION,ALPHA,INSULATED METAL PANELS,,,2024-06-10 07:00,2024-06-13 17:00,2024-05-26 07:00,2024-05-31 17:00,2025-11-20 17:00,2025-11-20 17:00,2025-11-25 07:00,2025-11-25 07:00,0,30,100
CN.SEB1.7120,IMPACT - MEP OPENING REWORK INSPECT - CLADDING STEEL GL 15-12 - L LINE (DS AREA),Complete,CONSTRUCTION,,SUWS-2 - 15-12,EXTERIOR SKIN,,CONSTRUCTION,PATRIOT,INSULATED METAL PANELS,,,2024-06-21 07:00,2024-06-25 17:00,2024-06-17 07:00,2024-06-22 17:00,2025-11-20 17:00,2025-11-20 17:00,2025-11-25 07:00,2025-11-25 07:00,0,30,100
CN.SEB1.7130,IMPACT - MEP OPENING REWORK INSPECT - CLADDING STEEL GL 12-15 - K LINE (AD AREA),Complete,CONSTRUCTION,,SUWS-2 - 15-12,EXTERIOR SKIN,,CONSTRUCTION,PATRIOT,INSULATED METAL PANELS,,,2024-05-13 07:00,2024-05-16 17:00,2024-05-08 07:00,2024-05-09 17:00,2025-11-20 17:00,2025-11-20 17:00,2025-11-25 07:00,2025-11-25 07:00,0,30,100
CN.SWA2.1610,PAINT BOLTS - INSULATED METAL PANELS - GL 15-12 - L LINE (DS AREA),Complete,CONSTRUCTION,,SUWS-2 - 15-12,EXTERIOR SKIN,,CONSTRUCTION,ALPHA,INSULATED METAL PANELS,,,2024-06-28 07:00,2024-07-08 17:00,2024-06-26 07:00,2024-06-29 17:00,2025-11-20 17:00,2025-11-20 17:00,2025-11-25 07:00,2025-11-25 07:00,0,50,100
CN.SWA2.6620,PAINT BOLTS - INSULATED METAL PANELS - GL 12-15 - K LINE (AD AREA),Complete,CONSTRUCTION,,SUWS-2 - 15-12,EXTERIOR SKIN,,CONSTRUCTION,ALPHA,INSULATED METAL PANELS,,,2024-05-28 07:00,2024-05-31 17:00,2024-05-20 07:00,2024-05-25 17:00,2025-11-20 17:00,2025-11-20 17:00,2025-11-25 07:00,2025-11-25 07:00,0,30,100
CN.SEB1.7140,IMPACT - MEP OPENING REWORK INSPECT - CLADDING STEEL GL 15-18 - L LINE (DS AREA),Complete,CONSTRUCTION,,SUWS-1 - 18-15,EXTERIOR SKIN,,CONSTRUCTION,PATRIOT,INSULATED METAL PANELS,,,2024-06-24 07:00,2024-06-27 17:00,2024-06-13 07:00,2024-06-17 17:00,2025-11-20 17:00,2025-11-20 17:00,2025-11-25 07:00,2025-11-25 07:00,0,30,100
CN.SEB1.7150,IMPACT - MEP OPENING REWORK INSPECT - CLADDING STEEL GL 15-18 - K LINE (AD AREA),Complete,CONSTRUCTION,,SUWS-1 - 18-15,EXTERIOR SKIN,,CONSTRUCTION,PATRIOT,INSULATED METAL PANELS,,,2024-05-10 07:00,2024-05-14 17:00,2024-05-04 07:00,2024-05-07 17:00,2025-11-20 17:00,2025-11-20 17:00,2025-11-25 07:00,2025-11-25 07:00,0,30,100
CN.SWA1.1810,PAINT BOLTS - INSULATED METAL PANELS - GL 15-18 - L LINE (DS AREA),Complete,CONSTRUCTION,,SUWS-1 - 18-15,EXTERIOR SKIN,,CONSTRUCTION,ALPHA,INSULATED METAL PANELS,,,2024-06-28 07:00,2024-07-08 17:00,2024-06-21 07:00,2024-06-26 17:00,2025-11-20 17:00,2025-11-20 17:00,2025-11-25 07:00,2025-11-25 07:00,0,50,100
CN.SWA1.6660,PAINT BOLTS - INSULATED METAL PANELS - GL 15-18 - K LINE (AD AREA),Complete,CONSTRUCTION,,SUWS-1 - 18-15,EXTERIOR SKIN,,CONSTRUCTION,ALPHA,INSULATED METAL PANELS,,,2024-05-28 07:00,2024-05-31 17:00,2024-05-20 07:00,2024-05-25 17:00,2025-11-20 17:00,2025-11-20 17:00,2025-11-25 07:00,2025-11-25 07:00,0,30,100
CN.SEB5.6580,IMPACT - MEP OPENING REWORK INSPECT - CLADDING STEEL GL 31-33 - D LINE (AD AREA),Complete,CONSTRUCTION,,SUEN-5 - 31-33,EXTERIOR SKIN,,CONSTRUCTION,PATRIOT,INSULATED METAL PANELS,,,2024-04-17 07:00,2024-04-19 17:00,2024-04-17 07:00,2024-04-19 17:00,2025-11-20 17:00,2025-11-20 17:00,2025-11-21 07:00,2025-11-21 07:00,0,30,100
CN.SEB5.6600,PAINT BOLTS - INSULATED METAL PANELS - GL 31-33 - D LINE (AD AREA),Complete,CONSTRUCTION,,SUEN-5 - 31-33,EXTERIOR SKIN,,CONSTRUCTION,ALPHA,INSULATED METAL PANELS,,,2024-05-03 07:00,2024-05-09 17:00,2024-04-24 07:00,2024-04-28 17:00,2025-11-20 17:00,2025-11-20 17:00,2025-11-21 07:00,2025-11-21 07:00,0,40,100
CN.SEB4.6540,IMPACT - MEP OPENING REWORK INSPECT - CLADDING STEEL GL 28-31 - C LINE (DS AREA),Complete,CONSTRUCTION,,SUEN-4 - 28-31,EXTERIOR SKIN,,CONSTRUCTION,,INSULATED METAL PANELS,,,2024-03-25 15:00,2024-03-28 09:00,2024-03-25 15:00,2024-03-29 09:00,2025-11-20 17:00,2025-11-20 17:00,2025-12-05 17:00,2025-12-05 17:00,0,24,100
CN.SEB4.6550,IMPACT - MEP OPENING REWORK INSPECT - CLADDING STEEL GL 28-31 - D LINE (AD AREA),Complete,CONSTRUCTION,,SUEN-4 - 28-31,EXTERIOR SKIN,,CONSTRUCTION,PATRIOT,INSULATED METAL PANELS,,,2024-04-22 07:00,2024-04-24 17:00,2024-04-22 07:00,2024-04-24 17:00,2025-11-20 17:00,2025-11-20 17:00,2025-11-21 07:00,2025-11-21 07:00,0,30,100
CN.SEB4.6560,PAINT BOLTS - INSULATED METAL PANELS - GL 28-31 - C LINE (DS AREA),Complete,CONSTRUCTION,,SUEN-4 - 28-31,EXTERIOR SKIN,,CONSTRUCTION,ALPHA,INSULATED METAL PANELS,,,2024-05-03 07:00,2024-05-07 17:00,2024-04-27 07:00,2024-05-02 17:00,2025-11-20 17:00,2025-11-20 17:00,2025-12-05 17:00,2025-12-05 17:00,0,30,100
CN.SEB4.6570,PAINT BOLTS - INSULATED METAL PANELS - GL 28-31 - D LINE (AD AREA),Complete,CONSTRUCTION,,SUEN-4 - 28-31,EXTERIOR SKIN,,CONSTRUCTION,ALPHA,INSULATED METAL PANELS,,,2024-05-06 07:00,2024-05-10 17:00,2024-05-01 07:00,2024-05-09 17:00,2025-11-20 17:00,2025-11-20 17:00,2025-11-21 07:00,2025-11-21 07:00,0,40,100
CN.SEB3.1200,PAINT BOLTS - INSULATED METAL PANELS - GL 25-28 - C LINE (DS AREA),Complete,CONSTRUCTION,,SUEN-3 - 25-28,EXTERIOR SKIN,,CONSTRUCTION,ALPHA,INSULATED METAL PANELS,,,2024-04-12 07:00,2024-04-16 17:00,2024-04-12 07:00,2024-04-16 17:00,2025-11-20 17:00,2025-11-20 17:00,2025-12-05 17:00,2025-12-05 17:00,0,30,100
CN.SEB3.6650,IMPACT - PAINT BOLTS - INSULATED METAL PANELS - GL 25-28 - D LINE (AD AREA) [26~27 LEFT OUT - BOTTOM CONNECTION ISSUE],Complete,CONSTRUCTION,,SUEN-3 - 25-28,EXTERIOR SKIN,,CONSTRUCTION,ALPHA,INSULATED METAL PANELS,,,2024-05-10 07:00,2024-05-16 17:00,2024-05-10 07:00,2024-05-13 17:00,2025-11-20 17:00,2025-11-20 17:00,2025-11-21 07:00,2025-11-21 07:00,0,40,100
CN.SEB3.6660,IMPACT - MEP OPENING REWORK INSPECT - CLADDING STEEL GL 25- 28 - C LINE (DS AREA),Complete,CONSTRUCTION,,SUEN-3 - 25-28,EXTERIOR SKIN,,CONSTRUCTION,,INSULATED METAL PANELS,,,2024-03-09 08:00,2024-03-11 12:00,2024-03-16 08:00,2024-03-21 10:00,2025-11-20 17:00,2025-11-20 17:00,2025-12-05 17:00,2025-12-05 17:00,0,24,100
CN.SEB3.6670,IMPACT - MEP OPENING REWORK INSPECT - CLADDING STEEL GL 25-28 - D LINE (AD AREA),Complete,CONSTRUCTION,,SUEN-3 - 25-28,EXTERIOR SKIN,,CONSTRUCTION,PATRIOT,INSULATED METAL PANELS,,,2024-05-07 07:00,2024-05-10 17:00,2024-04-17 07:00,2024-04-18 17:00,2025-11-20 17:00,2025-11-20 17:00,2025-11-21 07:00,2025-11-21 07:00,0,30,100
CN.SEB2.1510,PAINT BOLTS - INSULATED METAL PANEL GL 22-25 (DS AREA),Complete,CONSTRUCTION,,SUEN-2 - 22-25,EXTERIOR SKIN,,CONSTRUCTION,,INSULATED METAL PANELS,,,2024-04-11 07:00,2024-04-15 11:00,2024-04-09 07:00,2024-04-12 11:00,2025-11-20 17:00,2025-11-20 17:00,2025-12-05 17:00,2025-12-05 17:00,0,24,100
CN.SEB1.1460,PAINT BOLTS - INSULATED METAL PANELS - GL 19-22 - C LINE (DS AREA),Complete,CONSTRUCTION,,SUEN-1 - 19-22,EXTERIOR SKIN,,CONSTRUCTION,,INSULATED METAL PANELS,,,2024-04-08 07:00,2024-04-12 11:00,2024-04-03 07:00,2024-04-06 11:00,2025-11-20 17:00,2025-11-20 17:00,2025-12-05 17:00,2025-12-05 17:00,0,24,100
CN.SEA5.1670,PAINT BOLTS - INSULATED METAL PANEL GL 6-3 (DS AREA),Complete,CONSTRUCTION,,SUES-5 - 6-1 - FIZ - GL A -E,EXTERIOR SKIN,,CONSTRUCTION,,INSULATED METAL PANELS,,,2024-03-23 07:00,2024-03-25 11:00,2024-03-21 09:00,2024-03-30 14:00,2025-11-20 17:00,2025-11-20 17:00,2025-10-29 07:00,2025-10-29 07:00,0,24,100
CN.SEA4.1290,PAINT BOLTS - INSULATED METAL PANELS - GL 9-6 - D LINE (AD AREA),Complete,CONSTRUCTION,,SUES-4 - 9-6,EXTERIOR SKIN,,CONSTRUCTION,ALPHA,INSULATED METAL PANELS,,,2024-06-28 07:00,2024-07-05 17:00,2024-06-24 07:00,2024-06-27 17:00,2025-11-20 17:00,2025-11-20 17:00,2025-12-05 17:00,2025-12-05 17:00,0,40,100
CN.SEB1.7160,PAINT BOLTS - INSULATED METAL PANELS - GL 20-22 - D LINE (AD AREA),Complete,CONSTRUCTION,,SUEN-1 - 19-22,EXTERIOR SKIN,,CONSTRUCTION,ALPHA,INSULATED METAL PANELS,,,2024-06-07 07:00,2024-06-13 17:00,2024-05-31 07:00,2024-06-04 17:00,2025-11-20 17:00,2025-11-20 17:00,2025-12-05 17:00,2025-12-05 17:00,0,40,100
CN.SEB2.6190,PAINT BOLTS - INSULATED METAL PANELS - GL 22-25 - D LINE (AD AREA),Complete,CONSTRUCTION,,SUEN-2 - 22-25,EXTERIOR SKIN,,CONSTRUCTION,ALPHA,INSULATED METAL PANELS,,,2024-05-24 07:00,2024-05-31 17:00,2024-05-23 07:00,2024-06-04 17:00,2025-11-20 17:00,2025-11-20 17:00,2025-12-05 17:00,2025-12-05 17:00,0,40,100
CN.SEB2.6200,IMPACT - MEP OPENING REWORK INSPECT - CLADDING STEEL GL 22-25 - C LINE (DS AREA),Complete,CONSTRUCTION,,SUEN-2 - 22-25,EXTERIOR SKIN,,CONSTRUCTION,,INSULATED METAL PANELS,,,2024-03-19 08:00,2024-03-23 12:00,2024-03-19 08:00,2024-03-21 12:00,2025-11-20 17:00,2025-11-20 17:00,2025-12-05 17:00,2025-12-05 17:00,0,24,100
CN.SEB2.6210,IMPACT - MEP OPENING REWORK INSPECT - CLADDING STEEL GL 22-25 - D LINE (AD AREA),Complete,CONSTRUCTION,,SUEN-2 - 22-25,EXTERIOR SKIN,,CONSTRUCTION,PATRIOT,INSULATED METAL PANELS,,,2024-05-13 07:00,2024-05-16 17:00,2024-05-01 07:00,2024-05-17 17:00,2025-11-20 17:00,2025-11-20 17:00,2025-12-05 17:00,2025-12-05 17:00,0,30,100
CN.SEB1.7170,IMPACT - MEP OPENING REWORK INSPECT - CLADDING STEEL GL 19-22 - C LINE (DS AREA),Complete,CONSTRUCTION,,SUEN-1 - 19-22,EXTERIOR SKIN,,CONSTRUCTION,,INSULATED METAL PANELS,,,2024-03-09 08:00,2024-03-11 12:00,2024-03-07 08:00,2024-03-13 11:00,2025-11-20 17:00,2025-11-20 17:00,2025-12-05 17:00,2025-12-05 17:00,0,24,100
CN.SEB1.7180,IMPACT - MEP OPENING REWORK INSPECT - CLADDING STEEL GL 19-22 - D LINE (AD AREA),Complete,CONSTRUCTION,,SUEN-1 - 19-22,EXTERIOR SKIN,,CONSTRUCTION,PATRIOT,INSULATED METAL PANELS,,,2024-05-17 07:00,2024-05-21 17:00,2024-05-16 07:00,2024-05-23 17:00,2025-11-20 17:00,2025-11-20 17:00,2025-12-05 17:00,2025-12-05 17:00,0,30,100
CN.SEA5.6570,PAINT BOLTS - INSULATED METAL PANELS - GL 6-3 - D LINE (AD AREA),Complete,CONSTRUCTION,,SUES-5 - 6-1 - FIZ - GL A -E,EXTERIOR SKIN,,CONSTRUCTION,ALPHA,INSULATED METAL PANELS,,,2024-06-28 07:00,2024-07-05 17:00,2024-06-24 07:00,2024-06-27 17:00,2025-11-20 17:00,2025-11-20 17:00,2025-11-21 07:00,2025-11-21 07:00,0,40,100
CN.SEA5.6580,IMPACT - MEP OPENING REWORK INSPECT - CLADDING STEEL GL 6-3 - C LINE (DS AREA),Complete,CONSTRUCTION,,SUES-5 - 6-1 - FIZ - GL A -E,EXTERIOR SKIN,,CONSTRUCTION,,INSULATED METAL PANELS,,,2024-03-19 15:00,2024-03-24 09:00,2024-03-19 15:00,2024-03-21 09:00,2025-11-20 17:00,2025-11-20 17:00,2025-10-29 07:00,2025-10-29 07:00,0,24,100
CN.SEA5.6590,IMPACT - MEP OPENING REWORK INSPECT - CLADDING STEEL GL 6-3 - D LINE (AD AREA),Complete,CONSTRUCTION,,SUES-5 - 6-1 - FIZ - GL A -E,EXTERIOR SKIN,,CONSTRUCTION,PATRIOT,INSULATED METAL PANELS,,,2024-06-24 07:00,2024-06-27 17:00,2024-06-17 07:00,2024-06-19 17:00,2025-11-20 17:00,2025-11-20 17:00,2025-11-21 07:00,2025-11-21 07:00,0,30,100
CN.SEA3.1710,PAINT BOLTS - INSULATED METAL PANEL GL 13-9 (DS AREA),Complete,CONSTRUCTION,,SUES-3 - 13-9,EXTERIOR SKIN,,CONSTRUCTION,,INSULATED METAL PANELS,,,2024-03-18 07:00,2024-03-20 11:00,2024-03-15 07:00,2024-03-18 11:00,2025-11-20 17:00,2025-11-20 17:00,2025-10-29 07:00,2025-10-29 07:00,0,24,100
CN.SEA3.6730,IMPACT - MEP OPENING REWORK INSPECT - CLADDING STEEL GL 13-9 - D LINE (AD AREA),Complete,CONSTRUCTION,,SUES-3 - 13-9,EXTERIOR SKIN,,CONSTRUCTION,PATRIOT,INSULATED METAL PANELS,,,2024-06-24 07:00,2024-06-27 17:00,2024-06-17 07:00,2024-06-19 17:00,2025-11-20 17:00,2025-11-20 17:00,2025-12-05 17:00,2025-12-05 17:00,0,30,100
CN.SEA3.6740,PAINT BOLTS - INSULATED METAL PANELS - GL 13-9 - D LINE (AD AREA),Complete,CONSTRUCTION,,SUES-3 - 13-9,EXTERIOR SKIN,,CONSTRUCTION,ALPHA,INSULATED METAL PANELS,,,2024-06-28 07:00,2024-07-05 17:00,2024-06-19 07:00,2024-06-27 17:00,2025-11-20 17:00,2025-11-20 17:00,2025-12-05 17:00,2025-12-05 17:00,0,40,100
CN.SEA4.6510,IMPACT - MEP OPENING REWORK INSPECT - CLADDING STEEL GL 9-6 - D LINE (AD AREA),Complete,CONSTRUCTION,,SUES-4 - 9-6,EXTERIOR SKIN,,CONSTRUCTION,PATRIOT,INSULATED METAL PANELS,,,2024-06-24 07:00,2024-06-27 17:00,2024-06-17 07:00,2024-06-19 17:00,2025-11-20 17:00,2025-11-20 17:00,2025-12-05 17:00,2025-12-05 17:00,0,30,100
CN.SEA3.6750,IMPACT - MEP OPENING REWORK INSPECT - CLADDING STEEL GL 16-13 - D LINE (AD AREA),Complete,CONSTRUCTION,,SUES-2 - 16-13,EXTERIOR SKIN,,CONSTRUCTION,PATRIOT,INSULATED METAL PANELS,,,2024-05-28 07:00,2024-05-31 17:00,2024-05-28 07:00,2024-05-30 17:00,2025-11-20 17:00,2025-11-20 17:00,2025-12-05 17:00,2025-12-05 17:00,0,30,100
CN.SEA3.6760,PAINT BOLTS - INSULATED METAL PANELS - GL 16-13 - D LINE (AD AREA),Complete,CONSTRUCTION,,SUES-2 - 16-13,EXTERIOR SKIN,,CONSTRUCTION,ALPHA,INSULATED METAL PANELS,,,2024-06-21 07:00,2024-06-27 17:00,2024-06-14 07:00,2024-06-20 17:00,2025-11-20 17:00,2025-11-20 17:00,2025-12-05 17:00,2025-12-05 17:00,0,40,100
CN.SEA3.6770,PAINT BOLTS - INSULATED METAL PANEL GL 16-13 (DS AREA),Complete,CONSTRUCTION,,SUES-2 - 16-13,EXTERIOR SKIN,,CONSTRUCTION,,INSULATED METAL PANELS,,,2024-03-19 07:00,2024-03-22 11:00,2024-03-19 07:00,2024-04-03 13:00,2025-11-20 17:00,2025-11-20 17:00,2025-10-29 07:00,2025-10-29 07:00,0,24,100
CN.SEA1.6570,IMPACT - MEP OPENING REWORK INSPECT - CLADDING STEEL GL 19-16 - D LINE (AD AREA),Complete,CONSTRUCTION,,SUES-1 - 19-16,EXTERIOR SKIN,,CONSTRUCTION,PATRIOT,INSULATED METAL PANELS,,,2024-05-30 07:00,2024-06-03 17:00,2024-05-23 07:00,2024-05-29 17:00,2025-11-20 17:00,2025-11-20 17:00,2025-12-05 17:00,2025-12-05 17:00,0,30,100
CN.SEA1.6780,PAINT BOLTS - INSULATED METAL PANEL GL 19-16 (DS AREA),Complete,CONSTRUCTION,,SUES-1 - 19-16,EXTERIOR SKIN,,CONSTRUCTION,,INSULATED METAL PANELS,,,2024-04-01 07:00,2024-04-03 11:00,2024-04-03 07:00,2024-04-12 17:00,2025-11-20 17:00,2025-11-20 17:00,2025-10-29 07:00,2025-10-29 07:00,0,24,100
CN.SEA1.6790,PAINT BOLTS - INSULATED METAL PANELS - GL 18-16 - D LINE (AD AREA),Complete,CONSTRUCTION,,SUES-1 - 19-16,EXTERIOR SKIN,,CONSTRUCTION,ALPHA,INSULATED METAL PANELS,,,2024-06-17 07:00,2024-06-21 17:00,2024-06-01 07:00,2024-06-07 17:00,2025-11-20 17:00,2025-11-20 17:00,2025-12-05 17:00,2025-12-05 17:00,0,40,100
CN.SEA1.6580,PAINT BOLTS - GL 18-16 - A LINE [SUP EXTERIOR WALL],Complete,CONSTRUCTION,,SUES-1 - 19-16,EXTERIOR SKIN,,CONSTRUCTION,ALPHA,INSULATED METAL PANELS,,,2024-08-09 07:00,2024-08-13 17:00,2024-07-29 07:00,2024-08-06 17:00,2025-11-20 17:00,2025-11-20 17:00,2025-09-04 07:00,2025-09-04 07:00,0,30,100
CN.SEA3.1720,IMPACT - INSTALL INSULATED METAL PANELS (LEAVEOUT AREAS) - GL 9-11 - A LINE [SUP EXTERIOR WALL],Complete,CONSTRUCTION,,SUES-3 - 13-9,EXTERIOR SKIN,,CONSTRUCTION,KOVACH,INSULATED METAL PANELS,,,2024-10-26 07:00,2024-10-27 17:00,2024-10-15 07:00,2024-10-22 17:00,2025-11-20 17:00,2025-11-20 17:00,2025-12-05 17:00,2025-12-05 17:00,0,20,100
CN.SEA3.1730,PAINT BOLTS - GL 9-11 - A LINE [SUP EXTERIOR WALL],Complete,CONSTRUCTION,,SUES-3 - 13-9,EXTERIOR SKIN,,CONSTRUCTION,ALPHA,INSULATED METAL PANELS,,,2024-10-24 07:00,2024-10-29 17:00,2024-10-07 07:00,2024-10-12 17:00,2025-11-20 17:00,2025-11-20 17:00,2025-12-05 17:00,2025-12-05 17:00,0,40,100
CN.SEA4.1300,PAINT BOLTS - GL 8-6 - A LINE [SUP EXTERIOR WALL] - BLOCKED BY WW/MEP CRANE,Complete,CONSTRUCTION,,SUES-4 - 9-6,EXTERIOR SKIN,,CONSTRUCTION,ALPHA,INSULATED METAL PANELS,,,2024-09-12 07:00,2024-09-16 17:00,2024-07-31 07:00,2024-08-06 17:00,2025-11-20 17:00,2025-11-20 17:00,2025-12-05 17:00,2025-12-05 17:00,0,30,100
CN.SEA5.1210,PAINT BOLTS - GL 1-6 - A LINE [SUP EXTERIOR WALL] - PHASE 1 - WEEKEND WORK DURING STARCON STANDDOWN,Complete,CONSTRUCTION,,SUES-5 - 6-1 - FIZ - GL A -E,EXTERIOR SKIN,,CONSTRUCTION,ALPHA,INSULATED METAL PANELS,,,2024-07-01 07:00,2024-07-01 17:00,2024-06-15 07:00,2024-06-16 17:00,2025-11-20 17:00,2025-11-20 17:00,2025-11-21 07:00,2025-11-21 07:00,0,10,100
CN.BB31.ST.1460,WAFFLE SLAB CRACK REPAIR - 3rd,Complete,CONSTRUCTION,,B2 - Area 9 (Gridlines 21-24),L2 - SubFab Level,,CONSTRUCTION,,Pour Concrete,,,2024-03-25 13:00,2024-04-02 09:00,2024-03-25 13:00,2024-03-30 09:00,2025-11-20 17:00,2025-11-20 17:00,2025-12-05 17:00,2025-12-05 17:00,0,56,100
CN.BB31.ST.1470,WAFFLE SLAB CRACK REPAIR - 2nd Priority,Complete,CONSTRUCTION,,B1 - Area 8 (Gridlines 18-21),L2 - SubFab Level,,CONSTRUCTION,,Pour Concrete,,,2024-04-08 07:00,2024-04-17 13:00,2024-03-25 07:00,2024-03-30 13:00,2025-11-20 17:00,2025-11-20 17:00,2025-12-05 17:00,2025-12-05 17:00,0,56,100
CN.BB31.ST.1480,WAFFLE SLAB CRACK REPAIR - 5th Priority - A2 - GL 15-12 - L2,Complete,CONSTRUCTION,,A2 - Area 5 (Gridlines 15-12),L2 - SubFab Level,,CONSTRUCTION,INFINITY,Pour Concrete,,,2024-03-29 07:00,2024-04-05 13:00,2024-03-29 07:00,2024-06-25 17:00,2025-11-20 17:00,2025-11-20 17:00,2025-12-05 17:00,2025-12-05 17:00,0,56,100
CN.BB31.ST.1490,WAFFLE SLAB CRACK REPAIR - 4th Priority,Complete,CONSTRUCTION,,A1 - Area 6 (Gridlines 18-15),L2 - SubFab Level,,CONSTRUCTION,,Pour Concrete,,,2024-04-01 07:00,2024-04-04 17:00,2024-04-01 07:00,2024-04-05 17:00,2025-11-20 17:00,2025-11-20 17:00,2025-12-05 17:00,2025-12-05 17:00,0,40,100
CN.SEA5.6600,PAINT BOLTS - GL 1-6 - A LINE [SUP EXTERIOR WALL] - PHASE 2 - WEEKEND WORK DURING STARCON STANDDOWN,Complete,CONSTRUCTION,,SUES-5 - 6-1 - FIZ - GL A -E,EXTERIOR SKIN,,CONSTRUCTION,ALPHA,INSULATED METAL PANELS,,,2024-07-01 07:00,2024-07-01 17:00,2024-06-22 07:00,2024-06-23 17:00,2025-11-20 17:00,2025-11-20 17:00,2025-11-21 07:00,2025-11-21 07:00,0,10,100
CN.SEB1.1500,PAINT BOLTS - GL 18-19 - A LINE [SUP EXTERIOR WALL] (MEP TANK LEAVEOUT),Complete,CONSTRUCTION,,SUES-1 - 19-16,EXTERIOR SKIN,,CONSTRUCTION,ALPHA,INSULATED METAL PANELS,,,2024-11-14 07:00,2024-11-18 17:00,2024-11-14 07:00,2024-11-20 17:00,2025-11-20 17:00,2025-11-20 17:00,2025-12-05 17:00,2025-12-05 17:00,0,30,100
CN.SEB3.6260,PAINT BOLTS GL 25-28 - A LINE [SUP EXTERIOR WALL],Complete,CONSTRUCTION,,SUEN-3 - 25-28,EXTERIOR SKIN,,CONSTRUCTION,,INSULATED METAL PANELS,,,2024-04-08 07:00,2024-04-12 17:00,2024-04-08 07:00,2024-04-11 17:00,2025-11-20 17:00,2025-11-20 17:00,2025-09-30 07:00,2025-09-30 07:00,0,30,100
CN.SEB2.1260,PAINT BOLTS - SEB2 - GL 22-25 [SUP EXTERIOR WALL],Complete,CONSTRUCTION,,SUEN-2 - 22-25,EXTERIOR SKIN,,CONSTRUCTION,,,,,2024-03-09 08:00,2024-03-11 12:00,2024-03-08 08:00,2024-03-14 15:00,2025-11-20 17:00,2025-11-20 17:00,2025-09-30 07:00,2025-09-30 07:00,0,24,100
CN.SEB4.1190,PAINT BOLTS - GL 28-31 - A LINE [SUP EXTERIOR WALL],Complete,CONSTRUCTION,,SUEN-4 - 28-31,EXTERIOR SKIN,,CONSTRUCTION,ALPHA,INSULATED METAL PANELS,,,2024-05-07 07:00,2024-05-10 17:00,2024-05-07 07:00,2024-05-10 17:00,2025-11-20 17:00,2025-11-20 17:00,2025-09-30 07:00,2025-09-30 07:00,0,30,100
CN.SEB5.1210,PAINT BOLTS - GL 31-33 - A LINE [SUP EXTERIOR WALL],Complete,CONSTRUCTION,,SUEN-5 - 31-33,EXTERIOR SKIN,,CONSTRUCTION,ALPHA,INSULATED METAL PANELS,,,2024-05-24 07:00,2024-05-30 17:00,2024-05-07 07:00,2024-05-18 17:00,2025-11-20 17:00,2025-11-20 17:00,2025-09-30 07:00,2025-09-30 07:00,0,30,100
CN.SWA2.1620,PAINT BOLTS - GL 12-15 - N LINE [SUP EXTERIOR WALL],Complete,CONSTRUCTION,,SUWS-2 - 15-12,EXTERIOR SKIN,,CONSTRUCTION,ALPHA,INSULATED METAL PANELS,,,2024-08-27 07:00,2024-08-29 17:00,2024-07-19 07:00,2024-07-26 17:00,2025-11-20 17:00,2025-11-20 17:00,2025-12-04 17:00,2025-12-04 17:00,0,30,100
CN.SWA5.1320,PAINT BOLTS - SWA5 - GL 6-3 [SUP EXTERIOR WALL],Complete,CONSTRUCTION,,FIZ 2 / SUWS 5  (GL6-1) - GL J - N - DATA CENTER 1,EXTERIOR SKIN,,CONSTRUCTION,,INSULATED METAL PANELS,,,2024-04-08 07:00,2024-04-12 11:00,2024-04-02 00:00,2024-04-06 00:00,2025-11-20 17:00,2025-11-20 17:00,2025-12-04 07:00,2025-12-04 07:00,0,24,100
CN.SWA4.6580,PAINT BOLTS - GL 1-4 - N LINE [SUP EXTERIOR WALL],Complete,CONSTRUCTION,,FIZ 2 / SUWS 5  (GL6-1) - GL J - N - DATA CENTER 1,EXTERIOR SKIN,,CONSTRUCTION,ALPHA,INSULATED METAL PANELS,,,2024-07-08 07:00,2024-07-16 17:00,2024-06-25 07:00,2024-07-10 17:00,2025-11-20 17:00,2025-11-20 17:00,2025-09-04 07:00,2025-09-04 07:00,0,60,100
CN.SWB1.1660,PAINT BOLTS - GL 18.5-20(LOADING PLATFORM)- N LINE [SUP EXTERIOR WALL],Complete,CONSTRUCTION,,SUWN-1 - 18-21,EXTERIOR SKIN,,CONSTRUCTION,ALPHA,INSULATED METAL PANELS,,,2024-11-07 07:00,2024-11-11 17:00,2024-11-21 07:00,2024-12-04 17:00,2025-11-20 17:00,2025-11-20 17:00,2025-11-21 07:00,2025-11-21 07:00,0,30,100
CN.SWB1.5130,PAINT BOLTS - GL 17-18 - N LINE [SUP EXTERIOR WALL] (BUCK HOIST ),Complete,CONSTRUCTION,,SUWN-1 - 18-21,EXTERIOR SKIN,,CONSTRUCTION,ALPHA,INSULATED METAL PANELS,,,2025-02-26 07:00,2025-02-28 17:00,2025-02-26 07:00,2025-02-28 17:00,2025-11-20 17:00,2025-11-20 17:00,2025-12-05 17:00,2025-12-05 17:00,0,30,100
CN.SWB2.1530,PAINT BOLTS GL 21-24 - N LINE [SUP EXTERIOR WALL],Complete,CONSTRUCTION,,SUWN-2 - 21-24,EXTERIOR SKIN,,CONSTRUCTION,,INSULATED METAL PANELS,,,2024-04-08 07:00,2024-04-12 11:00,2024-04-01 00:00,2024-04-08 17:00,2025-11-20 17:00,2025-11-20 17:00,2025-08-26 07:00,2025-08-26 07:00,0,24,100
CN.SWB2.6770,IMPACT [ES 28] - PAINT BOLTS AT OPENING GL 21-24 - N LINE [SUP EXTERIOR WALL],Complete,CONSTRUCTION,,SUWN-2 - 21-24,EXTERIOR SKIN,,CONSTRUCTION,ALPHA,INSULATED METAL PANELS,,,2024-04-18 07:00,2024-04-22 17:00,2024-04-18 07:00,2024-04-25 17:00,2025-11-20 17:00,2025-11-20 17:00,2025-09-29 07:00,2025-09-29 07:00,0,30,100
CN.SWB3.1290,PAINT BOLTS - GL 24-27 [SUP EXTERIOR WALL],Complete,CONSTRUCTION,,SUWN-3 - 24-27,EXTERIOR SKIN,,CONSTRUCTION,ALPHA,INSULATED METAL PANELS,,,2024-07-19 07:00,2024-07-23 17:00,2024-07-12 07:00,2024-07-18 17:00,2025-11-20 17:00,2025-11-20 17:00,2025-08-26 07:00,2025-08-26 07:00,0,30,100
CN.SWB3.4990,PAINT BOLTS - GL 26-27 - N LINE [SUP EXTERIOR WALL],Complete,CONSTRUCTION,,SUWN-3 - 24-27,EXTERIOR SKIN,,CONSTRUCTION,ALPHA,INSULATED METAL PANELS,,,2024-09-27 07:00,2024-09-30 17:00,2024-09-17 07:00,2024-09-21 17:00,2025-11-20 17:00,2025-11-20 17:00,2025-09-29 07:00,2025-09-29 07:00,0,20,100
CN.SWB4.1300,PAINT BOLTS - GL 27-30 - N LINE [SUP EXTERIOR WALL],Complete,CONSTRUCTION,,SUWN-4 - 27-30,EXTERIOR SKIN,,CONSTRUCTION,ALPHA,INSULATED METAL PANELS,,,2024-09-19 07:00,2024-09-23 17:00,2024-09-19 07:00,2024-09-26 17:00,2025-11-20 17:00,2025-11-20 17:00,2025-08-26 07:00,2025-08-26 07:00,0,30,100
CN.SWB5.1310,PAINT BOLTS - GL 30-33 - N LINE [SUP EXTERIOR WALL & PH WALL],Complete,CONSTRUCTION,,SUWN-5 - 30-33,EXTERIOR SKIN,,CONSTRUCTION,ALPHA,INSULATED METAL PANELS,,,2024-09-03 07:00,2024-09-05 17:00,2024-08-15 07:00,2024-08-21 17:00,2025-11-20 17:00,2025-11-20 17:00,2025-12-05 17:00,2025-12-05 17:00,0,30,100
CN.BB31.ST.1280,WAFFLE SLAB CRACK REPAIR - 1st Priority,Complete,CONSTRUCTION,,B3 - Area 10 (Gridlines 24-27),L2 - SubFab Level,,CONSTRUCTION,,Pour Concrete,,,2024-03-27 07:00,2024-04-03 13:00,2024-03-27 07:00,2024-04-02 13:00,2025-11-20 17:00,2025-11-20 17:00,2025-12-05 17:00,2025-12-05 17:00,0,56,100
MS.ALL.MS.1140,YATES - INSULATED METAL PANELS COMPLETE - EAST,Not Started,CONTRACTOR MILESTONES,,Key Milestones,Milestones,,MILESTONE,,,,,2025-11-21 17:00,2025-11-21 17:00,,,2025-11-21 17:00,2025-11-21 17:00,2025-12-05 17:00,2025-12-05 17:00,0,0,0
MS.ALL.MS.5400,YATES - INSULATED METAL PANELS COMPLETE - WEST,Not Started,CONTRACTOR MILESTONES,,Key Milestones,Milestones,,MILESTONE,,,,,2025-12-09 17:00,2025-12-09 17:00,,,2025-12-09 17:00,2025-12-09 17:00,2025-12-05 17:00,2025-12-05 17:00,0,0,0
MS.ALL.MS.1090,GC - STRUCTURAL STEEL ERECTION COMPLETE - Incl Elevator Door fronts,Not Started,CONTRACTOR MILESTONES,,Key Milestones,Milestones,,MILESTONE,,,,,2025-11-20 17:00,2025-11-20 17:00,,,2025-11-20 17:00,2025-11-20 17:00,2025-12-05 17:00,2025-12-05 17:00,0,0,0
CN.SWB1.1670,INSPECT BASE COAT SWB-1 ROOF GL 18-21,Complete,CONSTRUCTION,,SUWN-1 - 18-21,L4 - SUP Roof - FAB Roof,,CONSTRUCTION,,,,,2024-03-18 08:00,2024-03-18 16:00,2024-03-18 08:00,2024-03-18 16:00,2025-11-20 17:00,2025-11-20 17:00,2025-11-21 07:00,2025-11-21 07:00,0,8,100
CN.SWB1.5150,INSPECT TOP COAT SWB-1 ROOF GL 18-21,Complete,CONSTRUCTION,,SUWN-1 - 18-21,L4 - SUP Roof - FAB Roof,,CONSTRUCTION,,TOPPING,,,2024-03-22 07:00,2024-03-22 15:00,2024-03-21 11:00,2024-03-22 09:00,2025-11-20 17:00,2025-11-20 17:00,2025-11-21 07:00,2025-11-21 07:00,0,8,100
CN.SWB1.5160,INSPECT CRICKET - SWB-1 ROOF GL 18-21,Complete,CONSTRUCTION,,SUWN-1 - 18-21,L4 - SUP Roof - FAB Roof,,CONSTRUCTION,,TOPPING,,,2024-03-28 07:00,2024-03-28 15:00,2024-03-28 07:00,2024-03-28 15:00,2025-11-20 17:00,2025-11-20 17:00,2025-11-21 07:00,2025-11-21 07:00,0,8,100
CN.SWB1.5170,INSPECT PRIMER CRICKET - SWB-1 ROOF GL 18-21,Complete,CONSTRUCTION,,SUWN-1 - 18-21,L4 - SUP Roof - FAB Roof,,CONSTRUCTION,,TOPPING,,,2024-04-01 07:00,2024-04-01 15:00,2024-03-30 15:00,2024-03-30 16:00,2025-11-20 17:00,2025-11-20 17:00,2025-11-21 07:00,2025-11-21 07:00,0,8,100
CN.SWB1.5180,INSPECT BASE COAT CRICKET - SWB-1 ROOF GL 18-21,Complete,CONSTRUCTION,,SUWN-1 - 18-21,L4 - SUP Roof - FAB Roof,,CONSTRUCTION,,TOPPING,,,2024-04-04 08:00,2024-04-04 16:00,2024-04-04 08:00,2024-04-04 16:00,2025-11-20 17:00,2025-11-20 17:00,2025-11-21 07:00,2025-11-21 07:00,0,8,100
CN.SWB1.5190,INSPECT TOP COAT CRICKET - SWB-1 ROOF GL 18-21,Complete,CONSTRUCTION,,SUWN-1 - 18-21,L4 - SUP Roof - FAB Roof,,CONSTRUCTION,,TOPPING,,,2024-04-08 07:00,2024-04-08 15:00,2024-04-06 08:00,2024-04-06 16:00,2025-11-20 17:00,2025-11-20 17:00,2025-11-21 07:00,2025-11-21 07:00,0,8,100
CN.SWB3.5010,INSPECT PRIMER - GL 24-26 - L4 - L-N - ROOF,Complete,CONSTRUCTION,,SUWN-3 - 24-27,L4 - SUP Roof - FAB Roof,,CONSTRUCTION,BRAZOS,TOPPING,,,2024-06-07 07:00,2024-06-07 17:00,2024-05-27 07:00,2024-05-27 17:00,2025-11-20 17:00,2025-11-20 17:00,2025-12-05 17:00,2025-12-05 17:00,0,10,100
CN.SWB3.5020,INSPECT BASE COAT - GL 24-26 - L4 - L-N - ROOF,Complete,CONSTRUCTION,,SUWN-3 - 24-27,L4 - SUP Roof - FAB Roof,,CONSTRUCTION,BRAZOS,TOPPING,,,2024-06-10 07:00,2024-06-10 17:00,2024-05-30 07:00,2024-05-30 17:00,2025-11-20 17:00,2025-11-20 17:00,2025-12-05 17:00,2025-12-05 17:00,0,10,100
CN.SWB3.5030,INSPECT TOP COAT - GL 24-26 - L4 - L-N - ROOF,Complete,CONSTRUCTION,,SUWN-3 - 24-27,L4 - SUP Roof - FAB Roof,,CONSTRUCTION,BRAZOS,TOPPING,,,2024-06-10 07:00,2024-06-10 17:00,2024-06-01 07:00,2024-06-01 17:00,2025-11-20 17:00,2025-11-20 17:00,2025-12-05 17:00,2025-12-05 17:00,0,10,100
CN.SWB3.5040,INSPECT BASE COAT CRICKET - GL 24-26 - L4 - L-N - ROOF,Complete,CONSTRUCTION,,SUWN-3 - 24-27,L4 - SUP Roof - FAB Roof,,CONSTRUCTION,BRAZOS,TOPPING,,,2024-06-20 07:00,2024-06-20 17:00,2024-06-03 07:00,2024-06-03 17:00,2025-11-20 17:00,2025-11-20 17:00,2025-12-05 17:00,2025-12-05 17:00,0,10,100
CN.SWB3.5050,INSPECT TOP COAT CRICKET - GL 24-26 - L4 - L-N - ROOF,Complete,CONSTRUCTION,,SUWN-3 - 24-27,L4 - SUP Roof - FAB Roof,,CONSTRUCTION,BRAZOS,TOPPING,,,2024-06-24 07:00,2024-06-24 17:00,2024-06-04 07:00,2024-06-04 17:00,2025-11-20 17:00,2025-11-20 17:00,2025-12-05 17:00,2025-12-05 17:00,0,10,100
CN.SWB5.6910,INSPECT TOP COAT CRICKET - GL 29-31 - L4 - L-N - ROOF - (Including Pent house Ramp),Complete,CONSTRUCTION,,SUWN-5 - 30-33,L4 - SUP Roof - FAB Roof,,CONSTRUCTION,BRAZOS,TOPPING,,,2024-12-05 07:00,2024-12-05 17:00,2024-12-05 07:00,2024-12-05 17:00,2025-11-20 17:00,2025-11-20 17:00,2025-12-05 17:00,2025-12-05 17:00,0,10,100
CN.AB.AR.3500,INTUMESCENT PAINT FIREPROOFING - SWB5 - L3- GL 30-33 K-N (CRT LAB),Complete,CONSTRUCTION,,SUWN-5 - 30-33,L3 / Waffle Slab Level,CRT LAB,CONSTRUCTION,ROLLING PLAINS,,,,2024-06-17 07:00,2024-06-27 17:00,2024-06-15 07:00,2024-06-24 17:00,2025-11-20 17:00,2025-11-20 17:00,2025-12-01 07:00,2025-12-01 07:00,0,70,100
CN.AB.AR.5140,INTUMESCENT PAINT FIREPROOFING - FA LAB NORTH - SWA4 - GL 9-3 - L-N - L3,Complete,CONSTRUCTION,,SUWS-4 - 9-6,L3 / Waffle Slab Level,FA LAB,CONSTRUCTION,ROLLING PLAINS,,,,2024-06-06 07:00,2024-06-18 17:00,2024-06-06 07:00,2024-06-15 17:00,2025-11-20 17:00,2025-11-20 17:00,2025-12-05 17:00,2025-12-05 17:00,0,80,100
CN.SWA3.2030,INTUMESCENT PAINT FIREPROOFING - SUB CLEAN ROOM SOUTH - SWA3 - GL 12-9 - L-N - L3,Complete,CONSTRUCTION,,SUWS-3 - 12-9,L3 / Waffle Slab Level,SUB CLEAN RM,CONSTRUCTION,ROLLING PLAINS,,,,2024-06-06 07:00,2024-06-17 17:00,2024-06-06 07:00,2024-06-15 17:00,2025-11-20 17:00,2025-11-20 17:00,2025-12-01 07:00,2025-12-01 07:00,0,70,100
CN.AB.AR.5510,INTUMESCENT PAINT FIREPROOFING - SUB CLEAN ROOM - SWA2 - GL 15-12 - L3,Complete,CONSTRUCTION,,SUWS-2 - 15-12,L3 / Waffle Slab Level,SUB CLEAN RM,CONSTRUCTION,ROLLING PLAINS,,,,2024-06-10 07:00,2024-06-20 17:00,2024-06-10 07:00,2024-06-18 17:00,2025-11-20 17:00,2025-11-20 17:00,2025-12-01 07:00,2025-12-01 07:00,0,70,100
CN.AB.AR.5820,INTUMESCENT PAINT FIREPROOFING - SWB5 - L3 - GL 15-18 (SUB CLEAN RM),Complete,CONSTRUCTION,,SUWS-1 - 18-15,L3 / Waffle Slab Level,SUB CLEAN RM,CONSTRUCTION,ROLLING PLAINS,,,,2024-06-10 07:00,2024-06-17 17:00,2024-06-10 07:00,2024-06-18 17:00,2025-11-20 17:00,2025-11-20 17:00,2025-12-01 07:00,2025-12-01 07:00,0,50,100
CN.SEB3.1261,SPRAY SFRM FIREPROOFING - WAFER I/O - SEB3 - GL 25-28 - C-A - L1 - (Need Scaffold Access),Complete,CONSTRUCTION,,SUEN-3 - 25-28,L1 - Fndn Slab,WAFER I/O RM,CONSTRUCTION,ROLLING PLAINS,,,,2024-09-16 07:00,2024-10-04 17:00,2024-09-16 07:00,2024-10-01 17:00,2025-11-20 17:00,2025-11-20 17:00,2025-11-26 07:00,2025-11-26 07:00,0,120,100
CN.AB.AR.2600,INTUMSCENT PAINT FIREPROOFING - WAFER I/O RM - SEB3 - GL 25-28 - C-A - L3,Complete,CONSTRUCTION,,SUEN-3 - 25-28,L3 / Waffle Slab Level,WAFER I/O RM,CONSTRUCTION,ROLLING PLAINS,,,,2024-07-12 07:00,2024-07-29 17:00,2024-06-21 14:46,2024-07-06 17:00,2025-11-20 17:00,2025-11-20 17:00,2025-11-26 07:00,2025-11-26 07:00,0,120,100
CN.SEB1.7190,IMPACT - STARCON MATERIAL IN THE WAYGL 21-24 - L LINE (DS AREA),Complete,CONSTRUCTION,,SUWN-2 - 21-24,EXTERIOR SKIN,,CONSTRUCTION,,,,,2024-03-18 07:00,2024-03-23 17:00,2024-03-17 20:44,2024-03-26 15:00,2025-11-20 17:00,2025-11-20 17:00,2025-11-21 07:00,2025-11-21 07:00,0,40,100
CN.SEA3.6780,IMPACT [C17] - GREENBERRY INSTALL & PROTECT OAC PIPE / TURNOVER TO YATES - OAC PADS - CL 11-7 - L4 [COMMIT END = 4/6],Complete,CONSTRUCTION,,SUES-4 - 9-6,L4 - SUP Roof - FAB Roof,,CONSTRUCTION,SECAI,,,,2024-04-08 07:00,2024-04-17 13:00,2024-04-01 00:00,2024-05-13 17:00,2025-11-20 17:00,2025-11-20 17:00,2025-12-04 07:00,2025-12-04 07:00,0,56,100
CN.SEA2.6550,IMPACT [C17] - GREENBERRY INSTALL & PROTECT OAC PIPE / TURNOVER TO YATES - OAC PADS - CL 16-12 - L4 [COMMIT END = 4/13],Complete,CONSTRUCTION,,SUES-2 - 16-13,L4 - SUP Roof - FAB Roof,,CONSTRUCTION,SECAI,,,,2024-05-31 07:00,2024-06-10 17:00,2024-04-15 07:00,2024-06-01 17:00,2025-11-20 17:00,2025-11-20 17:00,2025-12-05 17:00,2025-12-05 17:00,0,60,100
CN.SEA3.6790,IMPACT [C17] - GREENBERRY INSTALL & PROTECT OAC PIPE / TURNOVER TO YATES - OAC PADS - CL 22-17 - L4 [COMMIT END = 4/20],Complete,CONSTRUCTION,,SUEN-1 - 19-22,L4 - SUP Roof - FAB Roof,,CONSTRUCTION,SECAI,,,,2024-06-07 07:00,2024-06-17 17:00,2024-04-22 07:00,2024-06-24 17:00,2025-11-20 17:00,2025-11-20 17:00,2025-12-05 17:00,2025-12-05 17:00,0,60,100
CN.SEA3.6800,IMPACT [C17] - GREENBERRY INSTALL & PROTECT OAC PIPE / TURNOVER TO YATES - OAC PADS - CL 30-23 - L4 [COMMIT END = 4/27],Complete,CONSTRUCTION,,SUEN-3 - 25-28,L4 - SUP Roof - FAB Roof,,CONSTRUCTION,SECAI,,,,2024-06-17 07:00,2024-06-25 17:00,2024-04-29 07:00,2024-06-24 17:00,2025-11-20 17:00,2025-11-20 17:00,2025-12-05 17:00,2025-12-05 17:00,0,60,100
CN.SEA1.6590,CURE & SURFACE PREP AIRLOCK WALLS - SEA1 - GL 19-17 - L4,Complete,CONSTRUCTION,,SUES-1 - 19-16,L4 - SUP Roof - FAB Roof,,CONSTRUCTION,BAKER,,,,2024-07-12 07:00,2024-07-15 17:00,2024-07-04 07:00,2024-07-08 17:00,2025-11-20 17:00,2025-11-20 17:00,2025-12-05 17:00,2025-12-05 17:00,0,20,100
CN.SEA2.6560,CURE & SURFACE PREP AIRLOCK WALLS - SEA2 - GL 16-12 - L4,Complete,CONSTRUCTION,,SUES-2 - 16-13,L4 - SUP Roof - FAB Roof,,CONSTRUCTION,BAKER,,,,2024-06-21 07:00,2024-06-24 17:00,2024-06-08 07:00,2024-06-11 17:00,2025-11-20 17:00,2025-11-20 17:00,2025-12-05 17:00,2025-12-05 17:00,0,20,100
CN.SEA3.6080,CURE & SURFACE PREP AIRLOCK WALLS - SEA3 - GL 11-9 - L4,Complete,CONSTRUCTION,,SUES-3 - 13-9,L4 - SUP Roof - FAB Roof,,CONSTRUCTION,BAKER,,,,2024-06-07 07:00,2024-06-10 17:00,2024-05-26 07:00,2024-05-30 17:00,2025-11-20 17:00,2025-11-20 17:00,2025-12-05 17:00,2025-12-05 17:00,0,20,100
CN.SEA3.6810,CURE & SURFACE PREP AIRLOCK WALLS - SEA4 - GL 9-7 - L4,Complete,CONSTRUCTION,,SUES-4 - 9-6,L4 - SUP Roof - FAB Roof,,CONSTRUCTION,BAKER,,,,2024-06-03 07:00,2024-06-04 17:00,2024-05-26 07:00,2024-05-30 17:00,2025-11-20 17:00,2025-11-20 17:00,2025-12-04 07:00,2025-12-04 07:00,0,20,100
CN.SEA3.6820,CURE & SURFACE PREP AIRLOCK WALLS - SEB1 - GL 19-22 - L4,Complete,CONSTRUCTION,,SUEN-1 - 19-22,L4 - SUP Roof - FAB Roof,,CONSTRUCTION,BAKER,,,,2024-07-12 07:00,2024-07-15 17:00,2024-07-04 07:00,2024-07-08 17:00,2025-11-20 17:00,2025-11-20 17:00,2025-12-05 17:00,2025-12-05 17:00,0,20,100
CN.SEA3.6830,CURE & SURFACE PREP AIRLOCK WALLS - SEB2 - GL 23-25 - L4,Complete,CONSTRUCTION,,SUEN-2 - 22-25,L4 - SUP Roof - FAB Roof,,CONSTRUCTION,BAKER,,,,2024-07-12 07:00,2024-07-15 17:00,2024-07-04 07:00,2024-07-08 17:00,2025-11-20 17:00,2025-11-20 17:00,2025-12-05 17:00,2025-12-05 17:00,0,20,100
CN.SEA3.6840,CURE & SURFACE PREP AIRLOCK WALLS - SEB3 - GL 25-27 - L4,Complete,CONSTRUCTION,,SUEN-3 - 25-28,L4 - SUP Roof - FAB Roof,,CONSTRUCTION,BAKER,,,,2024-07-12 07:00,2024-07-15 17:00,2024-07-04 07:00,2024-07-08 17:00,2025-11-20 17:00,2025-11-20 17:00,2025-12-05 17:00,2025-12-05 17:00,0,20,100
CN.BB31.ST.1500,IMPACT - COLUMN CRACK - 3RD INSPECTION PROCEDURE - ALL COLUMNS - L2,Complete,CONSTRUCTION,,B3 - Area 10 (Gridlines 24-27),L2 - SubFab Level,,CONSTRUCTION,,,,,2024-03-22 07:00,2024-03-27 17:00,2024-03-22 07:00,2024-03-26 17:00,2025-11-20 17:00,2025-11-20 17:00,2025-12-05 17:00,2025-12-05 17:00,0,40,100
CN.SWB3.5060,INSTALL CRICKET - GL 24-26 - L4 - L-N - ROOF,Complete,CONSTRUCTION,,SUWN-3 - 24-27,L4 - SUP Roof - FAB Roof,,CONSTRUCTION,BRAZOS,TOPPING,,,2024-06-11 07:00,2024-06-18 17:00,2024-06-02 07:00,2024-06-02 17:00,2025-11-20 17:00,2025-11-20 17:00,2025-12-05 17:00,2025-12-05 17:00,0,50,100
CN.SWB3.5070,INSPECT CRICKET - GL 24-26 - L4 - L-N - ROOF,Complete,CONSTRUCTION,,SUWN-3 - 24-27,L4 - SUP Roof - FAB Roof,,CONSTRUCTION,BRAZOS,TOPPING,,,2024-06-17 07:00,2024-06-17 17:00,2024-06-02 07:00,2024-06-02 17:00,2025-11-20 17:00,2025-11-20 17:00,2025-12-05 17:00,2025-12-05 17:00,0,10,100
CN.SWB3.5080,INSTALL PRIMER CRICKET - GL 24-26 - L4 - L-N - ROOF,Complete,CONSTRUCTION,,SUWN-3 - 24-27,L4 - SUP Roof - FAB Roof,,CONSTRUCTION,BRAZOS,TOPPING,,,2024-06-18 07:00,2024-06-18 17:00,2024-06-03 07:00,2024-06-03 17:00,2025-11-20 17:00,2025-11-20 17:00,2025-12-05 17:00,2025-12-05 17:00,0,10,100
CN.SWB3.5090,INSPECT PRIMER CRICKET - GL 24-26 - L4 - L-N - ROOF,Complete,CONSTRUCTION,,SUWN-3 - 24-27,L4 - SUP Roof - FAB Roof,,CONSTRUCTION,BRAZOS,TOPPING,,,2024-06-18 07:00,2024-06-18 17:00,2024-06-03 07:00,2024-06-03 17:00,2025-11-20 17:00,2025-11-20 17:00,2025-12-05 17:00,2025-12-05 17:00,0,10,100
CN.SEB1.7270,IMPACT - WAY ENGINEERING PIPE AND RACK OBSTRUCTING FIREPROOFING IN AREA - GL 19-33 - D-E - L3,Complete,CONSTRUCTION,,SUEN-5 - 31-33,DS/AD,,CONSTRUCTION,ROLLING PLAINS,,,,2024-03-25 07:00,2024-03-28 17:00,2024-02-21 07:00,2024-04-10 17:00,2025-11-20 17:00,2025-11-20 17:00,2025-11-26 07:00,2025-11-26 07:00,0,40,100
CN.SEA1.3090,F/R/P/C/W EQPT PADS - SEA1 - GL 19-16 - D-E - L4/E,Complete,CONSTRUCTION,,SUES-1 - 19-16,DS/AD,,CONSTRUCTION,BRAZOS,,,,2024-08-16 07:00,2024-08-20 17:00,2024-07-22 07:00,2024-07-23 17:00,2025-11-20 17:00,2025-11-20 17:00,2025-12-05 17:00,2025-12-05 17:00,0,30,100
CN.SEA5.1500,F/R/P/C/W EQPT PADS - SEA5 - GL 6-3 - D-E - L4/E,Complete,CONSTRUCTION,,SUES-5 - 6-1 - FIZ - GL A -E,DS/AD,,CONSTRUCTION,BRAZOS,,,,2024-10-10 07:00,2024-10-10 17:00,2024-10-10 07:00,2024-10-10 17:00,2025-11-20 17:00,2025-11-20 17:00,2025-12-05 17:00,2025-12-05 17:00,0,10,100
CN.SEB1.1510,F/R/P/C/W EQPT PADS - SEB1 - GL 19-22 - D-E - L4/E,Complete,CONSTRUCTION,,SUEN-1 - 19-22,DS/AD,,CONSTRUCTION,BRAZOS,,,,2024-08-16 07:00,2024-08-20 17:00,2024-07-22 07:00,2024-07-23 17:00,2025-11-20 17:00,2025-11-20 17:00,2025-12-05 17:00,2025-12-05 17:00,0,30,100
CN.SEB4.1520,F/R/P/C/W EQPT PADS - SEB4 - GL 28-31 - D-E - L4/E,Complete,CONSTRUCTION,,SUEN-4 - 28-31,DS/AD,,CONSTRUCTION,BRAZOS,,,,2024-07-15 07:00,2024-07-17 17:00,2024-07-01 07:00,2024-07-03 17:00,2025-11-20 17:00,2025-11-20 17:00,2025-11-21 07:00,2025-11-21 07:00,0,30,100
CN.SEB5.1580,F/R/P/C/W EQPT PADS - SEB5 - GL 31-33 - D-E - L4/E,Complete,CONSTRUCTION,,SUEN-5 - 31-33,DS/AD,,CONSTRUCTION,BRAZOS,,,,2024-07-15 07:00,2024-07-17 17:00,2024-07-01 07:00,2024-07-03 17:00,2025-11-20 17:00,2025-11-20 17:00,2025-11-21 07:00,2025-11-21 07:00,0,30,100
CN.SWA1.1820,F/R/P/C/W EQPT PADS - SWA1 - GL 18-15 - J-K - L4/E,Complete,CONSTRUCTION,,SUWS-1 - 18-15,DS/AD,,CONSTRUCTION,BRAZOS,,,,2024-07-18 07:00,2024-07-22 17:00,2024-07-10 07:00,2024-07-12 17:00,2025-11-20 17:00,2025-11-20 17:00,2025-11-25 07:00,2025-11-25 07:00,0,30,100
CN.SWA3.1640,F/R/P/C/W EQPT PADS - SWA3 - GL 12-9 - J-K - L4/E,Complete,CONSTRUCTION,,SUWS-3 - 12-9,DS/AD,,CONSTRUCTION,BRAZOS,,,,2024-07-18 07:00,2024-07-22 17:00,2024-07-10 07:00,2024-07-12 17:00,2025-11-20 17:00,2025-11-20 17:00,2025-12-05 17:00,2025-12-05 17:00,0,30,100
CN.SWA5.1570,F/R/P/C/W EQPT PADS - SWA5 - GL 6-3 - J-K - L4/E,Complete,CONSTRUCTION,,FIZ 2 / SUWS 5  (GL6-1) - GL J - N - DATA CENTER 1,DS/AD,,CONSTRUCTION,BRAZOS,,,,2024-09-20 07:00,2024-09-23 17:00,2024-08-30 07:00,2024-08-31 17:00,2025-11-20 17:00,2025-11-20 17:00,2025-12-05 17:00,2025-12-05 17:00,0,20,100
CN.SWB5.1460,F/R/P/C/W EQPT PADS - SWB5 - GL 30-33 - J-K - L4/E,Complete,CONSTRUCTION,,SUWN-5 - 30-33,DS/AD,,CONSTRUCTION,BRAZOS,,,,2024-06-17 07:00,2024-06-20 17:00,2024-06-06 07:00,2024-06-06 17:00,2025-11-20 17:00,2025-11-20 17:00,2025-11-25 07:00,2025-11-25 07:00,0,30,100
CN.AB.AR.4110,INTUMESCENT PAINT FIREPROOFING - WAFER I/O ROOM - SEB4 - GL 28-31 - C-A - L3,Complete,CONSTRUCTION,,SUEN-4 - 28-31,L3 / Waffle Slab Level,WAFER I/O RM,CONSTRUCTION,ROLLING PLAINS,,,,2024-09-06 07:00,2024-09-26 17:00,2024-07-09 07:00,2024-07-12 17:00,2025-11-20 17:00,2025-11-20 17:00,2025-12-05 17:00,2025-12-05 17:00,0,120,100
CN.SWB1.5200,IMPACT ROOF DRAINS INSTALLED IN WRONG LOCATION- SWA3 - GL 12-9 - L-N - L4 ROOF,Complete,CONSTRUCTION,,SUWS-4 - 9-6,,,CONSTRUCTION,,,,,2024-03-12 07:00,2024-03-22 13:00,2024-03-12 07:00,2024-04-02 17:00,2025-11-20 17:00,2025-11-20 17:00,2025-11-25 07:00,2025-11-25 07:00,0,46,100
CN.SWB5.7040,SECAI DISMANTLES SUPERDECK / TURNOVER AREA TO YATES - GL 33 - LEAVEOUT AREA - E-E.2(COMMITTED 10/21),Complete,CONSTRUCTION,,GRIDLINE 33,GL 33- LEAVEOUTS,GL33 EXTERIOR AREA (FAB EAST) - D-G,CONSTRUCTION,SECAI,,,,2024-08-15 07:00,2024-08-29 17:00,2024-06-17 07:00,2025-06-13 17:00,2025-11-20 17:00,2025-11-20 17:00,2025-11-17 07:00,2025-11-17 07:00,0,100,100
CN.SWB5.7140,FINISH DRYWALL & WATERPROOFING & CMP - GL 33 - L1-L2 - LEAVEOUT AREA - E-E.2,Complete,CONSTRUCTION,,GRIDLINE 33,GL 33- LEAVEOUTS,GL33 EXTERIOR AREA (FAB EAST) - D-G,CONSTRUCTION,BERG,,,,2025-06-24 07:00,2025-07-29 17:00,2025-06-16 07:00,2025-07-15 17:00,2025-11-20 17:00,2025-11-20 17:00,2025-11-17 07:00,2025-11-17 07:00,0,250,100
CN.SWB5.7320,SECAI DISMANTLES SUPER DECK / TURNOVER AREA TO YATES - GL 33 - LEAVEOUT AREA - G-G.2(COMMITTED 10/31),Complete,CONSTRUCTION,,GRIDLINE 33,GL 33- LEAVEOUTS,GL33 EXTERIOR AREA (FAB WEST) - G-K,CONSTRUCTION,SECAI,,,,2024-06-28 07:00,2024-08-19 17:00,2024-06-17 07:00,2024-11-11 17:00,2025-11-20 17:00,2025-11-20 17:00,2025-11-17 07:00,2025-11-17 07:00,0,320,100
CN.SWB5.7330,BERG - FINISH DRYWALL & WATERPROOFING & CMP - GL 33 - L1-L2 - LOADING DECK LEAVEOUT AREA - G-G.2,Complete,CONSTRUCTION,,GRIDLINE 33,GL 33- LEAVEOUTS,GL33 EXTERIOR AREA (FAB WEST) - G-K,CONSTRUCTION,BERG,,,,2024-12-09 07:00,2024-12-23 17:00,2024-11-13 07:00,2025-07-28 17:00,2025-11-20 17:00,2025-11-20 17:00,2025-12-05 17:00,2025-12-05 17:00,0,90,100
CN.SWB5.7510,SECAI DISMANTLES LOADING DECK / TURNOVER AREA TO YATES - GL 33 - LEAVEOUT AREA - H.5-J,Complete,CONSTRUCTION,,GRIDLINE 33,GL 33- LEAVEOUTS,GL33 EXTERIOR AREA (FAB WEST) - G-K,CONSTRUCTION,SECAI,,,,2024-08-15 07:00,2024-08-29 17:00,2024-06-17 07:00,2024-12-10 17:00,2025-11-20 17:00,2025-11-20 17:00,2025-12-05 17:00,2025-12-05 17:00,0,100,100
CN.SWB5.7610,FINISH DRYWALL & WATERPROOFING &CMP - GL 33 - L1-L2 - LOADING DECK LEAVEOUT AREA - H.5-J,Complete,CONSTRUCTION,,GRIDLINE 33,GL 33- LEAVEOUTS,GL33 EXTERIOR AREA (FAB WEST) - G-K,CONSTRUCTION,BERG,,,,2024-12-12 07:00,2025-01-14 17:00,2024-12-12 07:00,2025-07-22 17:00,2025-11-20 17:00,2025-11-20 17:00,2025-12-05 17:00,2025-12-05 17:00,0,200,100
CN.BB51.ST.1385,EXCAVATE FOR FOUNDATION / DEWATERING & PREP FOR FOUNDATION POUR - GL 33 - STAIR 18 - C-D,Complete,CONSTRUCTION,,GRIDLINE 33,,STAIR 18 (EAST) - C-D,CONSTRUCTION,BAKER,,,,2024-05-16 07:00,2024-05-17 17:00,2024-04-30 07:00,2024-05-07 17:00,2025-11-20 17:00,2025-11-20 17:00,2025-11-03 07:00,2025-11-03 07:00,0,20,100
CN.BB51.ST.1660,F/R/P FOUNDATION - GL 33 - STAIR 18 - C-D,Complete,CONSTRUCTION,,GRIDLINE 33,,STAIR 18 (EAST) - C-D,CONSTRUCTION,BAKER,,,,2024-05-31 07:00,2024-06-04 17:00,2024-05-21 07:00,2024-05-25 17:00,2025-11-20 17:00,2025-11-20 17:00,2025-11-03 07:00,2025-11-03 07:00,0,30,100
CN.BB51.ST.1930,EXCAVATE FOR FOUNDATION - GL 33 - STAIR 5 - K-L,Complete,CONSTRUCTION,,GRIDLINE 33,,STAIR 5 (WEST) - K-L,CONSTRUCTION,,,,,2024-04-12 09:00,2024-04-15 15:00,2024-03-22 09:00,2024-03-25 16:00,2025-11-20 17:00,2025-11-20 17:00,2025-11-03 07:00,2025-11-03 07:00,0,16,100
CN.BB51.ST.1940,F/R/P FOUNDATION - GL 33 - STAIR 5 - K-L,Complete,CONSTRUCTION,,GRIDLINE 33,,STAIR 5 (WEST) - K-L,CONSTRUCTION,,,,,2024-04-08 07:00,2024-04-15 17:00,2024-04-03 07:00,2024-04-08 15:00,2025-11-20 17:00,2025-11-20 17:00,2025-11-03 07:00,2025-11-03 07:00,0,40,100
CN.BB51.ST.1960,INSTALL STEEL STAIRS & LANDINGS - GL 33 - STAIR 5 - K-L,Complete,CONSTRUCTION,,GRIDLINE 33,GL 33 STAIR 5 (WEST),STAIR 5 (WEST) - K-L,CONSTRUCTION,PATRIOT,,,,2024-05-24 07:00,2024-06-28 17:00,2024-05-21 07:00,2024-07-09 17:00,2025-11-20 17:00,2025-11-20 17:00,2025-11-03 07:00,2025-11-03 07:00,0,200,100
CN.BB51.ST.1980,POUR TREADS & LANDINGS - GL 33 - STAIR 5 - K-L,Complete,CONSTRUCTION,,GRIDLINE 33,,STAIR 5 (WEST) - K-L,CONSTRUCTION,BAKER,,,,2024-08-16 07:00,2024-08-19 17:00,2024-08-01 07:00,2024-08-02 17:00,2025-11-20 17:00,2025-11-20 17:00,2025-11-03 07:00,2025-11-03 07:00,0,20,100
CN.BB51.ST.2000,METAL STUD FRAMING FOR EXTERIOR WALL - GL 33 - STAIR 5 - K-L (2- SHIFTS),Complete,CONSTRUCTION,,GRIDLINE 33,GL 33 STAIR 5 (WEST),STAIR 5 (WEST) - K-L,CONSTRUCTION,BERG,,,,2024-10-31 07:00,2024-11-15 17:00,2024-10-31 07:00,2024-11-20 17:00,2025-11-20 17:00,2025-11-20 17:00,2025-11-12 07:00,2025-11-12 07:00,0,100,100
CN.BB51.ST.2010,HANG EXTERIOR FRAMING & DRYWALL (1-LAYERS) - GL 33 - STAIR 5 - K-L(2 SHIFTS),Complete,CONSTRUCTION,,GRIDLINE 33,GL 33 STAIR 5 (WEST),STAIR 5 (WEST) - K-L,CONSTRUCTION,BERG,,,,2024-11-21 07:00,2024-11-27 17:00,2024-11-21 07:00,2025-01-31 17:00,2025-11-20 17:00,2025-11-20 17:00,2025-11-12 07:00,2025-11-12 07:00,0,50,100
CN.BB51.ST.2080,INSTALL & INSPECT  INTERIOR DRYWALL VESTIBULE 5 3RD LAYER - GL 33 UPTO LVL 2 - STAIR 5 - K-L,Complete,CONSTRUCTION,,GRIDLINE 33,GL 33 STAIR 5 (WEST),STAIR 5 (WEST) - K-L,CONSTRUCTION,BERG,,,,2025-08-19 07:00,2025-09-09 17:00,2025-08-14 07:00,2025-08-25 17:00,2025-11-20 17:00,2025-11-20 17:00,2025-11-13 07:00,2025-11-13 07:00,0,150,100
CN.BB51.ST.2100,GDA - INSTALL WATERPROOFING & EXPANSION JOINT/EXTERIOR BUILDING WRAP - GL 33 - STAIR 5 - K-L,Complete,CONSTRUCTION,,GRIDLINE 33,GL 33 STAIR 5 (WEST),STAIR 5 (WEST) - K-L,CONSTRUCTION,WATER PROOFING GL33,,,,2025-06-23 07:00,2025-06-25 17:00,2025-06-25 07:00,2025-07-02 17:00,2025-11-20 17:00,2025-11-20 17:00,2025-11-12 07:00,2025-11-12 07:00,0,30,100
CN.BB51.ST.2120,"BERG - INSTALL SCAFFOLD, FRAMING & INSPECT VESTIBULE 5 WALLS - GL 33 - STAIR 5 - K-L - UPTO LVL2",Complete,CONSTRUCTION,,GRIDLINE 33,GL 33 STAIR 5 (WEST),STAIR 5 (WEST) - K-L,CONSTRUCTION,BERG,,,,2025-07-24 07:00,2025-08-13 17:00,2025-07-24 07:00,2025-08-15 17:00,2025-11-20 17:00,2025-11-20 17:00,2025-11-03 07:00,2025-11-03 07:00,0,150,100
CN.BB51.ST.2150,INSTALL CORRUGATED METAL PANELS - GL 33- STAIR 5-K-L,Complete,CONSTRUCTION,,GRIDLINE 33,GL 33 STAIR 5 (WEST),STAIR 5 (WEST) - K-L,CONSTRUCTION,KOVACH,,,,2025-06-26 07:00,2025-07-22 17:00,2025-06-05 07:00,2025-07-24 17:00,2025-11-20 17:00,2025-11-20 17:00,2025-12-05 17:00,2025-12-05 17:00,0,180,100
CN.BB51.ST.2160,INSTALL ROOF DECKING - GL 33 - STAIR 5 - K-L,Complete,CONSTRUCTION,,GRIDLINE 33,,STAIR 5 (WEST) - K-L,CONSTRUCTION,W&W,,,,2024-09-20 07:00,2024-09-23 17:00,2024-08-05 07:00,2024-08-07 17:00,2025-11-20 17:00,2025-11-20 17:00,2025-11-03 07:00,2025-11-03 07:00,0,20,100
CN.BB51.ST.2180,BRAZOS - INSTALL WATERPROOFING & TPO - GL 33 - STAIR 5 - K-L,Complete,CONSTRUCTION,,GRIDLINE 33,GL 33 STAIR 5 (WEST),STAIR 5 (WEST) - K-L,CONSTRUCTION,BRAZOS,,,,2025-07-31 07:00,2025-08-06 17:00,2025-07-31 07:00,2025-08-08 17:00,2025-11-20 17:00,2025-11-20 17:00,2025-11-12 07:00,2025-11-12 07:00,0,50,100
CN.BB51.ST.1970,INSPECT STAIRS - GL 33 - STAIR 5 - K-L,Complete,CONSTRUCTION,,GRIDLINE 33,,STAIR 5 (WEST) - K-L,CONSTRUCTION,PATRIOT,,,,2024-07-12 07:00,2024-07-12 17:00,2024-07-10 07:00,2024-07-10 17:00,2025-11-20 17:00,2025-11-20 17:00,2025-11-03 07:00,2025-11-03 07:00,0,10,100
CN.BB51.ST.2170,SECAI INSTALL ROOF DRAIN & PLUMBING - GL 33 - STAIR 5 - K-L,Complete,CONSTRUCTION,,GRIDLINE 33,GL 33 STAIR 5 (WEST),STAIR 5 (WEST) - K-L,CONSTRUCTION,SECAI,,,,2025-03-28 07:00,2025-03-31 17:00,2025-01-20 07:00,2025-05-07 17:00,2025-11-20 17:00,2025-11-20 17:00,2025-11-12 07:00,2025-11-12 07:00,0,20,100
CN.BB51.ST.2030,SECAI SPRINKLER LINE INSTALL (WHITE PAINT) - GL 33 - STAIR 5 - K-L,Complete,CONSTRUCTION,,GRIDLINE 33,GL 33 STAIR 5 (WEST),STAIR 5 (WEST) - K-L,CONSTRUCTION,SECAI,,,,2025-09-04 07:00,2025-09-12 17:00,2025-07-17 13:11,2025-07-22 13:00,2025-11-20 17:00,2025-11-20 17:00,2025-11-13 07:00,2025-11-13 07:00,0,70,100
CN.BB51.ST.2040,TAPE  & FLOAT & SANDING - VESTIBULE 5 level 3-4 - GL 33 - STAIR 5 DELAYED DUE IOCC 1578,Active,CONSTRUCTION,,GRIDLINE 33,GL 33 STAIR 5 (WEST),STAIR 5 (WEST) - K-L,CONSTRUCTION,CHERRY COATING,,,,2025-10-27 07:00,2025-10-31 17:00,2025-10-27 07:00,,2025-11-24 07:00,2025-12-02 17:00,2025-11-13 07:00,2025-11-19 17:00,50,50,0
CN.BB51.ST.2070,CHERRY - PRIME & FINISH PAINT INTERIOR DRYWALL - Vestibules 5 - Level 1 & 2 - GL 33 - STAIR 5 - K-L(),Not Started,CONSTRUCTION,,GRIDLINE 33,GL 33 STAIR 5 (WEST),STAIR 5 (WEST) - K-L,CONSTRUCTION,CHERRY COATING,,,,2025-11-24 07:00,2025-12-02 17:00,,,2025-11-24 07:00,2025-12-02 17:00,2025-11-20 07:00,2025-11-26 17:00,50,50,0
CN.BB51.ST.2050,BERG - INSTALL DOOR FRAMES - GL 33 - STAIR 5 - K-L - demo drywall and Install PART OF FRAMING,Complete,CONSTRUCTION,,GRIDLINE 33,GL 33 STAIR 5 (WEST),STAIR 5 (WEST) - K-L,CONSTRUCTION,BERG,,,,2025-09-04 07:00,2025-09-11 17:00,2025-08-11 07:00,2025-09-16 17:00,2025-11-20 17:00,2025-11-20 17:00,2025-11-20 07:00,2025-11-20 07:00,0,60,100
CN.BB51.ST.2110,INSTALL - DOOR/HARDWARE/PAINT - GL 33 - STAIR 5 - K-L(),Active,CONSTRUCTION,,GRIDLINE 33,GL 33 STAIR 5 (WEST),STAIR 5 (WEST) - K-L,CONSTRUCTION,ALK,,,,2025-10-17 07:00,2025-10-23 17:00,2025-10-17 07:00,,2025-12-03 07:00,2025-12-09 17:00,2025-11-20 07:00,2025-11-26 17:00,50,50,0
CN.BB51.ST.2140,SECAI - FLOORING  - GL 33 - STAIR 5 - K-L,Not Started,CONSTRUCTION,,GRIDLINE 33,GL 33 STAIR 5 (WEST),STAIR 5 (WEST) - K-L,CONSTRUCTION,FLOOR STRIPING PAINT,,,,2025-12-10 07:00,2025-12-16 17:00,,,2025-12-10 07:00,2025-12-16 17:00,2025-12-01 07:00,2025-12-05 17:00,50,50,0
CN.BB51.ST.2200,IMPACT - CCD 170 (GL 33 CMP PACKAGE) - PREP/SUBMIT SHOP DRAWINGS - CORRUGATED METAL PANELS,Complete,CONSTRUCTION,,GRIDLINE 33,,GL 33 PROCUREMENT ITEMS,CONSTRUCTION,KOVACH,,,,2024-04-22 07:00,2024-05-06 17:00,2024-04-19 07:00,2024-05-13 17:00,2025-11-20 17:00,2025-11-20 17:00,2025-11-03 07:00,2025-11-03 07:00,0,100,100
CN.BB51.ST.2210,IMPACT - CCD 170 (GL 33 CMP PACKAGE) - FABRICATE & DELIVERY - CORRUGATED METAL PANELS,Complete,CONSTRUCTION,,GRIDLINE 33,,GL 33 PROCUREMENT ITEMS,CONSTRUCTION,KOVACH,,,,2024-07-01 07:00,2024-09-06 17:00,2024-06-20 07:00,2024-08-14 17:00,2025-11-20 17:00,2025-11-20 17:00,2025-11-14 07:00,2025-11-14 07:00,0,430,100
CN.SEB3R.4830,CSP-1 SURFACE PREP PRECAST BEAMS & COLUMNS - WAFER I/O - SEB3 - GL 25-28 - C-A - L1,Not Started,CONSTRUCTION,,SUEN-3 - 25-28,L1 - Fndn Slab,WAFER I/O RM,CONSTRUCTION,CHERRY COATING,,,,2025-11-21 07:00,2025-11-21 17:00,,,2025-11-21 07:00,2025-11-21 17:00,2025-11-21 07:00,2025-11-21 17:00,10,10,0
CN.SEB3.1281,CSP-1 SURFACE PREP PRECAST BEAMS & COLUMNS - WAFER I/O RM - SEB3 - GL 25-28 - C-A - L3,Complete,CONSTRUCTION,,SUEN-3 - 25-28,L3 / Waffle Slab Level,WAFER I/O RM,CONSTRUCTION,CHERRY COATING,,,,2024-05-13 07:00,2024-05-23 17:00,2024-05-13 07:00,2024-06-03 12:00,2025-11-20 17:00,2025-11-20 17:00,2025-12-01 07:00,2025-12-01 07:00,0,70,100
CN.SEB4.6390,CSP-1 SURFACE PREP PRECAST BEAMS & COLUMNS - WAFER I/O ROOM - SEB4 - GL 28-31 - C-A - L3,Complete,CONSTRUCTION,,SUEN-4 - 28-31,L3 / Waffle Slab Level,WAFER I/O RM,CONSTRUCTION,CHERRY COATING,,,,2024-06-14 07:00,2024-06-25 17:00,2024-06-03 07:00,2024-07-10 17:00,2025-11-20 17:00,2025-11-20 17:00,2025-12-01 07:00,2025-12-01 07:00,0,70,100
CN.SWA5.L3.250,CSP-1 SURFACE PREP PRECAST BEAMS & COLUMNS - FIZ & FA LAB - SWA5 - GL 6-1 - L-N - L1,Not Started,CONSTRUCTION,,FIZ 2 / SUWS 5  (GL6-1) - GL J - N - DATA CENTER 1,L1 - Fndn Slab,FA/TEM LAB,CONSTRUCTION,CHERRY COATING,,,,2025-11-21 07:00,2025-11-21 17:00,,,2025-11-21 07:00,2025-11-21 17:00,2025-11-21 07:00,2025-11-21 17:00,10,10,0
CN.SWA4.6670,CSP-1 SURFACE PREP PRECAST BEAMS & COLUMNS - FA LAB NORTH - SWA4 - GL 9-3 - L-N - L3,Complete,CONSTRUCTION,,SUWS-4 - 9-6,L3 / Waffle Slab Level,FA LAB,CONSTRUCTION,CHERRY COATING,,,,2024-05-16 07:00,2024-05-28 17:00,2024-05-16 07:00,2024-06-01 17:00,2025-11-20 17:00,2025-11-20 17:00,2025-11-21 07:00,2025-11-21 07:00,0,70,100
CN.SWA3.2040,CSP-1 SURFACE PREP PRECAST BEAMS & COLUMNS - SUB CLEAN ROOM SOUTH - SWA3 - GL 12-9 - L-N - L3,Complete,CONSTRUCTION,,SUWS-3 - 12-9,L3 / Waffle Slab Level,SUB CLEAN RM,CONSTRUCTION,CHERRY COATING,,,,2024-06-03 12:00,2024-06-14 12:00,2024-06-03 12:00,2024-07-16 17:00,2025-11-20 17:00,2025-11-20 17:00,2025-11-21 07:00,2025-11-21 07:00,0,70,100
CN.SWA2.6350,CSP-1 SURFACE PREP PRECAST BEAMS & COLUMNS - SUB CLEAN ROOM - SWA2 - GL 15-12 - L3,Complete,CONSTRUCTION,,SUWS-2 - 15-12,L3 / Waffle Slab Level,SUB CLEAN RM,CONSTRUCTION,CHERRY COATING,,,,2024-07-26 07:00,2024-08-01 17:00,2024-06-10 07:00,2024-07-20 17:00,2025-11-20 17:00,2025-11-20 17:00,2025-11-21 07:00,2025-11-21 07:00,0,50,100
CN.SWA1.1462,CSP-1 SURFACE PREP PRECAST BEAMS & COLUMNS- SWA-1 - L3 - SUB CLEAN ROOM NORTH- GL 17-15 K-N,Complete,CONSTRUCTION,,SUWS-1 - 18-15,L3 / Waffle Slab Level,SUB CLEAN RM,CONSTRUCTION,CHERRY COATING,,,,2024-07-26 07:00,2024-08-01 17:00,2024-07-08 07:00,2024-07-19 17:00,2025-11-20 17:00,2025-11-20 17:00,2025-11-21 07:00,2025-11-21 07:00,0,50,100
CN.AB.AR.3550,CSP-1 SURFACE PREP PRECAST BEAMS & COLUMNS - SWB5 - L3 GL 30-33 K-N (CRT LAB),Complete,CONSTRUCTION,,SUWN-5 - 30-33,L3 / Waffle Slab Level,CRT LAB,CONSTRUCTION,CHERRY COATING,,,,2024-07-11 07:00,2024-07-19 17:00,2024-07-11 07:00,2024-07-18 17:00,2025-11-20 17:00,2025-11-20 17:00,2025-11-21 07:00,2025-11-21 07:00,0,70,100
CN.BB51.ST.2230,EXCAVATION INSPECTION / TURNOVER TO BAKER - GL 33 - STAIR 18 - C-D,Complete,CONSTRUCTION,,GRIDLINE 33,,STAIR 18 (EAST) - C-D,CONSTRUCTION,BAKER,,,,2024-05-28 07:00,2024-05-31 17:00,2024-05-17 07:00,2024-05-20 17:00,2025-11-20 17:00,2025-11-20 17:00,2025-11-03 07:00,2025-11-03 07:00,0,30,100
CN.BB51.ST.2240,EXCAVATION INSPECTION / TURNOVER TO BAKER - GL 33 - STAIR 5 - K-L,Complete,CONSTRUCTION,,GRIDLINE 33,,STAIR 5 (WEST) - K-L,CONSTRUCTION,,,,,2024-04-15 07:00,2024-04-17 11:00,2024-03-26 07:00,2024-03-30 11:00,2025-11-20 17:00,2025-11-20 17:00,2025-11-03 07:00,2025-11-03 07:00,0,24,100
CN.SEB5.6370,CSP-1 SURFACE PREP PRECAST BEAMS & COLUMNS - RETICLE ROOM - SEB5 - GL 31-33 - C-A - L3,Complete,CONSTRUCTION,,SUEN-5 - 31-33,L3 / Waffle Slab Level,RETICLE RM,CONSTRUCTION,CHERRY COATING,,,,2024-07-09 07:00,2024-07-18 17:00,2024-07-09 07:00,2024-07-18 17:00,2025-11-20 17:00,2025-11-20 17:00,2025-12-01 07:00,2025-12-01 07:00,0,70,100
CN.SWB5.6950,AWAITING DISMANTLE TEMP STAIRS - GL 33 - L1-L3 - M LINE,Complete,CONSTRUCTION,,GRIDLINE 33,GL 33- LEAVEOUTS,GL33 EXTERIOR AREA (SUW) - L-N,CONSTRUCTION,SECAI,,,,2024-01-08 07:00,2024-01-17 17:00,2024-01-08 07:00,2024-07-30 17:00,2025-11-20 17:00,2025-11-20 17:00,2025-11-24 07:00,2025-11-24 07:00,0,60,100
CN.SWB5.7970,DISMANTLES TEMP STAIRS - GL 33 - L1-L3 - B LINE,Complete,CONSTRUCTION,,GRIDLINE 33,GL 33- LEAVEOUTS,GL33 EXTERIOR AREA (SUE) - A-C,CONSTRUCTION,SECAI,,,,2024-08-26 07:00,2024-09-03 17:00,2024-08-06 07:00,2024-08-08 17:00,2025-11-20 17:00,2025-11-20 17:00,2025-12-02 07:00,2025-12-02 07:00,0,60,100
CN.SEB1.7290,IMPACT [C3] - SUBMIT/APPROVE CCD 262 FOR BATHROOM PIT HATCH OPENING - SEB1 - L1 - GL21,Complete,CONSTRUCTION,,SUEN-1 - 19-22,L1 - Fndn Slab,BATHROOM,CONSTRUCTION,,,,,2024-04-01 07:00,2024-04-04 17:00,2024-03-29 07:00,2024-04-15 17:00,2025-11-20 17:00,2025-11-20 17:00,2025-11-13 17:00,2025-11-13 17:00,0,40,100
CN.SEB1.7300,IMPACT [C3] - INSTALL BATHROOM PIT HATCH OPENING - SEB1 - L1 - GL21,Complete,CONSTRUCTION,,SUEN-1 - 19-22,L1 - Fndn Slab,BATHROOM,CONSTRUCTION,W&W,,,,2024-04-25 07:00,2024-05-20 17:00,2024-04-16 07:00,2024-04-29 17:00,2025-11-20 17:00,2025-11-20 17:00,2025-11-13 17:00,2025-11-13 17:00,0,150,100
CN.SWA5.1890,IMPACT [C3] - SUBMIT/APPROVE CCD 262 FOR BATHROOM PIT HATCH OPENING - SWA5 - L1 - GL3,Complete,CONSTRUCTION,,FIZ 2 / SUWS 5  (GL6-1) - GL J - N - DATA CENTER 1,L1 - Fndn Slab,BATHROOM,CONSTRUCTION,,,,,2024-04-01 07:00,2024-04-04 17:00,2024-03-29 07:00,2024-04-15 17:00,2025-11-20 17:00,2025-11-20 17:00,2025-11-20 07:00,2025-11-20 07:00,0,40,100
CN.SWA5.1940,IMPACT [C3 / D16] - INSTALL BATHROOM PIT HATCH OPENING - SWA5 - GL 3 - L1,Complete,CONSTRUCTION,,FIZ 2 / SUWS 5  (GL6-1) - GL J - N - DATA CENTER 1,L1 - Fndn Slab,BATHROOM,CONSTRUCTION,W&W,,,,2024-05-10 07:00,2024-06-06 17:00,2024-05-08 07:00,2024-06-06 17:00,2025-11-20 17:00,2025-11-20 17:00,2025-11-20 07:00,2025-11-20 07:00,0,150,100
CN.SWB1..4570,IMPACT [D44] - CABLE TRAYS ON LEVEL OBSTRUCTION - GL 18-19 L-N,Complete,CONSTRUCTION,,SUWN-1 - 18-21,L3 / Waffle Slab Level,ELECTRIC RM 1,CONSTRUCTION,SECAI,,,,2024-04-19 07:00,2024-04-25 17:00,2024-03-25 07:00,2024-06-25 17:00,2025-11-21 07:00,2025-11-21 07:00,2025-11-13 07:00,2025-11-13 07:00,0,50,100
CN.BB51.ST.2310,INSTALL STEEL STAIRS & LANDINGS - GL 33 - STAIR 18 - C-D,Complete,CONSTRUCTION,,GRIDLINE 33,GL 33 STAIR 18 (EAST),STAIR 18 (EAST) - C-D,CONSTRUCTION,PATRIOT,,,,2024-07-08 07:00,2024-08-05 17:00,2024-06-28 07:00,2024-08-23 17:00,2025-11-20 17:00,2025-11-20 17:00,2025-11-03 07:00,2025-11-03 07:00,0,200,100
CN.BB51.ST.2340,"POUR TREADS & LANDINGS / CURE, CLEAN & SLAB GRABBERS - READY FOR EGRESS - GL 33 - STAIR 18 - C-D",Complete,CONSTRUCTION,,GRIDLINE 33,,STAIR 18 (EAST) - C-D,CONSTRUCTION,BAKER,,,,2024-09-20 07:00,2024-09-27 17:00,2024-08-27 07:00,2024-08-30 17:00,2025-11-20 17:00,2025-11-20 17:00,2025-11-03 07:00,2025-11-03 07:00,0,50,100
CN.BB51.ST.2360,METAL STUD FRAMING - GL 33 - STAIR 18 - C-D(),Complete,CONSTRUCTION,,GRIDLINE 33,GL 33 STAIR 18 (EAST),STAIR 18 (EAST) - C-D,CONSTRUCTION,BERG,,,,2024-12-26 07:00,2025-01-09 17:00,2025-01-20 07:00,2025-06-23 17:00,2025-11-20 17:00,2025-11-20 17:00,2025-11-03 07:00,2025-11-03 07:00,0,100,100
CN.BB51.ST.2370,HANG EXTERIOR DRYWALL (1-LAYERS) - GL 33 - STAIR 18 - C-D (),Complete,CONSTRUCTION,,GRIDLINE 33,GL 33 STAIR 18 (EAST),STAIR 18 (EAST) - C-D,CONSTRUCTION,BERG,,,,2025-02-10 07:00,2025-02-14 17:00,2025-02-10 07:00,2025-07-18 17:00,2025-11-20 17:00,2025-11-20 17:00,2025-11-03 07:00,2025-11-03 07:00,0,50,100
CN.BB51.ST.2420,INSTALL & INSPECT DRYWALL STAIR 18 INTERIOR SHAFT (2HR)(3HR) - GL 33 - STAIR 18 - C-D (),Complete,CONSTRUCTION,,GRIDLINE 33,GL 33 STAIR 18 (EAST),STAIR 18 (EAST) - C-D,CONSTRUCTION,BERG,,,,2025-08-19 07:00,2025-09-16 17:00,2025-08-14 07:00,2025-10-02 17:00,2025-11-20 17:00,2025-11-20 17:00,2025-11-19 07:00,2025-11-19 07:00,0,200,100
CN.BB51.ST.2380,GDA - INSTALL WATERPROOFING & EXPANSION JOINT/EXTERIOR BUILDING WRAP - GL 33 - STAIR 18 - C-D,Complete,CONSTRUCTION,,GRIDLINE 33,GL 33 STAIR 18 (EAST),STAIR 18 (EAST) - C-D,CONSTRUCTION,WATER PROOFING GL33,,,,2025-08-20 07:00,2025-08-22 17:00,2025-08-15 07:00,2025-08-20 17:00,2025-11-20 17:00,2025-11-20 17:00,2025-11-19 07:00,2025-11-19 07:00,0,30,100
CN.BB51.ST.2400,BERG - INSTALL & INSPECT FRAMING VESTIBULE 18 - GL 33 - STAIR 18 - C-D (LVL3-4),Complete,CONSTRUCTION,,GRIDLINE 33,GL 33 STAIR 18 (EAST),STAIR 18 (EAST) - C-D,CONSTRUCTION,BERG,,,,2025-08-08 07:00,2025-08-18 17:00,2025-08-14 07:00,2025-11-06 17:00,2025-12-03 17:00,2025-12-03 17:00,2025-11-12 07:00,2025-11-12 07:00,0,70,100
CN.BB51.ST.2430,INSTALL Z-METAL EAST FACE- CMP - GL 33 - STAIR 18 - C-D -,Complete,CONSTRUCTION,,GRIDLINE 33,GL 33 STAIR 18 (EAST),STAIR 18 (EAST) - C-D,CONSTRUCTION,KOVACH,,,,2025-09-24 07:00,2025-09-24 17:00,2025-09-17 07:00,2025-09-18 17:00,2025-11-20 17:00,2025-11-20 17:00,2025-12-04 07:00,2025-12-04 07:00,0,10,100
CN.BB51.ST.2530,INSTALL ROOF DECKING - GL 33 - STAIR 18 - C-D,Complete,CONSTRUCTION,,GRIDLINE 33,,STAIR 18 (EAST) - C-D,CONSTRUCTION,W&W,,,,2024-09-27 07:00,2024-09-30 17:00,2024-08-31 07:00,2024-09-02 17:00,2025-11-20 17:00,2025-11-20 17:00,2025-11-03 07:00,2025-11-03 07:00,0,20,100
CN.BB51.ST.2550,BRAZOS - INSTALL WATERPROOFING & TPO - GL 33 - STAIR 18 - C-D,Complete,CONSTRUCTION,,GRIDLINE 33,GL 33 STAIR 18 (EAST),STAIR 18 (EAST) - C-D,CONSTRUCTION,BRAZOS,,,,2025-09-04 07:00,2025-09-08 17:00,2025-08-26 07:00,2025-08-30 16:00,2025-11-20 17:00,2025-11-20 17:00,2025-12-04 07:00,2025-12-04 07:00,0,30,100
CN.BB51.ST.2330,INSPECT STAIRS - GL 33 - STAIR 18 - C-D,Complete,CONSTRUCTION,,GRIDLINE 33,GL 33 STAIR 18 (EAST),STAIR 18 (EAST) - C-D,CONSTRUCTION,PATRIOT,,,,2024-08-26 07:00,2024-08-26 17:00,2024-08-24 07:00,2024-08-27 17:00,2025-11-20 17:00,2025-11-20 17:00,2025-11-03 07:00,2025-11-03 07:00,0,10,100
CN.BB51.ST.2540,SECAI INSTALL ROOF DRAIN & PLUMBING - GL 33 - STAIR 18 - C-D,Complete,CONSTRUCTION,,GRIDLINE 33,GL 33 STAIR 18 (EAST),STAIR 18 (EAST) - C-D,CONSTRUCTION,SECAI,,,,2025-03-28 07:00,2025-03-31 17:00,2025-01-20 07:00,2025-06-24 17:00,2025-11-20 17:00,2025-11-20 17:00,2025-12-04 07:00,2025-12-04 07:00,0,20,100
CN.BB51.ST.2390,IMPACT - SECAI MEP ROUGH INS - GL 33 - STAIR 18 - C-D,Complete,CONSTRUCTION,,GRIDLINE 33,GL 33 STAIR 18 (EAST),STAIR 18 (EAST) - C-D,CONSTRUCTION,SECAI,,,,2025-08-19 07:00,2025-08-27 17:00,2025-08-06 07:00,2025-08-13 17:00,2025-11-20 17:00,2025-11-20 17:00,2025-11-19 07:00,2025-11-19 07:00,0,70,100
CN.BB51.ST.2450,TAPE & FLOAT SANDING INTERIOR SHAFT DRYWALL & SANDING - - GL 33 - STAIR 18 - C-D (),Complete,CONSTRUCTION,,GRIDLINE 33,GL 33 STAIR 18 (EAST),STAIR 18 (EAST) - C-D,CONSTRUCTION,CHERRY COATING,,,,2025-10-06 07:00,2025-10-10 17:00,2025-10-03 07:00,2025-10-23 17:00,2025-11-20 17:00,2025-11-20 17:00,2025-11-19 07:00,2025-11-19 07:00,0,50,100
CN.BB51.ST.2480,CHERRY - PRIME & FINISH PAINT INTERIOR DRYWALL - Vestibule and remaining - GL 33 - STAIR 18 - C-D (),Not Started,CONSTRUCTION,,GRIDLINE 33,GL 33 STAIR 18 (EAST),STAIR 18 (EAST) - C-D,CONSTRUCTION,CHERRY COATING,,,,2025-12-11 07:00,2025-12-19 17:00,,,2025-12-11 07:00,2025-12-19 17:00,2025-11-19 07:00,2025-12-01 17:00,70,70,0
CN.BB51.ST.2460,BERG - INSTALL DOOR FRAMES - GL 33 - STAIR 18 - C-D (Procurement),Active,CONSTRUCTION,,GRIDLINE 33,GL 33 STAIR 18 (EAST),STAIR 18 (EAST) - C-D,CONSTRUCTION,BERG,,,,2025-09-04 07:00,2025-09-15 17:00,2025-08-04 07:00,,2025-11-21 07:00,2025-12-02 17:00,2025-11-20 07:00,2025-12-01 17:00,60,80,100
CN.BB51.ST.2490,INSTALL - DOOR/HARDWARE/PAINT - GL 33 - STAIR 18 - C-D (),Not Started,CONSTRUCTION,,GRIDLINE 33,GL 33 STAIR 18 (EAST),STAIR 18 (EAST) - C-D,CONSTRUCTION,ALK,,,,2025-12-22 07:00,2025-12-26 17:00,,,2025-12-22 07:00,2025-12-26 17:00,2025-12-02 07:00,2025-12-04 17:00,30,30,0
CN.BB51.ST.2520,INSTALL & INSPECT  INTERIOR DRYWALL & FIRECAULK - VESTIBULE 18 - 3RD LAYER - GL 33 LVL 3 - 4  - STAIR 18 - C-D,Complete,CONSTRUCTION,,GRIDLINE 33,GL 33 STAIR 18 (EAST),STAIR 18 (EAST) - C-D,CONSTRUCTION,,,,,2025-09-02 07:00,2025-09-10 17:00,2025-09-02 07:00,2025-11-06 17:00,2025-12-03 17:00,2025-12-03 17:00,2025-11-12 07:00,2025-11-12 07:00,0,70,100
CN.BB51.ST.2500,SECAI- FLOORING - GL 33 - STAIR 18 - C-D,Not Started,CONSTRUCTION,,GRIDLINE 33,GL 33 STAIR 18 (EAST),STAIR 18 (EAST) - C-D,CONSTRUCTION,FLOOR STRIPING PAINT,,,,2025-12-29 07:00,2025-12-29 17:00,,,2025-12-29 07:00,2025-12-29 17:00,2025-12-05 07:00,2025-12-05 17:00,10,10,0
CN.SWB5.6960,DISMANTLE SCAFFOLD/STAIRS - GL 33 - L1-L4 - H-J,Complete,CONSTRUCTION,,GRIDLINE 33,,GL33 EXTERIOR AREA (FAB WEST) - G-K,CONSTRUCTION,SECAI,,,,2024-09-20 07:00,2024-09-27 17:00,2024-09-09 07:00,2024-09-13 17:00,2025-11-20 17:00,2025-11-20 17:00,2025-12-04 07:00,2025-12-04 07:00,0,50,100
CN.BB51.ST.2560,IMPACT - CCD 170 (GL 33 CMP PACKAGE) - CCD PREP/SUBMIT/EXECUTED BY SECAI - CORRUGATED METAL PANELS,Complete,CONSTRUCTION,,GRIDLINE 33,,GL 33 PROCUREMENT ITEMS,CONSTRUCTION,,,,,2024-04-08 07:00,2024-05-02 17:00,2024-01-22 07:00,2024-02-24 17:00,2025-11-20 17:00,2025-11-20 17:00,2025-11-03 07:00,2025-11-03 07:00,0,160,100
CN.SEA1.6890,IMPACT - SECAI LIGHTTOWERS IN THE WAY / AWAITING SECAI TO MOVE TOWERS - SEA1 - GL 16-17 (DS AREA),Complete,CONSTRUCTION,,SUES-1 - 19-16,EXTERIOR SKIN,,CONSTRUCTION,,,,,2024-04-08 07:00,2024-04-15 17:00,2024-04-01 07:00,2024-04-08 17:00,2025-11-20 17:00,2025-11-20 17:00,2025-10-29 07:00,2025-10-29 07:00,0,40,100
CN.SEB3.6270,IMPACT - BENT PLATE FIX TO ALLOW BOLT PAINTING / IMPS TO PROCEED GL 27-30 - A LINE [SUP EXTERIOR WALL],Complete,CONSTRUCTION,,SUEN-4 - 28-31,EXTERIOR SKIN,,CONSTRUCTION,ALPHA,,,,2024-04-08 07:00,2024-04-15 17:00,2024-03-25 07:00,2024-05-03 17:00,2025-11-20 17:00,2025-11-20 17:00,2025-09-30 07:00,2025-09-30 07:00,0,40,100
CN.SEB4.6670,IMPACT - FIREPROOFING CHIPPING FOR CLADDING INSPECTION - GL 27-31 - C LINE (DS AREA),Complete,CONSTRUCTION,,SUEN-4 - 28-31,EXTERIOR SKIN,,CONSTRUCTION,PATRIOT,,,,2024-04-08 07:00,2024-04-15 17:00,2024-04-03 07:00,2024-04-15 17:00,2025-11-20 17:00,2025-11-20 17:00,2025-12-05 17:00,2025-12-05 17:00,0,40,100
CN.SEB55100,IMPACT - INSPECT & SURFACE PREP ADDITIONAL AD STEEL FOR INTUMESCENT - SEB2 - GL 22-25 - D-E - L3 CEILING,Complete,CONSTRUCTION,,SUEN-2 - 22-25,L4 - SUP Roof - FAB Roof,DS/AD INTERIORS,CONSTRUCTION,ROLLING PLAINS,Fireproofing,,,2024-06-13 07:00,2024-06-28 17:00,2024-05-14 07:00,2024-05-23 17:00,2025-11-20 17:00,2025-11-20 17:00,2025-06-13 08:00,2025-06-13 08:00,0,100,100
CN.SEA4.4380,IMPACT [D22] - CABLE TRAY OBSRUCTION - MECHANICAL ROOM 1 SOUTH - SEA4 - GL 9-6 - C-A - L1,Complete,CONSTRUCTION,,SUES-4 - 9-6,L1 - Fndn Slab,MECH RM 1,CONSTRUCTION,SECAI,TBD Architectural Finishes,,,2023-11-30 07:00,2023-12-05 17:00,2023-11-30 07:00,2024-06-03 17:00,2025-11-20 17:00,2025-11-20 17:00,2025-12-04 07:00,2025-12-04 07:00,0,40,100
CN.SEB5.6530,IMPACT [D31] - TEMPORARY POWER IN THE WAY - SEB5 - GL 31-33 - D LINE - L1,Complete,CONSTRUCTION,,SUEN-5 - 31-33,L1 - Fndn Slab,DS/AD INTERIORS,CONSTRUCTION,SECAI,,,,2024-03-05 07:00,2024-03-11 17:00,2024-03-05 07:00,2024-06-19 07:00,2025-11-20 17:00,2025-11-20 17:00,2025-11-24 07:00,2025-11-24 07:00,0,50,100
CN.AB.AR.6850,IMPACT [D9] - CABLE TRAY OBSTRUCTION - GAS PURIFER NORTH - GL 12 - L-N - L1,Complete,CONSTRUCTION,,SUWS-3 - 12-9,L1 - Fndn Slab,GAS PURIFIER RM,CONSTRUCTION,SECAI,,,,2023-12-12 07:00,2023-12-18 17:00,2023-12-12 07:00,2024-07-03 17:00,2025-11-20 17:00,2025-11-20 17:00,2025-12-01 07:00,2025-12-01 07:00,0,40,100
CN.AB.AR.4650,IMPACT [D3 / D5 / D7] - PIPERACK CLOSE TO COLUMN - L1 - WASTE WATER TANK RM NORTH- GL 23-15 K-N,Complete,CONSTRUCTION,,SUWS-1 - 18-15,L1 - Fndn Slab,MCC/IO,CONSTRUCTION,SECAI,,,,2024-01-12 07:00,2024-01-19 17:00,2024-01-12 07:00,2024-03-14 17:00,2025-11-20 17:00,2025-11-20 17:00,2025-11-26 07:00,2025-11-26 07:00,0,40,100
CN.BB51.ST.2570,FOUNDATION CURE/WRECK/BACKFILL - GL 33 - STAIR 5 - K-L,Complete,CONSTRUCTION,,GRIDLINE 33,,STAIR 5 (WEST) - K-L,CONSTRUCTION,,,,,2024-04-15 15:00,2024-04-18 09:00,2024-04-09 15:00,2024-04-12 09:00,2025-11-20 17:00,2025-11-20 17:00,2025-11-03 07:00,2025-11-03 07:00,0,24,100
CN.BB51.ST.2580,FOUNDATION CURE/WRECK/BACKFILL - GL 33 - STAIR 18 - C-D,Complete,CONSTRUCTION,,GRIDLINE 33,,STAIR 18 (EAST) - C-D,CONSTRUCTION,BAKER,,,,2024-06-03 07:00,2024-06-06 17:00,2024-05-26 07:00,2024-05-30 17:00,2025-11-20 17:00,2025-11-20 17:00,2025-11-03 07:00,2025-11-03 07:00,0,30,100
CN.AB.AR.4760,IMPACT - OPENING FOR EQUIPMENT ACCESS - SEB3 - GL 25-28 - L3 - C-E - (WAFER I/O RM),Complete,CONSTRUCTION,,SUEN-3 - 25-28,L3 / Waffle Slab Level,WAFER I/O RM,CONSTRUCTION,,,,,2024-04-08 07:00,2024-04-15 17:00,2024-04-02 07:00,2024-04-06 17:00,2025-11-20 17:00,2025-11-20 17:00,2025-11-26 07:00,2025-11-26 07:00,0,40,100
CN.AB.AR.5550,IMPACT [D44] - CABLE TRAY OBSTRUCTION - SUB CLEAN ROOM - SWA2 - GL 15-12 - L3,Complete,CONSTRUCTION,,SUWS-2 - 15-12,L3 / Waffle Slab Level,SUB CLEAN RM,CONSTRUCTION,SECAI,,,,2024-04-19 07:00,2024-04-25 17:00,2024-04-08 07:00,2024-05-08 17:00,2025-11-20 17:00,2025-11-20 17:00,2025-11-24 07:00,2025-11-24 07:00,0,50,100
CN.SWB3.5110,IMPACT - SECAI STOPWORK UNTIL TOPPING SLAB IS POURED - WP GL 21-24 - L-N - ROOF,Complete,CONSTRUCTION,,SUWN-2 - 21-24,L4 - SUP Roof - FAB Roof,,CONSTRUCTION,SECAI,,,,2024-04-19 07:00,2024-04-25 17:00,2024-03-30 07:00,2024-04-18 17:00,2025-11-20 17:00,2025-11-20 17:00,2025-11-25 07:00,2025-11-25 07:00,0,50,100
CN.AB5.ST.2000,"COLUMNS - PRIME, INTERMEDIATE COAT & TOP COAT - L2C mezinene - GL 8-3 - G-J- WEST [D2]",Complete,CONSTRUCTION,,A5 - Area 2 (Gridlines 6-3),L2 - SubFab Level,"FAB WEST 8 - 3[15,16]",CONSTRUCTION,CHERRY COATING,,,,2024-05-31 07:00,2024-06-10 17:00,2024-05-31 07:00,2024-06-07 17:00,2025-11-20 17:00,2025-11-20 17:00,2025-12-05 17:00,2025-12-05 17:00,0,60,100
CN.SWB1.5230,COMPLETE EXPANSION JOINT & WATERPROOFING - SWB-1 ROOF GL 18-21,Complete,CONSTRUCTION,,SUWN-1 - 18-21,L4 - SUP Roof - FAB Roof,,CONSTRUCTION,,TOPPING,,,2024-04-12 07:00,2024-04-12 17:00,2024-04-08 07:00,2024-04-12 17:00,2025-11-20 17:00,2025-11-20 17:00,2025-11-21 07:00,2025-11-21 07:00,0,10,100
CN.SEB1.7320,LT-0353 GRATING REPLACEMENT ORDER - SEA1 - GL 24-25 - L2,Complete,CONSTRUCTION,,STEEL,L1 - Fndn Slab,,PRE - CON / BUYOUT / IMPACTS,W&W,Steel Erector - W&W,,,2024-02-19 08:00,2024-03-20 10:00,2024-04-08 07:00,2024-05-03 17:00,2025-11-20 17:00,2025-11-20 17:00,2025-10-16 07:00,2025-10-16 07:00,0,192,100
CN.SWA4.6700,IMPACT - REMOVE MEP MATERIAL BY SECAI - FA LAB NORTH - SWA4 - GL 9-3 - L-N - L3,Complete,CONSTRUCTION,,SUWS-4 - 9-6,L3 / Waffle Slab Level,FA LAB,CONSTRUCTION,SECAI,,,,2024-04-01 07:00,2024-04-08 17:00,2024-04-01 07:00,2024-05-31 17:00,2025-11-20 17:00,2025-11-20 17:00,2025-11-21 07:00,2025-11-21 07:00,0,60,100
CN.SWA4.6710,IMPACT - REMOVE MEP MATERIAL BY SECAI - WAFER ROOM I/O - SEB3 - GL 25-28 -C-A - L3,Complete,CONSTRUCTION,,SUEN-3 - 25-28,L3 / Waffle Slab Level,WAFER I/O RM,CONSTRUCTION,SECAI,,,,2024-04-01 07:00,2024-04-08 17:00,2024-04-01 07:00,2024-06-01 12:00,2025-11-20 17:00,2025-11-20 17:00,2025-12-01 07:00,2025-12-01 07:00,0,60,100
CN.AB.AR.5830,IMPACT - PENDING DESIGN APPROVAL FROM SAMOO & CCD APPROVAL FROM SECAI- GL 18-15 K-N,Complete,CONSTRUCTION,,SUWS-1 - 18-15,L2 - SubFab Level,SUB CLEAN RM,CONSTRUCTION,SECAI,,,,2024-04-05 07:00,2024-04-12 17:00,2024-04-05 07:00,2024-05-21 17:00,2025-11-20 17:00,2025-11-20 17:00,2025-12-01 07:00,2025-12-01 07:00,0,40,100
CN.SEB1.7330,IMPACT [C3] - WATERPROOFING AT BATHROOM FOUNDATION - SEB1 - L1,Complete,CONSTRUCTION,,SUEN-1 - 19-22,L1 - Fndn Slab,BATHROOM,CONSTRUCTION,BRAZOS,,,,2024-05-16 07:00,2024-05-20 17:00,2024-04-30 07:00,2024-05-03 17:00,2025-11-20 17:00,2025-11-20 17:00,2025-11-13 17:00,2025-11-13 17:00,0,30,100
CN.SEB1.7340,IMPACT [C3] - FRP BATHROOM FOUNDATION SLAB & CURBS - SEB1 - L1,Complete,CONSTRUCTION,,SUEN-1 - 19-22,L1 - Fndn Slab,BATHROOM,CONSTRUCTION,BAKER,,,,2024-05-20 07:00,2024-05-21 17:00,2024-05-06 00:00,2024-05-14 17:00,2025-11-20 17:00,2025-11-20 17:00,2025-11-13 17:00,2025-11-13 17:00,0,20,100
CN.SEB1.7350,IMPACT [C9] - RFI 5825 - AWAIT NOMURA TO RELOCATE IN-SLAB PIPE / TURNOVER AREA TO YATES - SEB1 - L1 - GL 21,Complete,CONSTRUCTION,,SUEN-1 - 19-22,L1 - Fndn Slab,,CONSTRUCTION,,,,,2024-04-08 07:00,2024-04-15 17:00,2024-01-13 07:00,2024-03-14 17:00,2025-11-20 17:00,2025-11-20 17:00,2025-12-01 17:00,2025-12-01 17:00,0,40,100
CN.SEB1.7360,IMPACT [C9] - RFI 5825 - CONCRETE REMEDIATION PER RFI RESPONSE - SEB1 - L1 - GL21,Complete,CONSTRUCTION,,SUEN-1 - 19-22,L1 - Fndn Slab,,CONSTRUCTION,,,,,2024-04-08 07:00,2024-04-15 17:00,2024-03-15 07:00,2024-03-26 17:00,2025-11-20 17:00,2025-11-20 17:00,2025-12-01 17:00,2025-12-01 17:00,0,40,100
CN.SWB5.6970,IMPACT [C26] - TINDALL FIXES AT MISSING FORMSAVERS / TURNOVER AREA TO YATES - SWB5 - L3 - GL 32-33,Complete,CONSTRUCTION,,SUWN-5 - 30-33,L3 / Waffle Slab Level,,CONSTRUCTION,,,,,2024-04-08 07:00,2024-04-15 17:00,2024-02-01 07:00,2024-04-02 17:00,2025-11-20 17:00,2025-11-20 17:00,2025-12-05 17:00,2025-12-05 17:00,0,40,100
CN.SWB5.6550,IMPACT [C20] - WATERPROOFING & INSPECTIONS FOR REMAINING 5 PEDESTALS - SWB5 - GL 30-31 - N-M - L4,Complete,CONSTRUCTION,,SUWN-5 - 30-33,L4 - SUP Roof - FAB Roof,,CONSTRUCTION,BRAZOS,,,,2024-06-07 07:00,2024-06-20 17:00,2024-05-14 07:00,2024-05-22 17:00,2025-11-20 17:00,2025-11-20 17:00,2025-12-05 17:00,2025-12-05 17:00,0,80,100
CN.SWB5.6600,IMPACT [C20] - F/R/P/W REMAINING 5 PEDESTALS - SWB5 - GL 30-31 - N-M - L4,Complete,CONSTRUCTION,,SUWN-5 - 30-33,L4 - SUP Roof - FAB Roof,,CONSTRUCTION,BAKER,,,,2024-06-18 07:00,2024-06-25 17:00,2024-05-23 07:00,2024-06-03 17:00,2025-11-20 17:00,2025-11-20 17:00,2025-12-05 17:00,2025-12-05 17:00,0,50,100
CN.SWA5.1480,IMPACT [C22] - WATERPROOFING & INSPECTIONS FOR MISSING PEDESTALS - SWA5 - GL 5.3 - L-N - L4,Complete,CONSTRUCTION,,FIZ 2 / SUWS 5  (GL6-1) - GL J - N - DATA CENTER 1,L4 - SUP Roof - FAB Roof,,CONSTRUCTION,BRAZOS,,,,2024-06-18 07:00,2024-07-01 17:00,2024-06-03 07:00,2024-06-25 17:00,2025-11-20 17:00,2025-11-20 17:00,2025-12-05 17:00,2025-12-05 17:00,0,80,100
CN.SWA5.1600,IMPACT [C22] - F/R/P/W REMAINING PEDESTALS - SWA5 - GL 5.3 - L-N - L4 ROOF,Complete,CONSTRUCTION,,FIZ 2 / SUWS 5  (GL6-1) - GL J - N - DATA CENTER 1,L4 - SUP Roof - FAB Roof,,CONSTRUCTION,BAKER,,,,2024-07-16 07:00,2024-07-22 17:00,2024-06-26 07:00,2024-07-03 17:00,2025-11-20 17:00,2025-11-20 17:00,2025-12-05 17:00,2025-12-05 17:00,0,50,100
CN.SWB5.1960,IMPACT [C36] - SECAI MEP INSTALL DUCT PIPING - SE PENTHOUSE - L6 ROOF,Complete,CONSTRUCTION,,SOUTH EAST PENTHOUSE,L6 - PENTHOUSE / DS ROOF,,CONSTRUCTION,SECAI,,,,2024-04-08 07:00,2024-04-15 17:00,2024-02-19 07:00,2024-07-16 17:00,2025-11-20 17:00,2025-11-20 17:00,2025-12-05 17:00,2025-12-05 17:00,0,40,100
CN.SWB5.2210,INSTALL STEEL & DECKING - SE PENTHOUSE - L6 ROOF,Complete,CONSTRUCTION,,SOUTH EAST PENTHOUSE,L6 - PENTHOUSE / DS ROOF,,CONSTRUCTION,W&W,,,,2024-08-08 07:00,2024-08-13 17:00,2024-07-17 07:00,2024-07-25 17:00,2025-11-20 17:00,2025-11-20 17:00,2025-12-05 17:00,2025-12-05 17:00,0,40,100
CN.SWB5.2220,REBAR / EMBED INSTALL & POUR SOMD - SE PENTHOUSE - L6 ROOF,Complete,CONSTRUCTION,,SOUTH EAST PENTHOUSE,L6 - PENTHOUSE / DS ROOF,,CONSTRUCTION,BAKER,,,,2024-08-09 07:00,2024-08-15 17:00,2024-07-29 07:00,2024-08-16 17:00,2025-11-20 17:00,2025-11-20 17:00,2025-12-05 17:00,2025-12-05 17:00,0,40,100
CN.AB.AR.4310,IMPACT [D23] - LEAVEOUT FOR EGRESS - MECHANICAL ROOM 1 NORTH - SEA3 - GL 13-9 - C-A - L1,Complete,CONSTRUCTION,,SUES-3 - 13-9,L1 - Fndn Slab,MECH RM 1,CONSTRUCTION,SECAI,,,,2023-12-11 07:00,2023-12-15 17:00,2023-12-11 07:00,2024-05-31 17:00,2025-11-20 17:00,2025-11-20 17:00,2025-11-24 07:00,2025-11-24 07:00,0,40,100
CN.AB.AR.3060,INSTALL PENDING GOAL POST - GAS PURIFER SOUTH - SWA4 - GL 9-6 - L-N - L1,Complete,CONSTRUCTION,,SUWS-4 - 9-6,L1 - Fndn Slab,GAS PURIFIER RM,CONSTRUCTION,PATRIOT,,,,2024-09-20 07:00,2024-09-27 17:00,2024-09-07 07:00,2024-09-12 17:00,2025-11-20 17:00,2025-11-20 17:00,2025-12-01 07:00,2025-12-01 07:00,0,50,100
STEEL.CO-1000,IMPACT [S.TIA-135] - CHANGE ORDER SETTLEMENT REACHED / RESUME ADDED SCOPE & CO WORK,Complete,CONSTRUCTION,,STEEL,Milestones,,PRE - CON / BUYOUT / IMPACTS,,,,,2024-04-08 07:00,2024-04-15 17:00,2024-04-01 07:00,2024-04-13 17:00,2025-11-20 17:00,2025-11-20 17:00,2025-10-16 07:00,2025-10-16 07:00,0,40,100
CN.SEA2.6260,IMPACT [S13] - DEMO / INSTALL INTERMEDIATE LANDING & DECKING - STAIR 21 - GL13-14 - C-D - L3,Complete,CONSTRUCTION,,SUES-3 - 13-9,INTERIOR STAIR TOWER - STAIR #21 (CLEAN ROOM),,CONSTRUCTION,W&W,,,,2024-08-16 07:00,2024-09-13 17:00,2024-08-05 07:00,2024-08-13 16:00,2025-11-20 17:00,2025-11-20 17:00,2025-11-12 07:00,2025-11-12 07:00,0,180,100
CN.SEB3.1280,IMPACT [S13] - INSTALL INTERMEDIATE LANDING & DECKING - STAIR 19 - GL 25-25.5 - C-E - L3,Complete,CONSTRUCTION,,SUEN-3 - 25-28,INTERIOR STAIR TOWER - STAIR #19 (CLEAN ROOM) - DE-SCOPED,,CONSTRUCTION,W&W,,,,2024-09-30 07:00,2024-10-19 17:00,2024-09-30 07:00,2024-10-26 17:00,2025-11-20 17:00,2025-11-20 17:00,2025-12-05 17:00,2025-12-05 17:00,0,180,100
CN.SWB3.1300,IMPACT [S13] - DEMO / INSTALL INTERMEDIATE LANDING & DECKING - STAIR 4 - GL 22.5-23 - K-L - L3,Complete,CONSTRUCTION,,SUWN-2 - 21-24,INTERIOR STAIR TOWER - STAIR #4 (CLEAN ROOM),,CONSTRUCTION,W&W,,,,2024-08-16 07:00,2024-09-06 17:00,2024-08-05 07:00,2024-08-10 17:00,2025-11-20 17:00,2025-11-20 17:00,2025-12-05 17:00,2025-12-05 17:00,0,180,100
CN.SWB3.1320,IMPACT [S13] - FRP SOMD AT STAIR LANDING - STAIR 4 - GL 22.5-23 - K-L - L3,Complete,CONSTRUCTION,,SUWN-2 - 21-24,INTERIOR STAIR TOWER - STAIR #4 (CLEAN ROOM),,CONSTRUCTION,BAKER,,,,2024-08-19 07:00,2024-08-21 17:00,2024-08-19 07:00,2024-08-23 17:00,2025-11-20 17:00,2025-11-20 17:00,2025-12-05 17:00,2025-12-05 17:00,0,30,100
CN.SEB3.1300,IMPACT [S13] - FRP SOMD AT STAIR LANDING - STAIR 19 - GL 25-25.5 - C-E - L3,Complete,CONSTRUCTION,,SUEN-3 - 25-28,INTERIOR STAIR TOWER - STAIR #19 (CLEAN ROOM) - DE-SCOPED,,CONSTRUCTION,BAKER,,,,2024-10-28 07:00,2024-10-31 17:00,2024-10-28 07:00,2024-10-31 17:00,2025-11-20 17:00,2025-11-20 17:00,2025-12-05 17:00,2025-12-05 17:00,0,40,100
CN.SEA2.6270,IMPACT [S13] - FRP SOMD AT STAIR LANDING - STAIR 21 - GL13-14 - C-D - L3,Complete,CONSTRUCTION,,SUES-3 - 13-9,INTERIOR STAIR TOWER - STAIR #21 (CLEAN ROOM),,CONSTRUCTION,BAKER,,,,2024-09-09 07:00,2024-09-12 17:00,2024-08-12 07:00,2024-08-13 17:00,2025-11-20 17:00,2025-11-20 17:00,2025-11-12 07:00,2025-11-12 07:00,0,30,100
CN.SWB5.2230,IMPACT - RFI 2251 (SEQ 9202) - INSTALL ADDED MCC ROOM STEEL BEAM - SW PENTHOUSE - GL 3 - M-N,Complete,CONSTRUCTION,,SOUTH WEST PENTHOUSE,L4 - SUP Roof - FAB Roof,,CONSTRUCTION,W&W,,,,2024-06-14 07:00,2024-06-18 17:00,2024-04-29 07:00,2024-05-03 17:00,2025-11-20 17:00,2025-11-20 17:00,2025-12-03 07:00,2025-12-03 07:00,0,30,100
CN.SWB5.2240,IMPACT - RFI 2251 (SEQ 9202) - STEEL SPRAY FIREPROOFING ADDED MCC ROOM STEEL BEAM - SW PENTHOUSE - GL 3 - M-N,Complete,CONSTRUCTION,,SOUTH WEST PENTHOUSE,L4 - SUP Roof - FAB Roof,,CONSTRUCTION,ROLLING PLAINS,,,,2024-08-09 07:00,2024-08-12 17:00,2024-07-30 07:00,2024-08-02 17:00,2025-11-20 17:00,2025-11-20 17:00,2025-12-03 07:00,2025-12-03 07:00,0,20,100
CN.SWA2.6660,DSAD PENETRATION SUPPORT STEEL FRAMING - SWA3 - GL 12-9 - L3,Complete,CONSTRUCTION,,SUWS-3 - 12-9,DS/AD,,CONSTRUCTION,PERRY & PERRY,Steel Erector - W&W,,,2024-06-14 07:00,2024-06-21 17:00,2024-06-07 07:00,2024-06-13 17:00,2025-11-20 17:00,2025-11-20 17:00,2025-12-05 17:00,2025-12-05 17:00,0,50,100
CN.SWA2.6670,DSAD PENETRATION SUPPORT STEEL FRAMING - SWA-2- GL 18-21 L3,Complete,CONSTRUCTION,,SUWN-1 - 18-21,DS/AD,,CONSTRUCTION,,Steel Erector - W&W,,,2024-02-05 07:00,2024-02-08 17:00,2024-02-03 07:00,2024-02-08 17:00,2025-11-20 17:00,2025-11-20 17:00,2025-12-05 17:00,2025-12-05 17:00,0,40,100
CN.AB.AR.4860,IMPACT - SPRAY FIREPROOFING AT ADDED STRUCTURAL SUPPORT STEEL - GL 27.6-28 - B.5-C - L2 CEILING - PENDING IOCC APPROVAL,Active,CONSTRUCTION,,SUEN-3 - 25-28,L2 - SubFab Level,Electric RM 3,CONSTRUCTION,ROLLING PLAINS,,,,2024-12-19 07:00,2024-12-20 17:00,2024-12-19 07:00,,2025-11-21 07:00,2025-11-24 17:00,2025-12-04 07:00,2025-12-05 17:00,20,20,0
CN.AB.AR.6870,IMPACT - INSTALL ADDED STRUCTURAL SUPPORT STEEL - GL 27.6-28 - B.5-C - L2 CEILING,Complete,CONSTRUCTION,,SUEN-3 - 25-28,L2 - SubFab Level,Electric RM 3,CONSTRUCTION,W&W,,,,2024-05-31 07:00,2024-06-07 17:00,2024-05-17 07:00,2024-05-30 17:00,2025-11-20 17:00,2025-11-20 17:00,2025-11-21 07:00,2025-11-21 07:00,0,50,100
CN.AB.AR.6880,IMPACT - SPRAY FIREPROOFING AT ADDED STRUCTURAL SUPPORT STEEL - GL 27.6-28 - B.5-C - L1 CEILING,Complete,CONSTRUCTION,,SUEN-3 - 25-28,L1 - Fndn Slab,WAFER I/O RM,CONSTRUCTION,ROLLING PLAINS,,,,2025-08-25 07:00,2025-08-26 17:00,2025-08-25 07:00,2025-08-26 17:00,2025-11-20 17:00,2025-11-20 17:00,2025-11-21 07:00,2025-11-21 07:00,0,20,100
CN.SWB5.2250,IMPACT [C35] - FRP STRUCTURAL SLAB SOMD - 4G (UPPER MEZZ) - SW PENTHOUSE,Complete,CONSTRUCTION,,SOUTH WEST PENTHOUSE,L4 - SUP Roof - FAB Roof,,CONSTRUCTION,BAKER,,,,2024-05-06 07:00,2024-05-07 17:00,2024-04-30 07:00,2024-05-02 17:00,2025-11-20 17:00,2025-11-20 17:00,2025-12-05 17:00,2025-12-05 17:00,0,20,100
CN.SWB5.2260,IMPACT [C35] - POUR STRUCTURAL SLAB AT ELEVATOR 1B BLOCKOUT - SW PENTHOUSE,Complete,CONSTRUCTION,,SOUTH WEST PENTHOUSE,L4 - SUP Roof - FAB Roof,,CONSTRUCTION,BAKER,,,,2024-04-29 07:00,2024-04-30 17:00,2024-04-25 07:00,2024-04-26 17:00,2025-11-20 17:00,2025-11-20 17:00,2025-12-04 07:00,2025-12-04 07:00,0,20,100
CN.SWB5.2270,IMPACT [C35] - TIGHTEN/SNAP BOLTS AT ELEVATOR 1B - SW PENTHOUSE,Complete,CONSTRUCTION,,SOUTH WEST PENTHOUSE,L4 - SUP Roof - FAB Roof,,CONSTRUCTION,W&W,,,,2024-05-03 07:00,2024-05-03 17:00,2024-04-27 07:00,2024-04-27 17:00,2025-11-20 17:00,2025-11-20 17:00,2025-12-04 07:00,2025-12-04 07:00,0,10,100
CN.SWB5.2280,IMPACT [C35] - GROUT BENT PLATES AT ELEVATOR 1B - SW PENTHOUSE,Complete,CONSTRUCTION,,SOUTH WEST PENTHOUSE,L4 - SUP Roof - FAB Roof,,CONSTRUCTION,BAKER,,,,2024-05-06 07:00,2024-05-06 17:00,2024-04-29 07:00,2024-04-29 17:00,2025-11-20 17:00,2025-11-20 17:00,2025-12-04 07:00,2025-12-04 07:00,0,10,100
CN.SWB5.2290,IMPACT - STEEL SPRAY FIREPROOFING AT MEZZANINE SKIRT WALLS - L4 - SW PENTHOUSE,Complete,CONSTRUCTION,,SOUTH WEST PENTHOUSE,L4 - SUP Roof - FAB Roof,,CONSTRUCTION,ROLLING PLAINS,,,,2024-05-31 07:00,2024-06-03 17:00,2024-05-22 07:00,2024-05-28 17:00,2025-11-20 17:00,2025-11-20 17:00,2025-12-05 17:00,2025-12-05 17:00,0,20,100
CN.SWB5.2300,IMPACT - STUD FRAMING & INSULATION AT MEZZANINE SKIRT WALLS - GL 3 - L4 - SW PENTHOUSE,Complete,CONSTRUCTION,,SOUTH WEST PENTHOUSE,L4 - SUP Roof - FAB Roof,,CONSTRUCTION,BERG,,,,2024-05-31 07:00,2024-06-04 17:00,2024-05-29 07:00,2024-06-05 17:00,2025-11-20 17:00,2025-11-20 17:00,2025-12-05 17:00,2025-12-05 17:00,0,30,100
FIZ.WEST.2441,IMPACT [C35] - INSTALL WATERPROOFING - GL 2-3 - L-N - L4/A ROOF,Complete,CONSTRUCTION,,FIZ 2 / SUWS 5  (GL6-1) - GL J - N - DATA CENTER 1,L4 - SUP Roof - FAB Roof,,CONSTRUCTION,BRAZOS,,,,2024-06-07 07:00,2024-07-01 17:00,2024-06-04 07:00,2024-06-16 17:00,2025-11-20 17:00,2025-11-20 17:00,2025-12-05 17:00,2025-12-05 17:00,0,140,100
FIZ.WEST.2451,IMPACT [C35] - FRP TOPPING SLAB - GL 2-3 - L-N - L4/A ROOF,Complete,CONSTRUCTION,,FIZ 2 / SUWS 5  (GL6-1) - GL J - N - DATA CENTER 1,L4 - SUP Roof - FAB Roof,,CONSTRUCTION,BAKER,,,,2024-06-24 07:00,2024-06-27 17:00,2024-06-17 07:00,2024-06-18 17:00,2025-11-20 17:00,2025-11-20 17:00,2025-12-05 17:00,2025-12-05 17:00,0,30,100
CN.SEB5.1590,IMPACT [S.TIA-142] - DRB-008 - INSTALL ADDED SUPPORT STEEL FRAMING - GL 32-33 - D-E - L4,Complete,CONSTRUCTION,,SUEN-5 - 31-33,DS/AD,,CONSTRUCTION,W&W,,,,2024-05-17 07:00,2024-05-28 17:00,2024-08-01 07:00,2024-08-06 17:00,2025-11-20 17:00,2025-11-20 17:00,2025-12-05 17:00,2025-12-05 17:00,0,60,100
CN.SWB5.1470,IMPACT [S.TIA-142] - DRB-008 - INSTALL ADDED SUPPORT STEEL FRAMING - GL 32-33 - K-J - L4,Complete,CONSTRUCTION,,SUWN-5 - 30-33,DS/AD,,CONSTRUCTION,W&W,,,,2024-05-17 07:00,2024-05-28 17:00,2024-04-18 07:00,2024-06-11 17:00,2025-11-20 17:00,2025-11-20 17:00,2025-11-25 07:00,2025-11-25 07:00,0,60,100
CN.AB.AR.5240,IMPACT [S17 / S42] - DRB-002 - INSTALL STRUCTURAL SUPPORT STEEL (SEQ#9952) - GAS PURIFIER ROOM - GL 9-10 - M-N - L2,Complete,CONSTRUCTION,,SUWS-3 - 12-9,L2 - SubFab Level,ELECTRIC RM 1,CONSTRUCTION,W&W,,,,2024-09-09 07:00,2024-10-21 17:00,2024-09-02 07:00,2024-10-02 17:00,2025-11-20 17:00,2025-11-20 17:00,2025-12-05 07:00,2025-12-05 07:00,0,250,100
CN.AB.AR.5320,IMPACT [S17] - DRB-002 - SECAI MEP BLOCKING ACCESS TO AREA FOR YATES - GAS PURIFIER ROOM - GL 9-10 - M-N - L2,Complete,CONSTRUCTION,,SUWS-3 - 12-9,L2 - SubFab Level,ELECTRIC RM 1,CONSTRUCTION,SECAI,,,,2024-04-19 07:00,2024-04-25 17:00,2024-04-15 07:00,2024-05-24 17:00,2025-11-20 17:00,2025-11-20 17:00,2025-12-05 07:00,2025-12-05 07:00,0,50,100
CN.SEA2.1280,IMPACT - WORK DELAYED DUE TO SECAI MEP DIRECTION - SEA2 GL 14-15- C LINE,Complete,CONSTRUCTION,,SUES-2 - 16-13,EXTERIOR SKIN,,CONSTRUCTION,SECAI,,,,2024-03-04 07:00,2024-03-07 17:00,2024-04-04 07:00,2024-04-12 17:00,2025-11-20 17:00,2025-11-20 17:00,2025-10-29 07:00,2025-10-29 07:00,0,40,100
CN.AB.AR.6860,IMPACT [S.TIA-6 / S4] - SECAI INSTALL SCAFFOLD FOR RETROFIT STEEL & MEP - SEA5 - L3 - GL3 - A-B.5,Complete,CONSTRUCTION,,SUES-5 - 6-1 - FIZ - GL A -E,L3 / Waffle Slab Level,,CONSTRUCTION,SECAI,,,,2024-04-15 07:00,2024-04-18 17:00,2024-04-08 07:00,2024-05-04 17:00,2025-11-20 17:00,2025-11-20 17:00,2025-12-05 17:00,2025-12-05 17:00,0,40,100
CN.AB.AR.6890,IMPACT [S.TIA-6 / S4] - INSTALL RETROFIT STEEL FOR DUCT SHAFT PENETRATION BANK - GL3 - A-B.5 - L3,Complete,CONSTRUCTION,,SUES-5 - 6-1 - FIZ - GL A -E,L3 / Waffle Slab Level,,CONSTRUCTION,W&W,,,,2024-05-13 07:00,2024-05-20 17:00,2024-05-06 07:00,2024-05-28 17:00,2025-11-20 17:00,2025-11-20 17:00,2025-12-05 17:00,2025-12-05 17:00,0,50,100
CN.BB51.ST.2590,IMPACT [S.TIA-138] - SECAI MEP LIFTING MATERIAL IN AREA -FOUNDATION - STAR 18 - GL 33 - C-D,Complete,CONSTRUCTION,,GRIDLINE 33,,STAIR 18 (EAST) - C-D,CONSTRUCTION,BAKER,,,,2024-04-15 07:00,2024-04-18 17:00,2024-04-09 07:00,2024-04-21 17:00,2025-11-20 17:00,2025-11-20 17:00,2025-11-03 07:00,2025-11-03 07:00,0,40,100
CN.SWB5.2310,STEEL SPRAY FIREPROOFING AT MEZZANINE SKIRT WALLS - L4 - SE PENTHOUSE,Complete,CONSTRUCTION,,SOUTH EAST PENTHOUSE,L4 - SUP Roof - FAB Roof,,CONSTRUCTION,ROLLING PLAINS,,,,2024-04-29 07:00,2024-05-02 17:00,2024-04-18 07:00,2024-04-23 17:00,2025-11-20 17:00,2025-11-20 17:00,2025-12-02 07:00,2025-12-02 07:00,0,30,100
CN.SWB5.2320,STUD FRAMING / INSULATION / SHEATHING AT MEZZANINE SKIRT WALLS - GL 3 & GL 5 - L4 - SE PENTHOUSE,Complete,CONSTRUCTION,,SOUTH EAST PENTHOUSE,L4 - SUP Roof - FAB Roof,,CONSTRUCTION,BERG,,,,2024-05-28 07:00,2024-05-30 17:00,2024-05-15 07:00,2024-05-16 17:00,2025-11-20 17:00,2025-11-20 17:00,2025-12-02 07:00,2025-12-02 07:00,0,20,100
CN.SEA5.6120,INSTALL WATERPROOFING & CRICKETES FOR TOPPING SLAB - GL 1-3 - C-A - L4/A ROOF,Complete,CONSTRUCTION,,SUES-5 - 6-1 - FIZ - GL A -E,L4 - SUP Roof - FAB Roof,,CONSTRUCTION,BRAZOS,,,,2024-05-17 07:00,2024-05-31 17:00,2024-05-16 07:00,2024-05-23 17:00,2025-11-20 17:00,2025-11-20 17:00,2025-12-05 17:00,2025-12-05 17:00,0,80,100
CN.SEA5.6130,FRP TOPPING SLAB - GL 1-3 - C-A - L4/A ROOF,Complete,CONSTRUCTION,,SUES-5 - 6-1 - FIZ - GL A -E,L4 - SUP Roof - FAB Roof,,CONSTRUCTION,BAKER,,,,2024-05-31 07:00,2024-06-03 17:00,2024-05-24 07:00,2024-05-25 17:00,2025-11-20 17:00,2025-11-20 17:00,2025-12-05 17:00,2025-12-05 17:00,0,20,100
CN.BB51.ST.1670,IMPACT - SECAI DIRECTS FRAMING AND DRYWALL TO STOP FOR ACCESS - GL 33 - L2 - B-C,Complete,CONSTRUCTION,,GRIDLINE 33,L2 - SubFab Level,GL33 EXTERIOR AREA (SUE) - A-C,CONSTRUCTION,SECAI,,,,2024-04-15 07:00,2024-06-20 17:00,2024-02-12 07:00,2024-07-31 17:00,2025-11-20 17:00,2025-11-20 17:00,2025-12-02 07:00,2025-12-02 07:00,0,400,100
CN.SEB3.1490,IMPACT - SECAI CRANE & STEEL LAY DOWN IN THE WAYGL 27-28 - A LINE [SUP EXTERIOR WALL],Complete,CONSTRUCTION,,SUEN-3 - 25-28,EXTERIOR SKIN,,CONSTRUCTION,KOVACH,,,,2024-04-11 07:00,2024-04-16 17:00,2024-04-11 07:00,2024-05-09 17:00,2025-11-20 17:00,2025-11-20 17:00,2025-09-30 07:00,2025-09-30 07:00,0,40,100
CN.SWB1.5240,IMPACT [S.TIA-139] - AWAITING SECAI TO PROVIDE SCAFFOLD/ACCESS PENETRATION STEEL - SWB1 - GL 3-33 - L-J - L6,Complete,CONSTRUCTION,,SUWN-1 - 18-21,DS/AD,,CONSTRUCTION,SECAI,,,,2024-04-15 07:00,2024-04-30 17:00,2024-04-08 07:00,2024-04-26 17:00,2025-11-20 17:00,2025-11-20 17:00,2025-12-05 17:00,2025-12-05 17:00,0,120,100
CN.SWB1.1690,IMPACT - SUW CRANE AREA BLOCKED GL 6-33 - K LINE ACTIVITIES,Complete,CONSTRUCTION,,SUWS-4 - 9-6,,,CONSTRUCTION,,,,,2024-04-12 07:00,2024-04-17 17:00,2024-04-12 07:00,2024-04-16 17:00,2025-11-20 17:00,2025-11-20 17:00,2025-08-26 07:00,2025-08-26 07:00,0,40,100
CN.SWA4.6720,IMPACT [C53] - TINDALL/DCN FIX NMB SLEEVES PER JACOBS DIRECTION / TURNOVER TO YATES - SWA3 - GL 9 - L-N - L4 ROOF,Complete,CONSTRUCTION,,SUWS-3 - 12-9,L4 - SUP Roof - FAB Roof,,CONSTRUCTION,SECAI,,,,2024-04-19 07:00,2024-05-17 17:00,2024-04-16 07:00,2024-05-17 17:00,2025-11-20 17:00,2025-11-20 17:00,2025-12-05 17:00,2025-12-05 17:00,0,180,100
CN.SWA4.6730,IMPACT [C53] - COMPLETE WATERPROOFING AT NMB SLEEVE LEAVEOUT AREA - SWA3 - GL 9-10 - L-N - L4 ROOF,Complete,CONSTRUCTION,,SUWS-3 - 12-9,L4 - SUP Roof - FAB Roof,,CONSTRUCTION,BRAZOS,,,,2024-08-05 07:00,2024-08-27 17:00,2024-08-01 07:00,2024-08-15 17:00,2025-11-20 17:00,2025-11-20 17:00,2025-12-05 17:00,2025-12-05 17:00,0,140,100
CN.SWB4.1322,IMPACT [S24] - INSTALL ADDED SUPPORT STEEL FOR STAIR 50 - SWB2 - L2 - GL 27-30 - K-L,Complete,CONSTRUCTION,,SUWN-4 - 27-30,L2 - SubFab Level,DS/AD INTERIORS,CONSTRUCTION,W&W,,,,2024-06-03 07:00,2024-06-14 17:00,2024-05-14 07:00,2024-06-20 17:00,2025-11-20 17:00,2025-11-20 17:00,2025-12-04 07:00,2025-12-04 07:00,0,80,100
CN.SWB4.1392,IMPACT [S24] - SHOPS/APPROVAL/FAB/DELIVER SUPPORT STEEL FOR STAIR 50 - SWB2 - L2 - GL 27-30 - K-L,Complete,CONSTRUCTION,,Stairs,GL 33 STAIRS 5 & 18,,PRE - CON / BUYOUT / IMPACTS,W&W,,,,2024-04-19 07:00,2024-06-27 17:00,2024-01-16 00:00,2024-05-13 17:00,2025-11-20 17:00,2025-11-20 17:00,2025-12-04 07:00,2025-12-04 07:00,0,400,100
CN.SEA4.1181,REMEDY - DEMO DRYWALL (INT) - SEA4 - GL 9-6 - D LINE - L2,Complete,CONSTRUCTION,,SUES-4 - 9-6,L2 - SubFab Level,DS/AD INTERIORS,CONSTRUCTION,SECAI,,,,2024-07-01 07:00,2024-07-08 17:00,2024-07-01 07:00,2024-07-12 17:00,2025-11-20 17:00,2025-11-20 17:00,2025-11-24 07:00,2025-11-24 07:00,0,40,100
CN.SWA4.6740,IMPACT [C53] - FRP TOPPING SLAB - GL 9-10 - L-N - L4 ROOF,Complete,CONSTRUCTION,,SUWS-3 - 12-9,L4 - SUP Roof - FAB Roof,,CONSTRUCTION,BAKER,,,,2024-08-26 07:00,2024-08-28 17:00,2024-08-16 07:00,2024-08-20 17:00,2025-11-20 17:00,2025-11-20 17:00,2025-12-05 17:00,2025-12-05 17:00,0,30,100
CN.SWB1.1680,IMPACT [S.TIA-145] - WATERPROOFING DAMAGED BY SECAI MEP / YATES REMEDIATION - SWB1 - GL 18-22 - L-N - L4 ROOF,Complete,CONSTRUCTION,,SUWN-1 - 18-21,L4 - SUP Roof - FAB Roof,,CONSTRUCTION,,,,,2024-04-19 07:00,2024-04-30 17:00,2024-04-12 07:00,2024-04-15 17:00,2025-11-20 17:00,2025-11-20 17:00,2025-11-21 07:00,2025-11-21 07:00,0,80,100
CN.SWB5.2330,IMPACT [S.TIA-142] - DRB-008 - FAB/DELIVER ADDED SUPPORT STEEL FRAMING - GL 32-33 - K-J - L4,Complete,CONSTRUCTION,,SUWN-5 - 30-33,DS/AD,,CONSTRUCTION,,,,,2024-04-19 07:00,2024-05-23 17:00,2024-04-15 07:00,2024-04-17 17:00,2025-11-20 17:00,2025-11-20 17:00,2025-11-25 07:00,2025-11-25 07:00,0,210,100
CN.SEB5.1600,IMPACT [S.TIA-142] - DRB-008 - FAB/DELIVER ADDED SUPPORT STEEL FRAMING - GL 32-33 - D-E - L4,Complete,CONSTRUCTION,,SUEN-5 - 31-33,DS/AD,,CONSTRUCTION,,,,,2024-04-19 07:00,2024-05-23 17:00,2024-04-15 07:00,2024-04-17 17:00,2025-11-20 17:00,2025-11-20 17:00,2025-12-05 17:00,2025-12-05 17:00,0,210,100
CN.SWA5.4000,IMPACT [S20] - NOTIFY SECAI SUMP PIPE RELOCATION REQUIRED / SECAI RELOCATE PIPE - ELEVATOR 01B,Complete,CONSTRUCTION,,FIZ 2 / SUWS 5  (GL6-1) - GL J - N - DATA CENTER 1,L1 - Fndn Slab,ELEVATOR,CONSTRUCTION,SECAI,,,,2024-04-19 07:00,2024-05-30 17:00,2024-03-01 07:00,2024-05-23 17:00,2025-11-20 17:00,2025-11-20 17:00,2025-12-01 07:00,2025-12-01 07:00,0,240,100
CN.SWA5.4010,IMPACT [S19] - NOTIFY SECAI OF CASING OBSTRUCTION / SECAI TO CUT CASING - ELEVATOR 01,Complete,CONSTRUCTION,,FIZ 2 / SUWS 5  (GL6-1) - GL J - N - DATA CENTER 1,L1 - Fndn Slab,ELEVATOR,CONSTRUCTION,SECAI,,,,2024-04-19 07:00,2024-05-30 17:00,2024-03-01 07:00,2024-05-13 17:00,2025-11-20 17:00,2025-11-20 17:00,2025-12-01 07:00,2025-12-01 07:00,0,240,100
CN.SWB53200,IMPACT [S23] - SECAI MEP BLOCKING ACCESS TO AREA FOR YATES - UTILITY ROOM - GL 30-31 - M-N - L2,Complete,CONSTRUCTION,,SUWN-5 - 30-33,L2 - SubFab Level,GCS STORAGE,CONSTRUCTION,SECAI,,,,2024-04-19 07:00,2024-04-24 17:00,2024-04-15 07:00,2024-06-10 17:00,2025-11-20 17:00,2025-11-20 17:00,2025-11-10 07:00,2025-11-10 07:00,0,40,100
CN.SWB53220,IMPACT [S23 / S39 / S42] - INSTALL ADDED SUPPORT STEEL - SEQ#9404 - UTILITY ROOM - GL 30-31 - M-N - L2,Complete,CONSTRUCTION,,SUWN-5 - 30-33,L2 - SubFab Level,GCS STORAGE,CONSTRUCTION,W&W,,,,2024-10-01 07:00,2024-11-04 17:00,2024-10-01 07:00,2024-10-23 17:00,2025-11-20 17:00,2025-11-20 17:00,2025-12-05 17:00,2025-12-05 17:00,0,200,100
CN.SEB5.6980,IMPACT [S27] - FAB/DELIVER ADDITIONAL SUPPORT STEEL (SEQ 9994) - GL 31-32 - C-D - L3,Complete,CONSTRUCTION,,SUEN-5 - 31-33,L3 / Waffle Slab Level,DS/AD INTERIORS,CONSTRUCTION,W&W,,,,2024-04-19 07:00,2024-06-10 17:00,2024-03-19 07:00,2024-05-09 17:00,2025-11-20 17:00,2025-11-20 17:00,2025-12-05 17:00,2025-12-05 17:00,0,300,100
CN.SEB5.1342,IMPACT [S27] - INSTALL ADDED SUPPORT STEEL (SEQ 9994) - GL 31-32 - C-D - L3,Complete,CONSTRUCTION,,SUEN-5 - 31-33,L3 / Waffle Slab Level,DS/AD INTERIORS,CONSTRUCTION,W&W,,,,2024-06-21 07:00,2024-07-09 17:00,2024-05-13 07:00,2024-05-20 17:00,2025-11-20 17:00,2025-11-20 17:00,2025-12-05 17:00,2025-12-05 17:00,0,100,100
CN.SEA1.6920,IMPACT [S7] - LEAVEOUT FOR SECAI MEP FOR DUCT INSTALL - SEA1 - GL 17-16 - C-D - L4,Complete,CONSTRUCTION,,SUES-1 - 19-16,DS/AD,,CONSTRUCTION,SECAI,,,,2024-04-19 07:00,2024-05-07 17:00,2024-04-18 07:00,2024-05-27 17:00,2025-11-20 17:00,2025-11-20 17:00,2025-10-16 07:00,2025-10-16 07:00,0,120,100
CN.SEB1.7370,DSAD PENETRATION SUPPORT STEEL FRAMING - SEB1 - GL 19-20 - C-E - L4,Not Started,CONSTRUCTION,,SUEN-1 - 19-22,DS/AD,,CONSTRUCTION,PERRY & PERRY,Steel Erector - W&W,,,2025-11-21 07:00,2025-11-21 17:00,,,2025-11-21 07:00,2025-11-21 17:00,2025-12-05 07:00,2025-12-05 17:00,10,10,0
CN.SEB1.7380,IMPACT - PARTIAL DELIVERY AND POTENTIAL REDESIGN FOR SUPPORT STEEL FRAMING - SEB1 - GL 19-20 - C-E - L4,Complete,CONSTRUCTION,,SUEN-1 - 19-22,DS/AD,,CONSTRUCTION,W&W,,,,2024-04-19 07:00,2024-05-07 17:00,2024-04-08 07:00,2025-04-25 17:00,2025-11-20 17:00,2025-11-20 17:00,2025-12-05 07:00,2025-12-05 07:00,0,120,100
CN.SEB1.5050,IMPACT [S.TIA-12] - WAITING ON MEP LAYOUTS - SEB1 - GL 19-22 - C-E - L2 / INCOMPLETE - CLOSED FOR CCD 310 LAYOUT,Complete,CONSTRUCTION,,SUEN-1 - 19-22,DS/AD,,CONSTRUCTION,SECAI,,,,2024-04-19 07:00,2024-04-24 17:00,2024-04-16 07:00,2024-05-04 17:00,2025-11-20 17:00,2025-11-20 17:00,2025-10-16 07:00,2025-10-16 07:00,0,40,100
CN.SEB2.1520,IMPACT [S.TIA-12] - WAITING ON MEP LAYOUTS - SEB2 - GL 22-24 - C-E - L3 / INCOMPLETE - CLOSED FOR CCD 310 LAYOUT,Complete,CONSTRUCTION,,SUEN-2 - 22-25,DS/AD,,CONSTRUCTION,SECAI,,,,2024-04-19 07:00,2024-04-24 17:00,2024-04-16 00:00,2024-05-30 17:00,2025-11-20 17:00,2025-11-20 17:00,2025-10-16 07:00,2025-10-16 07:00,0,40,100
CN.SEB4.1610,IMPACT [S8] - WAITING ON MEP LAYOUTS - SEB2 - GL 27-31 - C-E - L2 / INCOMPLETE - CLOSED FOR CCD 310 LAYOUT,Complete,CONSTRUCTION,,SUEN-4 - 28-31,DS/AD,,CONSTRUCTION,SECAI,,,,2024-04-19 07:00,2024-04-24 17:00,2024-03-01 07:00,2024-05-30 17:00,2025-11-20 17:00,2025-11-20 17:00,2025-10-16 07:00,2025-10-16 07:00,0,40,100
CN.SWA5.8070,DSAD PENETRATION SUPPORT STEEL FRAMING - SWA5 - GL 3-3.5 - L3,Complete,CONSTRUCTION,,FIZ 2 / SUWS 5  (GL6-1) - GL J - N - DATA CENTER 1,DS/AD,,CONSTRUCTION,PERRY & PERRY,Steel Erector - W&W,,,2024-07-29 07:00,2024-08-02 17:00,2024-07-27 07:00,2024-08-01 17:00,2025-11-20 17:00,2025-11-20 17:00,2025-12-05 17:00,2025-12-05 17:00,0,50,100
CN.SWA5.8080,IMPACT [S8] - WAITING FOR MEP LAYOUTS - SWA5 - GL 3-3.5 - L3 / INCOMPLETE - CLOSED FOR CCD 310 LAYOUT,Complete,CONSTRUCTION,,FIZ 2 / SUWS 5  (GL6-1) - GL J - N - DATA CENTER 1,DS/AD,,CONSTRUCTION,SECAI,,,,2024-04-19 07:00,2024-04-24 17:00,2024-03-01 00:00,2024-05-30 17:00,2025-11-20 17:00,2025-11-20 17:00,2025-12-05 17:00,2025-12-05 17:00,0,40,100
CN.SWA4.1640,IMPACT [S8] - WAITING FOR MEP LAYOUTS - SWA-4 - GL9-6 - L3 / INCOMPLETE - CLOSED FOR CCD 310 LAYOUT,Complete,CONSTRUCTION,,SUWS-4 - 9-6,DS/AD,,CONSTRUCTION,SECAI,,,,2024-04-19 07:00,2024-04-24 17:00,2024-02-01 07:00,2024-04-15 17:00,2025-11-20 17:00,2025-11-20 17:00,2025-12-05 17:00,2025-12-05 17:00,0,40,100
CN.SWA3.6680,IMPACT [S8] - WAITING FOR MEP LAYOUTS - SWA3 - GL 12-9 - L3 / INCOMPLETE - CLOSED FOR CCD 310 LAYOUT,Complete,CONSTRUCTION,,SUWS-3 - 12-9,DS/AD,,CONSTRUCTION,SECAI,,,,2024-04-19 07:00,2024-04-24 17:00,2024-02-01 07:00,2024-05-30 17:00,2025-11-20 17:00,2025-11-20 17:00,2025-12-05 17:00,2025-12-05 17:00,0,40,100
CN.SWA3.6690,IMPACT [S8] - WAITING FOR MEP LAYOUTS - SWA3 - GL 12-9 - L4 / INCOMPLETE - CLOSED FOR CCD 310 LAYOUT,Complete,CONSTRUCTION,,SUWS-3 - 12-9,DS/AD,,CONSTRUCTION,SECAI,,,,2024-04-19 07:00,2024-04-24 17:00,2024-01-10 07:00,2024-05-23 17:00,2025-11-20 17:00,2025-11-20 17:00,2025-12-05 17:00,2025-12-05 17:00,0,40,100
CN.SWA2.1630,IMPACT [S8] - WAITING ON MEP LAYOUTS - SWA-2- GL 15-12 L3 / INCOMPLETE - CLOSED FOR CCD 310 LAYOUT,Complete,CONSTRUCTION,,SUWS-2 - 15-12,DS/AD,,CONSTRUCTION,SECAI,,,,2024-04-19 07:00,2024-04-24 17:00,2024-02-01 07:00,2024-05-30 17:00,2025-11-20 17:00,2025-11-20 17:00,2025-12-05 17:00,2025-12-05 17:00,0,40,100
CN.SWA5.4050,SPRAY FIREPROOFING - SWA-5 - ELEVATOR 01 & 01A - LU1 CEILING(dUPLICATED),Complete,CONSTRUCTION,,FIZ 2 / SUWS 5  (GL6-1) - GL J - N - DATA CENTER 1,L1 - Fndn Slab,ELEVATOR,CONSTRUCTION,ROLLING PLAINS,,,,2024-09-27 07:00,2024-10-03 17:00,2024-09-25 07:00,2024-09-25 17:00,2025-11-20 17:00,2025-11-20 17:00,2025-12-05 17:00,2025-12-05 17:00,0,40,100
CN.SWA5.1950,SPRAY FIREPROOFING - BATHROOM PIT - SWA-5 - GL 3-4 - M-N - LU1 CEILING,Complete,CONSTRUCTION,,FIZ 2 / SUWS 5  (GL6-1) - GL J - N - DATA CENTER 1,L1 - Fndn Slab,,CONSTRUCTION,ROLLING PLAINS,,,,2025-01-20 07:00,2025-01-23 17:00,2025-01-20 07:00,2025-01-23 17:00,2025-11-20 17:00,2025-11-20 17:00,2025-12-05 17:00,2025-12-05 17:00,0,40,100
CN.SWA3.2100,SPRAY FIREPROOFING - BATHROOM PIT - SWA3 - GL 11 - M-N - LU1 CEILING,Complete,CONSTRUCTION,,SUWS-3 - 12-9,L1 - Fndn Slab,BATHROOM,CONSTRUCTION,ROLLING PLAINS,,,,2025-01-22 07:00,2025-01-27 17:00,2025-01-22 07:00,2025-01-25 17:00,2025-11-20 17:00,2025-11-20 17:00,2025-12-05 17:00,2025-12-05 17:00,0,40,100
CN.SWA2.1332,SPRAY FIREPROOFING AT EQPT PLATFORM - SWA2 - GL 13-14 - K-L - LU1 CEILING,Complete,CONSTRUCTION,,SUWS-2 - 15-12,L1 - Fndn Slab,DS/AD INTERIORS,CONSTRUCTION,ROLLING PLAINS,,,,2024-09-20 07:00,2024-09-26 17:00,2024-09-20 07:00,2024-09-24 17:00,2025-11-20 17:00,2025-11-20 17:00,2025-12-05 17:00,2025-12-05 17:00,0,40,100
CN.SWB1.5080,SPRAY FIREPROOFING - SWB-1 - GL 17-19 - L-N - LU1,Complete,CONSTRUCTION,,SUWN-1 - 18-21,L1 - Fndn Slab,,CONSTRUCTION,ROLLING PLAINS,,,,2024-09-23 07:00,2024-09-27 17:00,2024-09-23 07:00,2024-09-27 17:00,2025-11-20 17:00,2025-11-20 17:00,2025-12-05 17:00,2025-12-05 17:00,0,40,100
CN.SWB5.1422,SPRAY FIREPROOFING - SWB-5 - GL 31-32 - L-M - ELEVATOR 5 - LU1,Complete,CONSTRUCTION,,SUWN-5 - 30-33,L1 - Fndn Slab,ELEVATOR,CONSTRUCTION,ROLLING PLAINS,,,,2024-09-19 07:00,2024-09-24 17:00,2024-09-19 07:00,2024-09-19 17:00,2025-11-20 17:00,2025-11-20 17:00,2025-12-05 17:00,2025-12-05 17:00,0,40,100
CN.BB51.ST.2020,SPRAY FIREPROOFING - GL 33 - STAIR 5 - K-L(2 SHIFTS),Complete,CONSTRUCTION,,GRIDLINE 33,GL 33 STAIR 5 (WEST),STAIR 5 (WEST) - K-L,CONSTRUCTION,ROLLING PLAINS,,,,2024-10-22 07:00,2024-11-04 17:00,2024-10-22 07:00,2024-10-28 17:00,2025-11-20 17:00,2025-11-20 17:00,2025-11-03 07:00,2025-11-03 07:00,0,80,100
CN.BB51.ST.2350,SPRAY FIREPROOFING - GL 33- STAIR 18 - C-D (2- SHIFTS),Complete,CONSTRUCTION,,GRIDLINE 33,GL 33 STAIR 18 (EAST),STAIR 18 (EAST) - C-D,CONSTRUCTION,ROLLING PLAINS,,,,2024-12-17 07:00,2025-01-03 17:00,2024-12-17 07:00,2024-12-21 17:00,2025-11-20 17:00,2025-11-20 17:00,2025-11-03 07:00,2025-11-03 07:00,0,100,100
CN.SEB5.6680,SPRAY FIREPROOFING - ELEVATOR 18 - SEB5 - GL 31-32 - B-C - LU1,Complete,CONSTRUCTION,,SUEN-5 - 31-33,L1 - Fndn Slab,ELEVATOR,CONSTRUCTION,ROLLING PLAINS,,,,2024-09-19 07:00,2024-09-24 17:00,2024-09-19 07:00,2024-09-19 17:00,2025-11-20 17:00,2025-11-20 17:00,2025-12-05 17:00,2025-12-05 17:00,0,40,100
CN.AB1.ST.2230,"COLUMNS - PRIME, INTERMEDIATE COAT & TOP COAT - L2 - GL 23-26 - EAST [A4]",Complete,CONSTRUCTION,,B3 - Area 10 (Gridlines 24-27),L2 - SubFab Level,FAB EAST 24 - 21[11],CONSTRUCTION,CHERRY COATING,,,,2024-05-16 07:00,2024-05-24 17:00,2024-05-03 07:00,2024-05-14 17:00,2025-11-20 17:00,2025-11-20 17:00,2025-12-05 17:00,2025-12-05 17:00,0,60,100
CN.AB1.ST.2240,"COLUMNS - PRIME, INTERMEDIATE COAT & TOP COAT - L2 - GL 8-15 - CENTER [A1]",Complete,CONSTRUCTION,,A3 - Area 4 (Gridlines 12-9),L2 - SubFab Level,FAB CENTER 15-8[7],CONSTRUCTION,CHERRY COATING,,,,2024-05-02 07:00,2024-05-10 17:00,2024-05-02 07:00,2024-05-09 17:00,2025-11-20 17:00,2025-11-20 17:00,2025-12-05 17:00,2025-12-05 17:00,0,60,100
CN.AB1.ST.2260,"COLUMNS - PRIME, INTERMEDIATE COAT & TOP COAT - L2 - GL 25-16 - CENTER [A2]",Complete,CONSTRUCTION,,A1 - Area 6 (Gridlines 18-15),L2 - SubFab Level,FAB CENTER 27-33[9],CONSTRUCTION,CHERRY COATING,,,,2024-05-02 07:00,2024-05-10 17:00,2024-05-02 07:00,2024-05-13 17:00,2025-11-20 17:00,2025-11-20 17:00,2025-12-05 17:00,2025-12-05 17:00,0,60,100
CN.SEB1.7390,SPRAY FIREPROOFING - BATHROOM PIT - SEB1 - GL 21-22 - A-B - LU1 CEILING,Complete,CONSTRUCTION,,SUEN-1 - 19-22,L1 - Fndn Slab,,CONSTRUCTION,ROLLING PLAINS,,,,2025-01-22 07:00,2025-01-27 17:00,2025-01-22 07:00,2025-01-25 17:00,2025-11-20 17:00,2025-11-20 17:00,2025-12-05 17:00,2025-12-05 17:00,0,40,100
CN.SEA5680,SPRAY FIREPROOFING - ELEVATOR 22 - SEA5 - GL 3-4 - B-C - LU1,Complete,CONSTRUCTION,,SUES-5 - 6-1 - FIZ - GL A -E,L1 - Fndn Slab,ELEVATOR,CONSTRUCTION,ROLLING PLAINS,,,,2024-08-27 07:00,2024-08-30 17:00,2024-06-29 07:00,2024-07-05 17:00,2025-11-20 17:00,2025-11-20 17:00,2025-12-05 17:00,2025-12-05 17:00,0,40,100
CN.SEB5.1620,SPRAY FIREPROOFING (EXTERIOR OF BEAMS) - GL 33-3 - D LINE (AD AREA) - L6,Complete,CONSTRUCTION,,SUEN-5 - 31-33,EXTERIOR SKIN,,CONSTRUCTION,ROLLING PLAINS,,,,2024-05-06 07:00,2024-05-13 17:00,2024-05-01 07:00,2024-06-28 17:00,2025-11-20 17:00,2025-11-20 17:00,2025-11-21 07:00,2025-11-21 07:00,0,50,100
EMB1038,INSTALL FRAMING FOR IMP - GL 6-3 - E LINE (AD AREA),Complete,CONSTRUCTION,,SUES-5 - 6-1 - FIZ - GL A -E,DS/AD,,CONSTRUCTION,BERG,,,,2024-05-06 07:00,2024-05-07 17:00,2024-05-06 07:00,2024-05-14 17:00,2025-11-20 17:00,2025-11-20 17:00,2025-11-21 07:00,2025-11-21 07:00,0,20,100
CN.SEA4.6330,INSTALL FRAMING FOR IMP - GL 9-6 - E LINE (AD AREA),Complete,CONSTRUCTION,,SUES-4 - 9-6,DS/AD,,CONSTRUCTION,BERG,,,,2024-05-06 07:00,2024-05-07 17:00,2024-05-06 07:00,2024-05-14 17:00,2025-11-20 17:00,2025-11-20 17:00,2025-11-21 07:00,2025-11-21 07:00,0,20,100
CN.SEA3.6990,INSTALL FRAMING FOR IMP - GL 13-9 - E LINE (AD AREA),Complete,CONSTRUCTION,,SUES-3 - 13-9,DS/AD,,CONSTRUCTION,BERG,INSULATED METAL PANELS,,,2024-05-06 07:00,2024-05-07 17:00,2024-05-06 07:00,2024-05-14 17:00,2025-11-20 17:00,2025-11-20 17:00,2025-11-21 07:00,2025-11-21 07:00,0,20,100
CN.SEA5.8070,INSTALL FRAMING FOR IMP - GL 16-13 - E LINE (AD AREA),Complete,CONSTRUCTION,,SUES-2 - 16-13,DS/AD,,CONSTRUCTION,BERG,INSULATED METAL PANELS,,,2024-05-02 07:00,2024-05-03 17:00,2024-05-02 07:00,2024-05-14 17:00,2025-11-20 17:00,2025-11-20 17:00,2025-11-21 07:00,2025-11-21 07:00,0,20,100
CN.SEA1.6930,INSTALL FRAMING FOR IMP - GL 19-16 - E LINE (AD AREA),Complete,CONSTRUCTION,,SUES-1 - 19-16,DS/AD,,CONSTRUCTION,BERG,INSULATED METAL PANELS,,,2024-05-02 07:00,2024-05-03 17:00,2024-05-02 07:00,2024-05-14 17:00,2025-11-20 17:00,2025-11-20 17:00,2025-11-21 07:00,2025-11-21 07:00,0,20,100
CN.SEB1.7400,INSTALL FRAMING FOR IMP - GL 19-22 - E LINE (AD AREA),Complete,CONSTRUCTION,,SUEN-1 - 19-22,DS/AD,,CONSTRUCTION,BERG,INSULATED METAL PANELS,,,2024-05-06 07:00,2024-05-07 17:00,2024-05-06 07:00,2024-05-14 17:00,2025-11-20 17:00,2025-11-20 17:00,2025-11-21 07:00,2025-11-21 07:00,0,20,100
CN.SEB2.6290,INSTALL FRAMING FOR IMP - GL 22-25 - E LINE (AD AREA),Complete,CONSTRUCTION,,SUEN-2 - 22-25,DS/AD,,CONSTRUCTION,BERG,,,,2024-05-06 07:00,2024-05-07 17:00,2024-05-06 07:00,2024-05-13 17:00,2025-11-20 17:00,2025-11-20 17:00,2025-11-21 07:00,2025-11-21 07:00,0,20,100
CN.SEB4.6690,INSTALL FRAMING FOR IMP - GL 28-31 - E LINE (AD AREA),Complete,CONSTRUCTION,,SUEN-4 - 28-31,DS/AD,,CONSTRUCTION,BERG,INSULATED METAL PANELS,,,2024-05-02 07:00,2024-05-03 17:00,2024-05-06 07:00,2024-05-14 17:00,2025-11-20 17:00,2025-11-20 17:00,2025-11-21 07:00,2025-11-21 07:00,0,20,100
CN.SWB2.6100,IMPACT - SECAI MEP MATERIAL OBSTRUCTING AREA / AWAIT AREA TURNOVER TO YATES - GL 21-24 - L4 - L-N - ROOF,Complete,CONSTRUCTION,,SUWN-2 - 21-24,L4 - SUP Roof - FAB Roof,,CONSTRUCTION,SECAI,,,,2024-04-29 07:00,2024-05-03 17:00,2024-04-19 07:00,2024-10-19 17:00,2025-11-20 17:00,2025-11-20 17:00,2025-12-05 17:00,2025-12-05 17:00,0,40,100
CN.SEA5.6670,INSTALL WATERPROOFING & CRICKETS - DS/AD - SEA5 FIZ - GL 3-1 - C-E - L4 & L4/E,Complete,CONSTRUCTION,,SUES-5 - 6-1 - FIZ - GL A -E,L4 - SUP Roof - FAB Roof,,CONSTRUCTION,BRAZOS,,,,2024-06-10 07:00,2024-06-27 17:00,2024-06-04 07:00,2024-06-10 17:00,2025-11-20 17:00,2025-11-20 17:00,2025-12-05 17:00,2025-12-05 17:00,0,110,100
CN.SEA5.6680,FRP TOPPING SLAB - DS/AD - SEA5 FIZ - GL 3-1 - C-E - L4/E,Complete,CONSTRUCTION,,SUES-5 - 6-1 - FIZ - GL A -E,DS/AD,,CONSTRUCTION,BAKER,,,,2024-06-24 07:00,2024-06-27 17:00,2024-06-11 07:00,2024-06-14 17:00,2025-11-20 17:00,2025-11-20 17:00,2025-12-05 17:00,2025-12-05 17:00,0,30,100
CN.SWA4.6760,INSTALL WATERPROOFING & CRICKETS - GL 1-3 - J-L - L4 ROOF,Complete,CONSTRUCTION,,FIZ 2 / SUWS 5  (GL6-1) - GL J - N - DATA CENTER 1,L4 - SUP Roof - FAB Roof,,CONSTRUCTION,BRAZOS,,,,2024-06-10 07:00,2024-06-25 17:00,2024-06-04 07:00,2024-06-16 17:00,2025-11-20 17:00,2025-11-20 17:00,2025-12-05 17:00,2025-12-05 17:00,0,100,100
CN.AB.AR.4880,IMPACT - DEMO SLAB & DECKING FOR ADDED STRUCTURAL SUPPORT STEEL - GL 27.6-28 - B.5-D - L3,Complete,CONSTRUCTION,,SUEN-3 - 25-28,L3 / Waffle Slab Level,WAFER I/O RM,CONSTRUCTION,,,,,2024-05-03 07:00,2024-05-16 17:00,2024-04-29 07:00,2024-05-16 17:00,2025-11-20 17:00,2025-11-20 17:00,2025-11-21 07:00,2025-11-21 07:00,0,80,100
CN.AB.AR.4920,IMPACT - FRP SOMD POURBACK - GL 27.6-28 - B.5-D - L3,Complete,CONSTRUCTION,,SUEN-3 - 25-28,L3 / Waffle Slab Level,WAFER I/O RM,CONSTRUCTION,,,,,2024-06-07 07:00,2024-06-11 17:00,2024-06-03 07:00,2024-06-05 17:00,2025-11-20 17:00,2025-11-20 17:00,2025-12-04 07:00,2025-12-04 07:00,0,30,100
CN.SWB5.1432,IMPACT [C42] - RFI 5153 / Y_RFI 1217 - TOPPING SLAB REWORK - ELEVATOR 5 - LU1,Complete,CONSTRUCTION,,SUWN-5 - 30-33,,ELEVATOR,CONSTRUCTION,BAKER,,,,2024-07-15 07:00,2024-07-18 17:00,2024-06-25 07:00,2024-06-28 17:00,2025-11-20 17:00,2025-11-20 17:00,2025-10-16 07:00,2025-10-16 07:00,0,40,100
FIZ.WEST.2461,IMPACT [C29 / S12] - F04.01 / RFI 6488 - ADDED STRUCTURAL STEEL FAB/DELIVER - FIZ ROOF GL 1-3 - J-L / C-E,Complete,CONSTRUCTION,,STEEL,L4 - SUP Roof - FAB Roof,,PRE - CON / BUYOUT / IMPACTS,W&W,,,,2024-04-29 07:00,2024-06-04 17:00,2024-04-26 07:00,2024-05-23 17:00,2025-11-20 17:00,2025-11-20 17:00,2025-12-05 17:00,2025-12-05 17:00,0,210,100
FIZ.WEST.2471,IMPACT [C29 / S12] - ERECT SCAFFOLD FOR STRUCTURAL STEEL - L2-L4 - GL 1-3 - J-L,Complete,CONSTRUCTION,,FIZ 2 / SUWS 5  (GL6-1) - GL J - N - DATA CENTER 1,L4 - SUP Roof - FAB Roof,,CONSTRUCTION,,,,,2024-05-10 07:00,2024-05-24 17:00,2024-05-01 07:00,2024-05-15 17:00,2025-11-20 17:00,2025-11-20 17:00,2025-12-05 17:00,2025-12-05 17:00,0,90,100
FIZ.WEST.2481,IMPACT [S12] - DEMO DRYWALL & FIREPROOFING FOR STRUCTURAL STEEL - GL 1-3 - J-L - L2-L4,Complete,CONSTRUCTION,,FIZ 2 / SUWS 5  (GL6-1) - GL J - N - DATA CENTER 1,L4 - SUP Roof - FAB Roof,,CONSTRUCTION,BERG,,,,2024-05-31 07:00,2024-06-07 17:00,2024-05-16 07:00,2024-06-24 17:00,2025-11-20 17:00,2025-11-20 17:00,2025-12-05 17:00,2025-12-05 17:00,0,50,100
FIZ.WEST.2491,IMPACT [S12] - REINSTALL DRYWALL & FIREPROOFING - GL 1-3 - J-L - L2-L4,Complete,CONSTRUCTION,,FIZ 2 / SUWS 5  (GL6-1) - GL J - N - DATA CENTER 1,L4 - SUP Roof - FAB Roof,,CONSTRUCTION,BERG,,,,2024-07-17 07:00,2024-07-23 17:00,2024-07-03 07:00,2024-07-12 17:00,2025-11-20 17:00,2025-11-20 17:00,2025-12-05 17:00,2025-12-05 17:00,0,50,100
FIZ.WEST.2501,IMPACT [S12] - DISMANTLE SCAFFOLD FOR STRUCURAL STEEL - GL 1-3 - J-L - L2-L4,Complete,CONSTRUCTION,,FIZ 2 / SUWS 5  (GL6-1) - GL J - N - DATA CENTER 1,L4 - SUP Roof - FAB Roof,,CONSTRUCTION,,,,,2024-07-29 07:00,2024-08-09 17:00,2024-07-13 07:00,2024-07-19 17:00,2025-11-20 17:00,2025-11-20 17:00,2025-12-05 17:00,2025-12-05 17:00,0,90,100
FIZ.WEST.2511,IMPACT [C29 / S12] - ERECT SCAFFOLD FOR STRUCTURAL STEEL - GL 1-3 - C-E - L2-L4,Complete,CONSTRUCTION,,SUES-5 - 6-1 - FIZ - GL A -E,L4 - SUP Roof - FAB Roof,,CONSTRUCTION,,,,,2024-05-10 07:00,2024-05-24 17:00,2024-05-01 07:00,2024-05-15 17:00,2025-11-20 17:00,2025-11-20 17:00,2025-12-05 17:00,2025-12-05 17:00,0,90,100
FIZ.WEST.2521,IMPACT [S12] - DEMO DRYWALL & FIREPROOFING FOR STRUCTURAL STEEL - GL 1-3 - C-E - L2-L4,Complete,CONSTRUCTION,,SUES-5 - 6-1 - FIZ - GL A -E,L4 - SUP Roof - FAB Roof,,CONSTRUCTION,BERG,,,,2024-05-31 07:00,2024-06-07 17:00,2024-05-16 07:00,2024-06-20 17:00,2025-11-20 17:00,2025-11-20 17:00,2025-12-05 17:00,2025-12-05 17:00,0,50,100
FIZ.WEST.2531,IMPACT [S12] - REINSTALL DRYWALL & FIREPROOFING - GL 1-3 - C-E - L2-L4,Complete,CONSTRUCTION,,SUES-5 - 6-1 - FIZ - GL A -E,L4 - SUP Roof - FAB Roof,,CONSTRUCTION,BERG,,,,2024-07-01 07:00,2024-07-09 17:00,2024-06-24 07:00,2024-07-07 17:00,2025-11-20 17:00,2025-11-20 17:00,2025-12-05 17:00,2025-12-05 17:00,0,50,100
FIZ.WEST.2541,IMPACT [S12] - DISMANTLE SCAFFOLD FOR STRUCTURAL STEEL - GL 1-3 - C-E - L2-L4,Complete,CONSTRUCTION,,SUES-5 - 6-1 - FIZ - GL A -E,L4 - SUP Roof - FAB Roof,,CONSTRUCTION,,,,,2024-07-16 07:00,2024-07-26 17:00,2024-07-08 07:00,2024-07-16 17:00,2025-11-20 17:00,2025-11-20 17:00,2025-12-05 17:00,2025-12-05 17:00,0,90,100
CN.SEB5.8890,IMPACT - SECAI MEP DUCTS INSTALLED OBSTRUCTING FIREPROOFING & NO SCAFFOLD ACCESS - GL 33-3 - D LINE (AD AREA),Complete,CONSTRUCTION,,SUEN-5 - 31-33,EXTERIOR SKIN,,CONSTRUCTION,ALPHA,,,,2024-04-29 07:00,2024-05-10 17:00,2024-04-01 07:00,2024-04-26 16:00,2025-11-20 17:00,2025-11-20 17:00,2025-11-21 07:00,2025-11-21 07:00,0,80,100
CN.SWA4.6770,IMPACT - REMEDIATE DAMAGE FROM EXCESS RAIN - SWA4 - GL 10-6 - L-N - L4 ROOF,Complete,CONSTRUCTION,,SUWS-4 - 9-6,L4 - SUP Roof - FAB Roof,,CONSTRUCTION,,,,,2024-05-03 07:00,2024-05-09 17:00,2024-04-29 07:00,2024-05-02 17:00,2025-11-20 17:00,2025-11-20 17:00,2025-11-25 07:00,2025-11-25 07:00,0,40,100
CN.SWB5.2340,IMPACT - DAMAGED FIREPROOFING REMEDIATION AT MEZZANINE SKIRT WALLS - L4 - SE PENTHOUSE,Complete,CONSTRUCTION,,SOUTH EAST PENTHOUSE,L4 - SUP Roof - FAB Roof,,CONSTRUCTION,,,,,2024-05-03 07:00,2024-05-09 17:00,2024-04-29 07:00,2024-05-07 17:00,2025-11-20 17:00,2025-11-20 17:00,2025-12-02 07:00,2025-12-02 07:00,0,40,100
ELEVHSS290,IMPACT - SWO ISSUED FOR ALL REMAINING HSS STEEL DOOR OPENINGS / AWAIT SECAI DIRECTION TO PROCEED,Complete,CONSTRUCTION,,ELEVATORS,L1 - Fndn Slab,,PRE - CON / BUYOUT / IMPACTS,SECAI,,,,2024-05-03 07:00,2024-08-13 17:00,2024-04-25 07:00,2025-01-06 17:00,2025-11-20 17:00,2025-11-20 17:00,2025-11-24 07:00,2025-11-24 07:00,0,600,100
CN.SEA2.1181,IMPACT - DRYWALL DEMO PER SECAI DIRECTION SEA2 GL 16-13 - L3 - D LINE,Complete,CONSTRUCTION,,SUES-2 - 16-13,L3 / Waffle Slab Level,,CONSTRUCTION,,,,,2024-04-22 07:00,2024-04-25 17:00,2024-04-22 07:00,2024-05-01 17:00,2025-11-20 17:00,2025-11-20 17:00,2025-06-13 08:00,2025-06-13 08:00,0,40,100
ELEVHSS300,"IMPACT [S.TIA-147] - NCR 372 ISSUED - ELEVATOR BOTTOM CONNECTIONS / COORDINATE WITH SECAI-SAS - ELEVATORS 3,18,20,22",Complete,CONSTRUCTION,,ELEVATORS,L1 - Fndn Slab,,PRE - CON / BUYOUT / IMPACTS,,,,,2024-05-03 07:00,2024-06-04 17:00,2024-04-30 07:00,2024-05-28 17:00,2025-11-20 17:00,2025-11-20 17:00,2025-10-16 07:00,2025-10-16 07:00,0,180,100
CN.BB51.ST.1680,"COLUMNS - PRIME, INTERMEDIATE COAT & TOP COAT - L2 & L3 - GL 20-33 - E LINE- EAST [B2]",Complete,CONSTRUCTION,,B1 - Area 8 (Gridlines 18-21),L2 - SubFab Level,FAB EAST 24 - 21[11],CONSTRUCTION,CHERRY COATING,,,,2024-05-20 07:00,2024-06-06 17:00,2024-05-20 07:00,2024-06-05 17:00,2025-11-20 17:00,2025-11-20 17:00,2025-12-05 17:00,2025-12-05 17:00,0,100,100
CN.BB51.ST.1690,"COLUMNS - PRIME, INTERMEDIATE COAT & TOP COAT - L2 - GL 5-20 - E LINE- EAST [A2]",Complete,CONSTRUCTION,,A4 - Area 3 (Gridlines 9-6),L2 - SubFab Level,FAB E LINE 5-20,CONSTRUCTION,,,,,2024-04-22 07:00,2024-04-25 17:00,2024-04-22 07:00,2024-05-09 17:00,2025-11-20 17:00,2025-11-20 17:00,2025-12-05 17:00,2025-12-05 17:00,0,40,100
CN.SWB2.1540,IMPACT - INSTALL PLYWOOD FOR ACCESS[F51] - L4 CEILING 24-33/J-L,Complete,CONSTRUCTION,,SUWN-5 - 30-33,L4 - SUP Roof - FAB Roof,DS/AD INTERIORS,CONSTRUCTION,SECAI,,,,2024-03-26 07:00,2024-04-01 17:00,2024-03-26 07:00,2024-08-22 17:00,2025-11-20 17:00,2025-11-20 17:00,2025-12-05 17:00,2025-12-05 17:00,0,50,100
CN.SWB5.2350,IMPACT [E.TIA-11] - S_RFI 7072 - MEP OPENING REDESIGN COORDINATION / SECAI TO PROVIDE DIRECTION - L4 - ALL PENTHOUSES,Complete,CONSTRUCTION,,SOUTH EAST PENTHOUSE,EXTERIOR SKIN,,CONSTRUCTION,,,,,2024-05-03 07:00,2024-05-09 17:00,2024-04-25 07:00,2024-05-13 17:00,2025-11-20 17:00,2025-11-20 17:00,2025-11-17 07:00,2025-11-17 07:00,0,40,100
CN.AB.AR.2610,IMPACT - SECAI TO RELEASE UPDATED FIREPROOFING DRAWINGS FOR CLEAN ROOMS,Complete,CONSTRUCTION,,Fireproofing,FIREPROOFING,,PRE - CON / BUYOUT / IMPACTS,,,,,2024-04-15 07:00,2024-04-18 17:00,2024-04-15 07:00,2024-06-04 17:00,2025-11-20 17:00,2025-11-20 17:00,2025-11-26 07:00,2025-11-26 07:00,0,40,100
CN.SWA5..1531,IMPACT [C39] - PIT WALLS OUT OF TOLERANCE - SUBMIT RFI TO SECAI FOR DIRECTION - LU1A - ELEVATOR 01B,Complete,CONSTRUCTION,,FIZ 2 / SUWS 5  (GL6-1) - GL J - N - DATA CENTER 1,L1 - Fndn Slab,ELEVATOR,CONSTRUCTION,,,,,2024-05-03 07:00,2024-05-09 17:00,2024-04-11 07:00,2024-04-25 17:00,2025-11-20 17:00,2025-11-20 17:00,2025-12-01 07:00,2025-12-01 07:00,0,40,100
CN.SWA5..1541,IMPACT [C39] - Y_SBMT0615 - YATES PREP/SUBMIT REPAIR PROCEDURE TO CORRECT PIT WALLS - ELEVATOR 01B - LU1A,Complete,CONSTRUCTION,,FIZ 2 / SUWS 5  (GL6-1) - GL J - N - DATA CENTER 1,L1 - Fndn Slab,ELEVATOR,CONSTRUCTION,,,,,2024-05-03 07:00,2024-05-09 17:00,2024-04-26 07:00,2024-05-14 17:00,2025-11-20 17:00,2025-11-20 17:00,2025-12-01 07:00,2025-12-01 07:00,0,40,100
CN.SWA5..1551,IMPACT [C39] - BAKER REMEDIATION OF PIT WALLS / TURNOVER TO WW - ELEVATOR 01B - LU1A,Complete,CONSTRUCTION,,FIZ 2 / SUWS 5  (GL6-1) - GL J - N - DATA CENTER 1,L1 - Fndn Slab,ELEVATOR,CONSTRUCTION,,,,,2024-06-13 07:00,2024-06-28 17:00,2024-06-04 07:00,2024-06-04 17:00,2025-11-20 17:00,2025-11-20 17:00,2025-12-01 07:00,2025-12-01 07:00,0,100,100
CN.SEB5.1261,IMPACT - NCR 372 - REPAIR INACCESSIBLE BOLTS - DENSO VOID FILLER - ELEVATOR 18 - UP TO L1,Complete,CONSTRUCTION,,SUEN-5 - 31-33,,ELEVATOR,CONSTRUCTION,SECAI,,,,2024-09-17 07:00,2024-09-19 17:00,2024-09-17 07:00,2024-09-19 17:00,2025-11-20 17:00,2025-11-20 17:00,2025-10-16 07:00,2025-10-16 07:00,0,20,100
CN.SEA1.4690,IMPACT [S.TIA-147] - NCR 372 - ALPHA CLEAN BOLTS - ELEVATOR 20 - L1 AND BELOW,Complete,CONSTRUCTION,,SUES-1 - 19-16,,ELEVATOR,CONSTRUCTION,,,,,2024-07-22 07:00,2024-07-24 17:00,2024-05-13 07:00,2024-05-17 17:00,2025-11-20 17:00,2025-11-20 17:00,2025-11-24 07:00,2025-11-24 07:00,0,30,100
CN.SEA5690,IMPACT - NCR 372 - REPAIR INACCESSIBLE BOLTS - DENSO VOID FILLER - ELEVATOR 22 - UP TO L1,Complete,CONSTRUCTION,,SUES-5 - 6-1 - FIZ - GL A -E,,ELEVATOR,CONSTRUCTION,SECAI,,,,2024-09-19 07:00,2024-09-20 17:00,2024-09-19 07:00,2024-09-20 17:00,2025-11-20 17:00,2025-11-20 17:00,2025-10-16 07:00,2025-10-16 07:00,0,20,100
CN.SWA5.4020,"IMPACT [S28] - SECAI TO PROVIDE ACCESS TO ELEVATOR SHAFTS TO LOAD STEEL MATERIALS - ELEVATORS 01, 01A, 01B",Complete,CONSTRUCTION,,FIZ 2 / SUWS 5  (GL6-1) - GL J - N - DATA CENTER 1,L1 - Fndn Slab,ELEVATOR,CONSTRUCTION,,,,,2024-05-10 07:00,2024-05-16 17:00,2024-04-30 07:00,2024-05-13 17:00,2025-11-20 17:00,2025-11-20 17:00,2025-12-01 07:00,2025-12-01 07:00,0,40,100
CN.SWA5.4030,"IMPACT [S.TIA-148] - AWAIT SECAI TO PUMP/CLEAN OUT WATER IN ELEVATOR PITS - ELEVATORS 01, 01A, 01B",Complete,CONSTRUCTION,,FIZ 2 / SUWS 5  (GL6-1) - GL J - N - DATA CENTER 1,L1 - Fndn Slab,ELEVATOR,CONSTRUCTION,,,,,2024-05-10 07:00,2024-05-16 17:00,2024-05-01 07:00,2024-06-05 17:00,2025-11-20 17:00,2025-11-20 17:00,2025-12-01 07:00,2025-12-01 07:00,0,40,100
CN.SEB5.6570,F/R/P TOPPING SLAB - SEB5 - ELEVATOR 18 - LU1,Complete,CONSTRUCTION,,SUEN-5 - 31-33,,ELEVATOR,CONSTRUCTION,BAKER,,,,2024-08-26 07:00,2024-08-29 17:00,2024-06-07 07:00,2024-06-12 17:00,2025-11-20 17:00,2025-11-20 17:00,2025-12-05 17:00,2025-12-05 17:00,0,40,100
CN.SWA5.1970,IMPACT [C3 / D16] - FRP BATHROOM FOUNDATION SLAB - SWA5 - GL 3 - L1,Complete,CONSTRUCTION,,FIZ 2 / SUWS 5  (GL6-1) - GL J - N - DATA CENTER 1,L1 - Fndn Slab,BATHROOM,CONSTRUCTION,,,,,2024-06-18 07:00,2024-06-25 17:00,2024-06-07 07:00,2024-06-11 17:00,2025-11-20 17:00,2025-11-20 17:00,2025-11-20 07:00,2025-11-20 07:00,0,50,100
CN.SWA3.2120,IMPACT [C3 / D10] - FRP BATHROOM FOUNDATION SLAB - SWA3 - GL 12-11 - L-N - L1,Complete,CONSTRUCTION,,SUWS-3 - 12-9,L1 - Fndn Slab,BATHROOM,CONSTRUCTION,,,,,2024-06-18 07:00,2024-06-25 17:00,2024-06-07 07:00,2024-06-13 17:00,2025-11-20 17:00,2025-11-20 17:00,2025-11-20 07:00,2025-11-20 07:00,0,50,100
CN.AB.AR.5720,IMPACT [C49] - Y_RFI 1233 - PREP / SUBMIT / RECEIVE RFI FOR CONCRETE CURBS - SWA1 - L1 - GL 16.5-17 - M-N,Complete,CONSTRUCTION,,SUWS-1 - 18-15,L3 / Waffle Slab Level,SUB CLEAN RM,CONSTRUCTION,,,,,2024-05-10 07:00,2024-05-16 17:00,2024-03-01 07:00,2024-03-15 17:00,2025-11-20 17:00,2025-11-20 17:00,2025-11-20 07:00,2025-11-20 07:00,0,40,100
CN.AB.AR.5910,IMPACT [C49] - Y_RFI 1268 - PREP / SUBMIT / RECEIVE RFI FOR CONCRETE CURBS - SWA1 - L1 - GL 16.5-17 - M-N,Complete,CONSTRUCTION,,SUWS-1 - 18-15,L3 / Waffle Slab Level,SUB CLEAN RM,CONSTRUCTION,,,,,2024-05-16 07:00,2024-05-21 17:00,2024-03-16 07:00,2024-04-09 17:00,2025-11-20 17:00,2025-11-20 17:00,2025-11-20 07:00,2025-11-20 07:00,0,40,100
CN.AB.AR.5920,IMPACT [C49] - Y_RFI 1308 - PREP / SUBMIT / RECEIVE RFI FOR CONCRETE CURBS - SWA1 - L1 - GL 16.5-17 - M-N,Complete,CONSTRUCTION,,SUWS-1 - 18-15,L3 / Waffle Slab Level,SUB CLEAN RM,CONSTRUCTION,,,,,2024-05-21 07:00,2024-05-28 17:00,2024-04-10 07:00,2024-05-10 17:00,2025-11-20 17:00,2025-11-20 17:00,2025-11-20 07:00,2025-11-20 07:00,0,40,100
CN.AB.AR.5930,FRP CURBS - SWA1 - L1 - GL 16.5-17 - M-N,Complete,CONSTRUCTION,,SUWS-1 - 18-15,L3 / Waffle Slab Level,SUB CLEAN RM,CONSTRUCTION,BAKER,,,,2024-05-24 07:00,2024-05-31 17:00,2024-05-14 07:00,2024-05-20 17:00,2025-11-20 17:00,2025-11-20 17:00,2025-11-20 07:00,2025-11-20 07:00,0,40,100
CN.SWB5.2380,IMPACT [E.TIA-12] - Y_RFI 1328 - DESIGN CLARIFICATION FOR MEZZANINE FRAMING - GL 3 & GL 5 - L4 - SW PENTHOUSE,Complete,CONSTRUCTION,,SOUTH WEST PENTHOUSE,L4 - SUP Roof - FAB Roof,,CONSTRUCTION,,,,,2024-05-10 07:00,2024-05-16 17:00,2024-05-09 07:00,2024-05-14 17:00,2025-11-20 17:00,2025-11-20 17:00,2025-12-05 17:00,2025-12-05 17:00,0,40,100
CN.SWB5.8990,IMPACT [E.TIA-11] - BERG INSTALL/INSPECT MEP OPENING FRAMING - SE PENTHOUSE - NORTH - GL 5 - A-C,Complete,CONSTRUCTION,,SOUTH EAST PENTHOUSE,EXTERIOR SKIN,,CONSTRUCTION,BERG,,,,2024-06-24 07:00,2024-07-01 17:00,2024-06-06 07:00,2024-06-13 17:00,2025-11-20 17:00,2025-11-20 17:00,2025-12-02 07:00,2025-12-02 07:00,0,50,100
CN.SWB5.9000,IMPACT [E.TIA-11] - BERG INSTALL/INSPECT MEP OPENING FRAMING - SE PENTHOUSE - SOUTH - GL 3 - A-D,Complete,CONSTRUCTION,,SOUTH EAST PENTHOUSE,EXTERIOR SKIN,,CONSTRUCTION,BERG,,,,2024-05-31 07:00,2024-06-07 17:00,2024-05-30 07:00,2024-06-21 17:00,2025-11-20 17:00,2025-11-20 17:00,2025-11-17 07:00,2025-11-17 07:00,0,50,100
CN.SWB5.9050,ALPHA PAINT BOLTS / CLADDING - SE PENTHOUSE - SOUTH - GL 3 - A-D [IMPACTED BY C-D STEEL ISSUE],Complete,CONSTRUCTION,,SOUTH EAST PENTHOUSE,EXTERIOR SKIN,,CONSTRUCTION,ALPHA,,,,2024-08-23 07:00,2024-08-27 17:00,2024-08-12 07:00,2024-08-15 17:00,2025-11-20 17:00,2025-11-20 17:00,2025-12-03 07:00,2025-12-03 07:00,0,30,100
CN.SWB5.9070,ALPHA PAINT BOLTS / CLADDING - SE PENTHOUSE - NORTH - GL 5 - A-C,Complete,CONSTRUCTION,,SOUTH EAST PENTHOUSE,EXTERIOR SKIN,,CONSTRUCTION,ALPHA,,,,2024-06-13 07:00,2024-06-17 17:00,2024-05-30 07:00,2024-06-17 17:00,2025-11-20 17:00,2025-11-20 17:00,2025-12-02 07:00,2025-12-02 07:00,0,30,100
CN.SWB5.9080,PENTHOUSE STEEL FIREPROOFING - SE PENTHOUSE,Complete,CONSTRUCTION,,SOUTH EAST PENTHOUSE,L4 - SUP Roof - FAB Roof,,CONSTRUCTION,,,,,2024-05-10 07:00,2024-05-23 17:00,2024-04-29 07:00,2024-05-09 17:00,2025-11-20 17:00,2025-11-20 17:00,2025-12-02 07:00,2025-12-02 07:00,0,80,100
CN.AB.AR.5400,IMPACT [S17] - COMPLETE PRICING FOR CCD (APACHE) / SUBMIT / SECAI APPROVAL - GAS PURIFIER ROOM - GL 9-10 - M-N - L2,Complete,CONSTRUCTION,,SUWS-3 - 12-9,L2 - SubFab Level,ELECTRIC RM 1,CONSTRUCTION,,,,,2024-05-10 07:00,2024-05-16 17:00,2024-05-06 07:00,2024-06-10 17:00,2025-11-20 17:00,2025-11-20 17:00,2025-12-05 07:00,2025-12-05 07:00,0,40,100
CN.SWB5.9090,INTERIOR FIREPROOFING - SE PENTHOUSE - L5-L6 - C-D,Complete,CONSTRUCTION,,SOUTH EAST PENTHOUSE,L4 - SUP Roof - FAB Roof,,CONSTRUCTION,,,,,2024-06-06 07:00,2024-06-14 17:00,2024-05-28 07:00,2024-06-04 17:00,2025-11-20 17:00,2025-11-20 17:00,2025-12-02 07:00,2025-12-02 07:00,0,60,100
CN.SWB5.1442,IMPACT [S.TIA-147] - NCR 372 - ALPHA PAINT ALL BOLTS - ELEVATOR 5 - ALL LEVELS - SPIDER CRANE AT L4 REQUIRED,Complete,CONSTRUCTION,,SUWN-5 - 30-33,,ELEVATOR,CONSTRUCTION,ALPHA,,,,2024-06-28 07:00,2024-07-16 17:00,2024-06-10 07:00,2024-07-24 17:00,2025-11-20 17:00,2025-11-20 17:00,2025-10-16 07:00,2025-10-16 07:00,0,100,100
CN.SEA4.1231,IMPACT - SCAFFODING IN THE WAY - SEA4 - GL 7-6 - D LINE - L3,Complete,CONSTRUCTION,,SUES-4 - 9-6,L3 / Waffle Slab Level,DS/AD INTERIORS,CONSTRUCTION,,,,,2024-04-22 07:00,2024-04-25 17:00,2024-04-22 07:00,2024-05-28 17:00,2025-11-20 17:00,2025-11-20 17:00,2025-06-13 08:00,2025-06-13 08:00,0,40,100
CN.SWA5.4040,IMPACT - YATES ERECT LOADING DECK FOR ELEVATOR INSTALL - ELEVATOR 01 - L4/C,Complete,CONSTRUCTION,,FIZ 2 / SUWS 5  (GL6-1) - GL J - N - DATA CENTER 1,L1 - Fndn Slab,ELEVATOR,CONSTRUCTION,,,,,2024-05-17 07:00,2024-05-23 17:00,2024-05-13 07:00,2024-05-22 17:00,2025-11-20 17:00,2025-11-20 17:00,2025-12-01 07:00,2025-12-01 07:00,0,40,100
CN.SWA5.4060,IMPACT - WWSE INSTALL LIFTING LUG FOR ELEVATOR INSTALL - ELEVATOR 01 - L6,Complete,CONSTRUCTION,,FIZ 2 / SUWS 5  (GL6-1) - GL J - N - DATA CENTER 1,L1 - Fndn Slab,ELEVATOR,CONSTRUCTION,,,,,2024-05-30 07:00,2024-06-04 17:00,2024-05-23 07:00,2024-05-27 17:00,2025-11-20 17:00,2025-11-20 17:00,2025-12-01 07:00,2025-12-01 07:00,0,40,100
CN.SWA5.4090,IMPACT [S33] - SECAI TO REMOVE MEP AWAY FROM SHAFT (DUCT & CABLE TRAY) - ELEVATOR 01A,Complete,CONSTRUCTION,,FIZ 2 / SUWS 5  (GL6-1) - GL J - N - DATA CENTER 1,,ELEVATOR,CONSTRUCTION,,,,,2024-05-17 07:00,2024-05-23 17:00,2024-04-29 07:00,2024-06-05 17:00,2025-11-20 17:00,2025-11-20 17:00,2025-12-01 07:00,2025-12-01 07:00,0,40,100
CN.SWB53250,IMPACT [S42] - COORDINATE APACHE TO ERECT NEW SCAFFOLD FOR SUPPORT STEEL INSTALL - UTILITY ROOM - GL 30-31 - M-N - L2,Complete,CONSTRUCTION,,SUWN-5 - 30-33,L2 - SubFab Level,GCS STORAGE,CONSTRUCTION,,,,,2024-09-03 07:00,2024-09-13 17:00,2024-06-11 07:00,2024-08-06 17:00,2025-11-20 17:00,2025-11-20 17:00,2025-12-05 17:00,2025-12-05 17:00,0,80,100
CN.SEA5.1432,IMPACT - WALL NOT FLUSH WITH COLUMNS - SEA5 FIZ - GL 4-3 - D LINE - L3,Complete,CONSTRUCTION,,SUES-5 - 6-1 - FIZ - GL A -E,L3 / Waffle Slab Level,DS/AD INTERIORS,CONSTRUCTION,,,,,2024-04-18 07:00,2024-04-23 17:00,2024-04-18 07:00,2024-05-27 17:00,2025-11-20 17:00,2025-11-20 17:00,2025-06-13 08:00,2025-06-13 08:00,0,40,100
CN.AB.AR.6910,IMPACT [S32] - NOTIFY SECAI OF SPRINKLER & CABLE TRAY OBSTRUCTION / AWAIT REMOVAL - GL3 - A-B.5 - L3,Complete,CONSTRUCTION,,SUES-5 - 6-1 - FIZ - GL A -E,L3 / Waffle Slab Level,,CONSTRUCTION,,,,,2024-05-17 07:00,2024-05-23 17:00,2024-05-07 07:00,2024-05-21 17:00,2025-11-20 17:00,2025-11-20 17:00,2025-12-05 17:00,2025-12-05 17:00,0,40,100
CN.SEB1.1221,IMPACT - INSTALL ADDITIONAL STRUCTURAL STEEL - GL 18.8-20 - D-C - L3,Active,CONSTRUCTION,,SUEN-1 - 19-22,L3 / Waffle Slab Level,DS/AD INTERIORS,CONSTRUCTION,W&W,,,,2024-05-17 07:00,2024-05-23 17:00,2024-05-01 07:00,,2025-12-02 07:00,2025-12-02 17:00,2025-12-05 07:00,2025-12-05 17:00,10,40,0
CN.SEB1.1231,IMPACT - DESIGN ISSUE RESOLUTION FOR SOME STEEL MEMBERS - GL 18.8-20 - D-C - L3,Complete,CONSTRUCTION,,SUEN-1 - 19-22,L3 / Waffle Slab Level,DS/AD INTERIORS,CONSTRUCTION,SECAI,,,,2024-05-17 07:00,2024-05-23 17:00,2024-05-06 07:00,2025-01-22 17:00,2025-11-20 17:00,2025-11-20 17:00,2025-11-26 07:00,2025-11-26 07:00,0,40,100
CN.SEB1.1241,IMPACT - GREENBERRY PIPE INSTALL WILL BLOCK WW STEEL INSTALLATION AREA - GL 18.8-20 - D-C - L3,Active,CONSTRUCTION,,SUEN-1 - 19-22,L3 / Waffle Slab Level,DS/AD INTERIORS,CONSTRUCTION,SECAI,,,,2024-06-28 07:00,2024-07-16 17:00,2024-05-06 07:00,,2025-11-21 07:00,2025-11-21 17:00,2025-11-26 07:00,2025-11-26 17:00,10,100,0
CN.SEB3.1650,IMPACT [S30] - NO ACCESS - MEP PIPES BLOCKING LANDING AREA / AWAIT SECAI REMOVAL - STAIR 19 - GL 25-25.5 - C-E - L3,Complete,CONSTRUCTION,,SUEN-3 - 25-28,INTERIOR STAIR TOWER - STAIR #19 (CLEAN ROOM) - DE-SCOPED,,CONSTRUCTION,SECAI,,,,2024-05-17 07:00,2024-05-23 17:00,2024-04-17 07:00,2024-07-05 00:00,2025-11-20 17:00,2025-11-20 17:00,2025-12-05 17:00,2025-12-05 17:00,0,40,100
CN.SEA5.6690,IMPACT [C29] - SECAI ISSUE SWO FOR FIZ ROOF CONCRETE / SECAI LIFTS SWO - GL 1-3 - C-E - L4 ROOF,Complete,CONSTRUCTION,,SUES-5 - 6-1 - FIZ - GL A -E,L4 - SUP Roof - FAB Roof,,CONSTRUCTION,,,,,2024-05-17 07:00,2024-05-23 17:00,2024-01-25 07:00,2024-05-31 17:00,2025-11-20 17:00,2025-11-20 17:00,2025-12-05 17:00,2025-12-05 17:00,0,40,100
FIZ.WEST.2551,IMPACT [C29] - SECAI ISSUE SWO FOR FIZ ROOF CONCRETE / SECAI LIFTS SWO - GL 1-3 - J-L - L4 ROOF,Complete,CONSTRUCTION,,FIZ 2 / SUWS 5  (GL6-1) - GL J - N - DATA CENTER 1,L4 - SUP Roof - FAB Roof,,CONSTRUCTION,,,,,2024-05-17 07:00,2024-05-23 17:00,2024-01-25 07:00,2024-05-31 17:00,2025-11-20 17:00,2025-11-20 17:00,2025-12-05 17:00,2025-12-05 17:00,0,40,100
CN.SWB54680,IMPACT - Y_RFI#1331 - YATES SUBMIT RFI FOR GIRDER CONNECTION ISSUE - ELEVATOR 5 - L4,Complete,CONSTRUCTION,,SUWN-5 - 30-33,L1 - Fndn Slab,ELEVATOR,CONSTRUCTION,,,,,2024-05-17 07:00,2024-05-17 17:00,2024-05-10 07:00,2024-05-10 17:00,2025-11-20 17:00,2025-11-20 17:00,2025-10-16 07:00,2025-10-16 07:00,0,10,100
CN.SWB54690,IMPACT - Y_RFI#1331 - AWAIT SECAI RESPONSE / SECAI PROVIDE APPROVED CONNECTION PROCEDURE - ELEVATOR 5 - L4,Complete,CONSTRUCTION,,SUWN-5 - 30-33,L1 - Fndn Slab,ELEVATOR,CONSTRUCTION,,,,,2024-05-17 07:00,2024-06-04 17:00,2024-05-11 07:00,2024-05-28 17:00,2025-11-20 17:00,2025-11-20 17:00,2025-10-16 07:00,2025-10-16 07:00,0,100,100
CN.SWB54700,IMPACT - YATES/WWSE COMPLETE GIRDER CONNECTION - ELEVATOR 5 - L4,Complete,CONSTRUCTION,,SUWN-5 - 30-33,,ELEVATOR,CONSTRUCTION,,,,,2024-06-07 07:00,2024-06-11 17:00,2024-05-29 07:00,2024-06-07 07:00,2025-11-20 17:00,2025-11-20 17:00,2025-10-16 07:00,2025-10-16 07:00,0,30,100
CN.SEB5.1271,IMPACT - Y_RFI#1231 - YATES SUBMIT RFI FOR GIRDER CONNECTION ISSUE - ELEVATOR 18 - L4,Complete,CONSTRUCTION,,SUEN-5 - 31-33,L1 - Fndn Slab,ELEVATOR,CONSTRUCTION,,,,,2024-05-17 07:00,2024-05-17 17:00,2024-02-28 07:00,2024-02-28 17:00,2025-11-20 17:00,2025-11-20 17:00,2025-11-10 07:00,2025-11-10 07:00,0,10,100
CN.SEB5.1281,IMPACT - Y_RFI#1231 - AWAIT SECAI RESPONSE / SECAI PROVIDE APPROVED CONNECTION PROCEDURE - ELEVATOR 18 - L4,Complete,CONSTRUCTION,,SUEN-5 - 31-33,L1 - Fndn Slab,ELEVATOR,CONSTRUCTION,,,,,2024-05-17 07:00,2024-06-04 17:00,2024-02-29 07:00,2024-05-03 17:00,2025-11-20 17:00,2025-11-20 17:00,2025-11-10 07:00,2025-11-10 07:00,0,100,100
CN.SEB5.1291,IMPACT - YATES/WWSE COMPLETE GIRDER CONNECTION - ELEVATOR 18 - L4,Complete,CONSTRUCTION,,SUEN-5 - 31-33,L1 - Fndn Slab,ELEVATOR,CONSTRUCTION,,,,,2024-05-17 07:00,2024-05-21 17:00,2024-05-06 07:00,2024-05-10 17:00,2025-11-20 17:00,2025-11-20 17:00,2025-11-10 07:00,2025-11-10 07:00,0,30,100
CN.AB.AR.4830,IMPACT - SECAI RAMP IN CONFLICT WITH WALL - WAFER I/O - GL 25-31 - C-A - L3,Active,CONSTRUCTION,,SUEN-3 - 25-28,L3 / Waffle Slab Level,WAFER I/O RM,CONSTRUCTION,SECAI,,,,2024-04-17 07:00,2024-04-22 17:00,2024-04-17 07:00,,2025-11-21 07:00,2025-11-21 17:00,2025-11-26 07:00,2025-11-26 17:00,10,40,100
CN.SEB1.7030,IMPACT - Y_RFI 1352 - YATES/PATRIOT/KOVACH PREPARE & SUBMIT RFI FOR EXPANSION JOINT ISSUE - GL 19 - C/D/K/L,Complete,CONSTRUCTION,,SUEN-1 - 19-22,EXTERIOR SKIN,,CONSTRUCTION,,,,,2024-05-17 07:00,2024-05-24 17:00,2024-05-15 07:00,2024-05-30 17:00,2025-11-20 17:00,2025-11-20 17:00,2025-12-05 07:00,2025-12-05 07:00,0,50,100
CN.SEB1.7470,IMPACT - Y_RFI 1352 - SECAI/JACOBS REPLY PROPOSE STUD FRAMING SOLUTION - GL 19 - C/D/K/L,Complete,CONSTRUCTION,,SUEN-1 - 19-22,EXTERIOR SKIN,,CONSTRUCTION,,,,,2024-06-07 07:00,2024-06-24 17:00,2024-05-31 07:00,2024-06-04 17:00,2025-11-20 17:00,2025-11-20 17:00,2025-12-05 07:00,2025-12-05 07:00,0,100,100
CN.SEB1.7480,IMPACT - AWAIT SECAI WRITTEN CONFIRMATION FOR DESIGN - TUBE STEEL - EXP JOINT ISSUE - GL 19 - C/D/K/L,Complete,CONSTRUCTION,,SUEN-1 - 19-22,EXTERIOR SKIN,,CONSTRUCTION,SECAI,,,,2024-07-08 07:00,2024-07-15 17:00,2024-06-29 07:00,2024-07-09 17:00,2025-11-20 17:00,2025-11-20 17:00,2025-12-05 07:00,2025-12-05 07:00,0,50,100
CN.SEB1.7490,IMPACT - INSTALL ADDITIONAL CLADDING STEEL AT EXPANSION JOINT - GL 19.5-18.5 - C LINE (DS AREA),Complete,CONSTRUCTION,,SUEN-1 - 19-22,EXTERIOR SKIN,,CONSTRUCTION,PATRIOT,,,,2024-07-19 07:00,2024-07-25 17:00,2024-07-12 07:00,2024-08-07 17:00,2025-11-20 17:00,2025-11-20 17:00,2025-12-05 07:00,2025-12-05 07:00,0,50,100
CN.SEA1.6600,IMPACT - SECAI REQUEST YATES LEAVE CLADDING OPENING FOR MEP TO LOAD MATERIALS - GL 19-16 - D LINE (AD AREA),Complete,CONSTRUCTION,,SUES-1 - 19-16,EXTERIOR SKIN,,CONSTRUCTION,,,,,2024-05-17 07:00,2024-05-23 17:00,2024-04-06 07:00,2024-05-23 17:00,2025-11-20 17:00,2025-11-20 17:00,2025-11-21 07:00,2025-11-21 07:00,0,40,100
CN.SWB5.2400,CCD 248 - ISSUE & APPROVAL OF CCD FOR TEMP DRYWALL ENCLOSURE - SE PENTHOUSE,Complete,CONSTRUCTION,,SOUTH EAST PENTHOUSE,L4 - SUP Roof - FAB Roof,,CONSTRUCTION,,,,,2024-05-17 07:00,2024-05-23 17:00,2024-05-08 07:00,2024-05-17 17:00,2025-11-20 17:00,2025-11-20 17:00,2025-12-02 07:00,2025-12-02 07:00,0,40,100
CN.SWB5.2410,CCD 248 - FRAME & HANG TEMP DRYWALL ENCLOSURE - GL5 & A-LINE - SE PENTHOUSE,Complete,CONSTRUCTION,,SOUTH EAST PENTHOUSE,L4 - SUP Roof - FAB Roof,,CONSTRUCTION,,,,,2024-05-24 07:00,2024-06-10 17:00,2024-05-22 07:00,2024-05-30 17:00,2025-11-20 17:00,2025-11-20 17:00,2025-12-02 07:00,2025-12-02 07:00,0,90,100
CN.SWB5.9100,INSTALL TEMP COVER AT DUCT SHAFT & ELEVATOR TOP - SE PENTHOUSE,Complete,CONSTRUCTION,,SOUTH EAST PENTHOUSE,L4 - SUP Roof - FAB Roof,,CONSTRUCTION,,,,,2024-06-06 07:00,2024-06-07 17:00,2024-05-25 07:00,2024-05-27 17:00,2025-11-20 17:00,2025-11-20 17:00,2025-12-02 07:00,2025-12-02 07:00,0,20,100
CN.SWB5.9110,INSTALL SCAFFOLDING FOR FIREPROOFING - SE PENTHOUSE - L5-L6 - C-D,Complete,CONSTRUCTION,,SOUTH EAST PENTHOUSE,L4 - SUP Roof - FAB Roof,,CONSTRUCTION,,,,,2024-05-31 07:00,2024-06-06 17:00,2024-05-24 07:00,2024-05-25 17:00,2025-11-20 17:00,2025-11-20 17:00,2025-12-02 07:00,2025-12-02 07:00,0,40,100
CN.SWB5.9120,IMPACT - RFI # - D LINE SHAFT WALL - L4C SLAB / ROOF SLAB MISALIGNMENT - SE PENTHOUSE - L4C - GL 3-6,Complete,CONSTRUCTION,,SOUTH EAST PENTHOUSE,L4 - SUP Roof - FAB Roof,,CONSTRUCTION,,,,,2024-05-31 07:00,2024-06-11 17:00,2024-05-20 07:00,2024-05-24 17:00,2025-11-20 17:00,2025-11-20 17:00,2025-12-02 07:00,2025-12-02 07:00,0,70,100
CN.SWA4.6780,IMPACT - REMOVE MEP MATERIAL BY SECAI - FA LAB NORTH - SWA4 - GL 9-12 - L-N - L3,Complete,CONSTRUCTION,,SUWS-3 - 12-9,L3 / Waffle Slab Level,FA LAB,CONSTRUCTION,SECAI,,,,2024-04-01 07:00,2024-04-08 17:00,2024-04-01 07:00,2024-07-01 17:00,2025-11-20 17:00,2025-11-20 17:00,2025-11-21 07:00,2025-11-21 07:00,0,60,100
CN.SWA4.6800,CSP-1 SURFACE PREP PRECAST BEAMS & COLUMNS - FIZ - FIZ1 - GL 1-3 - J-H - L3,Complete,CONSTRUCTION,,FIZ1 (West Inner) GL J-G - DATA CENTER 2,L3 / Waffle Slab Level,FA LAB,CONSTRUCTION,CHERRY COATING,,,,2024-06-03 07:00,2024-06-13 17:00,2024-06-03 07:00,2024-06-08 17:00,2025-11-20 17:00,2025-11-20 17:00,2025-12-05 17:00,2025-12-05 17:00,0,70,100
CN.SWA4.6790,IMPACT - REMOVE MEP MATERIAL BY SECAI - FIZ - FIZ1 - GL 1-3 - J-H - L3,Complete,CONSTRUCTION,,FIZ1 (West Inner) GL J-G - DATA CENTER 2,L3 / Waffle Slab Level,FA LAB,CONSTRUCTION,SECAI,,,,2024-04-01 07:00,2024-04-08 17:00,2024-04-01 07:00,2024-06-03 17:00,2025-11-20 17:00,2025-11-20 17:00,2025-12-05 17:00,2025-12-05 17:00,0,60,100
CN.SWA4.6840,CSP-1 SURFACE PREP PRECAST BEAMS & COLUMNS - FA LAB NORTH - FIZ1 - GL 1-3 - G-F - L3,Complete,CONSTRUCTION,,FIZ3 (East Inner) GL G-E,L3 / Waffle Slab Level,FA LAB,CONSTRUCTION,CHERRY COATING,,,,2024-06-03 07:00,2024-06-13 17:00,2024-06-03 07:00,2024-06-11 17:00,2025-11-20 17:00,2025-11-20 17:00,2025-12-05 17:00,2025-12-05 17:00,0,70,100
CN.SWA4.6830,IMPACT - REMOVE MEP MATERIAL BY SECAI - FIZ1 - GL 1-3 - G-F - L3,Complete,CONSTRUCTION,,FIZ3 (East Inner) GL G-E,L3 / Waffle Slab Level,FA LAB,CONSTRUCTION,SECAI,,,,2024-04-01 07:00,2024-04-08 17:00,2024-04-01 07:00,2024-06-01 17:00,2025-11-20 17:00,2025-11-20 17:00,2025-12-05 17:00,2025-12-05 17:00,0,60,100
CN.BB51.ST.1395,IMPACT - DEWATERING FOUNDATION AREA - GL 33 - STAIR 18 - C-D,Complete,CONSTRUCTION,,GRIDLINE 33,,STAIR 18 (EAST) - C-D,CONSTRUCTION,,,,,2024-05-24 07:00,2024-05-31 17:00,2024-05-08 07:00,2024-05-16 17:00,2025-11-20 17:00,2025-11-20 17:00,2025-11-03 07:00,2025-11-03 07:00,0,40,100
CN.SWB3.4920,IMPACT - NOTIFY SECAI/SEAC TO MOVE MATERIALS & AWAIT AREA TURNOVER TO YATES - GL 24-26 - L4 - L-N - ROOF,Complete,CONSTRUCTION,,SUWN-3 - 24-27,L4 - SUP Roof - FAB Roof,,CONSTRUCTION,,,,,2024-05-24 07:00,2024-06-11 17:00,2024-05-20 07:00,2024-05-24 17:00,2025-11-20 17:00,2025-11-20 17:00,2025-12-05 17:00,2025-12-05 17:00,0,100,100
CN.SWB2.6220,IMPACT - WATERPROOFING AROUND OAC PADS (LEAVEOUT AREA) - GL 21-24 - M-N - ROOF,Complete,CONSTRUCTION,,SUWN-2 - 21-24,L4 - SUP Roof - FAB Roof,,CONSTRUCTION,BRAZOS,,,,2024-11-04 07:00,2024-11-15 17:00,2024-10-21 07:00,2024-11-05 17:00,2025-11-20 17:00,2025-11-20 17:00,2025-12-05 17:00,2025-12-05 17:00,0,80,100
CN.SWB2.6230,IMPACT - FRP TOPPING SLAB AROUND OAC PADS (LEAVEOUT AREA) - GL 21-24 - M-N - ROOF,Complete,CONSTRUCTION,,SUWN-2 - 21-24,L4 - SUP Roof - FAB Roof,,CONSTRUCTION,BAKER,,,,2024-11-19 07:00,2024-11-22 17:00,2024-11-19 07:00,2024-11-21 17:00,2025-11-20 17:00,2025-11-20 17:00,2025-12-05 17:00,2025-12-05 17:00,0,30,100
CN.SEB1.7530,IMPACT - ALPHA PAINT ADDITIONAL CLADDING - GL 19.5-18.5 - C LINE (DS AREA),Complete,CONSTRUCTION,,SUEN-1 - 19-22,EXTERIOR SKIN,,CONSTRUCTION,ALPHA,,,,2024-08-05 07:00,2024-08-06 17:00,2024-08-07 07:00,2024-08-08 17:00,2025-11-20 17:00,2025-11-20 17:00,2025-12-05 17:00,2025-12-05 17:00,0,20,100
CN.SWB5.2360,IMPACT - RECEIVE NEW SCOPE FOR DUCT CLADDING SUPPORT STRUCTURE (F05.06) - GL 30-31 - N LINE,Complete,CONSTRUCTION,,SUWN-5 - 30-33,EXTERIOR SKIN,,CONSTRUCTION,,,,,2024-05-24 07:00,2024-05-24 17:00,2023-03-23 07:00,2023-03-23 17:00,2025-11-20 17:00,2025-11-20 17:00,2025-12-05 17:00,2025-12-05 17:00,0,10,100
CN.SWB5.2420,IMPACT - DESIGN/SCOPE COORDINATION WITH SECAI FOR DUCT CLADDING STRUCTURE - GL 30-31 - N LINE,Complete,CONSTRUCTION,,SUWN-5 - 30-33,EXTERIOR SKIN,,CONSTRUCTION,,,,,2024-05-24 07:00,2024-11-11 17:00,2023-03-24 07:00,2023-08-18 17:00,2025-11-20 17:00,2025-11-20 17:00,2025-12-05 17:00,2025-12-05 17:00,0,1000,100
CN.SWB5.2430,IMPACT - PATRIOT PRICING & COORDINATION FOR DUCT CLADDING STRUCTURE - GL 30-31 - N LINE,Complete,CONSTRUCTION,,SUWN-5 - 30-33,EXTERIOR SKIN,,CONSTRUCTION,,,,,2024-05-24 07:00,2025-01-20 17:00,2023-08-21 07:00,2024-04-23 17:00,2025-11-20 17:00,2025-11-20 17:00,2025-12-05 17:00,2025-12-05 17:00,0,1400,100
CN.SWB5.2440,IMPACT - SECAI NOTIFIES YATES OF ADDITIONAL CLADDING REQUIRED FOR DUCT STRUCTURE - GL 29-31 - N LINE,Complete,CONSTRUCTION,,SUWN-5 - 30-33,EXTERIOR SKIN,,CONSTRUCTION,,,,,2024-05-24 07:00,2024-05-31 17:00,2024-04-24 07:00,2024-04-24 17:00,2025-11-20 17:00,2025-11-20 17:00,2025-12-05 17:00,2025-12-05 17:00,0,40,100
CN.SWB5.2450,IMPACT - CCD 113 - BERG/PATRIOT PRICING - PREP/SUBMIT/APPROVE CCD FOR DUCT CLADDING STRUCTURE - GL 29-31 - N LINE,Complete,CONSTRUCTION,,SUWN-5 - 30-33,EXTERIOR SKIN,,CONSTRUCTION,,,,,2024-05-24 07:00,2024-06-28 17:00,2024-04-25 07:00,2024-05-24 07:00,2025-11-20 17:00,2025-11-20 17:00,2025-12-05 17:00,2025-12-05 17:00,0,200,100
CN.SWB5.2460,IMPACT - CCD 113 - PATRIOT PREPARE & SUBMIT SHOP DRAWINGS - DUCT CLADDING MEMBERS - GL 29-30 - N LINE,Complete,CONSTRUCTION,,SUWN-5 - 30-33,EXTERIOR SKIN,,CONSTRUCTION,,,,,2024-06-03 07:00,2024-06-10 17:00,2024-05-01 07:00,2024-05-09 17:00,2025-11-20 17:00,2025-11-20 17:00,2025-12-05 17:00,2025-12-05 17:00,0,50,100
CN.SWB5.2470,IMPACT - CCD 113 - SECAI/JACOBS APPROVE SHOP DRAWINGS - DUCT CLADDING MEMBERS - GL 29-30 - N LINE,Complete,CONSTRUCTION,,SUWN-5 - 30-33,EXTERIOR SKIN,,CONSTRUCTION,SECAI,,,,2024-06-10 07:00,2024-06-17 17:00,2024-05-10 07:00,2024-05-29 17:00,2025-11-20 17:00,2025-11-20 17:00,2025-12-05 17:00,2025-12-05 17:00,0,50,100
CN.SWB5.2480,IMPACT - CCD 113 - PATRIOT FABRICATE/GALVINIZE/DELIVER DUCT CLADDING MEMBERS - GL 29-31 - N LINE,Complete,CONSTRUCTION,,SUWN-5 - 30-33,EXTERIOR SKIN,,CONSTRUCTION,PATRIOT,,,,2024-07-15 07:00,2024-08-12 17:00,2024-05-30 07:00,2024-07-03 17:00,2025-11-20 17:00,2025-11-20 17:00,2025-12-05 17:00,2025-12-05 17:00,0,200,100
CN.SWB5.2490,IMPACT - CCD 113 - BERG DEMO EXTERIOR WALLS FOR CLADDING INSTALL - GL 29-31 - N LINE - L1-L3,Complete,CONSTRUCTION,,SUWN-5 - 30-33,EXTERIOR SKIN,,CONSTRUCTION,BERG,,,,2024-11-01 07:00,2024-11-14 17:00,2024-11-01 07:00,2024-11-05 17:00,2025-11-20 17:00,2025-11-20 17:00,2025-12-05 17:00,2025-12-05 17:00,0,80,100
INT.DH.1000,IMPACT - Y_RFI 1209 - PREP & SUBMIT RFI FOR INTERIOR DOOR DESIGN,Complete,CONSTRUCTION,,Doors & Hardware - INTERIOR,DOORS & HARDWARE INTERIOR,,PRE - CON / BUYOUT / IMPACTS,,,,,2024-05-31 07:00,2024-06-21 17:00,2024-02-05 07:00,2024-02-20 17:00,2025-11-20 17:00,2025-11-20 17:00,2025-11-19 07:00,2025-11-19 07:00,0,130,100
INT.DH.1010,IMPACT - RFI 1209 - SECAI REVIEW & PROVIDE RFI RESPONSE,Complete,CONSTRUCTION,,Doors & Hardware - INTERIOR,DOORS & HARDWARE INTERIOR,,PRE - CON / BUYOUT / IMPACTS,,,,,2024-06-06 07:00,2024-07-09 17:00,2024-02-21 07:00,2024-03-18 17:00,2025-11-20 17:00,2025-11-20 17:00,2025-11-19 07:00,2025-11-19 07:00,0,190,100
INT.DH.1030,IMPACT - DRB-007 / DRB-008 - SECAI ISSUES INTERIOR DOOR REDESIGN TO YATES,Complete,CONSTRUCTION,,Doors & Hardware - INTERIOR,DOORS & HARDWARE INTERIOR,,PRE - CON / BUYOUT / IMPACTS,,,,,2024-06-17 07:00,2024-07-19 17:00,2024-03-07 07:00,2024-04-04 17:00,2025-11-20 17:00,2025-11-20 17:00,2025-11-19 07:00,2025-11-19 07:00,0,200,100
INT.DH.1040,"IMPACT - CCD 302 - YATES PREP & SUBMIT CCD: C&B DOOR SCHEDULE CHANGES AS PER RFI 1209, DRB-007, DRB-008",Complete,CONSTRUCTION,,Doors & Hardware - INTERIOR,DOORS & HARDWARE INTERIOR,,PRE - CON / BUYOUT / IMPACTS,,,,,2024-06-24 07:00,2024-07-25 17:00,2024-04-05 07:00,2024-05-07 17:00,2025-11-20 17:00,2025-11-20 17:00,2025-11-19 07:00,2025-11-19 07:00,0,200,100
INT.DH.1050,"IMPACT - CCD 302 - SECAI REVIEW & APPROVE CCD: C&B DOOR SCHEDULE CHANGES AS PER RFI 1209, DRB-007, DRB-008",Complete,CONSTRUCTION,,Doors & Hardware - INTERIOR,DOORS & HARDWARE INTERIOR,,PRE - CON / BUYOUT / IMPACTS,,,,,2024-06-28 07:00,2024-07-22 17:00,2024-05-08 07:00,2024-05-20 17:00,2025-11-20 17:00,2025-11-20 17:00,2025-11-19 07:00,2025-11-19 07:00,0,140,100
INT.DH.1060,IMPACT - CCD 302 - YATES/C&B PREPARE SUBMITTAL FOR INTERIOR DOOR REDESIGN,Complete,CONSTRUCTION,,Doors & Hardware - INTERIOR,DOORS & HARDWARE INTERIOR,,PRE - CON / BUYOUT / IMPACTS,,,,,2024-07-05 07:00,2024-07-16 17:00,2024-05-21 07:00,2024-05-30 17:00,2025-11-20 17:00,2025-11-20 17:00,2025-11-19 07:00,2025-11-19 07:00,0,70,100
INT.DH.1070,IMPACT - CCD 302 - SECAI/JACOBS REVIEW & APPROVE SUBMITTAL FOR INTERIOR DOOR REDESIGN (DRB-008) - REVISE & RESUBMIT,Complete,CONSTRUCTION,,Doors & Hardware - INTERIOR,DOORS & HARDWARE INTERIOR,,PRE - CON / BUYOUT / IMPACTS,SECAI,,,,2024-06-10 07:00,2024-06-28 17:00,2024-05-31 07:00,2024-07-08 17:00,2025-11-20 17:00,2025-11-20 17:00,2025-11-19 07:00,2025-11-19 07:00,0,120,100
INT.DH.2000,IMPACT - Y_SBMT 524 - PREPARE & SUBMIT AUTO ALUMINUM DOOR SUBMITTAL - CLEAN ROOMS,Complete,CONSTRUCTION,,Doors & Hardware - INTERIOR,DOORS & HARDWARE INTERIOR,,PRE - CON / BUYOUT / IMPACTS,,,,,2024-05-31 07:00,2024-06-06 17:00,2023-12-01 07:00,2023-12-14 17:00,2025-11-20 17:00,2025-11-20 17:00,2025-12-05 17:00,2025-12-05 17:00,0,40,100
INT.DH.2010,IMPACT - SECAI REVIEW & APPROVE AUTO ALUMINUM DOOR SUBMITTAL - CLEAN ROOMS - REVISE & RESUBMIT,Complete,CONSTRUCTION,,Doors & Hardware - INTERIOR,DOORS & HARDWARE INTERIOR,,PRE - CON / BUYOUT / IMPACTS,,,,,2024-05-31 07:00,2024-06-06 17:00,2023-12-15 07:00,2023-12-21 17:00,2025-11-20 17:00,2025-11-20 17:00,2025-12-05 17:00,2025-12-05 17:00,0,40,100
INT.DH.2020,IMPACT - PREPARE & SUBMIT AUTO ALUMINUM DOOR SUBMITTAL - CLEAN ROOMS - R1,Complete,CONSTRUCTION,,Doors & Hardware - INTERIOR,DOORS & HARDWARE INTERIOR,,PRE - CON / BUYOUT / IMPACTS,,,,,2024-05-31 07:00,2024-06-06 17:00,2023-12-22 07:00,2024-02-06 17:00,2025-11-20 17:00,2025-11-20 17:00,2025-12-05 17:00,2025-12-05 17:00,0,40,100
INT.DH.2030,IMPACT - SECAI REVIEW & APPROVE TO AUTO ALUMINUM DOOR SUBMITTAL - CLEAN ROOMS - R1 - REVISE & RESUBMIT,Complete,CONSTRUCTION,,Doors & Hardware - INTERIOR,DOORS & HARDWARE INTERIOR,,PRE - CON / BUYOUT / IMPACTS,,,,,2024-05-31 07:00,2024-06-06 17:00,2024-02-07 07:00,2024-02-20 17:00,2025-11-20 17:00,2025-11-20 17:00,2025-12-05 17:00,2025-12-05 17:00,0,40,100
INT.DH.2040,IMPACT - PREPARE & SUBMIT AUTO ALUMINUM DOOR SUBMITTAL - CLEAN ROOMS - R2,Complete,CONSTRUCTION,,Doors & Hardware - INTERIOR,DOORS & HARDWARE INTERIOR,,PRE - CON / BUYOUT / IMPACTS,,,,,2024-05-31 07:00,2024-06-06 17:00,2024-02-21 07:00,2024-04-08 17:00,2025-11-20 17:00,2025-11-20 17:00,2025-12-05 17:00,2025-12-05 17:00,0,40,100
INT.DH.2050,IMPACT - SECAI REVIEW & APPROVE TO AUTO ALUMINUM DOOR SUBMITTAL - CLEAN ROOMS - R2 - REVISE & RESUBMIT,Complete,CONSTRUCTION,,Doors & Hardware - INTERIOR,DOORS & HARDWARE INTERIOR,,PRE - CON / BUYOUT / IMPACTS,,,,,2024-05-31 07:00,2024-06-06 17:00,2024-04-09 07:00,2024-04-18 17:00,2025-11-20 17:00,2025-11-20 17:00,2025-12-05 17:00,2025-12-05 17:00,0,40,100
INT.DH.2060,IMPACT - PREPARE & SUBMIT AUTO ALUMINUM DOOR SUBMITTAL - CLEAN ROOMS - R3,Complete,CONSTRUCTION,,Doors & Hardware - INTERIOR,DOORS & HARDWARE INTERIOR,,PRE - CON / BUYOUT / IMPACTS,,,,,2024-05-31 07:00,2024-06-06 17:00,2024-04-19 07:00,2024-05-08 17:00,2025-11-20 17:00,2025-11-20 17:00,2025-12-05 17:00,2025-12-05 17:00,0,40,100
INT.DH.2070,IMPACT - SECAI REVIEW & APPROVE TO AUTO ALUMINUM DOOR SUBMITTAL - CLEAN ROOMS - R3 - REVISE & RESUBMIT,Complete,CONSTRUCTION,,Doors & Hardware - INTERIOR,DOORS & HARDWARE INTERIOR,,PRE - CON / BUYOUT / IMPACTS,,,,,2024-05-31 07:00,2024-06-06 17:00,2024-05-08 07:00,2024-05-21 17:00,2025-11-20 17:00,2025-11-20 17:00,2025-12-05 17:00,2025-12-05 17:00,0,40,100
CN.SWB5.6830,IMPACT [S38] - SECAI ISSUES SWO AT STAIR 50 FOR FIREPROOFING REMEDIATION - GL 29-30 - L-K,Complete,CONSTRUCTION,,SUWN-4 - 27-30,L1 - Fndn Slab,DS/AD INTERIORS,CONSTRUCTION,SECAI,,,,2024-05-31 07:00,2024-06-24 17:00,2024-05-28 07:00,2024-06-17 17:00,2025-11-20 17:00,2025-11-20 17:00,2025-12-04 07:00,2025-12-04 07:00,0,140,100
CN.SWA4.6930,IMPACT [C53] - CLEANOUT & PLACE EXPANSION JOINT - GL 9 - L-N - L4 ROOF,Complete,CONSTRUCTION,,SUWS-3 - 12-9,L4 - SUP Roof - FAB Roof,,CONSTRUCTION,,,,,2024-05-31 07:00,2024-06-06 17:00,2024-05-20 07:00,2024-05-25 17:00,2025-11-20 17:00,2025-11-20 17:00,2025-12-05 17:00,2025-12-05 17:00,0,40,100
CN.SWA4.6940,IMPACT - NOTIFY SECAI THAT STARCON IS PREVENTING WATERPROOFING / AWAIT AREA TURNOVER TO YATES - GL 9-10 - L-N - L4 ROOF,Complete,CONSTRUCTION,,SUWS-3 - 12-9,L4 - SUP Roof - FAB Roof,,CONSTRUCTION,SECAI,,,,2024-05-31 07:00,2024-06-06 17:00,2024-05-27 07:00,2024-07-31 17:00,2025-11-20 17:00,2025-11-20 17:00,2025-12-05 17:00,2025-12-05 17:00,0,40,100
CN.SWB3.5120,IMPACT - NOTIFY SECAI/SEAC TO MOVE MATERIALS & AWAIT AREA TURNOVER TO YATES - GL 26-31 - L4 - L-N - ROOF,Complete,CONSTRUCTION,,SUWN-3 - 24-27,L4 - SUP Roof - FAB Roof,,CONSTRUCTION,SECAI,,,,2024-05-24 07:00,2024-06-11 17:00,2024-05-20 07:00,2024-08-26 17:00,2025-11-20 17:00,2025-11-20 17:00,2025-12-05 17:00,2025-12-05 17:00,0,100,100
CN.SWB3.5130,WATERPROOFING & INSPECTIONS FOR TOPPING SLAB - GL 26-27 - L4 - L-N - ROOF,Complete,CONSTRUCTION,,SUWN-3 - 24-27,L4 - SUP Roof - FAB Roof,,CONSTRUCTION,BRAZOS,,,,2024-10-07 07:00,2024-10-31 17:00,2024-08-27 07:00,2024-09-12 11:00,2025-11-20 17:00,2025-11-20 17:00,2025-12-05 17:00,2025-12-05 17:00,0,150,100
CN.SEA3.6140,IMPACT - AWAIT SECAI MEP TO REMOVE STANDEES UNDER AIRLOCK PIPES - GL 11-6 - A-B.5 - L4 ROOF,Complete,CONSTRUCTION,,SUES-3 - 13-9,L4 - SUP Roof - FAB Roof,,CONSTRUCTION,,,,,2024-05-31 07:00,2024-06-06 17:00,2024-05-30 07:00,2024-06-03 17:00,2025-11-20 17:00,2025-11-20 17:00,2025-12-05 17:00,2025-12-05 17:00,0,40,100
CN.SEA3.6150,IMPACT - WATERPROOFING & INSPECTIONS FOR TOPPINGS SLAB (AIRLOCK AREA BETWEEN PADS) - GL 11-6 - A-B.5 - L4 ROOF,Complete,CONSTRUCTION,,SUES-3 - 13-9,L4 - SUP Roof - FAB Roof,,CONSTRUCTION,BRAZOS,,,,2024-06-14 07:00,2024-07-16 17:00,2024-06-04 07:00,2024-06-26 17:00,2025-11-20 17:00,2025-11-20 17:00,2025-12-05 17:00,2025-12-05 17:00,0,180,100
CN.SWB5.2550,IMPACT - INSTALL & INSPECT CLADDING MEP OPENINGS - NW PENTHOUSE - SOUTH WALL,Complete,CONSTRUCTION,,NORTH WEST PENTHOUSE,EXTERIOR SKIN,,CONSTRUCTION,PATRIOT,,,,2024-08-09 07:00,2024-08-13 17:00,2024-07-22 07:00,2024-08-07 17:00,2025-11-20 17:00,2025-11-20 17:00,2025-11-17 07:00,2025-11-17 07:00,0,30,100
CN.SWB5.2560,IMPACT - BERG INSTALL STUD FRAMED MEP OPENINGS - NW PENTHOUSE - SOUTH WALL,Complete,CONSTRUCTION,,NORTH WEST PENTHOUSE,EXTERIOR SKIN,,CONSTRUCTION,BERG,,,,2024-08-23 07:00,2024-08-29 17:00,2024-08-12 07:00,2024-08-16 17:00,2025-11-20 17:00,2025-11-20 17:00,2025-11-17 07:00,2025-11-17 07:00,0,50,100
CN.SWB5.2570,IMPACT - ALPHA PAINT BOLTS / CLADDING - NW PENTHOUSE - SOUTH WALL,Complete,CONSTRUCTION,,NORTH WEST PENTHOUSE,EXTERIOR SKIN,,CONSTRUCTION,ALPHA,,,,2024-08-26 07:00,2024-08-29 17:00,2024-08-19 07:00,2024-09-20 17:00,2025-11-20 17:00,2025-11-20 17:00,2025-11-17 07:00,2025-11-17 07:00,0,40,100
CN.SWB5.9140,IMPACT - PATRIOT INSTALL & INSPECT CLADDING MEP OPENINGS - SW PENTHOUSE - NORTH & SOUTH WALLS,Complete,CONSTRUCTION,,SOUTH WEST PENTHOUSE,EXTERIOR SKIN,,CONSTRUCTION,PATRIOT,,,,2024-07-29 07:00,2024-08-02 17:00,2024-07-17 07:00,2024-08-07 17:00,2025-11-20 17:00,2025-11-20 17:00,2025-11-17 07:00,2025-11-17 07:00,0,50,100
CN.SWB5.9150,IMPACT - BERG INSTALL STUD FRAMED MEP OPENINGS - SW PENTHOUSE - NORTH & SOUTH WALLS,Complete,CONSTRUCTION,,SOUTH WEST PENTHOUSE,EXTERIOR SKIN,,CONSTRUCTION,BERG,,,,2024-07-17 07:00,2024-07-30 17:00,2024-07-02 07:00,2024-07-16 17:00,2025-11-20 17:00,2025-11-20 17:00,2025-11-17 07:00,2025-11-17 07:00,0,100,100
CN.SWB5.9160,IMPACT - ALPHA PAINT BOLTS / CLADDING - SW PENTHOUSE - NORTH & SOUTH WALLS,Complete,CONSTRUCTION,,SOUTH WEST PENTHOUSE,EXTERIOR SKIN,,CONSTRUCTION,ALPHA,,,,2024-08-23 07:00,2024-08-30 17:00,2024-08-20 07:00,2024-09-09 17:00,2025-11-20 17:00,2025-11-20 17:00,2025-12-03 07:00,2025-12-03 07:00,0,60,100
CN.SWB5.9170,IMPACT - INSTALL & INSPECT CLADDING MEP OPENINGS - NE PENTHOUSE - SOUTH WALL,Complete,CONSTRUCTION,,NORTH EAST PENTHOUSE,EXTERIOR SKIN,,CONSTRUCTION,PATRIOT,,,,2024-08-09 07:00,2024-08-13 17:00,2024-07-22 07:00,2024-08-02 17:00,2025-11-20 17:00,2025-11-20 17:00,2025-11-17 07:00,2025-11-17 07:00,0,30,100
CN.SWB5.9180,IMPACT - BERG INSTALL STUD FRAMED MEP OPENINGS - NE PENTHOUSE - SOUTH WALL,Complete,CONSTRUCTION,,NORTH EAST PENTHOUSE,EXTERIOR SKIN,,CONSTRUCTION,BERG,,,,2024-08-09 07:00,2024-08-19 17:00,2024-07-24 07:00,2024-08-02 17:00,2025-11-20 17:00,2025-11-20 17:00,2025-11-17 07:00,2025-11-17 07:00,0,60,100
CN.SWB5.9190,IMPACT - ALPHA PAINT BOLTS / CLADDING - NE PENTHOUSE - SOUTH & EAST WALLS,Complete,CONSTRUCTION,,NORTH EAST PENTHOUSE,EXTERIOR SKIN,,CONSTRUCTION,ALPHA,,,,2024-08-13 07:00,2024-08-23 17:00,2024-08-05 07:00,2024-08-18 17:00,2025-11-20 17:00,2025-11-20 17:00,2025-11-26 07:00,2025-11-26 07:00,0,70,100
CN.SWA1.1472,IMPACT - SCAFFOLD PLATFORM IN THE WAY - GL 16-17 K LINE L3,Complete,CONSTRUCTION,,SUWS-1 - 18-15,L3 / Waffle Slab Level,DS/AD INTERIORS,CONSTRUCTION,,,,,2024-05-13 07:00,2024-05-17 17:00,2024-05-13 07:00,2024-06-03 17:00,2025-11-20 17:00,2025-11-20 17:00,2025-06-13 08:00,2025-06-13 08:00,0,40,100
FIZ.WEST.2561,IMPACT - CHIP TOPPING SLAB FOR SKIRT WALL TIE-IN WATERPROOFING - GL 3 - A-B.5 - L4 ROOF,Complete,CONSTRUCTION,,SUES-5 - 6-1 - FIZ - GL A -E,L4 - SUP Roof - FAB Roof,,CONSTRUCTION,,,,,2024-06-14 07:00,2024-06-18 17:00,2024-06-04 07:00,2024-06-05 17:00,2025-11-20 17:00,2025-11-20 17:00,2025-12-05 17:00,2025-12-05 17:00,0,30,100
FIZ.WEST.2571,IMPACT - WATERPROOFING TIE-IN AT SKIRT WALL - GL 3 - A-B.5 - L4 ROOF,Complete,CONSTRUCTION,,SUES-5 - 6-1 - FIZ - GL A -E,L4 - SUP Roof - FAB Roof,,CONSTRUCTION,,,,,2024-06-18 07:00,2024-06-21 17:00,2024-06-06 07:00,2024-06-07 17:00,2025-11-20 17:00,2025-11-20 17:00,2025-12-05 17:00,2025-12-05 17:00,0,30,100
FIZ.WEST.2581,IMPACT - TOPPING SLAB POUR BACK AT SKIRT WALL - GL 3 - A-B.5 - L4 ROOF,Complete,CONSTRUCTION,,SUES-5 - 6-1 - FIZ - GL A -E,L4 - SUP Roof - FAB Roof,,CONSTRUCTION,,,,,2024-06-24 07:00,2024-06-27 17:00,2024-06-08 07:00,2024-06-10 17:00,2025-11-20 17:00,2025-11-20 17:00,2025-12-05 17:00,2025-12-05 17:00,0,30,100
CN.SWB5.1540,DRILL / CLEAN / EPOXY EQPT PADS - SWB5 - GL 30-33 - J-K - L4/E,Complete,CONSTRUCTION,,SUWN-5 - 30-33,DS/AD,,CONSTRUCTION,,,,,2024-05-31 07:00,2024-06-03 17:00,2024-05-31 07:00,2024-06-02 17:00,2025-11-20 17:00,2025-11-20 17:00,2025-11-25 07:00,2025-11-25 07:00,0,20,100
CN.SWB5.1780,WATERPROOFING AT EQPT PADS - SWB5 - GL 30-33 - J-K - L4/E,Complete,CONSTRUCTION,,SUWN-5 - 30-33,DS/AD,,CONSTRUCTION,,,,,2024-06-07 07:00,2024-06-11 17:00,2024-06-03 07:00,2024-06-05 17:00,2025-11-20 17:00,2025-11-20 17:00,2025-11-25 07:00,2025-11-25 07:00,0,30,100
CN.SWA1.9200,DRILL / CLEAN / EPOXY EQPT PADS - SWA1 - GL 18-15 - J-K - L4/E,Complete,CONSTRUCTION,,SUWS-1 - 18-15,DS/AD,,CONSTRUCTION,BRAZOS,,,,2024-07-12 07:00,2024-07-15 17:00,2024-07-02 07:00,2024-07-03 17:00,2025-11-20 17:00,2025-11-20 17:00,2025-11-25 07:00,2025-11-25 07:00,0,20,100
CN.SWA1.9210,WATERPROOFING AT EQPT PADS - SWA1 - GL 18-15 - J-K - L4/E,Complete,CONSTRUCTION,,SUWS-1 - 18-15,DS/AD,,CONSTRUCTION,BRAZOS,,,,2024-07-15 07:00,2024-07-17 17:00,2024-07-05 07:00,2024-07-09 17:00,2025-11-20 17:00,2025-11-20 17:00,2025-11-25 07:00,2025-11-25 07:00,0,30,100
CN.SWA3.9220,DRILL / CLEAN / EPOXY EQPT PADS - SWA3 - GL 12-9 - J-K - L4/E,Complete,CONSTRUCTION,,SUWS-3 - 12-9,DS/AD,,CONSTRUCTION,BRAZOS,,,,2024-07-12 07:00,2024-07-15 17:00,2024-07-02 07:00,2024-07-03 17:00,2025-11-20 17:00,2025-11-20 17:00,2025-12-05 17:00,2025-12-05 17:00,0,20,100
CN.SWA3.9230,WATERPROOFING AT EQPT PADS - SWA3 - GL 12-9 - J-K - L4/E,Complete,CONSTRUCTION,,SUWS-3 - 12-9,DS/AD,,CONSTRUCTION,BRAZOS,,,,2024-07-15 07:00,2024-07-17 17:00,2024-07-05 07:00,2024-07-09 17:00,2025-11-20 17:00,2025-11-20 17:00,2025-12-05 17:00,2025-12-05 17:00,0,30,100
CN.SWA5.9240,DRILL / CLEAN / EPOXY EQPT PADS - SWA5 - GL 6-3 - J-K - L4/E,Complete,CONSTRUCTION,,FIZ 2 / SUWS 5  (GL6-1) - GL J - N - DATA CENTER 1,DS/AD,,CONSTRUCTION,BRAZOS,,,,2024-08-09 07:00,2024-08-12 17:00,2024-07-10 07:00,2024-07-11 17:00,2025-11-20 17:00,2025-11-20 17:00,2025-12-05 17:00,2025-12-05 17:00,0,20,100
CN.SWA5.9250,WATERPROOFING AT EQPT PADS - SWA5 - GL 6-3 - J-K - L4/E,Complete,CONSTRUCTION,,FIZ 2 / SUWS 5  (GL6-1) - GL J - N - DATA CENTER 1,DS/AD,,CONSTRUCTION,BRAZOS,,,,2024-09-06 07:00,2024-09-10 17:00,2024-08-29 07:00,2024-08-29 17:00,2025-11-20 17:00,2025-11-20 17:00,2025-12-05 17:00,2025-12-05 17:00,0,30,100
CN.SEB5.2000,DRILL / CLEAN / EPOXY EQPT PADS - SEB5 - GL 31-33 - D-E - L4/E,Complete,CONSTRUCTION,,SUEN-5 - 31-33,DS/AD,,CONSTRUCTION,BRAZOS,,,,2024-06-28 07:00,2024-07-01 17:00,2024-06-20 07:00,2024-06-24 17:00,2025-11-20 17:00,2025-11-20 17:00,2025-11-21 07:00,2025-11-21 07:00,0,20,100
CN.SEB5.2010,WATERPROOFING AT EQPT PADS - SEB5 - GL 31-33 - D-E - L4/E,Complete,CONSTRUCTION,,SUEN-5 - 31-33,DS/AD,,CONSTRUCTION,BRAZOS,,,,2024-07-01 07:00,2024-07-05 17:00,2024-06-25 07:00,2024-06-30 17:00,2025-11-20 17:00,2025-11-20 17:00,2025-11-21 07:00,2025-11-21 07:00,0,30,100
CN.SEB4.8900,DRILL / CLEAN / EPOXY EQPT PADS - SEB4 - GL 28-31 - D-E - L4/E,Complete,CONSTRUCTION,,SUEN-4 - 28-31,DS/AD,,CONSTRUCTION,BRAZOS,,,,2024-06-28 07:00,2024-07-01 17:00,2024-06-20 07:00,2024-06-24 17:00,2025-11-20 17:00,2025-11-20 17:00,2025-11-21 07:00,2025-11-21 07:00,0,20,100
CN.SEB4.8910,WATERPROOFING AT EQPT PADS - SEB4 - GL 28-31 - D-E - L4/E,Complete,CONSTRUCTION,,SUEN-4 - 28-31,DS/AD,,CONSTRUCTION,BRAZOS,,,,2024-07-01 07:00,2024-07-05 17:00,2024-06-25 07:00,2024-06-30 17:00,2025-11-20 17:00,2025-11-20 17:00,2025-11-21 07:00,2025-11-21 07:00,0,30,100
CN.SEB1.8920,DRILL / CLEAN / EPOXY EQPT PADS - SEB1 - GL 19-22 - D-E - L4/E,Complete,CONSTRUCTION,,SUEN-1 - 19-22,DS/AD,,CONSTRUCTION,BRAZOS,,,,2024-08-09 07:00,2024-08-12 17:00,2024-07-15 07:00,2024-07-16 17:00,2025-11-20 17:00,2025-11-20 17:00,2025-12-05 17:00,2025-12-05 17:00,0,20,100
CN.SEB1.8930,WATERPROOFING AT EQPT PADS - SEB1 - GL 19-22 - D-E - L4/E,Complete,CONSTRUCTION,,SUEN-1 - 19-22,DS/AD,,CONSTRUCTION,BRAZOS,,,,2024-08-12 07:00,2024-08-15 17:00,2024-07-17 07:00,2024-07-20 17:00,2025-11-20 17:00,2025-11-20 17:00,2025-12-05 17:00,2025-12-05 17:00,0,30,100
CN.SEA1.8940,DRILL / CLEAN / EPOXY EQPT PADS - SEB1 - GL 19-16 - D-E - L4/E,Complete,CONSTRUCTION,,SUES-1 - 19-16,DS/AD,,CONSTRUCTION,BRAZOS,,,,2024-08-09 07:00,2024-08-12 17:00,2024-07-15 07:00,2024-07-16 17:00,2025-11-20 17:00,2025-11-20 17:00,2025-12-05 17:00,2025-12-05 17:00,0,20,100
CN.SEA1.8950,WATERPROOFING AT EQPT PADS - SEB1 - GL 19-16 - D-E - L4/E,Complete,CONSTRUCTION,,SUES-1 - 19-16,DS/AD,,CONSTRUCTION,BRAZOS,,,,2024-08-12 07:00,2024-08-15 17:00,2024-07-17 07:00,2024-07-20 17:00,2025-11-20 17:00,2025-11-20 17:00,2025-12-05 17:00,2025-12-05 17:00,0,30,100
CN.SEA5.8960,DRILL / CLEAN / EPOXY EQPT PADS - SEA5 - GL 6-3 - D-E - L4/E,Complete,CONSTRUCTION,,SUES-5 - 6-1 - FIZ - GL A -E,DS/AD,,CONSTRUCTION,BRAZOS,,,,2024-08-09 07:00,2024-08-12 17:00,2024-07-08 07:00,2024-07-09 17:00,2025-11-20 17:00,2025-11-20 17:00,2025-12-05 17:00,2025-12-05 17:00,0,20,100
CN.SEA5.8970,WATERPROOFING AT EQPT PADS - SEA5 - GL 6-3 - D-E - L4/E,Complete,CONSTRUCTION,,SUES-5 - 6-1 - FIZ - GL A -E,DS/AD,,CONSTRUCTION,BRAZOS,,,,2024-10-07 07:00,2024-10-07 17:00,2024-10-07 07:00,2024-10-08 17:00,2025-11-20 17:00,2025-11-20 17:00,2025-12-05 17:00,2025-12-05 17:00,0,10,100
CN.SWA5.DS.3020,REMEDY - FRAME & DRYWALL (INT) - SWA5 - GL 6-3 - K LINE - L2,Complete,CONSTRUCTION,,FIZ 2 / SUWS 5  (GL6-1) - GL J - N - DATA CENTER 1,L2 - SubFab Level,DS/AD INTERIORS,CONSTRUCTION,SECAI,,,,2024-07-17 07:00,2024-08-06 17:00,2024-07-17 07:00,2024-08-07 17:00,2025-11-20 17:00,2025-11-20 17:00,2025-11-24 07:00,2025-11-24 07:00,0,150,100
CN.SWB5.2580,IMPACT - CCD 113 - SECAI/JACOBS PROVIDE DIRECTION FOR PRECAST TO CLADDING CONNECTIONS - GL 30-31 - N LINE,Complete,CONSTRUCTION,,SUWN-5 - 30-33,EXTERIOR SKIN,,CONSTRUCTION,SECAI,,,,2024-05-31 07:00,2024-06-17 17:00,2024-05-10 07:00,2024-05-28 17:00,2025-11-20 17:00,2025-11-20 17:00,2025-12-05 17:00,2025-12-05 17:00,0,100,100
CN.SWB5.9200,IMPACT - CCD 113 - PATRIOT PREPARE & SUBMIT SHOP DRAWINGS - INTERIOR CLADDING MEMBERS & CONNECTIONS - GL 30-31 - N LINE,Complete,CONSTRUCTION,,SUWN-5 - 30-33,EXTERIOR SKIN,,CONSTRUCTION,PATRIOT,,,,2024-06-28 07:00,2024-07-08 17:00,2024-05-29 07:00,2024-06-04 17:00,2025-11-20 17:00,2025-11-20 17:00,2025-12-05 17:00,2025-12-05 17:00,0,50,100
CN.SWB5.9210,IMPACT - CCD 113 - SECAI/JACOBS APPROVE SHOP DRAWINGS & REMOVE CANTILIVER STEEL - GL 30-31 - N LINE,Complete,CONSTRUCTION,,SUWN-5 - 30-33,EXTERIOR SKIN,,CONSTRUCTION,SECAI,,,,2024-07-08 07:00,2024-07-22 17:00,2024-06-05 07:00,2024-09-26 17:00,2025-11-20 17:00,2025-11-20 17:00,2025-12-05 17:00,2025-12-05 17:00,0,100,100
CN.SWB5.2590,IMPACT [E.TIA-11] - CCD 326 - YATES PREPARE & SUBMIT CCD / SECAI APPROVAL - MEP OPENING FRAMING - ALL PENTHOUSES,Complete,CONSTRUCTION,,SOUTH EAST PENTHOUSE,EXTERIOR SKIN,,CONSTRUCTION,,,,,2024-05-31 07:00,2024-06-06 17:00,2024-05-14 07:00,2024-05-29 17:00,2025-11-20 17:00,2025-11-20 17:00,2025-11-17 07:00,2025-11-17 07:00,0,40,100
CN.SEA54800,IMPACT - NCR 372 - REMOVE & REPLACE ACCESSIBLE BOLTS - ELEVATOR 22 - UP TO L1,Complete,CONSTRUCTION,,SUES-5 - 6-1 - FIZ - GL A -E,,ELEVATOR,CONSTRUCTION,W&W,,,,2024-07-26 07:00,2024-07-31 17:00,2024-07-10 07:00,2024-07-15 17:00,2025-11-20 17:00,2025-11-20 17:00,2025-12-03 07:00,2025-12-03 07:00,0,40,100
CN.SEA54810,IMPACT [S.TIA-147] - ALPHA PAINT ALL BOLTS - ELEVATOR 22 - ALL LEVELS,Complete,CONSTRUCTION,,SUES-5 - 6-1 - FIZ - GL A -E,,ELEVATOR,CONSTRUCTION,ALPHA,,,,2024-07-26 07:00,2024-08-09 17:00,2024-06-17 07:00,2024-06-28 17:00,2025-11-20 17:00,2025-11-20 17:00,2025-12-03 07:00,2025-12-03 07:00,0,100,100
CN.SEA1.8960,IMPACT [S.TIA-147] - NCR 372 - SECAI INSPECT BOLTS - ELEVATOR 20 - L1 AND BELOW,Complete,CONSTRUCTION,,SUES-1 - 19-16,,ELEVATOR,CONSTRUCTION,,,,,2024-07-22 07:00,2024-07-26 17:00,2024-05-20 07:00,2024-05-28 17:00,2025-11-20 17:00,2025-11-20 17:00,2025-11-24 07:00,2025-11-24 07:00,0,50,100
CN.SEA1.8970,IMPACT [S.TIA-147] - NCR 372 - ALPHA PAINT ALL BOLTS - ELEVATOR 20 - ALL LEVELS (STOPPED UNTIL BOLTS REPLACED),Complete,CONSTRUCTION,,SUES-1 - 19-16,,ELEVATOR,CONSTRUCTION,,,,,2024-07-22 07:00,2024-08-02 17:00,2024-05-29 07:00,2024-06-03 17:00,2025-11-20 17:00,2025-11-20 17:00,2025-11-24 07:00,2025-11-24 07:00,0,100,100
CN.SEB5.8900,IMPACT - NCR 372 - REMOVE & REPLACE ACCESSIBLE BOLTS - ELEVATOR 18 - UP TO L1,Complete,CONSTRUCTION,,SUEN-5 - 31-33,,ELEVATOR,CONSTRUCTION,W&W,,,,2024-07-26 07:00,2024-07-31 17:00,2024-07-10 07:00,2024-07-15 17:00,2025-11-20 17:00,2025-11-20 17:00,2025-12-01 07:00,2025-12-01 07:00,0,40,100
CN.SEB5.8910,IMPACT [S.TIA-147] - NCR 372 - ALPHA PAINT ALL BOLTS - ELEVATOR 18 - ALL LEVELS,Complete,CONSTRUCTION,,SUEN-5 - 31-33,,ELEVATOR,CONSTRUCTION,ALPHA,,,,2024-07-26 07:00,2024-08-09 17:00,2024-07-08 07:00,2024-07-29 17:00,2025-11-20 17:00,2025-11-20 17:00,2025-12-01 07:00,2025-12-01 07:00,0,100,100
CN.SWA3.1382,IMPACT [S.TIA-147] - NCR 372 - ALPHA PAINT ALL BOLTS - ELEVATOR 02 - ALL LEVELS,Complete,CONSTRUCTION,,SUWS-3 - 12-9,,ELEVATOR,CONSTRUCTION,ALPHA,,,,2025-01-06 07:00,2025-01-09 17:00,2025-01-06 07:00,2025-01-24 17:00,2025-11-20 17:00,2025-11-20 17:00,2025-12-05 07:00,2025-12-05 07:00,0,40,100
CN.SEB41251,IMPACT SECAI/AXIOS PRE-CAST GRINDING L1&L2 OBSTRUCTION - ALPHA PAINT ALL BOLTS - ELEVATOR 19 - ALL LEVELS,Complete,CONSTRUCTION,,SUEN-4 - 28-31,,ELEVATOR,CONSTRUCTION,ALPHA,,,,2024-10-22 07:00,2024-11-01 17:00,2024-10-22 07:00,2024-10-30 17:00,2025-11-20 17:00,2025-11-20 17:00,2025-12-02 07:00,2025-12-02 07:00,0,70,100
CN.SEB3.6810,IMPACT [S13] - NDT & FIELD MEASURE FOR ANCHOR CONNECTIONS / PROCURE STEEL - STAIR 19 - GL 25-25.5 - C-E - L3,Complete,CONSTRUCTION,,SUEN-3 - 25-28,INTERIOR STAIR TOWER - STAIR #19 (CLEAN ROOM) - DE-SCOPED,,CONSTRUCTION,W&W,,,,2024-09-03 07:00,2024-09-16 17:00,2024-09-03 07:00,2024-09-25 17:00,2025-11-20 17:00,2025-11-20 17:00,2025-12-05 17:00,2025-12-05 17:00,0,120,100
CN.SWB3.5160,IMPACT [S13] - NDT & FIELD MEASURE FOR ANCHOR CONNECTIONS / PROCURE STEEL - STAIR 4 - GL 22.5-23 - K-L - L3,Complete,CONSTRUCTION,,SUWN-2 - 21-24,INTERIOR STAIR TOWER - STAIR #4 (CLEAN ROOM),,CONSTRUCTION,W&W,,,,2024-07-26 07:00,2024-08-13 17:00,2024-07-15 07:00,2024-08-02 17:00,2025-11-20 17:00,2025-11-20 17:00,2025-12-05 17:00,2025-12-05 17:00,0,120,100
CN.SEA2.6680,IMPACT [S13] - NDT & FIELD MEASURE FOR ANCHOR CONNECTIONS / PROCURE STEEL - STAIR 21 - GL13-14 - C-D - L3,Complete,CONSTRUCTION,,SUES-3 - 13-9,INTERIOR STAIR TOWER - STAIR #21 (CLEAN ROOM),,CONSTRUCTION,W&W,,,,2024-08-01 07:00,2024-08-20 17:00,2024-07-15 07:00,2024-08-02 17:00,2025-11-20 17:00,2025-11-20 17:00,2025-11-12 07:00,2025-11-12 07:00,0,120,100
CN.AB.AR.6940,IMPACT [S42] - DEMO SCAFFOLD FOR STRUCTURAL SUPPORT STEEL INSTALL - GAS PURIFIER ROOM - GL 9-10 - M-N - L2,Complete,CONSTRUCTION,,SUWS-3 - 12-9,L2 - SubFab Level,ELECTRIC RM 1,CONSTRUCTION,,,,,2024-10-03 07:00,2024-10-15 17:00,2024-10-03 07:00,2024-10-12 17:00,2025-11-20 17:00,2025-11-20 17:00,2025-12-05 07:00,2025-12-05 07:00,0,80,100
CN.SWB54761,IMPACT [S39] - NOTIFY SECAI EMBEDS FOR SUPPORT STEEL AT INCORRECT LOCATIONS / AWAIT SECAI FIX - GL 30-31 - M-N -L2,Complete,CONSTRUCTION,,SUWN-5 - 30-33,L2 - SubFab Level,GCS STORAGE,CONSTRUCTION,W&W,,,,2024-06-10 07:00,2024-06-25 17:00,2024-05-28 07:00,2024-09-28 17:00,2025-11-20 17:00,2025-11-20 17:00,2025-12-05 17:00,2025-12-05 17:00,0,100,100
CN.SWB54781,IMPACT [S23] - APACHE DEMO SCAFFOLD - UTILITY ROOM - GL 30-31 - M-N - L2,Complete,CONSTRUCTION,,SUWN-5 - 30-33,L2 - SubFab Level,GCS STORAGE,CONSTRUCTION,,,,,2024-10-24 07:00,2024-10-29 17:00,2024-10-24 07:00,2024-10-28 17:00,2025-11-20 17:00,2025-11-20 17:00,2025-12-05 17:00,2025-12-05 17:00,0,40,100
CN.SWB5.9130,IMPACT - Y_RFI 1349 - YATES PREP & SUBMIT RFI FOR CLADDING WELD CONNECTION - SE PENTHOUSE - SOUTH - GL 2.5/D,Complete,CONSTRUCTION,,SOUTH EAST PENTHOUSE,EXTERIOR SKIN,,CONSTRUCTION,,,,,2024-05-31 07:00,2024-06-03 17:00,2024-05-29 07:00,2024-05-30 17:00,2025-11-20 17:00,2025-11-20 17:00,2025-11-17 07:00,2025-11-17 07:00,0,20,100
CN.SWB5.9220,IMPACT - Y_RFI 1349 - SECAI/JACOBS PROVIDE DIRECTION TO PROCEED - SE PENTHOUSE - SOUTH - GL 2.5/D,Complete,CONSTRUCTION,,SOUTH EAST PENTHOUSE,EXTERIOR SKIN,,CONSTRUCTION,SECAI,,,,2024-06-07 07:00,2024-06-24 17:00,2024-05-31 07:00,2024-06-26 17:00,2025-11-20 17:00,2025-11-20 17:00,2025-11-17 07:00,2025-11-17 07:00,0,100,100
CN.SWB5.9230,IMPACT - Y_RFI 1349 - PATRIOT COMPLETE WELD CONNECTION - SE PENTHOUSE - SOUTH - GL 2.5/D,Complete,CONSTRUCTION,,SOUTH EAST PENTHOUSE,EXTERIOR SKIN,,CONSTRUCTION,PATRIOT,,,,2024-07-26 07:00,2024-07-29 17:00,2024-07-01 07:00,2024-07-02 17:00,2025-11-20 17:00,2025-11-20 17:00,2025-11-17 07:00,2025-11-17 07:00,0,20,100
CN.SEA3.6160,IMPACT - NOTIFY SECAI TO CLEAR MATERIAL FOR WATERPROOFING / AWAIT AREA TURNOVER TO YATES - GL 5.5-12 - C-A - L4,Complete,CONSTRUCTION,,SUES-3 - 13-9,L4 - SUP Roof - FAB Roof,,CONSTRUCTION,,,,,2024-05-31 07:00,2024-06-06 17:00,2024-05-29 07:00,2024-06-05 17:00,2025-11-20 17:00,2025-11-20 17:00,2025-12-04 07:00,2025-12-04 07:00,0,40,100
INT.P1.FP.1250,IMPACT - L1 FIREPROOFING REMEDY - CCD#314 APACHE SCAFFOLD REMOVAL & REINSTALL - L1,Complete,CONSTRUCTION,,Fireproofing,FIREPROOFING,,PRE - CON / BUYOUT / IMPACTS,ROLLING PLAINS,,,,2024-03-11 07:00,2024-04-15 17:00,2024-05-13 00:00,2024-05-15 17:00,2025-11-20 17:00,2025-11-20 17:00,2025-11-21 07:00,2025-11-21 07:00,0,200,100
CN.SWA5..1670,IMPACT [C39] - Y_SBMT0615 - SECAI APPROVE REPAIR PROCEDURE / DIRECT YATES TO PROCEED - ELEVATOR 01B - LU1A,Complete,CONSTRUCTION,,FIZ 2 / SUWS 5  (GL6-1) - GL J - N - DATA CENTER 1,L1 - Fndn Slab,ELEVATOR,CONSTRUCTION,,,,,2024-05-03 07:00,2024-05-20 17:00,2024-05-15 07:00,2024-06-03 17:00,2025-11-20 17:00,2025-11-20 17:00,2025-12-01 07:00,2025-12-01 07:00,0,100,100
CN.SEB4.200,IMPACT - Y_RFI 1346 - PREP/SUBMIT RFI FOR SUMP PIT POUR BACK & SUMP PIT RELOCATION IN TOPPING SLAB - ELEVATOR 01B,Complete,CONSTRUCTION,,FIZ 2 / SUWS 5  (GL6-1) - GL J - N - DATA CENTER 1,L1 - Fndn Slab,ELEVATOR,CONSTRUCTION,,,,,2024-05-31 07:00,2024-06-03 17:00,2024-05-24 07:00,2024-05-28 17:00,2025-11-20 17:00,2025-11-20 17:00,2025-12-01 07:00,2025-12-01 07:00,0,20,100
CN.SEB4.210,IMPACT - Y_RFI 1346 - SECAI RESPOND TO RFI / PROVIDE DIRECTION TO PROCEED WITH SUMP PIT POUR BACK - ELEVATOR 01B,Complete,CONSTRUCTION,,FIZ 2 / SUWS 5  (GL6-1) - GL J - N - DATA CENTER 1,,ELEVATOR,CONSTRUCTION,,,,,2024-05-31 07:00,2024-06-17 17:00,2024-05-29 07:00,2024-06-05 17:00,2025-11-20 17:00,2025-11-20 17:00,2025-12-01 07:00,2025-12-01 07:00,0,100,100
CN.SWA5..1561,IMPACT - BAKER PREP & POUR SUMP PIT POUR BACK / CURE TIME REQUIRED TO BEAR LOAD - ELEVATOR 01B,Complete,CONSTRUCTION,,FIZ 2 / SUWS 5  (GL6-1) - GL J - N - DATA CENTER 1,,ELEVATOR,CONSTRUCTION,BAKER,,,,2024-06-10 07:00,2024-06-14 17:00,2024-06-06 07:00,2024-06-15 17:00,2025-11-20 17:00,2025-11-20 17:00,2025-12-01 07:00,2025-12-01 07:00,0,40,100
CN.SWA5.4070,F/R/P TOPPING SLAB & RELOCATED SUMP PIT - ELEVATOR 01B - LU1,Complete,CONSTRUCTION,,FIZ 2 / SUWS 5  (GL6-1) - GL J - N - DATA CENTER 1,,ELEVATOR,CONSTRUCTION,BAKER,,,,2024-12-10 07:00,2024-12-17 17:00,2024-12-10 07:00,2024-12-14 17:00,2025-11-20 17:00,2025-11-20 17:00,2025-12-01 07:00,2025-12-01 07:00,0,50,100
CN.SWA5.4080,IMPACT - Y_SBMT 0618 - SUBMIT REPAIR PROCEDURE TO SAWCUT SOMD AT L2 & L3 FOR REQUIRED OPENING DIMENSIONS - ELEVATOR 01B,Complete,CONSTRUCTION,,FIZ 2 / SUWS 5  (GL6-1) - GL J - N - DATA CENTER 1,L1 - Fndn Slab,ELEVATOR,CONSTRUCTION,,,,,2024-05-31 07:00,2024-06-06 17:00,2024-05-27 07:00,2024-05-29 17:00,2025-11-20 17:00,2025-11-20 17:00,2025-12-01 07:00,2025-12-01 07:00,0,40,100
CN.SWA5..1571,IMPACT - Y_SBMT 0618 - SECAI APPROVE SUBMITTAL FOR SAWCUT SOMD AT L2 & L3 / DIRECT YATES TO PROCEED - ELEVATOR 01B,Complete,CONSTRUCTION,,FIZ 2 / SUWS 5  (GL6-1) - GL J - N - DATA CENTER 1,,ELEVATOR,CONSTRUCTION,,,,,2024-05-31 07:00,2024-06-17 17:00,2024-05-30 07:00,2024-06-10 17:00,2025-11-20 17:00,2025-11-20 17:00,2025-12-01 07:00,2025-12-01 07:00,0,100,100
CN.SWA5..1581,IMPACT - SAWCUT SOMD FOR REQUIRED OPENING DIMENSIONS - ELEVATOR 01B - L2 & L3,Complete,CONSTRUCTION,,FIZ 2 / SUWS 5  (GL6-1) - GL J - N - DATA CENTER 1,,ELEVATOR,CONSTRUCTION,,,,,2024-07-24 07:00,2024-07-30 17:00,2024-07-12 07:00,2024-07-13 17:00,2025-11-20 17:00,2025-11-20 17:00,2025-12-01 07:00,2025-12-01 07:00,0,50,100
CN.SWA5..1591,IMPACT - Y_RFI 1350 - PREP/SUBMIT RFI WITH PROPOSED CONNECTION FIX AT L2 SHEAR TABS - ELEVATOR 01,Complete,CONSTRUCTION,,FIZ 2 / SUWS 5  (GL6-1) - GL J - N - DATA CENTER 1,L1 - Fndn Slab,ELEVATOR,CONSTRUCTION,,,,,2024-05-31 07:00,2024-06-06 17:00,2024-05-27 07:00,2024-05-30 17:00,2025-11-20 17:00,2025-11-20 17:00,2025-12-01 07:00,2025-12-01 07:00,0,40,100
CN.SWA5..1601,IMPACT - Y_RFI 1350 - SECAI APPROVAL OF CONNECTION FIX / DIRECT YATES TO PROCEED WITH L2 CONNECTION - ELEVATOR 01,Complete,CONSTRUCTION,,FIZ 2 / SUWS 5  (GL6-1) - GL J - N - DATA CENTER 1,,ELEVATOR,CONSTRUCTION,,,,,2024-06-07 07:00,2024-06-24 17:00,2024-05-31 07:00,2024-06-04 17:00,2025-11-20 17:00,2025-11-20 17:00,2025-12-01 07:00,2025-12-01 07:00,0,100,100
CN.SWA5..1611,IMPACT - WW COMPLETE L2 SHEAR TAB CONNECTION - ELEVATOR 01,Complete,CONSTRUCTION,,FIZ 2 / SUWS 5  (GL6-1) - GL J - N - DATA CENTER 1,,ELEVATOR,CONSTRUCTION,,,,,2024-06-14 07:00,2024-06-24 17:00,2024-06-05 07:00,2024-06-13 17:00,2025-11-20 17:00,2025-11-20 17:00,2025-12-01 07:00,2025-12-01 07:00,0,60,100
INT.DH.1090,PREP & SUBMIT EXTERIOR DOOR AND FRAMES SHOP DRAWINGS (Y_SBMT#686),Complete,CONSTRUCTION,,Doors & Hardware - INTERIOR,DOORS & HARDWARE INTERIOR,,PRE - CON / BUYOUT / IMPACTS,,,,,2024-05-31 07:00,2024-06-17 17:00,2023-07-10 07:00,2023-07-25 17:00,2025-11-20 17:00,2025-11-20 17:00,2025-11-19 07:00,2025-11-19 07:00,0,100,100
INT.DH.1100,SECAI REVIEW EXTERIOR DOOR & FRAMES SHOP DRAWINGS (Y_SBMT#686),Complete,CONSTRUCTION,,Doors & Hardware - INTERIOR,DOORS & HARDWARE INTERIOR,,PRE - CON / BUYOUT / IMPACTS,,,,,2024-05-31 07:00,2024-06-17 17:00,2023-07-26 07:00,2023-08-28 17:00,2025-11-20 17:00,2025-11-20 17:00,2025-11-19 07:00,2025-11-19 07:00,0,100,100
INT.DH.1110,IMPACT - SECAI ISSUE DESIGN REVISION TO YATES - EXTERIOR DOOR & FRAMES,Complete,CONSTRUCTION,,Doors & Hardware - INTERIOR,DOORS & HARDWARE INTERIOR,,PRE - CON / BUYOUT / IMPACTS,,,,,2024-05-31 07:00,2024-06-13 17:00,2023-08-29 07:00,2023-09-08 17:00,2025-11-20 17:00,2025-11-20 17:00,2025-11-19 07:00,2025-11-19 07:00,0,80,100
INT.DH.1120,IMPACT - PREP & SUBMIT EXTERIOR DOOR & FRAMES SHOP DRAWINGS - REVISED DESIGN,Complete,CONSTRUCTION,,Doors & Hardware - INTERIOR,DOORS & HARDWARE INTERIOR,,PRE - CON / BUYOUT / IMPACTS,,,,,2024-05-31 07:00,2024-06-17 17:00,2023-09-11 07:00,2023-10-02 17:00,2025-11-20 17:00,2025-11-20 17:00,2025-11-19 07:00,2025-11-19 07:00,0,100,100
INT.DH.1130,IMPACT - SECAI REVIEW & APPROVE EXTERIOR DOOR & FRAMES SHOP DRAWINGS - REVISED DESIGN,Complete,CONSTRUCTION,,Doors & Hardware - INTERIOR,DOORS & HARDWARE INTERIOR,,PRE - CON / BUYOUT / IMPACTS,,,,,2024-05-31 07:00,2024-06-17 17:00,2023-10-03 07:00,2023-10-24 17:00,2025-11-20 17:00,2025-11-20 17:00,2025-11-19 07:00,2025-11-19 07:00,0,100,100
INT.DH.1140,IMPACT - Y_RFI 1058 - PREP & SUBMIT RFI TO CLARIFY R-VALUE - EXTERIOR DOOR & FRAMES,Complete,CONSTRUCTION,,Doors & Hardware - INTERIOR,DOORS & HARDWARE INTERIOR,,PRE - CON / BUYOUT / IMPACTS,,,,,2024-05-31 07:00,2024-06-07 17:00,2023-10-25 07:00,2023-11-07 17:00,2025-11-20 17:00,2025-11-20 17:00,2025-11-19 07:00,2025-11-19 07:00,0,50,100
INT.DH.1150,IMPACT - Y_RFI 1058 - SECAI REVIEW & REPSOND CLARIFYING R-VALUE - EXTERIOR DOOR & FRAMES,Complete,CONSTRUCTION,,Doors & Hardware - INTERIOR,DOORS & HARDWARE INTERIOR,,PRE - CON / BUYOUT / IMPACTS,,,,,2024-05-31 07:00,2024-05-31 17:00,2023-11-08 07:00,2023-11-08 17:00,2025-11-20 17:00,2025-11-20 17:00,2025-11-19 07:00,2025-11-19 07:00,0,10,100
INT.DH.1160,IMPACT - Y_RFI 1072 - PREP & SUBMIT RFI TO CLARIFY THERMAL RATING - EXTERIOR DOOR & FRAMES,Complete,CONSTRUCTION,,Doors & Hardware - INTERIOR,DOORS & HARDWARE INTERIOR,,PRE - CON / BUYOUT / IMPACTS,,,,,2024-05-31 07:00,2024-06-07 17:00,2023-11-09 07:00,2023-11-16 17:00,2025-11-20 17:00,2025-11-20 17:00,2025-11-19 07:00,2025-11-19 07:00,0,50,100
INT.DH.1170,IMPACT - Y_RFI 1072 - SECAI REVIEW & RESPOND CLARIFYING THERMAL RATING - EXTERIOR DOOR & FRAMES,Complete,CONSTRUCTION,,Doors & Hardware - INTERIOR,DOORS & HARDWARE INTERIOR,,PRE - CON / BUYOUT / IMPACTS,,,,,2024-05-31 07:00,2024-06-17 17:00,2023-11-17 07:00,2023-11-29 17:00,2025-11-20 17:00,2025-11-20 17:00,2025-11-19 07:00,2025-11-19 07:00,0,100,100
INT.DH.1180,IMPACT - Y_RFI 1072 - YATES REOPENS RFI AFTER CONFERENCE CALL WITH JACOBS - EXTERIOR DOOR & FRAMES,Complete,CONSTRUCTION,,Doors & Hardware - INTERIOR,DOORS & HARDWARE INTERIOR,,PRE - CON / BUYOUT / IMPACTS,,,,,2024-05-31 07:00,2024-05-31 17:00,2023-11-30 07:00,2023-11-30 17:00,2025-11-20 17:00,2025-11-20 17:00,2025-11-19 07:00,2025-11-19 07:00,0,10,100
INT.DH.1190,IMPACT - Y_RFI 1072 - SECAI/JACOBS/SAMOO/YATES COORDINATE THERMAL RATING REQS - EXTERIOR DOOR & FRAMES,Complete,CONSTRUCTION,,Doors & Hardware - INTERIOR,DOORS & HARDWARE INTERIOR,,PRE - CON / BUYOUT / IMPACTS,,,,,2024-05-31 07:00,2024-06-25 17:00,2023-12-01 07:00,2024-04-08 17:00,2025-11-20 17:00,2025-11-20 17:00,2025-11-19 07:00,2025-11-19 07:00,0,150,100
INT.DH.1200,IMPACT - Y_RFI 1072 - SECAI REQUESTS YATES SUBMIT FORMAL SUBMITTAL TO CLOSE RFI - EXTERIOR DOOR & FRAMES,Complete,CONSTRUCTION,,Doors & Hardware - INTERIOR,DOORS & HARDWARE INTERIOR,,PRE - CON / BUYOUT / IMPACTS,,,,,2024-05-31 07:00,2024-05-31 17:00,2024-04-09 07:00,2024-04-09 17:00,2025-11-20 17:00,2025-11-20 17:00,2025-11-19 07:00,2025-11-19 07:00,0,10,100
INT.DH.1210,IMPACT - Y_SBMT 0600 - PREP & SUBMIT CECO FRAME & MEDALLION DOOR SUBMITTAL - EXTERIOR DOOR & FRAMES,Complete,CONSTRUCTION,,Doors & Hardware - INTERIOR,DOORS & HARDWARE INTERIOR,,PRE - CON / BUYOUT / IMPACTS,,,,,2024-05-31 07:00,2024-06-07 17:00,2024-04-10 07:00,2024-04-18 17:00,2025-11-20 17:00,2025-11-20 17:00,2025-11-19 07:00,2025-11-19 07:00,0,50,100
INT.DH.1220,IMPACT - Y_SBMT 0600 - SECAI REVIEW & APPROVE CECO FRAME & MEDALLION DOOR SUBMITTAL - EXTERIOR DOOR & FRAMES,Complete,CONSTRUCTION,,Doors & Hardware - INTERIOR,DOORS & HARDWARE INTERIOR,,PRE - CON / BUYOUT / IMPACTS,,,,,2024-05-31 07:00,2024-06-17 17:00,2024-04-19 07:00,2024-04-24 17:00,2025-11-20 17:00,2025-11-20 17:00,2025-11-19 07:00,2025-11-19 07:00,0,100,100
INT.DH.1230,IMPACT - Y_RFI 1072 - SECAI CLOSES RFI AFTER APPROVAL OF Y_SBMT 1072 - EXTERIOR DOOR & FRAMES,Complete,CONSTRUCTION,,Doors & Hardware - INTERIOR,DOORS & HARDWARE INTERIOR,,PRE - CON / BUYOUT / IMPACTS,,,,,2024-05-31 07:00,2024-06-07 17:00,2024-04-25 07:00,2024-05-01 17:00,2025-11-20 17:00,2025-11-20 17:00,2025-11-19 07:00,2025-11-19 07:00,0,50,100
INT.DH.1240,IMPACT - Y_RFI 1326 - PREP & SUBMIT RFI TO CLARIFY OVERSIZED FRAME SPEC - EXTERIOR DOOR & FRAMES,Complete,CONSTRUCTION,,Doors & Hardware - INTERIOR,DOORS & HARDWARE INTERIOR,,PRE - CON / BUYOUT / IMPACTS,,,,,2024-05-31 07:00,2024-06-07 17:00,2024-05-02 07:00,2024-05-07 17:00,2025-11-20 17:00,2025-11-20 17:00,2025-11-19 07:00,2025-11-19 07:00,0,50,100
INT.DH.1250,IMPACT - Y_RFI 1326 - SECAI REVIEW & PROVIDE CLARIFICATION ON OVERSIZED FRAMES - EXTERIOR DOOR & FRAMES,Complete,CONSTRUCTION,,Doors & Hardware - INTERIOR,DOORS & HARDWARE INTERIOR,,PRE - CON / BUYOUT / IMPACTS,,,,,2024-05-31 07:00,2024-06-17 17:00,2024-05-08 07:00,2024-05-15 17:00,2025-11-20 17:00,2025-11-20 17:00,2025-11-19 07:00,2025-11-19 07:00,0,100,100
INT.DH.1290,IMPACT - YATES SUBMIT REQUEST TO SECAI FOR DOOR INSTALLATION PRIORITY LIST - NEEDED TO DEVISE INSTALL SEQUENCE,Complete,CONSTRUCTION,,Doors & Hardware - INTERIOR,DOORS & HARDWARE INTERIOR,,PRE - CON / BUYOUT / IMPACTS,SECAI,,,,2024-05-31 07:00,2024-06-17 17:00,2024-04-17 07:00,2024-11-02 17:00,2025-11-20 17:00,2025-11-20 17:00,2025-11-10 07:00,2025-11-10 07:00,0,100,100
INT.DH.0000,PREP & SUBMIT INTERIOR DOORS & FRAMES PRODUCT DATA (Y_SBMT#681),Complete,CONSTRUCTION,,Doors & Hardware - INTERIOR,DOORS & HARDWARE INTERIOR,,PRE - CON / BUYOUT / IMPACTS,,,,,2024-05-31 07:00,2024-06-17 17:00,2023-09-14 07:00,2023-10-04 17:00,2025-11-20 17:00,2025-11-20 17:00,2025-11-19 07:00,2025-11-19 07:00,0,100,100
INT.DH.0010,SECAI REVIEW & REJECT INTERIOR DOORS & FRAMES PRODUCT DATA (Y_SBMT#681),Complete,CONSTRUCTION,,Doors & Hardware - INTERIOR,DOORS & HARDWARE INTERIOR,,PRE - CON / BUYOUT / IMPACTS,,,,,2024-05-31 07:00,2024-06-17 17:00,2023-10-05 07:00,2023-10-25 17:00,2025-11-20 17:00,2025-11-20 17:00,2025-11-19 07:00,2025-11-19 07:00,0,100,100
INT.DH.0020,IMPACT - PREP & SUBMIT INTERIOR DOORS & FRAMES PRODUCT DATA - R1 (Y_SBMT#681),Complete,CONSTRUCTION,,Doors & Hardware - INTERIOR,DOORS & HARDWARE INTERIOR,,PRE - CON / BUYOUT / IMPACTS,,,,,2024-05-31 07:00,2024-06-17 17:00,2023-10-26 07:00,2023-11-27 17:00,2025-11-20 17:00,2025-11-20 17:00,2025-11-19 07:00,2025-11-19 07:00,0,100,100
INT.DH.0030,IMPACT - SECAI REVIEW & REJECT INTERIOR DOORS & FRAMES PRODUCT DATA - R1 (Y_SBMT#681),Complete,CONSTRUCTION,,Doors & Hardware - INTERIOR,DOORS & HARDWARE INTERIOR,,PRE - CON / BUYOUT / IMPACTS,,,,,2024-05-31 07:00,2024-06-17 17:00,2023-11-28 07:00,2023-12-12 17:00,2025-11-20 17:00,2025-11-20 17:00,2025-11-19 07:00,2025-11-19 07:00,0,100,100
INT.DH.0040,IMPACT - Y_RFI 1008 - PREP & SUBMIT RFI TO RESOLVE FIRE RATING ISSUE WITH OVERSIZED INTERIOR DOORS,Complete,CONSTRUCTION,,Doors & Hardware - INTERIOR,DOORS & HARDWARE INTERIOR,,PRE - CON / BUYOUT / IMPACTS,,,,,2024-05-31 07:00,2024-05-31 17:00,2023-10-26 07:00,2023-10-26 17:00,2025-11-20 17:00,2025-11-20 17:00,2025-11-19 07:00,2025-11-19 07:00,0,10,100
INT.DH.0050,IMPACT - Y_RFI 1008 - SECAI REVIEW & PROVIDES RESPONSE TO FIRE RATING RFI FOR OVERSIZED INTERIOR DOORS,Complete,CONSTRUCTION,,Doors & Hardware - INTERIOR,DOORS & HARDWARE INTERIOR,,PRE - CON / BUYOUT / IMPACTS,,,,,2024-05-31 07:00,2024-06-17 17:00,2023-10-27 07:00,2024-01-09 17:00,2025-11-20 17:00,2025-11-20 17:00,2025-11-19 07:00,2025-11-19 07:00,0,100,100
INT.DH.0060,IMPACT - Y_RFI 1298 - PREP & SUBMIT RFI TO CLARIFY FIRE RATINGS FOR REVISED INTERIOR DOOR OPENINGS,Complete,CONSTRUCTION,,Doors & Hardware - INTERIOR,DOORS & HARDWARE INTERIOR,,PRE - CON / BUYOUT / IMPACTS,,,,,2024-05-31 07:00,2024-06-17 17:00,2024-04-05 07:00,2024-04-18 17:00,2025-11-20 17:00,2025-11-20 17:00,2025-11-19 07:00,2025-11-19 07:00,0,100,100
INT.DH.0070,IMPACT - Y_RFI 1298 - SAMOO PROVIDES RESPONSE FOR FIRE RATINGS FOR REVISED INTERIOR DOOR OPENINGS,Complete,CONSTRUCTION,,Doors & Hardware - INTERIOR,DOORS & HARDWARE INTERIOR,,PRE - CON / BUYOUT / IMPACTS,,,,,2024-05-31 07:00,2024-06-17 17:00,2024-04-19 07:00,2024-04-30 17:00,2025-11-20 17:00,2025-11-20 17:00,2025-11-19 07:00,2025-11-19 07:00,0,100,100
INT.DH.0080,IMPACT - Y_RFI 1298 - JACOBS REVIEW & RESPONSE FOR FIRE RATINGS FOR REVISED INTERIOR DOOR OPENINGS,Complete,CONSTRUCTION,,Doors & Hardware - INTERIOR,DOORS & HARDWARE INTERIOR,,PRE - CON / BUYOUT / IMPACTS,,,,,2024-05-31 07:00,2024-06-07 17:00,2024-05-01 07:00,2024-05-07 17:00,2025-11-20 17:00,2025-11-20 17:00,2025-11-19 07:00,2025-11-19 07:00,0,50,100
CN.SEB1.6300,INSTALL CONTAINMENTS - - SEB1 - GL 19-22 - D-E - L3 CEILING,Complete,CONSTRUCTION,,SUEN-1 - 19-22,L4 - SUP Roof - FAB Roof,,CONSTRUCTION,,,,,2024-05-23 07:00,2024-05-30 17:00,2024-05-23 07:00,2024-05-28 17:00,2025-11-20 17:00,2025-11-20 17:00,2025-06-13 08:00,2025-06-13 08:00,0,40,100
CN.SEB1.8960,INSTALL CONTAINMENTSI - - SEB1 - GL 22-25 - D-E - L3 CEILING,Complete,CONSTRUCTION,,SUEN-2 - 22-25,L4 - SUP Roof - FAB Roof,,CONSTRUCTION,,,,,2024-05-23 07:00,2024-05-30 17:00,2024-05-23 07:00,2024-05-28 17:00,2025-11-20 17:00,2025-11-20 17:00,2025-06-13 08:00,2025-06-13 08:00,0,40,100
CN.SEB1.8970,INSTALL CONTAINMENTS - SEB1 - GL 25-28 - D-E - L3 CEILING,Complete,CONSTRUCTION,,SUEN-3 - 25-28,L4 - SUP Roof - FAB Roof,,CONSTRUCTION,ROLLING PLAINS,,,,2024-07-26 07:00,2024-07-30 17:00,2024-06-11 07:00,2024-06-13 17:00,2025-11-20 17:00,2025-11-20 17:00,2025-06-13 08:00,2025-06-13 08:00,0,30,100
CN.SEB1.8980,INSTALL CONTAINMENTS - - SEB1 - GL 28-31 - D-E - L3 CEILING,Complete,CONSTRUCTION,,SUEN-4 - 28-31,L4 - SUP Roof - FAB Roof,,CONSTRUCTION,ROLLING PLAINS,,,,2024-07-26 07:00,2024-07-30 17:00,2024-06-11 07:00,2024-06-13 17:00,2025-11-20 17:00,2025-11-20 17:00,2025-06-13 08:00,2025-06-13 08:00,0,30,100
CN.SEB1.8990,INSTALL CONTAINMENTS - - SEB1 - GL 28-31 - D-E - L3 CEILING,Complete,CONSTRUCTION,,SUEN-5 - 31-33,L4 - SUP Roof - FAB Roof,,CONSTRUCTION,ROLLING PLAINS,,,,2024-07-26 07:00,2024-07-29 17:00,2024-06-11 07:00,2024-06-13 17:00,2025-11-20 17:00,2025-11-20 17:00,2025-06-13 08:00,2025-06-13 08:00,0,20,100
CN.SEB1.9000,INSTALL CONTAINMENTS - - SWB-1 - GL 18-15 - J-K - L3 CEILING,Complete,CONSTRUCTION,,SUWS-1 - 18-15,L4 - SUP Roof - FAB Roof,,CONSTRUCTION,ROLLING PLAINS,,,,2024-07-26 07:00,2024-07-30 17:00,2024-06-04 07:00,2024-06-13 17:00,2025-11-20 17:00,2025-11-20 17:00,2025-06-13 08:00,2025-06-13 08:00,0,30,100
CN.SEB1.9010,INSTALL CONTAINMENTS - - SWB-1 - GL 18-21 - J-K - L3 CEILING,Complete,CONSTRUCTION,,SUWN-1 - 18-21,L4 - SUP Roof - FAB Roof,,CONSTRUCTION,ROLLING PLAINS,,,,2024-07-26 07:00,2024-07-30 17:00,2024-06-04 07:00,2024-06-11 17:00,2025-11-20 17:00,2025-11-20 17:00,2025-06-13 08:00,2025-06-13 08:00,0,30,100
CN.SEB1.9020,INSTALL CONTAINMENTS - - SWB-1 - GL 18-21 - J-K - L3 CEILING,Complete,CONSTRUCTION,,SUWN-2 - 21-24,L4 - SUP Roof - FAB Roof,,CONSTRUCTION,ROLLING PLAINS,,,,2024-07-26 07:00,2024-07-30 17:00,2024-06-04 07:00,2024-06-11 17:00,2025-11-20 17:00,2025-11-20 17:00,2025-06-13 08:00,2025-06-13 08:00,0,30,100
CN.SWA1.1830,INSTALL CONTAINMENTS - SWA-1 - GL 18-15 - J-K - L2-CEILING,Complete,CONSTRUCTION,,SUWS-1 - 18-15,DS/AD,,CONSTRUCTION,ROLLING PLAINS,,,,2024-07-12 07:00,2024-07-18 17:00,2024-06-24 07:00,2024-06-25 17:00,2025-11-20 17:00,2025-11-20 17:00,2025-11-24 07:00,2025-11-24 07:00,0,50,100
CN.SWA1.9230,INSTALL CONTAINMENTS - SWA-1 - GL 18-21 - J-K - L2-CEILING,Complete,CONSTRUCTION,,SUWN-1 - 18-21,DS/AD,,CONSTRUCTION,ROLLING PLAINS,,,,2024-07-12 07:00,2024-07-18 17:00,2024-06-20 07:00,2024-06-25 17:00,2025-11-20 17:00,2025-11-20 17:00,2025-12-05 17:00,2025-12-05 17:00,0,50,100
CN.SWA1.9240,INSTALL CONTAINMENTS - SWA-1 - GL 21-24 - J-K - L2-CEILING,Complete,CONSTRUCTION,,SUWN-2 - 21-24,DS/AD,,CONSTRUCTION,ROLLING PLAINS,,,,2024-07-12 07:00,2024-07-18 17:00,2024-06-27 07:00,2024-07-02 15:00,2025-11-20 17:00,2025-11-20 17:00,2025-12-05 17:00,2025-12-05 17:00,0,50,100
CN.SWA1.9250,INSTALL CONTAINMENTS - SWA-1 - GL 21-24 - J-K -  L2-CEILING,Complete,CONSTRUCTION,,SUWN-3 - 24-27,DS/AD,,CONSTRUCTION,ROLLING PLAINS,,,,2024-07-18 07:00,2024-07-24 17:00,2024-06-29 14:14,2024-07-06 17:00,2025-11-20 17:00,2025-11-20 17:00,2025-12-05 17:00,2025-12-05 17:00,0,50,100
CN.SWA1.9260,INSTALL CONTAINMENTS - SWA-1 - GL 27-30 - J-K - L2-CEILING,Complete,CONSTRUCTION,,SUWN-4 - 27-30,DS/AD,,CONSTRUCTION,ROLLING PLAINS,,,,2024-07-15 07:00,2024-07-19 17:00,2024-07-15 07:00,2024-07-18 17:00,2025-11-20 17:00,2025-11-20 17:00,2025-12-05 17:00,2025-12-05 17:00,0,50,100
CN.SWA1.9270,INSTALL CONTAINMENTS - SWA-1 - GL 30-33 - J-K - L2-CEILING,Complete,CONSTRUCTION,,SUWN-5 - 30-33,DS/AD,,CONSTRUCTION,ROLLING PLAINS,,,,2024-07-15 07:00,2024-07-19 17:00,2024-07-15 07:00,2024-07-19 00:00,2025-11-20 17:00,2025-11-20 17:00,2025-12-05 17:00,2025-12-05 17:00,0,50,100
CN.SWA1.9280,INSTALL CONTAINMENTS - SWA-1 - GL 3-12 - J-K - L2-CEILING,Complete,CONSTRUCTION,,FIZ 2 / SUWS 5  (GL6-1) - GL J - N - DATA CENTER 1,DS/AD,,CONSTRUCTION,ROLLING PLAINS,,,,2024-06-20 07:00,2024-06-24 17:00,2024-06-14 07:00,2024-06-20 17:00,2025-11-20 17:00,2025-11-20 17:00,2025-11-24 07:00,2025-11-24 07:00,0,30,100
CN.SWB3.1330,EXCAVATE FOR LARGE CANOPY FOUNDATION - GL 23-29 - N LINE,Complete,CONSTRUCTION,,SUWN-3 - 24-27,EXTERIOR SKIN,,CONSTRUCTION,,,,,2024-12-30 07:00,2025-01-13 17:00,2024-12-28 07:00,2025-01-09 17:00,2025-11-20 17:00,2025-11-20 17:00,2025-09-29 07:00,2025-09-29 07:00,0,100,100
CN.SWB3.1550,F/R/P & BACKFILL LARGE CANOPY FOUNDATION - GL 23-29 - N LINE,Complete,CONSTRUCTION,,SUWN-3 - 24-27,EXTERIOR SKIN,,CONSTRUCTION,,,,,2024-12-30 07:00,2025-01-27 17:00,2024-12-28 07:00,2025-02-20 15:00,2025-11-20 17:00,2025-11-20 17:00,2025-09-29 07:00,2025-09-29 07:00,0,200,100
CN.SWB3.1560,INSTALL LARGE CANOPY BEAMS & COLUMNS - GL 23-26 - N LINE,Complete,CONSTRUCTION,,SUWN-3 - 24-27,EXTERIOR SKIN,,CONSTRUCTION,,,,,2025-03-27 07:00,2025-04-09 17:00,2025-01-10 07:00,2025-01-21 11:00,2025-11-20 17:00,2025-11-20 17:00,2025-09-29 07:00,2025-09-29 07:00,0,100,100
CN.SWA1.9290,INSTALL CONTAINMENTS - SWA-1 - GL 9-6 - J-K - L2-CEILING,Complete,CONSTRUCTION,,SUWS-4 - 9-6,DS/AD,,CONSTRUCTION,ROLLING PLAINS,,,,2024-06-20 07:00,2024-06-27 17:00,2024-06-17 07:00,2024-06-20 17:00,2025-11-20 17:00,2025-11-20 17:00,2025-11-24 07:00,2025-11-24 07:00,0,50,100
CN.SWB3.5170,INSTALL CANOPY - GL 5 - A LINE,Complete,CONSTRUCTION,,SUES-5 - 6-1 - FIZ - GL A -E,EXTERIOR SKIN,,CONSTRUCTION,,,,,2025-03-10 07:00,2025-03-21 17:00,2025-02-07 10:00,2025-02-21 17:00,2025-11-20 17:00,2025-11-20 17:00,2025-10-24 07:00,2025-10-24 07:00,0,100,100
CN.SWB3.5180,F/R/P & BACKFILL LARGE CANOPY FOUNDATION - GL 27-33 - A LINE,Complete,CONSTRUCTION,,SUEN-4 - 28-31,L1 - Fndn Slab,,CONSTRUCTION,BAKER,,,,2025-03-14 07:00,2025-04-10 17:00,2025-02-10 09:24,2025-03-03 14:00,2025-11-20 17:00,2025-11-20 17:00,2025-10-24 07:00,2025-10-24 07:00,0,200,100
CN.SWA1.9300,INSTALL CONTAINMENTS - SWA-1 - GL 12-9 - J-K - L2-CEILING,Complete,CONSTRUCTION,,SUWS-3 - 12-9,DS/AD,,CONSTRUCTION,ROLLING PLAINS,,,,2024-06-24 07:00,2024-07-01 17:00,2024-06-24 07:00,2024-06-27 17:00,2025-11-20 17:00,2025-11-20 17:00,2025-11-24 07:00,2025-11-24 07:00,0,50,100
CN.SWA1.9310,INSTALL CONTAINMENTS - SWA-1 - GL 15-12 - J-K - L2-CEILING,Complete,CONSTRUCTION,,SUWS-2 - 15-12,DS/AD,,CONSTRUCTION,ROLLING PLAINS,,,,2024-06-24 07:00,2024-07-01 17:00,2024-06-24 07:00,2024-06-28 17:00,2025-11-20 17:00,2025-11-20 17:00,2025-11-24 07:00,2025-11-24 07:00,0,50,100
CN.SWA1.9320,INSTALL CONTAINMENTS - SEA-1 - GL 6-1 - J-K - L2-CEILING,Complete,CONSTRUCTION,,SUES-5 - 6-1 - FIZ - GL A -E,DS/AD,,CONSTRUCTION,ROLLING PLAINS,,,,2024-07-08 07:00,2024-07-11 17:00,2024-07-08 07:00,2024-07-11 17:00,2025-11-20 17:00,2025-11-20 17:00,2025-10-16 07:00,2025-10-16 07:00,0,30,100
CN.SWA1.9330,INSTALL CONTAINMENTS - SEA-1 - GL 6-9 - J-K - L2-CEILING,Complete,CONSTRUCTION,,SUES-4 - 9-6,DS/AD,,CONSTRUCTION,ROLLING PLAINS,,,,2024-06-17 07:00,2024-06-20 17:00,2024-06-17 07:00,2024-06-20 17:00,2025-11-20 17:00,2025-11-20 17:00,2025-10-16 07:00,2025-10-16 07:00,0,30,100
CN.SWA1.9340,INSTALL CONTAINMENTS - SEA-1 - GL 19-22 - J-K - L2-CEILING,Complete,CONSTRUCTION,,SUEN-1 - 19-22,DS/AD,,CONSTRUCTION,,,,,2024-06-27 07:00,2024-07-02 17:00,2024-07-04 07:00,2024-07-11 17:00,2025-11-20 17:00,2025-11-20 17:00,2025-11-26 07:00,2025-11-26 07:00,0,40,100
CN.SWA1.9350,INSTALL CONTAINMENTS - SEA-1 - GL 22-25 - J-K - L2-CEILING,Complete,CONSTRUCTION,,SUEN-2 - 22-25,DS/AD,,CONSTRUCTION,ROLLING PLAINS,,,,2024-07-26 07:00,2024-07-31 17:00,2024-07-05 07:00,2024-07-10 17:00,2025-11-20 17:00,2025-11-20 17:00,2025-12-05 17:00,2025-12-05 17:00,0,40,100
CN.SWA1.9360,IMPACT - PIPE RACK/ SCAFFOLD BLOCKING ACCESS - SEA-1 - GL 26-30 - J-K - L2-CEILING,Complete,CONSTRUCTION,,SUEN-3 - 25-28,DS/AD,,CONSTRUCTION,ROLLING PLAINS,,,,2024-07-26 07:00,2024-07-31 17:00,2024-07-11 07:00,2024-10-01 17:00,2025-11-20 17:00,2025-11-20 17:00,2025-12-05 17:00,2025-12-05 17:00,0,40,100
CN.SWA1.9370,IMPACT - PENDING ACCESS TO AREA - AD IFRM - SEA-1 - GL 28-31 - J-K - L2-CEILING,Complete,CONSTRUCTION,,SUEN-4 - 28-31,DS/AD,,CONSTRUCTION,ROLLING PLAINS,,,,2024-07-08 07:00,2024-07-12 17:00,2024-07-01 07:00,2024-07-15 17:00,2025-11-20 17:00,2025-11-20 17:00,2025-12-05 17:00,2025-12-05 17:00,0,40,100
CN.SWA1.9380,INSTALL CONTAINMENTS - SEA-1 - GL 31-33 - J-K - L2-CEILING,Complete,CONSTRUCTION,,SUEN-5 - 31-33,DS/AD,,CONSTRUCTION,ROLLING PLAINS,,,,2024-07-11 07:00,2024-07-16 17:00,2024-07-11 07:00,2024-07-12 17:00,2025-11-20 17:00,2025-11-20 17:00,2025-12-05 17:00,2025-12-05 17:00,0,40,100
CN.SWA1.9390,INSTALL CONTAINMENTS - SEA-1 - GL 13-9 - J-K - L2-CEILING,Complete,CONSTRUCTION,,SUES-3 - 13-9,DS/AD,,CONSTRUCTION,ROLLING PLAINS,,,,2024-06-17 07:00,2024-06-20 17:00,2024-06-17 07:00,2024-06-20 17:00,2025-11-20 17:00,2025-11-20 17:00,2025-11-26 07:00,2025-11-26 07:00,0,30,100
PP.SUE.1000,SECAI - WINDOW FOR PROVIDING MEP LAYOUTS AT GRATING - C-E - GL 1-6 - ALL LEVELS,Complete,CONSTRUCTION,,SUES-5 - 6-1 - FIZ - GL A -E,DS/AD,,CONSTRUCTION,SECAI,,,,2024-06-21 07:00,2024-06-28 17:00,2024-06-14 07:00,2024-06-20 17:00,2025-11-20 17:00,2025-11-20 17:00,2025-10-16 07:00,2025-10-16 07:00,0,50,100
PP.SUE.1010,CCD 310 - PERRY & PERRY COMPLETE GRATING PENETRATION SUPPORT STEEL - C-E - GL 1-6 - L2,Complete,CONSTRUCTION,,SUES-5 - 6-1 - FIZ - GL A -E,DS/AD,,CONSTRUCTION,PERRY & PERRY,,,,2024-06-28 07:00,2024-07-02 17:00,2024-06-21 07:00,2024-06-24 17:00,2025-11-20 17:00,2025-11-20 17:00,2025-10-16 07:00,2025-10-16 07:00,0,30,100
PP.SUE.1020,CCD 310 - PERRY & PERRY COMPLETE GRATING PENETRATION SUPPORT STEEL - C-E - GL 1-6 - L3,Complete,CONSTRUCTION,,SUES-5 - 6-1 - FIZ - GL A -E,DS/AD,,CONSTRUCTION,PERRY & PERRY,,,,2024-06-21 07:00,2024-06-25 17:00,2024-06-21 07:00,2024-06-24 17:00,2025-11-20 17:00,2025-11-20 17:00,2025-10-16 07:00,2025-10-16 07:00,0,30,100
PP.SUE.1030,CCD 310 - PERRY & PERRY COMPLETE GRATING PENETRATION SUPPORT STEEL - C-E - GL 1-6 - L4,Complete,CONSTRUCTION,,SUES-5 - 6-1 - FIZ - GL A -E,DS/AD,,CONSTRUCTION,PERRY & PERRY,,,,2024-06-28 07:00,2024-07-02 17:00,2024-06-21 07:00,2024-06-24 17:00,2025-11-20 17:00,2025-11-20 17:00,2025-10-16 07:00,2025-10-16 07:00,0,30,100
PP.SUE.1040,SECAI - WINDOW FOR PROVIDING MEP LAYOUTS AT GRATING - C-E - GL 6-12 - ALL LEVELS,Complete,CONSTRUCTION,,SUES-4 - 9-6,DS/AD,,CONSTRUCTION,,,,,2024-05-31 07:00,2024-06-07 17:00,2024-04-15 07:00,2024-04-20 17:00,2025-11-20 17:00,2025-11-20 17:00,2025-10-16 07:00,2025-10-16 07:00,0,50,100
PP.SUE.1050,CCD 310 - PERRY & PERRY COMPLETE GRATING PENETRATION SUPPORT STEEL - C-E - GL 6-12 - L2,Complete,CONSTRUCTION,,SUES-4 - 9-6,DS/AD,,CONSTRUCTION,,,,,2024-05-31 07:00,2024-06-17 17:00,2024-04-22 07:00,2024-04-27 17:00,2025-11-20 17:00,2025-11-20 17:00,2025-10-16 07:00,2025-10-16 07:00,0,100,100
PP.SUE.1060,CCD 310 - PERRY & PERRY COMPLETE GRATING PENETRATION SUPPORT STEEL - C-E - GL 6-12 - L3 [6~7 BLOCKED BY CONTAINMENT],Complete,CONSTRUCTION,,SUES-4 - 9-6,DS/AD,,CONSTRUCTION,PERRY & PERRY,,,,2024-05-31 07:00,2024-06-17 17:00,2024-04-22 07:00,2024-06-20 17:00,2025-11-20 17:00,2025-11-20 17:00,2025-10-16 07:00,2025-10-16 07:00,0,100,100
PP.SUE.1070,CCD 310 - PERRY & PERRY COMPLETE GRATING PENETRATION SUPPORT STEEL - C-E - GL 6-12 - L4,Complete,CONSTRUCTION,,SUES-4 - 9-6,DS/AD,,CONSTRUCTION,,,,,2024-05-31 07:00,2024-06-17 17:00,2024-04-22 07:00,2024-04-27 17:00,2025-11-20 17:00,2025-11-20 17:00,2025-10-16 07:00,2025-10-16 07:00,0,100,100
PP.SUE.1080,SECAI - WINDOW FOR PROVIDING MEP LAYOUTS AT GRATING - C-E - GL 12-17 - L2,Complete,CONSTRUCTION,,SUES-2 - 16-13,DS/AD,,CONSTRUCTION,,,,,2024-05-31 07:00,2024-06-07 17:00,2024-04-22 07:00,2024-04-27 17:00,2025-11-20 17:00,2025-11-20 17:00,2025-10-16 07:00,2025-10-16 07:00,0,50,100
PP.SUE.1090,CCD 310 - PERRY & PERRY COMPLETE GRATING PENETRATION SUPPORT STEEL - C-E - GL 12-17 - L2,Complete,CONSTRUCTION,,SUES-2 - 16-13,DS/AD,,CONSTRUCTION,,,,,2024-05-31 07:00,2024-06-17 17:00,2024-04-29 07:00,2024-05-06 17:00,2025-11-20 17:00,2025-11-20 17:00,2025-10-16 07:00,2025-10-16 07:00,0,100,100
PP.SUE.1100,CCD 310 - PERRY & PERRY COMPLETE GRATING PENETRATION SUPPORT STEEL - C-E - GL 12-17 - L3,Complete,CONSTRUCTION,,SUES-2 - 16-13,DS/AD,,CONSTRUCTION,,,,,2024-06-14 07:00,2024-07-01 17:00,2024-06-07 07:00,2024-06-12 17:00,2025-11-20 17:00,2025-11-20 17:00,2025-10-16 07:00,2025-10-16 07:00,0,100,100
PP.SUE.1110,CCD 310 - PERRY & PERRY COMPLETE GRATING PENETRATION SUPPORT STEEL - C-E - GL 12-17 - L4,Complete,CONSTRUCTION,,SUES-2 - 16-13,DS/AD,,CONSTRUCTION,,,,,2024-06-14 07:00,2024-07-01 17:00,2024-06-07 07:00,2024-06-12 17:00,2025-11-20 17:00,2025-11-20 17:00,2025-10-16 07:00,2025-10-16 07:00,0,100,100
PP.SUE.1120,SECAI - WINDOW FOR PROVIDING MEP LAYOUTS AT GRATING - C-E - GL 17-19 - ALL LEVELS,Complete,CONSTRUCTION,,SUES-1 - 19-16,DS/AD,,CONSTRUCTION,,,,,2024-06-14 07:00,2024-06-21 17:00,2024-06-07 07:00,2024-06-13 17:00,2025-11-20 17:00,2025-11-20 17:00,2025-10-16 07:00,2025-10-16 07:00,0,50,100
PP.SUE.1130,CCD 310 - PERRY & PERRY COMPLETE GRATING PENETRATION SUPPORT STEEL - C-E - GL 17-19 - L2,Complete,CONSTRUCTION,,SUES-1 - 19-16,DS/AD,,CONSTRUCTION,PERRY & PERRY,,,,2024-06-21 07:00,2024-06-25 17:00,2024-06-14 07:00,2024-06-17 17:00,2025-11-20 17:00,2025-11-20 17:00,2025-10-16 07:00,2025-10-16 07:00,0,30,100
PP.SUE.1140,CCD 310 - PERRY & PERRY COMPLETE GRATING PENETRATION SUPPORT STEEL - C-E - GL 17-19 - L3,Complete,CONSTRUCTION,,SUES-1 - 19-16,DS/AD,,CONSTRUCTION,PERRY & PERRY,,,,2024-06-21 07:00,2024-06-25 17:00,2024-06-14 07:00,2024-06-17 17:00,2025-11-20 17:00,2025-11-20 17:00,2025-10-16 07:00,2025-10-16 07:00,0,30,100
PP.SUE.1150,CCD 310 - PERRY & PERRY COMPLETE GRATING PENETRATION SUPPORT STEEL - C-E - GL 17-19 - L4,Complete,CONSTRUCTION,,SUES-1 - 19-16,DS/AD,,CONSTRUCTION,PERRY & PERRY,,,,2024-06-21 07:00,2024-06-25 17:00,2024-06-14 07:00,2024-06-17 17:00,2025-11-20 17:00,2025-11-20 17:00,2025-10-16 07:00,2025-10-16 07:00,0,30,100
PP.SUE.1160,SECAI - WINDOW FOR PROVIDING MEP LAYOUTS AT GRATING - C-E - GL 19-26 - L2 / INCOMPLETE - CLOSED FOR CCD 310 LAYOUT,Complete,CONSTRUCTION,,SUEN-1 - 19-22,DS/AD,,CONSTRUCTION,,,,,2024-05-31 07:00,2024-06-07 17:00,2024-04-29 07:00,2024-05-04 17:00,2025-11-20 17:00,2025-11-20 17:00,2025-10-16 07:00,2025-10-16 07:00,0,50,100
PP.SUE.1170,CCD 310 - PERRY & PERRY COMPLETE GRATING PENETRATION SUPPORT STEEL - C-E - GL 19-26 - L2,Complete,CONSTRUCTION,,SUEN-1 - 19-22,DS/AD,,CONSTRUCTION,,,,,2024-06-07 07:00,2024-07-02 17:00,2024-05-06 07:00,2024-06-03 17:00,2025-11-20 17:00,2025-11-20 17:00,2025-10-16 07:00,2025-10-16 07:00,0,150,100
PP.SUE.1180,CCD 310 - PERRY & PERRY COMPLETE GRATING PENETRATION SUPPORT STEEL - C-E - GL 19-26 - L3,Complete,CONSTRUCTION,,SUEN-1 - 19-22,DS/AD,,CONSTRUCTION,PERRY & PERRY,,,,2024-09-19 11:00,2024-10-15 11:00,2024-07-24 12:00,2024-08-17 09:00,2025-11-20 17:00,2025-11-20 17:00,2025-10-16 07:00,2025-10-16 07:00,0,150,100
PP.SUE.1190,CCD 310 - PERRY & PERRY COMPLETE GRATING PENETRATION SUPPORT STEEL - C-E - GL 19-26 - L4,Complete,CONSTRUCTION,,SUEN-1 - 19-22,DS/AD,,CONSTRUCTION,PERRY & PERRY,,,,2024-09-19 11:00,2024-10-15 11:00,2024-07-24 07:00,2024-08-17 09:00,2025-11-20 17:00,2025-11-20 17:00,2025-10-16 07:00,2025-10-16 07:00,0,150,100
PP.SUE.1200,SECAI - WINDOW FOR PROVIDING MEP LAYOUTS AT GRATING - C-E - GL 26-33 - ALL LEVELS,Complete,CONSTRUCTION,,SUEN-4 - 28-31,DS/AD,,CONSTRUCTION,SECAI,,,,2024-09-13 07:00,2024-09-20 17:00,2024-06-29 07:00,2024-07-23 17:00,2025-11-20 17:00,2025-11-20 17:00,2025-10-16 07:00,2025-10-16 07:00,0,50,100
PP.SUE.1210,CCD 310 - PERRY & PERRY COMPLETE GRATING PENETRATION SUPPORT STEEL - C-E - GL 26-33 - L2,Complete,CONSTRUCTION,,SUEN-4 - 28-31,DS/AD,,CONSTRUCTION,PERRY & PERRY,,,,2024-09-20 07:00,2024-10-07 17:00,2024-07-25 14:06,2024-08-09 13:00,2025-11-20 17:00,2025-11-20 17:00,2025-10-16 07:00,2025-10-16 07:00,0,100,100
PP.SUE.1220,CCD 310 - PERRY & PERRY COMPLETE GRATING PENETRATION SUPPORT STEEL - C-E - GL 26-33 - L3,Complete,CONSTRUCTION,,SUEN-4 - 28-31,DS/AD,,CONSTRUCTION,PERRY & PERRY,,,,2024-09-20 07:00,2024-10-07 17:00,2024-07-25 07:00,2024-08-09 17:00,2025-11-20 17:00,2025-11-20 17:00,2025-10-16 07:00,2025-10-16 07:00,0,100,100
PP.SUE.1230,CCD 310 - PERRY & PERRY COMPLETE GRATING PENETRATION SUPPORT STEEL - C-E - GL 26-33 - L4,Complete,CONSTRUCTION,,SUEN-4 - 28-31,DS/AD,,CONSTRUCTION,PERRY & PERRY,,,,2024-09-20 07:00,2024-10-07 17:00,2024-07-26 07:00,2024-08-09 17:00,2025-11-20 17:00,2025-11-20 17:00,2025-10-16 07:00,2025-10-16 07:00,0,100,100
PP.SUW.1240,SECAI - WINDOW FOR PROVIDING MEP LAYOUTS AT GRATING - J-L - GL 1-6 - ALL LEVELS,Complete,CONSTRUCTION,,FIZ 2 / SUWS 5  (GL6-1) - GL J - N - DATA CENTER 1,DS/AD,,CONSTRUCTION,SECAI,,,,2024-06-28 07:00,2024-07-08 17:00,2024-06-21 07:00,2024-06-27 17:00,2025-11-20 17:00,2025-11-20 17:00,2025-12-05 17:00,2025-12-05 17:00,0,50,100
PP.SUW.1250,CCD 310 - PERRY & PERRY COMPLETE GRATING PENETRATION SUPPORT STEEL - J-L - GL 1-6 - L2,Complete,CONSTRUCTION,,FIZ 2 / SUWS 5  (GL6-1) - GL J - N - DATA CENTER 1,DS/AD,,CONSTRUCTION,PERRY & PERRY,,,,2024-09-13 07:00,2024-09-20 17:00,2024-07-26 12:00,2024-08-03 17:00,2025-11-20 17:00,2025-11-20 17:00,2025-12-05 17:00,2025-12-05 17:00,0,50,100
PP.SUW.1260,CCD 310 - PERRY & PERRY COMPLETE GRATING PENETRATION SUPPORT STEEL - J-L - GL 1-6 - L3,Complete,CONSTRUCTION,,FIZ 2 / SUWS 5  (GL6-1) - GL J - N - DATA CENTER 1,DS/AD,,CONSTRUCTION,PERRY & PERRY,,,,2024-09-13 07:00,2024-09-20 17:00,2024-07-27 12:00,2024-08-03 17:00,2025-11-20 17:00,2025-11-20 17:00,2025-12-05 17:00,2025-12-05 17:00,0,50,100
PP.SUW.1270,CCD 310 - PERRY & PERRY COMPLETE GRATING PENETRATION SUPPORT STEEL - J-L - GL 1-6 - L4,Complete,CONSTRUCTION,,FIZ 2 / SUWS 5  (GL6-1) - GL J - N - DATA CENTER 1,DS/AD,,CONSTRUCTION,PERRY & PERRY,,,,2024-09-13 07:00,2024-09-20 17:00,2024-07-29 11:17,2024-08-06 17:00,2025-11-20 17:00,2025-11-20 17:00,2025-12-05 17:00,2025-12-05 17:00,0,50,100
PP.SUW.1280,SECAI - WINDOW FOR PROVIDING MEP LAYOUTS AT GRATING - J-L - GL 6-11 - L4,Complete,CONSTRUCTION,,SUWS-4 - 9-6,DS/AD,,CONSTRUCTION,,,,,2024-05-31 07:00,2024-06-07 17:00,2024-05-17 07:00,2024-05-23 17:00,2025-11-20 17:00,2025-11-20 17:00,2025-12-05 17:00,2025-12-05 17:00,0,50,100
PP.SUW.1290,CCD 310 - PERRY & PERRY COMPLETE GRATING PENETRATION SUPPORT STEEL - J-L - GL 6-11 - L2,Complete,CONSTRUCTION,,SUWS-4 - 9-6,DS/AD,,CONSTRUCTION,,,,,2024-06-14 07:00,2024-06-21 17:00,2024-06-07 07:00,2024-06-13 17:00,2025-11-20 17:00,2025-11-20 17:00,2025-12-05 17:00,2025-12-05 17:00,0,50,100
PP.SUW.1300,CCD 310 - PERRY & PERRY COMPLETE GRATING PENETRATION SUPPORT STEEL - J-L - GL 6-11 - L3,Complete,CONSTRUCTION,,SUWS-4 - 9-6,DS/AD,,CONSTRUCTION,,,,,2024-06-14 07:00,2024-06-21 17:00,2024-06-07 07:00,2024-06-13 17:00,2025-11-20 17:00,2025-11-20 17:00,2025-12-05 17:00,2025-12-05 17:00,0,50,100
PP.SUW.1310,CCD 310 - PERRY & PERRY COMPLETE GRATING PENETRATION SUPPORT STEEL - J-L - GL 6-11 - L4,Complete,CONSTRUCTION,,SUWS-4 - 9-6,DS/AD,,CONSTRUCTION,,,,,2024-06-07 07:00,2024-06-14 17:00,2024-05-24 07:00,2024-05-30 17:00,2025-11-20 17:00,2025-11-20 17:00,2025-12-05 17:00,2025-12-05 17:00,0,50,100
PP.SUW.1320,SECAI - WINDOW FOR PROVIDING MEP LAYOUTS AT GRATING - J-L - GL 11-18 - L4,Complete,CONSTRUCTION,,SUWS-2 - 15-12,DS/AD,,CONSTRUCTION,,,,,2024-05-31 07:00,2024-06-07 17:00,2024-05-23 07:00,2024-05-29 17:00,2025-11-20 17:00,2025-11-20 17:00,2025-12-05 17:00,2025-12-05 17:00,0,50,100
PP.SUW.1330,CCD 310 - PERRY & PERRY COMPLETE GRATING PENETRATION SUPPORT STEEL - J-L - GL 11-18 - L2,Complete,CONSTRUCTION,,SUWS-2 - 15-12,DS/AD,,CONSTRUCTION,PERRY & PERRY,,,,2024-06-21 07:00,2024-06-28 17:00,2024-06-14 07:00,2024-06-20 17:00,2025-11-20 17:00,2025-11-20 17:00,2025-12-05 17:00,2025-12-05 17:00,0,50,100
PP.SUW.1340,CCD 310 - PERRY & PERRY COMPLETE GRATING PENETRATION SUPPORT STEEL - J-L - GL 11-18 - L3,Complete,CONSTRUCTION,,SUWS-2 - 15-12,DS/AD,,CONSTRUCTION,PERRY & PERRY,,,,2024-06-21 07:00,2024-06-28 17:00,2024-06-14 07:00,2024-06-20 17:00,2025-11-20 17:00,2025-11-20 17:00,2025-12-05 17:00,2025-12-05 17:00,0,50,100
PP.SUW.1350,CCD 310 - PERRY & PERRY COMPLETE GRATING PENETRATION SUPPORT STEEL - J-L - GL 11-18 - L4,Complete,CONSTRUCTION,,SUWS-2 - 15-12,DS/AD,,CONSTRUCTION,,,,,2024-06-07 07:00,2024-06-14 17:00,2024-05-30 07:00,2024-06-04 17:00,2025-11-20 17:00,2025-11-20 17:00,2025-12-05 17:00,2025-12-05 17:00,0,50,100
PP.SUW.1360,SECAI - WINDOW FOR PROVIDING MEP LAYOUTS AT GRATING - J-L - GL 18-24 - ALL LEVELS,Complete,CONSTRUCTION,,SUWN-1 - 18-21,DS/AD,,CONSTRUCTION,SECAI,,,,2024-06-21 07:00,2024-06-28 17:00,2024-06-14 07:00,2024-06-20 17:00,2025-11-20 17:00,2025-11-20 17:00,2025-12-05 17:00,2025-12-05 17:00,0,50,100
PP.SUW.1370,CCD 310 - PERRY & PERRY COMPLETE GRATING PENETRATION SUPPORT STEEL - J-L - GL 18-24 - L2,Complete,CONSTRUCTION,,SUWN-1 - 18-21,DS/AD,,CONSTRUCTION,PERRY & PERRY,,,,2024-06-28 07:00,2024-07-08 17:00,2024-06-21 07:00,2024-06-27 17:00,2025-11-20 17:00,2025-11-20 17:00,2025-12-05 17:00,2025-12-05 17:00,0,50,100
PP.SUW.1380,CCD 310 - PERRY & PERRY COMPLETE GRATING PENETRATION SUPPORT STEEL - J-L - GL 18-24 - L3,Complete,CONSTRUCTION,,SUWN-1 - 18-21,DS/AD,,CONSTRUCTION,PERRY & PERRY,,,,2024-06-21 07:00,2024-06-28 17:00,2024-06-21 07:00,2024-06-27 17:00,2025-11-20 17:00,2025-11-20 17:00,2025-12-05 17:00,2025-12-05 17:00,0,50,100
PP.SUW.1390,CCD 310 - PERRY & PERRY COMPLETE GRATING PENETRATION SUPPORT STEEL - J-L - GL 18-24 - L4,Complete,CONSTRUCTION,,SUWN-1 - 18-21,DS/AD,,CONSTRUCTION,PERRY & PERRY,,,,2024-06-21 07:00,2024-06-28 17:00,2024-06-21 07:00,2024-06-27 17:00,2025-11-20 17:00,2025-11-20 17:00,2025-12-05 17:00,2025-12-05 17:00,0,50,100
PP.SUW.1400,SECAI - WINDOW FOR PROVIDING MEP LAYOUTS AT GRATING - J-L - GL 24-29 - ALL LEVELS,Complete,CONSTRUCTION,,SUWN-3 - 24-27,DS/AD,,CONSTRUCTION,SECAI,,,,2024-09-13 07:00,2024-09-20 17:00,2024-07-22 07:00,2024-07-26 17:00,2025-11-20 17:00,2025-11-20 17:00,2025-12-05 17:00,2025-12-05 17:00,0,50,100
PP.SUW.1410,CCD 310 - PERRY & PERRY COMPLETE GRATING PENETRATION SUPPORT STEEL - J-L - GL 24-29 - L2,Complete,CONSTRUCTION,,SUWN-3 - 24-27,DS/AD,,CONSTRUCTION,PERRY & PERRY,,,,2024-09-20 07:00,2024-09-27 17:00,2024-07-29 12:00,2024-08-06 10:00,2025-11-20 17:00,2025-11-20 17:00,2025-12-05 17:00,2025-12-05 17:00,0,50,100
PP.SUW.1420,CCD 310 - PERRY & PERRY COMPLETE GRATING PENETRATION SUPPORT STEEL - J-L - GL 24-29 - L3,Complete,CONSTRUCTION,,SUWN-3 - 24-27,DS/AD,,CONSTRUCTION,PERRY & PERRY,,,,2024-09-20 07:00,2024-09-27 17:00,2024-07-30 12:00,2024-08-06 17:00,2025-11-20 17:00,2025-11-20 17:00,2025-12-05 17:00,2025-12-05 17:00,0,50,100
PP.SUW.1430,CCD 310 - PERRY & PERRY COMPLETE GRATING PENETRATION SUPPORT STEEL - J-L - GL 24-29 - L4,Complete,CONSTRUCTION,,SUWN-3 - 24-27,DS/AD,,CONSTRUCTION,PERRY & PERRY,,,,2024-09-20 07:00,2024-09-27 17:00,2024-08-01 07:00,2024-08-08 17:00,2025-11-20 17:00,2025-11-20 17:00,2025-12-05 17:00,2025-12-05 17:00,0,50,100
PP.SUW.1440,SECAI - WINDOW FOR PROVIDING MEP LAYOUTS AT GRATING - J-L - GL 29-33 - ALL LEVELS,Complete,CONSTRUCTION,,SUWN-5 - 30-33,DS/AD,,CONSTRUCTION,SECAI,,,,2024-11-11 07:00,2024-11-18 17:00,2024-08-26 07:00,2024-09-02 17:00,2025-11-20 17:00,2025-11-20 17:00,2025-12-05 17:00,2025-12-05 17:00,0,50,100
PP.SUW.1450,DSAD PENETRATION SUPPORT STEEL FRAMING - J-L - GL 29-33 - L2 - turned over to secai,Complete,CONSTRUCTION,,SUWN-5 - 30-33,DS/AD,,CONSTRUCTION,PERRY & PERRY,,,,2024-11-18 07:00,2024-11-25 17:00,2024-09-04 07:00,2024-09-06 17:00,2025-11-20 17:00,2025-11-20 17:00,2025-12-05 17:00,2025-12-05 17:00,0,50,100
PP.SUW.1460,DSAD PENETRATION SUPPORT STEEL FRAMING - J-L - GL 29-33 - L3 - turned over to secai,Complete,CONSTRUCTION,,SUWN-5 - 30-33,DS/AD,,CONSTRUCTION,PERRY & PERRY,,,,2024-11-18 07:00,2024-11-25 17:00,2024-09-05 07:00,2024-09-09 17:00,2025-11-20 17:00,2025-11-20 17:00,2025-12-05 17:00,2025-12-05 17:00,0,50,100
PP.SUW.1470,DSAD PENETRATION SUPPORT STEEL FRAMING - J-L - GL 29-33 - L4,Complete,CONSTRUCTION,,SUWN-5 - 30-33,DS/AD,,CONSTRUCTION,PERRY & PERRY,,,,2024-11-18 07:00,2024-11-25 17:00,2024-09-05 07:00,2024-09-09 17:00,2025-11-20 17:00,2025-11-20 17:00,2025-12-05 17:00,2025-12-05 17:00,0,50,100
PP.SUW.1480,SECAI - WINDOW FOR PROVIDING MEP LAYOUTS AT GRATING - J-L - GL 6-11 - L2 & L3,Complete,CONSTRUCTION,,SUWS-4 - 9-6,DS/AD,,CONSTRUCTION,,,,,2024-06-07 07:00,2024-06-14 17:00,2024-05-31 07:00,2024-06-06 17:00,2025-11-20 17:00,2025-11-20 17:00,2025-12-05 17:00,2025-12-05 17:00,0,50,100
PP.SUW.1490,SECAI - WINDOW FOR PROVIDING MEP LAYOUTS AT GRATING - J-L - GL 11-18 - L2 & L3,Complete,CONSTRUCTION,,SUWS-2 - 15-12,DS/AD,,CONSTRUCTION,,,,,2024-06-14 07:00,2024-06-21 17:00,2024-06-07 07:00,2024-06-13 17:00,2025-11-20 17:00,2025-11-20 17:00,2025-12-05 17:00,2025-12-05 17:00,0,50,100
PP.SUE.1240,SECAI - WINDOW FOR PROVIDING MEP LAYOUTS AT GRATING - C-E - GL 12-17 - L3 & L4,Complete,CONSTRUCTION,,SUES-2 - 16-13,DS/AD,,CONSTRUCTION,,,,,2024-06-07 07:00,2024-06-14 17:00,2024-05-31 07:00,2024-06-06 17:00,2025-11-20 17:00,2025-11-20 17:00,2025-10-16 07:00,2025-10-16 07:00,0,50,100
PP.SUE.1250,SECAI - WINDOW FOR PROVIDING MEP LAYOUTS AT GRATING - C-E - GL 19-26 - L3 & L4,Complete,CONSTRUCTION,,SUEN-1 - 19-22,DS/AD,,CONSTRUCTION,SECAI,,,,2024-06-28 07:00,2024-07-08 17:00,2024-06-21 07:00,2024-06-27 17:00,2025-11-20 17:00,2025-11-20 17:00,2025-10-16 07:00,2025-10-16 07:00,0,50,100
SOMDP.1010,IMPACT - CCD 310 APPROVED - PERRY & PERRY FINAL PASS - GRATING PENETRATION SUPPORT STEEL (T&M),Complete,CONSTRUCTION,,STEEL,L1 - Fndn Slab,,PRE - CON / BUYOUT / IMPACTS,,,,,2024-05-31 07:00,2024-06-06 17:00,2024-04-08 07:00,2024-05-23 17:00,2025-11-20 17:00,2025-11-20 17:00,2025-10-16 07:00,2025-10-16 07:00,0,40,100
EMB6120,IMPACT [S.TIA-16] - S_RFI 5235 - RFI REGARDING MISSING EMBED/DESIGN C29 SEQ 4701 - L3A - SECAI PREP/SUBMIT/RESPONSE,Complete,CONSTRUCTION,,SUEN-4 - 28-31,L2 - SubFab Level,,CONSTRUCTION,,,,,2024-06-07 07:00,2024-07-02 17:00,2023-09-19 07:00,2024-04-01 17:00,2025-11-20 17:00,2025-11-20 17:00,2025-10-16 07:00,2025-10-16 07:00,0,150,100
EMB6130,IMPACT [S.TIA-16] - AWAIT SECAI REPAIR & TURNOVER OF EMBED C29 - L3A,Complete,CONSTRUCTION,,SUEN-4 - 28-31,L2 - SubFab Level,,CONSTRUCTION,SECAI,,,,2024-06-07 07:00,2024-06-24 17:00,2024-04-02 07:00,2024-07-01 17:00,2025-11-20 17:00,2025-11-20 17:00,2025-10-16 07:00,2025-10-16 07:00,0,100,100
EMB1030,IMPACT [S.TIA-16] - UPDATED CALCULATIONS PREPARED & SUBMITTED TO SECAI - EMBEDS L29-L30 - L3A,Complete,CONSTRUCTION,,SUWN-4 - 27-30,DS/AD,,CONSTRUCTION,,,,,2024-06-07 07:00,2024-06-24 17:00,2024-04-15 07:00,2024-04-30 17:00,2025-11-20 17:00,2025-11-20 17:00,2025-12-04 07:00,2025-12-04 07:00,0,100,100
EMB1050,"IMPACT [S.TIA-16] - AWAIT SECAI EMBED FIX, INSTALL STEEL AND DECKING / TURNOVER TO YATES-BAKER - L29-L30 - L3A",Complete,CONSTRUCTION,,SUWN-4 - 27-30,DS/AD,,CONSTRUCTION,SECAI,,,,2024-06-07 07:00,2024-06-24 17:00,2024-05-01 07:00,2024-06-18 17:00,2025-11-20 17:00,2025-11-20 17:00,2025-12-04 07:00,2025-12-04 07:00,0,100,100
CN.SWA5.1810,IMPACT [C57] - SECAI LEAVEOUT FOR TEMP POWER / AWAIT SECAI TEMP POWER REMOVAL & TURNOVER AREA TO YATES - J-K - GL 3 - L2,Active,CONSTRUCTION,,FIZ 2 / SUWS 5  (GL6-1) - GL J - N - DATA CENTER 1,DS/AD,,CONSTRUCTION,SECAI,,,,2024-06-07 07:00,2024-06-14 17:00,2024-05-13 07:00,,2025-11-21 07:00,2025-11-21 17:00,2025-12-01 07:00,2025-12-01 17:00,10,50,0
CN.SWA5.1820,IMPACT [C57] - INSTALL BENT PLATE AT TEMP POWER LEAVEOUT - J-K - GL 3 - L2,Not Started,CONSTRUCTION,,FIZ 2 / SUWS 5  (GL6-1) - GL J - N - DATA CENTER 1,DS/AD,,CONSTRUCTION,,,,,2025-11-24 07:00,2025-11-24 07:00,,,2025-11-24 07:00,2025-11-24 07:00,2025-12-01 17:00,2025-12-01 17:00,0,0,0
CN.SWA5.1920,IMPACT [C57] - SLAB POURBACK AT TEMP POWER LEAVEOUT - J-K - GL 3 - L2,Not Started,CONSTRUCTION,,FIZ 2 / SUWS 5  (GL6-1) - GL J - N - DATA CENTER 1,DS/AD,,CONSTRUCTION,BAKER,,,,2025-11-24 07:00,2025-12-01 17:00,,,2025-11-24 07:00,2025-12-01 17:00,2025-12-02 07:00,2025-12-05 17:00,40,40,0
CN.SWA5.1070,IMPACT - BAKER PREPARE & SUBMIT REPAIR PROCEDURE TO DRILL/EPOXY ANCHOR BOLTS FOR 6 STUB COLUMNS - GL 3 - L-N - L2,Complete,CONSTRUCTION,,FIZ 2 / SUWS 5  (GL6-1) - GL J - N - DATA CENTER 1,L2 - SubFab Level,,CONSTRUCTION,,,,,2024-06-07 07:00,2024-06-14 17:00,2024-05-27 07:00,2024-06-03 17:00,2025-11-20 17:00,2025-11-20 17:00,2025-12-05 17:00,2025-12-05 17:00,0,50,100
CN.SWA5.1220,IMPACT - SECAI APPROVE REPAIR PROCEDURE TO DRILL/EPOXY ANCHOR BOLTS FOR 6 STUB COLUMNS - GL 3 - L-N - L2,Complete,CONSTRUCTION,,FIZ 2 / SUWS 5  (GL6-1) - GL J - N - DATA CENTER 1,L2 - SubFab Level,,CONSTRUCTION,SECAI,,,,2024-06-07 07:00,2024-06-24 17:00,2024-06-04 07:00,2024-08-07 17:00,2025-11-20 17:00,2025-11-20 17:00,2025-12-05 17:00,2025-12-05 17:00,0,100,100
CN.SWA5.1330,IMPACT - BAKER DRILL/EPOXY/INSTALL ANCHOR BOLTS FOR STUB COLUMNS - GL 3 - L-N - L2,Complete,CONSTRUCTION,,FIZ 2 / SUWS 5  (GL6-1) - GL J - N - DATA CENTER 1,L2 - SubFab Level,,CONSTRUCTION,BAKER,,,,2024-08-20 07:00,2024-08-26 17:00,2024-08-20 07:00,2024-08-27 17:00,2025-11-20 17:00,2025-11-20 17:00,2025-12-05 17:00,2025-12-05 17:00,0,40,100
CN.BB51.ST.2600,"COLUMNS - PRIME, INTERMEDIATE COAT & TOP COAT - L2 & L3 - GL 20-33 - J LINE- WEST",Complete,CONSTRUCTION,,B5 - Area 12 (Gridlines 30-33),L2 - SubFab Level,FAB WEST 27 - 33[6],CONSTRUCTION,CHERRY COATING,,,,2024-06-03 07:00,2024-06-18 17:00,2024-06-01 07:00,2024-06-20 17:00,2025-11-20 17:00,2025-11-20 17:00,2025-11-24 07:00,2025-11-24 07:00,0,100,100
CN.BB51.ST.2610,"COLUMNS - PRIME, INTERMEDIATE COAT & TOP COAT - L2&L3 - GL 20-3 - J LINE- WEST",Complete,CONSTRUCTION,,B5 - Area 12 (Gridlines 30-33),L2 - SubFab Level,FAB WEST 19 - 21[9],CONSTRUCTION,CHERRY COATING,,,,2024-06-04 07:00,2024-06-20 17:00,2024-06-04 07:00,2024-06-18 17:00,2025-11-20 17:00,2025-11-20 17:00,2025-11-24 07:00,2025-11-24 07:00,0,100,100
INT.P2.MW.1310,SHOP DRAWING REV1 APPROVAL REVISE & RESUBMIT - COUNTER TOPS,Complete,CONSTRUCTION,,COUNTERTOPS,MILLWORK,,PRE - CON / BUYOUT / IMPACTS,,,,,2024-05-03 07:00,2024-05-09 17:00,2024-05-03 07:00,2024-05-28 17:00,2025-11-20 17:00,2025-11-20 17:00,2025-11-20 07:00,2025-11-20 07:00,0,40,100
INT.P2.MW.1320,SHOP DRAWING REV2 PREP & SUBMIT - COUNTERTOPS (NOT SUBMITTED - CCD REQUIRED),Complete,CONSTRUCTION,,COUNTERTOPS,MILLWORK,,PRE - CON / BUYOUT / IMPACTS,SECAI,,,,2024-05-30 07:00,2024-06-04 17:00,2024-05-30 07:00,2024-06-07 17:00,2025-11-20 17:00,2025-11-20 17:00,2025-11-20 07:00,2025-11-20 07:00,0,40,100
INT.P2.MW.1330,SHOP DRAWING REV1 PREP & SUBMIT - COUNTER TOPS,Complete,CONSTRUCTION,,COUNTERTOPS,MILLWORK,,PRE - CON / BUYOUT / IMPACTS,,,,,2024-04-04 07:00,2024-04-11 17:00,2024-04-04 07:00,2024-05-02 17:00,2025-11-20 17:00,2025-11-20 17:00,2025-11-20 07:00,2025-11-20 07:00,0,40,100
CN.SEB41261,F/R/P TOPPING SLAB - ELEVATOR 19 - LU1 (RFI issued),Complete,CONSTRUCTION,,SUEN-4 - 28-31,,ELEVATOR,CONSTRUCTION,BAKER,,,,2024-11-12 07:00,2024-11-18 17:00,2024-11-08 07:00,2024-11-12 17:00,2025-11-20 17:00,2025-11-20 17:00,2025-12-03 07:00,2025-12-03 07:00,0,40,100
CN.AB.AR.6160,F/R/P TOPPING SLAB - ELEVATOR 01A - LU1,Complete,CONSTRUCTION,,FIZ 2 / SUWS 5  (GL6-1) - GL J - N - DATA CENTER 1,,ELEVATOR,CONSTRUCTION,BAKER,,,,2024-07-22 07:00,2024-07-23 17:00,2024-07-15 07:00,2024-07-18 17:00,2025-11-20 17:00,2025-11-20 17:00,2025-12-01 07:00,2025-12-01 07:00,0,20,100
CN.AB.AR.6170,F/R/P TOPPING SLAB - ELEVATOR 01 - LU1,Complete,CONSTRUCTION,,FIZ 2 / SUWS 5  (GL6-1) - GL J - N - DATA CENTER 1,,ELEVATOR,CONSTRUCTION,BAKER,,,,2024-07-26 07:00,2024-07-29 17:00,2024-07-22 07:00,2024-07-25 17:00,2025-11-20 17:00,2025-11-20 17:00,2025-12-01 07:00,2025-12-01 07:00,0,20,100
INT.DH.1300,IMPACT - CCD 346 - PREP & SUBMIT CCD - EXTERIOR DOOR FRAME CHANGE TO KEY FRAME & GASKETING FOR OVERSIZED FRAME,Complete,CONSTRUCTION,,Doors & Hardware - INTERIOR,DOORS & HARDWARE INTERIOR,,PRE - CON / BUYOUT / IMPACTS,,,,,2024-06-07 07:00,2024-06-13 17:00,2024-05-16 07:00,2024-06-04 17:00,2025-11-20 17:00,2025-11-20 17:00,2025-11-19 07:00,2025-11-19 07:00,0,40,100
INT.DH.1310,IMPACT - CCD 346 - SECAI REVIEW & REJECT CCD - SEEKING ALTERNATIVE TO MODIFIED STANDARD DOOR FRAMES,Complete,CONSTRUCTION,,Doors & Hardware - INTERIOR,DOORS & HARDWARE INTERIOR,,PRE - CON / BUYOUT / IMPACTS,,,,,2024-06-07 07:00,2024-06-24 17:00,2024-06-05 07:00,2024-06-06 17:00,2025-11-20 17:00,2025-11-20 17:00,2025-11-19 07:00,2025-11-19 07:00,0,100,100
ELEVHSS310,"IMPACT - NCR 372 - AWAIT DIRECTION FROM SECAI FOR REPAIR PROCEDURE FOR INACCESSIBLE BOLTS - ELEVATORS 3,18,20,22",Complete,CONSTRUCTION,,ELEVATORS,L1 - Fndn Slab,,PRE - CON / BUYOUT / IMPACTS,SECAI,,,,2024-06-07 07:00,2024-06-24 17:00,2024-05-29 07:00,2024-06-17 17:00,2025-11-20 17:00,2025-11-20 17:00,2025-10-16 07:00,2025-10-16 07:00,0,100,100
ELEVHSS320,"IMPACT - NCR 372 - INFINITY/WW PRICING FOR FURNISHING AND REPLACING ACCESSIBLE BOLTS - ELEVATORS 3,18,20,22",Complete,CONSTRUCTION,,ELEVATORS,L1 - Fndn Slab,,PRE - CON / BUYOUT / IMPACTS,,,,,2024-06-13 07:00,2024-06-20 17:00,2024-06-05 07:00,2024-06-11 17:00,2025-11-20 17:00,2025-11-20 17:00,2025-11-24 07:00,2025-11-24 07:00,0,50,100
ELEVHSS330,"IMPACT - NCR 372 - PREP & SUBMIT CCD FOR FURNISHING AND REPLACING ACCESSIBLE BOLTS - ELEVATORS 3,18,20,22",Complete,CONSTRUCTION,,ELEVATORS,L1 - Fndn Slab,,PRE - CON / BUYOUT / IMPACTS,SECAI,,,,2024-06-17 07:00,2024-06-24 17:00,2024-06-12 07:00,2024-06-13 17:00,2025-11-20 17:00,2025-11-20 17:00,2025-11-24 07:00,2025-11-24 07:00,0,50,100
ELEVHSS340,"IMPACT - NCR 372 - SECAI REVIEW & APPROVE CCD FOR FURNISHING AND REPLACING ACCESSIBLE BOLTS - ELEVATORS 3,18,20,22",Complete,CONSTRUCTION,,ELEVATORS,L1 - Fndn Slab,,PRE - CON / BUYOUT / IMPACTS,SECAI,,,,2024-07-02 07:00,2024-07-18 17:00,2024-06-14 07:00,2024-06-24 17:00,2025-11-20 17:00,2025-11-20 17:00,2025-11-24 07:00,2025-11-24 07:00,0,100,100
ELEVHSS350,"IMPACT - NCR 372 - FURNISH & DELIVER NEW BOLTS - ELEVATORS 3,18,20,22",Complete,CONSTRUCTION,,ELEVATORS,L1 - Fndn Slab,,PRE - CON / BUYOUT / IMPACTS,,,,,2024-06-28 07:00,2024-07-16 17:00,2024-06-25 07:00,2024-07-09 17:00,2025-11-20 17:00,2025-11-20 17:00,2025-11-24 07:00,2025-11-24 07:00,0,100,100
ELEVHSS360,"IMPACT - NCR 372 - SECAI DIRECTS YATES TO REPLACE ACCESSIBLE BOLTS AFTER ELEVATOR 20 CLEAN/PAINT - ELEVATORS 3,18,20,22",Complete,CONSTRUCTION,,ELEVATORS,L1 - Fndn Slab,,PRE - CON / BUYOUT / IMPACTS,,,,,2024-06-07 07:00,2024-06-13 17:00,2024-05-29 07:00,2024-06-04 17:00,2025-11-20 17:00,2025-11-20 17:00,2025-11-24 07:00,2025-11-24 07:00,0,40,100
CN.SEA1.8995,IMPACT - NCR 372 - REMOVE & REPLACE ACCESSIBLE BOLTS - ELEVATOR 20 - UP TO L1,Complete,CONSTRUCTION,,SUES-1 - 19-16,,ELEVATOR,CONSTRUCTION,W&W,,,,2024-07-26 07:00,2024-07-31 17:00,2024-07-10 07:00,2024-07-15 17:00,2025-11-20 17:00,2025-11-20 17:00,2025-11-24 07:00,2025-11-24 07:00,0,40,100
CN.SEA1.9005,IMPACT - NCR 372 - REPAIR INACCESSIBLE BOLTS - DENSO VOID FILLER - ELEVATOR 20 - UP TO L1,Complete,CONSTRUCTION,,SUES-1 - 19-16,,ELEVATOR,CONSTRUCTION,SECAI,,,,2024-09-20 07:00,2024-09-23 17:00,2024-09-17 07:00,2024-09-18 17:00,2025-11-20 17:00,2025-11-20 17:00,2025-10-16 07:00,2025-10-16 07:00,0,20,100
CN.SEA1.9015,IMPACT [S.TIA-147] - NCR 372 - ALPHA PAINT ALL BOLTS - ELEVATOR 20 - ALL LEVELS (REMAINDER AFTER BOLTS REPLACED),Complete,CONSTRUCTION,,SUES-1 - 19-16,,ELEVATOR,CONSTRUCTION,ALPHA,,,,2024-07-26 07:00,2024-08-02 17:00,2024-07-22 07:00,2024-07-29 17:00,2025-11-20 17:00,2025-11-20 17:00,2025-11-24 07:00,2025-11-24 07:00,0,60,100
CN.SEB3R.4740,IMPACT - MEP PIPERACK IN THE WAY - ELECTRICAL ROOM 3 - SEB3 - GL 25 - C-A - L2,Complete,CONSTRUCTION,,SUEN-3 - 25-28,L2 - SubFab Level,Electric RM 3,CONSTRUCTION,SECAI,,,,2024-04-01 07:00,2024-04-04 17:00,2024-03-01 07:00,2024-07-05 17:00,2025-11-20 17:00,2025-11-20 17:00,2025-11-19 07:00,2025-11-19 07:00,0,40,100
CN.AB.AR.4840,IMPACT - TEMP OPENING HOLDING THE WALL - GL 28-31 - C-A - L3,Complete,CONSTRUCTION,,SUEN-4 - 28-31,L3 / Waffle Slab Level,WAFER I/O RM,CONSTRUCTION,SECAI,,,,2024-05-30 07:00,2024-06-04 17:00,2024-05-30 07:00,2024-07-22 17:00,2025-11-20 17:00,2025-11-20 17:00,2025-12-01 07:00,2025-12-01 07:00,0,40,100
CN.SEB3.6830,IMPACT - ISSUE IDENTIFIED WITH BOTTOM CONNECTIONS / SURVEY/PREP/SUBMIT RFI - CLADDING STEEL GL 26-27 - D LINE (AD AREA),Complete,CONSTRUCTION,,SUEN-3 - 25-28,EXTERIOR SKIN,,CONSTRUCTION,PATRIOT,INSULATED METAL PANELS,,,2024-05-07 07:00,2024-05-10 17:00,2024-05-15 07:00,2024-06-06 17:00,2025-11-20 17:00,2025-11-20 17:00,2025-12-05 17:00,2025-12-05 17:00,0,30,100
CN.SEB3.6840,IMPACT - SECAI REVIEW & APPROVE REPAIR PROCEDURE FOR BOTTOM CONNECTIONS - CLADDING STEEL GL 26-27 - D LINE (AD AREA),Complete,CONSTRUCTION,,SUEN-3 - 25-28,EXTERIOR SKIN,,CONSTRUCTION,PATRIOT,INSULATED METAL PANELS,,,2024-06-14 07:00,2024-07-01 17:00,2024-06-07 07:00,2024-06-12 17:00,2025-11-20 17:00,2025-11-20 17:00,2025-12-05 17:00,2025-12-05 17:00,0,100,100
CN.SEB3.6850,IMPACT - COMPLETE BOTTOM CONNECTION FIX - DRILL/EPOXY - CLADDING STEEL GL 26-27 - D LINE (AD AREA),Complete,CONSTRUCTION,,SUEN-3 - 25-28,EXTERIOR SKIN,,CONSTRUCTION,PATRIOT,INSULATED METAL PANELS,,,2024-06-28 07:00,2024-07-02 17:00,2024-06-13 07:00,2024-06-14 17:00,2025-11-20 17:00,2025-11-20 17:00,2025-12-05 17:00,2025-12-05 17:00,0,30,100
CN.SEB3.6860,PAINT BOLTS - INSULATED METAL PANELS - GL 26-27 - D LINE (AD AREA),Complete,CONSTRUCTION,,SUEN-3 - 25-28,EXTERIOR SKIN,,CONSTRUCTION,ALPHA,INSULATED METAL PANELS,,,2024-06-28 07:00,2024-07-01 17:00,2024-06-17 07:00,2024-06-20 17:00,2025-11-20 17:00,2025-11-20 17:00,2025-12-05 17:00,2025-12-05 17:00,0,20,100
CN.SEA3.7040,IMPACT - Y_RFI 1367 - IDENTIFY & SURVEY ANCHOR BOLTS / PREP & SUBMIT RFI - CLADDING STEEL GL 14-3.5 - D LINE (AD AREA),Complete,CONSTRUCTION,,SUES-3 - 13-9,EXTERIOR SKIN,,CONSTRUCTION,PATRIOT,INSULATED METAL PANELS,,,2024-06-11 07:00,2024-06-27 17:00,2024-05-20 07:00,2024-06-05 17:00,2025-11-20 17:00,2025-11-20 17:00,2025-11-21 07:00,2025-11-21 07:00,0,100,100
CN.SEA3.7050,IMPACT - Y_RFI 1367 - SECAI REVIEW & APPROVE REPAIR PROCEDURE - CLADDING STEEL GL 14-3.5 - D LINE (AD AREA),Complete,CONSTRUCTION,,SUES-3 - 13-9,EXTERIOR SKIN,,CONSTRUCTION,PATRIOT,INSULATED METAL PANELS,,,2024-06-11 07:00,2024-06-27 17:00,2024-06-06 07:00,2024-06-12 17:00,2025-11-20 17:00,2025-11-20 17:00,2025-11-21 07:00,2025-11-21 07:00,0,100,100
CN.SEA3.7060,IMPACT - COMPLETE ANCHOR BOLT REPAIR - DRILL/EPOXY - CLADDING STEEL GL 14-3.5 - D LINE (AD AREA),Complete,CONSTRUCTION,,SUES-3 - 13-9,EXTERIOR SKIN,,CONSTRUCTION,PATRIOT,INSULATED METAL PANELS,,,2024-06-25 07:00,2024-07-02 17:00,2024-06-12 07:00,2024-06-13 17:00,2025-11-20 17:00,2025-11-20 17:00,2025-11-21 07:00,2025-11-21 07:00,0,50,100
CN.SEA1.9035,IMPACT - SECAI REQUESTS LEAVEOUT AREA FOR MEP ACCESS - CLADDING STEEL GL 18-19 - D LINE (AD AREA),Complete,CONSTRUCTION,,SUES-1 - 19-16,EXTERIOR SKIN,,CONSTRUCTION,PATRIOT,INSULATED METAL PANELS,,,2024-05-24 07:00,2024-05-30 17:00,2024-05-18 07:00,2024-06-06 07:00,2025-11-20 17:00,2025-11-20 17:00,2025-12-05 17:00,2025-12-05 17:00,0,30,100
CN.SEA1.9045,IMPACT - PATRIOT COMPLETE REWORK AT MEP LEAVEOUT - CLADDING STEEL GL 18-19 - D LINE (AD AREA),Complete,CONSTRUCTION,,SUES-1 - 19-16,EXTERIOR SKIN,,CONSTRUCTION,PATRIOT,INSULATED METAL PANELS,,,2024-06-14 07:00,2024-06-17 17:00,2024-06-06 07:00,2024-06-08 17:00,2025-11-20 17:00,2025-11-20 17:00,2025-12-05 17:00,2025-12-05 17:00,0,20,100
CN.SEB1.9040,IMPACT - PAINT BOLTS - INSULATED METAL PANELS - GL 20-18 - D LINE (AD AREA) [SECAI MEP LEAVEOUT AREA],Complete,CONSTRUCTION,,SUEN-1 - 19-22,EXTERIOR SKIN,,CONSTRUCTION,ALPHA,INSULATED METAL PANELS,,,2024-06-17 07:00,2024-06-21 17:00,2024-06-10 07:00,2024-06-22 17:00,2025-11-20 17:00,2025-11-20 17:00,2025-12-05 17:00,2025-12-05 17:00,0,40,100
CN.AB.AR.4900,IMPACT - ENTIRE NORTH PIT BLOCKED BY PIPE RACK - SWB-3 - L1- WASTE LIQUOR RMGL 24-27 K-N - SECAI TOOK OVER ACCELERATION,Complete,CONSTRUCTION,,SUWN-3 - 24-27,L1 - Fndn Slab,WASTE LIQUOR RM,CONSTRUCTION,SECAI,,,,2024-06-07 07:00,2024-06-13 17:00,2024-03-20 07:00,2025-06-10 17:00,2025-11-20 17:00,2025-11-20 17:00,2025-12-01 07:00,2025-12-01 07:00,0,40,100
CN.SWB5.2370,IMPACT - POURBACK AT NORTH SIDE SOMD LEAVEOUT - GL 33 - L4C - NW PENTHOUSE [DRIVEN BY CLADDING ISSUE],Complete,CONSTRUCTION,,NORTH WEST PENTHOUSE,L4 - SUP Roof - FAB Roof,,CONSTRUCTION,BAKER,,,,2024-08-19 07:00,2024-08-23 17:00,2024-08-19 07:00,2024-08-23 17:00,2025-11-20 17:00,2025-11-20 17:00,2025-11-25 07:00,2025-11-25 07:00,0,40,100
CN.SWB5.2000,IMPACT - POURBACK AT NORTH SIDE SOMD LEAVEOUT - GL 33 - L4C - NE PENTHOUSE [DRIVEN BY CLADDING ISSUE],Complete,CONSTRUCTION,,NORTH EAST PENTHOUSE,L4 - SUP Roof - FAB Roof,,CONSTRUCTION,BAKER,,,,2024-10-21 07:00,2024-10-22 17:00,2024-10-16 07:00,2024-10-17 17:00,2025-11-20 17:00,2025-11-20 17:00,2025-11-17 07:00,2025-11-17 07:00,0,20,100
CN.SEA5.8270,IMPACT - Y_SBMT#0601 - PREP & SUBMIT REPAIR PROCEDURE FOR NORTH SLAB EDGE REMOVAL - NW PENTHOUSE - L6,Complete,CONSTRUCTION,,NORTH WEST PENTHOUSE,L5 - SUP L5,,CONSTRUCTION,,,,,2024-06-07 07:00,2024-06-24 17:00,2024-04-08 07:00,2024-04-22 17:00,2025-11-20 17:00,2025-11-20 17:00,2025-11-25 07:00,2025-11-25 07:00,0,100,100
CN.SEA5.8280,IMPACT - Y_SBMT#0601 - SECAI REVIEW & APPROVE REPAIR PROCEDURE FOR NORTH SLAB EDGE REMOVAL - NW PENTHOUSE - L6,Complete,CONSTRUCTION,,NORTH WEST PENTHOUSE,L5 - SUP L5,,CONSTRUCTION,,,,,2024-06-07 07:00,2024-06-24 17:00,2024-04-23 07:00,2024-05-01 17:00,2025-11-20 17:00,2025-11-20 17:00,2025-11-25 07:00,2025-11-25 07:00,0,100,100
CN.SEA5.8290,IMPACT - CHIP NORTH SLAB EDGE FOR NEW EMBED INSTALLATION - NW PENTHOUSE - L6,Complete,CONSTRUCTION,,NORTH WEST PENTHOUSE,L5 - SUP L5,,CONSTRUCTION,,,,,2024-06-07 07:00,2024-07-02 17:00,2024-05-02 07:00,2024-05-06 17:00,2025-11-20 17:00,2025-11-20 17:00,2025-11-25 07:00,2025-11-25 07:00,0,150,100
CN.SEA5.8300,IMPACT - INSTALL NEW EMBEDS AT NORTH SLAB EDGE - NW PENTHOUSE - L6,Complete,CONSTRUCTION,,NORTH WEST PENTHOUSE,L5 - SUP L5,,CONSTRUCTION,SECAI,,,,2024-08-09 07:00,2024-09-03 17:00,2024-07-29 07:00,2024-08-04 17:00,2025-11-20 17:00,2025-11-20 17:00,2025-11-25 07:00,2025-11-25 07:00,0,150,100
CN.SEA5.8310,IMPACT - SOMD POURBACK AT NORTH SLAB EDGE - NW PENTHOUSE - L6,Complete,CONSTRUCTION,,NORTH WEST PENTHOUSE,L5 - SUP L5,,CONSTRUCTION,BAKER,,,,2024-08-19 07:00,2024-08-23 17:00,2024-08-19 07:00,2024-08-23 17:00,2025-11-20 17:00,2025-11-20 17:00,2025-11-25 07:00,2025-11-25 07:00,0,40,100
CN.BB51.ST.2620,IMPACT - CCD 170 (GL 33 CMP PACKAGE) - PREP/SUBMIT PRODUCT DATA - CORRUGATED METAL PANELS,Complete,CONSTRUCTION,,GRIDLINE 33,,GL 33 PROCUREMENT ITEMS,CONSTRUCTION,KOVACH,,,,2024-04-22 07:00,2024-05-06 17:00,2024-04-01 07:00,2024-04-08 17:00,2025-11-20 17:00,2025-11-20 17:00,2025-11-03 07:00,2025-11-03 07:00,0,100,100
CN.BB51.ST.2630,IMPACT - CCD 170 (GL 33 CMP PACKAGE) - SECAI PRODUCT DATA APPROVAL - CORRUGATED METAL PANELS,Complete,CONSTRUCTION,,GRIDLINE 33,,GL 33 PROCUREMENT ITEMS,CONSTRUCTION,KOVACH,,,,2024-04-22 07:00,2024-05-06 17:00,2024-04-09 07:00,2024-04-18 17:00,2025-11-20 17:00,2025-11-20 17:00,2025-11-03 07:00,2025-11-03 07:00,0,100,100
CN.BB51.ST.2640,IMPACT - CCD 170 (GL 33 CMP PACKAGE) - SECAI SHOP DRAWING APPROVAL - CORRUGATED METAL PANELS,Complete,CONSTRUCTION,,GRIDLINE 33,,GL 33 PROCUREMENT ITEMS,CONSTRUCTION,KOVACH,,,,2024-04-22 07:00,2024-05-06 17:00,2024-05-14 07:00,2024-06-14 17:00,2025-11-20 17:00,2025-11-20 17:00,2025-11-03 07:00,2025-11-03 07:00,0,100,100
CN.SEA5.9905,IMPACT - REMEDY - ON HOLD BY SECAI - SEA5 - DATA CENTER 2 - GL G-N - L2 -3-5,Complete,CONSTRUCTION,,FIZ1 (West Inner) GL J-G - DATA CENTER 2,L2 - SubFab Level,DATA CENTER 2,CONSTRUCTION,SECAI,,,,2024-05-20 07:00,2024-05-24 17:00,2024-05-20 07:00,2024-09-10 17:00,2025-11-20 17:00,2025-11-20 17:00,2025-10-21 07:00,2025-10-21 07:00,0,40,100
CN.SEB1.9050,IMPACT - Y_RFI 1352 - YATES/SECAI FIELD COORDINATION FOR ALTERNATE CLADDING STEEL SOLUTION - GL 19 - C/D/K/L,Complete,CONSTRUCTION,,SUEN-1 - 19-22,EXTERIOR SKIN,,CONSTRUCTION,SECAI,,,,2024-06-07 07:00,2024-06-24 17:00,2024-06-05 07:00,2024-06-13 17:00,2025-11-20 17:00,2025-11-20 17:00,2025-12-05 07:00,2025-12-05 07:00,0,100,100
CN.SEB1.9070,IMPACT - Y_RFI 1352 - SECAI/JACOBS/YATES AGREE ON ALTERNATIVE CLADDING SOLUTION - GL 19 - C/D/K/L,Complete,CONSTRUCTION,,SUEN-1 - 19-22,EXTERIOR SKIN,,CONSTRUCTION,SECAI,,,,2024-06-21 07:00,2024-06-21 17:00,2024-06-13 07:00,2024-06-13 17:00,2025-11-20 17:00,2025-11-20 17:00,2025-12-05 07:00,2025-12-05 07:00,0,10,100
CN.SEB1.9080,IMPACT - INSTALL ADDITIONAL CLADDING STEEL AT EXPANSION JOINT - GL 19.5-18.5 - D LINE (AD AREA),Complete,CONSTRUCTION,,SUEN-1 - 19-22,EXTERIOR SKIN,,CONSTRUCTION,PATRIOT,INSULATED METAL PANELS,,,2024-08-30 07:00,2024-09-16 17:00,2024-08-20 07:00,2024-08-27 17:00,2025-11-20 17:00,2025-11-20 17:00,2025-12-05 17:00,2025-12-05 17:00,0,100,100
CN.SEB1.9090,IMPACT - ALPHA PAINT ADDITIONAL CLADDING - GL 19.5-18.5 - D LINE (AD AREA),Complete,CONSTRUCTION,,SUEN-1 - 19-22,EXTERIOR SKIN,,CONSTRUCTION,ALPHA,INSULATED METAL PANELS,,,2024-09-13 07:00,2024-09-20 17:00,2024-09-03 07:00,2024-09-10 17:00,2025-11-20 17:00,2025-11-20 17:00,2025-12-05 17:00,2025-12-05 17:00,0,50,100
CN.SEB1.9110,IMPACT - INSTALL ADDITIONAL CLADDING STEEL AT EXPANSION JOINT - GL 19.5-18.5 - K LINE (AD AREA),Complete,CONSTRUCTION,,SUWN-1 - 18-21,EXTERIOR SKIN,,CONSTRUCTION,PATRIOT,INSULATED METAL PANELS,,,2024-08-29 07:00,2024-09-05 17:00,2024-08-13 07:00,2024-08-22 07:00,2025-11-20 17:00,2025-11-20 17:00,2025-12-05 17:00,2025-12-05 17:00,0,50,100
CN.SEB1.9120,IMPACT - ALPHA PAINT ADDITIONAL CLADDING - GL 19.5-18.5 - K LINE (AD AREA),Complete,CONSTRUCTION,,SUWN-1 - 18-21,EXTERIOR SKIN,,CONSTRUCTION,ALPHA,INSULATED METAL PANELS,,,2024-09-03 07:00,2024-09-04 17:00,2024-08-23 07:00,2024-08-27 17:00,2025-11-20 17:00,2025-11-20 17:00,2025-12-05 17:00,2025-12-05 17:00,0,20,100
CN.SEB1.9130,IMPACT - INSTALL ADDITIONAL CLADDING STEEL AT EXPANSION JOINT - GL 19.5-18.5 - L LINE (DS AREA),Complete,CONSTRUCTION,,SUWN-1 - 18-21,EXTERIOR SKIN,,CONSTRUCTION,PATRIOT,INSULATED METAL PANELS,,,2024-08-29 07:00,2024-09-05 17:00,2024-08-20 07:00,2024-09-11 17:00,2025-11-20 17:00,2025-11-20 17:00,2025-12-05 07:00,2025-12-05 07:00,0,50,100
CN.SEB1.9140,IMPACT - ALPHA PAINT ADDITIONAL CLADDING - GL 19.5-18.5 - L LINE (DS AREA),Complete,CONSTRUCTION,,SUWN-1 - 18-21,EXTERIOR SKIN,,CONSTRUCTION,ALPHA,INSULATED METAL PANELS,,,2024-09-23 07:00,2024-09-24 17:00,2024-09-12 00:00,2024-11-16 14:00,2025-11-20 17:00,2025-11-20 17:00,2025-12-05 07:00,2025-12-05 07:00,0,20,100
CN.SEB1.9150,IMPACT - CCD XXX - SECAI REVIEW & APPROVE CCD - EXP JOINT ISSUE - GL 19 - C/D/K/L,Complete,CONSTRUCTION,,SUEN-1 - 19-22,EXTERIOR SKIN,,CONSTRUCTION,SECAI,,,,2024-07-19 07:00,2024-07-25 17:00,2024-07-12 07:00,2024-07-24 17:00,2025-11-20 17:00,2025-11-20 17:00,2025-12-05 17:00,2025-12-05 17:00,0,50,100
CN.SWA5.9260,IMPACT - RAIN WATER FILLED PIT / WORK ON HOLD UNTIL DEWATERED & DRY - ELEVATOR 01A,Complete,CONSTRUCTION,,FIZ 2 / SUWS 5  (GL6-1) - GL J - N - DATA CENTER 1,,ELEVATOR,CONSTRUCTION,,,,,2024-05-17 07:00,2024-05-23 17:00,2024-06-11 07:00,2024-06-12 17:00,2025-11-20 17:00,2025-11-20 17:00,2025-12-01 07:00,2025-12-01 07:00,0,40,100
CN.SWA5..1680,IMPACT - RAIN WATER FILLED PIT / WORK ON HOLD UNTIL DEWATERED & DRY - ELEVATOR 01,Complete,CONSTRUCTION,,FIZ 2 / SUWS 5  (GL6-1) - GL J - N - DATA CENTER 1,,ELEVATOR,CONSTRUCTION,,,,,2024-06-21 07:00,2024-07-01 17:00,2024-06-11 07:00,2024-06-12 17:00,2025-11-20 17:00,2025-11-20 17:00,2025-12-01 07:00,2025-12-01 07:00,0,60,100
CN.SWA5..1690,IMPACT - RAIN WATER FILLED PIT / WORK ON HOLD UNTIL DEWATERED & DRY - ELEVATOR 01B,Complete,CONSTRUCTION,,FIZ 2 / SUWS 5  (GL6-1) - GL J - N - DATA CENTER 1,,ELEVATOR,CONSTRUCTION,,,,,2024-06-20 07:00,2024-06-27 17:00,2024-06-11 07:00,2024-06-12 17:00,2025-11-20 17:00,2025-11-20 17:00,2025-12-01 07:00,2025-12-01 07:00,0,50,100
CN.SWA5..1700,IMPACT - INFINITY PRICING FOR SAWCUT SOMD - ELEVATOR 01B - L2 & L3,Complete,CONSTRUCTION,,FIZ 2 / SUWS 5  (GL6-1) - GL J - N - DATA CENTER 1,,ELEVATOR,CONSTRUCTION,SECAI,,,,2024-06-20 07:00,2024-06-27 17:00,2024-06-11 07:00,2024-06-13 17:00,2025-11-20 17:00,2025-11-20 17:00,2025-12-01 07:00,2025-12-01 07:00,0,50,100
CN.SEB5.8960,IMPACT - LOADING DECK & STAGED MATERIALS INTERFERING WITH WW WORK AREA FOR ADDED STEEL - GL 32-33 - D-E - L4,Complete,CONSTRUCTION,,SUEN-5 - 31-33,DS/AD,,CONSTRUCTION,W&W,,,,2024-05-17 07:00,2024-06-04 17:00,2024-05-01 07:00,2024-07-31 17:00,2025-11-20 17:00,2025-11-20 17:00,2025-12-05 17:00,2025-12-05 17:00,0,100,100
CN.SWA5.9270,IMPACT - Y_RFI 1372 - IDENTIFY/PREP/SUBMIT RFI FOR ANCHOR BOLT EMBEDMENT ISSUE & PROPOSED FIX - ELEVATOR 01A,Complete,CONSTRUCTION,,FIZ 2 / SUWS 5  (GL6-1) - GL J - N - DATA CENTER 1,,ELEVATOR,CONSTRUCTION,,,,,2024-05-17 07:00,2024-05-23 17:00,2024-06-07 07:00,2024-06-11 17:00,2025-11-20 17:00,2025-11-20 17:00,2025-12-01 07:00,2025-12-01 07:00,0,40,100
CN.SWA5.9280,IMPACT - Y_RFI 1372 - SECAI REVIEW ANCHOR BOLT EMBEDMENT ISSUE & APPROVE PROPOSED FIX - ELEVATOR 01A,Complete,CONSTRUCTION,,FIZ 2 / SUWS 5  (GL6-1) - GL J - N - DATA CENTER 1,,ELEVATOR,CONSTRUCTION,SECAI,,,,2024-05-17 07:00,2024-06-04 17:00,2024-06-12 07:00,2024-06-24 17:00,2025-11-20 17:00,2025-11-20 17:00,2025-12-01 07:00,2025-12-01 07:00,0,100,100
CN.SEA5.9915,IMPACT - SCAFFOLDING IN THE WAY - GL 4-3 - D LINE - L3,Complete,CONSTRUCTION,,SUES-5 - 6-1 - FIZ - GL A -E,L3 / Waffle Slab Level,DS/AD INTERIORS,CONSTRUCTION,SECAI,,,,2024-04-18 07:00,2024-04-23 17:00,2024-04-18 07:00,2024-06-14 17:00,2025-11-20 17:00,2025-11-20 17:00,2025-06-13 08:00,2025-06-13 08:00,0,40,100
CN.SWB5.4260,IMPACT - SCT-TFAB1-LT-0428 - SECAI ISSUES NOTICE OF DELAY - GIRDER MISSING PIPERACK INSERT - GL 31-32 - M LINE,Complete,CONSTRUCTION,,SUWN-5 - 30-33,L1 - Fndn Slab,,CONSTRUCTION,,,,,2024-06-14 07:00,2024-06-14 17:00,2024-06-05 07:00,2024-06-05 17:00,2025-11-20 17:00,2025-11-20 17:00,2025-12-05 17:00,2025-12-05 17:00,0,10,100
CN.SWB5.4270,IMPACT - YATES/WW DESIGN COORDINATION & CONFIRMATION OF PIPERACK LOCATION - GL 31-32 - M LINE - L1 CEILING,Complete,CONSTRUCTION,,SUWN-5 - 30-33,L1 - Fndn Slab,,CONSTRUCTION,,,,,2024-06-14 07:00,2024-06-20 17:00,2024-06-06 07:00,2024-06-12 17:00,2025-11-20 17:00,2025-11-20 17:00,2025-12-05 17:00,2025-12-05 17:00,0,40,100
CN.SWB5.4280,IMPACT - YATES DEMO CONFLICTING FRAMING AT GIRDER MISSING PIPERACK INSERT - GL 31-32 - M LINE - L1,Complete,CONSTRUCTION,,SUWN-5 - 30-33,L1 - Fndn Slab,,CONSTRUCTION,,,,,2024-06-14 07:00,2024-06-14 17:00,2024-06-13 07:00,2024-06-13 17:00,2025-11-20 17:00,2025-11-20 17:00,2025-12-05 17:00,2025-12-05 17:00,0,10,100
CN.SWB5.4290,IMPACT - SNS SCAN & FIELD MEASURE FOR POST-INSTALL GIRDER SADDLE FOR PIPERACK - GL 31-32 - M LINE - L1 CEILING,Complete,CONSTRUCTION,,SUWN-5 - 30-33,L1 - Fndn Slab,,CONSTRUCTION,SECAI,,,,2024-06-28 07:00,2024-06-28 17:00,2024-06-14 07:00,2024-06-14 17:00,2025-11-20 17:00,2025-11-20 17:00,2025-12-05 17:00,2025-12-05 17:00,0,10,100
CN.SWB5.4300,IMPACT - SNS FABRICATE & DELIVER GIRDER SADDLE - GL 31-32 - M LINE - L1 CEILING,Complete,CONSTRUCTION,,SUWN-5 - 30-33,L1 - Fndn Slab,,CONSTRUCTION,SECAI,,,,2024-07-01 07:00,2024-07-17 17:00,2024-06-15 07:00,2024-06-27 17:00,2025-11-20 17:00,2025-11-20 17:00,2025-12-05 17:00,2025-12-05 17:00,0,100,100
CN.SWB5.4310,IMPACT - SNS INSTALL GIRDER SADDLE / TURNOVER TO SECAI FOR PIPERACK INSTALL - GL 31-32 - M LINE - L1 CEILING,Complete,CONSTRUCTION,,SUWN-5 - 30-33,L1 - Fndn Slab,,CONSTRUCTION,SECAI,,,,2024-07-12 07:00,2024-07-18 17:00,2024-06-28 07:00,2024-07-02 17:00,2025-11-20 17:00,2025-11-20 17:00,2025-12-05 17:00,2025-12-05 17:00,0,50,100
INT.DH.1320,IMPACT - CCD 346 - Y_RFI 1377 - YATES PREP & SUBMIT RFI FOR EXTERIOR DOOR FRAME SPEC CLARIFICATION,Complete,CONSTRUCTION,,Doors & Hardware - INTERIOR,DOORS & HARDWARE INTERIOR,,PRE - CON / BUYOUT / IMPACTS,,,,,2024-06-20 07:00,2024-06-25 17:00,2024-06-07 07:00,2024-06-13 17:00,2025-11-20 17:00,2025-11-20 17:00,2025-11-19 07:00,2025-11-19 07:00,0,40,100
INT.DH.1330,IMPACT - CCD 346 - Y_RFI 1377 - SECAI REVIEW & RESPOND/SIGN RFI FOR EXTERIOR DOOR FRAME SPEC CLARIFICATION,Complete,CONSTRUCTION,,Doors & Hardware - INTERIOR,DOORS & HARDWARE INTERIOR,,PRE - CON / BUYOUT / IMPACTS,SECAI,,,,2024-06-28 07:00,2024-07-16 17:00,2024-06-14 07:00,2024-06-27 17:00,2025-11-20 17:00,2025-11-20 17:00,2025-11-19 07:00,2025-11-19 07:00,0,100,100
CN.AB.AR.5620,IMPACT [S42] - WOOD CRATES & NEW BRANDSAFWAY SCAFFOLD ERRECTED IN AREA - GAS PURIFIER ROOM - GL 9-10 - M-N - L2,Complete,CONSTRUCTION,,SUWS-3 - 12-9,L2 - SubFab Level,ELECTRIC RM 1,CONSTRUCTION,,,,,2024-06-14 07:00,2024-06-14 17:00,2024-06-11 07:00,2024-06-11 17:00,2025-11-20 17:00,2025-11-20 17:00,2025-12-05 07:00,2025-12-05 07:00,0,10,100
CN.AB.AR.5630,IMPACT [S42] - SECAI REQUESTS YATES SUBMIT CCD - BRANDSAFWAY TO MODIFY SCAFFOLD - GAS PURIFIER ROOM - GL 9-10 - M-N - L2,Complete,CONSTRUCTION,,SUWS-3 - 12-9,L2 - SubFab Level,ELECTRIC RM 1,CONSTRUCTION,,,,,2024-06-14 07:00,2024-06-14 17:00,2024-06-11 07:00,2024-06-11 17:00,2025-11-20 17:00,2025-11-20 17:00,2025-12-05 07:00,2025-12-05 07:00,0,10,100
CN.AB.AR.5980,IMPACT [S42] - BRANDSAFWAY MODIFY SCAFFOLD / TURNOVER TO WW FOR STEEL INSTALL - GAS PURIFIER ROOM - GL 9-10 - M-N - L2,Complete,CONSTRUCTION,,SUWS-3 - 12-9,L2 - SubFab Level,ELECTRIC RM 1,CONSTRUCTION,,,,,2024-09-03 07:00,2024-09-10 17:00,2024-06-12 07:00,2024-07-19 17:00,2025-11-20 17:00,2025-11-20 17:00,2025-12-05 07:00,2025-12-05 07:00,0,60,100
CN.SWB54560,IMPACT [S42] - EXISTING SECAI SCAFFOLD REMOVED / SECAI REQUESTS NEW YATES SCAFFOLD BE ERECTED - GL 30-31 - M-N - L2,Complete,CONSTRUCTION,,SUWN-5 - 30-33,L2 - SubFab Level,GCS STORAGE,CONSTRUCTION,,,,,2024-06-14 07:00,2024-06-20 17:00,2024-06-10 07:00,2024-06-10 17:00,2025-11-20 17:00,2025-11-20 17:00,2025-12-05 17:00,2025-12-05 17:00,0,40,100
CN.SEA5.1240,INSTALL/INSPECT EDGE OF SLAB - GL 9-13 - C LINE (DS AREA) - L6,Complete,CONSTRUCTION,,SUES-3 - 13-9,EXTERIOR SKIN,,CONSTRUCTION,BERG,,,,2024-07-15 07:00,2024-07-19 17:00,2024-07-10 07:00,2024-07-30 17:00,2025-11-20 17:00,2025-11-20 17:00,2025-12-05 17:00,2025-12-05 17:00,0,50,100
CN.SEB1.1210,INSTALL/INSPECT EDGE OF SLAB - GL 19.5-22 - C LINE (DS AREA) - L6,Complete,CONSTRUCTION,,SUEN-1 - 19-22,EXTERIOR SKIN,,CONSTRUCTION,BERG,,,,2024-07-15 07:00,2024-07-19 17:00,2024-07-10 07:00,2024-07-30 17:00,2025-11-20 17:00,2025-11-20 17:00,2025-12-05 17:00,2025-12-05 17:00,0,50,100
CN.SEB1.9180,INSTALL/INSPECT EDGE OF SLAB - GL 28-31 - C LINE (DS AREA) - L6,Complete,CONSTRUCTION,,SUEN-4 - 28-31,EXTERIOR SKIN,,CONSTRUCTION,BERG,,,,2024-06-24 07:00,2024-07-05 17:00,2024-06-24 07:00,2024-07-30 17:00,2025-11-20 17:00,2025-11-20 17:00,2025-12-05 17:00,2025-12-05 17:00,0,70,100
CN.SEB1.9190,INSTALL/INSPECT EDGE OF SLAB - GL 21-24 - L LINE (DS AREA) - L6,Complete,CONSTRUCTION,,SUWN-2 - 21-24,EXTERIOR SKIN,,CONSTRUCTION,BERG,,,,2024-06-24 07:00,2024-07-05 17:00,2024-06-24 07:00,2024-07-30 17:00,2025-11-20 17:00,2025-11-20 17:00,2025-11-25 07:00,2025-11-25 07:00,0,70,100
CN.SEB1.9200,INSTALL/INSPECT EDGE OF SLAB - GL 12-15 - L LINE (DS AREA) - L6,Complete,CONSTRUCTION,,SUWS-2 - 15-12,EXTERIOR SKIN,,CONSTRUCTION,BERG,,,,2024-07-17 07:00,2024-07-23 17:00,2024-07-17 07:00,2024-07-30 17:00,2025-11-20 17:00,2025-11-20 17:00,2025-11-25 07:00,2025-11-25 07:00,0,50,100
CN.SEB1.9210,INSTALL/INSPECT EDGE OF SLAB - GL 5-6 - L LINE (DS AREA) - L6,Complete,CONSTRUCTION,,FIZ 2 / SUWS 5  (GL6-1) - GL J - N - DATA CENTER 1,EXTERIOR SKIN,,CONSTRUCTION,BERG,,,,2024-07-22 07:00,2024-07-26 17:00,2024-07-22 07:00,2024-07-26 17:00,2025-11-20 17:00,2025-11-20 17:00,2025-11-25 07:00,2025-11-25 07:00,0,50,100
CN.SEB1.9220,INSTALL/INSPECT EDGE OF SLAB - GL 3-6 - K LINE (AD AREA) - L6,Complete,CONSTRUCTION,,FIZ 2 / SUWS 5  (GL6-1) - GL J - N - DATA CENTER 1,EXTERIOR SKIN,,CONSTRUCTION,BERG,,,,2024-07-12 07:00,2024-07-18 17:00,2024-07-12 07:00,2024-07-30 17:00,2025-11-20 17:00,2025-11-20 17:00,2025-11-25 07:00,2025-11-25 07:00,0,50,100
CN.SEB1.9230,INSTALL/INSPECT EDGE OF SLAB BOTTOM PLATE & PLYWOOD CAP - GL 1-3 - N LINE (SUPPORT EXTERIOR AREA) - L4,Complete,CONSTRUCTION,,FIZ 2 / SUWS 5  (GL6-1) - GL J - N - DATA CENTER 1,EXTERIOR SKIN,,CONSTRUCTION,BERG,,,,2024-09-30 07:00,2024-10-22 17:00,2024-09-17 07:00,2024-10-19 17:00,2025-11-20 17:00,2025-11-20 17:00,2025-12-05 17:00,2025-12-05 17:00,0,140,100
CN.SEA5.9945,INSTALL/INSPECT EDGE OF SLAB - GL 3-6 - D LINE (AD AREA) - L6,Complete,CONSTRUCTION,,SUES-5 - 6-1 - FIZ - GL A -E,EXTERIOR SKIN,,CONSTRUCTION,BERG,,,,2024-07-17 07:00,2024-07-23 17:00,2024-07-17 07:00,2024-07-30 17:00,2025-11-20 17:00,2025-11-20 17:00,2025-12-05 17:00,2025-12-05 17:00,0,50,100
CN.SEA5.9955,INSTALL/INSPECT EDGE OF SLAB BOTTOM PLATE &  PLYWOOD CAP  - GL 9-13 - A LINE (SUPPORT EXTERIOR AREA) - L4,Complete,CONSTRUCTION,,SUES-3 - 13-9,EXTERIOR SKIN,,CONSTRUCTION,BERG,,,,2024-07-15 07:00,2024-07-23 17:00,2024-07-15 07:00,2024-08-16 17:00,2025-11-20 17:00,2025-11-20 17:00,2025-12-05 17:00,2025-12-05 17:00,0,70,100
CN.SEB1.9240,INSTALL/INSPECT EDGE OF SLAB - GL 19.5-22 - D LINE (AD AREA) - L6,Complete,CONSTRUCTION,,SUEN-1 - 19-22,EXTERIOR SKIN,,CONSTRUCTION,BERG,,,,2024-07-15 07:00,2024-07-19 17:00,2024-07-10 07:00,2024-07-30 17:00,2025-11-20 17:00,2025-11-20 17:00,2025-12-05 17:00,2025-12-05 17:00,0,50,100
CN.SEB1.9250,INSTALL/INSPECT EDGE OF SLAB BOTTOM PLATE &  PLYWOOD CAP  - GL 19-22 - A LINE (SUPPORT EXTERIOR AREA) - L4,Complete,CONSTRUCTION,,SUEN-1 - 19-22,EXTERIOR SKIN,,CONSTRUCTION,BERG,,,,2024-07-09 07:00,2024-07-18 17:00,2024-07-09 07:00,2024-08-16 07:00,2025-11-20 17:00,2025-11-20 17:00,2025-12-05 17:00,2025-12-05 17:00,0,70,100
CN.SEB1.9260,INSTALL/INSPECT EDGE OF SLAB - GL 28-31 - D LINE (AD AREA) - L6,Complete,CONSTRUCTION,,SUEN-4 - 28-31,EXTERIOR SKIN,,CONSTRUCTION,BERG,,,,2024-07-15 07:00,2024-08-01 17:00,2024-07-02 07:00,2024-07-30 17:00,2025-11-20 17:00,2025-11-20 17:00,2025-12-05 17:00,2025-12-05 17:00,0,140,100
CN.SEB1.9270,INSTALL/INSPECT EDGE OF SLAB BOTTOM PLATE &  PLYWOOD CAP  - GL 28-31 - A LINE (SUPPORT EXTERIOR AREA) - L4,Complete,CONSTRUCTION,,SUEN-4 - 28-31,EXTERIOR SKIN,,CONSTRUCTION,BERG,,,,2024-07-08 07:00,2024-07-17 17:00,2024-07-02 07:00,2024-10-18 07:00,2025-11-20 17:00,2025-11-20 17:00,2025-12-03 07:00,2025-12-03 07:00,0,70,100
CN.SEB1.9280,INSTALL/INSPECT EDGE OF SLAB - GL 12-15 - K LINE (AD AREA) - L6,Complete,CONSTRUCTION,,SUWS-2 - 15-12,EXTERIOR SKIN,,CONSTRUCTION,BERG,,,,2024-07-17 07:00,2024-07-23 17:00,2024-07-01 07:00,2024-07-30 17:00,2025-11-20 17:00,2025-11-20 17:00,2025-11-25 07:00,2025-11-25 07:00,0,50,100
CN.SEB1.9290,INSTALL/INSPECT EDGE OF SLAB BOTTOM PLATE & PLYWOOD CAP - GL 12-15 - N LINE (SUPPORT EXTERIOR AREA) - L4,Complete,CONSTRUCTION,,SUWS-2 - 15-12,EXTERIOR SKIN,,CONSTRUCTION,BERG,,,,2024-09-06 07:00,2024-09-30 17:00,2024-07-11 07:00,2024-07-19 17:00,2025-11-20 17:00,2025-11-20 17:00,2025-12-05 17:00,2025-12-05 17:00,0,140,100
CN.SEB1.9300,INSTALL/INSPECT EDGE OF SLAB - GL 21-24 - K LINE (AD AREA) - L6,Complete,CONSTRUCTION,,SUWN-2 - 21-24,EXTERIOR SKIN,,CONSTRUCTION,BERG,,,,2024-06-24 07:00,2024-07-01 17:00,2024-06-24 07:00,2024-07-30 17:00,2025-11-20 17:00,2025-11-20 17:00,2025-11-25 07:00,2025-11-25 07:00,0,50,100
CN.SEB1.9310,INSTALL/INSPECT EDGE OF SLAB BOTTOM PLATE &  PLYWOOD CAP  - GL 21-24 - N LINE (SUPPORT EXTERIOR AREA) - L4,Complete,CONSTRUCTION,,SUWN-2 - 21-24,EXTERIOR SKIN,,CONSTRUCTION,BERG,,,,2024-08-30 07:00,2024-09-23 17:00,2024-07-11 07:00,2024-07-18 17:00,2025-11-20 17:00,2025-11-20 17:00,2025-12-05 17:00,2025-12-05 17:00,0,140,100
CN.SWA5..1710,IMPACT - Y_RFI 1373 - PREP/SUBMIT RFI WITH PROPOSED CONNECTION FIX AT L4 SHEAR TABS - ELEVATOR 01,Complete,CONSTRUCTION,,FIZ 2 / SUWS 5  (GL6-1) - GL J - N - DATA CENTER 1,,ELEVATOR,CONSTRUCTION,,,,,2024-06-07 07:00,2024-06-24 17:00,2024-06-05 07:00,2024-06-11 17:00,2025-11-20 17:00,2025-11-20 17:00,2025-12-01 07:00,2025-12-01 07:00,0,100,100
CN.SWA5..1720,IMPACT - Y_RFI 1373 - SECAI APPROVAL OF CONNECTION FIX / DIRECT YATES TO PROCEED WITH L4 CONNECTION - ELEVATOR 01,Complete,CONSTRUCTION,,FIZ 2 / SUWS 5  (GL6-1) - GL J - N - DATA CENTER 1,,ELEVATOR,CONSTRUCTION,SECAI,,,,2024-06-07 07:00,2024-06-24 17:00,2024-06-12 07:00,2024-06-24 17:00,2025-11-20 17:00,2025-11-20 17:00,2025-12-01 07:00,2025-12-01 07:00,0,100,100
CN.SWA5..1730,IMPACT - WW COMPLETE L4 SHEAR TAB CONNECTION - ELEVATOR 01,Complete,CONSTRUCTION,,FIZ 2 / SUWS 5  (GL6-1) - GL J - N - DATA CENTER 1,,ELEVATOR,CONSTRUCTION,W&W,,,,2024-07-09 07:00,2024-07-17 17:00,2024-06-25 07:00,2024-07-01 17:00,2025-11-20 17:00,2025-11-20 17:00,2025-12-01 07:00,2025-12-01 07:00,0,60,100
CN.SEB2.6310,FRAMING CORRECTIONS & INSPECTIONS - GL 12-29 - E LINE (AD AREA),Complete,CONSTRUCTION,,SUEN-2 - 22-25,DS/AD,,CONSTRUCTION,BERG,,,,2024-05-06 07:00,2024-05-07 17:00,2024-06-06 07:00,2024-06-10 17:00,2025-11-20 17:00,2025-11-20 17:00,2025-11-21 07:00,2025-11-21 07:00,0,20,100
CN.SEA4.6650,FRAMING CORRECTIONS & INSPECTIONS - GL 3-12 - E LINE (AD AREA),Complete,CONSTRUCTION,,SUES-4 - 9-6,DS/AD,,CONSTRUCTION,BERG,,,,2024-05-06 07:00,2024-05-07 17:00,2024-06-11 07:00,2024-06-17 17:00,2025-11-20 17:00,2025-11-20 17:00,2025-11-21 07:00,2025-11-21 07:00,0,20,100
CN.SEA5.9965,INSTALL EDGE OF SLAB - GL 3-13 - A LINE (SUPPORT EXTERIOR AREA) - L3,Active,CONSTRUCTION,,SUES-3 - 13-9,EXTERIOR SKIN,,CONSTRUCTION,BERG,,,,2024-08-09 07:00,2024-08-26 17:00,2024-08-01 07:00,,2025-11-21 07:00,2025-11-21 17:00,2025-12-05 07:00,2025-12-05 17:00,10,100,0
CN.SEB1.9320,INSTALL EDGE OF SLAB - GL 13-22 (19-24) - A LINE (SUPPORT EXTERIOR AREA) - L3,Active,CONSTRUCTION,,SUEN-1 - 19-22,EXTERIOR SKIN,,CONSTRUCTION,BERG,,,,2024-08-29 07:00,2024-09-13 17:00,2024-08-01 07:00,,2025-11-21 07:00,2025-11-21 17:00,2025-12-05 07:00,2025-12-05 17:00,10,100,0
CN.SEB1.9330,INSTALL EDGE OF SLAB - GL 22-31 - A LINE (SUPPORT EXTERIOR AREA) - L3,Complete,CONSTRUCTION,,SUEN-4 - 28-31,EXTERIOR SKIN,WAFER I/O RM,CONSTRUCTION,BERG,,,,2024-07-16 07:00,2024-07-29 17:00,2024-07-18 07:00,2024-08-01 17:00,2025-11-20 17:00,2025-11-20 17:00,2025-12-01 07:00,2025-12-01 07:00,0,100,100
CN.SEB1.9340,INSTALL EDGE OF SLAB - GL 3-12 - N LINE (SUPPORT EXTERIOR AREA) - L3,Active,CONSTRUCTION,,FIZ 2 / SUWS 5  (GL6-1) - GL J - N - DATA CENTER 1,EXTERIOR SKIN,SUB CLEAN RM,CONSTRUCTION,BERG,,,,2024-08-09 07:00,2024-08-26 17:00,2024-07-22 07:00,,2025-11-21 07:00,2025-11-21 17:00,2025-12-05 07:00,2025-12-05 17:00,10,100,0
CN.SEB1.9350,INSTALL EDGE OF SLAB - GL 12-21 - N LINE (SUPPORT EXTERIOR AREA) - L3,Not Started,CONSTRUCTION,,SUWS-2 - 15-12,EXTERIOR SKIN,,CONSTRUCTION,BERG,,,,2025-11-21 07:00,2025-11-21 17:00,,,2025-11-21 07:00,2025-11-21 17:00,2025-12-05 07:00,2025-12-05 17:00,10,10,0
CN.SEB1.9360,INSTALL EDGE OF SLAB - GL 21-31 - N LINE (SUPPORT EXTERIOR AREA) - L3,Not Started,CONSTRUCTION,,SUWN-2 - 21-24,EXTERIOR SKIN,,CONSTRUCTION,BERG,,,,2025-11-21 07:00,2025-11-21 17:00,,,2025-11-21 07:00,2025-11-21 17:00,2025-12-05 07:00,2025-12-05 17:00,10,10,0
CN.SEA5.9975,TOPPING SLAB - GL 19-7 A LINE - L4 ROOF,Complete,CONSTRUCTION,,SUES-3 - 13-9,L4 - SUP Roof - FAB Roof,,CONSTRUCTION,BRAZOS,,,,2025-05-29 07:00,2025-06-04 17:00,2025-05-22 07:00,2025-05-23 17:00,2025-11-20 17:00,2025-11-20 17:00,2025-12-05 17:00,2025-12-05 17:00,0,50,100
CN.SEB1.9380,WATERPROOFING CRICKETS & FLASHING FOR PIPE PENETRATIONS - GL 19-28 - A LINE - L4 ROOF,Complete,CONSTRUCTION,,SUEN-3 - 25-28,L4 - SUP Roof - FAB Roof,,CONSTRUCTION,BRAZOS,,,,2025-04-21 07:00,2025-05-16 17:00,2025-02-10 07:32,2025-04-26 17:00,2025-11-20 17:00,2025-11-20 17:00,2025-12-03 07:00,2025-12-03 07:00,0,200,100
CN.SEB1.9410,WATERPROOFING & TOPPING SLAB - GL 21-31 - N LINE - L4 ROOF,Complete,CONSTRUCTION,,SUWN-2 - 21-24,L4 - SUP Roof - FAB Roof,,CONSTRUCTION,BRAZOS,,,,2024-11-04 07:00,2024-11-27 17:00,2024-10-21 07:00,2024-11-05 17:00,2025-11-20 17:00,2025-11-20 17:00,2025-12-05 17:00,2025-12-05 17:00,0,150,100
CN.SEB1.7540,LAYOUT & STUD FRAMING - BATHROOM - GL 19-22 - C-A - L1,Complete,CONSTRUCTION,,SUEN-1 - 19-22,L1 - Fndn Slab,BATHROOM,CONSTRUCTION,,,,,2025-02-03 07:00,2025-02-05 17:00,2024-07-05 07:00,2024-07-11 07:00,2025-11-20 17:00,2025-11-20 17:00,2025-11-13 17:00,2025-11-13 17:00,0,30,100
CN.SEB1.7550,HANG DRYWALL (1 SIDE) - BATHROOM - GL 19-22 - C-A - L1,Complete,CONSTRUCTION,,SUEN-1 - 19-22,L1 - Fndn Slab,BATHROOM,CONSTRUCTION,,,,,2025-06-10 07:00,2025-06-10 17:00,2025-06-10 07:00,2025-08-25 17:00,2025-11-20 17:00,2025-11-20 17:00,2025-11-20 07:00,2025-11-20 07:00,0,10,100
CN.SEB1.7560,IMPACT - MEP ROUGH-IN (BY SECAI) - BATHROOM - GL 19-22 - C-A - L,Complete,CONSTRUCTION,,SUEN-1 - 19-22,L1 - Fndn Slab,BATHROOM,CONSTRUCTION,,,,,2024-07-22 07:00,2024-07-26 17:00,2024-07-22 07:00,2025-08-12 07:00,2025-11-20 17:00,2025-11-20 17:00,2025-11-20 07:00,2025-11-20 07:00,0,50,100
CN.SEB1.7570,HANG DRYWALL (2ND SIDE) - BATHROOM - GL 19-22 - C-A - L1,Complete,CONSTRUCTION,,SUEN-1 - 19-22,L1 - Fndn Slab,BATHROOM,CONSTRUCTION,,,,,2025-08-25 07:00,2025-08-28 17:00,2025-08-25 07:00,2025-09-04 17:00,2025-11-20 17:00,2025-11-20 17:00,2025-11-20 07:00,2025-11-20 07:00,0,40,100
CN.SEB1.7580,FIELD MEASURE FOR TOILET PARTITIONS - BATHROOM - GL 19-22 - C-A - L1,Complete,CONSTRUCTION,,SUEN-1 - 19-22,L1 - Fndn Slab,BATHROOM,CONSTRUCTION,,,,,2025-08-08 07:00,2025-08-11 17:00,2025-08-08 07:00,2025-08-08 17:00,2025-11-20 17:00,2025-11-20 17:00,2025-12-01 07:00,2025-12-01 07:00,0,20,100
CN.SEB1.7600,PAINT & SEALANTS (WALLS & FLOOR) - BATHROOM - GL 19-22 - C-A - L1,Complete,CONSTRUCTION,,SUEN-1 - 19-22,L1 - Fndn Slab,BATHROOM,CONSTRUCTION,,,,,2025-09-15 07:00,2025-09-19 17:00,2025-09-15 07:00,2025-09-19 17:00,2025-11-20 17:00,2025-11-20 17:00,2025-12-01 07:00,2025-12-01 07:00,0,50,100
CN.AB.AR.4690,INSTALL TOILET PARTITIONS - BATHROOM - GL 19-22 - C-A - L1,Complete,CONSTRUCTION,,SUEN-1 - 19-22,L1 - Fndn Slab,BATHROOM,CONSTRUCTION,,,,,2025-09-30 07:00,2025-10-02 17:00,2025-09-30 07:00,2025-10-13 17:00,2025-11-20 17:00,2025-11-20 17:00,2025-12-01 07:00,2025-12-01 07:00,0,30,100
CN.SWA5.1980,LAYOUT & STUD FRAMING - BATHROOM - GL 3 - M-N - L1,Complete,CONSTRUCTION,,FIZ 2 / SUWS 5  (GL6-1) - GL J - N - DATA CENTER 1,L1 - Fndn Slab,BATHROOM,CONSTRUCTION,,,,,2024-07-08 07:00,2024-07-09 17:00,2024-07-06 07:00,2024-07-11 17:00,2025-11-20 17:00,2025-11-20 17:00,2025-11-20 07:00,2025-11-20 07:00,0,20,100
CN.SWA5.1990,REMAINING HANG DRYWALL (1 SIDE) - BATHROOM - GL 3 - M-N - L1,Complete,CONSTRUCTION,,FIZ 2 / SUWS 5  (GL6-1) - GL J - N - DATA CENTER 1,L1 - Fndn Slab,BATHROOM,CONSTRUCTION,,,,,2025-08-14 07:00,2025-08-19 17:00,2025-05-29 07:00,2025-06-06 17:00,2025-11-20 17:00,2025-11-20 17:00,2025-11-20 07:00,2025-11-20 07:00,0,40,100
CN.SWA5.9310,IMPACT - ACCESS TO ELEVATOR 01B STEEL WORK COMPLETION - MEP ROUGH-IN (BY SECAI) - BATHROOM - GL 3 - M-N - L1,Complete,CONSTRUCTION,,FIZ 2 / SUWS 5  (GL6-1) - GL J - N - DATA CENTER 1,L1 - Fndn Slab,BATHROOM,CONSTRUCTION,,,,,2024-10-01 07:00,2024-10-08 17:00,2024-10-01 07:00,2024-11-27 17:00,2025-11-20 17:00,2025-11-20 17:00,2025-11-20 07:00,2025-11-20 07:00,0,50,100
CN.SWA5.9320,HANG DRYWALL (2ND SIDE) - BATHROOM - GL 3 - M-N - L1,Complete,CONSTRUCTION,,FIZ 2 / SUWS 5  (GL6-1) - GL J - N - DATA CENTER 1,L1 - Fndn Slab,BATHROOM,CONSTRUCTION,,,,,2025-05-07 07:00,2025-05-12 17:00,2025-05-07 07:00,2025-07-18 17:00,2025-11-20 17:00,2025-11-20 17:00,2025-11-20 07:00,2025-11-20 07:00,0,40,100
CN.SWA5.9330,TAPE & FINISH DRYWALL - BATHROOM - GL 3 - M-N - L1,Complete,CONSTRUCTION,,FIZ 2 / SUWS 5  (GL6-1) - GL J - N - DATA CENTER 1,L1 - Fndn Slab,BATHROOM,CONSTRUCTION,,,,,2025-07-21 07:00,2025-07-23 17:00,2025-07-21 07:00,2025-07-23 17:00,2025-11-20 17:00,2025-11-20 17:00,2025-11-20 07:00,2025-11-20 07:00,0,30,100
CN.SWA5.9340,FIELD MEASURE FOR TOILET PARTITIONS - BATHROOM - GL 3 - M-N - L1,Complete,CONSTRUCTION,,FIZ 2 / SUWS 5  (GL6-1) - GL J - N - DATA CENTER 1,L1 - Fndn Slab,BATHROOM,CONSTRUCTION,,,,,2025-08-14 07:00,2025-08-15 17:00,2025-08-08 07:00,2025-08-08 17:00,2025-11-20 17:00,2025-11-20 17:00,2025-12-01 07:00,2025-12-01 07:00,0,20,100
CN.SWA5.9360,INSTALL TOILET PARTITIONS - BATHROOM - GL 3 - M-N - L1,Complete,CONSTRUCTION,,FIZ 2 / SUWS 5  (GL6-1) - GL J - N - DATA CENTER 1,L1 - Fndn Slab,BATHROOM,CONSTRUCTION,,,,,2025-09-29 07:00,2025-10-01 17:00,2025-09-29 07:00,2025-10-13 17:00,2025-11-20 17:00,2025-11-20 17:00,2025-12-01 07:00,2025-12-01 07:00,0,30,100
CN.SWA5.9370,PAINT & SEALANTS (WALLS & FLOORS) - BATHROOM - GL 3 - M-N - L1,Complete,CONSTRUCTION,,FIZ 2 / SUWS 5  (GL6-1) - GL J - N - DATA CENTER 1,L1 - Fndn Slab,BATHROOM,CONSTRUCTION,,,,,2025-09-15 07:00,2025-09-19 17:00,2025-09-15 07:00,2025-09-19 17:00,2025-11-20 17:00,2025-11-20 17:00,2025-12-01 07:00,2025-12-01 07:00,0,50,100
CN.SEB1.9420,TAPE & FINISH DRYWALL - BATHROOM - GL 19-22 - C-A - L1,Complete,CONSTRUCTION,,SUEN-1 - 19-22,L1 - Fndn Slab,BATHROOM,CONSTRUCTION,,,,,2025-09-04 07:00,2025-09-08 17:00,2025-09-04 07:00,2025-09-08 17:00,2025-11-20 17:00,2025-11-20 17:00,2025-11-20 07:00,2025-11-20 07:00,0,30,100
CN.SWA3.1262,LAYOUT & STUD FRAMING - BATHROOM - GL 11-12 - L-N - L1,Complete,CONSTRUCTION,,SUWS-3 - 12-9,L1 - Fndn Slab,BATHROOM,CONSTRUCTION,,,,,2024-07-08 07:00,2024-07-11 17:00,2024-07-06 07:00,2024-07-09 17:00,2025-11-20 17:00,2025-11-20 17:00,2025-11-20 07:00,2025-11-20 07:00,0,30,100
CN.SWA3.9270,HANG DRYWALL (1 SIDE) - BATHROOM - GL 11-12 - L-N - L1,Complete,CONSTRUCTION,,SUWS-3 - 12-9,L1 - Fndn Slab,BATHROOM,CONSTRUCTION,,,,,2024-11-11 07:00,2024-11-15 17:00,2024-08-01 07:00,2024-08-09 07:00,2025-11-20 17:00,2025-11-20 17:00,2025-11-20 07:00,2025-11-20 07:00,0,40,100
CN.SWA3.9280,MEP ROUGH-IN (BY SECAI) - BATHROOM - GL 11-12 - L-N - L1,Complete,CONSTRUCTION,,SUWS-3 - 12-9,L1 - Fndn Slab,BATHROOM,CONSTRUCTION,,,,,2024-11-04 07:00,2024-11-11 17:00,2024-07-16 10:42,2024-07-30 11:00,2025-11-20 17:00,2025-11-20 17:00,2025-11-20 07:00,2025-11-20 07:00,0,50,100
CN.SWA3.9290,HANG DRYWALL (2ND SIDE) - BATHROOM - GL 11-12 - L-N - L1,Complete,CONSTRUCTION,,SUWS-3 - 12-9,L1 - Fndn Slab,BATHROOM,CONSTRUCTION,,,,,2024-11-15 07:00,2024-11-21 17:00,2024-08-12 07:00,2024-08-15 07:00,2025-11-20 17:00,2025-11-20 17:00,2025-11-20 07:00,2025-11-20 07:00,0,40,100
CN.SWA3.9300,"REMAINING DRYWALL , TAPE & FINISH DRYWALL - BATHROOM - GL 11-12 - L-N - L1",Complete,CONSTRUCTION,,SUWS-3 - 12-9,L1 - Fndn Slab,BATHROOM,CONSTRUCTION,,,,,2025-07-21 07:00,2025-07-22 17:00,2025-07-21 07:00,2025-08-05 17:00,2025-11-20 17:00,2025-11-20 17:00,2025-11-20 07:00,2025-11-20 07:00,0,20,100
CN.SWA3.9310,FIELD MEASURE FOR TOILET PARTITIONS - BATHROOM - GL 11-12 - L-N - L1,Complete,CONSTRUCTION,,SUWS-3 - 12-9,L1 - Fndn Slab,BATHROOM,CONSTRUCTION,,,,,2025-08-08 07:00,2025-08-11 17:00,2025-08-08 07:00,2025-08-08 17:00,2025-11-20 17:00,2025-11-20 17:00,2025-12-01 07:00,2025-12-01 07:00,0,20,100
CN.SWA3.9320,FIELD MEASURE FOR COUNTERTOPS - BATHROOM - GL 11-12 - L-N - L1,Complete,CONSTRUCTION,,SUWS-3 - 12-9,L1 - Fndn Slab,BATHROOM,CONSTRUCTION,,,,,2025-08-08 07:00,2025-08-11 17:00,2025-08-08 07:00,2025-08-08 17:00,2025-11-20 17:00,2025-11-20 17:00,2025-11-20 07:00,2025-11-20 07:00,0,20,100
CN.SWA3.9330,INSTALL TOILET PARTITIONS - BATHROOM - GL 11-12 - L-N - L1,Complete,CONSTRUCTION,,SUWS-3 - 12-9,L1 - Fndn Slab,BATHROOM,CONSTRUCTION,,,,,2025-09-30 07:00,2025-10-06 17:00,2025-09-30 07:00,2025-10-10 17:00,2025-11-20 17:00,2025-11-20 17:00,2025-12-01 07:00,2025-12-01 07:00,0,50,100
CN.SWA3.9340,PAINT & SEALANTS (WALLS & FLOOR) - BATHROOM - GL 11-12 - L-N - L1,Complete,CONSTRUCTION,,SUWS-3 - 12-9,L1 - Fndn Slab,BATHROOM,CONSTRUCTION,,,,,2025-09-15 07:00,2025-09-19 17:00,2025-09-15 07:00,2025-09-19 17:00,2025-11-20 17:00,2025-11-20 17:00,2025-12-01 07:00,2025-12-01 07:00,0,50,100
INT.P2.MW.1340,IMPACT - CCD 305 - PREP & SUBMIT CCD FOR NEW COUNTERTOP DESIGN/MATERIAL,Complete,CONSTRUCTION,,COUNTERTOPS,MILLWORK,,PRE - CON / BUYOUT / IMPACTS,,,,,2024-06-14 07:00,2024-06-20 17:00,2024-06-10 07:00,2024-06-13 17:00,2025-11-20 17:00,2025-11-20 17:00,2025-11-20 07:00,2025-11-20 07:00,0,40,100
INT.P2.MW.1350,IMPACT - CCD 305 - SECAI APPROVE CCD FOR NEW COUNTERTOP DESIGN/MATERIAL(REDESIGN AND RESUBMIT),Complete,CONSTRUCTION,,COUNTERTOPS,MILLWORK,,PRE - CON / BUYOUT / IMPACTS,,,,,2024-06-21 07:00,2024-07-09 17:00,2024-06-14 07:00,2024-11-26 17:00,2025-11-20 17:00,2025-11-20 17:00,2025-11-20 07:00,2025-11-20 07:00,0,100,100
INT.P2.MW.1360,IMPACT - MATERIAL CHANGED,Complete,CONSTRUCTION,,COUNTERTOPS,MILLWORK,,PRE - CON / BUYOUT / IMPACTS,,,,,2025-01-13 07:00,2025-01-24 17:00,2024-11-25 07:00,2025-01-04 17:00,2025-11-20 17:00,2025-11-20 17:00,2025-11-20 07:00,2025-11-20 07:00,0,100,100
INT.P2.MW.1370,IMPACT - PREP & SUBMIT NEW COUNTERTOP SHOP DRAWINGS,Complete,CONSTRUCTION,,COUNTERTOPS,MILLWORK,,PRE - CON / BUYOUT / IMPACTS,,,,,2025-01-23 07:00,2025-01-29 17:00,2025-01-06 07:00,2025-03-25 13:00,2025-11-20 17:00,2025-11-20 17:00,2025-11-20 07:00,2025-11-20 07:00,0,50,100
INT.P2.MW.1380,IMPACT - SECAI REVIEW & APPROVE NEW COUNTERTOP SHOP DRAWINGS,Complete,CONSTRUCTION,,COUNTERTOPS,MILLWORK,,PRE - CON / BUYOUT / IMPACTS,,,,,2025-08-08 07:00,2025-08-21 17:00,2025-07-21 07:00,2025-08-04 17:00,2025-11-20 17:00,2025-11-20 17:00,2025-11-20 07:00,2025-11-20 07:00,0,100,100
INT.P2.WDP.1360,FABRICATION / LEADTIME - TOILET PARTITIONS,Complete,CONSTRUCTION,,Wall / Door Protection - DIV10,WALL & DOOR PROTECTION,,PRE - CON / BUYOUT / IMPACTS,,,,,2025-10-06 07:00,2025-10-24 17:00,2025-07-01 12:00,2025-09-19 17:00,2025-11-20 17:00,2025-11-20 17:00,2025-12-01 07:00,2025-12-01 07:00,0,150,100
CN.SWA1.1482,LAYOUT & STUD FRAMING - BATHROOM - GL 15-18 - K-N - L3,Complete,CONSTRUCTION,,SUWS-1 - 18-15,L3 / Waffle Slab Level,BATHROOM,CONSTRUCTION,,,,,2025-05-01 07:00,2025-05-05 17:00,2025-05-01 07:00,2025-05-05 17:00,2025-11-20 17:00,2025-11-20 17:00,2025-11-20 07:00,2025-11-20 07:00,0,30,100
CN.SWA1.1492,HANG DRYWALL (1 SIDE) - BATHROOM - GL 15-18 - K-N - L3,Complete,CONSTRUCTION,,SUWS-1 - 18-15,L3 / Waffle Slab Level,BATHROOM,CONSTRUCTION,,,,,2025-05-05 07:00,2025-05-16 17:00,2025-05-05 07:00,2025-05-16 17:00,2025-11-20 17:00,2025-11-20 17:00,2025-11-20 07:00,2025-11-20 07:00,0,100,100
CN.SWA1.1502,MEP ROUGH-IN (BY SECAI) - BATHROOM - GL 15-18 - K-N - L3,Complete,CONSTRUCTION,,SUWS-1 - 18-15,L3 / Waffle Slab Level,BATHROOM,CONSTRUCTION,,,,,2025-05-12 07:00,2025-05-16 17:00,2025-05-26 07:00,2025-05-30 17:00,2025-11-20 17:00,2025-11-20 17:00,2025-11-20 07:00,2025-11-20 07:00,0,50,100
CN.SWA1.1512,HANG DRYWALL (2ND SIDE) - BATHROOM - GL 15-18 - K-N - L3,Complete,CONSTRUCTION,,SUWS-1 - 18-15,L3 / Waffle Slab Level,BATHROOM,CONSTRUCTION,,,,,2025-07-23 07:00,2025-07-28 17:00,2025-05-05 07:00,2025-06-07 17:00,2025-11-20 17:00,2025-11-20 17:00,2025-11-20 07:00,2025-11-20 07:00,0,40,100
CN.SWA1.9450,TAPE & FINISH DRYWALL - BATHROOM - GL 15-18 - K-N - L3,Complete,CONSTRUCTION,,SUWS-1 - 18-15,L3 / Waffle Slab Level,BATHROOM,CONSTRUCTION,,,,,2025-06-13 07:00,2025-06-13 17:00,2025-06-13 07:00,2025-06-13 17:00,2025-11-20 17:00,2025-11-20 17:00,2025-11-20 07:00,2025-11-20 07:00,0,10,100
CN.SWA1.9460,FIELD MEASURE FOR COUNTERTOPS - BATHROOM - GL 15-18 - K-N - L3,Complete,CONSTRUCTION,,SUWS-1 - 18-15,L3 / Waffle Slab Level,BATHROOM,CONSTRUCTION,,,,,2025-08-14 07:00,2025-08-15 17:00,2025-08-08 07:00,2025-08-08 17:00,2025-11-20 17:00,2025-11-20 17:00,2025-11-20 07:00,2025-11-20 07:00,0,20,100
CN.SWA1.9470,FIELD MEASURE FOR TOILET PARTITIONS - BATHROOM - GL 15-18 - K-N - L3,Complete,CONSTRUCTION,,SUWS-1 - 18-15,L3 / Waffle Slab Level,BATHROOM,CONSTRUCTION,,,,,2025-08-08 07:00,2025-08-11 17:00,2025-08-08 07:00,2025-08-08 17:00,2025-11-20 17:00,2025-11-20 17:00,2025-12-01 07:00,2025-12-01 07:00,0,20,100
CN.SWA1.9480,INSTALL TOILET PARTITIONS - BATHROOM - GL 15-18 - K-N - L3,Complete,CONSTRUCTION,,SUWS-1 - 18-15,L3 / Waffle Slab Level,BATHROOM,CONSTRUCTION,,,,,2025-09-30 07:00,2025-10-06 17:00,2025-09-30 07:00,2025-10-13 17:00,2025-11-20 17:00,2025-11-20 17:00,2025-12-01 07:00,2025-12-01 07:00,0,50,100
CN.SWA1.9490,PAINT & SEALANTS (WALLS & FLOOR) - BATHROOM - GL 15-18 - K-N - L3,Complete,CONSTRUCTION,,SUWS-1 - 18-15,L3 / Waffle Slab Level,BATHROOM,CONSTRUCTION,,,,,2025-09-15 07:00,2025-09-19 17:00,2025-09-15 07:00,2025-09-19 17:00,2025-11-20 17:00,2025-11-20 17:00,2025-12-01 07:00,2025-12-01 07:00,0,50,100
CN.SEB1.7610,INSTALL FLOOR BASE FOR TILE - BATHROOM - GL 19-22 - C-A - L1,Complete,CONSTRUCTION,,SUEN-1 - 19-22,L1 - Fndn Slab,BATHROOM,CONSTRUCTION,,,,,2025-09-09 07:00,2025-09-10 17:00,2025-09-09 07:00,2025-09-26 17:00,2025-11-20 17:00,2025-11-20 17:00,2025-11-20 07:00,2025-11-20 07:00,0,20,100
CN.SWA5.9380,INSTALL FLOOR BASE FOR TILE - BATHROOM - GL 3 - M-N - L1,Complete,CONSTRUCTION,,FIZ 2 / SUWS 5  (GL6-1) - GL J - N - DATA CENTER 1,L1 - Fndn Slab,BATHROOM,CONSTRUCTION,,,,,2025-07-31 07:00,2025-08-01 17:00,2025-07-31 07:00,2025-09-26 17:00,2025-11-20 17:00,2025-11-20 17:00,2025-11-20 07:00,2025-11-20 07:00,0,20,100
CN.SWA3.9350,INSTALL FLOOR BASE FOR TILE - BATHROOM - GL 11-12 - L-N - L1,Complete,CONSTRUCTION,,SUWS-3 - 12-9,L1 - Fndn Slab,BATHROOM,CONSTRUCTION,,,,,2025-08-11 07:00,2025-08-12 17:00,2025-08-11 07:00,2025-09-26 17:00,2025-11-20 17:00,2025-11-20 17:00,2025-12-01 07:00,2025-12-01 07:00,0,20,100
CN.SWA1.9500,INSTALL FLOOR BASE FOR TILE - BATHROOM - GL 15-18 - K-N - L3,Complete,CONSTRUCTION,,SUWS-1 - 18-15,L3 / Waffle Slab Level,BATHROOM,CONSTRUCTION,,,,,2025-06-16 07:00,2025-06-19 17:00,2025-06-16 07:00,2025-09-26 17:00,2025-11-20 17:00,2025-11-20 17:00,2025-12-01 07:00,2025-12-01 07:00,0,40,100
CN.AB.AR.4850,INSTALL TOILET ACCESSORIES - BATHROOM - GL 19-22 - C-A - L1,Complete,CONSTRUCTION,,SUEN-1 - 19-22,L1 - Fndn Slab,BATHROOM,CONSTRUCTION,,,,,2025-10-16 07:00,2025-10-17 17:00,2025-10-16 07:00,2025-10-17 17:00,2025-11-20 17:00,2025-11-20 17:00,2025-12-01 07:00,2025-12-01 07:00,0,20,100
CN.SWA5.2000,INSTALL TOILET ACCESSORIES - BATHROOM - GL 3 - M-N - L1,Complete,CONSTRUCTION,,FIZ 2 / SUWS 5  (GL6-1) - GL J - N - DATA CENTER 1,L1 - Fndn Slab,BATHROOM,CONSTRUCTION,,,,,2025-10-16 07:00,2025-10-17 17:00,2025-10-16 07:00,2025-10-17 17:00,2025-11-20 17:00,2025-11-20 17:00,2025-12-01 07:00,2025-12-01 07:00,0,20,100
CN.SWA3.9360,INSTALL TOILET ACCESSORIES - BATHROOM - GL 11-12 - L-N - L1,Complete,CONSTRUCTION,,SUWS-3 - 12-9,L1 - Fndn Slab,BATHROOM,CONSTRUCTION,,,,,2025-10-16 07:00,2025-10-17 17:00,2025-10-16 07:00,2025-10-17 17:00,2025-11-20 17:00,2025-11-20 17:00,2025-12-01 07:00,2025-12-01 07:00,0,20,100
CN.SWA1.1522,INSTALL TOILET ACCESSORIES - BATHROOM - GL 15-18 - K-N - L3,Complete,CONSTRUCTION,,SUWS-1 - 18-15,L3 / Waffle Slab Level,BATHROOM,CONSTRUCTION,,,,,2025-10-16 07:00,2025-10-17 17:00,2025-10-16 07:00,2025-10-17 17:00,2025-11-20 17:00,2025-11-20 17:00,2025-12-01 07:00,2025-12-01 07:00,0,20,100
CN.SWA1.9510,FINAL PUNCHLIST & INSPECTION - BATHROOM - GL 15-18- K-N - L3,Not Started,CONSTRUCTION,,SUWS-1 - 18-15,L3 / Waffle Slab Level,BATHROOM,CONSTRUCTION,,,,,2025-12-02 07:00,2025-12-08 17:00,,,2025-12-02 07:00,2025-12-08 17:00,2025-12-01 07:00,2025-12-05 17:00,50,50,0
CN.SWA3.9370,FINAL PUNCHLIST & INSPECTION - BATHROOM - GL 11-12 - L-N - L1,Not Started,CONSTRUCTION,,SUWS-3 - 12-9,L1 - Fndn Slab,BATHROOM,CONSTRUCTION,,,,,2025-12-02 07:00,2025-12-08 17:00,,,2025-12-02 07:00,2025-12-08 17:00,2025-12-01 07:00,2025-12-05 17:00,50,50,0
CN.SWA5.9390,FINAL PUNCHLIST & INSPECTION - BATHROOM - GL 3 - M-N - L1,Not Started,CONSTRUCTION,,FIZ 2 / SUWS 5  (GL6-1) - GL J - N - DATA CENTER 1,L1 - Fndn Slab,BATHROOM,CONSTRUCTION,,,,,2025-12-02 07:00,2025-12-08 17:00,,,2025-12-02 07:00,2025-12-08 17:00,2025-12-01 07:00,2025-12-05 17:00,50,50,0
CN.SEB1.7620,FINAL PUNCHLIST & INSPECTION - BATHROOM - GL 19-22 - C-A - L1,Not Started,CONSTRUCTION,,SUEN-1 - 19-22,L1 - Fndn Slab,BATHROOM,CONSTRUCTION,,,,,2025-12-02 07:00,2025-12-08 17:00,,,2025-12-02 07:00,2025-12-08 17:00,2025-12-01 07:00,2025-12-05 17:00,50,50,0
CN.SEA5.10025,INSTALL/INSPECT EDGE OF SLAB - GL 6-9 - D LINE (AD AREA) - L6,Complete,CONSTRUCTION,,SUES-4 - 9-6,EXTERIOR SKIN,,CONSTRUCTION,BERG,,,,2024-07-15 07:00,2024-07-19 17:00,2024-07-15 07:00,2024-07-30 17:00,2025-11-20 17:00,2025-11-20 17:00,2025-12-05 17:00,2025-12-05 17:00,0,50,100
CN.SEA5.10035,INSTALL/INSPECT EDGE OF SLAB - GL 9-13 - D LINE (AD AREA) - L6,Complete,CONSTRUCTION,,SUES-3 - 13-9,EXTERIOR SKIN,,CONSTRUCTION,BERG,,,,2024-07-15 07:00,2024-07-19 17:00,2024-07-10 07:00,2024-07-30 17:00,2025-11-20 17:00,2025-11-20 17:00,2025-12-05 17:00,2025-12-05 17:00,0,50,100
CN.SEA5.10045,INSTALL/INSPECT EDGE OF SLAB - GL 6-9 - C LINE (DS AREA) - L6,Complete,CONSTRUCTION,,SUES-4 - 9-6,EXTERIOR SKIN,,CONSTRUCTION,BERG,,,,2024-07-12 07:00,2024-07-18 17:00,2024-07-11 07:00,2024-07-30 17:00,2025-11-20 17:00,2025-11-20 17:00,2025-12-05 17:00,2025-12-05 17:00,0,50,100
CN.SEA5.10055,INSTALL/INSPECT EDGE OF SLAB - GL 5-6 - C LINE (DS AREA) - L6,Complete,CONSTRUCTION,,SUES-5 - 6-1 - FIZ - GL A -E,EXTERIOR SKIN,,CONSTRUCTION,BERG,,,,2024-07-22 07:00,2024-07-26 17:00,2024-07-20 07:00,2024-07-30 17:00,2025-11-20 17:00,2025-11-20 17:00,2025-12-05 17:00,2025-12-05 17:00,0,50,100
CN.SEA5.10065,INSTALL/INSPECT EDGE OF SLAB BOTTOM PLATE & PLYWOOD CAP - GL 1-3 - A LINE (SUPPORT EXTERIOR AREA) - L4,Complete,CONSTRUCTION,,SUES-5 - 6-1 - FIZ - GL A -E,EXTERIOR SKIN,,CONSTRUCTION,BERG,,,,2024-07-17 07:00,2024-07-25 17:00,2024-07-17 07:00,2024-08-26 17:00,2025-11-20 17:00,2025-11-20 17:00,2025-12-05 07:00,2025-12-05 07:00,0,70,100
CN.SEA5.10075,INSTALL/INSPECT EDGE OF SLAB BOTTOM PLATE &  PLYWOOD CAP  - GL 5-6 - A LINE (SUPPORT EXTERIOR AREA) - L4,Complete,CONSTRUCTION,,SUES-5 - 6-1 - FIZ - GL A -E,EXTERIOR SKIN,,CONSTRUCTION,BERG,,,,2024-07-29 07:00,2024-08-06 17:00,2024-07-17 07:00,2024-08-26 11:00,2025-11-20 17:00,2025-11-20 17:00,2025-12-02 07:00,2025-12-02 07:00,0,70,100
CN.SEA5.10085,INSTALL/INSPECT EDGE OF SLAB BOTTOM PLATE &  PLYWOOD CAP  - GL 6-9 - A LINE (SUPPORT EXTERIOR AREA) - L4,Complete,CONSTRUCTION,,SUES-4 - 9-6,EXTERIOR SKIN,,CONSTRUCTION,BERG,,,,2024-07-16 07:00,2024-07-24 17:00,2024-07-16 07:00,2024-10-21 17:00,2025-11-20 17:00,2025-11-20 17:00,2025-12-05 17:00,2025-12-05 17:00,0,70,100
CN.SEB1.9430,INSTALL/INSPECT EDGE OF SLAB - GL 13-16 - C LINE (DS AREA) - L6,Complete,CONSTRUCTION,,SUES-2 - 16-13,EXTERIOR SKIN,,CONSTRUCTION,BERG,,,,2024-07-08 07:00,2024-07-15 17:00,2024-07-10 07:00,2024-07-30 17:00,2025-11-20 17:00,2025-11-20 17:00,2025-12-05 17:00,2025-12-05 17:00,0,50,100
CN.SEB1.9440,INSTALL/INSPECT EDGE OF SLAB - GL 16-18.5 - C LINE (DS AREA) - L6,Complete,CONSTRUCTION,,SUES-1 - 19-16,EXTERIOR SKIN,,CONSTRUCTION,BERG,,,,2024-08-02 07:00,2024-08-09 17:00,2024-07-23 07:00,2024-07-30 17:00,2025-11-20 17:00,2025-11-20 17:00,2025-12-05 17:00,2025-12-05 17:00,0,50,100
CN.SEB1.9450,INSTALL/INSPECT EDGE OF SLAB - GL 13-16 - D LINE (AD AREA) - L6,Complete,CONSTRUCTION,,SUES-2 - 16-13,EXTERIOR SKIN,,CONSTRUCTION,BERG,,,,2024-07-15 07:00,2024-07-19 17:00,2024-07-10 07:00,2024-07-30 17:00,2025-11-20 17:00,2025-11-20 17:00,2025-12-05 17:00,2025-12-05 17:00,0,50,100
CN.SEB1.9460,INSTALL/INSPECT EDGE OF SLAB - GL 16-18.5 - D LINE (AD AREA) - L6,Complete,CONSTRUCTION,,SUES-1 - 19-16,EXTERIOR SKIN,,CONSTRUCTION,BERG,,,,2024-08-02 07:00,2024-08-09 17:00,2024-07-25 07:00,2024-07-30 17:00,2025-11-20 17:00,2025-11-20 17:00,2025-12-05 17:00,2025-12-05 17:00,0,50,100
CN.SEB1.9470,INSTALL/INSPECT EDGE OF SLAB BOTTOM PLATE &  PLYWOOD CAP  - GL 13-16 - A LINE (SUPPORT EXTERIOR AREA) - L4,Complete,CONSTRUCTION,,SUES-2 - 16-13,EXTERIOR SKIN,,CONSTRUCTION,BERG,,,,2024-07-16 07:00,2024-07-24 17:00,2024-07-12 07:00,2024-08-16 17:00,2025-11-20 17:00,2025-11-20 17:00,2025-12-04 07:00,2025-12-04 07:00,0,70,100
CN.SEB1.9480,INSTALL/INSPECT EDGE OF SLAB BOTTOM PLATE &  PLYWOOD CAP  - GL 16-19 - A LINE (SUPPORT EXTERIOR AREA) - L4,Complete,CONSTRUCTION,,SUES-1 - 19-16,EXTERIOR SKIN,,CONSTRUCTION,BERG,,,,2024-07-11 07:00,2024-07-19 17:00,2024-07-10 07:00,2024-08-16 17:00,2025-11-20 17:00,2025-11-20 17:00,2025-12-04 07:00,2025-12-04 07:00,0,70,100
CN.SEB1.9490,INSTALL/INSPECT EDGE OF SLAB - GL 22-25 - C LINE (DS AREA) - L6,Complete,CONSTRUCTION,,SUEN-2 - 22-25,EXTERIOR SKIN,,CONSTRUCTION,BERG,,,,2024-07-12 07:00,2024-07-22 17:00,2024-07-08 07:00,2024-07-30 17:00,2025-11-20 17:00,2025-11-20 17:00,2025-12-05 17:00,2025-12-05 17:00,0,70,100
CN.SEB1.9500,INSTALL/INSPECT EDGE OF SLAB - GL 25-28 - C LINE (DS AREA) - L6,Complete,CONSTRUCTION,,SUEN-3 - 25-28,EXTERIOR SKIN,,CONSTRUCTION,BERG,,,,2024-06-24 07:00,2024-07-05 17:00,2024-06-24 07:00,2024-07-30 17:00,2025-11-20 17:00,2025-11-20 17:00,2025-12-05 17:00,2025-12-05 17:00,0,70,100
CN.SEB1.9510,INSTALL/INSPECT EDGE OF SLAB - GL 22-25 - D LINE (AD AREA) - L6,Complete,CONSTRUCTION,,SUEN-2 - 22-25,EXTERIOR SKIN,,CONSTRUCTION,BERG,,,,2024-07-12 07:00,2024-07-18 17:00,2024-07-08 07:00,2024-07-30 17:00,2025-11-20 17:00,2025-11-20 17:00,2025-12-05 17:00,2025-12-05 17:00,0,50,100
CN.SEB1.9520,INSTALL/INSPECT EDGE OF SLAB - GL 25-28 - D LINE (AD AREA) - L6,Complete,CONSTRUCTION,,SUEN-3 - 25-28,EXTERIOR SKIN,,CONSTRUCTION,BERG,,,,2024-07-15 07:00,2024-07-23 17:00,2024-07-05 07:00,2024-07-30 17:00,2025-11-20 17:00,2025-11-20 17:00,2025-12-05 17:00,2025-12-05 17:00,0,70,100
CN.SEB1.9530,INSTALL/INSPECT EDGE OF SLAB BOTTOM PLATE &  PLYWOOD CAP  - GL 22-25 - A LINE (SUPPORT EXTERIOR AREA) - L4,Complete,CONSTRUCTION,,SUEN-2 - 22-25,EXTERIOR SKIN,,CONSTRUCTION,BERG,,,,2024-07-12 07:00,2024-07-22 17:00,2024-07-08 07:00,2024-10-07 17:00,2025-11-20 17:00,2025-11-20 17:00,2025-12-03 07:00,2025-12-03 07:00,0,70,100
CN.SEB1.9540,INSTALL/INSPECT EDGE OF SLAB BOTTOM PLATE &  PLYWOOD CAP  - GL 25-28 - A LINE (SUPPORT EXTERIOR AREA) - L4,Complete,CONSTRUCTION,,SUEN-3 - 25-28,EXTERIOR SKIN,,CONSTRUCTION,BERG,,,,2024-07-12 07:00,2024-07-22 17:00,2024-07-05 07:00,2024-10-10 17:00,2025-11-20 17:00,2025-11-20 17:00,2025-12-03 07:00,2025-12-03 07:00,0,70,100
CN.SEB1.9550,INSTALL/INSPECT EDGE OF SLAB - GL 31-33 - D LINE (AD AREA) - L6,Complete,CONSTRUCTION,,SUEN-5 - 31-33,EXTERIOR SKIN,,CONSTRUCTION,BERG,,,,2024-07-12 07:00,2024-07-22 17:00,2024-07-08 07:00,2024-07-30 17:00,2025-11-20 17:00,2025-11-20 17:00,2025-12-05 17:00,2025-12-05 17:00,0,70,100
CN.SEB1.9560,INSTALL/INSPECT EDGE OF SLAB BOTTOM PLATE &  PLYWOOD CAP  - GL 5-6 - N LINE (SUPPORT EXTERIOR AREA) - L4,Complete,CONSTRUCTION,,FIZ 2 / SUWS 5  (GL6-1) - GL J - N - DATA CENTER 1,EXTERIOR SKIN,,CONSTRUCTION,BERG,,,,2024-06-24 07:00,2024-07-01 17:00,2024-06-24 07:00,2024-06-26 17:00,2025-11-20 17:00,2025-11-20 17:00,2025-12-05 07:00,2025-12-05 07:00,0,50,100
CN.SEB1.9570,INSTALL/INSPECT EDGE OF SLAB - GL 6-9 - K LINE (AD AREA) - L6,Complete,CONSTRUCTION,,SUWS-4 - 9-6,EXTERIOR SKIN,,CONSTRUCTION,BERG,,,,2024-07-08 07:00,2024-07-15 17:00,2024-07-08 07:00,2024-07-30 17:00,2025-11-20 17:00,2025-11-20 17:00,2025-11-25 07:00,2025-11-25 07:00,0,50,100
CN.SEB1.9580,INSTALL/INSPECT EDGE OF SLAB - GL 9-12 - K LINE (AD AREA) - L6,Complete,CONSTRUCTION,,SUWS-3 - 12-9,EXTERIOR SKIN,,CONSTRUCTION,BERG,,,,2024-07-17 07:00,2024-07-23 17:00,2024-07-01 07:00,2024-07-30 17:00,2025-11-20 17:00,2025-11-20 17:00,2025-11-25 07:00,2025-11-25 07:00,0,50,100
CN.SEB1.9590,INSTALL/INSPECT EDGE OF SLAB - GL 6-9 - L LINE (DS AREA) - L6,Complete,CONSTRUCTION,,SUWS-4 - 9-6,EXTERIOR SKIN,,CONSTRUCTION,BERG,,,,2024-07-18 07:00,2024-07-24 17:00,2024-07-18 07:00,2024-07-30 17:00,2025-11-20 17:00,2025-11-20 17:00,2025-11-25 07:00,2025-11-25 07:00,0,50,100
CN.SEB1.9600,INSTALL/INSPECT EDGE OF SLAB - GL 9-12 - L LINE (DS AREA) - L6,Complete,CONSTRUCTION,,SUWS-3 - 12-9,EXTERIOR SKIN,,CONSTRUCTION,BERG,,,,2024-07-18 07:00,2024-07-24 17:00,2024-07-18 07:00,2024-07-30 17:00,2025-11-20 17:00,2025-11-20 17:00,2025-11-25 07:00,2025-11-25 07:00,0,50,100
CN.SEB1.9610,INSTALL/INSPECT EDGE OF SLAB BOTTOM PLATE &  PLYWOOD CAP  - GL 6-9 - N LINE (SUPPORT EXTERIOR AREA) - L4,Complete,CONSTRUCTION,,SUWS-4 - 9-6,EXTERIOR SKIN,,CONSTRUCTION,BERG,,,,2024-06-24 07:00,2024-07-05 17:00,2024-06-24 07:00,2024-06-26 17:00,2025-11-20 17:00,2025-11-20 17:00,2025-12-05 07:00,2025-12-05 07:00,0,70,100
CN.SEB1.9620,INSTALL/INSPECT EDGE OF SLAB BOTTOM PLATE &  PLYWOOD CAP  - GL 9-12 - N LINE (SUPPORT EXTERIOR AREA) - L4,Complete,CONSTRUCTION,,SUWS-3 - 12-9,EXTERIOR SKIN,,CONSTRUCTION,BERG,,,,2024-06-24 07:00,2024-07-05 17:00,2024-06-24 07:00,2024-06-26 17:00,2025-11-20 17:00,2025-11-20 17:00,2025-12-05 07:00,2025-12-05 07:00,0,70,100
CN.SEB1.9630,INSTALL/INSPECT EDGE OF SLAB - GL 15-18.5 - K LINE (AD AREA) - L6,Complete,CONSTRUCTION,,SUWS-1 - 18-15,EXTERIOR SKIN,,CONSTRUCTION,BERG,,,,2024-06-27 07:00,2024-07-05 17:00,2024-06-24 07:00,2024-07-30 17:00,2025-11-20 17:00,2025-11-20 17:00,2025-11-25 07:00,2025-11-25 07:00,0,50,100
CN.SEB1.9640,INSTALL/INSPECT EDGE OF SLAB - GL 19.5-21 - K LINE (AD AREA) - L6,Complete,CONSTRUCTION,,SUWN-1 - 18-21,EXTERIOR SKIN,,CONSTRUCTION,BERG,,,,2024-06-27 07:00,2024-07-05 17:00,2024-06-24 07:00,2024-07-30 17:00,2025-11-20 17:00,2025-11-20 17:00,2025-11-25 07:00,2025-11-25 07:00,0,50,100
CN.SEB1.9650,INSTALL/INSPECT EDGE OF SLAB - GL 15-18.5 - L LINE (DS AREA) - L6,Complete,CONSTRUCTION,,SUWS-1 - 18-15,EXTERIOR SKIN,,CONSTRUCTION,BERG,,,,2024-09-09 07:00,2024-09-12 17:00,2024-07-20 07:00,2024-07-30 17:00,2025-11-20 17:00,2025-11-20 17:00,2025-12-05 17:00,2025-12-05 17:00,0,30,100
CN.SEB1.9660,INSTALL/INSPECT EDGE OF SLAB - GL 19.5-21 - L LINE (DS AREA) - L6,Complete,CONSTRUCTION,,SUWN-1 - 18-21,EXTERIOR SKIN,,CONSTRUCTION,BERG,,,,2024-07-12 07:00,2024-07-18 17:00,2024-07-02 07:00,2024-07-30 17:00,2025-11-20 17:00,2025-11-20 17:00,2025-12-05 17:00,2025-12-05 17:00,0,50,100
CN.SEB1.9670,INSTALL/INSPECT EDGE OF SLAB BOTTOM PLATE &  PLYWOOD CAP  - GL 15-18 - N LINE (SUPPORT EXTERIOR AREA) - L4,Complete,CONSTRUCTION,,SUWS-1 - 18-15,EXTERIOR SKIN,,CONSTRUCTION,BERG,,,,2024-06-27 07:00,2024-07-09 17:00,2024-06-27 07:00,2024-07-19 17:00,2025-11-20 17:00,2025-11-20 17:00,2025-12-05 07:00,2025-12-05 07:00,0,70,100
CN.SEB1.9680,INSTALL/INSPECT EDGE OF SLAB BOTTOM PLATE &  PLYWOOD CAP  - GL 18-21 - N LINE (SUPPORT EXTERIOR AREA) - L4,Complete,CONSTRUCTION,,SUWN-1 - 18-21,EXTERIOR SKIN,,CONSTRUCTION,BERG,,,,2024-10-24 16:00,2024-11-18 16:00,2024-07-15 16:00,2024-07-19 16:00,2025-11-20 17:00,2025-11-20 17:00,2025-12-05 17:00,2025-12-05 17:00,0,140,100
CN.SEB1.9690,INSTALL/INSPECT EDGE OF SLAB - GL 24-27 - K LINE (AD AREA) - L6,Complete,CONSTRUCTION,,SUWN-3 - 24-27,EXTERIOR SKIN,,CONSTRUCTION,BERG,,,,2024-07-24 07:00,2024-08-01 17:00,2024-06-24 07:00,2024-07-30 17:00,2025-11-20 17:00,2025-11-20 17:00,2025-11-25 07:00,2025-11-25 07:00,0,70,100
CN.SEB1.9700,INSTALL/INSPECT EDGE OF SLAB - GL 27-30 - K LINE (AD AREA) - L6,Complete,CONSTRUCTION,,SUWN-4 - 27-30,EXTERIOR SKIN,,CONSTRUCTION,BERG,,,,2024-06-24 07:00,2024-07-05 17:00,2024-06-24 07:00,2024-07-30 17:00,2025-11-20 17:00,2025-11-20 17:00,2025-11-25 07:00,2025-11-25 07:00,0,70,100
CN.SEB1.9710,INSTALL/INSPECT EDGE OF SLAB - GL 30-33 - K LINE (AD AREA) - L6,Complete,CONSTRUCTION,,SUWN-5 - 30-33,EXTERIOR SKIN,,CONSTRUCTION,BERG,,,,2024-06-24 07:00,2024-07-05 17:00,2024-06-24 07:00,2024-07-30 17:00,2025-11-20 17:00,2025-11-20 17:00,2025-11-25 07:00,2025-11-25 07:00,0,70,100
CN.SEB1.9720,INSTALL/INSPECT EDGE OF SLAB - GL 24-27 - L LINE (DS AREA) - L6,Complete,CONSTRUCTION,,SUWN-3 - 24-27,EXTERIOR SKIN,,CONSTRUCTION,BERG,,,,2024-07-01 07:00,2024-07-12 17:00,2024-06-24 07:00,2024-07-30 17:00,2025-11-20 17:00,2025-11-20 17:00,2025-11-25 07:00,2025-11-25 07:00,0,70,100
CN.SEB1.9730,INSTALL/INSPECT EDGE OF SLAB - GL 27-31 - L LINE (DS AREA) - L6,Complete,CONSTRUCTION,,SUWN-4 - 27-30,EXTERIOR SKIN,,CONSTRUCTION,BERG,,,,2024-06-24 07:00,2024-06-27 17:00,2024-06-24 07:00,2024-07-30 17:00,2025-11-20 17:00,2025-11-20 17:00,2025-11-25 07:00,2025-11-25 07:00,0,30,100
CN.SEB1.9740,INSTALL/INSPECT EDGE OF SLAB BOTTOM PLATE &  PLYWOOD CAP  - GL 24-27 - N LINE (SUPPORT EXTERIOR AREA) - L4,Complete,CONSTRUCTION,,SUWN-3 - 24-27,EXTERIOR SKIN,,CONSTRUCTION,BERG,,,,2024-10-04 07:00,2024-10-28 17:00,2024-07-11 07:00,2024-07-19 17:00,2025-11-20 17:00,2025-11-20 17:00,2025-12-05 17:00,2025-12-05 17:00,0,140,100
CN.SEB1.9750,INSTALL/INSPECT EDGE OF SLAB BOTTOM PLATE &  PLYWOOD CAP  - GL 27-31 - N LINE (SUPPORT EXTERIOR AREA) - L4,Complete,CONSTRUCTION,,SUWN-4 - 27-30,EXTERIOR SKIN,,CONSTRUCTION,BERG,,,,2024-07-11 07:00,2024-07-30 17:00,2024-07-15 07:00,2024-07-18 17:00,2025-11-20 17:00,2025-11-20 17:00,2025-12-05 17:00,2025-12-05 17:00,0,140,100
CN.SEB1.9760,INSTALL/INSPECT EDGE OF SLAB - GL 18.5-19.5 - C LINE (DS AREA) - L6 [EXPANSION JOINT LEAVEOUT],Complete,CONSTRUCTION,,SUES-1 - 19-16,EXTERIOR SKIN,,CONSTRUCTION,BERG,,,,2024-09-13 07:00,2024-09-19 17:00,2024-08-26 07:00,2024-09-04 17:00,2025-11-20 17:00,2025-11-20 17:00,2025-12-05 17:00,2025-12-05 17:00,0,40,100
CN.SEB1.9770,INSTALL/INSPECT EDGE OF SLAB - GL 18.5-19.5 - D LINE (AD AREA) - L6 [EXPANSION JOINT LEAVEOUT],Complete,CONSTRUCTION,,SUES-1 - 19-16,EXTERIOR SKIN,,CONSTRUCTION,BERG,,,,2024-09-13 07:00,2024-09-19 17:00,2024-08-26 07:00,2024-09-04 17:00,2025-11-20 17:00,2025-11-20 17:00,2025-12-05 17:00,2025-12-05 17:00,0,40,100
CN.SEB1.9780,INSTALL/INSPECT EDGE OF SLAB - GL 18.5-19.5 - K LINE (AD AREA) - L6 [EXPANSION JOINT LEAVEOUT],Complete,CONSTRUCTION,,SUWN-1 - 18-21,EXTERIOR SKIN,,CONSTRUCTION,BERG,,,,2024-10-14 07:00,2024-10-21 17:00,2024-10-14 07:00,2024-10-19 17:00,2025-11-20 17:00,2025-11-20 17:00,2025-12-05 17:00,2025-12-05 17:00,0,50,100
CN.SEB1.9790,INSTALL/INSPECT EDGE OF SLAB - GL 16-19.5 - L LINE (DS AREA) - L6,Complete,CONSTRUCTION,,SUWS-1 - 18-15,L4 - SUP Roof - FAB Roof,,CONSTRUCTION,BERG,,,,2024-11-21 07:00,2024-12-16 17:00,2024-11-21 07:00,2025-03-18 17:00,2025-11-20 17:00,2025-11-20 17:00,2025-12-05 07:00,2025-12-05 07:00,0,140,100
CN.SEB1.9800,BUILD & INSPECT - EDGE OF SLAB MOCKUP - L6,Complete,CONSTRUCTION,,SUWN-5 - 30-33,EXTERIOR SKIN,,CONSTRUCTION,BERG,,,,2024-06-24 07:00,2024-06-28 17:00,2024-06-24 07:00,2024-06-27 17:00,2025-11-20 17:00,2025-11-20 17:00,2025-11-25 07:00,2025-11-25 07:00,0,40,100
CN.SEB1.9810,BUILD & INSPECT - EDGE OF SLAB MOCKUP - L4,Complete,CONSTRUCTION,,FIZ 2 / SUWS 5  (GL6-1) - GL J - N - DATA CENTER 1,EXTERIOR SKIN,,CONSTRUCTION,BERG,,,,2024-06-14 07:00,2024-06-21 17:00,2024-06-12 07:00,2024-06-22 17:00,2025-11-20 17:00,2025-11-20 17:00,2025-11-25 07:00,2025-11-25 07:00,0,50,100
CN.BB51.ST.2650,IMPACT - CCD 170 (GL 33 CMP PACKAGE) - KOVACH FIELD MEASURE FOR CORRUGATED METAL PANELS,Complete,CONSTRUCTION,,GRIDLINE 33,,GL 33 PROCUREMENT ITEMS,CONSTRUCTION,KOVACH,,,,2024-06-25 07:00,2024-06-28 17:00,2024-06-17 07:00,2024-06-19 17:00,2025-11-20 17:00,2025-11-20 17:00,2025-11-03 07:00,2025-11-03 07:00,0,30,100
CN.SEB3R.4770,IMPACT - MEP MATERIAL IN THE WAY - ELECTRICAL ROOM 3 - SEB3 - GL 27-28 - C-A - L2,Complete,CONSTRUCTION,,SUEN-3 - 25-28,L2 - SubFab Level,Electric RM 3,CONSTRUCTION,,,,,2024-06-14 07:00,2024-06-20 17:00,2024-06-14 07:00,2024-07-22 17:00,2025-11-20 17:00,2025-11-20 17:00,2025-11-19 07:00,2025-11-19 07:00,0,40,100
CN.SEB1.9820,IMPACT - Y_RFI 1385 - PREP & SUBMIT RFI FOR ALTERNATIVE CLADDING EXPANSION JOINT SOLUTION - GL 19 - C/D/K/L,Complete,CONSTRUCTION,,SUEN-1 - 19-22,EXTERIOR SKIN,,CONSTRUCTION,SECAI,,,,2024-06-21 07:00,2024-06-21 17:00,2024-06-14 07:00,2024-06-14 17:00,2025-11-20 17:00,2025-11-20 17:00,2025-12-05 07:00,2025-12-05 07:00,0,10,100
CN.SEB1.9830,IMPACT - Y_RFI 1385 - SECAI/JACOBS REVIEW & APPROVE ALTERNATIVE CLADDING EXPANSION JOINT SOLUTION - GL 19 - C/D/K/L,Complete,CONSTRUCTION,,SUEN-1 - 19-22,EXTERIOR SKIN,,CONSTRUCTION,SECAI,,,,2024-06-21 07:00,2024-07-09 17:00,2024-06-15 07:00,2024-06-28 17:00,2025-11-20 17:00,2025-11-20 17:00,2025-12-05 07:00,2025-12-05 07:00,0,100,100
CN.SEB1.7630,BACKING - WALK THRU - BATHROOM - GL 19-22 - C-A - L1,Complete,CONSTRUCTION,,SUEN-1 - 19-22,L1 - Fndn Slab,BATHROOM,CONSTRUCTION,,,,,2024-07-02 07:00,2024-07-05 17:00,2024-07-02 07:00,2024-07-04 17:00,2025-11-20 17:00,2025-11-20 17:00,2025-11-13 17:00,2025-11-13 17:00,0,20,100
CN.SWA5.2010,BACKING - WALK THRU - BATHROOM - GL 3 - M-N - L1,Complete,CONSTRUCTION,,FIZ 2 / SUWS 5  (GL6-1) - GL J - N - DATA CENTER 1,L1 - Fndn Slab,BATHROOM,CONSTRUCTION,,,,,2024-07-02 07:00,2024-07-05 17:00,2024-07-02 07:00,2024-07-05 17:00,2025-11-20 17:00,2025-11-20 17:00,2025-11-20 07:00,2025-11-20 07:00,0,20,100
CN.SWA3.1272,BACKING - WALK THRU - BATHROOM - GL 11-12 - L-N - L1,Complete,CONSTRUCTION,,SUWS-3 - 12-9,L1 - Fndn Slab,BATHROOM,CONSTRUCTION,,,,,2024-07-02 07:00,2024-07-05 17:00,2024-07-02 07:00,2024-07-05 17:00,2025-11-20 17:00,2025-11-20 17:00,2025-11-20 07:00,2025-11-20 07:00,0,20,100
CN.AB51.ST.1150,INSTALL STAIR - SLURRY ROOM GL 3-5,Complete,CONSTRUCTION,,A5 - Area 2 (Gridlines 6-3),L1 - Fndn Slab,SLURRY ROOM STAIR ,CONSTRUCTION,,,,,2024-06-17 07:00,2024-06-21 17:00,2024-06-14 07:00,2024-06-24 17:00,2025-11-20 17:00,2025-11-20 17:00,2025-12-05 17:00,2025-12-05 17:00,0,40,100
CN.AB51.ST.1160,PENDING RFI #125 ON ELEVATION DIFFERENCE - SLURRY ROOM STAIR GL 3-5,Complete,CONSTRUCTION,,A5 - Area 2 (Gridlines 6-3),L1 - Fndn Slab,SLURRY ROOM STAIR ,CONSTRUCTION,,,,,2024-06-25 07:00,2024-07-01 17:00,2024-06-25 07:00,2024-08-19 17:00,2025-11-20 17:00,2025-11-20 17:00,2025-12-05 17:00,2025-12-05 17:00,0,40,100
CN.AB51.ST.1170,FINISH STAIR INSTALLATION & HANDRAILS - SLURRY ROOM STAIR GL 3-5,Complete,CONSTRUCTION,,A5 - Area 2 (Gridlines 6-3),L1 - Fndn Slab,SLURRY ROOM STAIR ,CONSTRUCTION,,,,,2024-11-01 07:00,2024-11-07 17:00,2024-11-04 07:00,2024-11-14 17:00,2025-11-20 17:00,2025-11-20 17:00,2025-12-05 17:00,2025-12-05 17:00,0,40,100
CN.AB51.ST.1180,INSTALL- TOP COATING - SLURRY ROOM STAIR GL 3-5 DE-SCOPED,Complete,CONSTRUCTION,,A5 - Area 2 (Gridlines 6-3),L1 - Fndn Slab,SLURRY ROOM STAIR ,CONSTRUCTION,,,,,2025-09-23 07:00,2025-09-24 17:00,2025-04-17 07:00,2025-04-17 17:00,2025-11-20 17:00,2025-11-20 17:00,2025-12-05 17:00,2025-12-05 17:00,0,20,100
CN.AB51.ST.1190,STAIR COATING SUBMITTAL APPROVAL - SLURRY ROOM STAIR GL 3-5,Complete,CONSTRUCTION,,A5 - Area 2 (Gridlines 6-3),L1 - Fndn Slab,SLURRY ROOM STAIR ,CONSTRUCTION,,,,,2024-07-22 07:00,2024-08-02 17:00,2024-07-22 07:00,2024-09-16 17:00,2025-11-20 17:00,2025-11-20 17:00,2025-12-05 17:00,2025-12-05 17:00,0,100,100
CN.SWA5..1740,IMPACT - CCD 371 - PREP/SUBMIT CCD FOR INFINITY SAWCUT SOMD - ELEVATOR 01B - L2 & L3,Complete,CONSTRUCTION,,FIZ 2 / SUWS 5  (GL6-1) - GL J - N - DATA CENTER 1,,ELEVATOR,CONSTRUCTION,SECAI,,,,2024-06-20 07:00,2024-06-27 17:00,2024-06-14 07:00,2024-06-18 17:00,2025-11-20 17:00,2025-11-20 17:00,2025-12-01 07:00,2025-12-01 07:00,0,50,100
CN.SWA5..1750,IMPACT - CCD 371 - SECAI REVIEW & REJECT CCD FOR INFINITY SAWCUT SOMD - ELEVATOR 01B - L2 & L3,Complete,CONSTRUCTION,,FIZ 2 / SUWS 5  (GL6-1) - GL J - N - DATA CENTER 1,,ELEVATOR,CONSTRUCTION,SECAI,,,,2024-06-20 07:00,2024-07-08 17:00,2024-06-19 07:00,2024-07-05 17:00,2025-11-20 17:00,2025-11-20 17:00,2025-12-01 07:00,2025-12-01 07:00,0,100,100
ELEVHSS370,"IMPACT - NCR 372 - PREP & SUBMIT CCD FOR INACCESSIBLE BOLT REMEDIATION - ELEVATORS 3,18,20,22",Complete,CONSTRUCTION,,ELEVATORS,L1 - Fndn Slab,,PRE - CON / BUYOUT / IMPACTS,SECAI,,,,2024-07-15 07:00,2024-07-26 17:00,2024-06-18 07:00,2024-06-21 17:00,2025-11-20 17:00,2025-11-20 17:00,2025-10-16 07:00,2025-10-16 07:00,0,100,100
ELEVHSS380,"IMPACT - NCR 372 - SECAI REVIEW & APPROVE CCD FOR INACCESSIBLE BOLT REMEDIATION - ELEVATORS 3,18,20,22",Complete,CONSTRUCTION,,ELEVATORS,L1 - Fndn Slab,,PRE - CON / BUYOUT / IMPACTS,SECAI,,,,2024-07-25 07:00,2024-08-08 17:00,2024-06-24 07:00,2024-06-26 17:00,2025-11-20 17:00,2025-11-20 17:00,2025-10-16 07:00,2025-10-16 07:00,0,100,100
INT.DH.2080,IMPACT - CCD 345 - PREP & SUBMIT CCD FOR INTERIOR DOORS (DRB-009 PACKAGE),Complete,CONSTRUCTION,,Doors & Hardware - INTERIOR,DOORS & HARDWARE INTERIOR,,PRE - CON / BUYOUT / IMPACTS,SECAI,,,,2024-07-08 07:00,2024-07-22 17:00,2024-05-02 07:00,2024-06-05 17:00,2025-11-20 17:00,2025-11-20 17:00,2025-11-19 07:00,2025-11-19 07:00,0,100,100
INT.DH.2090,IMPACT - CCD 367 - PREP & SUBMIT CCD FOR INTERIOR DOORS (DRB-010 PACKAGE),Complete,CONSTRUCTION,,Doors & Hardware - INTERIOR,DOORS & HARDWARE INTERIOR,,PRE - CON / BUYOUT / IMPACTS,SECAI,,,,2024-06-28 07:00,2024-07-16 17:00,2024-05-31 07:00,2024-06-13 17:00,2025-11-20 17:00,2025-11-20 17:00,2025-11-13 07:00,2025-11-13 07:00,0,100,100
INT.DH.2100,IMPACT - CCD 345 - SECAI REVIEW & APPROVE CCD FOR INTERIOR DOORS (DRB-009 PACKAGE),Complete,CONSTRUCTION,,Doors & Hardware - INTERIOR,DOORS & HARDWARE INTERIOR,,PRE - CON / BUYOUT / IMPACTS,SECAI,,,,2024-07-08 07:00,2024-07-22 17:00,2024-06-06 07:00,2024-06-10 17:00,2025-11-20 17:00,2025-11-20 17:00,2025-11-19 07:00,2025-11-19 07:00,0,100,100
INT.DH.2140,IMPACT - CCD 367 - SECAI REVIEW & APPROVE CCD FOR INTERIOR DOORS (DRB-010 PACKAGE),Complete,CONSTRUCTION,,Doors & Hardware - INTERIOR,DOORS & HARDWARE INTERIOR,,PRE - CON / BUYOUT / IMPACTS,SECAI,,,,2024-06-28 07:00,2024-07-16 17:00,2024-06-14 07:00,2024-06-20 17:00,2025-11-20 17:00,2025-11-20 17:00,2025-11-13 07:00,2025-11-13 07:00,0,100,100
ELEVHSS390,"IMPACT - NCR 372 - SECAI TEST BOLTS - ELEVATORS 3,5,18,20,22",Complete,CONSTRUCTION,,ELEVATORS,L1 - Fndn Slab,,PRE - CON / BUYOUT / IMPACTS,SECAI,,,,2024-07-25 07:00,2024-07-25 17:00,2024-06-27 07:00,2024-06-27 17:00,2025-11-20 17:00,2025-11-20 17:00,2025-10-16 07:00,2025-10-16 07:00,0,10,100
ELEVHSS400,"IMPACT - NCR 372 - SECAI AWAIT BOLT TEST RESULTS / PROVIDE DIRECTION TO YATES FOR REPAIR - ELEVATORS 3,5,18,20,22",Complete,CONSTRUCTION,,ELEVATORS,L1 - Fndn Slab,,PRE - CON / BUYOUT / IMPACTS,SECAI,,,,2024-07-12 07:00,2024-07-24 17:00,2024-06-28 07:00,2024-07-18 17:00,2025-11-20 17:00,2025-11-20 17:00,2025-10-16 07:00,2025-10-16 07:00,0,90,100
CN.SWB5.9270,IMPACT - INSTALL & INSPECT CLADDING MEP OPENINGS - NE PENTHOUSE - NORTH WALL (CCD: ADDTL CLADDING BEING PROCURED),Complete,CONSTRUCTION,,NORTH EAST PENTHOUSE,EXTERIOR SKIN,,CONSTRUCTION,,,,,2024-06-28 07:00,2024-07-08 17:00,2024-06-25 07:00,2024-09-02 17:00,2025-11-20 17:00,2025-11-20 17:00,2025-11-17 07:00,2025-11-17 07:00,0,50,100
CN.SWB5.9280,IMPACT - ALPHA PAINT BOLTS / CLADDING / BERG FRAMING - NE PENTHOUSE - NORTH WALL,Complete,CONSTRUCTION,,NORTH EAST PENTHOUSE,EXTERIOR SKIN,,CONSTRUCTION,,,,,2024-10-14 07:00,2024-10-18 17:00,2024-10-12 07:00,2024-11-20 17:00,2025-11-20 17:00,2025-11-20 17:00,2025-11-17 07:00,2025-11-17 07:00,0,40,100
CN.SWB5.9290,IMPACT - INSTALL INSULATED METAL PANELS - NE PENTHOUSE - NORTH WALL,Complete,CONSTRUCTION,,NORTH EAST PENTHOUSE,EXTERIOR SKIN,,CONSTRUCTION,,,,,2024-12-09 07:00,2024-12-17 17:00,2024-12-02 07:00,2025-01-13 17:00,2025-11-20 17:00,2025-11-20 17:00,2025-12-05 17:00,2025-12-05 17:00,0,60,100
CN.SWB5.2600,IMPACT - Y_RFI 1389 - PREP & SUBMIT RFI FOR CLOSURE PLATE CLARIFICATION - NW PENTHOUSE - NORTH WALL,Complete,CONSTRUCTION,,NORTH WEST PENTHOUSE,EXTERIOR SKIN,,CONSTRUCTION,,,,,2024-06-28 07:00,2024-07-05 17:00,2024-06-12 07:00,2024-06-19 17:00,2025-11-20 17:00,2025-11-20 17:00,2025-11-25 07:00,2025-11-25 07:00,0,40,100
CN.SWB5.9300,IMPACT - Y_RFI 1389 - SECAI REVIEW & RESPOND TO RFI FOR CLOSURE PLATE CLARIFICATION - NW PENTHOUSE - NORTH WALL,Complete,CONSTRUCTION,,NORTH WEST PENTHOUSE,EXTERIOR SKIN,,CONSTRUCTION,,,,,2024-06-28 07:00,2024-07-16 17:00,2024-06-20 07:00,2024-07-01 17:00,2025-11-20 17:00,2025-11-20 17:00,2025-11-25 07:00,2025-11-25 07:00,0,100,100
CN.SWB5.9310,IMPACT - Y_RFI 1389 - PATRIOT PROCURE CLOSURE PLATES - NW PENTHOUSE - NORTH WALL,Complete,CONSTRUCTION,,NORTH WEST PENTHOUSE,EXTERIOR SKIN,,CONSTRUCTION,,,,,2024-08-01 07:00,2024-08-08 17:00,2024-07-22 07:00,2024-08-10 17:00,2025-11-20 17:00,2025-11-20 17:00,2025-11-25 07:00,2025-11-25 07:00,0,50,100
CN.SWB5.9320,IMPACT - Y_RFI 1389 - INSTALL CLOSURE PLATES - NW PENTHOUSE - NORTH WALL,Complete,CONSTRUCTION,,NORTH WEST PENTHOUSE,EXTERIOR SKIN,,CONSTRUCTION,,,,,2024-08-12 07:00,2024-08-13 17:00,2024-08-12 07:00,2024-08-13 17:00,2025-11-20 17:00,2025-11-20 17:00,2025-11-25 07:00,2025-11-25 07:00,0,20,100
CN.SWB5.2610,INSTALL & INSPECT CLADDING STEEL  - NW PENTHOUSE - NORTH WALL,Complete,CONSTRUCTION,,NORTH WEST PENTHOUSE,EXTERIOR SKIN,,CONSTRUCTION,,,,,2024-12-16 07:00,2025-01-02 17:00,2024-12-10 07:00,2025-01-10 17:00,2025-11-20 17:00,2025-11-20 17:00,2025-11-25 07:00,2025-11-25 07:00,0,100,100
CN.SWB5.9330,IMPACT - ALPHA PAINT BOLTS / CLADDING - NW PENTHOUSE - NORTH WALL,Complete,CONSTRUCTION,,NORTH WEST PENTHOUSE,EXTERIOR SKIN,,CONSTRUCTION,,,,,2025-02-05 07:00,2025-02-18 17:00,2025-02-05 07:00,2025-02-13 17:00,2025-11-20 17:00,2025-11-20 17:00,2025-11-25 07:00,2025-11-25 07:00,0,100,100
CN.SWB5.9340,IMPACT - INSTALL INSULATED METAL PANELS - NW PENTHOUSE - NORTH WALL,Complete,CONSTRUCTION,,NORTH WEST PENTHOUSE,EXTERIOR SKIN,,CONSTRUCTION,,,,,2025-09-04 07:00,2025-09-04 17:00,2025-08-05 07:00,2025-08-12 17:00,2025-11-20 17:00,2025-11-20 17:00,2025-11-25 07:00,2025-11-25 07:00,0,10,100
CN.BB51.ST.2280,IMPACT - Y_RFI #1403 - PREP & SUBMIT RFI FOR BOX OUT DESIGN FOR SUPPORTS L3&L4 - GL 33,Complete,CONSTRUCTION,,GRIDLINE 33,,GL 33 PROCUREMENT ITEMS,CONSTRUCTION,,,,,2024-06-28 07:00,2024-07-08 17:00,2024-06-25 07:00,2024-06-26 17:00,2025-11-20 17:00,2025-11-20 17:00,2025-11-14 07:00,2025-11-14 07:00,0,50,100
CN.BB51.ST.2290,IMPACT - Y_RFI #XXXX - DESIGN CLARIFING FOR EXTERIOR STUDS - STAIR 5&18 - GL 33,Complete,CONSTRUCTION,,GRIDLINE 33,,GL 33 PROCUREMENT ITEMS,CONSTRUCTION,,,,,2024-06-28 07:00,2024-07-08 17:00,2024-06-27 07:00,2024-07-31 17:00,2025-11-20 17:00,2025-11-20 17:00,2025-11-03 07:00,2025-11-03 07:00,0,50,100
CN.SWB5.6980,IMPACT - REPAIR CONCRETE CURB TO FINISH DRYWALL - GL 33 - L1 - A-C,Complete,CONSTRUCTION,,GRIDLINE 33,L1 - Fndn Slab,GL33 EXTERIOR AREA (SUE) - A-C,CONSTRUCTION,,,,,2024-09-20 07:00,2024-09-26 17:00,2024-08-12 07:00,2024-08-14 17:00,2025-11-20 17:00,2025-11-20 17:00,2025-12-02 07:00,2025-12-02 07:00,0,40,100
CN.BB51.ST.2660,IMPACT - Y_RFI #1403 - SECAI REVIEW & PROVIDE DIRECTION FOR BOX OUT DESIGN FOR SUPPORTS L3&L4 - GL 33,Complete,CONSTRUCTION,,GRIDLINE 33,,GL 33 PROCUREMENT ITEMS,CONSTRUCTION,,,,,2024-07-15 07:00,2024-07-26 17:00,2024-06-27 07:00,2024-07-08 17:00,2025-11-20 17:00,2025-11-20 17:00,2025-11-14 07:00,2025-11-14 07:00,0,100,100
CN.BB51.ST.2670,IMPACT - Y_RFI #XXXX - SECAI REVIEW & PROVIDE DESIGN CLARIFICATION FOR EXTERIOR STUDS - STAIR 5&18 - GL 33,Complete,CONSTRUCTION,,GRIDLINE 33,,GL 33 PROCUREMENT ITEMS,CONSTRUCTION,,,,,2024-08-16 07:00,2024-08-26 17:00,2024-07-31 07:00,2024-08-01 17:00,2025-11-20 17:00,2025-11-20 17:00,2025-11-03 07:00,2025-11-03 07:00,0,60,100
CN.SWB5.6340,IMPACT - REPAIR CONCRETE CURB TO FINISH DRYWALL - GL 33 - L1 - G-K,Complete,CONSTRUCTION,,GRIDLINE 33,L1 - Fndn Slab,GL33 EXTERIOR AREA (FAB WEST) - G-K,CONSTRUCTION,,,,,2024-11-15 07:00,2024-11-21 17:00,2024-08-28 07:00,2024-08-29 17:00,2025-11-20 17:00,2025-11-20 17:00,2025-12-04 07:00,2025-12-04 07:00,0,40,100
CN.SEB1.9840,IMPACT - PATRIOT PROCURE TUBE STEEL FOR EXP JOINT ISSUE FIX - GL 19 - C/D/K/L,Complete,CONSTRUCTION,,SUEN-1 - 19-22,EXTERIOR SKIN,,CONSTRUCTION,SECAI,,,,2024-07-15 07:00,2024-07-17 17:00,2024-07-10 07:00,2024-07-11 17:00,2025-11-20 17:00,2025-11-20 17:00,2025-12-05 07:00,2025-12-05 07:00,0,30,100
CN.SEB1.9850,IMPACT - CCD XXX - YATES PREP & SUBMIT CCD - EXP JOINT ISSUE - GL 19 - C/D/K/L,Complete,CONSTRUCTION,,SUEN-1 - 19-22,EXTERIOR SKIN,,CONSTRUCTION,SECAI,,,,2024-08-05 07:00,2024-08-08 17:00,2024-07-10 07:00,2024-07-11 17:00,2025-11-20 17:00,2025-11-20 17:00,2025-12-05 07:00,2025-12-05 07:00,0,30,100
CN.SWA5.L3.260,IMPACT - PENDING CCD #358 - LEVEL1 CLOUMNS & BEAMS CSP-1 Grinding,Complete,CONSTRUCTION,,FIZ 2 / SUWS 5  (GL6-1) - GL J - N - DATA CENTER 1,L1 - Fndn Slab,FA/TEM LAB,CONSTRUCTION,,,,,2024-06-28 07:00,2024-07-05 17:00,2024-06-10 07:00,2025-03-03 17:00,2025-11-20 17:00,2025-11-20 17:00,2025-11-21 07:00,2025-11-21 07:00,0,40,100
CN.SWB5.9060,IMPACT - BRANDSAFWAY INSTALL & REVISE SCAFFOLD FOR IMP INSTALLATION - SE PENTHOUSE - SOUTH - GL 3 - A-D,Complete,CONSTRUCTION,,SOUTH EAST PENTHOUSE,EXTERIOR SKIN,,CONSTRUCTION,,,,,2024-07-05 07:00,2024-07-11 17:00,2024-07-03 07:00,2024-07-17 17:00,2025-11-20 17:00,2025-11-20 17:00,2025-12-03 07:00,2025-12-03 07:00,0,40,100
CN.SEA1.9165,IMPACT - WW INSTALL STRUCTURAL STEEL AT MEP LEAVEOUT - GL 16-17 - C-D - L6,Complete,CONSTRUCTION,,SUES-1 - 19-16,DS/AD,,CONSTRUCTION,,,,,2024-07-31 07:00,2024-08-09 17:00,2024-07-23 07:00,2024-07-29 17:00,2025-11-20 17:00,2025-11-20 17:00,2025-12-02 07:00,2025-12-02 07:00,0,70,100
CN.SEA1.9175,IMPACT - DECKING & DETAILING AT MEP LEAVEOUT - GL 16-17 - C-D - L6,Complete,CONSTRUCTION,,SUES-1 - 19-16,DS/AD,,CONSTRUCTION,,,,,2024-08-02 07:00,2024-08-06 17:00,2024-07-30 07:00,2024-07-31 17:00,2025-11-20 17:00,2025-11-20 17:00,2025-12-02 07:00,2025-12-02 07:00,0,30,100
CN.SEA1.9185,IMPACT - FRP SOMD AT MEP LEAVEOUT - GL 16-17 - C-D - L6,Complete,CONSTRUCTION,,SUES-1 - 19-16,DS/AD,,CONSTRUCTION,,,,,2024-08-09 07:00,2024-08-15 17:00,2024-08-01 07:00,2024-08-06 17:00,2025-11-20 17:00,2025-11-20 17:00,2025-12-05 17:00,2025-12-05 17:00,0,40,100
CN.SEA1.9195,IMPACT - SLAB CURE / MOBILIZE SPIDER CRANE FOR IMP INSTALLATION AT D LINE - GL 16-17 - C-D - L6,Complete,CONSTRUCTION,,SUES-1 - 19-16,DS/AD,,CONSTRUCTION,,,,,2024-08-09 07:00,2024-08-13 17:00,2024-08-07 07:00,2024-08-16 17:00,2025-11-20 17:00,2025-11-20 17:00,2025-12-05 17:00,2025-12-05 17:00,0,30,100
CN.SEB1.9880,IMPACT - SECAI IDENTIFIES SCOPE GAP / REQUEST YATES TO COMPLETE VOC ROOM STRUCTURE - GL 17-18 - L LINE (DS AREA),Complete,CONSTRUCTION,,SUWS-1 - 18-15,EXTERIOR SKIN,,CONSTRUCTION,PATRIOT,INSULATED METAL PANELS,,,2024-07-05 07:00,2024-07-05 17:00,2024-06-18 07:00,2024-06-18 17:00,2025-11-20 17:00,2025-11-20 17:00,2025-12-05 07:00,2025-12-05 07:00,0,10,100
CN.SEB1.9890,IMPACT - PATRIOT PRICING FOR VOC ROOM CLADDING SUPPORT STEEL & DECKING - GL 17-18 - L LINE (DS AREA),Complete,CONSTRUCTION,,SUWS-1 - 18-15,EXTERIOR SKIN,,CONSTRUCTION,PATRIOT,INSULATED METAL PANELS,,,2024-07-05 07:00,2024-07-19 17:00,2024-06-19 07:00,2024-07-03 17:00,2025-11-20 17:00,2025-11-20 17:00,2025-12-05 07:00,2025-12-05 07:00,0,100,100
CN.SEB1.9900,IMPACT - CCD 396 - YATES PREP & SUBMIT CCD FOR VOC ROOM STRUCTURE - GL 17-18 - L LINE (DS AREA),Complete,CONSTRUCTION,,SUWS-1 - 18-15,EXTERIOR SKIN,,CONSTRUCTION,PATRIOT,INSULATED METAL PANELS,,,2024-07-05 07:00,2024-07-12 17:00,2024-07-04 07:00,2024-07-05 17:00,2025-11-20 17:00,2025-11-20 17:00,2025-12-05 07:00,2025-12-05 07:00,0,50,100
CN.SEB1.9910,IMPACT - CCD 396 - SECAI REVIEW & APPROVE CCD FOR VOC ROOM STRUCTURE - GL 17-18 - L LINE (DS AREA),Complete,CONSTRUCTION,,SUWS-1 - 18-15,EXTERIOR SKIN,,CONSTRUCTION,PATRIOT,INSULATED METAL PANELS,,,2024-07-17 07:00,2024-07-23 17:00,2024-07-06 07:00,2024-07-10 17:00,2025-11-20 17:00,2025-11-20 17:00,2025-12-05 07:00,2025-12-05 07:00,0,50,100
CN.SEB1.9920,IMPACT - CCD 396 - PATRIOT PREP & SUBMIT SHOP DRAWINGS FOR VOC SUPPORT STEEL & DECKING - GL 17-18 - L LINE (DS AREA),Complete,CONSTRUCTION,,SUWS-1 - 18-15,EXTERIOR SKIN,,CONSTRUCTION,PATRIOT,INSULATED METAL PANELS,,,2024-07-23 07:00,2024-07-29 17:00,2024-06-26 07:00,2024-07-01 17:00,2025-11-20 17:00,2025-11-20 17:00,2025-12-05 07:00,2025-12-05 07:00,0,50,100
CN.SEB1.9930,IMPACT - CCD 396 - SECAI REVIEW & APPROVE SHOP DRAWINGS FOR VOC SUPPORT STEEL & DECKING - GL 17-18 - L LINE (DS AREA),Complete,CONSTRUCTION,,SUWS-1 - 18-15,EXTERIOR SKIN,,CONSTRUCTION,PATRIOT,INSULATED METAL PANELS,,,2024-07-26 07:00,2024-08-09 17:00,2024-07-02 07:00,2024-07-25 17:00,2025-11-20 17:00,2025-11-20 17:00,2025-12-05 07:00,2025-12-05 07:00,0,100,100
CN.SEB1.9940,IMPACT - CCD 396 - PATRIOT FAB/DELIVER VOC SUPPORT STEEL & DECKING - GL 17-18 - L LINE (DS AREA),Complete,CONSTRUCTION,,SUWS-1 - 18-15,EXTERIOR SKIN,,CONSTRUCTION,PATRIOT,INSULATED METAL PANELS,,,2024-07-29 07:00,2024-08-28 17:00,2024-07-11 07:00,2024-08-30 17:00,2025-11-20 17:00,2025-11-20 17:00,2025-12-05 07:00,2025-12-05 07:00,0,200,100
CN.SEB1.9950,"IMPACT - CCD 396 - INSTALL VOC ROOM SUPPORT STEEL, BENT PLATE & DECKING - GL 17-18 - L LINE (DS AREA)",Complete,CONSTRUCTION,,SUWS-1 - 18-15,EXTERIOR SKIN,,CONSTRUCTION,PATRIOT,INSULATED METAL PANELS,,,2024-09-13 07:00,2024-09-26 17:00,2024-09-03 07:00,2024-10-14 17:00,2025-11-20 17:00,2025-11-20 17:00,2025-12-05 07:00,2025-12-05 07:00,0,80,100
CN.SEB1.9960,IMPACT - CCD 396 - FRP SOMD AT VOC ROOM ROOF - GL 17-18 - L LINE (DS AREA),Complete,CONSTRUCTION,,SUWS-1 - 18-15,EXTERIOR SKIN,,CONSTRUCTION,PATRIOT,INSULATED METAL PANELS,,,2024-10-15 07:00,2024-10-21 17:00,2024-10-15 07:00,2024-10-18 17:00,2025-11-20 17:00,2025-11-20 17:00,2025-12-05 07:00,2025-12-05 07:00,0,40,100
CN.SEB1.9970,IMPACT - CCD 396 - INSTALL WATERPROOFING & TPO ROOFING AT VOC ROOM ROOF - GL 17-18 - L LINE (DS AREA),Complete,CONSTRUCTION,,SUWS-1 - 18-15,L6 - PENTHOUSE / DS ROOF,,CONSTRUCTION,PATRIOT,INSULATED METAL PANELS,,,2025-02-05 07:00,2025-02-12 17:00,2025-02-05 07:00,2025-02-08 17:00,2025-11-20 17:00,2025-11-20 17:00,2025-12-05 07:00,2025-12-05 07:00,0,60,100
CN.SEB1.9980,IMPACT - CCD 396 - ALPHA PAINT VOC ROOM CLADDING SUPPORT STEEL - GL 19.5-18.5 - L LINE (DS AREA),Complete,CONSTRUCTION,,SUWS-1 - 18-15,EXTERIOR SKIN,,CONSTRUCTION,ALPHA,INSULATED METAL PANELS,,,2024-11-11 07:00,2024-11-12 17:00,2024-11-11 07:00,2024-11-16 17:00,2025-11-20 17:00,2025-11-20 17:00,2025-12-05 07:00,2025-12-05 07:00,0,20,100
CN.SWB5.2390,IMPACT - CCD 394 - INSTALL TEMP DRYALL ENCLOSURE - MCC & IO ROOMS - SW PENTHOUSE,Complete,CONSTRUCTION,,SOUTH WEST PENTHOUSE,L4 - SUP Roof - FAB Roof,,CONSTRUCTION,,,,,2024-07-12 07:00,2024-07-19 17:00,2024-07-11 07:00,2024-07-26 17:00,2025-11-20 17:00,2025-11-20 17:00,2025-12-05 17:00,2025-12-05 17:00,0,60,100
CN.SWA5..1760,IMPACT - YATES DIRECTS INFINITY TO PROCEED WITH SAWCUT SOMD - ELEVATOR 01B - L2 & L3,Complete,CONSTRUCTION,,FIZ 2 / SUWS 5  (GL6-1) - GL J - N - DATA CENTER 1,,ELEVATOR,CONSTRUCTION,SECAI,,,,2024-06-20 07:00,2024-06-20 17:00,2024-07-08 07:00,2024-07-08 17:00,2025-11-20 17:00,2025-11-20 17:00,2025-12-01 07:00,2025-12-01 07:00,0,10,100
CN.SWA5..1770,IMPACT - INFINITY SPIDER BOOM APPROVAL & MOBILIZATION TO SITE FOR SAWCUT SOMD - ELEVATOR 01B - L2 & L3,Complete,CONSTRUCTION,,FIZ 2 / SUWS 5  (GL6-1) - GL J - N - DATA CENTER 1,,ELEVATOR,CONSTRUCTION,SECAI,,,,2024-06-20 07:00,2024-06-28 17:00,2024-07-09 07:00,2024-07-11 17:00,2025-11-20 17:00,2025-11-20 17:00,2025-12-01 07:00,2025-12-01 07:00,0,60,100
CN.SEB3.6880,IMPACT [S13] - COORDINATE & DEMO WALLS FOR SCANNING/ACCESS - STAIR 19 - GL 25-25.5 - C-E - L3,Complete,CONSTRUCTION,,SUEN-3 - 25-28,INTERIOR STAIR TOWER - STAIR #19 (CLEAN ROOM) - DE-SCOPED,,CONSTRUCTION,W&W,,,,2024-07-12 07:00,2024-07-29 17:00,2024-07-08 07:00,2024-08-30 07:00,2025-11-20 17:00,2025-11-20 17:00,2025-12-05 17:00,2025-12-05 17:00,0,150,100
CN.SWB3.5200,IMPACT [S13] - COORDINATE & DEMO WALLS FOR SCANNING/ACCESS - STAIR 4 - GL 22.5-23 - K-L - L3,Complete,CONSTRUCTION,,SUWN-3 - 24-27,DS/AD,,CONSTRUCTION,W&W,,,,2024-07-12 07:00,2024-08-01 17:00,2024-05-23 07:00,2024-07-11 17:00,2025-11-20 17:00,2025-11-20 17:00,2025-12-05 17:00,2025-12-05 17:00,0,150,100
CN.SEA2.6710,IMPACT [S13] - COORDINATE & DEMO WALLS FOR SCANNING/ACCESS - STAIR 21 - GL13-14 - C-D - L3,Complete,CONSTRUCTION,,SUES-3 - 13-9,INTERIOR STAIR TOWER - STAIR #21 (CLEAN ROOM),,CONSTRUCTION,W&W,,,,2024-07-25 07:00,2024-08-16 17:00,2024-05-30 07:00,2024-07-12 17:00,2025-11-20 17:00,2025-11-20 17:00,2025-11-12 07:00,2025-11-12 07:00,0,150,100
CN.SEB3.6890,IMPACT [S13] - SECAI SCAFFOLD BLOCKING ACCESS TO INSTALL & REVISE STEEL - STAIR 19 - GL 25-25.5 - C-E - L4,Complete,CONSTRUCTION,,SUEN-3 - 25-28,INTERIOR STAIR TOWER - STAIR #19 (CLEAN ROOM) - DE-SCOPED,,CONSTRUCTION,W&W,,,,2024-07-24 07:00,2024-08-23 17:00,2024-02-12 07:00,2024-09-04 16:00,2025-11-20 17:00,2025-11-20 17:00,2025-12-05 17:00,2025-12-05 17:00,0,200,100
CN.SWB3.5210,IMPACT [S13] - SECAI SCAFFOLD BLOCKING ACCESS TO INSTALL & REVISE STEEL - STAIR 4 - GL 22.5-23 - K-L - L4,Complete,CONSTRUCTION,,SUWN-2 - 21-24,INTERIOR STAIR TOWER - STAIR #4 (CLEAN ROOM),,CONSTRUCTION,W&W,,,,2024-07-30 07:00,2024-08-29 17:00,2024-04-15 07:00,2024-08-04 17:00,2025-11-20 17:00,2025-11-20 17:00,2025-12-05 17:00,2025-12-05 17:00,0,200,100
CN.SEA2.6720,IMPACT [S13] - SECAI SCAFFOLD BLOCKING ACCESS TO INSTALL & REVISE STEEL - STAIR 21 - GL13-14 - C-D - L4,Complete,CONSTRUCTION,,SUES-3 - 13-9,INTERIOR STAIR TOWER - STAIR #21 (CLEAN ROOM),,CONSTRUCTION,W&W,,,,2024-08-01 07:00,2024-09-03 17:00,2024-02-12 07:00,2024-08-04 17:00,2025-11-20 17:00,2025-11-20 17:00,2025-11-12 07:00,2025-11-12 07:00,0,200,100
CN.SWA4.6970,IMPACT - INSTALL INSULATED METAL PANEL MODULES - GL 1-1.5 - N LINE [SUP EXTERIOR WALL],Complete,CONSTRUCTION,,FIZ 2 / SUWS 5  (GL6-1) - GL J - N - DATA CENTER 1,EXTERIOR SKIN,,CONSTRUCTION,KOVACH,INSULATED METAL PANELS,,,2024-08-15 07:00,2024-08-19 17:00,2024-08-01 07:00,2024-08-03 17:00,2025-11-20 17:00,2025-11-20 17:00,2025-12-05 17:00,2025-12-05 17:00,0,50,100
CN.SWA4.6990,IMPACT - INSTALL HAT CHANNEL - GL 1-1.5 - N LINE [SUP EXTERIOR WALL],Complete,CONSTRUCTION,,FIZ 2 / SUWS 5  (GL6-1) - GL J - N - DATA CENTER 1,EXTERIOR SKIN,,CONSTRUCTION,KOVACH,INSULATED METAL PANELS,,,2024-08-09 07:00,2024-08-13 17:00,2024-07-29 07:00,2024-08-01 17:00,2025-11-20 17:00,2025-11-20 17:00,2025-12-05 17:00,2025-12-05 17:00,0,50,100
PP.SUE.1260,IMPACT - AWAIT SECAI CSA TO APPROVE CHANGE ORDERS & PROCESS PAYMENT - REMAINING PENETRATIONS,Complete,CONSTRUCTION,,SUEN-1 - 19-22,DS/AD,,CONSTRUCTION,PERRY & PERRY,,,,2024-07-12 07:00,2024-08-01 17:00,2024-06-28 07:00,2024-08-31 17:00,2025-11-20 17:00,2025-11-20 17:00,2025-12-05 17:00,2025-12-05 17:00,0,150,100
CN.SWA4.7000,IMPACT - Y_RFI 1418 - PREP & SUBMIT RFI FOR MISSING CLADDING SUPPORT STEEL - GL 1-1.5 - A&N LINE [SUP EXTERIOR WALL],Complete,CONSTRUCTION,,FIZ 2 / SUWS 5  (GL6-1) - GL J - N - DATA CENTER 1,EXTERIOR SKIN,,CONSTRUCTION,KOVACH,INSULATED METAL PANELS,,,2024-07-12 07:00,2024-07-16 17:00,2024-06-26 07:00,2024-07-03 17:00,2025-11-20 17:00,2025-11-20 17:00,2025-12-05 17:00,2025-12-05 17:00,0,50,100
CN.SWA4.7010,IMPACT - Y_RFI 1418 - SECAI PROVIDE DIRECTION FOR MISSING CLADDING SUP STEEL - GL 1-1.5 - A&N LINE [SUP EXTERIOR WALL],Complete,CONSTRUCTION,,FIZ 2 / SUWS 5  (GL6-1) - GL J - N - DATA CENTER 1,EXTERIOR SKIN,,CONSTRUCTION,KOVACH,INSULATED METAL PANELS,,,2024-07-18 07:00,2024-07-28 17:00,2024-07-04 07:00,2024-07-17 17:00,2025-11-20 17:00,2025-11-20 17:00,2025-12-05 17:00,2025-12-05 17:00,0,100,100
EMB6160,IMPACT - FRAMING FOR IMP AT LEAVEOUT - GL 3-4 - E LINE (AD AREA),Complete,CONSTRUCTION,,SUES-5 - 6-1 - FIZ - GL A -E,DS/AD,,CONSTRUCTION,KOVACH,INSULATED METAL PANELS,,,2024-09-13 07:00,2024-09-14 17:00,2024-08-26 07:00,2024-08-30 17:00,2025-11-20 17:00,2025-11-20 17:00,2025-12-05 17:00,2025-12-05 17:00,0,20,100
EMB6170,IMPACT - INSTALL INSULATED METAL PANEL MODULES - GL 3-4.5 - E LINE (AD AREA),Complete,CONSTRUCTION,,SUES-5 - 6-1 - FIZ - GL A -E,DS/AD,,CONSTRUCTION,KOVACH,INSULATED METAL PANELS,,,2024-09-15 07:00,2024-09-16 17:00,2024-09-03 07:00,2024-09-06 17:00,2025-11-20 17:00,2025-11-20 17:00,2025-12-05 17:00,2025-12-05 17:00,0,20,100
CN.BB51.ST.2680,IMPACT - COORIDNATE FIX FOR STRINGER ISSUE - GL 33 - STAIR 5 - K-L,Complete,CONSTRUCTION,,GRIDLINE 33,,STAIR 5 (WEST) - K-L,CONSTRUCTION,PATRIOT,,,,2024-07-12 07:00,2024-08-01 17:00,2024-07-11 07:00,2024-07-17 17:00,2025-11-20 17:00,2025-11-20 17:00,2025-11-03 07:00,2025-11-03 07:00,0,150,100
CN.AB.AR.4910,IMPACT - GROUND TERMINAL BOXES IMPEADING- SEA1 - GL 19-18 - C-A - L3,Complete,CONSTRUCTION,,SUES-1 - 19-16,L3 / Waffle Slab Level,ELECTRIC RM 2,CONSTRUCTION,,,,,2024-07-08 07:00,2024-07-12 17:00,2024-07-08 07:00,2024-10-24 17:00,2025-11-20 17:00,2025-11-20 17:00,2025-11-14 17:00,2025-11-14 17:00,0,40,100
CN.AB.AR.5850,IMPACT - MEP BLOCKING THE AREA - SWB5 - L2- - GL 15-18 (SUB CLEAN RM),Complete,CONSTRUCTION,,SUWS-1 - 18-15,L3 / Waffle Slab Level,SUB CLEAN RM,CONSTRUCTION,,,,,2024-07-11 07:00,2024-07-16 17:00,2024-07-11 07:00,2024-07-20 08:00,2025-11-20 17:00,2025-11-20 17:00,2025-11-24 07:00,2025-11-24 07:00,0,40,100
CN.SWB24360,IMPACT - CABLE TRAY BLOCKING THE AREA - SWB5 - L3- GL K 121 (SUB CLEAN RM),Complete,CONSTRUCTION,,SUWN-2 - 21-24,L3 / Waffle Slab Level,ELECTRIC RM 1,CONSTRUCTION,,,,,2024-07-11 07:00,2024-07-16 17:00,2024-07-11 07:00,2024-07-31 17:00,2025-11-20 17:00,2025-11-20 17:00,2025-12-05 07:00,2025-12-05 07:00,0,40,100
CN.SWB4.3200,IMPACT - CABLE WIRE BLOCKING THE AREA - SWB-1-L2 - BATTERY ROOM 3 & GCS STORAGE GL 27-28/M,Complete,CONSTRUCTION,,SUWN-4 - 27-30,L2 - SubFab Level,BATT RM 3,CONSTRUCTION,,,,,2024-06-03 07:00,2024-06-07 17:00,2024-04-21 07:00,2024-10-01 17:00,2025-11-20 17:00,2025-11-20 17:00,2025-11-10 07:00,2025-11-10 07:00,0,40,100
CN.SWB34600,IMPACT - TARPS BLOCKING THE DRYWALL INSTALL - SWB-3- ELECTRICAL ROOM - GL 29-30 L,Complete,CONSTRUCTION,,SUWN-3 - 24-27,L3 / Waffle Slab Level,ELECTRIC RM 1,CONSTRUCTION,,,,,2024-07-11 07:00,2024-07-16 17:00,2024-07-11 07:00,2024-08-01 17:00,2025-11-20 17:00,2025-11-20 17:00,2025-12-05 07:00,2025-12-05 07:00,0,40,100
CN.SEA5.9840,IMPACT - REMEDY - PROCURE AND DELIVER 8'' METAL STUDD - SEA3 - GL 30-33 - K LINE - L1,Complete,CONSTRUCTION,,SUWN-5 - 30-33,L1 - Fndn Slab,,CONSTRUCTION,,,,,2024-07-15 07:00,2024-07-22 17:00,2024-07-13 07:00,2024-07-17 17:00,2025-11-20 17:00,2025-11-20 17:00,2025-11-24 07:00,2025-11-24 07:00,0,60,100
CN.SWA4.7020,IMPACT - NEED TEMP POWER REROUTED / AWAIT SECAI - GL 3 - N LINE (NEW 8/15),Complete,CONSTRUCTION,,FIZ 2 / SUWS 5  (GL6-1) - GL J - N - DATA CENTER 1,EXTERIOR SKIN,,CONSTRUCTION,KOVACH,INSULATED METAL PANELS,,,2025-01-27 07:00,2025-02-07 17:00,2024-07-04 07:00,2025-09-18 17:00,2025-11-20 17:00,2025-11-20 17:00,2025-11-26 07:00,2025-11-26 07:00,0,100,100
CN.SWA5.DS.3030,IMPACT - REMEDY - MISSING PUTTY PACKS (INT) - SWA5 - GL 6-4 - K LINE - L2,Complete,CONSTRUCTION,,FIZ 2 / SUWS 5  (GL6-1) - GL J - N - DATA CENTER 1,L2 - SubFab Level,DS/AD INTERIORS,CONSTRUCTION,SECAI,,,,2024-07-16 07:00,2024-07-24 17:00,2024-07-16 07:00,2024-08-01 17:00,2025-11-20 17:00,2025-11-20 17:00,2025-11-24 07:00,2025-11-24 07:00,0,70,100
CN.SWA5.DS.3040,IMPACT - REMEDY - CABLE TRAYS IN THE WAY TO GET WALL INSPECTED - SWA5 - GL 6-4 - K LINE - L2,Complete,CONSTRUCTION,,FIZ 2 / SUWS 5  (GL6-1) - GL J - N - DATA CENTER 1,L2 - SubFab Level,DS/AD INTERIORS,CONSTRUCTION,SECAI,,,,2024-07-16 07:00,2024-07-24 17:00,2024-07-20 07:00,2024-08-01 17:00,2025-11-20 17:00,2025-11-20 17:00,2025-11-24 07:00,2025-11-24 07:00,0,70,100
CN.SEB4.8960,IMPACT -MEP MEATERIAL ON THE GROUND - WAFER I/O ROOM - SEB4 - GL 30-31 - C-A - L3,Complete,CONSTRUCTION,,SUEN-4 - 28-31,L3 / Waffle Slab Level,WAFER I/O RM,CONSTRUCTION,CHERRY COATING,,,,2024-06-14 07:00,2024-06-25 17:00,2024-07-01 07:00,2024-07-06 17:00,2025-11-20 17:00,2025-11-20 17:00,2025-12-01 07:00,2025-12-01 07:00,0,70,100
CN.AB.AR.7010,IMPACT - SECAI DIRECTION TO HOLD ON SCAFFOLDING INSTALLATION FOR PLATFORM - SWB5 - L3 GL 30-33 K-N (CRT LAB),Complete,CONSTRUCTION,,SUWN-5 - 30-33,L3 / Waffle Slab Level,CRT LAB,CONSTRUCTION,CHERRY COATING,,,,2024-07-09 07:00,2024-07-18 17:00,2024-07-09 07:00,2024-07-31 17:00,2025-11-20 17:00,2025-11-20 17:00,2025-12-01 07:00,2025-12-01 07:00,0,70,100
ELEVHSS410,"IMPACT - NCR 372 - AWAIT SECAI TO PROVIDE DIRECTION FOR INACCESSIBLE BOLT REPAIR - ELEVATORS 3,5,18,20,22",Complete,CONSTRUCTION,,ELEVATORS,L1 - Fndn Slab,,PRE - CON / BUYOUT / IMPACTS,SECAI,,,,2024-07-26 07:00,2024-08-08 17:00,2024-07-19 07:00,2024-07-26 07:00,2025-11-20 17:00,2025-11-20 17:00,2025-10-16 07:00,2025-10-16 07:00,0,90,100
CN.SWB5.2620,INSTALL CLADDING STEEL & DETAILING FOR IMP - SE PENTHOUSE - L6 ROOF,Complete,CONSTRUCTION,,SOUTH EAST PENTHOUSE,L6 - PENTHOUSE / DS ROOF,,CONSTRUCTION,,,,,2024-08-30 07:00,2024-09-06 17:00,2024-08-19 07:00,2024-09-19 17:00,2025-11-20 17:00,2025-11-20 17:00,2025-12-05 17:00,2025-12-05 17:00,0,50,100
CN.SWB5.2630,ALPHA PAINT CLADDING STEEL - SE PENTHOUSE - L6 ROOF,Complete,CONSTRUCTION,,SOUTH EAST PENTHOUSE,L6 - PENTHOUSE / DS ROOF,,CONSTRUCTION,,,,,2024-09-20 07:00,2024-09-26 17:00,2024-09-20 07:00,2024-09-21 17:00,2025-11-20 17:00,2025-11-20 17:00,2025-12-05 17:00,2025-12-05 17:00,0,40,100
CN.SWB5.2640,INSTALL INSULATED METAL PANELS - SE PENTHOUSE - L6 ROOF,Complete,CONSTRUCTION,,SOUTH EAST PENTHOUSE,L6 - PENTHOUSE / DS ROOF,,CONSTRUCTION,,,,,2024-09-27 07:00,2024-10-04 17:00,2024-09-24 07:00,2024-10-26 17:00,2025-11-20 17:00,2025-11-20 17:00,2025-12-05 17:00,2025-12-05 17:00,0,50,100
STAIR.1100,INSTALL & INSPECT STAIR #23 - SUW - 13-M.5 - LEVEL U1-L01,Complete,CONSTRUCTION,,INTERIOR STAIRS,LU1 - Underground Level,SUW - SUPPORT WEST,CONSTRUCTION,,,,,2024-09-13 07:00,2024-09-19 17:00,2024-09-06 07:00,2024-10-31 17:00,2025-11-20 17:00,2025-11-20 17:00,2025-12-05 17:00,2025-12-05 17:00,0,40,100
STAIR.1110,INSTALL & INSPECT STAIR #24 - SUW - 13-L.5 - LEVEL U1-01(NEED TO BE RELOCATED),Complete,CONSTRUCTION,,INTERIOR STAIRS,LU1 - Underground Level,SUW - SUPPORT WEST,CONSTRUCTION,,,,,2024-11-25 07:00,2024-12-02 17:00,2024-11-25 07:00,2025-05-23 17:00,2025-11-20 17:00,2025-11-20 17:00,2025-12-05 17:00,2025-12-05 17:00,0,40,100
STAIR.1140,INSTALL & INSPECT STAIR #27 - SUW - 23-M.5 - LEVEL U1-01(NOT COMPLETE- NEED RFI FOR STAIR TO SLAB CONNECTION ),Complete,CONSTRUCTION,,INTERIOR STAIRS,L1 - Fndn Slab,SUW - SUPPORT WEST,CONSTRUCTION,,,,,2024-08-09 07:00,2024-08-15 17:00,2024-08-02 07:00,2024-09-26 17:00,2025-11-20 17:00,2025-11-20 17:00,2025-12-01 07:00,2025-12-01 07:00,0,40,100
STAIR.1150,INSTALL & INSPECT STAIR #33 & 36 - SUW - 33-M - LEVEL U1,Complete,CONSTRUCTION,,INTERIOR STAIRS,LU1 - Underground Level,SUW - SUPPORT WEST,CONSTRUCTION,,,,,2024-09-20 07:00,2024-09-26 17:00,2024-06-20 07:00,2024-06-26 17:00,2025-11-20 17:00,2025-11-20 17:00,2025-12-01 07:00,2025-12-01 07:00,0,40,100
STAIR.1160,INSTALL & INSPECT STAIR #28 & 29  - SUW - 24-M - LEVEL U1,Complete,CONSTRUCTION,,INTERIOR STAIRS,LU1 - Underground Level,SUW - SUPPORT WEST,CONSTRUCTION,,,,,2025-08-06 07:00,2025-08-19 17:00,2025-08-06 07:00,2025-08-14 17:00,2025-11-20 17:00,2025-11-20 17:00,2025-12-01 07:00,2025-12-01 07:00,0,100,100
STAIR.1170,INSTALL & INSPECT STAIR #30 - SUW - 25-M.5 - LEVEL U1-01,Complete,CONSTRUCTION,,INTERIOR STAIRS,L1 - Fndn Slab,SUW - SUPPORT WEST,CONSTRUCTION,,,,,2024-07-26 07:00,2024-08-02 17:00,2024-07-15 07:00,2024-07-23 17:00,2025-11-20 17:00,2025-11-20 17:00,2025-12-01 07:00,2025-12-01 07:00,0,60,100
STAIR.1180,INSTALL & INSPECT STAIR #31 - SUW - 25-M.5 - LEVEL U1-01 (NOT COMPLETE - REQUIRES REFABRICATION),Complete,CONSTRUCTION,,INTERIOR STAIRS,LU1 - Underground Level,SUW - SUPPORT WEST,CONSTRUCTION,,,,,2024-08-12 07:00,2024-08-20 17:00,2024-07-22 07:00,2024-08-02 00:00,2025-11-20 17:00,2025-11-20 17:00,2025-12-05 17:00,2025-12-05 17:00,0,60,100
STAIR.1190,INSTALL & INSPECT STAIR #32 - FIZ - 2-F - LEVEL 01,Complete,CONSTRUCTION,,INTERIOR STAIRS,L1 - Fndn Slab,FIZ,CONSTRUCTION,,,,,2024-12-27 07:00,2024-12-31 17:00,2024-09-09 07:00,2024-09-14 17:00,2025-11-20 17:00,2025-11-20 17:00,2025-10-21 07:00,2025-10-21 07:00,0,30,100
STAIR.1210,INSTALL & INSPECT STAIR #34 - SUW - 26-M.5 - LEVEL U1-01 (NOT COMPLETE - REQUIRES REFABRICATION),Complete,CONSTRUCTION,,INTERIOR STAIRS,LU1 - Underground Level,SUW - SUPPORT WEST,CONSTRUCTION,,,,,2024-08-22 07:00,2024-08-29 17:00,2024-07-24 07:00,2024-10-18 17:00,2025-11-20 17:00,2025-11-20 17:00,2025-12-01 07:00,2025-12-01 07:00,0,60,100
STAIR.1220,INSTALL & INSPECT STAIR #35 - SUW - 27-M.5 - LEVEL U1-01 (Waiting on LANDING FIX PROCURED TO COMPLETE INSTALL),Complete,CONSTRUCTION,,INTERIOR STAIRS,L1 - Fndn Slab,FIZ,CONSTRUCTION,,,,,2024-08-29 07:00,2024-09-06 17:00,2024-08-01 07:00,2024-10-09 07:00,2025-11-20 17:00,2025-11-20 17:00,2025-12-05 17:00,2025-12-05 17:00,0,60,100
STAIR.1240,INSTALL & INSPECT STAIR #37 - SUW - 27-L.5 - LEVEL U1-01,Complete,CONSTRUCTION,,INTERIOR STAIRS,LU1 - Underground Level,SUW - SUPPORT WEST,CONSTRUCTION,,,,,2024-08-26 07:00,2024-08-29 17:00,2024-08-16 07:00,2024-08-20 17:00,2025-11-20 17:00,2025-11-20 17:00,2025-12-01 07:00,2025-12-01 07:00,0,40,100
STAIR.1250,INSTALL & INSPECT STAIR #38 - SUW - 26-L.5 - LEVEL U1-01,Complete,CONSTRUCTION,,INTERIOR STAIRS,LU1 - Underground Level,SUW - SUPPORT WEST,CONSTRUCTION,,,,,2024-09-09 07:00,2024-09-13 17:00,2024-08-24 07:00,2024-09-11 17:00,2025-11-20 17:00,2025-11-20 17:00,2025-12-01 07:00,2025-12-01 07:00,0,40,100
STAIR.1260,INSTALL & INSPECT STAIR #39 - SUW - 25-M.5 - LEVEL U1-01(NOT CMPLETE - NEED RFI FOR TOP CONNECTION),Complete,CONSTRUCTION,,INTERIOR STAIRS,L1 - Fndn Slab,SUW - SUPPORT WEST,CONSTRUCTION,,,,,2024-08-19 07:00,2024-08-27 17:00,2024-08-09 07:00,2024-08-15 17:00,2025-11-20 17:00,2025-11-20 17:00,2025-12-01 07:00,2025-12-01 07:00,0,60,100
STAIR.1270,INSTALL & INSPECT STAIR #40 - SUW - 29.M.5 - LEVEL U1-01 (NOT COMPLETE - REQUIRES REFABRICATION),Complete,CONSTRUCTION,,INTERIOR STAIRS,LU1 - Underground Level,SUW - SUPPORT WEST,CONSTRUCTION,,,,,2024-08-16 07:00,2024-08-26 17:00,2024-07-23 07:00,2024-08-02 17:00,2025-11-20 17:00,2025-11-20 17:00,2025-12-05 17:00,2025-12-05 17:00,0,60,100
STAIR.1280,INSTALL & INSPECT STAIR #41 - SUW - 31-N - LEVEL U1-01,Complete,CONSTRUCTION,,INTERIOR STAIRS,L1 - Fndn Slab,SUW - SUPPORT WEST,CONSTRUCTION,,,,,2024-10-22 07:00,2024-10-31 17:00,2024-10-22 07:00,2024-10-29 17:00,2025-11-20 17:00,2025-11-20 17:00,2025-12-05 17:00,2025-12-05 17:00,0,60,100
STAIR.1290,INSTALL & INSPECT STAIR #42 - FIZ - 1-F - LEVEL 01,Complete,CONSTRUCTION,,INTERIOR STAIRS,L1 - Fndn Slab,FIZ,CONSTRUCTION,,,,,2024-09-17 07:00,2024-09-20 17:00,2024-09-06 07:00,2024-09-21 17:00,2025-11-20 17:00,2025-11-20 17:00,2025-10-21 07:00,2025-10-21 07:00,0,30,100
STAIR.1330,INSTALL & INSPECT STAIR #46 - FIZ - 1-M - LEVEL 02 (FINAL ANCHORING & INSPECTIONS),Active,CONSTRUCTION,,INTERIOR STAIRS,L2 - SubFab Level,FIZ,CONSTRUCTION,,,,,2024-10-14 07:00,2024-10-17 17:00,2024-06-11 07:00,,2025-12-09 07:00,2025-12-12 17:00,2025-11-20 07:00,2025-11-25 17:00,40,30,0
STAIR.1340,INSTALL & INSPECT STAIR #47 - FIZ - 1-L - LEVEL 02,Complete,CONSTRUCTION,,INTERIOR STAIRS,L2 - SubFab Level,FIZ,CONSTRUCTION,,,,,2024-06-24 07:00,2024-07-01 17:00,2024-06-24 07:00,2024-07-01 17:00,2025-11-20 17:00,2025-11-20 17:00,2025-10-21 07:00,2025-10-21 07:00,0,50,100
STAIR.1360,INSTALL & INSPECT STAIR #49 - SUW - 18-19-L - LEVEL 01,Complete,CONSTRUCTION,,INTERIOR STAIRS,L1 - Fndn Slab,SUW - SUPPORT WEST,CONSTRUCTION,,,,,2025-02-14 07:00,2025-02-19 17:00,2025-02-14 07:00,2025-06-04 17:00,2025-11-20 17:00,2025-11-20 17:00,2025-12-05 17:00,2025-12-05 17:00,0,40,100
STAIR.1380,INSTALL & INSPECT STAIR #51 - SUW - 30-32-N - LEVEL 02,Complete,CONSTRUCTION,,INTERIOR STAIRS,L2 - SubFab Level,SUW - SUPPORT WEST,CONSTRUCTION,,,,,2024-09-30 07:00,2024-10-03 17:00,2024-09-30 07:00,2024-10-05 17:00,2025-11-20 17:00,2025-11-20 17:00,2025-12-05 17:00,2025-12-05 17:00,0,30,100
STAIR.1390,INSTALL & INSPECT STAIR #52 - SUW - 30-32-N - LEVEL 02,Complete,CONSTRUCTION,,INTERIOR STAIRS,L2 - SubFab Level,SUW - SUPPORT WEST,CONSTRUCTION,,,,,2025-10-13 07:00,2025-10-17 17:00,2025-10-13 07:00,2025-10-16 17:00,2025-11-20 17:00,2025-11-20 17:00,2025-12-05 17:00,2025-12-05 17:00,0,50,100
STAIR.1400,INSTALL & INSPECT STAIR #53 - SUW - 30-32-N - LEVEL 02,Complete,CONSTRUCTION,,INTERIOR STAIRS,L2 - SubFab Level,SUW - SUPPORT WEST,CONSTRUCTION,,,,,2024-09-30 07:00,2024-10-03 17:00,2024-09-30 07:00,2024-10-05 17:00,2025-11-20 17:00,2025-11-20 17:00,2025-12-05 17:00,2025-12-05 17:00,0,30,100
STAIR.1410,INSTALL & INSPECT STAIR #54 - SUW - 30-32-N - LEVEL 02,Complete,CONSTRUCTION,,INTERIOR STAIRS,L2 - SubFab Level,SUW - SUPPORT WEST,CONSTRUCTION,,,,,2024-10-07 07:00,2024-10-10 17:00,2024-10-07 07:00,2024-10-10 17:00,2025-11-20 17:00,2025-11-20 17:00,2025-12-05 17:00,2025-12-05 17:00,0,30,100
STAIR.1420,INSTALL & INSPECT STAIR #55 - SUW - 30-32-N - LEVEL 02,Complete,CONSTRUCTION,,INTERIOR STAIRS,L2 - SubFab Level,SUW - SUPPORT WEST,CONSTRUCTION,,,,,2025-01-15 07:00,2025-01-24 17:00,2025-01-15 07:00,2025-05-28 17:00,2025-11-20 17:00,2025-11-20 17:00,2025-12-05 17:00,2025-12-05 17:00,0,80,100
STAIR.1430,INSTALL & INSPECT STAIR #56 - FIZ - 1-H - LEVEL 02 (FINAL ANCHORING & INSPECTIONS) -,Complete,CONSTRUCTION,,INTERIOR STAIRS,L2 - SubFab Level,FIZ,CONSTRUCTION,,,,,2024-11-12 07:00,2024-11-15 17:00,2024-06-11 07:00,2025-04-03 17:00,2025-11-20 17:00,2025-11-20 17:00,2025-11-25 17:00,2025-11-25 17:00,0,30,100
STAIR.1440,INSTALL & INSPECT STAIR #57 - FIZ - 1-G.5 - LEVEL 02 (FINAL ANCHORING & INSPECTIONS) -,Complete,CONSTRUCTION,,INTERIOR STAIRS,L2 - SubFab Level,FIZ,CONSTRUCTION,,,,,2024-11-18 07:00,2024-11-21 17:00,2024-06-11 07:00,2025-05-23 17:00,2025-11-20 17:00,2025-11-20 17:00,2025-12-05 17:00,2025-12-05 17:00,0,30,100
STAIR.1460,INSTALL & INSPECT STAIR #59 - FIZ - 2-F.6 - LEVEL 03,Complete,CONSTRUCTION,,INTERIOR STAIRS,L3 / Waffle Slab Level,FIZ,CONSTRUCTION,,,,,2024-10-07 07:00,2024-10-11 17:00,2024-10-07 07:00,2024-10-18 17:00,2025-11-20 17:00,2025-11-20 17:00,2025-12-05 17:00,2025-12-05 17:00,0,40,100
STAIR.1470,INSTALL & INSPECT STAIR #60 - SUW - 3-M.5 - LEVEL 04,Complete,CONSTRUCTION,,INTERIOR STAIRS,L4 - SUP Roof - FAB Roof,SUW - SUPPORT WEST,CONSTRUCTION,,,,,2024-10-22 07:00,2024-10-25 17:00,2024-10-22 07:00,2024-10-25 17:00,2025-11-20 17:00,2025-11-20 17:00,2025-12-05 17:00,2025-12-05 17:00,0,30,100
STAIR.1490,INSTALL & INSPECT STAIR #62 - SUW - 3-K-L - LEVEL 04,Complete,CONSTRUCTION,,INTERIOR STAIRS,L4 - SUP Roof - FAB Roof,SUW - SUPPORT WEST,CONSTRUCTION,,,,,2024-09-20 07:00,2024-09-26 17:00,2024-09-20 07:00,2025-08-07 17:00,2025-11-20 17:00,2025-11-20 17:00,2025-12-05 17:00,2025-12-05 17:00,0,40,100
STAIR.1500,INSTALL & INSPECT STAIR #63 - SUW - 5-L.5 - LEVEL 04,Not Started,CONSTRUCTION,,INTERIOR STAIRS,L4 - SUP Roof - FAB Roof,SUW - SUPPORT WEST,CONSTRUCTION,,,,,2025-11-21 08:00,2025-12-09 08:00,,,2025-11-21 08:00,2025-12-09 08:00,2025-11-20 07:00,2025-12-05 17:00,100,100,0
STAIR.1510,INSTALL & INSPECT STAIR #64 - SUW - 18-K - LEVEL 04,Complete,CONSTRUCTION,,INTERIOR STAIRS,L4 - SUP Roof - FAB Roof,SUW - SUPPORT WEST,CONSTRUCTION,,,,,2025-02-19 07:00,2025-02-26 17:00,2025-02-19 07:00,2025-04-03 17:00,2025-11-20 17:00,2025-11-20 17:00,2025-11-25 17:00,2025-11-25 17:00,0,60,100
STAIR.1520,INSTALL & INSPECT STAIR #65 - SUW - 18/19-L - LEVEL 04 (Pending pricing for RFI 1750),Complete,CONSTRUCTION,,INTERIOR STAIRS,L4 - SUP Roof - FAB Roof,SUW - SUPPORT WEST,CONSTRUCTION,,,,,2025-01-29 07:00,2025-02-05 17:00,2025-01-29 07:00,2025-11-15 17:00,2025-11-20 17:00,2025-11-20 17:00,2025-12-05 17:00,2025-12-05 17:00,0,60,100
STAIR.1530,INSTALL & INSPECT STAIR #66 - SUW - 32-L - LEVEL 04,Not Started,CONSTRUCTION,,INTERIOR STAIRS,L4 - SUP Roof - FAB Roof,SUW - SUPPORT WEST,CONSTRUCTION,,,,,2025-12-29 07:00,2026-01-08 17:00,,,2025-12-29 07:00,2026-01-08 17:00,2025-11-10 07:00,2025-11-19 17:00,80,80,0
STAIR.1540,INSTALL & INSPECT STAIR #67 - FIZ - 3-G.5 - LEVEL 04,Complete,CONSTRUCTION,,INTERIOR STAIRS,L4 - SUP Roof - FAB Roof,FIZ,CONSTRUCTION,,,,,2024-08-19 07:00,2024-08-22 17:00,2024-07-26 07:00,2024-08-10 17:00,2025-11-20 17:00,2025-11-20 17:00,2025-12-05 17:00,2025-12-05 17:00,0,30,100
STAIR.1550,INSTALL & INSPECT STAIR #68 - FIZ - 3-G.5 - LEVEL 04,Complete,CONSTRUCTION,,INTERIOR STAIRS,L4 - SUP Roof - FAB Roof,FIZ,CONSTRUCTION,,,,,2024-07-26 07:00,2024-08-06 17:00,2024-07-23 07:00,2024-08-10 17:00,2025-11-20 17:00,2025-11-20 17:00,2025-12-05 17:00,2025-12-05 17:00,0,80,100
STAIR.1560,INSTALL & INSPECT STAIR #69 - SUE - 3-D - LEVEL 04(Pending Hand Rail ),Complete,CONSTRUCTION,,INTERIOR STAIRS,L4 - SUP Roof - FAB Roof,SUE - SUPPORT EAST,CONSTRUCTION,,,,,2024-08-26 07:00,2024-08-29 17:00,2024-08-20 07:00,2024-10-02 17:00,2025-11-20 17:00,2025-11-20 17:00,2025-11-20 07:00,2025-11-20 07:00,0,40,100
STAIR.1570,INSTALL & INSPECT STAIR #70 - SUE - 3-C - LEVEL 04,Complete,CONSTRUCTION,,INTERIOR STAIRS,L4 - SUP Roof - FAB Roof,SUE - SUPPORT EAST,CONSTRUCTION,,,,,2024-08-19 07:00,2024-08-27 17:00,2024-09-03 07:00,2024-10-11 17:00,2025-11-20 17:00,2025-11-20 17:00,2025-11-20 07:00,2025-11-20 07:00,0,60,100
STAIR.1580,INSTALL & INSPECT STAIR #71 - SUE - 3-B - LEVEL 04,Complete,CONSTRUCTION,,INTERIOR STAIRS,L4 - SUP Roof - FAB Roof,SUE - SUPPORT EAST,CONSTRUCTION,,,,,2024-08-28 07:00,2024-09-05 17:00,2024-08-19 07:00,2024-09-03 17:00,2025-11-20 17:00,2025-11-20 17:00,2025-11-20 07:00,2025-11-20 07:00,0,60,100
STAIR.1590,INSTALL & INSPECT STAIR #72 - SUE - 5-C - LEVEL 04,Not Started,CONSTRUCTION,,INTERIOR STAIRS,L4 - SUP Roof - FAB Roof,SUE - SUPPORT EAST,CONSTRUCTION,,,,,2026-01-05 07:00,2026-01-16 17:00,,,2026-01-05 07:00,2026-01-16 17:00,2025-11-20 07:00,2025-12-05 17:00,100,100,0
STAIR.1600,INSTALL & INSPECT STAIR #73 - SUE - 18-C - LEVEL 04,Complete,CONSTRUCTION,,INTERIOR STAIRS,L4 - SUP Roof - FAB Roof,SUE - SUPPORT EAST,CONSTRUCTION,,,,,2025-10-01 07:00,2025-10-10 17:00,2025-10-01 07:00,2025-10-17 17:00,2025-11-20 17:00,2025-11-20 17:00,2025-12-05 17:00,2025-12-05 17:00,0,80,100
STAIR.1610,INSTALL & INSPECT STAIR #76 - SUE - 32-C - LEVEL 04,Complete,CONSTRUCTION,,INTERIOR STAIRS,L4 - SUP Roof - FAB Roof,SUE - SUPPORT EAST,CONSTRUCTION,,,,,2025-04-04 07:00,2025-04-11 17:00,2025-04-03 07:00,2025-10-29 17:00,2025-11-20 17:00,2025-11-20 17:00,2025-12-05 17:00,2025-12-05 17:00,0,60,100
STAIR.1620,INSTALL & INSPECT STAIR #77 - SUE - 3-B - LEVEL 06,Complete,CONSTRUCTION,,INTERIOR STAIRS,L6 - PENTHOUSE / DS ROOF,SUE - SUPPORT EAST,CONSTRUCTION,,,,,2024-09-03 07:00,2024-09-06 17:00,2024-09-03 07:00,2024-09-14 17:00,2025-11-20 17:00,2025-11-20 17:00,2025-12-05 17:00,2025-12-05 17:00,0,40,100
STAIR.1630,INSTALL & INSPECT STAIR #78 - SUE - 3-C - LEVEL 04(NEED STAIR #71 TO BE OPEN),Complete,CONSTRUCTION,,INTERIOR STAIRS,L4 - SUP Roof - FAB Roof,SUE - SUPPORT EAST,CONSTRUCTION,,,,,2024-09-12 07:00,2024-09-17 17:00,2024-09-03 07:00,2024-09-30 17:00,2025-11-20 17:00,2025-11-20 17:00,2025-11-20 07:00,2025-11-20 07:00,0,40,100
STAIR.1640,INSTALL & INSPECT STAIR #79 - SUW - 3-L - LEVEL 04,Complete,CONSTRUCTION,,INTERIOR STAIRS,L4 - SUP Roof - FAB Roof,SUW - SUPPORT WEST,CONSTRUCTION,,,,,2024-09-26 07:00,2024-10-18 17:00,2024-09-26 07:00,2025-02-18 17:00,2025-11-20 17:00,2025-11-20 17:00,2025-12-05 17:00,2025-12-05 17:00,0,140,100
STAIR.1710,INSTALL & INSPECT STAIR #90 - FIZ - 1-G - LEVEL 02,Complete,CONSTRUCTION,,INTERIOR STAIRS,L2 - SubFab Level,FIZ,CONSTRUCTION,,,,,2025-02-20 07:00,2025-02-25 17:00,2025-02-20 07:00,2025-02-25 17:00,2025-11-20 17:00,2025-11-20 17:00,2025-12-05 17:00,2025-12-05 17:00,0,40,100
STAIR.1720,INSTALL & INSPECT STAIR #91 - SUE - 24-C - LEVEL 03,Not Started,CONSTRUCTION,,INTERIOR STAIRS,L3 / Waffle Slab Level,SUE - SUPPORT EAST,CONSTRUCTION,,,,,2026-01-09 07:00,2026-01-22 17:00,,,2026-01-09 07:00,2026-01-22 17:00,2025-11-20 07:00,2025-12-05 17:00,100,100,0
STAIR.1770,INSTALL & INSPECT STAIR #R10 - SUE - 18-C - LEVEL 04(ELEVATION ISSUE ) Pending drawings from Patriot SECAI TOOK OVER FA,Active,CONSTRUCTION,,INTERIOR STAIRS,L4 - SUP Roof - FAB Roof,SUE - SUPPORT EAST,CONSTRUCTION,,,,,2024-09-19 07:00,2024-09-24 17:00,2024-09-19 07:00,,2025-11-21 07:00,2025-11-21 07:00,2025-12-05 17:00,2025-12-05 17:00,0,40,0
STAIR.1780,INSTALL & INSPECT STAIR/RAMP # 5-C - SUE - 5-B - LEVEL 04 - Pending door sill angle,Complete,CONSTRUCTION,,INTERIOR STAIRS,L4 - SUP Roof - FAB Roof,SUE - SUPPORT EAST,CONSTRUCTION,,,,,2024-10-17 07:00,2024-10-28 17:00,2024-10-24 07:00,2025-09-25 17:00,2025-11-20 17:00,2025-11-20 17:00,2025-12-05 17:00,2025-12-05 17:00,0,70,100
STAIR.1790,INSTALL & INSPECT STAIR #R12 - SUE - 3-B - LEVEL 05J,Complete,CONSTRUCTION,,INTERIOR STAIRS,L4 - SUP Roof - FAB Roof,SUE - SUPPORT EAST,CONSTRUCTION,,,,,2024-10-17 07:00,2024-10-22 17:00,2024-10-17 07:00,2024-10-24 17:00,2025-11-20 17:00,2025-11-20 17:00,2025-12-05 17:00,2025-12-05 17:00,0,40,100
STAIR.1840,INSTALL & INSPECT STAIR #R18 - SUW - 31-M.5 - LEVEL 04,Complete,CONSTRUCTION,,INTERIOR STAIRS,L4 - SUP Roof - FAB Roof,SUW - SUPPORT WEST,CONSTRUCTION,,,,,2024-09-06 07:00,2024-09-12 17:00,2024-08-26 07:00,2024-08-31 17:00,2025-11-20 17:00,2025-11-20 17:00,2025-12-05 17:00,2025-12-05 17:00,0,40,100
STAIR.1940,INSTALL & INSPECT STAIR #R30 - SUE - 31-A.5 - LEVEL 04 (ONLY PENDING LANDING),Active,CONSTRUCTION,,INTERIOR STAIRS,L4 - SUP Roof - FAB Roof,SUE - SUPPORT EAST,CONSTRUCTION,,,,,2024-09-06 07:00,2024-09-16 17:00,2024-09-03 07:00,,2025-11-21 07:00,2025-11-24 17:00,2025-11-06 07:00,2025-11-07 17:00,20,60,100
STAIR.2080,INSTALL & INSPECT STAIR/RAMP #R5 - SUE - 32-B - LEVEL 04,Complete,CONSTRUCTION,,INTERIOR STAIRS,L4 - SUP Roof - FAB Roof,SUE - SUPPORT EAST,CONSTRUCTION,,,,,2024-10-31 07:00,2024-11-08 17:00,2024-09-12 07:00,2024-09-30 17:00,2025-11-20 17:00,2025-11-20 17:00,2025-12-01 07:00,2025-12-01 07:00,0,60,100
STAIR.2110,INSTALL & INSPECT STAIR - SLURRY ROOM - SUW - 4-K - LEVEL 02 (INCOMPLETE - ELEVATION ISSUE IDENTIFIED),Complete,CONSTRUCTION,,INTERIOR STAIRS,L2 - SubFab Level,SUW - SUPPORT WEST,CONSTRUCTION,,,,,2024-07-26 07:00,2024-07-31 17:00,2024-06-20 07:00,2024-06-26 17:00,2025-11-20 17:00,2025-11-20 17:00,2025-12-05 17:00,2025-12-05 17:00,0,40,100
CN.SWB5.9500,IMPACT - SECAI SCAFFOLDING IN THE WAY - FIRE ALARM 5 - GL 30-33 K-N,Complete,CONSTRUCTION,,SUWN-5 - 30-33,L1 - Fndn Slab,FIRE ALARM ,CONSTRUCTION,,,,,2024-07-08 07:00,2024-07-12 17:00,2024-07-08 07:00,2024-07-25 17:00,2025-11-20 17:00,2025-11-20 17:00,2025-12-05 17:00,2025-12-05 17:00,0,40,100
CN.SWB5.9520,IMPACT -TEMP DUCT IN THE WAY IN THE ROOM TO FINISH DRYWALL - SWB-5 - L2 - FIRE ALARM 22 GL 5-6 A-B,Complete,CONSTRUCTION,,SUES-5 - 6-1 - FIZ - GL A -E,L2 - SubFab Level,FIRE ALARM ,CONSTRUCTION,,,,,2024-07-18 07:00,2024-07-23 17:00,2024-07-18 07:00,2025-10-03 17:00,2025-11-20 17:00,2025-11-20 17:00,2025-12-05 17:00,2025-12-05 17:00,0,40,100
CN.SWB5.9560,IMPACT - EAST WALL REDESIGN TO SHAFT WALL / PROVIDE SCAFFOLDING - DRYWALL - SWB-5 - L2 - FIRE ALARM 20 GL 5-6 A-B,Complete,CONSTRUCTION,,SUES-1 - 19-16,L2 - SubFab Level,FIRE ALARM ,CONSTRUCTION,,,,,2024-08-01 07:00,2024-08-06 17:00,2024-08-01 07:00,2024-08-10 17:00,2025-11-20 17:00,2025-11-20 17:00,2025-12-05 17:00,2025-12-05 17:00,0,40,100
CN.SWB5.9610,IMPACT - HAND RAIL IN CONFLICT & GRATING REMOVED - FIRE ALARM 11 GL 4-5 K-L,Complete,CONSTRUCTION,,FIZ 2 / SUWS 5  (GL6-1) - GL J - N - DATA CENTER 1,L2 - SubFab Level,FIRE ALARM ,CONSTRUCTION,,,,,2024-07-08 07:00,2024-07-12 17:00,2024-07-08 07:00,2024-07-25 17:00,2025-11-20 17:00,2025-11-20 17:00,2025-12-05 17:00,2025-12-05 17:00,0,40,100
CN.SWB5.9640,IMPACT - SECAI MATERIAL IN THE WAY - L2 - FIRE ALARM 5 GL 30-31 K-L,Complete,CONSTRUCTION,,SUWN-5 - 30-33,L2 - SubFab Level,FIRE ALARM ,CONSTRUCTION,,,,,2024-10-04 07:00,2024-10-10 17:00,2024-07-01 07:00,2024-08-17 17:00,2025-11-20 17:00,2025-11-20 17:00,2025-12-05 17:00,2025-12-05 17:00,0,40,100
STAIR.1350,IMPACT - TRESTLE SCAFFOLD BLOCKING AREA - 30-32/N - LEVEL 02,Complete,CONSTRUCTION,,INTERIOR STAIRS,L2 - SubFab Level,SUW - SUPPORT WEST,CONSTRUCTION,,,,,2024-07-19 07:00,2024-10-08 17:00,2024-03-01 07:00,2024-09-28 17:00,2025-11-20 17:00,2025-11-20 17:00,2025-12-05 17:00,2025-12-05 17:00,0,500,100
CN.AB.AR.7110,FRAMING & DRYWALL - CV ROOM EXIT PASS WAY 20 - SEA1 - GL 18-19 - C-A - L1 - SECAI TOOK OVER FOR ACCELERATION,Complete,CONSTRUCTION,,SUES-1 - 19-16,L1 - Fndn Slab,CV ROOM,CONSTRUCTION,,,,,2025-10-13 07:00,2025-10-22 17:00,2025-06-27 07:00,2025-06-27 17:00,2025-11-20 17:00,2025-11-20 17:00,2025-12-05 17:00,2025-12-05 17:00,0,80,100
CN.AB.AR.7120,REMAINING FRAMING & DRYWALL - IT/SECURITY 20 - SEA1 - GL 18-19 - C-A - L1,Complete,CONSTRUCTION,,SUES-1 - 19-16,L1 - Fndn Slab,IT/SECURITY,CONSTRUCTION,,,,,2024-07-26 07:00,2024-08-01 17:00,2024-07-24 07:00,2024-08-01 17:00,2025-11-20 17:00,2025-11-20 17:00,2025-12-01 07:00,2025-12-01 07:00,0,50,100
CN.AB.AR.7130,FRAMING & DRYWALL - SWB-1- MCC RM - GL 18-21 K-N,Complete,CONSTRUCTION,,SUWN-1 - 18-21,L1 - Fndn Slab,MCC RM 1,CONSTRUCTION,,,,,2024-08-12 07:00,2024-08-16 17:00,2024-08-10 07:00,2024-10-11 10:00,2025-11-20 17:00,2025-11-20 17:00,2025-11-21 07:00,2025-11-21 07:00,0,40,100
CN.AB.AR.7140,IMPACT - SECAI SCAFFOLDING IN CONFICT- MCC RM - GL 18-21 K-N,Complete,CONSTRUCTION,,SUWN-1 - 18-21,L1 - Fndn Slab,MCC RM 1,CONSTRUCTION,,,,,2024-09-20 07:00,2024-09-26 17:00,2024-07-08 07:00,2024-08-08 17:00,2025-11-20 17:00,2025-11-20 17:00,2025-11-21 07:00,2025-11-21 07:00,0,40,100
CN.AB.AR.7150,REMAINING DRYWALL & FINISHES - SWB-1- FIRE ALARM 3 - GL 19-20 K-N - L1,Complete,CONSTRUCTION,,SUWN-1 - 18-21,L1 - Fndn Slab,FIRE ALARM ,CONSTRUCTION,,,,,2024-08-09 07:00,2024-08-22 17:00,2024-07-24 07:00,2024-08-02 17:00,2025-11-20 17:00,2025-11-20 17:00,2025-12-05 07:00,2025-12-05 07:00,0,80,100
CN.AB.AR.4930,REMAINING DRYWALL & FINISHES  - FIRE ALARM 20  - SEA1 - GL 19-16 - C-A - L3,Complete,CONSTRUCTION,,SUES-1 - 19-16,L3 / Waffle Slab Level,FIRE ALARM ,CONSTRUCTION,,,,,2024-07-25 07:00,2024-07-30 17:00,2024-07-25 07:00,2024-08-01 17:00,2025-11-20 17:00,2025-11-20 17:00,2025-12-04 07:00,2025-12-04 07:00,0,40,100
CN.AB.AR.7160,REMAINING DRYWALL & FINISHES  - IT/SECURITY  20  - SEA1 - GL 19-16 - C-A - L3,Complete,CONSTRUCTION,,SUES-1 - 19-16,L3 / Waffle Slab Level,IT/SECURITY,CONSTRUCTION,,,,,2024-08-09 07:00,2024-08-15 17:00,2024-07-25 07:00,2024-08-05 17:00,2025-11-20 17:00,2025-11-20 17:00,2025-12-04 07:00,2025-12-04 07:00,0,40,100
CN.SWB1..4600,IMPACT - MEP OVERHEAD BLOCKING THE AREA - SWB-1 - IT/SECURITY 3 GL 18-21 K-N,Complete,CONSTRUCTION,,SUWN-1 - 18-21,L3 / Waffle Slab Level,IT/SECURITY,CONSTRUCTION,,,,,2024-07-12 07:00,2024-07-17 17:00,2024-07-12 07:00,2025-07-14 17:00,2025-11-20 17:00,2025-11-20 17:00,2025-11-20 07:00,2025-11-20 07:00,0,40,100
CN.SWA5..1930,TURNOVER STAIR TO SECAI - STAIR #1 - 5/L - ALL LEVELS,Complete,CONSTRUCTION,,FIZ 2 / SUWS 5  (GL6-1) - GL J - N - DATA CENTER 1,INTERIOR STAIR TOWER - STAIR #1 - DE-SCOPED,,CONSTRUCTION,,,,,2025-06-27 07:00,2025-06-27 17:00,2025-06-27 07:00,2025-06-27 17:00,2025-12-29 15:00,2025-12-29 15:00,2025-12-05 17:00,2025-12-05 17:00,0,10,100
CN.SEA5.9850,REMAINING FRAME & DRYWALL - IT/SECURITY 22 - SEA5 FIZ - GL 6-1 - L1(PENDING DRYWALL REMEDY),Complete,CONSTRUCTION,,SUES-5 - 6-1 - FIZ - GL A -E,L1 - Fndn Slab,IT/SECURITY,CONSTRUCTION,,,,,2024-08-27 07:00,2024-09-04 17:00,2024-08-08 07:00,2024-08-13 17:00,2025-11-20 17:00,2025-11-20 17:00,2025-12-01 17:00,2025-12-01 17:00,0,60,100
CN.SWA5..1960,PATRIOT PRIME BOLTS & WELD CONNECTIONS - STAIR #2 - 11/L - ALL LEVELS,Complete,CONSTRUCTION,,SUWS-3 - 12-9,INTERIOR STAIR TOWER - STAIR #2 (CLEAN ROOM),,CONSTRUCTION,,,,,2024-08-23 07:00,2024-08-28 17:00,2024-08-13 07:00,2024-08-16 17:00,2025-11-20 17:00,2025-11-20 17:00,2025-11-12 07:00,2025-11-12 07:00,0,40,100
CN.SWA5..2100,PATRIOT PRIME BOLTS & WELD CONNECTIONS - STAIR #3 - 18/L - ALL LEVELS,Complete,CONSTRUCTION,,SUWN-1 - 18-21,INTERIOR STAIR TOWER - STAIR #3,,CONSTRUCTION,,,,,2024-08-23 07:00,2024-08-28 17:00,2024-08-15 07:00,2024-08-18 17:00,2025-11-20 17:00,2025-11-20 17:00,2025-11-03 07:00,2025-11-03 07:00,0,40,100
CN.SWA5..2210,TURNOVER STAIR TO SECAI - STAIR #3 - 18/L - ALL LEVELS,Not Started,CONSTRUCTION,,SUWN-1 - 18-21,INTERIOR STAIR TOWER - STAIR #3,,CONSTRUCTION,,,,,2025-12-26 07:00,2025-12-26 17:00,,,2025-12-26 07:00,2025-12-26 17:00,2025-12-05 07:00,2025-12-05 17:00,10,10,0
CN.SEA5.10305,REMAINING FRAME & DRYWALL - IT/ SECURITY 1 - GL 3-6 - L1 - K LINE,Complete,CONSTRUCTION,,FIZ 2 / SUWS 5  (GL6-1) - GL J - N - DATA CENTER 1,L1 - Fndn Slab,IT/SECURITY,CONSTRUCTION,,,,,2024-08-05 07:00,2024-08-12 17:00,2024-08-05 07:00,2024-08-10 17:00,2025-11-20 17:00,2025-11-20 17:00,2025-12-05 17:00,2025-12-05 17:00,0,50,100
CN.SWA5..2240,ALPHA PREP BOLTS & WELD CONNECTIONS - STAIR #4 - 23/L - ALL LEVELS (2- SHIFTS),Complete,CONSTRUCTION,,SUWN-2 - 21-24,INTERIOR STAIR TOWER - STAIR #4 (CLEAN ROOM),,CONSTRUCTION,,,,,2025-03-31 07:00,2025-03-31 17:00,2025-03-06 07:00,2025-03-08 17:00,2025-11-20 17:00,2025-11-20 17:00,2025-12-01 07:00,2025-12-01 07:00,0,10,100
CN.SWA5..2350,SECAI - INSTALL SGP PANELS - STAIR #4 - 23/L - ALL LEVELS,Complete,CONSTRUCTION,,SUWN-2 - 21-24,INTERIOR STAIR TOWER - STAIR #4 (CLEAN ROOM),,CONSTRUCTION,,,,,2025-09-30 07:00,2025-10-04 17:00,2025-09-30 07:00,2025-10-04 17:00,2025-11-20 17:00,2025-11-20 17:00,2025-12-05 17:00,2025-12-05 17:00,0,50,100
CN.SEA5.1352,REMAINING DRYWALL & FINISHES - IT/SECURITY 22 -SEA5 FIZ - GL 4-5 - L2,Complete,CONSTRUCTION,,SUES-5 - 6-1 - FIZ - GL A -E,L2 - SubFab Level,IT/SECURITY,CONSTRUCTION,,,,,2024-07-29 07:00,2024-08-02 17:00,2024-07-25 07:00,2024-08-05 17:00,2025-11-20 17:00,2025-11-20 17:00,2025-12-05 17:00,2025-12-05 17:00,0,50,100
CN.SWA5..2370,ALPHA PREP BOLTS & WELD CONNECTIONS - STAIR #19 - 26/D - ALL LEVELS(),Complete,CONSTRUCTION,,SUEN-3 - 25-28,INTERIOR STAIR TOWER - STAIR #19 (CLEAN ROOM) - DE-SCOPED,,CONSTRUCTION,,,,,2025-04-09 07:00,2025-04-09 17:00,2025-03-31 07:00,2025-04-01 07:00,2025-11-20 17:00,2025-11-20 17:00,2025-11-21 07:00,2025-11-21 07:00,0,10,100
CN.SWA5..2490,SECAI - INSTALL SGP WALL PANELS - STAIR #19 - 26/D - ALL LEVELS,Complete,CONSTRUCTION,,SUEN-3 - 25-28,INTERIOR STAIR TOWER - STAIR #19 (CLEAN ROOM) - DE-SCOPED,,CONSTRUCTION,,,,,2025-09-09 07:00,2025-09-19 17:00,2025-06-27 07:00,2025-06-27 17:00,2025-11-20 17:00,2025-11-20 17:00,2025-12-03 07:00,2025-12-03 07:00,0,100,100
CN.SWA5..2510,ALPHA PRIME BOLTS & WELD CONNECTIONS - STAIR #20 - 19/D - ALL LEVELS,Complete,CONSTRUCTION,,SUES-1 - 19-16,INTERIOR STAIR TOWER - STAIR #20,,CONSTRUCTION,,,,,2024-08-26 07:00,2024-08-29 17:00,2024-08-17 07:00,2024-09-28 17:00,2025-11-20 17:00,2025-11-20 17:00,2025-11-12 07:00,2025-11-12 07:00,0,40,100
CN.SWA5..2630,TURNOVER STAIR TO SECAI - STAIR #20 - 19/D - ALL LEVELS,Not Started,CONSTRUCTION,,SUES-1 - 19-16,INTERIOR STAIR TOWER - STAIR #20,,CONSTRUCTION,,,,,2025-12-03 07:00,2025-12-03 17:00,,,2025-12-03 07:00,2025-12-03 17:00,2025-12-05 07:00,2025-12-05 17:00,10,10,0
CN.SWA5..2650,PATRIOT PRIME BOLTS & WELD CONNECTIONS - STAIR #21 - 13/D - ALL LEVELS,Complete,CONSTRUCTION,,SUES-3 - 13-9,INTERIOR STAIR TOWER - STAIR #21 (CLEAN ROOM),,CONSTRUCTION,,,,,2024-08-23 07:00,2024-08-28 17:00,2024-08-15 07:00,2024-08-17 17:00,2025-11-20 17:00,2025-11-20 17:00,2025-11-12 07:00,2025-11-12 07:00,0,40,100
CN.SWA5..2790,ALPHA PREP BOLTS & WELD CONNECTIONS - STAIR #22 - 6/D - ALL LEVELS (DESCOPED),Complete,CONSTRUCTION,,SUES-5 - 6-1 - FIZ - GL A -E,INTERIOR STAIR TOWER - STAIR #22 - DE-SCOPED,,CONSTRUCTION,,,,,2025-06-28 07:00,2025-06-28 17:00,2025-05-31 07:00,2025-05-31 17:00,2025-11-20 17:00,2025-11-20 17:00,2025-10-27 09:00,2025-10-27 09:00,0,10,100
CN.SWA5..2910,TURNOVER STAIR TO SECAI - STAIR #22 - 6/D - ALL LEVELS,Not Started,CONSTRUCTION,,SUES-5 - 6-1 - FIZ - GL A -E,INTERIOR STAIR TOWER - STAIR #22 - DE-SCOPED,,CONSTRUCTION,,,,,2025-12-30 15:00,2025-12-31 15:00,,,2025-12-30 15:00,2025-12-31 15:00,2025-12-05 07:00,2025-12-05 17:00,10,10,0
CN.SWA5.L3.220,REMAINING DRYWALL & FINISHES - IT/SECURITY 1 -SWA5 - GL 3-4 - L3,Complete,CONSTRUCTION,,FIZ 2 / SUWS 5  (GL6-1) - GL J - N - DATA CENTER 1,L3 / Waffle Slab Level,IT/SECURITY,CONSTRUCTION,,,,,2025-04-14 07:00,2025-04-17 17:00,2025-04-14 07:00,2025-04-17 17:00,2025-11-20 17:00,2025-11-20 17:00,2025-12-05 17:00,2025-12-05 17:00,0,40,100
CN.SWA5..3050,TURNOVER STAIR TO SECAI - STAIR #50 - 29/L - ALL LEVELS,Not Started,CONSTRUCTION,,SUWN-4 - 27-30,INTERIOR STAIR TOWER - STAIR #50 - DE-SCOPED,,CONSTRUCTION,,,,,2025-11-21 07:00,2025-11-21 17:00,,,2025-11-21 07:00,2025-11-21 17:00,2025-12-05 07:00,2025-12-05 17:00,10,10,0
CN.SWB1..4610,IMPACT - SECAI MEP BLOCKAGE SCAFFOLFING - H2SO4 & NAOH TRANSFER - GL 18-21 K-N - L3,Complete,CONSTRUCTION,,SUWN-1 - 18-21,L3 / Waffle Slab Level,H2O4 & NAOH ,CONSTRUCTION,,,,,2025-01-27 07:00,2025-02-04 17:00,2025-01-25 07:00,2025-08-22 17:00,2025-11-21 07:00,2025-11-21 07:00,2025-11-20 07:00,2025-11-20 07:00,0,70,100
CN.SWA3.2110,IMPACT - SCOPE GAP IDENTIFIED BY BAKER - SUMP PIT EMBEDS MISSING - ELEVATOR 2 - L1,Complete,CONSTRUCTION,,SUWS-3 - 12-9,L1 - Fndn Slab,ELEVATOR,CONSTRUCTION,,,,,2024-07-26 07:00,2024-07-26 17:00,2024-07-18 07:00,2024-07-18 17:00,2025-11-20 17:00,2025-11-20 17:00,2025-12-05 07:00,2025-12-05 07:00,0,10,100
CN.SWA3.2130,IMPACT - PATRIOT COORDINATION / PROCURE SUMP PIT EMBEDS - ELEVATOR 2 - L1,Complete,CONSTRUCTION,,SUWS-3 - 12-9,L1 - Fndn Slab,ELEVATOR,CONSTRUCTION,,,,,2024-07-26 07:00,2024-08-06 17:00,2024-07-19 07:00,2024-07-29 17:00,2025-11-20 17:00,2025-11-20 17:00,2025-12-05 07:00,2025-12-05 07:00,0,80,100
CN.SWA3.2140,IMPACT - PATRIOT INSTALL SUMP PIT EMBEDS - ELEVATOR 2 - L1,Complete,CONSTRUCTION,,SUWS-3 - 12-9,,ELEVATOR,CONSTRUCTION,,,,,2024-08-09 07:00,2024-08-12 17:00,2024-07-29 07:00,2024-07-31 17:00,2025-11-20 17:00,2025-11-20 17:00,2025-12-05 07:00,2025-12-05 07:00,0,20,100
CN.BB51.ST.2700,IMPACT - PATRIOT INSTALL TEMP HANDRAIL/CABLE - GL 33 - STAIR 5 - K-L,Complete,CONSTRUCTION,,GRIDLINE 33,,STAIR 5 (WEST) - K-L,CONSTRUCTION,PATRIOT,,,,2024-07-12 07:00,2024-07-18 17:00,2024-07-18 07:00,2024-07-31 17:00,2025-11-20 17:00,2025-11-20 17:00,2025-11-03 07:00,2025-11-03 07:00,0,50,100
STAIR.2120,IMPACT - PREP & SUBMIT RFI TO NOTCH BEAM AROUND STRUCTURAL STEEL MEMBER (DESIGN ISSUE) - STAIR #67,Complete,CONSTRUCTION,,INTERIOR STAIRS,L4 - SUP Roof - FAB Roof,FIZ,CONSTRUCTION,,,,,2024-07-26 07:00,2024-07-30 17:00,2024-07-17 07:00,2024-07-19 17:00,2025-11-20 17:00,2025-11-20 17:00,2025-12-05 17:00,2025-12-05 17:00,0,30,100
STAIR.2130,IMPACT - SECAI REVIEW & APPROVE RFI FOR NOTCHING BEAM AROUND STRUCTURAL STEEL MEMBER - STAIR #68,Complete,CONSTRUCTION,,INTERIOR STAIRS,L4 - SUP Roof - FAB Roof,FIZ,CONSTRUCTION,,,,,2024-07-26 07:00,2024-08-09 17:00,2024-07-22 07:00,2024-08-09 17:00,2025-11-20 17:00,2025-11-20 17:00,2025-12-05 17:00,2025-12-05 17:00,0,100,100
CN.SEB1.1251,IMPACT - REMEDY - SECAI SUBS WORKING IN THE AREA- SEB1- GL 18-23 - L2 - D LINE,Complete,CONSTRUCTION,,SUEN-1 - 19-22,L2 - SubFab Level,,CONSTRUCTION,,,,,2024-07-22 07:00,2024-07-25 17:00,2024-07-22 07:00,2024-08-02 17:00,2025-11-20 17:00,2025-11-20 17:00,2025-11-21 17:00,2025-11-21 17:00,0,40,100
CN.SWA5..3070,CONTAINMENT FOR SANDBLASTING - STAIR #21 - 13/D - ALL LEVELS,Complete,CONSTRUCTION,,SUES-3 - 13-9,INTERIOR STAIR TOWER - STAIR #21 (CLEAN ROOM),,CONSTRUCTION,,,,,2024-09-09 07:00,2024-09-30 17:00,2024-09-01 07:00,2024-09-13 17:00,2025-11-20 17:00,2025-11-20 17:00,2025-11-12 07:00,2025-11-12 07:00,0,130,100
CN.SWA5..3080,STAIR PREP FOR COATING - STAIR #20 - 19/D - ALL LEVELS,Complete,CONSTRUCTION,,SUES-1 - 19-16,INTERIOR STAIR TOWER - STAIR #20,,CONSTRUCTION,,,,,2024-10-12 07:00,2024-10-17 17:00,2024-10-08 07:00,2024-10-24 17:00,2025-11-20 17:00,2025-11-20 17:00,2025-11-12 07:00,2025-11-12 07:00,0,50,100
CN.SWA5..3090,CONTAINMENT FOR SANDBLASTING - STAIR #19 - 26/D - ALL LEVELS,Complete,CONSTRUCTION,,SUEN-3 - 25-28,INTERIOR STAIR TOWER - STAIR #19 (CLEAN ROOM) - DE-SCOPED,,CONSTRUCTION,,,,,2025-08-15 07:00,2025-08-15 17:00,2025-06-27 07:00,2025-06-27 17:00,2025-11-20 17:00,2025-11-20 17:00,2025-11-21 07:00,2025-11-21 07:00,0,10,100
CN.SWA5..3100,"MASKING, SCAFFOLDING WRAPPING AND FLOOR COVERING - STAIR #1 -ALL LEVELS - SIDES - SECAI TOOK OVER FOR ACCELRATION",Complete,CONSTRUCTION,,FIZ 2 / SUWS 5  (GL6-1) - GL J - N - DATA CENTER 1,INTERIOR STAIR TOWER - STAIR #1 - DE-SCOPED,,CONSTRUCTION,,,,,2025-06-27 07:00,2025-06-30 17:00,2025-06-27 07:00,2025-06-27 17:00,2025-12-05 15:00,2025-12-05 15:00,2025-11-08 07:00,2025-11-08 07:00,0,30,100
CN.SWA5..3110,CONTAINMENT FOR SANDBLASTINGT - STAIR #2 - 11/L - ALL LEVELS,Complete,CONSTRUCTION,,SUWS-3 - 12-9,INTERIOR STAIR TOWER - STAIR #2 (CLEAN ROOM),,CONSTRUCTION,,,,,2024-09-09 07:00,2024-09-30 17:00,2024-09-05 07:00,2024-09-23 17:00,2025-11-20 17:00,2025-11-20 17:00,2025-11-12 07:00,2025-11-12 07:00,0,130,100
CN.SWA5..3120,"CONTAINMENT, SCAFFOLDING WRAPPING AND FLOOR COVERING - STAIR #3 - 18/L - ALL LEVELS(2 shifts )",Complete,CONSTRUCTION,,SUWN-1 - 18-21,INTERIOR STAIR TOWER - STAIR #3,,CONSTRUCTION,,,,,2024-10-26 07:00,2024-10-29 17:00,2024-10-26 07:00,2024-10-29 17:00,2025-11-20 17:00,2025-11-20 17:00,2025-11-03 07:00,2025-11-03 07:00,0,30,100
CN.SWA5..3130,CONTAINMENT FOR SANDBLASTING - STAIR #4 - 23/L - ALL LEVELS (),Complete,CONSTRUCTION,,SUWN-2 - 21-24,INTERIOR STAIR TOWER - STAIR #4 (CLEAN ROOM),,CONSTRUCTION,,,,,2025-04-04 07:00,2025-04-08 17:00,2025-03-31 07:00,2025-04-05 17:00,2025-11-20 17:00,2025-11-20 17:00,2025-12-01 07:00,2025-12-01 07:00,0,40,100
CN.SWA5..3140,CONTAINMENT FOR SANDING & MASKING - STAIR #50 - 29/L - ALL LEVELS (,Complete,CONSTRUCTION,,SUWN-4 - 27-30,INTERIOR STAIR TOWER - STAIR #50 - DE-SCOPED,,CONSTRUCTION,,,,,2025-09-04 07:00,2025-09-06 17:00,2025-06-27 07:00,2025-06-27 13:00,2025-11-20 17:00,2025-11-20 17:00,2025-12-05 17:00,2025-12-05 17:00,0,30,100
STAIR.1300,IMPACT - AWAIT SECAI DIRECTION TO POUR CURB / BAKER POUR CURBS - STAIR #28 / #29 / #37 / #38,Complete,CONSTRUCTION,,INTERIOR STAIRS,LU1 - Underground Level,SUW - SUPPORT WEST,CONSTRUCTION,,,,,2024-07-26 07:00,2024-07-31 17:00,2024-07-18 07:00,2024-08-06 17:00,2025-11-20 17:00,2025-11-20 17:00,2025-12-01 07:00,2025-12-01 07:00,0,40,100
CN.SWB5.9680,AWAITING & DISMANTLE LOADING PLATFORM - GL 33 - L1-L3 - A-A.5(10/31)(NEED NEW DATE FROM SECAI),Complete,CONSTRUCTION,,GRIDLINE 33,GL 33- LEAVEOUTS,GL33 EXTERIOR AREA (SUE) - A-C,CONSTRUCTION,SECAI,,,,2024-08-08 07:00,2024-08-16 17:00,2024-07-20 07:00,2025-01-03 17:00,2025-11-20 17:00,2025-11-20 17:00,2025-11-14 07:00,2025-11-14 07:00,0,60,100
CN.SWB5.9690,AWAITING & DISMANTLE LOADING PLATFORM - GL 33 - L1-L3 - B-C (Committed date 10/31),Complete,CONSTRUCTION,,GRIDLINE 33,GL 33- LEAVEOUTS,GL33 EXTERIOR AREA (SUE) - A-C,CONSTRUCTION,SECAI,,,,2024-07-22 07:00,2024-07-22 17:00,2024-07-20 07:00,2025-06-16 11:00,2025-11-20 17:00,2025-11-20 17:00,2025-12-02 07:00,2025-12-02 07:00,0,10,100
CN.SWB5.9700,FINISH DRYWALL - GL 33 - L1-L3 - A-B- (PLATFORM AREA),Complete,CONSTRUCTION,,GRIDLINE 33,,GL33 EXTERIOR AREA (SUE) - A-C,CONSTRUCTION,SECAI,,,,2025-01-06 07:00,2025-02-07 17:00,2025-01-04 07:00,2025-01-20 17:00,2025-11-20 17:00,2025-11-20 17:00,2025-11-14 07:00,2025-11-14 07:00,0,250,100
CN.SWB5.9710,HOIST INSTALLATION - GL 33 - L1-L3 - L-M LINE,Complete,CONSTRUCTION,,GRIDLINE 33,GL 33- LEAVEOUTS,GL33 EXTERIOR AREA (SUW) - L-N,CONSTRUCTION,BERG,,,,2024-07-22 07:00,2024-08-28 17:00,2024-07-20 07:00,2024-08-10 17:00,2025-11-20 17:00,2025-11-20 17:00,2025-11-24 07:00,2025-11-24 07:00,0,250,100
CN.SWB5.9720,HOIST DISMANTLE / TURNOVER AREA TO YATES - GL 33 - L1-L3 - L-M LINE(COMMITTED 11/19)(new date 01/15) - After Elev 20 ON,Complete,CONSTRUCTION,,GRIDLINE 33,GL 33- LEAVEOUTS,GL33 EXTERIOR AREA (SUW) - L-N,CONSTRUCTION,BERG,,,,2024-09-20 07:00,2024-12-20 17:00,2024-08-12 07:00,2025-06-17 17:00,2025-11-20 17:00,2025-11-20 17:00,2025-11-24 07:00,2025-11-24 07:00,0,520,100
CN.SWB5.9730,BERG - FINISH DRYWALL & WATERPROOFING- LEAVEOUT FOR HOIST - GL 33 - L1-L3 - L-M LINE,Complete,CONSTRUCTION,,GRIDLINE 33,GL 33- LEAVEOUTS,GL33 EXTERIOR AREA (SUW) - L-N,CONSTRUCTION,BERG,,,,2025-01-13 07:00,2025-02-14 17:00,2025-01-13 07:00,2025-07-22 12:00,2025-11-20 17:00,2025-11-20 17:00,2025-12-05 17:00,2025-12-05 17:00,0,250,100
CN.SWB5.9740,SECAI DISMANTLES SUPER DECK OVER TO YATES - GL 33 - L1-L3 - M-N LINE(COMMITTED 11/30)(new DATE 12/31),Complete,CONSTRUCTION,,GRIDLINE 33,GL 33- LEAVEOUTS,GL33 EXTERIOR AREA (SUW) - L-N,CONSTRUCTION,BERG,,,,2024-07-22 07:00,2024-08-28 17:00,2024-07-20 07:00,2025-01-04 17:00,2025-11-20 17:00,2025-11-20 17:00,2025-11-24 07:00,2025-11-24 07:00,0,250,100
CN.SWB5.9750,BERG - FINISH DRYWALL & WATERPROOFING - LEAVEOUT FOR SUPER DECK - GL 33 - L1-L3 - L-M LINE,Complete,CONSTRUCTION,,GRIDLINE 33,GL 33- LEAVEOUTS,GL33 EXTERIOR AREA (SUW) - L-N,CONSTRUCTION,BERG,,,,2025-01-06 07:00,2025-01-30 17:00,2025-01-13 07:00,2025-07-23 12:00,2025-11-20 17:00,2025-11-20 17:00,2025-12-05 17:00,2025-12-05 17:00,0,190,100
STAIR.2140,IMPACT - CCD/RE-FAB (stair size changed in DRB004) - STAIR #47 - FIZ - 1-L - LEVEL 02(on-hold per SECAI),Complete,CONSTRUCTION,,INTERIOR STAIRS,L2 - SubFab Level,FIZ,CONSTRUCTION,,,,,2024-07-26 07:00,2024-09-30 17:00,2024-07-15 07:00,2025-01-11 17:00,2025-11-20 17:00,2025-11-20 17:00,2025-10-21 07:00,2025-10-21 07:00,0,400,100
STAIR.2150,IMPACT - REVISED STAIR CCD / FABRICATION - STAIR #90 - FIZ - 1-G - LEVEL 02,Complete,CONSTRUCTION,,INTERIOR STAIRS,L2 - SubFab Level,FIZ,CONSTRUCTION,,,,,2024-07-26 07:00,2024-09-30 17:00,2024-07-15 07:00,2025-02-14 17:00,2025-11-20 17:00,2025-11-20 17:00,2025-12-05 17:00,2025-12-05 17:00,0,400,100
STAIR.2160,IMPACT - SCAFFOLD STAIR IN THE WAY / AWAIT SECAI REMOVAL - STAIR #27 - SUW - 23-M.5 - LEVEL U1-01,Complete,CONSTRUCTION,,INTERIOR STAIRS,LU1 - Underground Level,SUW - SUPPORT WEST,CONSTRUCTION,,,,,2024-07-26 07:00,2024-07-31 17:00,2024-07-15 07:00,2024-08-01 17:00,2025-11-20 17:00,2025-11-20 17:00,2025-12-01 07:00,2025-12-01 07:00,0,40,100
STAIR.CT-1000,IMPACT - INTERIOR STAIR TOWERS - CHERRY COATINGS RFA SIGNED WITH POWDER COATING EXCLUDED,Complete,CONSTRUCTION,,Stairs,INTERIOR STAIR TOWERS - PROCUREMENT,,PRE - CON / BUYOUT / IMPACTS,,,,,2024-07-26 07:00,2024-07-26 17:00,2023-07-12 07:00,2023-07-12 17:00,2025-11-20 17:00,2025-11-20 17:00,2025-10-27 09:00,2025-10-27 09:00,0,10,100
STAIR.CT-1010,IMPACT - INTERIOR STAIR TOWERS - YATES RECEIVES MIXED ANSWERS ON PAINT SYSTEMS (SAMOO / PAGE / JACOBS),Complete,CONSTRUCTION,,Stairs,INTERIOR STAIR TOWERS - PROCUREMENT,,PRE - CON / BUYOUT / IMPACTS,,,,,2024-07-26 07:00,2024-08-09 17:00,2024-03-13 07:00,2024-03-29 17:00,2025-11-20 17:00,2025-11-20 17:00,2025-10-27 09:00,2025-10-27 09:00,0,100,100
STAIR.CT-1020,IMPACT - INTERIOR STAIR TOWERS - YATES PREP & SUBMIT CONFIRMING RFI FOR PAINT SYSTEM REQUIREMENT,Complete,CONSTRUCTION,,Stairs,INTERIOR STAIR TOWERS - PROCUREMENT,,PRE - CON / BUYOUT / IMPACTS,,,,,2024-07-26 07:00,2024-08-27 17:00,2024-04-01 07:00,2024-05-29 17:00,2025-11-20 17:00,2025-11-20 17:00,2025-10-27 09:00,2025-10-27 09:00,0,200,100
STAIR.CT-1030,IMPACT - INTERIOR STAIR TOWERS - SAMOO/JACOBS REVIEW & RESPOND WITH ACCEPTABLE COATING TYPES,Complete,CONSTRUCTION,,Stairs,INTERIOR STAIR TOWERS - PROCUREMENT,,PRE - CON / BUYOUT / IMPACTS,,,,,2024-07-26 07:00,2024-08-01 17:00,2024-05-30 07:00,2024-06-04 17:00,2025-11-20 17:00,2025-11-20 17:00,2025-10-27 09:00,2025-10-27 09:00,0,50,100
STAIR.CT-1040,IMPACT - INTERIOR STAIR TOWERS - YATES PREP & SUBMIT SUBMITTAL FOR P-38.2 COATING,Complete,CONSTRUCTION,,Stairs,INTERIOR STAIR TOWERS - PROCUREMENT,,PRE - CON / BUYOUT / IMPACTS,,,,,2024-07-26 07:00,2024-08-27 17:00,2024-06-05 07:00,2024-07-19 17:00,2025-11-20 17:00,2025-11-20 17:00,2025-10-27 09:00,2025-10-27 09:00,0,200,100
STAIR.CT-1050,IMPACT - INTERIOR STAIR TOWERS - SAMOO/JACOBS REVIEW & APPROVE SUBMITTAL FOR P-38.2 COATING,Complete,CONSTRUCTION,,Stairs,INTERIOR STAIR TOWERS - PROCUREMENT,,PRE - CON / BUYOUT / IMPACTS,,,,,2024-07-26 07:00,2024-08-09 17:00,2024-07-22 07:00,2024-09-16 17:00,2025-11-20 17:00,2025-11-20 17:00,2025-10-27 09:00,2025-10-27 09:00,0,100,100
STAIR.CT-1060,IMPACT - INTERIOR STAIR TOWERS - YATES/SAMOO/JACOBS MEETINGS & COORDINATION FOR P-38.2 COATING,Complete,CONSTRUCTION,,Stairs,INTERIOR STAIR TOWERS - PROCUREMENT,,PRE - CON / BUYOUT / IMPACTS,,,,,2024-07-26 07:00,2024-08-09 17:00,2024-07-22 07:00,2024-09-16 17:00,2025-11-20 17:00,2025-11-20 17:00,2025-10-27 09:00,2025-10-27 09:00,0,100,100
STAIR.CT-1070,IMPACT - INTERIOR STAIR TOWERS - PROCURE PRIMER & TOP COAT FOR P-38.2 COATING SYSTEM,Complete,CONSTRUCTION,,Stairs,INTERIOR STAIR TOWERS - PROCUREMENT,,PRE - CON / BUYOUT / IMPACTS,,,,,2024-09-23 07:00,2024-09-23 17:00,2024-09-16 07:00,2024-09-18 17:00,2025-11-20 17:00,2025-11-20 17:00,2025-10-27 09:00,2025-10-27 09:00,0,10,100
CN.SWB5.8940,REMAINING DRYWALL & FINISHES - FIREALARM 22 - SE PENTHOUSE - GL 3-5 C-D,Complete,CONSTRUCTION,,SOUTH EAST PENTHOUSE,L4 - SUP Roof - FAB Roof,FIRE ALARM ,CONSTRUCTION,,,,,2024-07-24 07:00,2024-07-29 17:00,2024-07-24 07:00,2024-08-02 17:00,2025-11-20 17:00,2025-11-20 17:00,2025-12-05 17:00,2025-12-05 17:00,0,40,100
CN.SWB5.2650,REMAINING DRYWALL & FINISHES - FIREALARM 1-SW PENTHOUSE,Complete,CONSTRUCTION,,SOUTH WEST PENTHOUSE,L4 - SUP Roof - FAB Roof,FIRE ALARM ,CONSTRUCTION,,,,,2024-09-06 07:00,2024-09-12 17:00,2024-08-05 07:00,2024-08-12 17:00,2025-11-20 17:00,2025-11-20 17:00,2025-12-05 17:00,2025-12-05 17:00,0,40,100
CN.SWA5..2540,COORDINATE / APPROVE STAIR SHUTDOWN WITH SECAI - STAIR #20 - 19/D - ALL LEVELS,Complete,CONSTRUCTION,,SUES-1 - 19-16,INTERIOR STAIR TOWER - STAIR #20,,CONSTRUCTION,,,,,2024-08-09 07:00,2024-08-16 17:00,2024-08-06 07:00,2024-08-07 17:00,2025-11-20 17:00,2025-11-20 17:00,2025-11-12 07:00,2025-11-12 07:00,0,50,100
CN.SWA5..2550,DEMO TEMPORARY HANDRAILS - STAIR #20 - 19/D - ALL LEVELS,Complete,CONSTRUCTION,,SUES-1 - 19-16,INTERIOR STAIR TOWER - STAIR #20,,CONSTRUCTION,,,,,2024-08-16 07:00,2024-08-16 17:00,2024-08-08 07:00,2024-08-08 17:00,2025-11-20 17:00,2025-11-20 17:00,2025-11-12 07:00,2025-11-12 07:00,0,10,100
CN.BB51.ST.2710,IMPACT - PATRIOT INSTALL TEMP HANDRAIL/CABLE - GL 33 - STAIR 18 - C-D,Complete,CONSTRUCTION,,GRIDLINE 33,,STAIR 18 (EAST) - C-D,CONSTRUCTION,PATRIOT,,,,2024-08-13 07:00,2024-08-20 17:00,2024-08-05 07:00,2024-08-22 17:00,2025-11-20 17:00,2025-11-20 17:00,2025-11-03 07:00,2025-11-03 07:00,0,50,100
CN.SWB5.9770,IMPACT - AWAITING DISMANTLE TEMP STAIRS - GL 33 - L1-L3 - B LINE,Complete,CONSTRUCTION,,GRIDLINE 33,GL 33- LEAVEOUTS,GL33 EXTERIOR AREA (SUE) - A-C,CONSTRUCTION,SECAI,,,,2024-02-05 07:00,2024-02-12 17:00,2023-10-31 07:00,2024-08-05 17:00,2025-11-20 17:00,2025-11-20 17:00,2025-12-02 07:00,2025-12-02 07:00,0,60,100
CN.SWB5.9780,DISMANTLE TEMP STAIRS - GL 33 - L1-L3 - M LINE,Complete,CONSTRUCTION,,GRIDLINE 33,GL 33- LEAVEOUTS,GL33 EXTERIOR AREA (SUW) - L-N,CONSTRUCTION,SECAI,,,,2024-08-12 07:00,2024-08-20 17:00,2024-08-02 07:00,2024-08-03 17:00,2025-11-20 17:00,2025-11-20 17:00,2025-12-04 07:00,2025-12-04 07:00,0,60,100
CN.BB51.ST.2730,IMPACT - Y_RFI #XXXX - SHOP DRAWING SUBMITTAL FOR EXTERIOR STUDS - STAIR 5&18 - GL 33,Complete,CONSTRUCTION,,GRIDLINE 33,,GL 33 PROCUREMENT ITEMS,CONSTRUCTION,,,,,2024-08-26 07:00,2024-09-03 17:00,2024-08-01 07:00,2024-08-03 17:00,2025-11-20 17:00,2025-11-20 17:00,2025-11-03 07:00,2025-11-03 07:00,0,60,100
CN.BB51.ST.2740,IMPACT - Y_RFI #XXXX - SHOP DRAWING APPROVAL FOR EXTERIOR STUDS - STAIR 5&18 - GL 33,Complete,CONSTRUCTION,,GRIDLINE 33,,GL 33 PROCUREMENT ITEMS,CONSTRUCTION,,,,,2024-08-09 07:00,2024-08-19 17:00,2024-08-03 07:00,2024-10-22 17:00,2025-11-20 17:00,2025-11-20 17:00,2025-11-03 07:00,2025-11-03 07:00,0,60,100
CN.BB51.ST.2750,IMPACT - Y_RFI #XXXX - FABRICATION & DELIVER APPROVED MATERIAL FOR EXTERIOR STUDS - STAIR 5&18 - GL 33,Complete,CONSTRUCTION,,GRIDLINE 33,,GL 33 PROCUREMENT ITEMS,CONSTRUCTION,,,,,2024-10-22 07:00,2024-10-31 17:00,2024-10-22 07:00,2024-10-28 17:00,2025-11-20 17:00,2025-11-20 17:00,2025-11-03 07:00,2025-11-03 07:00,0,60,100
CN.SWA5..2690,INSTALL Z CLIPS - STAIR #20 - 19/D - ALL LEVELS,Complete,CONSTRUCTION,,SUES-1 - 19-16,INTERIOR STAIR TOWER - STAIR #20,,CONSTRUCTION,,,,,2024-08-26 07:00,2024-08-28 17:00,2024-08-17 07:00,2024-08-19 17:00,2025-11-20 17:00,2025-11-20 17:00,2025-11-12 07:00,2025-11-12 07:00,0,30,100
CN.SWA5..2820,REMAINING FRAMING AND 1ST LAYER DRYWALL EXTERIOR - STAIR #20 - 19/D - ALL LEVELS,Complete,CONSTRUCTION,,SUES-1 - 19-16,INTERIOR STAIR TOWER - STAIR #20,,CONSTRUCTION,,,,,2024-11-05 07:00,2024-11-08 17:00,2024-11-05 07:00,2025-10-09 17:00,2025-11-20 17:00,2025-11-20 17:00,2025-11-24 07:00,2025-11-24 07:00,0,40,100
CN.SWA5..2830,PRIME & PAINT WALLS - STAIR #20 - 19/D - ALL LEVEL,Complete,CONSTRUCTION,,SUES-1 - 19-16,INTERIOR STAIR TOWER - STAIR #20,,CONSTRUCTION,,,,,2025-11-10 07:00,2025-11-17 17:00,2025-11-10 07:00,2025-11-17 17:00,2025-11-20 17:00,2025-11-20 17:00,2025-12-03 07:00,2025-12-03 07:00,0,70,100
CN.SEB3R.3900,REMAINING DRYWALL & FINISHES  - WAFER I/O - SEB3 - GL 25-28 - C-A - L1,Complete,CONSTRUCTION,,SUEN-3 - 25-28,L1 - Fndn Slab,WAFER I/O RM,CONSTRUCTION,,,,,2024-10-25 07:00,2024-10-29 17:00,2024-08-24 07:00,2024-08-30 17:00,2025-11-20 17:00,2025-11-20 17:00,2025-12-01 07:00,2025-12-01 07:00,0,30,100
CN.SEB4.3900,"REMAINING FRAMING & DRYWALL, TAPE & FINISH - SEB4 - GL 28-31 - L1 C-A PR RM(PATCH UPTO 12' REQ BY SECAI )",Complete,CONSTRUCTION,,SUEN-4 - 28-31,L1 - Fndn Slab,PR RM,CONSTRUCTION,,,,,2024-11-01 07:00,2024-11-07 17:00,2024-11-01 07:00,2025-10-03 17:00,2025-12-11 07:00,2025-12-11 07:00,2025-12-01 07:00,2025-12-01 07:00,0,40,100
STAIR.1120,IMPACT - SCAFFOLD IN THE WAY / AWAIT SECAI REMOVAL - STAIR #23,Complete,CONSTRUCTION,,INTERIOR STAIRS,LU1 - Underground Level,SUW - SUPPORT WEST,CONSTRUCTION,,,,,2024-07-26 07:00,2024-07-31 17:00,2024-07-08 07:00,2024-08-21 17:00,2025-11-20 17:00,2025-11-20 17:00,2025-12-05 17:00,2025-12-05 17:00,0,40,100
STAIR.1130,IMPACT - STAIR REDESIGN / CCD / REFABRICATION - STAIR #24,Complete,CONSTRUCTION,,INTERIOR STAIRS,LU1 - Underground Level,SUW - SUPPORT WEST,CONSTRUCTION,,,,,2024-07-26 07:00,2024-09-30 17:00,2024-06-03 07:00,2024-11-19 17:00,2025-11-20 17:00,2025-11-20 17:00,2025-12-05 17:00,2025-12-05 17:00,0,400,100
CN.AB.AR.3230,"REMAINING FRAMNING, DRYWALL & FINISHES - H2 PURIFER ROOM GL 18-21 K-N",Complete,CONSTRUCTION,,SUWN-1 - 18-21,L1 - Fndn Slab,H2 PURIFIER RM,CONSTRUCTION,,,,,2024-11-07 07:00,2024-11-12 17:00,2024-11-07 07:00,2024-11-11 17:00,2025-11-20 17:00,2025-11-20 17:00,2025-12-04 17:00,2025-12-04 17:00,0,40,100
STAIR.1650,IMPACT - IOCC RECONCELATION / SHOP DRAWINGS / FABRICATION - STAIR #49 - SUMT 0743,Complete,CONSTRUCTION,,INTERIOR STAIRS,L1 - Fndn Slab,SUW - SUPPORT WEST,CONSTRUCTION,,,,,2024-07-26 07:00,2024-07-31 17:00,2024-06-11 07:00,2025-02-14 17:00,2025-11-20 17:00,2025-11-20 17:00,2025-12-05 17:00,2025-12-05 17:00,0,40,100
STAIR.1480,IMPACT - PATIROT ADDING CREW - ORIENTATION - SUW - LEVEL 04,Complete,CONSTRUCTION,,INTERIOR STAIRS,L4 - SUP Roof - FAB Roof,SUW - SUPPORT WEST,CONSTRUCTION,,,,,2024-07-26 07:00,2024-08-09 17:00,2024-07-22 07:00,2024-08-06 17:00,2025-11-20 17:00,2025-11-20 17:00,2025-12-05 17:00,2025-12-05 17:00,0,100,100
STAIR.1660,INSTALL & INSPECT STAIR/RAMP #R3 - SUW - 32-M - LEVEL 04,Complete,CONSTRUCTION,,INTERIOR STAIRS,L4 - SUP Roof - FAB Roof,SUW - SUPPORT WEST,CONSTRUCTION,,,,,2024-09-06 07:00,2024-09-10 17:00,2024-07-19 07:00,2024-07-24 17:00,2025-11-20 17:00,2025-11-20 17:00,2025-12-05 17:00,2025-12-05 17:00,0,30,100
STAIR.2170,IMPACT - RFI & SECAI COORDINATION FOR ELEVATION ISSUE REMEDIATION - SLURRY ROOM STAIR,Complete,CONSTRUCTION,,INTERIOR STAIRS,L2 - SubFab Level,SUW - SUPPORT WEST,CONSTRUCTION,,,,,2024-07-26 07:00,2024-07-31 17:00,2024-06-27 07:00,2024-09-11 17:00,2025-11-20 17:00,2025-11-20 17:00,2025-12-05 17:00,2025-12-05 17:00,0,40,100
STAIR.2180,IMPACT - PROCURE MATERIAL & INSTALL TRANSISION PLATE (RAMP) - SLURRY ROOM STAIR,Complete,CONSTRUCTION,,INTERIOR STAIRS,L2 - SubFab Level,SUW - SUPPORT WEST,CONSTRUCTION,,,,,2024-10-28 07:00,2024-11-12 17:00,2024-10-28 07:00,2024-11-23 17:00,2025-11-20 17:00,2025-11-20 17:00,2025-12-05 17:00,2025-12-05 17:00,0,100,100
CN.AB.AR.7220,IMPACT - ELECTRIC BOXES MOUNTED ON THE WALL - FIRE ALARM 20 - SEA1 - GL 19-16 - C-A - L3,Complete,CONSTRUCTION,,SUES-1 - 19-16,L3 / Waffle Slab Level,FIRE ALARM ,CONSTRUCTION,,,,,2024-08-09 07:00,2024-08-15 17:00,2024-07-01 07:00,2024-07-24 17:00,2025-11-20 17:00,2025-11-20 17:00,2025-12-04 07:00,2025-12-04 07:00,0,40,100
CN.SWA5..3150,COORDINATE / APPROVE STAIR SHUTDOWN WITH SECAI - STAIR #21 - 13/D - ALL LEVELS,Complete,CONSTRUCTION,,SUES-3 - 13-9,INTERIOR STAIR TOWER - STAIR #21 (CLEAN ROOM),,CONSTRUCTION,,,,,2024-08-09 07:00,2024-08-16 17:00,2024-08-06 07:00,2024-08-07 17:00,2025-11-20 17:00,2025-11-20 17:00,2025-11-12 07:00,2025-11-12 07:00,0,50,100
CN.SWA5..3160,DEMO TEMPORARY HANDRAILS - STAIR #21 - 13/D - ALL LEVELS,Complete,CONSTRUCTION,,SUES-3 - 13-9,INTERIOR STAIR TOWER - STAIR #21 (CLEAN ROOM),,CONSTRUCTION,,,,,2024-08-15 07:00,2024-08-15 17:00,2024-08-08 07:00,2024-08-08 17:00,2025-11-20 17:00,2025-11-20 17:00,2025-11-12 07:00,2025-11-12 07:00,0,10,100
CN.SWA5..3170,INSTALL Z CLIPS - STAIR #21 - 13/D - ALL LEVELS,Complete,CONSTRUCTION,,SUES-3 - 13-9,INTERIOR STAIR TOWER - STAIR #21 (CLEAN ROOM),,CONSTRUCTION,,,,,2024-08-23 07:00,2024-08-27 17:00,2024-08-15 07:00,2024-08-17 17:00,2025-11-20 17:00,2025-11-20 17:00,2025-11-12 07:00,2025-11-12 07:00,0,30,100
CN.SWA5..3180,REMAINING EXTERIOR FRAMING AND 1ST LAYER DRYWALL - STAIR #21 - 13/D - ALL LEVELS(2 SHIFTS /DAY),Complete,CONSTRUCTION,,SUES-3 - 13-9,INTERIOR STAIR TOWER - STAIR #21 (CLEAN ROOM),,CONSTRUCTION,,,,,2024-11-16 07:00,2024-11-19 17:00,2024-11-13 07:00,2025-03-03 17:00,2025-11-20 17:00,2025-11-20 17:00,2025-11-12 07:00,2025-11-12 07:00,0,30,100
CN.AB.AR.7190,IMPACT - GOAL POSTS ON HOLD BY SECAI FOR FLOOR COATING -7D WASTE LIQUOR RM - SWB-3 - GL 24-27 K-N,Complete,CONSTRUCTION,,SUWN-3 - 24-27,L1 - Fndn Slab,WASTE LIQUOR RM,CONSTRUCTION,,,,,2024-07-26 07:00,2024-07-31 17:00,2024-05-14 07:00,2024-09-24 17:00,2025-11-20 17:00,2025-11-20 17:00,2025-12-01 07:00,2025-12-01 07:00,0,40,100
CN.SWA5..2400,COORDINATE / APPROVE STAIR SHUTDOWN WITH SECAI - STAIR #19 - 26/D - ALL LEVELS (AFTER STAIR 21 COMPLETION),Complete,CONSTRUCTION,,SUEN-3 - 25-28,INTERIOR STAIR TOWER - STAIR #19 (CLEAN ROOM) - DE-SCOPED,,CONSTRUCTION,,,,,2025-03-22 07:00,2025-03-24 17:00,2025-03-19 07:00,2025-03-20 17:00,2025-11-20 17:00,2025-11-20 17:00,2025-11-21 07:00,2025-11-21 07:00,0,20,100
CN.SWA5..2410,DEMO TEMPORARY HANDRAILS - STAIR #19 - 26/D - ALL LEVELS,Complete,CONSTRUCTION,,SUEN-3 - 25-28,INTERIOR STAIR TOWER - STAIR #19 (CLEAN ROOM) - DE-SCOPED,,CONSTRUCTION,,,,,2025-03-25 07:00,2025-03-25 17:00,2025-03-21 07:00,2025-03-21 17:00,2025-11-20 17:00,2025-11-20 17:00,2025-11-21 07:00,2025-11-21 07:00,0,10,100
CN.SWA5..3220,INSTALL Z CLIPS - STAIR #19 - 26/D - ALL LEVELS - (DESCOPE),Complete,CONSTRUCTION,,SUEN-3 - 25-28,INTERIOR STAIR TOWER - STAIR #19 (CLEAN ROOM) - DE-SCOPED,,CONSTRUCTION,,,,,2025-04-07 07:00,2025-04-09 17:00,2025-04-07 07:00,2025-04-14 11:00,2025-11-20 17:00,2025-11-20 17:00,2025-11-21 07:00,2025-11-21 07:00,0,30,100
CN.SWA5..3240,COORDINATE / APPROVE STAIR SHUTDOWN WITH SECAI - STAIR #22 - 6/D - ALL LEVELS ( AFTER STAIR 20) (DESCOPED),Complete,CONSTRUCTION,,SUES-5 - 6-1 - FIZ - GL A -E,INTERIOR STAIR TOWER - STAIR #22 - DE-SCOPED,,CONSTRUCTION,,,,,2025-06-21 07:00,2025-06-21 17:00,2025-05-24 07:00,2025-05-27 16:00,2025-11-20 17:00,2025-11-20 17:00,2025-10-27 09:00,2025-10-27 09:00,0,10,100
CN.SWA5..3250,DEMO TEMPORARY HANDRAILS - STAIR #22 - 6/D - ALL LEVELS (DESCOPED),Complete,CONSTRUCTION,,SUES-5 - 6-1 - FIZ - GL A -E,INTERIOR STAIR TOWER - STAIR #22 - DE-SCOPED,,CONSTRUCTION,,,,,2025-06-23 07:00,2025-06-23 17:00,2025-05-28 14:58,2025-05-29 15:00,2025-11-20 17:00,2025-11-20 17:00,2025-10-27 09:00,2025-10-27 09:00,0,10,100
CN.SWA5..3260,INSTALL Z CLIPS - STAIR #22 - 6/D - ALL LEVELS (DESCOPED),Complete,CONSTRUCTION,,SUES-5 - 6-1 - FIZ - GL A -E,INTERIOR STAIR TOWER - STAIR #22 - DE-SCOPED,,CONSTRUCTION,,,,,2025-07-03 07:00,2025-07-07 17:00,2025-06-05 16:05,2025-06-07 13:00,2025-11-20 17:00,2025-11-20 17:00,2025-10-27 09:00,2025-10-27 09:00,0,30,100
CN.SWA5..3280,SECAI - INSTALL INTERIOR DRYWALL - STAIR #22 - 6/D - ALL LEVELS[/DAY],Complete,CONSTRUCTION,,SUES-5 - 6-1 - FIZ - GL A -E,INTERIOR STAIR TOWER - STAIR #22 - DE-SCOPED,,CONSTRUCTION,,,,,2025-08-16 07:00,2025-08-16 17:00,2025-08-16 07:00,2025-08-16 17:00,2025-11-20 17:00,2025-11-20 17:00,2025-11-01 07:00,2025-11-01 07:00,0,10,100
CN.SWA5..3290,PRIME & PAINT WALLS - STAIR #22 - 6/D - ALL LEVELS (),Not Started,CONSTRUCTION,,SUES-5 - 6-1 - FIZ - GL A -E,INTERIOR STAIR TOWER - STAIR #22 - DE-SCOPED,,CONSTRUCTION,,,,,2025-12-18 15:00,2025-12-30 15:00,,,2025-12-18 15:00,2025-12-30 15:00,2025-11-21 07:00,2025-12-02 17:00,80,80,0
CN.SWA5..1980,PRIME & PAINT WALLS  - STAIR #1 - 5/L - ALL LEVELS,Not Started,CONSTRUCTION,,FIZ 2 / SUWS 5  (GL6-1) - GL J - N - DATA CENTER 1,INTERIOR STAIR TOWER - STAIR #1 - DE-SCOPED,,CONSTRUCTION,,,,,2025-12-20 15:00,2025-12-29 15:00,,,2025-12-20 15:00,2025-12-29 15:00,2025-11-24 07:00,2025-12-01 17:00,50,50,0
CN.SWA5..2270,SECAI - IN-WALL MEP ROUGH-IN  - STAIR #1 - 5/L - ALL LEVELS - SECAI TOOK OVER FOR ACCELRATION,Complete,CONSTRUCTION,,FIZ 2 / SUWS 5  (GL6-1) - GL J - N - DATA CENTER 1,INTERIOR STAIR TOWER - STAIR #1 - DE-SCOPED,,CONSTRUCTION,,,,,2025-06-27 07:00,2025-06-27 17:00,2025-06-27 07:00,2025-06-27 17:00,2025-12-05 15:00,2025-12-05 15:00,2025-11-08 07:00,2025-11-08 07:00,0,10,100
CN.SWA5..3300,COORDINATE / APPROVE STAIR SHUTDOWN WITH SECAI - STAIR #2 - 11/L - ALL LEVELS,Complete,CONSTRUCTION,,SUWS-3 - 12-9,INTERIOR STAIR TOWER - STAIR #2 (CLEAN ROOM),,CONSTRUCTION,,,,,2024-08-09 07:00,2024-08-16 17:00,2024-08-06 07:00,2024-08-07 17:00,2025-11-20 17:00,2025-11-20 17:00,2025-11-12 07:00,2025-11-12 07:00,0,50,100
CN.SWA5..3310,DEMO TEMPORARY HANDRAILS - STAIR #2 - 11/L - ALL LEVELS,Complete,CONSTRUCTION,,SUWS-3 - 12-9,INTERIOR STAIR TOWER - STAIR #2 (CLEAN ROOM),,CONSTRUCTION,,,,,2024-08-16 07:00,2024-08-16 17:00,2024-08-08 07:00,2024-08-08 17:00,2025-11-20 17:00,2025-11-20 17:00,2025-11-12 07:00,2025-11-12 07:00,0,10,100
CN.SWA5..3320,INSTALL Z CLIPS - STAIR #2 - 11/L - ALL LEVELS,Complete,CONSTRUCTION,,SUWS-3 - 12-9,INTERIOR STAIR TOWER - STAIR #2 (CLEAN ROOM),,CONSTRUCTION,,,,,2024-08-23 07:00,2024-08-27 17:00,2024-08-15 07:00,2024-08-15 17:00,2025-11-20 17:00,2025-11-20 17:00,2025-11-12 07:00,2025-11-12 07:00,0,30,100
CN.SWA5..3350,FRAMING AND 1ST LAYER EXTERIOR DRYWALL & inspect - STAIR #2 - 11/L - ALL LEVELS,Complete,CONSTRUCTION,,SUWS-3 - 12-9,INTERIOR STAIR TOWER - STAIR #2 (CLEAN ROOM),,CONSTRUCTION,,,,,2024-11-02 07:00,2024-11-07 17:00,2024-10-28 07:00,2024-11-19 07:00,2025-11-20 17:00,2025-11-20 17:00,2025-11-12 07:00,2025-11-12 07:00,0,50,100
CN.SWA5..3360,COORDINATE / APPROVE STAIR SHUTDOWN WITH SECAI - STAIR #3 - 18/L - ALL LEVELS,Complete,CONSTRUCTION,,SUWN-1 - 18-21,INTERIOR STAIR TOWER - STAIR #3,,CONSTRUCTION,,,,,2024-08-09 07:00,2024-08-16 17:00,2024-08-06 07:00,2024-08-07 17:00,2025-11-20 17:00,2025-11-20 17:00,2025-11-03 07:00,2025-11-03 07:00,0,50,100
CN.SWA5..3370,DEMO TEMPORARY HANDRAILS - STAIR #3 - 18/L - ALL LEVELS,Complete,CONSTRUCTION,,SUWN-1 - 18-21,INTERIOR STAIR TOWER - STAIR #3,,CONSTRUCTION,,,,,2024-08-15 07:00,2024-08-15 17:00,2024-08-08 07:00,2024-08-08 17:00,2025-11-20 17:00,2025-11-20 17:00,2025-11-03 07:00,2025-11-03 07:00,0,10,100
CN.SWA5..3380,INSTALL Z CLIPS - STAIR #3 - 18/L - ALL LEVELS,Complete,CONSTRUCTION,,SUWN-1 - 18-21,INTERIOR STAIR TOWER - STAIR #3,,CONSTRUCTION,,,,,2024-08-23 07:00,2024-08-27 17:00,2024-08-16 07:00,2024-08-18 17:00,2025-11-20 17:00,2025-11-20 17:00,2025-11-03 07:00,2025-11-03 07:00,0,30,100
CN.SWA5..3400,REMAINING FRAMING AND 1ST LAYER DRYWALL EXTERIOR & INSPECT - STAIR #3 - 18/L - ALL LEVELS,Complete,CONSTRUCTION,,SUWN-1 - 18-21,INTERIOR STAIR TOWER - STAIR #3,,CONSTRUCTION,,,,,2024-11-08 07:00,2024-11-12 17:00,2024-11-08 07:00,2025-10-03 17:00,2025-11-20 17:00,2025-11-20 17:00,2025-11-08 07:00,2025-11-08 07:00,0,40,100
CN.SWA5..3410,PRIME & PAINT WALLS - STAIR #3 - 18/L - ALL LEVEL,Not Started,CONSTRUCTION,,SUWN-1 - 18-21,INTERIOR STAIR TOWER - STAIR #3,,CONSTRUCTION,,,,,2025-12-05 07:00,2025-12-11 17:00,,,2025-12-05 07:00,2025-12-11 17:00,2025-11-14 07:00,2025-11-20 17:00,60,60,0
CN.SWA5..3420,COORDINATE / APPROVE STAIR SHUTDOWN WITH SECAI - STAIR #4 - 23/L - ALL LEVELS (TO BEGIN AFTER STAIR 2 COMPLETION),Complete,CONSTRUCTION,,SUWN-2 - 21-24,INTERIOR STAIR TOWER - STAIR #4 (CLEAN ROOM),,CONSTRUCTION,,,,,2025-03-22 07:00,2025-03-24 17:00,2025-02-24 07:00,2025-02-25 17:00,2025-11-20 17:00,2025-11-20 17:00,2025-12-01 07:00,2025-12-01 07:00,0,20,100
CN.SWA5..3430,DEMO TEMPORARY HANDRAILS - STAIR #4 - 23/L - ALL LEVELS,Complete,CONSTRUCTION,,SUWN-2 - 21-24,INTERIOR STAIR TOWER - STAIR #4 (CLEAN ROOM),,CONSTRUCTION,,,,,2025-03-25 07:00,2025-03-25 17:00,2025-02-25 07:00,2025-02-26 17:00,2025-11-20 17:00,2025-11-20 17:00,2025-12-01 07:00,2025-12-01 07:00,0,10,100
CN.SWA5..3440,INSTALL Z CLIPS - STAIR #4 - 23/L - ALL LEVELS(2- SHIFTS),Complete,CONSTRUCTION,,SUWN-2 - 21-24,INTERIOR STAIR TOWER - STAIR #4 (CLEAN ROOM),,CONSTRUCTION,,,,,2025-03-22 07:00,2025-03-25 17:00,2025-03-14 12:00,2025-03-17 17:00,2025-11-20 17:00,2025-11-20 17:00,2025-12-01 07:00,2025-12-01 07:00,0,30,100
CN.SWA5..3450,REMAINING FRAMING AND 1st DRYWALL EXTERIOR install & INSPECT - STAIR #4 - 23/L - ALL LEVELS [/DAY],Complete,CONSTRUCTION,,SUWN-2 - 21-24,INTERIOR STAIR TOWER - STAIR #4 (CLEAN ROOM),,CONSTRUCTION,,,,,2025-06-26 07:00,2025-07-01 17:00,2025-04-29 07:00,2025-05-05 17:00,2025-11-20 17:00,2025-11-20 17:00,2025-11-17 07:00,2025-11-17 07:00,0,50,100
CN.SWA5..3510,PRIME & PAINT WALLS - STAIR #50 - 29/L - ALL LEVELS(),Complete,CONSTRUCTION,,SUWN-4 - 27-30,INTERIOR STAIR TOWER - STAIR #50 - DE-SCOPED,,CONSTRUCTION,,,,,2025-11-18 07:00,2025-11-22 17:00,2025-10-27 07:00,2025-10-31 17:00,2025-11-20 17:00,2025-11-20 17:00,2025-12-05 07:00,2025-12-05 07:00,0,50,100
CN.SEA5.6710,INSTALL ACCESS LADDER - ELEVATOR 22,Complete,CONSTRUCTION,,SUES-5 - 6-1 - FIZ - GL A -E,,ELEVATOR,CONSTRUCTION,,,,,2024-09-19 07:00,2024-09-19 17:00,2024-09-19 07:00,2024-09-19 17:00,2025-11-20 17:00,2025-11-20 17:00,2025-12-05 17:00,2025-12-05 17:00,0,10,100
ELEVHSS440,"IMPACT - NCR 372 - INFINITY PRICING / PROCURE DENSO VOID FILLER MATERIAL - INACCESSIBLE BOLTS - ELEVATORS 3,5,18,20,22",Complete,CONSTRUCTION,,ELEVATORS,L1 - Fndn Slab,,PRE - CON / BUYOUT / IMPACTS,SECAI,,,,2024-07-26 07:00,2024-08-27 17:00,2024-07-29 07:00,2024-09-14 17:00,2025-11-20 17:00,2025-11-20 17:00,2025-10-16 07:00,2025-10-16 07:00,0,200,100
CN.SEB5.9130,INSTALL ACCESS LADDER - ELEVATOR 18,Complete,CONSTRUCTION,,SUEN-5 - 31-33,,ELEVATOR,CONSTRUCTION,BAKER,,,,2024-10-07 07:00,2024-10-11 17:00,2024-10-07 07:00,2024-10-11 17:00,2025-11-20 17:00,2025-11-20 17:00,2025-12-01 07:00,2025-12-01 07:00,0,40,100
CN.SWB5.9820,INSTALL ACCESS LADDER - ELEVATOR 5,Complete,CONSTRUCTION,,SUWN-5 - 30-33,,ELEVATOR,CONSTRUCTION,BAKER,,,,2024-10-21 07:00,2024-10-25 17:00,2024-10-08 07:00,2024-10-11 17:00,2025-11-20 17:00,2025-11-20 17:00,2025-10-16 07:00,2025-10-16 07:00,0,40,100
CN.SWA5.9500,INSTALL GRATING AT SUMP PIT - ELEVATOR 01B,Complete,CONSTRUCTION,,FIZ 2 / SUWS 5  (GL6-1) - GL J - N - DATA CENTER 1,,ELEVATOR,CONSTRUCTION,BAKER,,,,2024-12-17 07:00,2024-12-17 17:00,2024-12-17 07:00,2024-12-17 17:00,2025-11-20 17:00,2025-11-20 17:00,2025-12-01 07:00,2025-12-01 07:00,0,10,100
CN.AB.AR.7250,INSTALL ACCESS LADDER - ELEVATOR 01,Complete,CONSTRUCTION,,FIZ 2 / SUWS 5  (GL6-1) - GL J - N - DATA CENTER 1,,ELEVATOR,CONSTRUCTION,BAKER,,,,2024-10-08 07:00,2024-10-14 17:00,2024-10-08 07:00,2024-10-12 17:00,2025-11-20 17:00,2025-11-20 17:00,2025-12-05 17:00,2025-12-05 17:00,0,40,100
CN.AB.AR.7270,INSTALL ACCESS LADDER - ELEVATOR 01A,Complete,CONSTRUCTION,,FIZ 2 / SUWS 5  (GL6-1) - GL J - N - DATA CENTER 1,,ELEVATOR,CONSTRUCTION,BAKER,,,,2024-11-07 07:00,2024-11-12 17:00,2024-10-07 07:00,2024-10-10 17:00,2025-11-20 17:00,2025-11-20 17:00,2025-12-01 07:00,2025-12-01 07:00,0,40,100
CN.SWB5.9830,IMPACT - ROLLING PLAINS SCRAPE FIREPROOFING SFRM-1 - ELEVATOR 5 - LEVEL 1,Complete,CONSTRUCTION,,SUWN-5 - 30-33,,ELEVATOR,CONSTRUCTION,BAKER,,,,2024-08-26 07:00,2024-08-26 17:00,2024-08-22 07:00,2024-08-22 17:00,2025-11-20 17:00,2025-11-20 17:00,2025-10-16 07:00,2025-10-16 07:00,0,10,100
CN.SEB5.9140,IMPACT - ROLLING PLAINS SCRAPE FIREPROOFING SFRM-1 - ELEVATOR 18,Complete,CONSTRUCTION,,SUEN-5 - 31-33,,ELEVATOR,CONSTRUCTION,BAKER,,,,2024-09-12 07:00,2024-09-13 17:00,2024-08-27 07:00,2024-08-28 17:00,2025-11-20 17:00,2025-11-20 17:00,2025-12-01 07:00,2025-12-01 07:00,0,20,100
CN.SEA5.10355,IMPACT - REAPPLY FIREPROOFING SFRM-2 - ELEVATOR 22,Complete,CONSTRUCTION,,SUES-5 - 6-1 - FIZ - GL A -E,,ELEVATOR,CONSTRUCTION,,,,,2024-09-05 07:00,2024-09-17 17:00,2024-08-16 07:00,2024-08-21 17:00,2025-11-20 17:00,2025-11-20 17:00,2025-11-26 07:00,2025-11-26 07:00,0,80,100
CN.SEA5.10365,INSTALL EDGE OF SLAB - GL 3-13 - A LINE (SUPPORT EXTERIOR AREA) - L2,Complete,CONSTRUCTION,,SUES-3 - 13-9,EXTERIOR SKIN,,CONSTRUCTION,BERG,,,,2024-08-09 07:00,2024-08-26 17:00,2024-08-01 07:00,2024-12-23 17:00,2025-11-20 17:00,2025-11-20 17:00,2025-12-05 17:00,2025-12-05 17:00,0,100,100
CN.SEB1.10000,INSTALL EDGE OF SLAB - GL 13-22 - A LINE (SUPPORT EXTERIOR AREA) - L2,Active,CONSTRUCTION,,SUEN-1 - 19-22,EXTERIOR SKIN,,CONSTRUCTION,BERG,,,,2024-08-09 07:00,2024-08-20 17:00,2024-08-01 07:00,,2025-11-21 07:00,2025-11-24 17:00,2025-12-04 07:00,2025-12-05 17:00,20,70,0
CN.SEB1.9990,INSTALL EDGE OF SLAB - GL 22-31 - A LINE (SUPPORT EXTERIOR AREA) - L2,Complete,CONSTRUCTION,,SUEN-4 - 28-31,EXTERIOR SKIN,WAFER I/O RM,CONSTRUCTION,BERG,,,,2024-07-16 07:00,2024-07-29 17:00,2024-07-18 07:00,2024-10-15 17:00,2025-11-20 17:00,2025-11-20 17:00,2025-12-05 17:00,2025-12-05 17:00,0,100,100
CN.SEB1.10010,INSTALL EDGE OF SLAB - GL 3-12 - N LINE (SUPPORT EXTERIOR AREA) - L2,Active,CONSTRUCTION,,FIZ 2 / SUWS 5  (GL6-1) - GL J - N - DATA CENTER 1,EXTERIOR SKIN,SUB CLEAN RM,CONSTRUCTION,BERG,,,,2024-08-19 07:00,2024-09-03 17:00,2024-07-22 07:00,,2025-11-21 07:00,2025-11-21 17:00,2025-12-05 07:00,2025-12-05 17:00,10,100,0
CN.SEB1.10020,INSTALL EDGE OF SLAB - GL 12-21 - N LINE (SUPPORT EXTERIOR AREA) - L2,Not Started,CONSTRUCTION,,SUWS-2 - 15-12,EXTERIOR SKIN,,CONSTRUCTION,BERG,,,,2025-11-21 07:00,2025-11-21 17:00,,,2025-11-21 07:00,2025-11-21 17:00,2025-12-05 07:00,2025-12-05 17:00,10,10,0
CN.SEB1.10030,INSTALL EDGE OF SLAB - GL 21-31 - N LINE (SUPPORT EXTERIOR AREA) - L2,Active,CONSTRUCTION,,SUWN-2 - 21-24,EXTERIOR SKIN,,CONSTRUCTION,BERG,,,,2024-11-04 07:00,2024-11-19 17:00,2024-10-21 07:00,,2025-11-21 07:00,2025-11-21 17:00,2025-12-05 07:00,2025-12-05 17:00,10,100,0
CN.SWA5.9520,SUMP LAYOUT SURVEY & CONFIRMATION - ELEVATOR 01B,Complete,CONSTRUCTION,,FIZ 2 / SUWS 5  (GL6-1) - GL J - N - DATA CENTER 1,,ELEVATOR,CONSTRUCTION,BAKER,,,,2024-12-16 07:00,2024-12-16 17:00,2024-12-16 07:00,2024-12-16 17:00,2025-11-20 17:00,2025-11-20 17:00,2025-12-01 07:00,2025-12-01 07:00,0,10,100
CN.SEB5.9160,TAPE & FLOAT INTERIOR SHAFT WALLS - ELEVATOR 18 - LEVEL 1-3,Complete,CONSTRUCTION,,SUEN-5 - 31-33,,ELEVATOR,CONSTRUCTION,BAKER,,,,2025-01-06 07:00,2025-01-07 17:00,2025-01-06 07:00,2025-01-07 17:00,2025-11-20 17:00,2025-11-20 17:00,2025-12-01 07:00,2025-12-01 07:00,0,20,100
CN.SEA5.10510,TAPE & FLOAT - INTERIOR SHAFT AND FRONTS - ELEVATOR 22,Complete,CONSTRUCTION,,SUES-5 - 6-1 - FIZ - GL A -E,,ELEVATOR,CONSTRUCTION,,,,,2025-10-07 07:00,2025-10-15 17:00,2025-10-07 07:00,2025-10-22 17:00,2025-11-20 17:00,2025-11-20 17:00,2025-11-26 07:00,2025-11-26 07:00,0,70,100
CN.SEB4.8990,DS ROOF PARAPET DRY IN - SEB4 - GL 28-31 - C&D - L6,Complete,CONSTRUCTION,,SUEN-4 - 28-31,DS/AD,,CONSTRUCTION,BRAZOS,TOPPING,,,2024-08-02 07:00,2024-08-13 17:00,2024-07-31 07:00,2024-09-03 17:00,2025-11-20 17:00,2025-11-20 17:00,2025-12-05 17:00,2025-12-05 17:00,0,70,100
CN.SEB3.6900,DS ROOF PARAPET DRY IN - SEB3 - GL 25-28 - C&D - L6,Complete,CONSTRUCTION,,SUEN-3 - 25-28,DS/AD,,CONSTRUCTION,BRAZOS,TOPPING,,,2024-07-31 07:00,2024-08-09 17:00,2024-07-31 07:00,2024-09-03 17:00,2025-11-20 17:00,2025-11-20 17:00,2025-12-05 17:00,2025-12-05 17:00,0,70,100
CN.SEB55260,DS ROOF PARAPET DRY IN - SEB2 - GL 22-25 - C-D - L6,Complete,CONSTRUCTION,,SUEN-2 - 22-25,DS/AD,,CONSTRUCTION,BRAZOS,,,,2024-08-02 07:00,2024-08-26 17:00,2024-08-01 07:00,2024-09-03 17:00,2025-11-20 17:00,2025-11-20 17:00,2025-12-05 17:00,2025-12-05 17:00,0,140,100
CN.SEA1.9385,DS ROOF PARAPET DRY IN - SEA1 - GL 19-16 - C-D - L6,Complete,CONSTRUCTION,,SUES-1 - 19-16,DS/AD,,CONSTRUCTION,BRAZOS,TOPPING,,,2024-09-13 07:00,2024-10-04 17:00,2024-08-27 07:00,2024-09-04 17:00,2025-11-20 17:00,2025-11-20 17:00,2025-12-05 17:00,2025-12-05 17:00,0,130,100
CN.SEA2.6730,DS ROOF PARAPET DRY IN - SEA2 - GL 16-13 - C-D - L6,Complete,CONSTRUCTION,,SUES-2 - 16-13,DS/AD,,CONSTRUCTION,BRAZOS,TOPPING,,,2024-09-06 07:00,2024-09-27 17:00,2024-08-30 07:00,2024-09-06 17:00,2025-11-20 17:00,2025-11-20 17:00,2025-12-05 17:00,2025-12-05 17:00,0,130,100
CN.SEA3.7090,DS ROOF PARAPET DRY IN - SEA3 - GL 13-9 - C-D - L6,Complete,CONSTRUCTION,,SUES-3 - 13-9,DS/AD,,CONSTRUCTION,BRAZOS,TOPPING,,,2024-09-16 07:00,2024-10-07 17:00,2024-09-05 07:00,2024-09-14 17:00,2025-11-20 17:00,2025-11-20 17:00,2025-12-05 17:00,2025-12-05 17:00,0,130,100
CN.SEA4.6690,DS ROOF PARAPET DRY IN - SEA4 - GL 9-6 - C-D - L6,Complete,CONSTRUCTION,,SUES-4 - 9-6,DS/AD,,CONSTRUCTION,BRAZOS,TOPPING,,,2024-09-16 07:00,2024-10-07 17:00,2024-09-05 07:00,2024-09-19 17:00,2025-11-20 17:00,2025-11-20 17:00,2025-12-05 17:00,2025-12-05 17:00,0,130,100
CN.SEB4.9000,DS ROOF PARAPET DRY IN - SEB4 - GL 31-33 - C-D - L6 - NORTH EAST PENTHOUSE,Complete,CONSTRUCTION,,NORTH WEST PENTHOUSE,L6 - PENTHOUSE / DS ROOF,,CONSTRUCTION,BRAZOS,TOPPING,,,2024-10-25 07:00,2024-11-18 17:00,2024-10-25 07:00,2025-02-07 17:00,2025-11-20 17:00,2025-11-20 17:00,2025-12-05 17:00,2025-12-05 17:00,0,140,100
CN.SEA4.6700,DS ROOF PARAPET DRY IN - SEA4 - GL 3-5 - C-D - L6- SOUTH EAST PENTHOUSE,Complete,CONSTRUCTION,,SUES-4 - 9-6,DS/AD,,CONSTRUCTION,BRAZOS,TOPPING,,,2024-10-21 07:00,2024-11-12 17:00,2024-10-17 07:00,2024-10-25 17:00,2025-11-20 17:00,2025-11-20 17:00,2025-12-05 17:00,2025-12-05 17:00,0,140,100
CN.SWA5..3530,SECAI - INSTALL FLOORING/COATING - STAIR #21 - 13/D - ALL LEVELS,Complete,CONSTRUCTION,,SUES-3 - 13-9,INTERIOR STAIR TOWER - STAIR #21 (CLEAN ROOM),,CONSTRUCTION,,,,,2025-09-08 07:00,2025-09-12 17:00,2025-09-08 07:00,2025-09-12 17:00,2025-12-03 17:00,2025-12-03 17:00,2025-12-05 17:00,2025-12-05 17:00,0,50,100
CN.SWA5..3540,IMPACT - OUT OF SEQUENCE BY SECAI - INSTALL FLOORING/COATING - STAIR #20 - 19/D - ALL LEVELS,Complete,CONSTRUCTION,,SUES-1 - 19-16,INTERIOR STAIR TOWER - STAIR #20,,CONSTRUCTION,,,,,2025-12-06 07:00,2025-12-06 17:00,2025-10-29 07:00,2025-11-07 17:00,2025-11-20 17:00,2025-11-20 17:00,2025-11-29 07:00,2025-11-29 07:00,0,10,100
CN.SWA5..3550,SECAI - INSTALL FLOORING/COATING - STAIR #19 - 26/D - ALL LEVELS,Complete,CONSTRUCTION,,SUEN-3 - 25-28,INTERIOR STAIR TOWER - STAIR #19 (CLEAN ROOM) - DE-SCOPED,,CONSTRUCTION,,,,,2025-09-20 07:00,2025-10-01 17:00,2025-06-27 07:00,2025-06-27 17:00,2025-11-20 17:00,2025-11-20 17:00,2025-12-05 17:00,2025-12-05 17:00,0,100,100
CN.SWA5..3560,SECAI - INSTALL FLOORING/COATING - STAIR #1 - 5/L - ALL LEVELS,Complete,CONSTRUCTION,,FIZ 2 / SUWS 5  (GL6-1) - GL J - N - DATA CENTER 1,INTERIOR STAIR TOWER - STAIR #1 - DE-SCOPED,,CONSTRUCTION,,,,,2025-06-23 07:00,2025-06-27 17:00,2025-06-27 07:00,2025-06-27 17:00,2025-12-29 15:00,2025-12-29 15:00,2025-12-05 17:00,2025-12-05 17:00,0,50,100
CN.SWA5..3580,IMPACT - OUT OF SEQUENCE BY SECAI - INSTALL FLOORING/COATING - STAIR #3 - 18/L - ALL LEVELS,Active,CONSTRUCTION,,SUWN-1 - 18-21,INTERIOR STAIR TOWER - STAIR #3,,CONSTRUCTION,,,,,2025-12-12 07:00,2025-12-12 17:00,2025-10-29 07:00,,2025-11-21 07:00,2025-11-26 17:00,2025-11-03 07:00,2025-11-07 17:00,50,10,0
CN.SWA5..3590,SECAI - INSTALL FLOORING/COATING - STAIR #4 - 23/L - ALL LEVELS,Complete,CONSTRUCTION,,SUWN-2 - 21-24,INTERIOR STAIR TOWER - STAIR #4 (CLEAN ROOM),,CONSTRUCTION,,,,,2025-10-03 07:00,2025-10-08 17:00,2025-10-03 07:00,2025-10-08 17:00,2025-12-10 17:00,2025-12-10 17:00,2025-12-05 17:00,2025-12-05 17:00,0,50,100
CN.SWA5..3600,SECAI - INSTALL FLOORING/COATING - STAIR #50 - 29/L - ALL LEVELS,Complete,CONSTRUCTION,,SUWN-4 - 27-30,INTERIOR STAIR TOWER - STAIR #50 - DE-SCOPED,,CONSTRUCTION,,,,,2025-09-17 07:00,2025-09-27 17:00,2025-06-27 07:00,2025-06-27 13:00,2025-11-21 17:00,2025-11-21 17:00,2025-12-05 17:00,2025-12-05 17:00,0,100,100
CN.SEA5.10520,IMPACT - COMPLETE REMAINING DRYWALL LEAVEOUTS FOR FIREPROOFING - ELEVATOR 22,Complete,CONSTRUCTION,,SUES-5 - 6-1 - FIZ - GL A -E,,ELEVATOR,CONSTRUCTION,,,,,2024-09-16 07:00,2024-09-24 17:00,2024-08-22 07:00,2024-08-27 17:00,2025-11-20 17:00,2025-11-20 17:00,2025-11-26 07:00,2025-11-26 07:00,0,60,100
CN.SEA5.10530,IMPACT - APACHE DEMO DRYWALL & SCRAPE FIREPROOFING SFRM-1 - ELEVATOR 22 - ALL LEVELS,Complete,CONSTRUCTION,,SUES-5 - 6-1 - FIZ - GL A -E,,ELEVATOR,CONSTRUCTION,,,,,2024-08-26 07:00,2024-09-05 17:00,2024-08-12 07:00,2024-08-15 17:00,2025-11-20 17:00,2025-11-20 17:00,2025-11-26 07:00,2025-11-26 07:00,0,80,100
CN.SEA5.10550,ELEVATOR TURNOVER TO SECAI / AWAIT ELEVATOR COMPLETION FOR REMAINING WORK - ELEVATOR 22 - Expected finish 5/8,Complete,CONSTRUCTION,,SUES-5 - 6-1 - FIZ - GL A -E,,ELEVATOR,CONSTRUCTION,,,,,2024-09-13 07:00,2024-11-04 17:00,2024-08-28 07:00,2025-04-28 17:00,2025-11-20 17:00,2025-11-20 17:00,2025-11-26 07:00,2025-11-26 07:00,0,300,100
CN.SWB5.9870,IMPACT - REAPPLY FIREPROOFING SFRM-2 - ELEVATOR 5 - LEVEL 1,Complete,CONSTRUCTION,,SUWN-5 - 30-33,,ELEVATOR,CONSTRUCTION,BAKER,,,,2024-09-06 07:00,2024-09-09 17:00,2024-08-27 07:00,2024-08-28 17:00,2025-11-20 17:00,2025-11-20 17:00,2025-10-16 07:00,2025-10-16 07:00,0,20,100
CN.SEB5.9170,IMPACT - REAPPLY FIREPROOFING SFRM-2 - ELEVATOR 18,Complete,CONSTRUCTION,,SUEN-5 - 31-33,,ELEVATOR,CONSTRUCTION,BAKER,,,,2024-09-13 07:00,2024-09-23 17:00,2024-09-11 07:00,2024-09-18 17:00,2025-11-20 17:00,2025-11-20 17:00,2025-12-01 07:00,2025-12-01 07:00,0,60,100
CN.SEB55270,IMPACT - APPLY FIREPROOFING SFRM-2 & IFRM - ELEVATOR 19 - Lvl 3 only,Complete,CONSTRUCTION,,SUEN-4 - 28-31,,ELEVATOR,CONSTRUCTION,BAKER,,,,2025-05-27 07:00,2025-06-10 17:00,2025-05-08 07:00,2025-07-03 17:00,2025-11-20 17:00,2025-11-20 17:00,2025-12-02 07:00,2025-12-02 07:00,0,110,100
CN.SWB5.9880,COORDINATE REMEDIATION WITH ROLLING PLAINS / MOBILIZE TO ELEVATOR - ELEVATOR 5,Complete,CONSTRUCTION,,SUWN-5 - 30-33,,ELEVATOR,CONSTRUCTION,BAKER,,,,2024-08-02 07:00,2024-08-12 17:00,2024-08-01 07:00,2024-08-21 17:00,2025-11-20 17:00,2025-11-20 17:00,2025-10-16 07:00,2025-10-16 07:00,0,60,100
CN.SEA5.10560,COMPLETE MECHANICAL ROOM DRYWALL / TAPE & FLOAT - ELEVATOR 22,Complete,CONSTRUCTION,,SUES-5 - 6-1 - FIZ - GL A -E,,ELEVATOR,CONSTRUCTION,,,,,2024-08-26 07:00,2024-09-05 17:00,2024-08-12 07:00,2024-08-27 17:00,2025-11-20 17:00,2025-11-20 17:00,2025-11-26 07:00,2025-11-26 07:00,0,80,100
CN.SEA5.10570,IMPACT - DEMO DOOR FRAME & MOBILIZE EQUIPMENT FOR FIREPROOFING - MECHANICAL ROOM - ELEVATOR 22,Complete,CONSTRUCTION,,SUES-5 - 6-1 - FIZ - GL A -E,,ELEVATOR,CONSTRUCTION,,,,,2024-08-09 07:00,2024-08-15 17:00,2024-08-05 07:00,2024-08-06 17:00,2025-11-20 17:00,2025-11-20 17:00,2025-11-26 07:00,2025-11-26 07:00,0,40,100
CN.SEA5.10580,IMPACT - SPRAY FIREPROOFING & TOUCH UP - MECHANICAL ROOM - ELEVATOR 22,Complete,CONSTRUCTION,,SUES-5 - 6-1 - FIZ - GL A -E,,ELEVATOR,CONSTRUCTION,,,,,2024-08-09 07:00,2024-08-16 17:00,2024-08-07 07:00,2024-08-09 17:00,2025-11-20 17:00,2025-11-20 17:00,2025-11-26 07:00,2025-11-26 07:00,0,50,100
CN.SEA5.10590,IMPACT - REINSTALL TEMP DOOR FRAMES - MECHANICAL ROOM - ELEVATOR 22,Complete,CONSTRUCTION,,SUES-5 - 6-1 - FIZ - GL A -E,,ELEVATOR,CONSTRUCTION,,,,,2024-08-26 07:00,2024-09-05 17:00,2024-08-12 07:00,2024-08-27 17:00,2025-11-20 17:00,2025-11-20 17:00,2025-11-26 07:00,2025-11-26 07:00,0,80,100
CN.AB.AR.7340,IMPACT - SCRAPE & REAPPLY FIREPROOFING SFRM-2 - ELEVATOR 01A (EQPT SHARED FOR 01/01A),Complete,CONSTRUCTION,,FIZ 2 / SUWS 5  (GL6-1) - GL J - N - DATA CENTER 1,,ELEVATOR,CONSTRUCTION,BAKER,,,,2024-09-20 07:00,2024-10-24 17:00,2024-09-16 07:00,2024-09-26 17:00,2025-11-20 17:00,2025-11-20 17:00,2025-12-01 07:00,2025-12-01 07:00,0,200,100
CN.AB.AR.7350,IMPACT - SCRAPE & REAPPLY FIREPROOFING SFRM-2 - ELEVATOR 01 (EQPT SHARED FOR 01/01A),Complete,CONSTRUCTION,,FIZ 2 / SUWS 5  (GL6-1) - GL J - N - DATA CENTER 1,,ELEVATOR,CONSTRUCTION,BAKER,,,,2024-09-20 07:00,2024-10-24 17:00,2024-09-16 07:00,2024-09-26 17:00,2025-11-20 17:00,2025-11-20 17:00,2025-12-01 07:00,2025-12-01 07:00,0,200,100
CN.SWA5.9560,IMPACT - SURFACE PREP & APPLY FIREPROOFING SFRM-2 - ELEVATOR 01B,Complete,CONSTRUCTION,,FIZ 2 / SUWS 5  (GL6-1) - GL J - N - DATA CENTER 1,,ELEVATOR,CONSTRUCTION,BAKER,,,,2025-01-16 07:00,2025-01-31 17:00,2025-01-16 07:00,2025-01-25 17:00,2025-11-20 17:00,2025-11-20 17:00,2025-12-01 07:00,2025-12-01 07:00,0,120,100
CN.SEB55280,INSTALL ACCESS LADDER - ELEVATOR 19,Active,CONSTRUCTION,,INTERIOR STAIRS,L1 - Fndn Slab,ELEVATOR,CONSTRUCTION,BAKER,,,,2025-11-14 08:00,2025-11-20 08:00,2025-11-14 08:00,,2025-11-21 08:00,2025-12-01 08:00,2025-12-02 07:00,2025-12-05 17:00,40,40,0
CN.SEB5.9190,IMPACT - COMPLETE DRYWALL AT FIREPROOFING LEAVEOUTS - ELEVATOR 18,Complete,CONSTRUCTION,,SUEN-5 - 31-33,,ELEVATOR,CONSTRUCTION,BAKER,,,,2024-09-24 07:00,2024-10-03 17:00,2024-09-19 07:00,2024-09-25 17:00,2025-11-20 17:00,2025-11-20 17:00,2025-12-01 07:00,2025-12-01 07:00,0,60,100
STAIR.1200,IMPACT - SHOPS / RE-FABRICATE STAIRS FOR ELEVATION ISSUE - STAIR #31 / #34 / #40 / #41,Complete,CONSTRUCTION,,INTERIOR STAIRS,L1 - Fndn Slab,SUW - SUPPORT WEST,CONSTRUCTION,,,,,2024-08-09 07:00,2024-09-10 17:00,2024-08-05 07:00,2024-10-21 17:00,2025-11-20 17:00,2025-11-20 17:00,2025-12-05 17:00,2025-12-05 17:00,0,200,100
STAIR.1230,DEMO EXISTING / INSTALL & INSPECT STAIR #31 - SUW - 25-M.5 - LEVEL U1-01,Complete,CONSTRUCTION,,INTERIOR STAIRS,L1 - Fndn Slab,SUW - SUPPORT WEST,CONSTRUCTION,,,,,2024-10-10 07:00,2024-10-18 17:00,2024-10-10 07:00,2024-10-19 17:00,2025-11-20 17:00,2025-11-20 17:00,2025-12-05 17:00,2025-12-05 17:00,0,60,100
STAIR.1310,DEMO EXISTING / INSTALL & INSPECT STAIR #40 - SUW - 29.M.5 - LEVEL U1-01,Complete,CONSTRUCTION,,INTERIOR STAIRS,L1 - Fndn Slab,SUW - SUPPORT WEST,CONSTRUCTION,,,,,2024-10-21 07:00,2024-10-29 17:00,2024-10-21 07:00,2024-10-28 17:00,2025-11-20 17:00,2025-11-20 17:00,2025-12-05 17:00,2025-12-05 17:00,0,60,100
STAIR.1320,DEMO EXISTING / INSTALL & INSPECT STAIR #34 - SUW - 26-M.5 - LEVEL U1-01,Complete,CONSTRUCTION,,INTERIOR STAIRS,L1 - Fndn Slab,SUW - SUPPORT WEST,CONSTRUCTION,,,,,2024-11-01 07:00,2024-11-11 17:00,2024-10-15 07:00,2024-10-22 17:00,2025-11-20 17:00,2025-11-20 17:00,2025-12-05 17:00,2025-12-05 17:00,0,60,100
CN.SEA1.6050,IMPACT - SECAI REQUEST LEAVEOUT FOR EXPANSION JOINT & SECAI MEP WORK / AWAIT AREA TURNOVER - GL 20-17 - A-C - L4 ROOF,Complete,CONSTRUCTION,,SUES-1 - 19-16,L4 - SUP Roof - FAB Roof,,CONSTRUCTION,,,,,2024-08-09 07:00,2024-10-15 17:00,2024-07-12 07:00,2024-09-18 17:00,2025-11-20 17:00,2025-11-20 17:00,2025-12-05 17:00,2025-12-05 17:00,0,400,100
CN.SEA5.10600,IMPACT - SECAI SWO / STARCON PIPERACK ERECTION BLOCKING WP & TS - GL 3-10 - D-E - L4/E (SEAC to hold until 9/15),Complete,CONSTRUCTION,,SUES-5 - 6-1 - FIZ - GL A -E,DS/AD,,CONSTRUCTION,BRAZOS,,,,2024-08-12 07:00,2024-08-15 17:00,2024-07-23 07:00,2024-09-21 17:00,2025-11-20 17:00,2025-11-20 17:00,2025-12-05 17:00,2025-12-05 17:00,0,30,100
CN.BB51.ST.2760,POUR CURBS & TOPPING SLAB - GL 33 - STAIR 5 - K-L,Complete,CONSTRUCTION,,GRIDLINE 33,,STAIR 5 (WEST) - K-L,CONSTRUCTION,BAKER,,,,2024-08-08 07:00,2024-08-12 17:00,2024-08-08 07:00,2024-08-10 17:00,2025-11-20 17:00,2025-11-20 17:00,2025-11-03 07:00,2025-11-03 07:00,0,30,100
CN.BB51.ST.2770,POUR CURBS & TOPPING SLAB - GL 33 - STAIR 18 - C-D,Complete,CONSTRUCTION,,GRIDLINE 33,,STAIR 18 (EAST) - C-D,CONSTRUCTION,BAKER,,,,2024-08-05 07:00,2024-08-08 17:00,2024-08-03 07:00,2024-08-05 17:00,2025-11-20 17:00,2025-11-20 17:00,2025-11-03 07:00,2025-11-03 07:00,0,30,100
CN.SWA5..3330,SECAI - INSTALL FLOORING/COATING - STAIR #2 - 11/L - ALL LEVELS,Complete,CONSTRUCTION,,SUWS-3 - 12-9,INTERIOR STAIR TOWER - STAIR #2 (CLEAN ROOM),,CONSTRUCTION,,,,,2025-09-08 07:00,2025-09-12 17:00,2025-09-08 07:00,2025-09-12 17:00,2025-11-26 17:00,2025-11-26 17:00,2025-11-22 07:00,2025-11-22 07:00,0,50,100
CN.SWA5..3650,DEMO DRYWALL FOR SANDBLASTING - STAIR #20 - 19/D - ALL LEVELS,Complete,CONSTRUCTION,,SUES-1 - 19-16,INTERIOR STAIR TOWER - STAIR #20,,CONSTRUCTION,,,,,2024-09-06 07:00,2024-09-06 17:00,2024-08-31 07:00,2024-09-02 17:00,2025-11-20 17:00,2025-11-20 17:00,2025-11-12 07:00,2025-11-12 07:00,0,10,100
CN.SWA5..3660,DEMO DRYWALL FOR SANDBLASTING - STAIR #21 - 13/D - ALL LEVELS,Complete,CONSTRUCTION,,SUES-3 - 13-9,INTERIOR STAIR TOWER - STAIR #21 (CLEAN ROOM),,CONSTRUCTION,,,,,2024-09-06 07:00,2024-09-06 17:00,2024-09-03 07:00,2024-09-03 17:00,2025-11-20 17:00,2025-11-20 17:00,2025-11-12 07:00,2025-11-12 07:00,0,10,100
CN.AB.AR.7380,IMPACT - NOTIFY SECAI & AWAIT SPRINKLER REMOVAL FOR STRUCTURAL STEEL - GAS PURIFIER ROOM - GL 9-10 - M-N - L2,Complete,CONSTRUCTION,,SUWS-3 - 12-9,L2 - SubFab Level,ELECTRIC RM 1,CONSTRUCTION,W&W,,,,2024-09-10 07:00,2024-09-26 17:00,2024-07-23 07:00,2024-08-31 17:00,2025-11-20 17:00,2025-11-20 17:00,2025-12-05 07:00,2025-12-05 07:00,0,100,100
CN.SEB1.10070,IMPACT - AWAITING DELIVERY OF EXP JOINT STEEL - GL 19.5-18.5 - K/L LINE,Complete,CONSTRUCTION,,SUWN-1 - 18-21,EXTERIOR SKIN,,CONSTRUCTION,PATRIOT,INSULATED METAL PANELS,,,2024-08-20 07:00,2024-08-27 17:00,2024-07-12 07:00,2024-08-19 17:00,2025-11-20 17:00,2025-11-20 17:00,2025-12-05 07:00,2025-12-05 07:00,0,50,100
CN.SWA4.7060,INSTALL INSULATED METAL PANEL MODULES - GL 3-5 - N LINE [PH WALL],Complete,CONSTRUCTION,,FIZ 2 / SUWS 5  (GL6-1) - GL J - N - DATA CENTER 1,EXTERIOR SKIN,,CONSTRUCTION,KOVACH,INSULATED METAL PANELS,,,2024-08-24 07:00,2024-08-29 17:00,2024-08-20 07:00,2024-08-26 17:00,2025-11-20 17:00,2025-11-20 17:00,2025-12-05 17:00,2025-12-05 17:00,0,60,100
CN.SWA4.7070,PAINT BOLTS - GL 3-5 - N LINE [PH WALL],Complete,CONSTRUCTION,,FIZ 2 / SUWS 5  (GL6-1) - GL J - N - DATA CENTER 1,EXTERIOR SKIN,,CONSTRUCTION,KOVACH,INSULATED METAL PANELS,,,2024-07-05 07:00,2024-07-06 17:00,2024-08-08 07:00,2024-08-19 17:00,2025-11-20 17:00,2025-11-20 17:00,2025-12-05 17:00,2025-12-05 17:00,0,20,100
CN.SWA4.7080,COMPLETE REMAINING CLADDING & MEP OPENINGS - GL 3-5 - N LINE [PH WALL],Complete,CONSTRUCTION,,FIZ 2 / SUWS 5  (GL6-1) - GL J - N - DATA CENTER 1,EXTERIOR SKIN,,CONSTRUCTION,KOVACH,INSULATED METAL PANELS,,,2024-07-05 07:00,2024-07-16 17:00,2024-07-12 07:00,2024-08-07 17:00,2025-11-20 17:00,2025-11-20 17:00,2025-12-05 17:00,2025-12-05 17:00,0,120,100
CN.SWA5.9570,IMPACT - COORDINATE & COMPLETE DRYWALL DEMO FOR STUB COLUMN REPAIR - GL 3 - L-N - L2,Complete,CONSTRUCTION,,FIZ 2 / SUWS 5  (GL6-1) - GL J - N - DATA CENTER 1,L2 - SubFab Level,,CONSTRUCTION,BAKER,,,,2024-08-29 07:00,2024-09-04 17:00,2024-08-08 07:00,2024-08-20 17:00,2025-11-20 17:00,2025-11-20 17:00,2025-12-05 17:00,2025-12-05 17:00,0,40,100
CN.SEB5.9210,INSTALL FRAMING/DRYWALL/TAPE+FLOAT - MECHANICAL ROOM - ELEVATOR 18 (MK MARLOW),Complete,CONSTRUCTION,,SUEN-5 - 31-33,,ELEVATOR,CONSTRUCTION,BAKER,,,,2024-09-13 07:00,2024-10-03 17:00,2024-08-12 07:00,2024-08-23 17:00,2025-11-20 17:00,2025-11-20 17:00,2025-12-01 07:00,2025-12-01 07:00,0,120,100
CN.SWB5.9940,"FIRST TURNOVER - SHAFT, MECHANICAL ROOM - ELEVATOR 5",Complete,CONSTRUCTION,,SUWN-5 - 30-33,,ELEVATOR,CONSTRUCTION,BAKER,,,,2024-12-17 17:00,2024-12-17 17:00,2024-11-20 17:00,2024-11-20 17:00,2025-11-20 17:00,2025-11-20 17:00,2025-10-16 07:00,2025-10-16 07:00,0,0,100
CN.AB.AR.7440,IMPACT - SECAI- AWAIT ELEVATOR COMPLETION FOR REMAINING WORK - ELEVATOR 01 6/5 moved to 8/18),Complete,CONSTRUCTION,,FIZ 2 / SUWS 5  (GL6-1) - GL J - N - DATA CENTER 1,,ELEVATOR,CONSTRUCTION,BAKER,,,,2025-05-27 07:00,2025-07-16 17:00,2025-05-13 07:00,2025-05-30 17:00,2025-11-20 17:00,2025-11-20 17:00,2025-12-01 07:00,2025-12-01 07:00,0,360,100
CN.SEB5.9220,AWAIT ELEVATOR COMPLETION FOR REMAINING WORK - ELEVATOR 18(proj 3/25),Complete,CONSTRUCTION,,SUEN-5 - 31-33,,ELEVATOR,CONSTRUCTION,BAKER,,,,2024-10-28 07:00,2024-12-19 17:00,2024-10-26 07:00,2025-04-24 17:00,2025-11-20 17:00,2025-11-20 17:00,2025-12-01 07:00,2025-12-01 07:00,0,300,100
CN.SEB3.6920,IMPACT - SECAI PROCURE & INSTALL EXTENSIONS TO ALLOW VAPOR BARRIER/TPO START - C-D - L6 ROOF,Complete,CONSTRUCTION,,SUEN-3 - 25-28,DS/AD,,CONSTRUCTION,BRAZOS,TOPPING,,,2024-09-04 07:00,2024-09-09 17:00,2024-08-23 07:00,2024-09-04 17:00,2025-11-20 17:00,2025-11-20 17:00,2025-12-05 17:00,2025-12-05 17:00,0,40,100
STAIR.2190,"IMPACT - SECAI SCAFFOLDING IN THE WAY STAIR #66, - SUE - 5-C - LEVEL 04(EXP REMOVAL 3/28)",Complete,CONSTRUCTION,,INTERIOR STAIRS,L4 - SUP Roof - FAB Roof,SUE - SUPPORT EAST,CONSTRUCTION,,,,,2024-09-09 07:00,2024-09-17 17:00,2024-08-01 07:00,2025-03-28 17:00,2025-11-20 17:00,2025-11-20 17:00,2025-11-10 07:00,2025-11-10 07:00,0,60,100
STAIR.2200,IMPACT - DESIGN CONFLICT ARCH VS STRUCTURAL RFI 1505 STAIR #62 - SUW - 3-K-L - LEVEL 04,Complete,CONSTRUCTION,,INTERIOR STAIRS,L4 - SUP Roof - FAB Roof,SUW - SUPPORT WEST,CONSTRUCTION,,,,,2024-09-23 07:00,2024-09-27 17:00,2024-09-03 07:00,2024-09-12 17:00,2025-11-20 17:00,2025-11-20 17:00,2025-12-05 17:00,2025-12-05 17:00,0,40,100
STAIR.2210,IMPACT - NEEDS RE FAB- DESIGN CHANGE- RFI #1351 - STAIR #58 - FIZ - 1-G - LEVEL 03(STair removed from yates scope),Complete,CONSTRUCTION,,INTERIOR STAIRS,L3 / Waffle Slab Level,FIZ,CONSTRUCTION,,,,,2024-12-02 07:00,2025-01-08 17:00,2024-12-02 07:00,2025-01-08 17:00,2025-11-20 17:00,2025-11-20 17:00,2025-12-05 17:00,2025-12-05 17:00,0,220,100
STAIR.2220,IMPACT-SHOP DRAWINGS/ FABRICATION IOCC 1328 APPROVED - STAIR # 91 - FIZ - 1-F.2 - LEVEL 03 (IOCC SUB 02/05),Complete,CONSTRUCTION,,INTERIOR STAIRS,L3 / Waffle Slab Level,FIZ,CONSTRUCTION,,,,,2024-08-30 07:00,2024-10-21 17:00,2024-09-04 07:00,2025-09-26 17:00,2025-11-20 17:00,2025-11-20 17:00,2025-10-30 07:00,2025-10-30 07:00,0,300,100
CN.SEB5.9230,IMPACT - REMDIATE DRYWALL & CEILING DAMAGED DUE TO WATER INTRUCTION - MECHANICAL ROOM - ELEVATOR 18,Complete,CONSTRUCTION,,SUEN-5 - 31-33,,ELEVATOR,CONSTRUCTION,BAKER,,,,2024-09-23 07:00,2024-10-15 17:00,2024-09-18 07:00,2024-10-03 17:00,2025-11-20 17:00,2025-11-20 17:00,2025-12-01 07:00,2025-12-01 07:00,0,140,100
CN.BB51.ST.2780,"IMPACT - DESIGN, APPROVAL, FAB & DELIVER Z-CLIPS FOR FUR OUT - CORRUGATED METAL PANELS",Complete,CONSTRUCTION,,GRIDLINE 33,,GL 33 PROCUREMENT ITEMS,CONSTRUCTION,KOVACH,,,,2024-07-01 07:00,2024-09-19 17:00,2024-08-14 07:00,2024-10-03 17:00,2025-11-20 17:00,2025-11-20 17:00,2025-11-14 07:00,2025-11-14 07:00,0,500,100
CN.SEA5.10640,"FRAMING, DRYWALL, FIRE CAULKING - SHAFT LINER AND FRONTS- ELEVATOR 22 - 7 per front",Complete,CONSTRUCTION,,SUES-5 - 6-1 - FIZ - GL A -E,,ELEVATOR,CONSTRUCTION,,,,,2025-07-23 07:00,2025-09-17 17:00,2025-07-11 07:00,2025-08-18 08:00,2025-11-20 17:00,2025-11-20 17:00,2025-11-26 07:00,2025-11-26 07:00,0,400,100
CN.SEA5.10660,"FINAL TURNOVER - SHAFT, DOOR FRONTS, MECHANICAL ROOM - ELEVATOR 22",Not Started,CONSTRUCTION,,SUES-5 - 6-1 - FIZ - GL A -E,,ELEVATOR,CONSTRUCTION,,,,,2026-01-26 17:00,2026-01-26 17:00,,,2026-01-26 17:00,2026-01-26 17:00,2025-12-05 17:00,2025-12-05 17:00,0,0,0
CN.SWB5.9980,IMPACT - NOTIFY SECAI OF DUCT OBSTRUCTING SHAFT WALL - LVL 2 - ELEVATOR 5,Complete,CONSTRUCTION,,SUWN-5 - 30-33,,ELEVATOR,CONSTRUCTION,BAKER,,,,2024-09-13 07:00,2024-09-13 17:00,2024-08-23 07:00,2024-08-23 17:00,2025-11-20 17:00,2025-11-20 17:00,2025-10-16 07:00,2025-10-16 07:00,0,10,100
CN.SWB5.9990,IMPACT - PREPARE & SUBMIT CCD 439 FOR SCAFFOLD AT DUCT LOCATION - LVL 2 - ELEVATOR 5,Complete,CONSTRUCTION,,SUWN-5 - 30-33,,ELEVATOR,CONSTRUCTION,BAKER,,,,2024-09-19 07:00,2024-09-23 17:00,2024-08-24 07:00,2024-08-27 17:00,2025-11-20 17:00,2025-11-20 17:00,2025-10-16 07:00,2025-10-16 07:00,0,30,100
CN.SWB5.10000,IMPACT - SECAI APPROVE CCD 439 FOR SCAFFOLD AT DUCT LOCATION - LVL 2 - ELEVATOR 5,Complete,CONSTRUCTION,,SUWN-5 - 30-33,,ELEVATOR,CONSTRUCTION,BAKER,,,,2024-09-19 07:00,2024-09-26 17:00,2024-08-28 07:00,2024-09-30 17:00,2025-11-20 17:00,2025-11-20 17:00,2025-10-16 07:00,2025-10-16 07:00,0,50,100
CN.SWB5.10010,"IMPACT - COORDINATE, MOBILIZE & ERECT SCAFFOLD AT DUCT LOCATION - LVL 2 - ELEVATOR 5",Complete,CONSTRUCTION,,SUWN-5 - 30-33,,ELEVATOR,CONSTRUCTION,BAKER,,,,2024-10-14 07:00,2024-10-17 17:00,2024-10-01 07:00,2024-10-05 17:00,2025-11-20 17:00,2025-11-20 17:00,2025-10-16 07:00,2025-10-16 07:00,0,30,100
CN.SWB5.10030,IMPACT - INSTALL SHAFT LINER AT DUCT LOCATION - LVL 2 - ELEVATOR 5 (WORK OFF SCAFFOLD),Complete,CONSTRUCTION,,SUWN-5 - 30-33,,ELEVATOR,CONSTRUCTION,BAKER,,,,2024-10-18 07:00,2024-10-22 17:00,2024-10-07 07:00,2024-10-09 17:00,2025-11-20 17:00,2025-11-20 17:00,2025-10-16 07:00,2025-10-16 07:00,0,30,100
CN.SWB5.10040,SECAI - AWAIT ELEVATOR COMPLETION & TURNOVER FOR HSS DOOR OPENINGS - 8/13,Complete,CONSTRUCTION,,SUWN-5 - 30-33,,ELEVATOR,CONSTRUCTION,BAKER,,,,2024-11-21 07:00,2025-01-13 17:00,2024-11-21 07:00,2025-07-16 17:00,2025-11-20 17:00,2025-11-20 17:00,2025-10-16 07:00,2025-10-16 07:00,0,300,100
CN.SWB5.10050,APPLY SFRM-2 FIREPROOFING - LVL 1 - ELEVATOR 5,Complete,CONSTRUCTION,,SUWN-5 - 30-33,,ELEVATOR,CONSTRUCTION,BAKER,,,,2024-09-19 07:00,2024-09-27 17:00,2024-09-11 07:00,2024-09-18 17:00,2025-11-20 17:00,2025-11-20 17:00,2025-10-16 07:00,2025-10-16 07:00,0,60,100
CN.SWB5.10060,TAPE & FLOAT - INTERIOR SHAFT - LVL 1 - ELEVATOR 5,Complete,CONSTRUCTION,,SUWN-5 - 30-33,,ELEVATOR,CONSTRUCTION,BAKER,,,,2024-09-16 07:00,2024-09-17 17:00,2024-09-12 07:00,2024-09-17 17:00,2025-11-20 17:00,2025-11-20 17:00,2025-10-16 07:00,2025-10-16 07:00,0,20,100
CN.SWB5.10070,FRAMING AND DRYWALL AT FIREPROOFING LEAVEOUT - LVL 4 - ELEVATOR 5,Complete,CONSTRUCTION,,SUWN-5 - 30-33,,ELEVATOR,CONSTRUCTION,BAKER,,,,2024-10-21 07:00,2024-10-29 17:00,2024-10-21 07:00,2024-10-24 17:00,2025-11-20 17:00,2025-11-20 17:00,2025-10-16 07:00,2025-10-16 07:00,0,60,100
CN.SWB5.10080,TAPE & FLOAT- LVL 4 - LEAVEOUTS - ELEVATOR 5,Complete,CONSTRUCTION,,SUWN-5 - 30-33,,ELEVATOR,CONSTRUCTION,BAKER,,,,2024-10-28 07:00,2024-10-29 17:00,2024-10-26 07:00,2024-10-28 17:00,2025-11-20 17:00,2025-11-20 17:00,2025-10-16 07:00,2025-10-16 07:00,0,20,100
CN.SWB5.10100,"FINAL TURNOVER - DOOR FRONTS, MECHANICAL ROOM (WITH PERM DOOR) - ELEVATOR 5",Not Started,CONSTRUCTION,,SUWN-5 - 30-33,,ELEVATOR,CONSTRUCTION,BAKER,,,,2025-11-24 17:00,2025-11-24 17:00,,,2025-11-24 17:00,2025-11-24 17:00,2025-12-05 17:00,2025-12-05 17:00,0,0,0
CN.SWB5.10120,PREP & INSTALL PERMANENT DOOR & FRAME - MECHANICAL ROOM - FAB110504A - ELEVATOR 5,Active,CONSTRUCTION,,SUWN-5 - 30-33,,ELEVATOR,CONSTRUCTION,BAKER,,,,2024-09-27 07:00,2024-11-08 17:00,2024-10-01 07:00,,2025-11-21 07:00,2025-11-24 17:00,2025-12-04 07:00,2025-12-05 17:00,20,250,0
CN.SWB5.10130,"COMPLETE REMAINING FRAMING, DRYWALL, FIRE CAULKING - DOOR FRONTS - ELEVATOR 5 - LVL1 SECAI TOOK OVER",Complete,CONSTRUCTION,,SUWN-5 - 30-33,,ELEVATOR,CONSTRUCTION,BAKER,,,,2025-09-04 07:00,2025-09-24 17:00,2025-08-26 07:00,2025-09-29 07:00,2025-11-21 07:00,2025-11-21 07:00,2025-11-24 07:00,2025-11-24 07:00,0,150,100
CN.SWB5.10140,TAPE & FLOAT -SHAFT & DOOR FRONTS - ELEVATOR 5,Not Started,CONSTRUCTION,,SUWN-5 - 30-33,,ELEVATOR,CONSTRUCTION,BAKER,,,,2025-12-15 07:00,2025-12-19 17:00,,,2025-12-15 07:00,2025-12-19 17:00,2025-11-24 07:00,2025-12-02 17:00,50,50,0
CN.SEB5.9240,IMPACT - CCD APPROVAL FOR MECH RM REMEDIATION FOR WATER INTRUSION - ELEVATOR 18,Complete,CONSTRUCTION,,SUEN-5 - 31-33,,ELEVATOR,CONSTRUCTION,BAKER,,,,2024-09-13 07:00,2024-09-16 17:00,2024-08-30 07:00,2024-09-17 17:00,2025-11-20 17:00,2025-11-20 17:00,2025-12-01 07:00,2025-12-01 07:00,0,20,100
CN.SEB5.9250,CCD APPROVAL FOR SCAFFOLD - ELEVATOR 18 - LEVEL 4,Complete,CONSTRUCTION,,SUEN-5 - 31-33,,ELEVATOR,CONSTRUCTION,BAKER,,,,2024-09-19 07:00,2024-10-01 17:00,2024-09-03 07:00,2024-09-17 17:00,2025-11-20 17:00,2025-11-20 17:00,2025-12-01 07:00,2025-12-01 07:00,0,80,100
CN.SEB5.9260,"COORDINATE, MOBILIZE & ERECT SCAFFOLD - ELEVATOR 18 - LEVEL 4",Complete,CONSTRUCTION,,SUEN-5 - 31-33,,ELEVATOR,CONSTRUCTION,BAKER,,,,2024-10-01 07:00,2024-10-14 17:00,2024-09-18 07:00,2024-09-28 17:00,2025-11-20 17:00,2025-11-20 17:00,2025-12-01 07:00,2025-12-01 07:00,0,80,100
CN.SEB5.9270,INSTALL SHAFT LINER - ELEVATOR 18 - LEVEL 4 (WORK OFF OF SCAFFOLD),Complete,CONSTRUCTION,,SUEN-5 - 31-33,,ELEVATOR,CONSTRUCTION,BAKER,,,,2024-10-14 07:00,2024-10-22 17:00,2024-09-30 07:00,2024-10-04 17:00,2025-11-20 17:00,2025-11-20 17:00,2025-12-01 07:00,2025-12-01 07:00,0,60,100
CN.SEB5.9280,"FIRST TURNOVER - SHAFT, MECHANICAL ROOM - ELEVATOR 18",Complete,CONSTRUCTION,,SUEN-5 - 31-33,,ELEVATOR,CONSTRUCTION,BAKER,,,,2024-10-25 17:00,2024-10-25 17:00,2024-10-25 17:00,2024-10-25 17:00,2025-11-20 17:00,2025-11-20 17:00,2025-12-01 07:00,2025-12-01 07:00,0,0,100
CN.SEB55330,"FINAL TURNOVER - DOOR FRONTS, MECHANICAL ROOM (WITH PERM DOOR) - ELEVATOR 19",Not Started,CONSTRUCTION,,SUEN-4 - 28-31,,ELEVATOR,CONSTRUCTION,BAKER,,,,2025-12-10 17:00,2025-12-10 17:00,,,2025-12-10 17:00,2025-12-10 17:00,2025-12-05 17:00,2025-12-05 17:00,0,0,0
CN.AB.AR.7620,INSTALL FRAMING/DRYWALL/TAPE+FLOAT - MECHANICAL ROOM - ELEVATOR 01,Complete,CONSTRUCTION,,FIZ 2 / SUWS 5  (GL6-1) - GL J - N - DATA CENTER 1,,ELEVATOR,CONSTRUCTION,BAKER,,,,2025-06-30 07:00,2025-06-30 17:00,2025-06-30 07:00,2025-06-30 17:00,2025-11-20 17:00,2025-11-20 17:00,2025-12-05 17:00,2025-12-05 17:00,0,10,100
CN.AB.AR.7730,INSTALL FRAMING/DRYWALL/TAPE+FLOAT - MECHANICAL ROOM - ELEVATOR 01A,Complete,CONSTRUCTION,,FIZ 2 / SUWS 5  (GL6-1) - GL J - N - DATA CENTER 1,,ELEVATOR,CONSTRUCTION,BAKER,,,,2025-01-06 07:00,2025-01-24 17:00,2025-01-06 07:00,2025-02-15 17:00,2025-11-20 17:00,2025-11-20 17:00,2025-12-01 07:00,2025-12-01 07:00,0,150,100
CN.SEB1.10120,PAINT BOLTS - GL 18-19 - A LINE [SUP EXTERIOR WALL] (ABOVE MEP TANK LEAVEOUT),Complete,CONSTRUCTION,,SUES-1 - 19-16,EXTERIOR SKIN,,CONSTRUCTION,ALPHA,INSULATED METAL PANELS,,,2024-09-20 07:00,2024-09-26 17:00,2024-09-04 07:00,2024-09-10 17:00,2025-11-20 17:00,2025-11-20 17:00,2025-12-05 17:00,2025-12-05 17:00,0,40,100
CN.SEB1.10130,PAINT BOLTS - GL 19-21 - A LINE [SUP EXTERIOR WALL] (TRESTLE (ABOVE MEP PIPE),Complete,CONSTRUCTION,,SUEN-1 - 19-22,EXTERIOR SKIN,,CONSTRUCTION,ALPHA,INSULATED METAL PANELS,,,2024-12-02 07:00,2024-12-10 17:00,2024-12-02 07:00,2025-01-18 17:00,2025-11-20 17:00,2025-11-20 17:00,2025-11-04 07:00,2025-11-04 07:00,0,60,100
STAIR.2230,IMPACT - STAIR DELIVERY TO SITE STAIR #28 - SUW - 24-M - LEVEL U1(CONFLICT BASEPLATE OVER A SUMP PIT ),Complete,CONSTRUCTION,,INTERIOR STAIRS,LU1 - Underground Level,SUW - SUPPORT WEST,CONSTRUCTION,,,,,2024-11-04 07:00,2024-12-27 17:00,2024-11-04 07:00,2024-11-04 17:00,2025-11-20 17:00,2025-11-20 17:00,2025-12-01 07:00,2025-12-01 07:00,0,300,100
STAIR.2240,INSTALL & INSPECT STAIR #26 - SUW - 25-M.5 - LEVEL U1-01,Complete,CONSTRUCTION,,INTERIOR STAIRS,L1 - Fndn Slab,SUW - SUPPORT WEST,CONSTRUCTION,,,,,2024-08-19 07:00,2024-08-27 17:00,2024-07-04 07:00,2024-09-10 17:00,2025-11-20 17:00,2025-11-20 17:00,2025-12-05 17:00,2025-12-05 17:00,0,60,100
STAIR.2250,FAB & DELIVER STAIR #60 - SUW - 3-M.5 - LEVEL 04,Complete,CONSTRUCTION,,INTERIOR STAIRS,L4 - SUP Roof - FAB Roof,SUW - SUPPORT WEST,CONSTRUCTION,,,,,2024-10-21 07:00,2024-10-24 17:00,2024-10-14 07:00,2024-10-17 17:00,2025-11-20 17:00,2025-11-20 17:00,2025-12-05 17:00,2025-12-05 17:00,0,30,100
STAIR.2260,"INSTALL & INSPECT STAIR/RAMP #2B-SUE-2-B-LEVEL 04 (NEEDS REDETAILING, grating needs to be refab)need pricing RFI 1716",Complete,CONSTRUCTION,,INTERIOR STAIRS,L4 - SUP Roof - FAB Roof,SUE - SUPPORT EAST,CONSTRUCTION,,,,,2024-06-24 07:00,2024-07-02 17:00,2024-06-24 07:00,2025-04-11 17:00,2025-11-20 17:00,2025-11-20 17:00,2025-12-05 17:00,2025-12-05 17:00,0,60,100
STAIR.1670,INSTALL & INSPECT RAMP #5-L - SUW - 3 - LEVEL 4,Complete,CONSTRUCTION,,INTERIOR STAIRS,L4 - SUP Roof - FAB Roof,SUW - SUPPORT WEST,CONSTRUCTION,,,,,2024-09-09 07:00,2024-09-13 17:00,2024-09-09 07:00,2024-10-17 17:00,2025-11-20 17:00,2025-11-20 17:00,2025-12-05 17:00,2025-12-05 17:00,0,40,100
STAIR.2270,INSTALL & INSPECT RAMP #32-L - SUW - 3 - LEVEL 4,Complete,CONSTRUCTION,,INTERIOR STAIRS,L4 - SUP Roof - FAB Roof,SUW - SUPPORT WEST,CONSTRUCTION,,,,,2024-09-09 07:00,2024-09-13 17:00,2024-09-09 07:00,2024-09-20 17:00,2025-11-20 17:00,2025-11-20 17:00,2025-12-05 17:00,2025-12-05 17:00,0,40,100
STAIR.2280,INSTALL & INSPECT RAMP #32-L  - SUW - 3 - LEVEL 4,Not Started,CONSTRUCTION,,INTERIOR STAIRS,L4 - SUP Roof - FAB Roof,SUE - SUPPORT EAST,CONSTRUCTION,,,,,2025-12-11 07:00,2025-12-17 17:00,,,2025-12-11 07:00,2025-12-17 17:00,2025-12-01 07:00,2025-12-05 17:00,50,50,0
CN.SWA5..3800,REMOVE CONTAINMENT & MODIFY FOR SECAI FIRE SPRINKLER - STAIR #2 - 11/L - ALL LEVELS,Complete,CONSTRUCTION,,SUWS-3 - 12-9,INTERIOR STAIR TOWER - STAIR #2 (CLEAN ROOM),,CONSTRUCTION,,,,,2024-10-18 07:00,2024-10-26 17:00,2024-10-18 07:00,2024-10-26 17:00,2025-11-20 17:00,2025-11-20 17:00,2025-11-12 07:00,2025-11-12 07:00,0,80,100
CN.SWA5..3810,REMOVE CONTAINMENT & MODIFY SCAFFOLDING FIRE SPRINKLER - STAIR #21 - 11/L - ALL LEVELS(2SHIFTS),Complete,CONSTRUCTION,,SUES-3 - 13-9,INTERIOR STAIR TOWER - STAIR #21 (CLEAN ROOM),,CONSTRUCTION,,,,,2024-11-09 07:00,2024-11-12 17:00,2024-11-09 07:00,2024-11-11 17:00,2025-11-20 17:00,2025-11-20 17:00,2025-11-12 07:00,2025-11-12 07:00,0,30,100
STAIR.CT-1080,IMPACT - INTERIOR STAIR TOWERS - APPROVAL FOR SP2 SURFACE PREP FOR NON CLEAN STAIRS,Complete,CONSTRUCTION,,Stairs,INTERIOR STAIR TOWERS - PROCUREMENT,,PRE - CON / BUYOUT / IMPACTS,,,,,2024-07-26 07:00,2024-08-06 17:00,2024-07-22 07:00,2024-10-07 17:00,2025-11-20 17:00,2025-11-20 17:00,2025-11-03 07:00,2025-11-03 07:00,0,100,100
CN.SWA5..3840,REMOVE CONTAINMENT & SCAFFOLDING MODIFICATION FOR SPRINKLER PIPE - STAIR #20 - 19/D - ALL LEVELS(2 shifts),Complete,CONSTRUCTION,,SUES-1 - 19-16,INTERIOR STAIR TOWER - STAIR #20,,CONSTRUCTION,,,,,2024-11-05 07:00,2024-11-05 17:00,2024-11-02 07:00,2024-11-04 17:00,2025-11-20 17:00,2025-11-20 17:00,2025-11-12 07:00,2025-11-12 07:00,0,10,100
CN.SWA5..3880,REMOVE CONTAINMENT & SCAFFOLDING MODIFICATION FOR DRYWALL - STAIR #4 - 23/L - ALL LEVELS,Complete,CONSTRUCTION,,SUWN-2 - 21-24,INTERIOR STAIR TOWER - STAIR #4 (CLEAN ROOM),,CONSTRUCTION,,,,,2025-06-21 07:00,2025-06-25 17:00,2025-04-19 07:00,2025-04-28 17:00,2025-11-20 17:00,2025-11-20 17:00,2025-11-17 07:00,2025-11-17 07:00,0,40,100
CN.SWA5..3900,SECAI - INSTALL SGP WALL PANELS - STAIR #21 - 13/D - ALL LEVELS,Complete,CONSTRUCTION,,SUES-3 - 13-9,INTERIOR STAIR TOWER - STAIR #21 (CLEAN ROOM),,CONSTRUCTION,,,,,2025-08-25 07:00,2025-08-29 17:00,2025-08-25 07:00,2025-08-29 17:00,2025-11-20 17:00,2025-11-20 17:00,2025-11-12 07:00,2025-11-12 07:00,0,50,100
CN.SWA5..3910,SECAI- INSTALL SGP WALL PANELS - STAIR #2 - 11/L - ALL LEVELS,Complete,CONSTRUCTION,,SUWS-3 - 12-9,INTERIOR STAIR TOWER - STAIR #2 (CLEAN ROOM),,CONSTRUCTION,,,,,2025-09-02 07:00,2025-09-06 17:00,2025-09-02 07:00,2025-09-06 17:00,2025-11-20 17:00,2025-11-20 17:00,2025-11-12 07:00,2025-11-12 07:00,0,50,100
CN.AB.AR.7240,IMPACT - MEP PIPING RESTRICTING FROM BUILDING WALLS - CV ROOM - SEA1 - GL 18-19 - C-A - L1(ON HOLD UNTIL 12/15),Complete,CONSTRUCTION,,SUES-1 - 19-16,L1 - Fndn Slab,CV ROOM,CONSTRUCTION,,,,,2024-09-20 07:00,2024-09-26 17:00,2024-09-09 07:00,2025-06-27 17:00,2025-11-20 17:00,2025-11-20 17:00,2025-12-05 17:00,2025-12-05 17:00,0,40,100
CN.SEB1.7640,IMPACT - PLUMBING INSTALLATION - BATHROOM - GL 19-22 - C-A - L1,Complete,CONSTRUCTION,,SUEN-1 - 19-22,L1 - Fndn Slab,BATHROOM,CONSTRUCTION,,,,,2024-09-20 07:00,2024-09-26 17:00,2024-06-03 07:00,2025-06-05 17:00,2025-11-20 17:00,2025-11-20 17:00,2025-11-20 07:00,2025-11-20 07:00,0,40,100
CN.SWB5.9600,IMPACT - MEP MATERIAL AND LOADING DECK IN THE WAY - L2 - FIRE ALARM 18 GL 32-33 A-B(on-hold),Complete,CONSTRUCTION,,SUEN-5 - 31-33,L2 - SubFab Level,FIRE ALARM ,CONSTRUCTION,,,,,2023-11-06 07:00,2023-11-09 17:00,2023-11-06 07:00,2025-02-04 17:00,2025-11-20 17:00,2025-11-20 17:00,2025-12-01 07:00,2025-12-01 07:00,0,40,100
STAIR.1370,"IMPACT - NEED RAISED ACCESS FLOOR TO BE COMPLETE - FIZ - LEVEL 02 #46, #56, #57-57/56 Completed. Pending drywall for 46",Complete,CONSTRUCTION,,INTERIOR STAIRS,L2 - SubFab Level,FIZ,CONSTRUCTION,,,,,2024-09-20 07:00,2024-09-26 17:00,2024-06-11 07:00,2025-08-08 17:00,2025-11-20 17:00,2025-11-20 17:00,2025-11-25 17:00,2025-11-25 17:00,0,40,100
CN.BB51.ST.2790,INSTALL Z- CLIPS - GL 33 - STAIR 5 - K-L,Complete,CONSTRUCTION,,GRIDLINE 33,,STAIR 5 (WEST) - K-L,CONSTRUCTION,ROLLING PLAINS,,,,2024-10-14 07:00,2024-10-18 17:00,2024-10-02 07:00,2024-10-05 17:00,2025-11-20 17:00,2025-11-20 17:00,2025-11-03 07:00,2025-11-03 07:00,0,40,100
CN.BB51.ST.2800,INSTALL SCAFFOLDING - GL 33 - STAIR 5 - K-L,Complete,CONSTRUCTION,,GRIDLINE 33,GL 33 STAIR 5 (WEST),STAIR 5 (WEST) - K-L,CONSTRUCTION,BERG,,,,2024-10-14 07:00,2024-10-14 17:00,2024-10-14 07:00,2024-10-21 17:00,2025-11-20 17:00,2025-11-20 17:00,2025-11-03 07:00,2025-11-03 07:00,0,10,100
CN.BB51.ST.2810,STAIR PREP & COATING/PRIMER/PAINT & INSPECT & wall painting - REMAINING - GL 33 - STAIR 5 - K-L,Complete,CONSTRUCTION,,GRIDLINE 33,GL 33 STAIR 5 (WEST),STAIR 5 (WEST) - K-L,CONSTRUCTION,BERG,,,,2025-10-02 07:00,2025-10-15 17:00,2025-09-23 07:00,2025-10-16 17:00,2025-11-20 17:00,2025-11-20 17:00,2025-11-19 07:00,2025-11-19 07:00,0,100,100
CN.BB51.ST.2820,INSTALL Z CLIPS - GL 33- STAIR 18 - C-D,Complete,CONSTRUCTION,,GRIDLINE 33,,STAIR 18 (EAST) - C-D,CONSTRUCTION,ROLLING PLAINS,,,,2024-10-07 07:00,2024-10-11 17:00,2024-10-05 07:00,2024-10-10 17:00,2025-11-20 17:00,2025-11-20 17:00,2025-11-03 07:00,2025-11-03 07:00,0,40,100
CN.BB51.ST.2830,INSTALL SCAFFOLDING - GL 33 - STAIR 18 - C-D,Complete,CONSTRUCTION,,GRIDLINE 33,GL 33 STAIR 18 (EAST),STAIR 18 (EAST) - C-D,CONSTRUCTION,BERG,,,,2024-12-10 07:00,2024-12-16 17:00,2024-12-10 07:00,2024-12-16 17:00,2025-11-20 17:00,2025-11-20 17:00,2025-11-03 07:00,2025-11-03 07:00,0,40,100
CN.BB51.ST.2840,STAIR PREP FOR COATING/PRIMER/PAINT & INSPECT EXTERIOR STAIRS STRINGERS - GL 33 - STAIR 18 - C-D (),Complete,CONSTRUCTION,,GRIDLINE 33,GL 33 STAIR 18 (EAST),STAIR 18 (EAST) - C-D,CONSTRUCTION,BERG,,,,2025-07-18 07:00,2025-07-23 17:00,2025-07-08 07:00,2025-07-15 17:00,2025-11-20 17:00,2025-11-20 17:00,2025-12-05 17:00,2025-12-05 17:00,0,40,100
CN.BB51.ST.2850,IMPACT - CCD APPROVAL FOR SCAFFOLDING & SFRM 3 IN STAIRS - STAIR 5&18 - GL 33,Complete,CONSTRUCTION,,GRIDLINE 33,,GL 33 PROCUREMENT ITEMS,CONSTRUCTION,,,,,2024-09-23 07:00,2024-10-01 17:00,2024-09-09 07:00,2024-10-04 17:00,2025-11-20 17:00,2025-11-20 17:00,2025-11-03 07:00,2025-11-03 07:00,0,60,100
CN.AB.AR.7740,IMPACT - STOP WORK BY SECAI FOR FLOOR COATING -7D WASTE LIQUOR RM - SWB-3 - GL 24-27 K-N (2 WEEKS),Complete,CONSTRUCTION,,SUWN-3 - 24-27,L1 - Fndn Slab,WASTE LIQUOR RM,CONSTRUCTION,,,,,2024-11-04 07:00,2024-11-22 17:00,2024-09-25 07:00,2024-10-21 17:00,2025-11-20 17:00,2025-11-20 17:00,2025-12-01 07:00,2025-12-01 07:00,0,120,100
CN.SWA5..3930,COMPLETE SANDBLASTING - STAIR #21 - 13/D - ALL LEVELS,Complete,CONSTRUCTION,,SUES-3 - 13-9,INTERIOR STAIR TOWER - STAIR #21 (CLEAN ROOM),,CONSTRUCTION,,,,,2024-10-12 07:00,2024-10-18 17:00,2024-10-07 07:00,2024-10-23 17:00,2025-11-20 17:00,2025-11-20 17:00,2025-11-12 07:00,2025-11-12 07:00,0,60,100
CN.SWA5..3940,IMPACT - EQUIPMENT MALFUNCTION(compresser delay) - STAIR #21 - 13/D - ALL LEVELS,Complete,CONSTRUCTION,,SUES-3 - 13-9,INTERIOR STAIR TOWER - STAIR #21 (CLEAN ROOM),,CONSTRUCTION,,,,,2024-09-16 07:00,2024-10-07 17:00,2024-09-16 07:00,2024-09-24 17:00,2025-11-20 17:00,2025-11-20 17:00,2025-11-12 07:00,2025-11-12 07:00,0,130,100
CN.SWA5..3950,PRIMER COAT - STAIR #20 - 19/D - ALL LEVELS(2 shifts),Complete,CONSTRUCTION,,SUES-1 - 19-16,INTERIOR STAIR TOWER - STAIR #20,,CONSTRUCTION,,,,,2024-10-29 07:00,2024-10-31 17:00,2024-10-29 07:00,2024-10-31 17:00,2025-11-20 17:00,2025-11-20 17:00,2025-11-12 07:00,2025-11-12 07:00,0,30,100
CN.SWA5..3960,COMPLETE SANDBLASTING & INSPECT - STAIR #2 - 11/L - ALL LEVELS,Complete,CONSTRUCTION,,SUWS-3 - 12-9,INTERIOR STAIR TOWER - STAIR #2 (CLEAN ROOM),,CONSTRUCTION,,,,,2024-09-30 07:00,2024-10-04 17:00,2024-09-25 07:00,2024-10-01 17:00,2025-11-20 17:00,2025-11-20 17:00,2025-11-12 07:00,2025-11-12 07:00,0,50,100
CN.SWA5..3970,EQUIPMENT SET UP & MOBILIZATION FOR SANDBLASTING - STAIR #21 - 11/L - ALL LEVELS,Complete,CONSTRUCTION,,SUWS-3 - 12-9,INTERIOR STAIR TOWER - STAIR #21 (CLEAN ROOM),,CONSTRUCTION,,,,,2024-09-24 07:00,2024-09-26 17:00,2024-09-24 07:00,2024-10-03 17:00,2025-11-20 17:00,2025-11-20 17:00,2025-11-12 07:00,2025-11-12 07:00,0,20,100
CN.SWA5..3980,INSTALL  PRIME COAT - STAIR #3 - 18/L - ALL LEVELS(2 shifts ),Complete,CONSTRUCTION,,SUWN-1 - 18-21,INTERIOR STAIR TOWER - STAIR #3,,CONSTRUCTION,,,,,2024-10-28 07:00,2024-10-29 17:00,2024-10-28 07:00,2024-10-29 17:00,2025-11-20 17:00,2025-11-20 17:00,2025-11-03 07:00,2025-11-03 07:00,0,20,100
CN.SWB5.10190,IMPACT - RFI N31 responded 9/19 - NW PENTHOUSE - BREEZEWAY COLUMN,Complete,CONSTRUCTION,,NORTH WEST PENTHOUSE,EXTERIOR SKIN,,CONSTRUCTION,ALPHA,,,,2024-08-26 07:00,2024-08-29 17:00,2024-08-12 07:00,2024-09-19 17:00,2025-11-20 17:00,2025-11-20 17:00,2025-11-17 07:00,2025-11-17 07:00,0,40,100
CN.SWB5.10200,IMPACT - NEED STUB COLUMN CALCULATION - DISMANTLE STEEL - NW PENTHOUSE - BREEZEWAY,Complete,CONSTRUCTION,,NORTH WEST PENTHOUSE,EXTERIOR SKIN,,CONSTRUCTION,ALPHA,,,,2024-10-14 07:00,2024-10-18 17:00,2024-09-23 07:00,2024-11-02 07:00,2025-11-20 17:00,2025-11-20 17:00,2025-11-17 07:00,2025-11-17 07:00,0,40,100
CN.SEB1.10170,"IMPACT - CCD FOR DOOR MODIFICATION - VOC ROOM SUPPORT STEEL, BENT PLATE & DECKING - GL 17-18 - L LINE (DS AREA)",Complete,CONSTRUCTION,,SUWS-1 - 18-15,EXTERIOR SKIN,,CONSTRUCTION,PATRIOT,INSULATED METAL PANELS,,,2024-09-13 07:00,2024-09-26 17:00,2024-09-03 07:00,2024-10-12 17:00,2025-11-20 17:00,2025-11-20 17:00,2025-12-05 07:00,2025-12-05 07:00,0,80,100
CN.SWA5..3990,FINAL COAT & INSPECTION - STAIR #3 - 18/L - ALL LEVELS,Not Started,CONSTRUCTION,,SUWN-1 - 18-21,INTERIOR STAIR TOWER - STAIR #3,,CONSTRUCTION,,,,,2025-12-12 07:00,2025-12-23 17:00,,,2025-12-12 07:00,2025-12-23 17:00,2025-11-21 07:00,2025-12-04 17:00,100,100,0
CN.SWA5..4000,COMPLETE SANDBLASTING - STAIR #19 - 26/D - ALL LEVELS(),Complete,CONSTRUCTION,,SUEN-3 - 25-28,INTERIOR STAIR TOWER - STAIR #19 (CLEAN ROOM) - DE-SCOPED,,CONSTRUCTION,,,,,2025-08-16 07:00,2025-08-19 17:00,2025-06-27 07:00,2025-06-27 17:00,2025-11-20 17:00,2025-11-20 17:00,2025-11-21 07:00,2025-11-21 07:00,0,30,100
CN.SWA5..4010,INSPECT - PRIMER COAT - STAIR #1 - ALL LEVELS - SIDES - SECAI TOOK OVER FOR ACCELRATION,Complete,CONSTRUCTION,,FIZ 2 / SUWS 5  (GL6-1) - GL J - N - DATA CENTER 1,INTERIOR STAIR TOWER - STAIR #1 - DE-SCOPED,,CONSTRUCTION,,,,,2025-06-27 07:00,2025-06-27 17:00,2025-06-27 07:00,2025-06-27 17:00,2025-12-05 15:00,2025-12-05 15:00,2025-11-08 07:00,2025-11-08 07:00,0,10,100
CN.SWA5..4020,INSPECT -  PRIMER COAT - STAIR #22 - 6/D - ALL LEVELS - SIDES,Complete,CONSTRUCTION,,SUES-5 - 6-1 - FIZ - GL A -E,INTERIOR STAIR TOWER - STAIR #22 - DE-SCOPED,,CONSTRUCTION,,,,,2025-06-25 07:00,2025-06-25 17:00,2025-07-03 07:00,2025-07-03 17:00,2025-11-20 17:00,2025-11-20 17:00,2025-10-27 09:00,2025-10-27 09:00,0,10,100
CN.SWA5..4030,COMPLETE SANDBLASTING - STAIR #4 - 23/L - ALL LEVELS (),Complete,CONSTRUCTION,,SUWN-2 - 21-24,INTERIOR STAIR TOWER - STAIR #4 (CLEAN ROOM),,CONSTRUCTION,,,,,2025-04-07 07:00,2025-04-09 17:00,2025-04-07 07:00,2025-04-09 17:00,2025-11-20 17:00,2025-11-20 17:00,2025-12-01 07:00,2025-12-01 07:00,0,30,100
CN.SWA5..4040,INSPECT PRIMER COAT - STAIR #50 - 29/L - ALL LEVELS,Complete,CONSTRUCTION,,SUWN-4 - 27-30,INTERIOR STAIR TOWER - STAIR #50 - DE-SCOPED,,CONSTRUCTION,,,,,2025-09-11 07:00,2025-09-11 17:00,2025-06-27 07:00,2025-06-27 13:00,2025-11-20 17:00,2025-11-20 17:00,2025-12-05 17:00,2025-12-05 17:00,0,10,100
CN.SWB5.10210,IMPACT - RFI 1535 I-BEAM INFILL LEAVEOUTS - ELEVATOR 5,Complete,CONSTRUCTION,,SUWN-5 - 30-33,,ELEVATOR,CONSTRUCTION,BAKER,,,,2024-10-01 07:00,2024-10-15 17:00,2024-10-01 07:00,2024-10-17 17:00,2025-11-20 17:00,2025-11-20 17:00,2025-10-16 07:00,2025-10-16 07:00,0,90,100
CN.SWB5.10220,IMPACT - RFI 1535 I-BEAM INFILL LEAVEOUTS - ELEVATOR 18,Complete,CONSTRUCTION,,SUWN-5 - 30-33,,ELEVATOR,CONSTRUCTION,BAKER,,,,2024-10-01 07:00,2024-10-15 17:00,2024-10-01 07:00,2024-10-17 17:00,2025-11-20 17:00,2025-11-20 17:00,2025-12-01 07:00,2025-12-01 07:00,0,90,100
CN.SWB5.10230,FRAMING AND DRYWALL AT FIREPROOFING LEAVEOUT - LVL 4 - ELEVATOR 18,Complete,CONSTRUCTION,,SUWN-5 - 30-33,,ELEVATOR,CONSTRUCTION,BAKER,,,,2024-10-25 07:00,2024-11-04 17:00,2024-10-25 07:00,2024-11-01 17:00,2025-11-20 17:00,2025-11-20 17:00,2025-12-01 07:00,2025-12-01 07:00,0,60,100
CN.SWB3.5230,IMPACT - WAITING ON SECAI TO TURN OVER THE AREA FOR CANOPY,Complete,CONSTRUCTION,,SUEN-4 - 28-31,EXTERIOR SKIN,,CONSTRUCTION,,,,,2024-08-15 07:00,2024-08-20 17:00,2024-08-15 07:00,2024-12-12 13:00,2025-11-20 17:00,2025-11-20 17:00,2025-09-30 07:00,2025-09-30 07:00,0,40,100
CN.SWA1.1840,IMPACT - DELETED & RE-ADDED IN THE SCOPE- STAIR # 49- SHOPS SUBMITTED(11/19),Complete,CONSTRUCTION,,SUWS-1 - 18-15,L1 - Fndn Slab,MCC/IO,CONSTRUCTION,,,,,2023-06-23 07:00,2023-06-29 17:00,2023-06-23 07:00,2024-06-10 17:00,2025-11-20 17:00,2025-11-20 17:00,2025-12-05 17:00,2025-12-05 17:00,0,40,100
STAIR.2290,IMPACT - REQUIRES ADDITIONAL CHANNEL - STAIR #23 - SUW - 13-M.5 - LEVEL U1-L01,Complete,CONSTRUCTION,,INTERIOR STAIRS,LU1 - Underground Level,SUW - SUPPORT WEST,CONSTRUCTION,,,,,2024-09-13 07:00,2024-09-19 17:00,2024-09-06 07:00,2024-10-29 17:00,2025-11-20 17:00,2025-11-20 17:00,2025-12-05 17:00,2025-12-05 17:00,0,40,100
STAIR.2300,IMPACT - ELEVATION DIFFERENCE B/W ARCH AND STRUCTURAL #69 - SUE - 3-D - LEVEL 04(Pending Hand Rail ),Complete,CONSTRUCTION,,INTERIOR STAIRS,L4 - SUP Roof - FAB Roof,SUE - SUPPORT EAST,CONSTRUCTION,,,,,2024-08-26 07:00,2024-08-29 17:00,2024-08-20 07:00,2024-09-26 17:00,2025-11-20 17:00,2025-11-20 17:00,2025-11-20 07:00,2025-11-20 07:00,0,40,100
STAIR.2310,"IMPACT - CCD 477 FOR RE-FAB & INSTALL DUE TO CHANGE STAIR #62, 63, 64 , 65, 66, 72, 73 & & 76 - SUW - 3-K-L - LEVEL 04",Complete,CONSTRUCTION,,INTERIOR STAIRS,L4 - SUP Roof - FAB Roof,SUW - SUPPORT WEST,CONSTRUCTION,,,,,2024-09-23 07:00,2024-09-27 17:00,2024-09-24 07:00,2024-11-12 17:00,2025-11-20 17:00,2025-11-20 17:00,2025-11-10 07:00,2025-11-10 07:00,0,40,100
STAIR.2320,IMPACT - REVICED PRICING FOR GRATING CUT #73 - SUE - 18-C - LEVEL 04,Complete,CONSTRUCTION,,INTERIOR STAIRS,L4 - SUP Roof - FAB Roof,SUE - SUPPORT EAST,CONSTRUCTION,,,,,2024-10-24 07:00,2024-11-15 17:00,2024-10-24 07:00,2024-11-12 17:00,2025-11-20 17:00,2025-11-20 17:00,2025-12-05 17:00,2025-12-05 17:00,0,140,100
STAIR.2330,IMPACT - CONFLICT WITH SLOPE - NEED RFI #79 - SUW - 3-L - LEVEL 04,Complete,CONSTRUCTION,,INTERIOR STAIRS,L4 - SUP Roof - FAB Roof,SUW - SUPPORT WEST,CONSTRUCTION,,,,,2024-11-12 07:00,2024-12-06 17:00,2024-11-12 07:00,2024-11-19 17:00,2025-11-20 17:00,2025-11-20 17:00,2025-12-05 17:00,2025-12-05 17:00,0,140,100
STAIR.2340,IMPACT - TOP OF LANDING MISSING #35 - SUW - 27-M.5 - LEVEL U1-01 (Waiting on LANDING FIX PROCURED TO COMPLETE INSTALL),Complete,CONSTRUCTION,,INTERIOR STAIRS,L1 - Fndn Slab,FIZ,CONSTRUCTION,,,,,2024-08-29 07:00,2024-09-06 17:00,2024-08-01 07:00,2024-10-04 17:00,2025-11-20 17:00,2025-11-20 17:00,2025-12-05 17:00,2025-12-05 17:00,0,60,100
CN.SWB5.10340,IMPACT - LVL4 SUPER DECK M.5 / PLATFORM DEMO PENDING SECAI DIRECTION TBD(DELAYED 11/15) - NW PENTHOUSE - NORTH WALL,Complete,CONSTRUCTION,,NORTH WEST PENTHOUSE,EXTERIOR SKIN,,CONSTRUCTION,,,,,2024-10-21 07:00,2024-10-29 17:00,2024-08-13 07:00,2024-11-18 17:00,2025-11-20 17:00,2025-11-20 17:00,2025-11-25 07:00,2025-11-25 07:00,0,60,100
CN.SEA5.10710,"PARAPET- FIREPROOFING, SHEATHING ,& CELL SPRAY FOAM - GL 9-13 - A LINE (SUPPORT EXTERIOR AREA) - L4",Complete,CONSTRUCTION,,SUES-3 - 13-9,EXTERIOR SKIN,,CONSTRUCTION,BERG,,,,2024-10-28 07:00,2024-11-07 17:00,2024-10-24 07:00,2024-12-23 17:00,2025-11-20 17:00,2025-11-20 17:00,2025-12-05 17:00,2025-12-05 17:00,0,70,100
CN.SEB1.10180,"PARAPET- FIREPROOFING, SHEATHING ,& CELL SPRAY FOAM - GL 28-31 - A LINE (SUPPORT EXTERIOR AREA) - L4",Complete,CONSTRUCTION,,SUEN-4 - 28-31,EXTERIOR SKIN,,CONSTRUCTION,BERG,,,,2024-10-24 07:00,2024-11-04 17:00,2024-10-24 07:00,2025-01-03 17:00,2025-11-20 17:00,2025-11-20 17:00,2025-12-05 17:00,2025-12-05 17:00,0,70,100
CN.SEA5.10720,"PARAPET- FIREPROOFING, SHEATHING ,& CELL SPRAY FOAM - GL 5-9 - A LINE (SUPPORT EXTERIOR AREA) - L4",Complete,CONSTRUCTION,,SUES-4 - 9-6,EXTERIOR SKIN,,CONSTRUCTION,BERG,,,,2024-11-01 07:00,2024-11-12 17:00,2024-10-19 07:00,2024-12-23 17:00,2025-11-20 17:00,2025-11-20 17:00,2025-12-05 17:00,2025-12-05 17:00,0,70,100
CN.SEB1.10230,"PARAPET- FIREPROOFING, SHEATHING ,& CELL SPRAY FOAM - GL 13-16 - A LINE (SUPPORT EXTERIOR AREA) - L4",Complete,CONSTRUCTION,,SUES-2 - 16-13,EXTERIOR SKIN,,CONSTRUCTION,BERG,,,,2024-10-24 07:00,2024-11-04 17:00,2024-10-24 07:00,2024-12-27 17:00,2025-11-20 17:00,2025-11-20 17:00,2025-12-05 17:00,2025-12-05 17:00,0,70,100
CN.SEB1.10220,INSTALL/INSPECT EDGE OF SLAB BOTTOM PLATE &  PLYWOOD CAP  - GL 16-19 - A LINE (SUPPORT EXTERIOR AREA) - L4,Complete,CONSTRUCTION,,SUES-1 - 19-16,EXTERIOR SKIN,,CONSTRUCTION,BERG,,,,2024-07-11 07:00,2024-07-19 17:00,2024-07-10 07:00,2024-08-16 07:00,2025-11-20 17:00,2025-11-20 17:00,2025-12-05 17:00,2025-12-05 17:00,0,70,100
CN.SEB1.10200,"PARAPET- FIREPROOFING, SHEATHING ,& CELL SPRAY FOAM - GL 22-25 - A LINE (SUPPORT EXTERIOR AREA) - L4",Complete,CONSTRUCTION,,SUEN-2 - 22-25,EXTERIOR SKIN,,CONSTRUCTION,BERG,,,,2024-11-05 07:00,2024-11-15 17:00,2024-10-21 07:00,2025-01-03 17:00,2025-11-20 17:00,2025-11-20 17:00,2025-12-05 17:00,2025-12-05 17:00,0,70,100
CN.SEB1.10190,"PARAPET- FIREPROOFING, SHEATHING ,& CELL SPRAY FOAM - GL 25-28 - A LINE (SUPPORT EXTERIOR AREA) - L4",Complete,CONSTRUCTION,,SUEN-3 - 25-28,EXTERIOR SKIN,,CONSTRUCTION,BERG,,,,2024-11-04 07:00,2024-11-14 17:00,2024-10-23 07:00,2025-01-03 17:00,2025-11-20 17:00,2025-11-20 17:00,2025-12-05 17:00,2025-12-05 17:00,0,70,100
CN.SEB1.10240,"PARAPET- FIREPROOFING, SHEATHING ,& CELL SPRAY FOAM - GL 16-19 - A LINE (SUPPORT EXTERIOR AREA) - L4",Complete,CONSTRUCTION,,SUEN-1 - 19-22,EXTERIOR SKIN,,CONSTRUCTION,BERG,,,,2024-10-24 07:00,2024-11-04 17:00,2024-10-22 07:00,2024-12-27 17:00,2025-11-20 17:00,2025-11-20 17:00,2025-12-05 17:00,2025-12-05 17:00,0,70,100
CN.SEA5.10770,"PARAPET- FIREPROOFING, SHEATHING ,& CELL SPRAY FOAM - GL 9-13 - N LINE(SUPPORT EXTERIOR AREA) - L4",Complete,CONSTRUCTION,,SUES-3 - 13-9,EXTERIOR SKIN,,CONSTRUCTION,BERG,,,,2024-10-14 07:00,2024-10-24 17:00,2024-10-12 07:00,2024-10-19 17:00,2025-11-20 17:00,2025-11-20 17:00,2025-12-05 17:00,2025-12-05 17:00,0,70,100
CN.SEB1.10260,"PARAPET- FIREPROOFING, SHEATHING ,CELL SPRAY FOAM & COPING CAP - GL 19-22 - A LINE(SUPPORT EXTERIOR AREA) - L4",Active,CONSTRUCTION,,SUEN-1 - 19-22,EXTERIOR SKIN,,CONSTRUCTION,BERG,,,,2024-11-07 07:00,2024-11-18 17:00,2024-10-22 07:00,,2025-12-02 07:00,2025-12-02 07:00,2025-12-05 17:00,2025-12-05 17:00,0,70,100
CN.SEB1.10300,"PARAPET- FIREPROOFING, SHEATHING ,CELL SPRAY FOAM & COPING CAP - GL 28-31 - A LINE(SUPPORT EXTERIOR AREA) - L4",Active,CONSTRUCTION,,SUEN-4 - 28-31,EXTERIOR SKIN,,CONSTRUCTION,BERG,,,,2024-10-17 07:00,2024-10-28 17:00,2024-10-17 07:00,,2025-11-25 07:00,2025-12-02 07:00,2025-12-03 07:00,2025-12-05 17:00,30,70,0
CN.SEA5.10760,"PARAPET- FIREPROOFING, SHEATHING ,& CELL SPRAY FOAM - GL 6-9 - N LINE(SUPPORT EXTERIOR AREA) - L4",Complete,CONSTRUCTION,,SUES-4 - 9-6,EXTERIOR SKIN,,CONSTRUCTION,BERG,,,,2024-10-10 07:00,2024-10-21 17:00,2024-10-10 07:00,2024-10-19 17:00,2025-11-20 17:00,2025-11-20 17:00,2025-12-05 17:00,2025-12-05 17:00,0,70,100
CN.SEB1.10250,"PARAPET- FIREPROOFING, SHEATHING ,& CELL SPRAY FOAM - GL 13-16 - N LINE(SUPPORT EXTERIOR AREA) - L4",Complete,CONSTRUCTION,,SUES-2 - 16-13,EXTERIOR SKIN,,CONSTRUCTION,BERG,,,,2024-11-01 07:00,2024-11-12 17:00,2024-10-21 07:00,2024-11-05 17:00,2025-11-20 17:00,2025-11-20 17:00,2025-12-05 17:00,2025-12-05 17:00,0,70,100
CN.SEB1.10280,"PARAPET- FIREPROOFING, SHEATHING CELL SPRAY FOAM & COPING CAP - GL 22-25 - A LINE(SUPPORT EXTERIOR AREA) - L4",Active,CONSTRUCTION,,SUEN-2 - 22-25,EXTERIOR SKIN,,CONSTRUCTION,BERG,,,,2024-10-21 07:00,2024-10-31 17:00,2024-10-14 07:00,,2025-11-25 07:00,2025-12-02 07:00,2025-12-03 07:00,2025-12-05 17:00,30,70,0
CN.SEB1.10290,"PARAPET- FIREPROOFING, SHEATHING ,CELL SPRAY FOAM & COPING CAP - GL 25-28 - A LINE(SUPPORT EXTERIOR AREA) - L4",Active,CONSTRUCTION,,SUEN-3 - 25-28,EXTERIOR SKIN,,CONSTRUCTION,BERG,,,,2024-10-15 07:00,2024-10-25 17:00,2024-10-15 07:00,,2025-11-25 07:00,2025-12-02 07:00,2025-12-03 07:00,2025-12-05 17:00,30,70,0
CN.SEB1.10270,"PARAPET- FIREPROOFING, SHEATHING ,& CELL SPRAY FOAM - GL 16-19 - A LINE(SUPPORT EXTERIOR AREA) - L4",Active,CONSTRUCTION,,SUEN-1 - 19-22,EXTERIOR SKIN,,CONSTRUCTION,BERG,,,,2024-10-22 07:00,2024-11-01 17:00,2024-10-22 07:00,,2025-11-25 07:00,2025-12-01 17:00,2025-12-03 07:00,2025-12-05 17:00,30,70,0
CN.SEB1.10310,IMPACT - CCD 396 - RFI XXX STIFFNER PLATE SCOPE GAP - GL 17-18 - L LINE (DS AREA),Complete,CONSTRUCTION,,SUWS-1 - 18-15,EXTERIOR SKIN,,CONSTRUCTION,PATRIOT,INSULATED METAL PANELS,,,2024-09-13 07:00,2024-09-26 17:00,2024-09-17 12:00,2024-10-07 17:00,2025-11-20 17:00,2025-11-20 17:00,2025-12-05 07:00,2025-12-05 07:00,0,80,100
CN.BB51.ST.2860,IMPACT -SCAFFOLDING DESIGN & APPROVAL - STAIR 5&18 - GL 33,Complete,CONSTRUCTION,,GRIDLINE 33,,GL 33 PROCUREMENT ITEMS,CONSTRUCTION,,,,,2024-10-07 07:00,2024-10-11 17:00,2024-10-05 07:00,2024-10-10 17:00,2025-11-20 17:00,2025-11-20 17:00,2025-11-03 07:00,2025-11-03 07:00,0,40,100
CN.SWA5..4070,PRIMER COAT INSTALL - STAIR #1 - ALL LEVELS - SIDES - SECAI TOOK OVER FOR ACCELRATION,Complete,CONSTRUCTION,,FIZ 2 / SUWS 5  (GL6-1) - GL J - N - DATA CENTER 1,INTERIOR STAIR TOWER - STAIR #1 - DE-SCOPED,,CONSTRUCTION,,,,,2025-06-27 07:00,2025-06-30 17:00,2025-06-27 07:00,2025-06-27 17:00,2025-12-05 15:00,2025-12-05 15:00,2025-11-08 07:00,2025-11-08 07:00,0,30,100
CN.SWA5..4080,PRIMER COAT - STAIR #22 - 6/D - ALL LEVELS - SIDES,Complete,CONSTRUCTION,,SUES-5 - 6-1 - FIZ - GL A -E,INTERIOR STAIR TOWER - STAIR #22 - DE-SCOPED,,CONSTRUCTION,,,,,2025-06-21 07:00,2025-06-24 17:00,2025-06-30 07:00,2025-07-02 17:00,2025-11-20 17:00,2025-11-20 17:00,2025-10-27 09:00,2025-10-27 09:00,0,30,100
CN.SWA5..4090,PRIMER COAT  - STAIR #50 - 29/L - ALL LEVELS (),Complete,CONSTRUCTION,,SUWN-4 - 27-30,INTERIOR STAIR TOWER - STAIR #50 - DE-SCOPED,,CONSTRUCTION,,,,,2025-09-08 07:00,2025-09-10 17:00,2025-06-27 07:00,2025-06-27 13:00,2025-11-20 17:00,2025-11-20 17:00,2025-12-05 17:00,2025-12-05 17:00,0,30,100
CN.SWA5..4100,RESUME STAIR PREP SP2 - STAIR #3 - 18/L - ALL LEVELS,Complete,CONSTRUCTION,,SUWN-1 - 18-21,INTERIOR STAIR TOWER - STAIR #3,,CONSTRUCTION,,,,,2024-10-07 07:00,2024-10-12 17:00,2024-10-07 07:00,2024-10-23 17:00,2025-11-20 17:00,2025-11-20 17:00,2025-11-03 07:00,2025-11-03 07:00,0,60,100
CN.AB51.ST.1200,RFI #1534 STAIR SPECIFICATION CONFIRMATION (Concrete vs Checkered plate),Complete,CONSTRUCTION,,A5 - Area 2 (Gridlines 6-3),L1 - Fndn Slab,SLURRY ROOM STAIR ,CONSTRUCTION,,,,,2024-09-26 07:00,2024-10-01 17:00,2024-09-26 07:00,2024-10-10 17:00,2025-11-20 17:00,2025-11-20 17:00,2025-12-05 17:00,2025-12-05 17:00,0,40,100
CN.SEA5.10175,IMPACT - SECAI TO PROVIDE EGRESS TO WORK (MEP work on Airlock pipe insulators) - GL 5-13 - A LINE - L4 ROOF,Complete,CONSTRUCTION,,SUES-3 - 13-9,L4 - SUP Roof - FAB Roof,,CONSTRUCTION,,,,,2024-10-04 07:00,2024-10-10 17:00,2024-08-09 07:00,2024-12-11 17:00,2025-11-20 17:00,2025-11-20 17:00,2025-12-03 07:00,2025-12-03 07:00,0,40,100
CN.BB51.ST.2872,BERG - INSTALL & INSPECT FRAMING - INTERIOR SHAFT/SOUTH WALL- GL 33 - STAIR 5 - K-L,Complete,CONSTRUCTION,,GRIDLINE 33,GL 33 STAIR 5 (WEST),STAIR 5 (WEST) - K-L,CONSTRUCTION,BERG,,,,2025-07-03 07:00,2025-07-24 17:00,2025-07-03 07:00,2025-08-07 07:00,2025-11-20 17:00,2025-11-20 17:00,2025-11-12 07:00,2025-11-12 07:00,0,150,100
CN.SWA5..4110,INSTALL- PRIMER COAT - STAIR #2 - 11/L - ALL LEVELS,Complete,CONSTRUCTION,,SUWS-3 - 12-9,INTERIOR STAIR TOWER - STAIR #2 (CLEAN ROOM),,CONSTRUCTION,,,,,2024-09-30 07:00,2024-10-04 17:00,2024-10-01 07:00,2024-10-07 17:00,2025-11-20 17:00,2025-11-20 17:00,2025-11-12 07:00,2025-11-12 07:00,0,50,100
CN.SWA5..4120,INSTALL- 2ND LAYER EXTERIOR DRYWALL & inspect - STAIR #2 - 11/L - ALL LEVELS,Complete,CONSTRUCTION,,SUWS-3 - 12-9,INTERIOR STAIR TOWER - STAIR #2 (CLEAN ROOM),,CONSTRUCTION,,,,,2024-11-12 07:00,2024-11-22 17:00,2024-11-20 07:00,2024-12-02 16:00,2025-11-20 17:00,2025-11-20 17:00,2025-11-12 07:00,2025-11-12 07:00,0,100,100
CN.SWA5..4210,INSPECT SANDBLASTING - STAIR #21 - 13/D - ALL LEVELS,Complete,CONSTRUCTION,,SUES-3 - 13-9,INTERIOR STAIR TOWER - STAIR #21 (CLEAN ROOM),,CONSTRUCTION,,,,,2024-10-24 07:00,2024-10-24 17:00,2024-10-24 07:00,2024-10-24 17:00,2025-11-20 17:00,2025-11-20 17:00,2025-11-12 07:00,2025-11-12 07:00,0,10,100
CN.SWA5..4220,SPRAY PRIMER COAT - STAIR #21 - 13/D - ALL LEVELS(2SHIFTS),Complete,CONSTRUCTION,,SUES-3 - 13-9,INTERIOR STAIR TOWER - STAIR #21 (CLEAN ROOM),,CONSTRUCTION,,,,,2024-10-25 07:00,2024-10-26 17:00,2024-10-25 07:00,2024-11-01 17:00,2025-11-20 17:00,2025-11-20 17:00,2025-11-12 07:00,2025-11-12 07:00,0,20,100
CN.SWA5..4230,IMPACT - INSPECT - PRIMER COAT (INSPECTION DELAYED) - STAIR #21 - 13/D - ALL LEVELS(2SHIFTS),Complete,CONSTRUCTION,,SUES-3 - 13-9,INTERIOR STAIR TOWER - STAIR #21 (CLEAN ROOM),,CONSTRUCTION,,,,,2024-11-02 07:00,2024-11-02 17:00,2024-10-31 07:00,2024-11-04 17:00,2025-11-20 17:00,2025-11-20 17:00,2025-11-12 07:00,2025-11-12 07:00,0,10,100
CN.SWA5..4240,INSPECT - EXTERIOR 1ST LAYER DRYWALL - STAIR #21 - 13/D - ALL LEVELS,Complete,CONSTRUCTION,,SUES-3 - 13-9,INTERIOR STAIR TOWER - STAIR #21 (CLEAN ROOM),,CONSTRUCTION,,,,,2024-11-18 07:00,2024-11-18 17:00,2024-11-18 07:00,2025-04-07 17:00,2025-11-20 17:00,2025-11-20 17:00,2025-11-12 07:00,2025-11-12 07:00,0,10,100
CN.SWA5..4250,INSTALL -  EXTERIOR 2ND  LAYER DRYWALL & INSPECT - STAIR #21 - 13/D - ALL LEVELS,Complete,CONSTRUCTION,,SUES-3 - 13-9,INTERIOR STAIR TOWER - STAIR #21 (CLEAN ROOM),,CONSTRUCTION,,,,,2024-12-02 07:00,2024-12-04 17:00,2024-12-02 00:00,2025-05-05 17:00,2025-11-20 17:00,2025-11-20 17:00,2025-11-12 07:00,2025-11-12 07:00,0,30,100
CN.SWA5..4340,INSPECT - PRIMER COAT - STAIR #20 - 19/D - ALL LEVELS(2 shifts),Complete,CONSTRUCTION,,SUES-1 - 19-16,INTERIOR STAIR TOWER - STAIR #20,,CONSTRUCTION,,,,,2024-10-31 07:00,2024-10-31 17:00,2024-10-31 07:00,2024-11-01 17:00,2025-11-20 17:00,2025-11-20 17:00,2025-11-12 07:00,2025-11-12 07:00,0,10,100
CN.SWA5..4350,INSPECT - 1ST LAYER DRYWALL EXTERIOR & inspect  - STAIR #20 - 19/D - ALL LEVELS,Complete,CONSTRUCTION,,SUES-1 - 19-16,INTERIOR STAIR TOWER - STAIR #20,,CONSTRUCTION,,,,,2024-12-05 07:00,2024-12-05 17:00,2024-11-11 07:00,2025-09-30 17:00,2025-11-20 17:00,2025-11-20 17:00,2025-12-05 17:00,2025-12-05 17:00,0,10,100
CN.SWA5..4360,INSTALL - 2ND  LAYER DRYWALL EXTERIOR & inspect - STAIR #20 - 19/D - ALL LEVELS,Complete,CONSTRUCTION,,SUES-1 - 19-16,INTERIOR STAIR TOWER - STAIR #20,,CONSTRUCTION,,,,,2024-11-20 07:00,2024-11-23 17:00,2024-11-20 07:00,2025-10-07 17:00,2025-11-20 17:00,2025-11-20 17:00,2025-12-05 17:00,2025-12-05 17:00,0,40,100
CN.SWA5..4430,IMPACT - INSPECT PREP - STAIR #3 - 18/L - ALL LEVELS,Complete,CONSTRUCTION,,SUWN-1 - 18-21,INTERIOR STAIR TOWER - STAIR #3,,CONSTRUCTION,,,,,2024-10-07 07:00,2024-10-12 17:00,2024-10-09 07:00,2024-10-24 17:00,2025-11-20 17:00,2025-11-20 17:00,2025-11-03 07:00,2025-11-03 07:00,0,60,100
CN.SWA5..4440,INSPECT PRIME COAT - STAIR #3 - 18/L - ALL LEVELS,Complete,CONSTRUCTION,,SUWN-1 - 18-21,INTERIOR STAIR TOWER - STAIR #3,,CONSTRUCTION,,,,,2024-10-30 07:00,2024-10-30 17:00,2024-10-30 07:00,2024-10-30 17:00,2025-11-20 17:00,2025-11-20 17:00,2025-11-03 07:00,2025-11-03 07:00,0,10,100
CN.SWA5..4460,INSTALL - 2ND  LAYER DRYWALL EXTERIOR & INSPECT - STAIR #3 - 18/L - ALL LEVELS,Complete,CONSTRUCTION,,SUWN-1 - 18-21,INTERIOR STAIR TOWER - STAIR #3,,CONSTRUCTION,,,,,2024-11-21 07:00,2024-11-27 17:00,2024-11-25 07:00,2025-10-10 17:00,2025-11-20 17:00,2025-11-20 17:00,2025-11-08 07:00,2025-11-08 07:00,0,60,100
CN.SWA5..4470,BERG INSTALL SCAFFOLD FOR CEILING - STAIR #3 - 18/L - ALL LEVELS,Complete,CONSTRUCTION,,SUWN-1 - 18-21,INTERIOR STAIR TOWER - STAIR #3,,CONSTRUCTION,,,,,2025-09-29 07:00,2025-09-30 17:00,2025-09-29 07:00,2025-09-30 17:00,2025-11-20 17:00,2025-11-20 17:00,2025-11-08 07:00,2025-11-08 07:00,0,20,100
CN.SWA5..4510,IMPACT - SCAFFOLDING MODIFICATION TO MAINING EGRESS UNTIL STAIR IS COMPLETE - STAIR #3 - 18/L - ALL LEVELS,Complete,CONSTRUCTION,,SUWN-1 - 18-21,INTERIOR STAIR TOWER - STAIR #3,,CONSTRUCTION,,,,,2024-10-15 07:00,2024-10-15 17:00,2024-10-15 07:00,2024-10-15 17:00,2025-11-20 17:00,2025-11-20 17:00,2025-11-03 07:00,2025-11-03 07:00,0,10,100
CN.SWA5..4570,INSPECT- PREP BOLTS & WELD CONNECTIONS - STAIR #4 - 23/L - ALL LEVELS,Complete,CONSTRUCTION,,SUWN-2 - 21-24,INTERIOR STAIR TOWER - STAIR #4 (CLEAN ROOM),,CONSTRUCTION,,,,,2025-04-01 07:00,2025-04-01 17:00,2025-03-10 07:00,2025-03-10 11:00,2025-11-20 17:00,2025-11-20 17:00,2025-12-01 07:00,2025-12-01 07:00,0,10,100
CN.SWA5..4580,ALPHA PRIMER BOLTS & WELD CONNECTIONS - STAIR #4 - 23/L - ALL LEVELS (2- SHIFTS),Complete,CONSTRUCTION,,SUWN-2 - 21-24,INTERIOR STAIR TOWER - STAIR #4 (CLEAN ROOM),,CONSTRUCTION,,,,,2025-04-02 07:00,2025-04-02 17:00,2025-03-11 07:00,2025-03-12 17:00,2025-11-20 17:00,2025-11-20 17:00,2025-12-01 07:00,2025-12-01 07:00,0,10,100
CN.SWA5..4590,INSPECT- PRIMER BOLTS & WELD CONNECTIONS - STAIR #4 - 23/L - ALL LEVELS,Complete,CONSTRUCTION,,SUWN-2 - 21-24,INTERIOR STAIR TOWER - STAIR #4 (CLEAN ROOM),,CONSTRUCTION,,,,,2025-04-03 07:00,2025-04-03 17:00,2025-03-13 07:00,2025-03-13 11:00,2025-11-20 17:00,2025-11-20 17:00,2025-12-01 07:00,2025-12-01 07:00,0,10,100
CN.SWA5..4600,FIREPROOFING PREP & LATH INSTALL - STAIR #4 - 23/L - ALL LEVELS (2- SHIFTS),Complete,CONSTRUCTION,,SUWN-2 - 21-24,INTERIOR STAIR TOWER - STAIR #4 (CLEAN ROOM),,CONSTRUCTION,,,,,2025-03-26 07:00,2025-03-26 17:00,2025-03-19 07:00,2025-03-19 11:00,2025-11-20 17:00,2025-11-20 17:00,2025-12-01 07:00,2025-12-01 07:00,0,10,100
CN.SWA5..4610,INSPECT - FIREPROOFING PREP & LATH  - STAIR #4 - 23/L - ALL LEVELS (2- SHIFTS),Complete,CONSTRUCTION,,SUWN-2 - 21-24,INTERIOR STAIR TOWER - STAIR #4 (CLEAN ROOM),,CONSTRUCTION,,,,,2025-03-27 07:00,2025-03-27 17:00,2025-03-20 07:00,2025-03-20 17:00,2025-11-20 17:00,2025-11-20 17:00,2025-12-01 07:00,2025-12-01 07:00,0,10,100
CN.SWA5..4620,FIREPROOFING COATING - STAIR #4 - 23/L - ALL LEVELS (),Complete,CONSTRUCTION,,SUWN-2 - 21-24,INTERIOR STAIR TOWER - STAIR #4 (CLEAN ROOM),,CONSTRUCTION,,,,,2025-03-28 07:00,2025-03-29 17:00,2025-03-21 07:00,2025-03-26 07:00,2025-11-20 17:00,2025-11-20 17:00,2025-12-01 07:00,2025-12-01 07:00,0,20,100
CN.SWA5..4630,INSPECT- SAND BLASTING - STAIR #4 - 23/L - ALL LEVELS,Complete,CONSTRUCTION,,SUWN-2 - 21-24,INTERIOR STAIR TOWER - STAIR #4 (CLEAN ROOM),,CONSTRUCTION,,,,,2025-04-10 07:00,2025-04-10 17:00,2025-04-10 07:00,2025-04-10 17:00,2025-11-20 17:00,2025-11-20 17:00,2025-12-01 07:00,2025-12-01 07:00,0,10,100
CN.SWA5..4640,PRIMER COAT - STAIR #4 - 23/L - ALL LEVELS (),Complete,CONSTRUCTION,,SUWN-2 - 21-24,INTERIOR STAIR TOWER - STAIR #4 (CLEAN ROOM),,CONSTRUCTION,,,,,2025-04-11 07:00,2025-04-14 17:00,2025-04-11 07:00,2025-04-17 17:00,2025-11-20 17:00,2025-11-20 17:00,2025-12-01 07:00,2025-12-01 07:00,0,30,100
CN.SWA5..4650,INSPECT - PRIMER COAT - STAIR #4 - 23/L - ALL LEVELS,Complete,CONSTRUCTION,,SUWN-2 - 21-24,INTERIOR STAIR TOWER - STAIR #4 (CLEAN ROOM),,CONSTRUCTION,,,,,2025-06-24 07:00,2025-06-24 17:00,2025-04-18 07:00,2025-04-18 17:00,2025-11-20 17:00,2025-11-20 17:00,2025-12-01 07:00,2025-12-01 07:00,0,10,100
CN.SWA5..4670,INSTALL - 2ND LAYER DRYWALL EXTERIOR & inspect  - STAIR #4 - 23/L - ALL LEVELS [/DAY],Complete,CONSTRUCTION,,SUWN-2 - 21-24,INTERIOR STAIR TOWER - STAIR #4 (CLEAN ROOM),,CONSTRUCTION,,,,,2025-07-02 07:00,2025-07-08 17:00,2025-05-20 07:00,2025-05-30 17:00,2025-11-20 17:00,2025-11-20 17:00,2025-12-01 07:00,2025-12-01 07:00,0,50,100
CN.SWA5..4680,BERG INSTALL SCAFFOLD FOR CEILING - STAIR #4 - 23/L - ALL LEVELS,Complete,CONSTRUCTION,,SUWN-2 - 21-24,INTERIOR STAIR TOWER - STAIR #4 (CLEAN ROOM),,CONSTRUCTION,,,,,2025-09-11 07:00,2025-09-15 17:00,2025-08-18 07:00,2025-08-18 17:00,2025-11-20 17:00,2025-11-20 17:00,2025-12-01 07:00,2025-12-01 07:00,0,40,100
CN.SWA5..4740,INSPECT- PREP BOLTS & WELD CONNECTIONS - STAIR #19 - 23/L - ALL LEVELS,Complete,CONSTRUCTION,,SUEN-3 - 25-28,INTERIOR STAIR TOWER - STAIR #19 (CLEAN ROOM) - DE-SCOPED,,CONSTRUCTION,,,,,2025-04-10 07:00,2025-04-10 17:00,2025-04-02 07:00,2025-04-02 07:00,2025-11-20 17:00,2025-11-20 17:00,2025-11-21 07:00,2025-11-21 07:00,0,10,100
CN.SWA5..4750,ALPHA PRIMER BOLTS & WELD CONNECTIONS - STAIR #19 - 23/L - ALL LEVELS(),Complete,CONSTRUCTION,,SUEN-3 - 25-28,INTERIOR STAIR TOWER - STAIR #19 (CLEAN ROOM) - DE-SCOPED,,CONSTRUCTION,,,,,2025-04-11 07:00,2025-04-11 17:00,2025-04-04 07:00,2025-04-12 07:00,2025-11-20 17:00,2025-11-20 17:00,2025-11-21 07:00,2025-11-21 07:00,0,10,100
CN.SWA5..4760,INSPECT- PRIMER BOLTS & WELD CONNECTIONS - STAIR #19 - 23/L - ALL LEVELS,Complete,CONSTRUCTION,,SUEN-3 - 25-28,INTERIOR STAIR TOWER - STAIR #19 (CLEAN ROOM) - DE-SCOPED,,CONSTRUCTION,,,,,2025-04-05 07:00,2025-04-05 17:00,2025-04-05 07:00,2025-04-05 17:00,2025-11-20 17:00,2025-11-20 17:00,2025-11-21 07:00,2025-11-21 07:00,0,10,100
CN.SWA5..4770,FIREPROOFING PREP & LATH INSTALL - STAIR #19 - 23/L - ALL LEVELS- (DESCOPE),Complete,CONSTRUCTION,,SUEN-3 - 25-28,INTERIOR STAIR TOWER - STAIR #19 (CLEAN ROOM) - DE-SCOPED,,CONSTRUCTION,,,,,2025-04-07 07:00,2025-04-07 17:00,2025-04-07 07:00,2025-04-07 17:00,2025-11-20 17:00,2025-11-20 17:00,2025-11-21 07:00,2025-11-21 07:00,0,10,100
CN.SWA5..4780,INSPECT - FIREPROOFING PREP & LATH - STAIR #19 - 23/L - ALL LEVELS (DESCOPE),Complete,CONSTRUCTION,,SUEN-3 - 25-28,INTERIOR STAIR TOWER - STAIR #19 (CLEAN ROOM) - DE-SCOPED,,CONSTRUCTION,,,,,2025-04-08 07:00,2025-04-08 17:00,2025-04-08 07:00,2025-04-08 17:00,2025-11-20 17:00,2025-11-20 17:00,2025-11-21 07:00,2025-11-21 07:00,0,10,100
CN.SWA5..4790,FIREPROOFING COATING - STAIR #19 - 23/L - ALL LEVELS (DESCOPE),Complete,CONSTRUCTION,,SUEN-3 - 25-28,INTERIOR STAIR TOWER - STAIR #19 (CLEAN ROOM) - DE-SCOPED,,CONSTRUCTION,,,,,2025-04-09 07:00,2025-04-10 17:00,2025-04-09 07:00,2025-04-26 12:00,2025-11-20 17:00,2025-11-20 17:00,2025-11-21 07:00,2025-11-21 07:00,0,20,100
CN.SWA5..4800,INSPECT- SAND BLASTING - STAIR #19 - 23/L - ALL LEVELS,Complete,CONSTRUCTION,,SUEN-3 - 25-28,INTERIOR STAIR TOWER - STAIR #19 (CLEAN ROOM) - DE-SCOPED,,CONSTRUCTION,,,,,2025-08-20 07:00,2025-08-20 17:00,2025-06-27 07:00,2025-06-27 17:00,2025-11-20 17:00,2025-11-20 17:00,2025-11-21 07:00,2025-11-21 07:00,0,10,100
CN.SWA5..4810,PRIMER COAT - STAIR #19 - 23/L - ALL LEVELS(),Complete,CONSTRUCTION,,SUEN-3 - 25-28,INTERIOR STAIR TOWER - STAIR #19 (CLEAN ROOM) - DE-SCOPED,,CONSTRUCTION,,,,,2025-09-02 07:00,2025-09-12 17:00,2025-09-02 07:00,2025-09-12 17:00,2025-11-20 17:00,2025-11-20 17:00,2025-11-21 07:00,2025-11-21 07:00,0,100,100
CN.SWA5..4820,INSPECT - PRIMER COAT - STAIR #19 - 23/L - ALL LEVELS,Complete,CONSTRUCTION,,SUEN-3 - 25-28,INTERIOR STAIR TOWER - STAIR #19 (CLEAN ROOM) - DE-SCOPED,,CONSTRUCTION,,,,,2025-09-15 07:00,2025-09-15 17:00,2025-09-15 07:00,2025-09-15 17:00,2025-11-20 17:00,2025-11-20 17:00,2025-11-21 07:00,2025-11-21 07:00,0,10,100
CN.SWA5..4840,INSTALL - 2ND LAYER DRYWALL EXTERIOR & inspect  - STAIR #19 - 23/L - ALL LEVELS(),Complete,CONSTRUCTION,,SUEN-3 - 25-28,INTERIOR STAIR TOWER - STAIR #19 (CLEAN ROOM) - DE-SCOPED,,CONSTRUCTION,,,,,2025-09-03 07:00,2025-09-08 17:00,2025-06-27 07:00,2025-06-27 17:00,2025-11-20 17:00,2025-11-20 17:00,2025-12-03 07:00,2025-12-03 07:00,0,50,100
CN.SWA5..5160,FIREPROOFING PREP AND LATH INSTALL - STAIR #1 - 5/L - ALL LEVELS(),Complete,CONSTRUCTION,,FIZ 2 / SUWS 5  (GL6-1) - GL J - N - DATA CENTER 1,INTERIOR STAIR TOWER - STAIR #1 - DE-SCOPED,,CONSTRUCTION,,,,,2025-07-23 07:00,2025-07-23 17:00,2025-05-28 07:00,2025-06-03 17:00,2025-11-20 17:00,2025-11-20 17:00,2025-10-27 09:00,2025-10-27 09:00,0,10,100
CN.SWA5..5170,INSPECT - FIREPROOFING PREP AND LATH INSTALL - STAIR #1 - 5/L - ALL LEVELS,Complete,CONSTRUCTION,,FIZ 2 / SUWS 5  (GL6-1) - GL J - N - DATA CENTER 1,INTERIOR STAIR TOWER - STAIR #1 - DE-SCOPED,,CONSTRUCTION,,,,,2025-07-24 07:00,2025-07-24 17:00,2025-06-04 07:00,2025-06-04 17:00,2025-11-20 17:00,2025-11-20 17:00,2025-10-27 09:00,2025-10-27 09:00,0,10,100
CN.SWA5..5180,FIREPROOFING COATING - STAIR #1 - 5/L - ALL LEVELS(),Complete,CONSTRUCTION,,FIZ 2 / SUWS 5  (GL6-1) - GL J - N - DATA CENTER 1,INTERIOR STAIR TOWER - STAIR #1 - DE-SCOPED,,CONSTRUCTION,,,,,2025-07-25 07:00,2025-07-26 17:00,2025-06-05 07:00,2025-06-10 10:00,2025-11-20 17:00,2025-11-20 17:00,2025-10-27 09:00,2025-10-27 09:00,0,20,100
CN.SWA5..5210,SECAI - INSTALL INTERIOR DRYWALL - STAIR #1 - 5/L - ALL LEVELS - SECAI TOOK OVER FOR ACCELRATION,Complete,CONSTRUCTION,,FIZ 2 / SUWS 5  (GL6-1) - GL J - N - DATA CENTER 1,INTERIOR STAIR TOWER - STAIR #1 - DE-SCOPED,,CONSTRUCTION,,,,,2025-06-27 07:00,2025-06-27 17:00,2025-06-27 07:00,2025-06-27 17:00,2025-12-05 15:00,2025-12-05 15:00,2025-11-08 07:00,2025-11-08 07:00,0,10,100
CN.SWA5..5220,INSTALL- REMAINING DRYWALL EXTERIOR - STAIR #1 - LVL 4 - SECAI TOOK OVER FOR ACCELRATION,Complete,CONSTRUCTION,,FIZ 2 / SUWS 5  (GL6-1) - GL J - N - DATA CENTER 1,INTERIOR STAIR TOWER - STAIR #1 - DE-SCOPED,,CONSTRUCTION,,,,,2025-06-24 07:00,2025-06-27 17:00,2025-06-27 07:00,2025-06-27 17:00,2025-12-05 15:00,2025-12-05 15:00,2025-11-08 07:00,2025-11-08 07:00,0,40,100
CN.SWA5..5230,INSPECT - REMAINING DRYWALL EXTERIOR - STAIR #1 - LVL 4 - SECAI TOOK OVER FOR ACCELRATION,Complete,CONSTRUCTION,,FIZ 2 / SUWS 5  (GL6-1) - GL J - N - DATA CENTER 1,INTERIOR STAIR TOWER - STAIR #1 - DE-SCOPED,,CONSTRUCTION,,,,,2025-06-27 07:00,2025-06-27 17:00,2025-06-27 07:00,2025-06-27 17:00,2025-12-05 15:00,2025-12-05 15:00,2025-11-08 07:00,2025-11-08 07:00,0,10,100
CN.SWA5..5280,INSPECT -  PREP BOLTS & WELD CONNECTIONS - STAIR #22 - 6/D - ALL LEVELS (DESCOPED),Complete,CONSTRUCTION,,SUES-5 - 6-1 - FIZ - GL A -E,INTERIOR STAIR TOWER - STAIR #22 - DE-SCOPED,,CONSTRUCTION,,,,,2025-06-30 07:00,2025-06-30 17:00,2025-06-02 07:00,2025-06-04 11:00,2025-11-20 17:00,2025-11-20 17:00,2025-10-27 09:00,2025-10-27 09:00,0,10,100
CN.SWA5..5290,ALPHA PRIMER BOLTS & WELD CONNECTIONS - STAIR #22 - 6/D - ALL LEVELS (DESCOPED),Complete,CONSTRUCTION,,SUES-5 - 6-1 - FIZ - GL A -E,INTERIOR STAIR TOWER - STAIR #22 - DE-SCOPED,,CONSTRUCTION,,,,,2025-07-01 07:00,2025-07-01 17:00,2025-06-03 07:00,2025-06-04 17:00,2025-11-20 17:00,2025-11-20 17:00,2025-10-27 09:00,2025-10-27 09:00,0,10,100
CN.SWA5..5300,INSPECT - PRIMER BOLTS & WELD CONNECTIONS - STAIR #22 - 6/D - ALL LEVELS (DESCOPED),Complete,CONSTRUCTION,,SUES-5 - 6-1 - FIZ - GL A -E,INTERIOR STAIR TOWER - STAIR #22 - DE-SCOPED,,CONSTRUCTION,,,,,2025-07-02 07:00,2025-07-02 17:00,2025-06-04 16:55,2025-06-05 09:00,2025-11-20 17:00,2025-11-20 17:00,2025-10-27 09:00,2025-10-27 09:00,0,10,100
CN.SWA5..5310,FIREPROOFING PREP AND LATH - STAIR #22 - 6/D - ALL LEVELS (),Complete,CONSTRUCTION,,SUES-5 - 6-1 - FIZ - GL A -E,INTERIOR STAIR TOWER - STAIR #22 - DE-SCOPED,,CONSTRUCTION,,,,,2025-07-03 07:00,2025-07-03 17:00,2025-06-07 12:00,2025-06-07 13:00,2025-11-20 17:00,2025-11-20 17:00,2025-10-27 09:00,2025-10-27 09:00,0,10,100
CN.SWA5..5320,INSPECT - FIREPROOFING PREP AND LATH - STAIR #22 - 6/D - ALL LEVELS,Complete,CONSTRUCTION,,SUES-5 - 6-1 - FIZ - GL A -E,INTERIOR STAIR TOWER - STAIR #22 - DE-SCOPED,,CONSTRUCTION,,,,,2025-07-05 07:00,2025-07-05 17:00,2025-06-07 07:00,2025-06-07 13:00,2025-11-20 17:00,2025-11-20 17:00,2025-10-27 09:00,2025-10-27 09:00,0,10,100
CN.SWA5..5330,FIREPROOFING COATING - STAIR #22 - 6/D - ALL LEVELS (),Complete,CONSTRUCTION,,SUES-5 - 6-1 - FIZ - GL A -E,INTERIOR STAIR TOWER - STAIR #22 - DE-SCOPED,,CONSTRUCTION,,,,,2025-07-07 07:00,2025-07-08 17:00,2025-06-07 07:00,2025-06-07 13:00,2025-11-20 17:00,2025-11-20 17:00,2025-10-27 09:00,2025-10-27 09:00,0,20,100
CN.SWA5..5340,STAIR PREP FOR COATING - STAIR #22 - 6/D - ALL LEVELS - SIDES,Complete,CONSTRUCTION,,SUES-5 - 6-1 - FIZ - GL A -E,INTERIOR STAIR TOWER - STAIR #22 - DE-SCOPED,,CONSTRUCTION,,,,,2025-07-10 07:00,2025-07-14 17:00,2025-06-26 07:00,2025-06-28 17:00,2025-11-20 17:00,2025-11-20 17:00,2025-10-27 09:00,2025-10-27 09:00,0,40,100
CN.SWA5..5350,INSPECT - STAIR PREP FOR COATING - STAIR #22 - 6/D - ALL LEVELS - SIDES,Complete,CONSTRUCTION,,SUES-5 - 6-1 - FIZ - GL A -E,INTERIOR STAIR TOWER - STAIR #22 - DE-SCOPED,,CONSTRUCTION,,,,,2025-07-15 07:00,2025-07-15 17:00,2025-06-28 07:00,2025-06-28 17:00,2025-11-20 17:00,2025-11-20 17:00,2025-10-27 09:00,2025-10-27 09:00,0,10,100
CN.SWA5..5370,INSTALL - REMAINING DRYWALL EXTERIOR - STAIR #22 -  LVL 4,Complete,CONSTRUCTION,,SUES-5 - 6-1 - FIZ - GL A -E,INTERIOR STAIR TOWER - STAIR #22 - DE-SCOPED,,CONSTRUCTION,,,,,2025-08-18 07:00,2025-08-18 17:00,2025-08-18 07:00,2025-08-18 17:00,2025-11-26 15:00,2025-11-26 15:00,2025-11-15 07:00,2025-11-15 07:00,0,10,100
CN.SWA5..5380,INSPECT - REMAINING DRYWALL EXTERIOR  - STAIR #22 - LVL 4,Complete,CONSTRUCTION,,SUES-5 - 6-1 - FIZ - GL A -E,INTERIOR STAIR TOWER - STAIR #22 - DE-SCOPED,,CONSTRUCTION,,,,,2025-08-13 07:00,2025-08-13 17:00,2025-08-13 07:00,2025-08-13 17:00,2025-11-26 15:00,2025-11-26 15:00,2025-11-15 07:00,2025-11-15 07:00,0,10,100
CN.BB51.ST.2882,INSPECT -  FIREPROOFING - GL 33 - STAIR 5 - K-L(2 SHIFTS),Complete,CONSTRUCTION,,GRIDLINE 33,GL 33 STAIR 5 (WEST),STAIR 5 (WEST) - K-L,CONSTRUCTION,ROLLING PLAINS,,,,2024-10-29 07:00,2024-10-29 17:00,2024-10-29 07:00,2024-10-29 17:00,2025-11-20 17:00,2025-11-20 17:00,2025-11-12 07:00,2025-11-12 07:00,0,10,100
CN.BB51.ST.2892,INSPECT -  EXTERIOR FRAMING &  DRYWALL (1-LAYERS) - GL 33 - STAIR 5 - K-L,Complete,CONSTRUCTION,,GRIDLINE 33,GL 33 STAIR 5 (WEST),STAIR 5 (WEST) - K-L,CONSTRUCTION,BERG,,,,2025-02-03 07:00,2025-02-03 17:00,2025-02-01 07:00,2025-02-01 17:00,2025-11-20 17:00,2025-11-20 17:00,2025-11-12 07:00,2025-11-12 07:00,0,10,100
CN.BB51.ST.2942,SCAFFOLDING MODIFICATION FOR DRYWALL & HANDRAIL INSTALL - GL 33 - STAIR 5 - K-L(2 SHIFTS),Complete,CONSTRUCTION,,GRIDLINE 33,GL 33 STAIR 5 (WEST),STAIR 5 (WEST) - K-L,CONSTRUCTION,BERG,,,,2024-10-31 07:00,2024-11-08 17:00,2024-10-30 07:00,2024-11-05 17:00,2025-11-20 17:00,2025-11-20 17:00,2025-11-19 07:00,2025-11-19 07:00,0,60,100
CN.BB51.ST.2992,INSTALL & INSPECT -  DRYWALL - STAIR 5 INTERIOR SHAFT 2nd-3rd layer - GL 33 - STAIR 5 - K-L(),Complete,CONSTRUCTION,,GRIDLINE 33,GL 33 STAIR 5 (WEST),STAIR 5 (WEST) - K-L,CONSTRUCTION,BERG,,,,2025-08-14 07:00,2025-09-04 17:00,2025-08-14 07:00,2025-09-04 17:00,2025-11-20 17:00,2025-11-20 17:00,2025-11-12 07:00,2025-11-12 07:00,0,150,100
CN.BB51.ST.3042,DEMO SCAFFOLDING & PAINT TOUCH-UP - GL 33 - STAIR 5 - K-L(),Complete,CONSTRUCTION,,GRIDLINE 33,GL 33 STAIR 5 (WEST),STAIR 5 (WEST) - K-L,CONSTRUCTION,CHERRY COATING,,,,2025-10-08 07:00,2025-10-14 17:00,2025-10-08 07:00,2025-10-10 17:00,2025-11-20 17:00,2025-11-20 17:00,2025-12-01 07:00,2025-12-01 07:00,0,50,100
CN.BB51.ST.3052,BERG - EXTERIOR DRYWALL & INSPECT - GL 33 - STAIR 18 - C-C.5,Complete,CONSTRUCTION,,GRIDLINE 33,GL 33 STAIR 18 (EAST),STAIR 18 (EAST) - C-D,CONSTRUCTION,BERG,,,,2025-08-01 07:00,2025-08-05 17:00,2025-07-16 07:00,2025-08-14 07:00,2025-11-20 17:00,2025-11-20 17:00,2025-11-03 07:00,2025-11-03 07:00,0,30,100
CN.BB51.ST.3102,SCAFFOLDING MODIFICATION FOR CLIP - GL 33 - STAIR 18 - C-D - After Stair #4 turnover,Complete,CONSTRUCTION,,GRIDLINE 33,GL 33 STAIR 18 (EAST),STAIR 18 (EAST) - C-D,CONSTRUCTION,BERG,,,,2025-07-16 07:00,2025-07-22 17:00,2025-06-23 07:00,2025-06-27 17:00,2025-11-20 17:00,2025-11-20 17:00,2025-11-12 07:00,2025-11-12 07:00,0,50,100
CN.BB51.ST.3152,BERG - INSTALL & INPECT FRAMING STAIR 18 INTERIOR SHAFT - GL 33 - STAIR 18 - C-D (),Complete,CONSTRUCTION,,GRIDLINE 33,GL 33 STAIR 18 (EAST),STAIR 18 (EAST) - C-D,CONSTRUCTION,BERG,,,,2025-07-18 07:00,2025-07-31 17:00,2025-07-07 07:00,2025-08-11 17:00,2025-11-20 17:00,2025-11-20 17:00,2025-11-12 07:00,2025-11-12 07:00,0,100,100
CN.BB51.ST.3222,DEMO SCAFFOLDING & PAINT TOUCH UP L - GL 33 - STAIR 18 - C-D (),Complete,CONSTRUCTION,,GRIDLINE 33,GL 33 STAIR 18 (EAST),STAIR 18 (EAST) - C-D,CONSTRUCTION,CHERRY COATING,,,,2025-12-31 07:00,2026-01-07 17:00,2025-10-27 07:00,2025-10-31 07:00,2025-11-20 17:00,2025-11-20 17:00,2025-12-02 07:00,2025-12-02 07:00,0,50,100
CN.SWB5.10350,IMPACT - SLAB EDGE NOT FLUSH W/ CLADDING (DESIGN ISSUE RFI #1599/1574) - NW PENTHOUSE,Complete,CONSTRUCTION,,NORTH WEST PENTHOUSE,EXTERIOR SKIN,,CONSTRUCTION,ALPHA,,,,2024-11-18 07:00,2024-11-25 17:00,2024-11-04 07:00,2024-12-20 17:00,2025-11-20 17:00,2025-11-20 17:00,2025-11-17 07:00,2025-11-17 07:00,0,50,100
CN.SWB4.6810,IMPACT - MEP GAS LINE IN THE WAY - GL 27-30 - N LINE [SUP EXTERIOR WALL],Complete,CONSTRUCTION,,SUWN-4 - 27-30,EXTERIOR SKIN,,CONSTRUCTION,ALPHA,INSULATED METAL PANELS,,,2024-10-21 07:00,2024-10-22 17:00,2024-10-14 07:00,2024-10-16 17:00,2025-11-20 17:00,2025-11-20 17:00,2025-08-26 07:00,2025-08-26 07:00,0,20,100
STAIR.2350,IMPACT - PIPERACK IN THE WAY - STAIR #52 - SUW - 30-32-N - LEVEL 02 (EXP REMOVAL 2/18),Complete,CONSTRUCTION,,INTERIOR STAIRS,L2 - SubFab Level,SUW - SUPPORT WEST,CONSTRUCTION,,,,,2024-03-01 07:00,2024-03-05 17:00,2024-03-01 07:00,2025-07-10 17:00,2025-11-20 17:00,2025-11-20 17:00,2025-12-05 17:00,2025-12-05 17:00,0,30,100
STAIR.2360,IMPACT - MATERIAL DELIVERY STAIR #55 - SUW - 30-32-N - LEVEL 02(IN FAB ),Complete,CONSTRUCTION,,INTERIOR STAIRS,L2 - SubFab Level,SUW - SUPPORT WEST,CONSTRUCTION,,,,,2024-10-25 07:00,2024-11-08 17:00,2024-10-25 07:00,2024-12-06 17:00,2025-11-20 17:00,2025-11-20 17:00,2025-12-05 17:00,2025-12-05 17:00,0,90,100
STAIR.2370,"IMPACT - ELEVATION ISSUE NEEDS RE-DESIGN, REFAB & DELIVER-IOCC1374 STAIR #R10 - SUE - 18-C - LEVEL 04(ELEVATION ISSUE )",Complete,CONSTRUCTION,,INTERIOR STAIRS,L4 - SUP Roof - FAB Roof,SUE - SUPPORT EAST,CONSTRUCTION,,,,,2024-09-19 07:00,2024-09-24 17:00,2024-09-19 07:00,2025-04-16 15:00,2025-11-20 17:00,2025-11-20 17:00,2025-12-05 17:00,2025-12-05 17:00,0,40,100
STAIR.2380,IMPACT - REFAB AND DELIVER STAIR #34 - SUW - 26-M.5 - LEVEL U1-01,Complete,CONSTRUCTION,,INTERIOR STAIRS,LU1 - Underground Level,SUW - SUPPORT WEST,CONSTRUCTION,,,,,2024-08-22 07:00,2024-08-29 17:00,2024-07-24 07:00,2024-10-10 17:00,2025-11-20 17:00,2025-11-20 17:00,2025-12-01 07:00,2025-12-01 07:00,0,60,100
STAIR.2390,"IMPACT-CCD528 TO REMOVE & RE INSTALL STAIR #36, 37, 38 DUE TO SECAI INCOMPLETE FLOORING - SUW - 26-L.5 - LEVEL U1-01",Complete,CONSTRUCTION,,INTERIOR STAIRS,LU1 - Underground Level,SUW - SUPPORT WEST,CONSTRUCTION,,,,,2024-10-31 07:00,2024-12-23 17:00,2024-10-31 07:00,2025-08-14 17:00,2025-11-20 17:00,2025-11-20 17:00,2025-12-05 17:00,2025-12-05 17:00,0,300,100
CN.BB51.ST.3232,IMPACT - FIX DBA'S - GL 33 - STAIR 5 - K-L,Complete,CONSTRUCTION,,GRIDLINE 33,GL 33 STAIR 5 (WEST),STAIR 5 (WEST) - K-L,CONSTRUCTION,BERG,,,,2024-11-05 07:00,2024-11-21 17:00,2024-11-05 07:00,2024-11-26 17:00,2025-11-20 17:00,2025-11-20 17:00,2025-11-03 07:00,2025-11-03 07:00,0,100,100
CN.SWA4.7100,IMPACT - EMBED PLATE FAB & INSTALL OFFICE & FIZ - GL N1 LINE -L4,Complete,CONSTRUCTION,,FIZ 2 / SUWS 5  (GL6-1) - GL J - N - DATA CENTER 1,EXTERIOR SKIN,,CONSTRUCTION,KOVACH,INSULATED METAL PANELS,,,2024-07-05 07:00,2024-07-19 17:00,2024-10-15 07:00,2024-11-21 07:00,2025-11-20 17:00,2025-11-20 17:00,2025-12-05 17:00,2025-12-05 17:00,0,100,100
CN.SEB55340,IMPACT - PENDING RFI 1578 - ELEVATOR 19 - PIT TOPPING SLAB - LU1,Complete,CONSTRUCTION,,SUEN-4 - 28-31,,ELEVATOR,CONSTRUCTION,BAKER,,,,2024-10-21 07:00,2024-10-25 17:00,2024-10-14 07:00,2024-11-08 17:00,2025-11-20 17:00,2025-11-20 17:00,2025-12-03 07:00,2025-12-03 07:00,0,40,100
CN.SWB5.10500,IMPACT - FRAMING AND DRYWALL DAMAGE BY SECAI - LVL 2 - ELEVATOR 18,Complete,CONSTRUCTION,,SUWN-5 - 30-33,,ELEVATOR,CONSTRUCTION,BAKER,,,,2024-10-01 07:00,2024-10-01 17:00,2024-10-01 07:00,2025-01-03 17:00,2025-11-20 17:00,2025-11-20 17:00,2025-12-01 07:00,2025-12-01 07:00,0,10,100
CN.SWB5.10510,IMPACT - DOOR OPENING FIX FOR SECAI ELEVATOR EQUIPMENT - MECHANICAL ROOM - FAB110504A - ELEVATOR 5,Active,CONSTRUCTION,,SUWN-5 - 30-33,,ELEVATOR,CONSTRUCTION,BAKER,,,,2024-09-27 07:00,2024-11-08 17:00,2024-10-01 07:00,,2025-11-21 07:00,2025-11-21 17:00,2025-12-05 07:00,2025-12-05 17:00,10,250,0
CN.SWB5.10520,IMPACT - AC UNIT OBSTRUCTION - LVL 2 - ELEVATOR 18,Complete,CONSTRUCTION,,SUWN-5 - 30-33,,ELEVATOR,CONSTRUCTION,BAKER,,,,2024-10-01 07:00,2024-10-10 17:00,2024-10-01 07:00,2024-11-01 17:00,2025-11-20 17:00,2025-11-20 17:00,2025-12-01 07:00,2025-12-01 07:00,0,60,100
CN.SEB55350,IMPACT [S.TIA-147] - NCR 372 - ALPHA PAINT ALL BOLTS - ELEVATOR 19 - ALL LEVELS,Complete,CONSTRUCTION,,SUEN-4 - 28-31,,ELEVATOR,CONSTRUCTION,ALPHA,,,,2024-10-17 07:00,2024-10-31 17:00,2024-10-17 07:00,2024-11-01 17:00,2025-11-20 17:00,2025-11-20 17:00,2025-12-02 07:00,2025-12-02 07:00,0,90,100
CN.SWA4.7110,IMPACT - RFI 1582 Waiting on Response - Cladding btw OFFICE & FIZ - GL 1 - N LINE,Complete,CONSTRUCTION,,FIZ 2 / SUWS 5  (GL6-1) - GL J - N - DATA CENTER 1,EXTERIOR SKIN,,CONSTRUCTION,KOVACH,INSULATED METAL PANELS,,,2024-07-05 07:00,2024-07-19 17:00,2024-10-15 07:00,2024-11-05 07:00,2025-11-20 17:00,2025-11-20 17:00,2025-12-05 17:00,2025-12-05 17:00,0,100,100
CN.SWB5.10530,IMPACT - FIREPROOFING ROLLING PLANES - NW PENTHOUSE - NORTH WALL,Complete,CONSTRUCTION,,NORTH WEST PENTHOUSE,EXTERIOR SKIN,,CONSTRUCTION,,,,,2025-02-24 07:00,2025-02-28 17:00,2025-02-24 07:00,2025-02-28 17:00,2025-11-20 17:00,2025-11-20 17:00,2025-11-25 07:00,2025-11-25 07:00,0,50,100
CN.SWB5.10540,IMPACT - FRAMING BERG - NW PENTHOUSE - NORTH WALL,Complete,CONSTRUCTION,,NORTH WEST PENTHOUSE,EXTERIOR SKIN,,CONSTRUCTION,,,,,2025-03-03 07:00,2025-03-11 17:00,2025-03-03 07:00,2025-03-07 17:00,2025-11-20 17:00,2025-11-20 17:00,2025-11-25 07:00,2025-11-25 07:00,0,70,100
CN.SWB5.10550,IMPACT - GDA WATERPROOFING - NW PENTHOUSE - NORTH WALL,Complete,CONSTRUCTION,,NORTH WEST PENTHOUSE,EXTERIOR SKIN,,CONSTRUCTION,,,,,2025-08-11 07:00,2025-08-12 17:00,2025-08-11 07:00,2025-08-12 17:00,2025-11-20 17:00,2025-11-20 17:00,2025-11-25 07:00,2025-11-25 07:00,0,20,100
CN.BB51.ST.3242,INSTALL & INSPECT  HANDRAIL INSTALL - GL 33 - STAIR 5 - K-L(2 SHIFTS),Complete,CONSTRUCTION,,GRIDLINE 33,GL 33 STAIR 5 (WEST),STAIR 5 (WEST) - K-L,CONSTRUCTION,BERG,,,,2024-11-07 07:00,2024-11-15 17:00,2024-11-07 07:00,2024-11-26 17:00,2025-11-20 17:00,2025-11-20 17:00,2025-11-19 07:00,2025-11-19 07:00,0,60,100
STAIR.2400,"IMPACT - GRATING FAB & DELIVER /RAMP #2B - SUE - 2-C - LEVEL 04 (NEEDS REDETAILING , grating needs to be refab )",Complete,CONSTRUCTION,,INTERIOR STAIRS,L4 - SUP Roof - FAB Roof,SUE - SUPPORT EAST,CONSTRUCTION,,,,,2024-06-24 07:00,2024-07-02 17:00,2024-06-24 07:00,2024-12-19 17:00,2025-11-20 17:00,2025-11-20 17:00,2025-12-05 17:00,2025-12-05 17:00,0,60,100
STAIR.2410,"IMPACT - LANDING DELIVERY STAIR/RAMP #R11, RAMP5C, RAMP 2B - SUE - 5-B - LEVEL 04(Pending Landing, pending delivery )",Complete,CONSTRUCTION,,INTERIOR STAIRS,L4 - SUP Roof - FAB Roof,SUE - SUPPORT EAST,CONSTRUCTION,,,,,2024-10-17 07:00,2024-10-28 17:00,2024-10-17 07:00,2024-12-20 10:00,2025-11-20 17:00,2025-11-20 17:00,2025-12-05 17:00,2025-12-05 17:00,0,70,100
CN.SWB1.5340,IMPACT - SECAI MEP LEAVE OUTS (LOADING DECK ) GL 20-20.5 - N LINE [SUP EXTERIOR WALL] -(new committed10/30 ),Complete,CONSTRUCTION,,SUWN-1 - 18-21,EXTERIOR SKIN,,CONSTRUCTION,PATRIOT,INSULATED METAL PANELS,,,2024-05-24 07:00,2024-06-11 17:00,2023-11-20 07:00,2024-10-30 17:00,2025-11-20 17:00,2025-11-20 17:00,2025-12-05 17:00,2025-12-05 17:00,0,100,100
CN.SWB1.5350,INSTALL CLADDING STEEL (LOADING DECK ) GL 20-20.5 - N LINE [SUP EXTERIOR WALL],Complete,CONSTRUCTION,,SUWN-1 - 18-21,EXTERIOR SKIN,,CONSTRUCTION,PATRIOT,INSULATED METAL PANELS,,,2024-11-11 07:00,2024-11-19 17:00,2024-11-11 07:00,2024-11-20 17:00,2025-11-20 17:00,2025-11-20 17:00,2025-12-05 17:00,2025-12-05 17:00,0,60,100
CN.SWB1.5360,PAINT BOLTS (LOADING DECK ) GL 20-21 - N LINE [SUP EXTERIOR WALL] -(new committed10/30 ),Complete,CONSTRUCTION,,SUWN-1 - 18-21,EXTERIOR SKIN,,CONSTRUCTION,PATRIOT,INSULATED METAL PANELS,,,2024-11-25 07:00,2024-12-02 17:00,2024-11-21 07:00,2024-11-25 17:00,2025-11-20 17:00,2025-11-20 17:00,2025-12-05 17:00,2025-12-05 17:00,0,40,100
CN.SWB1.5370,INSTALL INSULATED METAL PANELS (LOADING DECK ) GL 20-21 - N LINE [SUP EXTERIOR WALL],Complete,CONSTRUCTION,,SUWN-1 - 18-21,EXTERIOR SKIN,,CONSTRUCTION,PATRIOT,INSULATED METAL PANELS,,,2024-11-25 07:00,2024-11-27 17:00,2024-11-26 07:00,2024-12-06 07:00,2025-11-20 17:00,2025-11-20 17:00,2025-12-05 17:00,2025-12-05 17:00,0,30,100
CN.SWB1.5380,INSTALL REMAINING CLADDING STEEL - GL 18.5-20 - N LINE(LOADING PLATFORM ) [SUP EXTERIOR WALL],Complete,CONSTRUCTION,,SUWN-1 - 18-21,EXTERIOR SKIN,,CONSTRUCTION,ALPHA,INSULATED METAL PANELS,,,2024-10-21 07:00,2024-10-24 17:00,2024-10-19 07:00,2024-11-06 17:00,2025-11-20 17:00,2025-11-20 17:00,2025-11-21 07:00,2025-11-21 07:00,0,30,100
CN.SWB1.5390,IMPACT - SECAI MEP LEAVE OUTS (SUPER DECK ) GL -18.5-20 - N LINE [SUP EXTERIOR WALL],Complete,CONSTRUCTION,,SUWN-1 - 18-21,EXTERIOR SKIN,,CONSTRUCTION,PATRIOT,INSULATED METAL PANELS,,,2024-05-24 07:00,2024-06-11 17:00,2023-11-20 07:00,2024-10-10 16:00,2025-11-20 17:00,2025-11-20 17:00,2025-11-21 07:00,2025-11-21 07:00,0,100,100
CN.SWB5.10570,INSTALL WATERPROOFING - NE PENTHOUSE - NORTH WALL,Complete,CONSTRUCTION,,NORTH EAST PENTHOUSE,EXTERIOR SKIN,,CONSTRUCTION,,,,,2024-11-12 07:00,2024-11-14 17:00,2024-11-25 07:00,2024-11-27 17:00,2025-11-20 17:00,2025-11-20 17:00,2025-11-17 07:00,2025-11-17 07:00,0,20,100
MS.ALL.TU.1210,COMPLETE WAFFLE NMB SLEEVE REPAIR & COATING - FAB L3,Complete,CONTRACTOR MILESTONES,,Key Milestones,Milestones,,MILESTONE,,,,,2025-02-10 17:00,2025-02-10 17:00,2025-02-10 17:00,2025-02-10 17:00,2025-11-20 17:00,2025-11-20 17:00,2025-12-05 17:00,2025-12-05 17:00,0,0,100
CN.SEA5.10810,IMPACT - SECAI TO PROVIDE EGRESS TO WORK (MEP work on Airlock pipe insulators)- GL 22-31 - A LINE - L4 ROOF,Complete,CONSTRUCTION,,SUEN-4 - 28-31,L4 - SUP Roof - FAB Roof,,CONSTRUCTION,,,,,2024-10-04 07:00,2024-10-10 17:00,2024-08-09 07:00,2024-12-11 17:00,2025-11-20 17:00,2025-11-20 17:00,2025-12-03 07:00,2025-12-03 07:00,0,40,100
CN.SEA5.10820,IMPACT - SECAI TO PROVIDE EGRESS TO WORK (MEP work on Airlock pipe insulators)- GL 13-22 - A LINE - L4 ROOF,Complete,CONSTRUCTION,,SUEN-1 - 19-22,L4 - SUP Roof - FAB Roof,,CONSTRUCTION,,,,,2024-10-04 07:00,2024-10-10 17:00,2024-08-09 07:00,2024-12-11 17:00,2025-11-20 17:00,2025-11-20 17:00,2025-12-05 17:00,2025-12-05 17:00,0,40,100
CN.SEB1.10410,IMPACT - CCD 396 - INSTALL VOC ROOM CLADDING SUPPORT STEEL - GL 19.5-18.5 - L LINE (DS AREA),Complete,CONSTRUCTION,,SUWS-1 - 18-15,EXTERIOR SKIN,,CONSTRUCTION,ALPHA,INSULATED METAL PANELS,,,2024-10-31 07:00,2024-11-05 17:00,2024-10-31 07:00,2024-11-07 17:00,2025-11-20 17:00,2025-11-20 17:00,2025-12-05 07:00,2025-12-05 07:00,0,40,100
CN.SWA4.7120,IMPACT - INSTALL CLADDING & PAINT BOLTS & STEEL -N1 - (OFFICE BLDG RETURN),Complete,CONSTRUCTION,,FIZ 2 / SUWS 5  (GL6-1) - GL J - N - DATA CENTER 1,EXTERIOR SKIN,,CONSTRUCTION,KOVACH,INSULATED METAL PANELS,,,2024-12-09 07:00,2024-12-13 17:00,2024-12-09 07:00,2025-01-28 17:00,2025-11-20 17:00,2025-11-20 17:00,2025-12-05 17:00,2025-12-05 17:00,0,40,100
CN.SWA4.7130,IMPACT - INSTALL INSULATED METAL PANELS- N1 (OFFICE BLDG RETURN),Complete,CONSTRUCTION,,FIZ 2 / SUWS 5  (GL6-1) - GL J - N - DATA CENTER 1,EXTERIOR SKIN,,CONSTRUCTION,KOVACH,INSULATED METAL PANELS,,,2025-05-09 07:00,2025-05-14 17:00,2025-04-26 07:00,2025-05-02 17:00,2025-11-20 17:00,2025-11-20 17:00,2025-12-05 17:00,2025-12-05 17:00,0,40,100
CN.SWA5..5620,IMPACT - SECAI MEP SCAFFOLDING IN THE WAY L2&L3 - STAIR #20 - 19/D - ALL LEVELS,Complete,CONSTRUCTION,,SUES-1 - 19-16,INTERIOR STAIR TOWER - STAIR #20,,CONSTRUCTION,,,,,2024-11-05 07:00,2024-11-05 17:00,2024-11-05 07:00,2025-02-17 17:00,2025-11-20 17:00,2025-11-20 17:00,2025-11-24 07:00,2025-11-24 07:00,0,10,100
CN.AB.AR.7790,IMPACT - MEP MATERIAL IN THE WAY L3 &L2 - ELEVATOR 01,Complete,CONSTRUCTION,,FIZ 2 / SUWS 5  (GL6-1) - GL J - N - DATA CENTER 1,,ELEVATOR,CONSTRUCTION,BAKER,,,,2024-09-16 07:00,2024-10-18 17:00,2024-10-21 07:00,2024-12-09 17:00,2025-11-20 17:00,2025-11-20 17:00,2025-12-01 07:00,2025-12-01 07:00,0,200,100
STAIR.2420,"IMPACT - STAIR CURB CONFLICT WITH STRINGER STAIR #28&29 -NEED IOCC 1253APPROVED, FAB & DELIVER - SUW - 24-M - LEVEL UL",Complete,CONSTRUCTION,,INTERIOR STAIRS,LU1 - Underground Level,SUW - SUPPORT WEST,CONSTRUCTION,,,,,2024-12-02 07:00,2025-01-20 17:00,2024-11-19 07:00,2025-08-05 17:00,2025-11-20 17:00,2025-11-20 17:00,2025-12-01 07:00,2025-12-01 07:00,0,300,100
STAIR.2430,IMPACT - RFI-1614 DESIGN CHANGE CLARIFICATION FOR STAIR #91 - SUE - 24-C - LEVEL 03,Complete,CONSTRUCTION,,INTERIOR STAIRS,L3 / Waffle Slab Level,SUE - SUPPORT EAST,CONSTRUCTION,,,,,2024-12-02 07:00,2025-01-20 17:00,2024-11-12 07:00,2024-12-20 17:00,2025-11-20 17:00,2025-11-20 17:00,2025-11-20 07:00,2025-11-20 07:00,0,300,100
STAIR.2440,IMPACT - FAB COLUMN EXTENSION FOR ELEVATION ISSUE- IOCC STAIR #R30 - SUE - 31-A.5 - LEVEL 04,Complete,CONSTRUCTION,,INTERIOR STAIRS,L4 - SUP Roof - FAB Roof,SUE - SUPPORT EAST,CONSTRUCTION,,,,,2024-09-06 07:00,2024-09-16 17:00,2024-09-03 07:00,2025-04-16 17:00,2025-11-20 17:00,2025-11-20 17:00,2025-11-06 07:00,2025-11-06 07:00,0,60,100
STAIR.2450,"IMPACT - GRATING ANGLE DELIVERY #62,72, 73 & 76 - SUW - 3-K-L - LEVEL 04",Complete,CONSTRUCTION,,INTERIOR STAIRS,L4 - SUP Roof - FAB Roof,SUW - SUPPORT WEST,CONSTRUCTION,,,,,2024-11-18 07:00,2024-11-22 17:00,2024-11-13 07:00,2024-11-25 17:00,2025-11-20 17:00,2025-11-20 17:00,2025-12-05 17:00,2025-12-05 17:00,0,40,100
STAIR.2460,"IMPACT - GRATING ANGLE DELIVERY #63,64, 65, 66- SUW - LEVEL 04",Complete,CONSTRUCTION,,INTERIOR STAIRS,L4 - SUP Roof - FAB Roof,SUW - SUPPORT WEST,CONSTRUCTION,,,,,2024-11-18 07:00,2024-11-22 17:00,2024-11-13 07:00,2024-12-20 17:00,2025-11-20 17:00,2025-11-20 17:00,2025-11-19 17:00,2025-11-19 17:00,0,40,100
CN.SWA4.7140,IMPACT - STARCON CRANE IN THE WAY -N1 - (OFFICE BLDG RETURN),Complete,CONSTRUCTION,,FIZ 2 / SUWS 5  (GL6-1) - GL J - N - DATA CENTER 1,EXTERIOR SKIN,,CONSTRUCTION,KOVACH,INSULATED METAL PANELS,,,2024-11-25 07:00,2024-12-02 17:00,2024-11-16 07:00,2024-11-22 17:00,2025-11-20 17:00,2025-11-20 17:00,2025-12-05 17:00,2025-12-05 17:00,0,40,100
CN.SWA5..5680,IMPACT - SECAI MEP SCAFFOLDING IN THE WAY L1&l2 - STAIR #21 - 19/D - ALL LEVELS,Complete,CONSTRUCTION,,SUES-1 - 19-16,INTERIOR STAIR TOWER - STAIR #21 (CLEAN ROOM),,CONSTRUCTION,,,,,2024-11-05 07:00,2024-11-05 17:00,2024-11-05 07:00,2025-02-17 17:00,2025-11-20 17:00,2025-11-20 17:00,2025-11-12 07:00,2025-11-12 07:00,0,10,100
INT.DH.2210,IMPACT - SECAI returned the submittal for the doors saying to revise to the new DRB.,Complete,CONSTRUCTION,,Doors & Hardware - INTERIOR,DOORS & HARDWARE INTERIOR,"Int. Doors Filter 1, 2, 3",PRE - CON / BUYOUT / IMPACTS,DOORS AND HARDWARE,,,,2025-01-13 07:00,2025-01-13 17:00,2024-07-08 07:00,2024-07-08 17:00,2025-11-20 17:00,2025-11-20 17:00,2025-11-13 07:00,2025-11-13 07:00,0,10,100
INT.DH.2220,IMPACT - Meeting: SECAI stated they wanted to have 2 weeks for design develop. & new door schedule would be issued,Complete,CONSTRUCTION,,Doors & Hardware - INTERIOR,DOORS & HARDWARE INTERIOR,"Int. Doors Filter 1, 2, 3",PRE - CON / BUYOUT / IMPACTS,DOORS AND HARDWARE,,,,2025-01-13 07:00,2025-01-14 17:00,2024-07-09 07:00,2024-07-10 17:00,2025-11-20 17:00,2025-11-20 17:00,2025-11-13 07:00,2025-11-13 07:00,0,20,100
INT.DH.2230,IMPACT - Notice of Delay of Door Procurement was sent to SECAI,Complete,CONSTRUCTION,,Doors & Hardware - INTERIOR,DOORS & HARDWARE INTERIOR,"Int. Doors Filter 1, 2, 3",PRE - CON / BUYOUT / IMPACTS,DOORS AND HARDWARE,,,,2025-01-13 07:00,2025-01-14 17:00,2024-07-11 07:00,2024-07-12 17:00,2025-11-20 17:00,2025-11-20 17:00,2025-11-13 07:00,2025-11-13 07:00,0,20,100
INT.DH.2240,IMPACT - Yates was provided a Door sch. that we were to complete the submitt. based on and for C&B to review.,Complete,CONSTRUCTION,,Doors & Hardware - INTERIOR,DOORS & HARDWARE INTERIOR,"Int. Doors Filter 1, 2, 3",PRE - CON / BUYOUT / IMPACTS,DOORS AND HARDWARE,,,,2025-01-13 07:00,2025-01-27 17:00,2024-07-15 07:00,2024-07-26 17:00,2025-11-20 17:00,2025-11-20 17:00,2025-11-13 07:00,2025-11-13 07:00,0,110,100
INT.DH.2250,IMPACT - The review of all doors was completed by both C&B and Jacobs/SAMOO,Complete,CONSTRUCTION,,Doors & Hardware - INTERIOR,DOORS & HARDWARE INTERIOR,"Int. Doors Filter 1, 2, 3",PRE - CON / BUYOUT / IMPACTS,DOORS AND HARDWARE,,,,2025-01-13 07:00,2025-02-14 17:00,2024-07-29 07:00,2024-08-28 17:00,2025-11-20 17:00,2025-11-20 17:00,2025-11-13 07:00,2025-11-13 07:00,0,250,100
INT.DH.2260,"IMPACT - Interior Door, Frame and Hardware Product Data - PACKAGE 1 (REV 0) Submitted - FILTER 1",Complete,CONSTRUCTION,,Doors & Hardware - INTERIOR,DOORS & HARDWARE INTERIOR,"Int. Doors Filter 1, 2, 3",PRE - CON / BUYOUT / IMPACTS,DOORS AND HARDWARE,,,,2025-01-13 07:00,2025-01-14 17:00,2024-08-29 07:00,2024-08-30 17:00,2025-11-20 17:00,2025-11-20 17:00,2025-11-13 07:00,2025-11-13 07:00,0,20,100
INT.DH.2270,"IMPACT - Int. Door, Frame & Hardware Product Data - Resubm. on meetings with Jacobs/SAMOO PACK 1 (REV 1) - FILTER 1",Complete,CONSTRUCTION,,Doors & Hardware - INTERIOR,DOORS & HARDWARE INTERIOR,"Int. Doors Filter 1, 2, 3",PRE - CON / BUYOUT / IMPACTS,DOORS AND HARDWARE,,,,2025-01-13 07:00,2025-01-13 17:00,2024-09-02 07:00,2024-09-05 17:00,2025-11-20 17:00,2025-11-20 17:00,2025-11-13 07:00,2025-11-13 07:00,0,10,100
INT.DH.2280,"IMPACT - Int. Door, Frame & Hardware Product Data - Resubm. Revise  Jacobs Review PACK 1 (REV 1) - FILTER 1",Complete,CONSTRUCTION,,Doors & Hardware - INTERIOR,DOORS & HARDWARE INTERIOR,"Int. Doors Filter 1, 2, 3",PRE - CON / BUYOUT / IMPACTS,DOORS AND HARDWARE,,,,2025-01-13 07:00,2025-01-13 17:00,2024-09-09 07:00,2024-09-09 17:00,2025-11-20 17:00,2025-11-20 17:00,2025-11-13 07:00,2025-11-13 07:00,0,10,100
INT.DH.2290,"IMPACT - Interior Door, Frame and Hardware Product Data  Submitted - Filter 3",Complete,CONSTRUCTION,,Doors & Hardware - INTERIOR,DOORS & HARDWARE INTERIOR,"Int. Doors Filter 1, 2, 3",PRE - CON / BUYOUT / IMPACTS,DOORS AND HARDWARE,,,,2025-01-13 07:00,2025-01-16 17:00,2024-09-06 07:00,2024-09-11 17:00,2025-11-20 17:00,2025-11-20 17:00,2025-11-13 07:00,2025-11-13 07:00,0,40,100
INT.DH.2300,"IMPACT - Interior Door, Frame and Hardware Product Data  Submitted - Filter 2",Complete,CONSTRUCTION,,Doors & Hardware - INTERIOR,DOORS & HARDWARE INTERIOR,"Int. Doors Filter 1, 2, 3",PRE - CON / BUYOUT / IMPACTS,DOORS AND HARDWARE,,,,2025-01-13 07:00,2025-01-16 17:00,2024-09-06 07:00,2024-09-11 17:00,2025-11-20 17:00,2025-11-20 17:00,2025-11-13 07:00,2025-11-13 07:00,0,40,100
INT.DH.2310,"IMPACT - Int. Door, Frame and Hardware Product Data)  Resubmit. - PACKAGE 1 (REV 3 - FILTER 1",Complete,CONSTRUCTION,,Doors & Hardware - INTERIOR,DOORS & HARDWARE INTERIOR,"Int. Doors Filter 1, 2, 3",PRE - CON / BUYOUT / IMPACTS,DOORS AND HARDWARE,,,,2025-01-13 07:00,2025-01-15 17:00,2024-09-10 07:00,2024-09-13 17:00,2025-11-20 17:00,2025-11-20 17:00,2025-11-13 07:00,2025-11-13 07:00,0,30,100
INT.DH.2320,"IMPACT - Interior Door, Frame and Hardware Product Data - Remaining Doors REV 0 - Submitted",Complete,CONSTRUCTION,,Doors & Hardware - INTERIOR,DOORS & HARDWARE INTERIOR,"Int. Doors Filter 1, 2, 3",PRE - CON / BUYOUT / IMPACTS,DOORS AND HARDWARE,,,,2025-01-13 07:00,2025-01-17 17:00,2024-09-12 07:00,2024-09-17 17:00,2025-11-20 17:00,2025-11-20 17:00,2025-11-13 07:00,2025-11-13 07:00,0,50,100
INT.DH.2330,"IMPACT - CCD #473 - Cook and Boardman - HM Doors, Frames, and Hardware for Filters 1-3 was submitted to SECAI",Complete,CONSTRUCTION,,Doors & Hardware - INTERIOR,DOORS & HARDWARE INTERIOR,"Int. Doors Filter 1, 2, 3",PRE - CON / BUYOUT / IMPACTS,DOORS AND HARDWARE,,,,2025-01-13 07:00,2025-01-15 17:00,2024-09-16 07:00,2024-09-19 17:00,2025-11-20 17:00,2025-11-20 17:00,2025-11-13 07:00,2025-11-13 07:00,0,30,100
INT.DH.2340,"IMPACT - Int. Door, Frame & Hardware Product Data - Remaining Doors REV 0  Returned Revise and Resubmit",Complete,CONSTRUCTION,,Doors & Hardware - INTERIOR,DOORS & HARDWARE INTERIOR,"Int. Doors Filter 1, 2, 3",PRE - CON / BUYOUT / IMPACTS,DOORS AND HARDWARE,,,,2025-01-13 07:00,2025-01-20 17:00,2024-09-18 07:00,2024-09-26 17:00,2025-11-20 17:00,2025-11-20 17:00,2025-11-13 07:00,2025-11-13 07:00,0,60,100
INT.DH.2350,"IMPACT - Int. Door, Frame and Hardware Product Data  Returned Approved as Noted - PACKAGE 1 (REV 3) - FILTER 1",Complete,CONSTRUCTION,,Doors & Hardware - INTERIOR,DOORS & HARDWARE INTERIOR,"Int. Doors Filter 1, 2, 3",PRE - CON / BUYOUT / IMPACTS,DOORS AND HARDWARE,,,,2025-01-13 07:00,2025-01-29 17:00,2024-09-16 07:00,2024-10-03 17:00,2025-11-20 17:00,2025-11-20 17:00,2025-11-13 07:00,2025-11-13 07:00,0,130,100
INT.DH.2360,"IMPACT - Int. Door, Frame and Hardware Product Data - Remaining Doors REV 1  Submitted",Complete,CONSTRUCTION,,Doors & Hardware - INTERIOR,DOORS & HARDWARE INTERIOR,"Int. Doors Filter 1, 2, 3",PRE - CON / BUYOUT / IMPACTS,DOORS AND HARDWARE,,,,2025-01-13 07:00,2025-01-16 17:00,2024-09-27 07:00,2024-10-01 17:00,2025-11-20 17:00,2025-11-20 17:00,2025-11-13 07:00,2025-11-13 07:00,0,40,100
INT.DH.2370,"IMPACT - Int. Door, Frame and Hardware Product Data  Returned Approved as Noted - Filter 3",Complete,CONSTRUCTION,,Doors & Hardware - INTERIOR,DOORS & HARDWARE INTERIOR,"Int. Doors Filter 1, 2, 3",PRE - CON / BUYOUT / IMPACTS,DOORS AND HARDWARE,,,,2025-01-13 07:00,2025-02-04 17:00,2024-09-12 07:00,2024-10-04 17:00,2025-11-20 17:00,2025-11-20 17:00,2025-11-13 07:00,2025-11-13 07:00,0,170,100
INT.DH.2380,"IMPACT - Int. Door, Frame and Hardware Product Data  Returned Approved as Noted - Filter 2",Complete,CONSTRUCTION,,Doors & Hardware - INTERIOR,DOORS & HARDWARE INTERIOR,"Int. Doors Filter 1, 2, 3",PRE - CON / BUYOUT / IMPACTS,DOORS AND HARDWARE,,,,2025-01-13 07:00,2025-02-04 17:00,2024-09-12 07:00,2024-10-04 17:00,2025-11-20 17:00,2025-11-20 17:00,2025-11-13 07:00,2025-11-13 07:00,0,170,100
INT.DH.2390,"IMPACT - Door, Frame and Hardware Product Data - Remaining Doors REV 1  Returned Approved as Noted",Complete,CONSTRUCTION,,Doors & Hardware - INTERIOR,DOORS & HARDWARE INTERIOR,"Int. Doors Filter 1, 2, 3",PRE - CON / BUYOUT / IMPACTS,DOORS AND HARDWARE,,,,2025-01-13 07:00,2025-01-23 17:00,2024-10-02 07:00,2024-10-14 17:00,2025-11-20 17:00,2025-11-20 17:00,2025-11-13 07:00,2025-11-13 07:00,0,90,100
INT.DH.2400,IMPACT - Submit. clarif. sent to SECAI. Prev. appr. items were now unapp. in the latest returned submit (Int. frames),Complete,CONSTRUCTION,,Doors & Hardware - INTERIOR,DOORS & HARDWARE INTERIOR,"Int. Doors Filter 1, 2, 3",PRE - CON / BUYOUT / IMPACTS,DOORS AND HARDWARE,,,,2025-01-13 07:00,2025-01-13 17:00,2024-10-18 07:00,2024-10-30 17:00,2025-11-20 17:00,2025-11-20 17:00,2025-11-13 07:00,2025-11-13 07:00,0,10,100
INT.DH.2420,"IMPACT - CCD #473 - Cook and Boardman - HM Doors, Frames, and Hardware for Filters 1-3 was executed",Complete,CONSTRUCTION,,Doors & Hardware - INTERIOR,DOORS & HARDWARE INTERIOR,"Int. Doors Filter 1, 2, 3",PRE - CON / BUYOUT / IMPACTS,DOORS AND HARDWARE,,,,2025-01-13 07:00,2025-02-26 17:00,2024-09-20 07:00,2024-11-04 17:00,2025-11-20 17:00,2025-11-20 17:00,2025-11-13 07:00,2025-11-13 07:00,0,330,100
INT.DH.2430,IMPACT - Yates meeting with SECAI & SAS to review door mockup & inst.; Yates received app. to begin frame inst,Complete,CONSTRUCTION,,Doors & Hardware - INTERIOR,DOORS & HARDWARE INTERIOR,"Int. Doors Filter 1, 2, 3",PRE - CON / BUYOUT / IMPACTS,DOORS AND HARDWARE,,,,2025-01-13 07:00,2025-01-13 17:00,2024-11-14 07:00,2024-11-14 17:00,2025-11-20 17:00,2025-11-20 17:00,2025-11-13 07:00,2025-11-13 07:00,0,10,100
INT.DH.2440,"IMPACT - CCD #538 - Cook & Boardman - HM Doors, Frames, & HW for remaining doors submitted to SECAI",Complete,CONSTRUCTION,,Doors & Hardware - INTERIOR,DOORS & HARDWARE INTERIOR,"Int. Doors Filter 1, 2, 3",PRE - CON / BUYOUT / IMPACTS,DOORS AND HARDWARE,,,,2025-01-13 07:00,2025-01-30 17:00,2024-11-01 07:00,2024-11-19 17:00,2025-11-20 17:00,2025-11-20 17:00,2025-11-13 07:00,2025-11-13 07:00,0,140,100
INT.DH.2450,"IMPACT - CCD #538 - Cook and Boardman - HM Doors, Frames, and Hardware for remaining doors was executed",Complete,CONSTRUCTION,,Doors & Hardware - INTERIOR,DOORS & HARDWARE INTERIOR,"Int. Doors Filter 1, 2, 3",PRE - CON / BUYOUT / IMPACTS,DOORS AND HARDWARE,,,,2025-01-13 07:00,2025-03-21 17:00,2024-11-26 07:00,2024-11-26 17:00,2025-11-20 17:00,2025-11-20 17:00,2025-11-13 07:00,2025-11-13 07:00,0,500,100
INT.DH.2460,IMPACT - Procurement - Damaged Doors,Complete,CONSTRUCTION,,Doors & Hardware - INTERIOR,DOORS & HARDWARE INTERIOR,"Int. Doors Filter 1, 2, 3",PRE - CON / BUYOUT / IMPACTS,DOORS AND HARDWARE,,,,2025-01-13 07:00,2025-04-25 17:00,2024-10-25 07:00,2025-05-05 07:00,2025-11-20 17:00,2025-11-20 17:00,2025-11-17 10:00,2025-11-17 10:00,0,750,100
INT.DH.2470,IMPACT - Procurement - Replacement Doors in Filters 1-3 - ALL DOOR FRAMES TO BE ONSITE 2/20,Complete,CONSTRUCTION,,Doors & Hardware - INTERIOR,DOORS & HARDWARE INTERIOR,"Int. Doors Filter 1, 2, 3",PRE - CON / BUYOUT / IMPACTS,DOORS AND HARDWARE,,,,2025-01-13 07:00,2025-04-25 17:00,2024-11-11 07:00,2025-02-05 07:00,2025-11-20 17:00,2025-11-20 17:00,2025-11-21 07:00,2025-11-21 07:00,0,750,100
INT.DH.2480,IMPACT - Procurement - Replacement Doors (Remaining Doors) - ALL DOORS TO BE ONSITE 3/26,Complete,CONSTRUCTION,,Doors & Hardware - INTERIOR,L1 - Fndn Slab,"Int. Doors Filter 1, 2, 3",CONSTRUCTION,DOORS AND HARDWARE,,,,2025-01-13 07:00,2025-04-25 17:00,2024-12-06 07:00,2025-03-26 07:00,2025-11-20 17:00,2025-11-20 17:00,2025-11-13 07:00,2025-11-13 07:00,0,750,100
INT.DH.2490,IMPACT - DOOR COATING MOCK UP APPROVAL,Complete,CONSTRUCTION,,Doors & Hardware - INTERIOR,DOORS & HARDWARE INTERIOR,"Int. Doors Filter 1, 2, 3",PRE - CON / BUYOUT / IMPACTS,DOORS AND HARDWARE,,,,2025-01-13 07:00,2025-04-25 17:00,2024-10-25 07:00,2025-01-17 07:00,2025-11-20 17:00,2025-11-20 17:00,2025-11-10 07:00,2025-11-10 07:00,0,750,100
CN.SWB5.10390,IMPACT - MC DEAN CABLE TRAY IN THE WAY OF WALL - DUCTSHAFT/SE PENTHOUSE,Complete,CONSTRUCTION,,SOUTH EAST PENTHOUSE,L4 - SUP Roof - FAB Roof,,CONSTRUCTION,,,,,2024-11-22 07:00,2024-11-27 17:00,2024-11-22 07:00,2024-12-26 17:00,2025-11-20 17:00,2025-11-20 17:00,2025-12-05 17:00,2025-12-05 17:00,0,40,100
CN.SWB5.10620,REMAINING DRYWALL & FINISHES - DUCTSHAFTS/SE PENTHOUSE,Complete,CONSTRUCTION,,SOUTH EAST PENTHOUSE,L4 - SUP Roof - FAB Roof,,CONSTRUCTION,,,,,2024-11-22 07:00,2024-11-27 17:00,2024-11-22 07:00,2025-01-06 17:00,2025-11-20 17:00,2025-11-20 17:00,2025-12-05 17:00,2025-12-05 17:00,0,40,100
CN.SWB5.10630,IMPACT - MEP TRADES INSTALLING PIPE RACK STEEL - DUCTSHAFT/SE PENTHOUSE,Complete,CONSTRUCTION,,SOUTH EAST PENTHOUSE,L4 - SUP Roof - FAB Roof,,CONSTRUCTION,,,,,2024-11-22 07:00,2024-11-27 17:00,2024-11-22 07:00,2024-12-26 17:00,2025-11-20 17:00,2025-11-20 17:00,2025-12-05 17:00,2025-12-05 17:00,0,40,100
CN.SWB5.2660,IMPACT - MC DEAN ELECTRICAL BOXES & MATERIAL IN THE WAY- ELEVATOR HALL,Active,CONSTRUCTION,,SOUTH WEST PENTHOUSE,L4 - SUP Roof - FAB Roof,,CONSTRUCTION,,,,,2024-12-02 07:00,2024-12-06 17:00,2024-11-22 07:00,,2025-11-21 07:00,2025-11-21 17:00,2025-12-01 07:00,2025-12-01 17:00,10,40,0
CN.SWB5.10660,REMAINING TAPE & FINISH - ELEVATOR HALL/SW PENTHOUSE,Active,CONSTRUCTION,,SOUTH WEST PENTHOUSE,L4 - SUP Roof - FAB Roof,,CONSTRUCTION,,,,,2025-01-06 07:00,2025-01-09 17:00,2025-01-06 07:00,,2025-12-02 07:00,2025-12-02 07:00,2025-12-05 17:00,2025-12-05 17:00,0,40,0
CN.BB51.ST.3252,IMPACT - REVISE RFI 1628 POST INSTALL DBA'S - GL 33 - STAIR 5 - K-L,Complete,CONSTRUCTION,,GRIDLINE 33,GL 33 STAIR 5 (WEST),STAIR 5 (WEST) - K-L,CONSTRUCTION,BERG,,,,2024-11-05 07:00,2024-11-21 17:00,2024-11-27 07:00,2024-12-19 17:00,2025-11-20 17:00,2025-11-20 17:00,2025-11-03 07:00,2025-11-03 07:00,0,100,100
CN.BB51.ST.3262,IMPACT - DBA FIX - NORTH FACE - GL 33 - STAIR 5 - K-L,Complete,CONSTRUCTION,,GRIDLINE 33,GL 33 STAIR 5 (WEST),STAIR 5 (WEST) - K-L,CONSTRUCTION,BERG,,,,2025-02-10 07:00,2025-02-12 17:00,2025-02-10 07:00,2025-05-13 17:00,2025-11-20 17:00,2025-11-20 17:00,2025-11-03 07:00,2025-11-03 07:00,0,30,100
CN.SWB5.10670,IMPACT - TARPS NOT REMOVED - NW PENTHOUSE - NORTH WALL,Complete,CONSTRUCTION,,NORTH WEST PENTHOUSE,EXTERIOR SKIN,,CONSTRUCTION,,,,,2024-10-21 07:00,2024-10-29 17:00,2024-12-02 07:00,2024-12-14 17:00,2025-11-20 17:00,2025-11-20 17:00,2025-11-25 07:00,2025-11-25 07:00,0,60,100
CN.AB.AR.2890,IMPACT - NEED SCAFFOLD TO FINISH DUE TO PIPE RACK IN THE WAY GL 12 - SWA2 - GL 12-15 - L-N - L1 - SECAI TOOK OVER ACCE,Complete,CONSTRUCTION,,SUWS-2 - 15-12,L1 - Fndn Slab,WASTE WATER TANK RM,CONSTRUCTION,,,,,2024-04-01 07:00,2024-04-05 17:00,2024-04-01 07:00,2025-06-10 07:00,2025-11-20 17:00,2025-11-20 17:00,2025-12-05 17:00,2025-12-05 17:00,0,50,100
CN.AB.AR.7880,FINISH DRYWALL AND FINISHES GL 12 - GL 12-15 - L-N - L1(need scaffold) - SECAI TOOK OVER ACCELERATION,Complete,CONSTRUCTION,,SUWS-2 - 15-12,L1 - Fndn Slab,WASTE WATER TANK RM,CONSTRUCTION,,,,,2025-06-10 07:00,2025-06-10 07:00,2025-06-10 07:00,2025-06-10 07:00,2025-11-20 17:00,2025-11-20 17:00,2025-12-05 17:00,2025-12-05 17:00,0,0,100
CN.SWB5.10700,IMPACT-RFI 1574- REVISE AND APPROVE - NW PENTHOUSE,Complete,CONSTRUCTION,,NORTH WEST PENTHOUSE,EXTERIOR SKIN,,CONSTRUCTION,ALPHA,,,,2024-12-23 07:00,2024-12-26 17:00,2024-12-23 07:00,2025-01-29 17:00,2025-11-20 17:00,2025-11-20 17:00,2025-11-17 07:00,2025-11-17 07:00,0,20,100
CN.SWB4.3220,IMPACT - MEP MATERIALBLOCKING WALL REAPIR - GL M-N/30,Complete,CONSTRUCTION,,SUWN-4 - 27-30,L2 - SubFab Level,BATT RM 3,CONSTRUCTION,,,,,2024-04-15 07:00,2024-04-18 17:00,2024-04-15 07:00,2024-07-11 17:00,2025-11-20 17:00,2025-11-20 17:00,2025-12-05 17:00,2025-12-05 17:00,0,40,100
CN.SWA4.7150,IMPACT - L4 EMBED PRICING & FAB & DELIVER-N1 - (OFFICE BLDG RETURN),Complete,CONSTRUCTION,,FIZ 2 / SUWS 5  (GL6-1) - GL J - N - DATA CENTER 1,EXTERIOR SKIN,,CONSTRUCTION,KOVACH,INSULATED METAL PANELS,,,2024-11-22 07:00,2024-11-27 17:00,2024-11-22 07:00,2025-01-15 17:00,2025-11-20 17:00,2025-11-20 17:00,2025-12-05 17:00,2025-12-05 17:00,0,40,100
CN.SWB4.6820,REMAINING FRAMING & DRYWALL - GL M-N/30,Complete,CONSTRUCTION,,SUWN-4 - 27-30,L2 - SubFab Level,BATT RM 3,CONSTRUCTION,,,,,2025-09-02 07:00,2025-09-05 17:00,2025-09-02 07:00,2025-09-05 17:00,2025-11-21 07:00,2025-11-21 07:00,2025-12-05 17:00,2025-12-05 17:00,0,40,100
CN.SWA5.R.1180,INSTALL - ALL REMAINING FRAMING &  DRYWALLS - SUW - LEVEL 1,Active,CONSTRUCTION,,Support Building - West,L1 - Fndn Slab,,CONSTRUCTION,,,,,2025-08-25 07:00,2025-10-06 17:00,2025-05-05 07:00,,2025-12-02 07:00,2025-12-02 07:00,2025-12-05 17:00,2025-12-05 17:00,0,300,0
CN.SWA5.9610,INSTALL- ALL REMAINING FRAMING & DRYWALL - SUW - LEVEL 2,Active,CONSTRUCTION,,Support Building - West,L2 - SubFab Level,,CONSTRUCTION,,,,,2025-07-14 07:00,2025-08-22 17:00,2025-05-05 07:00,,2025-11-21 07:00,2025-11-21 07:00,2025-11-14 17:00,2025-11-14 17:00,0,300,0
STAIR.2470,IMPACT - NEED SCAFFOLDING MODIFICATION FROM SECAI - STAIR #55 - SUW - 30-32-N - LEVEL 02,Complete,CONSTRUCTION,,INTERIOR STAIRS,L2 - SubFab Level,SUW - SUPPORT WEST,CONSTRUCTION,,,,,2024-12-06 07:00,2024-12-10 17:00,2024-12-06 07:00,2025-01-10 17:00,2025-11-20 17:00,2025-11-20 17:00,2025-12-05 17:00,2025-12-05 17:00,0,30,100
CN.SEB1.10440,"PARAPET- FIREPROOFING, SHEATHING ,& CELL SPRAY FOAM - GL 19-21 - A LINE (SUPPORT EXTERIOR AREA) - L4",Complete,CONSTRUCTION,,SUEN-1 - 19-22,EXTERIOR SKIN,,CONSTRUCTION,BERG,,,,2025-01-27 07:00,2025-02-04 17:00,2025-01-27 07:00,2025-02-03 17:00,2025-11-20 17:00,2025-11-20 17:00,2025-12-05 17:00,2025-12-05 17:00,0,70,100
STAIR.2480,"IMPACT - STAIR INSPECTIONS CANCELLED DUE TO ADDITIONAL REQUIREMENTS 79, 24 & 50 - SUW - 3-L - LEVEL 04",Complete,CONSTRUCTION,,INTERIOR STAIRS,L4 - SUP Roof - FAB Roof,SUW - SUPPORT WEST,CONSTRUCTION,,,,,2024-09-26 07:00,2024-10-18 17:00,2024-12-10 07:00,2025-01-25 17:00,2025-11-20 17:00,2025-11-20 17:00,2025-12-05 17:00,2025-12-05 17:00,0,140,100
CN.SWA5..5700,IMPACT - MEP SECAI SCAFFOLDING IN THE WAY EXTERIOR - STAIR #2 - 11/L L1-L3,Complete,CONSTRUCTION,,SUWS-3 - 12-9,INTERIOR STAIR TOWER - STAIR #2 (CLEAN ROOM),,CONSTRUCTION,,,,,2024-11-02 07:00,2024-11-07 17:00,2024-10-28 07:00,2025-02-17 17:00,2025-11-20 17:00,2025-11-20 17:00,2025-11-12 07:00,2025-11-12 07:00,0,50,100
CN.SWA5..5710,IMPACT-CUT GRATING L4 - STAIR #20 - 19/D - ALL LEVELS,Complete,CONSTRUCTION,,SUES-1 - 19-16,INTERIOR STAIR TOWER - STAIR #20,,CONSTRUCTION,,,,,2025-04-04 07:00,2025-04-08 17:00,2025-03-24 07:00,2025-04-02 17:00,2025-11-20 17:00,2025-11-20 17:00,2025-11-24 07:00,2025-11-24 07:00,0,40,100
CN.SWA5..5720,IMPACT - CUT GRATING IN THE WAY - L4 - STAIR #3 - 18/L - ALL LEVELS(2 SHIFTS),Complete,CONSTRUCTION,,SUWN-1 - 18-21,INTERIOR STAIR TOWER - STAIR #3,,CONSTRUCTION,,,,,2025-03-17 07:00,2025-03-20 17:00,2025-03-17 07:00,2025-03-20 17:00,2025-11-20 17:00,2025-11-20 17:00,2025-11-08 07:00,2025-11-08 07:00,0,40,100
CN.AB.AR.7960,INSTALL -  ALL REMAINING FRAMING &  DRYWALL - SUE - LEVEL3,Active,CONSTRUCTION,,Support Building - East,L3 / Waffle Slab Level,,CONSTRUCTION,,,,,2024-12-16 07:00,2024-12-20 17:00,2024-12-09 17:00,,2025-11-21 07:00,2025-12-11 17:00,2025-11-11 07:00,2025-12-01 17:00,130,40,0
CN.SWA5.L3.290,INSTALL- ALL REMAINING FRAMING & DRYWALL - SUW- LEVEL 3,Complete,CONSTRUCTION,,Support Building - West,L3 / Waffle Slab Level,,CONSTRUCTION,,,,,2024-12-16 07:00,2025-02-06 17:00,2024-12-09 07:00,2025-06-06 17:00,2025-11-20 17:00,2025-11-20 17:00,2025-11-14 17:00,2025-11-14 17:00,0,350,100
CN.AB.AR.7260,INSTALL - ALL REMAINING FRAMING & DRYWALL - SUE - LEVEL 1,Active,CONSTRUCTION,,Support Building - East,L1 - Fndn Slab,,CONSTRUCTION,,,,,2025-08-01 07:00,2025-09-12 17:00,2025-05-05 07:00,,2025-12-11 07:00,2025-12-11 07:00,2025-11-26 17:00,2025-11-26 17:00,0,300,0
CN.SWB5.9530,INSTALL - ALL REMAINING FRAMING & DRYWALL - SUE - LEVEL 2,Active,CONSTRUCTION,,Support Building - East,L2 - SubFab Level,,CONSTRUCTION,,,,,2025-07-03 07:00,2025-07-31 17:00,2025-04-07 07:00,,2025-11-21 07:00,2025-12-05 17:00,2025-11-11 07:00,2025-11-21 17:00,90,200,0
INT.P2.WDP.1380,IMPACT - STEEL PAINT SURFACE PREP INSPECTION DELAY- SECAI TO PROVIDE ITP -,Complete,CONSTRUCTION,,Wall / Door Protection - DIV10,STEEL COATING & PAINT DELAYS,,PRE - CON / BUYOUT / IMPACTS,,,,,2024-11-21 07:00,2024-11-26 17:00,2024-11-21 07:00,2025-03-03 17:00,2025-11-20 17:00,2025-11-20 17:00,2025-12-05 07:00,2025-12-05 07:00,0,40,100
CN.SWB5.6990,INSTALL STUDD FRAMING FOR DRYWALL - STAIR #50 - (DESCOPE),Complete,CONSTRUCTION,,SUWN-4 - 27-30,INTERIOR STAIR TOWER - STAIR #50 - DE-SCOPED,,CONSTRUCTION,,,,,2024-11-04 07:00,2024-11-19 17:00,2024-11-04 07:00,2025-06-27 17:00,2025-11-20 17:00,2025-11-20 17:00,2025-12-05 07:00,2025-12-05 07:00,0,100,100
CN.SWB5.10712,POUR CONCRETE ON STAIRS AND LANDINGS - STAIR #50,Complete,CONSTRUCTION,,SUWN-4 - 27-30,INTERIOR STAIR TOWER - STAIR #50 - DE-SCOPED,,CONSTRUCTION,,,,,2024-11-04 07:00,2024-11-19 17:00,2025-01-06 07:00,2025-01-10 17:00,2025-11-20 17:00,2025-11-20 17:00,2025-12-05 17:00,2025-12-05 17:00,0,100,100
INT.DH.2500,IMPACT - Frame installation on HOLD until SECAI/SAS provides with an approved inspection plan forward for remidiation,Complete,CONSTRUCTION,,Doors & Hardware - INTERIOR,DOORS & HARDWARE INTERIOR,"Int. Doors Filter 1, 2, 3",PRE - CON / BUYOUT / IMPACTS,DOORS AND HARDWARE,,,,2025-01-13 07:00,2025-04-25 17:00,2024-12-05 07:00,2024-12-12 17:00,2025-11-20 17:00,2025-11-20 17:00,2025-11-19 07:00,2025-11-19 07:00,0,750,100
CN.SEB1.10470,DRAIN LOCATIONS CLARIFIFCATION & MODIFICATION - GL 5-19 - A LINE - L4 ROOF,Complete,CONSTRUCTION,,SUES-3 - 13-9,L4 - SUP Roof - FAB Roof,,CONSTRUCTION,BRAZOS,,,,2024-12-27 07:00,2025-01-03 17:00,2024-12-27 07:00,2025-02-04 17:00,2025-11-20 17:00,2025-11-20 17:00,2025-12-05 17:00,2025-12-05 17:00,0,50,100
CN.SWB3.5240,"IMPACT - SECAI/ ABR - TRENCH DRAIN - BAKER FNDNS, SLAB & BOLLARDS - LARGE CANOPY FOUNDATION - GL 23-26 - N LINE",Complete,CONSTRUCTION,,SUWN-3 - 24-27,EXTERIOR SKIN,,CONSTRUCTION,,,,,2025-03-26 07:00,2025-04-16 17:00,2025-02-20 07:00,2025-03-21 17:00,2025-11-20 17:00,2025-11-20 17:00,2025-09-29 07:00,2025-09-29 07:00,0,160,100
CN.SWB3.5250,INSTALL LARGE CANOPY BEAMS & COLUMNS & REMAINING DETAILING - GL 23-29 - N LINE,Complete,CONSTRUCTION,,SUWN-3 - 24-27,EXTERIOR SKIN,,CONSTRUCTION,,,,,2025-04-24 07:00,2025-05-13 17:00,2025-03-24 07:00,2025-04-15 15:00,2025-11-20 17:00,2025-11-20 17:00,2025-09-29 07:00,2025-09-29 07:00,0,140,100
CN.SEB1.10480,IMAPCT- PARAPET SHEATHING DAMAGED DUE TO TEMP SKIN APPLIED GL 6-26 - N LINE (SUPPORT EXTERIOR AREA) - L4,Complete,CONSTRUCTION,,SUEN-1 - 19-22,EXTERIOR SKIN,,CONSTRUCTION,BERG,,,,2025-01-27 07:00,2025-02-04 17:00,2024-12-27 07:00,2025-01-23 17:00,2025-11-20 17:00,2025-11-20 17:00,2025-12-02 07:00,2025-12-02 07:00,0,70,100
CN.SEB1.10490,"IMPACT - IOCC APPROL TO CHIP CONCRETE, RE-INSTALL SHEATHING, WATERPROOFING - N LINE (SUPPORT EXTERIOR AREA) - L4",Complete,CONSTRUCTION,,SUEN-1 - 19-22,EXTERIOR SKIN,,CONSTRUCTION,BERG,,,,2025-01-24 07:00,2025-02-03 17:00,2025-01-24 07:00,2025-02-24 17:00,2025-11-20 17:00,2025-11-20 17:00,2025-12-02 07:00,2025-12-02 07:00,0,70,100
CN.SEB1.10500,CEILING FRAMING & DRYWALL - BATHROOM - GL 19-22 - C-A - L1,Complete,CONSTRUCTION,,SUEN-1 - 19-22,L1 - Fndn Slab,BATHROOM,CONSTRUCTION,,,,,2025-06-10 07:00,2025-06-16 17:00,2025-06-10 07:00,2025-09-04 17:00,2025-11-20 17:00,2025-11-20 17:00,2025-11-20 07:00,2025-11-20 07:00,0,50,100
CN.SEB1.10510,INSTALL WATERPROOFING - BATHROOM - GL 19-22 - C-A - L1,Complete,CONSTRUCTION,,SUEN-1 - 19-22,L1 - Fndn Slab,BATHROOM,CONSTRUCTION,,,,,2025-09-08 07:00,2025-09-12 17:00,2025-09-08 07:00,2025-09-26 07:00,2025-11-20 17:00,2025-11-20 17:00,2025-11-20 07:00,2025-11-20 07:00,0,50,100
CN.SWA5.9620,SECAI- MEP IN-WALL AND CEILING ROUGH IN - BATHROOM - GL 3 - M-N - L1,Complete,CONSTRUCTION,,FIZ 2 / SUWS 5  (GL6-1) - GL J - N - DATA CENTER 1,L1 - Fndn Slab,BATHROOM,CONSTRUCTION,,,,,2025-08-20 07:00,2025-10-01 17:00,2025-05-29 13:51,2025-06-10 17:00,2025-11-20 17:00,2025-11-20 17:00,2025-11-20 07:00,2025-11-20 07:00,0,300,100
CN.SWA5.9630,CEILING FRAMING & DRYWALL - BATHROOM - GL 3 - M-N - L1,Complete,CONSTRUCTION,,FIZ 2 / SUWS 5  (GL6-1) - GL J - N - DATA CENTER 1,L1 - Fndn Slab,BATHROOM,CONSTRUCTION,,,,,2025-06-18 07:00,2025-06-24 17:00,2025-06-18 07:00,2025-07-18 17:00,2025-11-20 17:00,2025-11-20 17:00,2025-11-20 07:00,2025-11-20 07:00,0,50,100
CN.SWA5.9640,INSTALL WATERPROOFING - BATHROOM - GL 3 - M-N - L1,Complete,CONSTRUCTION,,FIZ 2 / SUWS 5  (GL6-1) - GL J - N - DATA CENTER 1,L1 - Fndn Slab,BATHROOM,CONSTRUCTION,,,,,2025-07-24 07:00,2025-07-30 17:00,2025-07-24 07:00,2025-07-30 17:00,2025-11-20 17:00,2025-11-20 17:00,2025-11-20 07:00,2025-11-20 07:00,0,50,100
CN.SWB5.10480,IMPACT - DRY WALL PATCHES LEFT OPEN FOR MEP - GL B-A/3 - UPPER DUCT SHAFT,Complete,CONSTRUCTION,,SOUTH EAST PENTHOUSE,L4 - SUP Roof - FAB Roof,,CONSTRUCTION,,,,,2025-03-03 07:00,2025-03-14 17:00,2025-03-03 07:00,2025-03-28 17:00,2025-11-20 17:00,2025-11-20 17:00,2025-12-05 17:00,2025-12-05 17:00,0,100,100
CN.SWB5.10730,IMPACT - DRY WALL PATCHES LEFT OPEN FOR MEP - IOCC APPROVAL - secai direction start 2/23 - GL B-A.G/3 - UPPER DUCT SHAFT,Complete,CONSTRUCTION,,SOUTH EAST PENTHOUSE,L4 - SUP Roof - FAB Roof,,CONSTRUCTION,,,,,2025-02-24 07:00,2025-02-28 17:00,2025-02-17 07:00,2025-03-01 17:00,2025-11-20 17:00,2025-11-20 17:00,2025-12-05 17:00,2025-12-05 17:00,0,50,100
CN.SWB5.1890,IMPACT - AXIOS TEMP WALL IN THE WAY - NW PENTHOUSE,Active,CONSTRUCTION,,NORTH WEST PENTHOUSE,L4 - SUP Roof - FAB Roof,,CONSTRUCTION,,,,,2025-06-09 07:00,2025-06-12 17:00,2025-05-19 07:00,,2025-11-21 07:00,2025-11-21 17:00,2025-11-17 07:00,2025-11-17 17:00,10,40,0
CN.SWA4.7160,IMPACT - L4 EMBED PLATE INSTALL & INSPECT -N1 - (OFFICE BLDG RETURN),Complete,CONSTRUCTION,,FIZ 2 / SUWS 5  (GL6-1) - GL J - N - DATA CENTER 1,EXTERIOR SKIN,,CONSTRUCTION,KOVACH,INSULATED METAL PANELS,,,2025-01-16 07:00,2025-01-21 17:00,2025-01-16 07:00,2025-01-23 17:00,2025-11-20 17:00,2025-11-20 17:00,2025-12-05 17:00,2025-12-05 17:00,0,40,100
STAIR.2490,IMPACT - DUCT IN THE WAY STAIR #62 - SUW - 3-K-L - LEVEL 04(exp 2/14),Complete,CONSTRUCTION,,INTERIOR STAIRS,L4 - SUP Roof - FAB Roof,SUW - SUPPORT WEST,CONSTRUCTION,,,,,2024-09-20 07:00,2024-09-26 17:00,2024-12-11 07:00,2025-08-29 17:00,2025-11-20 17:00,2025-11-20 17:00,2025-12-05 17:00,2025-12-05 17:00,0,40,100
STAIR.2500,IMPACT - NEED SECAI'S RAMP REMOVED #63-SUW-5-L.5-LEVEL 04(Pending CCD to cut Grating)(exp 3/28) Pending RFI 1750 pricing,Complete,CONSTRUCTION,,INTERIOR STAIRS,L4 - SUP Roof - FAB Roof,SUW - SUPPORT WEST,CONSTRUCTION,,,,,2024-12-27 07:00,2025-01-06 17:00,2024-12-27 07:00,2025-09-04 17:00,2025-11-20 17:00,2025-11-20 17:00,2025-11-10 07:00,2025-11-10 07:00,0,60,100
STAIR.2510,IMPACT - PLYWOOD IN THE WAY STAIR #65 - SUW - 18/19-L - LEVEL 04,Complete,CONSTRUCTION,,INTERIOR STAIRS,L4 - SUP Roof - FAB Roof,SUW - SUPPORT WEST,CONSTRUCTION,,,,,2024-12-12 07:00,2024-12-17 17:00,2024-12-12 07:00,2025-01-28 17:00,2025-11-20 17:00,2025-11-20 17:00,2025-12-05 17:00,2025-12-05 17:00,0,40,100
STAIR.2520,"IMPACT - CCD TO MODIFY THE ELEVATION DIFFERENCE #69,70 &78 - SUW - 32-L - LEVEL 04",Complete,CONSTRUCTION,,INTERIOR STAIRS,L4 - SUP Roof - FAB Roof,SUW - SUPPORT WEST,CONSTRUCTION,,,,,2024-11-12 07:00,2024-11-19 17:00,2024-11-12 07:00,2025-04-04 17:00,2025-11-20 17:00,2025-11-20 17:00,2025-12-05 17:00,2025-12-05 17:00,0,50,100
CN.SWA5..5730,IMPACT - IOCC APPROVAL TO CUT GRATING L4 - STAIR #20 - 19/D - ALL LEVELS,Complete,CONSTRUCTION,,SUES-1 - 19-16,INTERIOR STAIR TOWER - STAIR #20,,CONSTRUCTION,,,,,2024-11-05 07:00,2024-11-05 17:00,2024-11-05 07:00,2025-03-04 17:00,2025-11-20 17:00,2025-11-20 17:00,2025-11-24 07:00,2025-11-24 07:00,0,10,100
STAIR.2530,"IMPACT - PRICING APPROVAL FOR NEW ITP REQUIREMENTS 79, 24 & 50 - SUW - 3-L - LEVEL 04 (Went back to old ITP)",Complete,CONSTRUCTION,,INTERIOR STAIRS,L4 - SUP Roof - FAB Roof,SUW - SUPPORT WEST,CONSTRUCTION,,,,,2025-01-27 07:00,2025-02-28 17:00,2025-01-27 07:00,2025-02-07 07:00,2025-11-20 17:00,2025-11-20 17:00,2025-12-05 17:00,2025-12-05 17:00,0,250,100
STAIR.2540,IMPACT - IOCC 1253 APPROVED WAINTG FOR DWGS FAB FOR ANGLE INSTALLATION STAIR 25 &48 - SUW - 18-19-L - LEVEL 01,Complete,CONSTRUCTION,,INTERIOR STAIRS,L1 - Fndn Slab,SUW - SUPPORT WEST,CONSTRUCTION,,,,,2025-01-28 07:00,2025-03-24 17:00,2025-01-28 07:00,2025-08-14 07:00,2025-11-20 17:00,2025-11-20 17:00,2025-12-05 17:00,2025-12-05 17:00,0,400,100
STAIR.2550,IMPACT - ADDITIONAL ANGLE INSTALLATION STAIR 25 &48 - SUW - 18-19-L - LEVEL 01,Complete,CONSTRUCTION,,INTERIOR STAIRS,L1 - Fndn Slab,SUW - SUPPORT WEST,CONSTRUCTION,,,,,2025-08-28 07:00,2025-09-04 17:00,2025-08-12 07:00,2025-08-14 17:00,2025-11-20 17:00,2025-11-20 17:00,2025-12-05 17:00,2025-12-05 17:00,0,50,100
STAIR.2560,INSTALL HAND RAIL STAIR #R9 - SUW - 18/19-L - LEVEL 04,Complete,CONSTRUCTION,,INTERIOR STAIRS,L4 - SUP Roof - FAB Roof,SUW - SUPPORT WEST,CONSTRUCTION,,,,,2025-01-20 07:00,2025-01-22 17:00,2025-01-20 07:00,2025-01-22 17:00,2025-11-20 17:00,2025-11-20 17:00,2025-11-10 07:00,2025-11-10 07:00,0,30,100
STAIR.2570,IMPACT - RFI 1629 RESPONSE CHANGES NEED - IOCC #1343 APPROVED & FAB #32-L & 32-B - SUW - 3 - LEVEL 4,Active,CONSTRUCTION,,INTERIOR STAIRS,L4 - SUP Roof - FAB Roof,SUE - SUPPORT EAST,CONSTRUCTION,,,,,2025-05-05 07:00,2025-06-17 17:00,2024-11-25 07:00,,2025-11-21 07:00,2025-11-21 17:00,2025-11-26 07:00,2025-11-26 17:00,10,310,0
STAIR.2580,INSTALL & INSPECT RAMP #32-B  - SUE - 3 - LEVEL 4,Not Started,CONSTRUCTION,,INTERIOR STAIRS,L4 - SUP Roof - FAB Roof,SUE - SUPPORT EAST,CONSTRUCTION,,,,,2025-12-08 07:00,2025-12-12 17:00,,,2025-12-08 07:00,2025-12-12 17:00,2025-12-01 07:00,2025-12-05 17:00,50,50,0
STAIR.2590,IMPACT - INSTALL STAIR MODIFICATION FOR RFI 1629 STAIR #R5 & #R5 - SUW - 3 - LEVEL 4,Complete,CONSTRUCTION,,INTERIOR STAIRS,L4 - SUP Roof - FAB Roof,SUE - SUPPORT EAST,CONSTRUCTION,,,,,2024-11-26 07:00,2024-12-09 17:00,2024-11-26 07:00,2024-12-07 17:00,2025-11-20 17:00,2025-11-20 17:00,2025-12-05 17:00,2025-12-05 17:00,0,70,100
CN.AB51.ST.1210,IMPACT - PENDING ACCEESS TO THE AREA - SLURRY ROOM STAIR GL 3-5,Complete,CONSTRUCTION,,A5 - Area 2 (Gridlines 6-3),L1 - Fndn Slab,SLURRY ROOM STAIR ,CONSTRUCTION,,,,,2024-09-23 07:00,2024-10-08 17:00,2024-09-23 07:00,2025-01-11 17:00,2025-11-20 17:00,2025-11-20 17:00,2025-12-05 17:00,2025-12-05 17:00,0,100,100
CN.AB51.ST.1220,"IMPACT -PEREPARE , SUBMIT IOCC FOR TEMP ACCESS STAIRS - SLURRY ROOM STAIR GL 3-5 - DE-SCOPED",Complete,CONSTRUCTION,,A5 - Area 2 (Gridlines 6-3),L1 - Fndn Slab,SLURRY ROOM STAIR ,CONSTRUCTION,,,,,2025-01-13 07:00,2025-01-24 17:00,2025-01-13 07:00,2025-02-19 17:00,2025-11-20 17:00,2025-11-20 17:00,2025-12-05 17:00,2025-12-05 17:00,0,100,100
CN.AB51.ST.1230,IMPACT -SECAI REVIEW AND APPROVE IOCC FOR TEMP ACCESS STAIRS - SLURRY ROOM STAIR GL 3-5 - DE-SCOPED,Complete,CONSTRUCTION,,A5 - Area 2 (Gridlines 6-3),L1 - Fndn Slab,SLURRY ROOM STAIR ,CONSTRUCTION,,,,,2025-08-18 07:00,2025-09-03 17:00,2025-02-21 07:00,2025-03-28 17:00,2025-11-20 17:00,2025-11-20 17:00,2025-12-05 17:00,2025-12-05 17:00,0,120,100
CN.AB51.ST.1240,IMPACT -INSTALL TEMP ACCESS STAIRS - SLURRY ROOM STAIR GL 3-5 DE-SCOPED,Complete,CONSTRUCTION,,A5 - Area 2 (Gridlines 6-3),L1 - Fndn Slab,SLURRY ROOM STAIR ,CONSTRUCTION,,,,,2025-09-04 07:00,2025-09-10 17:00,2025-03-31 07:00,2025-04-16 17:00,2025-11-20 17:00,2025-11-20 17:00,2025-12-05 17:00,2025-12-05 17:00,0,50,100
CN.AB51.ST.1250,INSTALL CONTAINMENT FOR SAND BLASTING - SLURRY ROOM STAIR GL 3-5 DE-SCOPED,Complete,CONSTRUCTION,,A5 - Area 2 (Gridlines 6-3),L1 - Fndn Slab,SLURRY ROOM STAIR ,CONSTRUCTION,,,,,2025-09-11 07:00,2025-09-12 17:00,2025-04-17 07:00,2025-04-17 17:00,2025-11-20 17:00,2025-11-20 17:00,2025-12-05 17:00,2025-12-05 17:00,0,20,100
CN.AB51.ST.1260,PERFORM SAND BLASTING - SLURRY ROOM STAIR GL 3-5 DE-SCOPED,Complete,CONSTRUCTION,,A5 - Area 2 (Gridlines 6-3),L1 - Fndn Slab,SLURRY ROOM STAIR ,CONSTRUCTION,,,,,2025-09-15 07:00,2025-09-16 17:00,2025-04-17 07:00,2025-04-17 17:00,2025-11-20 17:00,2025-11-20 17:00,2025-12-05 17:00,2025-12-05 17:00,0,20,100
CN.AB51.ST.1270,INSPECT - SURFACE PREP - SLURRY ROOM STAIR GL 3-5 DE-SCOPED,Complete,CONSTRUCTION,,A5 - Area 2 (Gridlines 6-3),L1 - Fndn Slab,SLURRY ROOM STAIR ,CONSTRUCTION,,,,,2025-09-17 07:00,2025-09-17 17:00,2025-04-17 07:00,2025-04-17 17:00,2025-11-20 17:00,2025-11-20 17:00,2025-12-05 17:00,2025-12-05 17:00,0,10,100
CN.AB51.ST.1280,INSTALL- PRIMER COAT - SLURRY ROOM STAIR GL 3-5 DE-SCOPED,Complete,CONSTRUCTION,,A5 - Area 2 (Gridlines 6-3),L1 - Fndn Slab,SLURRY ROOM STAIR ,CONSTRUCTION,,,,,2025-09-18 07:00,2025-09-19 17:00,2025-04-17 07:00,2025-04-17 17:00,2025-11-20 17:00,2025-11-20 17:00,2025-12-05 17:00,2025-12-05 17:00,0,20,100
CN.AB51.ST.1290,INSPECT - PRIMER COAT - SLURRY ROOM STAIR GL 3-5 DE-SCOPED,Complete,CONSTRUCTION,,A5 - Area 2 (Gridlines 6-3),L1 - Fndn Slab,SLURRY ROOM STAIR ,CONSTRUCTION,,,,,2025-09-22 07:00,2025-09-22 17:00,2025-04-17 07:00,2025-04-17 17:00,2025-11-20 17:00,2025-11-20 17:00,2025-12-05 17:00,2025-12-05 17:00,0,10,100
CN.AB51.ST.1300,INSPECT- TOP COATING - SLURRY ROOM STAIR GL 3-5 DE-SCOPED,Complete,CONSTRUCTION,,A5 - Area 2 (Gridlines 6-3),L1 - Fndn Slab,SLURRY ROOM STAIR ,CONSTRUCTION,,,,,2025-09-25 07:00,2025-09-25 17:00,2025-04-17 07:00,2025-04-17 17:00,2025-11-20 17:00,2025-11-20 17:00,2025-12-05 17:00,2025-12-05 17:00,0,10,100
CN.SEB1.10530,IMPACT - SCAFFOLDING IN THE WAY [SUP EXTERIOR WALL] (TRESTLE (ABOVE MEP PIPE),Complete,CONSTRUCTION,,SUEN-1 - 19-22,EXTERIOR SKIN,,CONSTRUCTION,ALPHA,INSULATED METAL PANELS,,,2025-01-20 07:00,2025-01-27 17:00,2025-01-20 07:00,2025-01-22 17:00,2025-11-20 17:00,2025-11-20 17:00,2025-11-04 07:00,2025-11-04 07:00,0,60,100
CN.SWB5.10770,INSTALL BENT PLATE  - NW PENTHOUSE - NORTH WALL,Complete,CONSTRUCTION,,NORTH WEST PENTHOUSE,EXTERIOR SKIN,,CONSTRUCTION,,,,,2025-01-24 07:00,2025-01-30 17:00,2025-01-24 07:00,2025-01-29 17:00,2025-11-20 17:00,2025-11-20 17:00,2025-11-25 07:00,2025-11-25 07:00,0,50,100
CN.BB51.ST.3272,IMPACT - RFI 1659/9745 VERT EXPANJOINT DETAIL - GL 33 - STAIR 5 - K-L,Complete,CONSTRUCTION,,GRIDLINE 33,GL 33 STAIR 5 (WEST),STAIR 5 (WEST) - K-L,CONSTRUCTION,BRAZOS,,,,2025-01-20 07:00,2025-01-22 17:00,2025-01-06 07:00,2025-06-05 17:00,2025-11-20 17:00,2025-11-20 17:00,2025-11-12 07:00,2025-11-12 07:00,0,30,100
CN.BB51.ST.3282,IMPACT -RFI 1659/9722 EXPANJOINT DETAIL - GL 33 - STAIR 18 - K-L,Complete,CONSTRUCTION,,GRIDLINE 33,GL 33 STAIR 18 (EAST),STAIR 18 (EAST) - C-D,CONSTRUCTION,BRAZOS,,,,2025-01-20 07:00,2025-01-22 17:00,2025-01-20 07:00,2025-06-05 17:00,2025-11-20 17:00,2025-11-20 17:00,2025-11-03 07:00,2025-11-03 07:00,0,30,100
CN.SEA5.10830,IMPACT - IOCC APPROVAL FOR FLASHING OF PIPE - GL 5-19 A LINE - L4 ROOF,Complete,CONSTRUCTION,,SUES-3 - 13-9,L4 - SUP Roof - FAB Roof,,CONSTRUCTION,BRAZOS,,,,2025-01-13 07:00,2025-01-31 17:00,2025-01-13 07:00,2025-02-05 17:00,2025-11-20 17:00,2025-11-20 17:00,2025-12-03 07:00,2025-12-03 07:00,0,150,100
CN.SWA5..5760,IMPACT - IOCC APPROVAL TO CUT GRATING L4 - STAIR #3 - 19/D - ALL LEVELS,Complete,CONSTRUCTION,,SUWN-1 - 18-21,INTERIOR STAIR TOWER - STAIR #3,,CONSTRUCTION,,,,,2024-11-05 07:00,2024-11-05 17:00,2024-11-05 07:00,2025-03-05 17:00,2025-11-20 17:00,2025-11-20 17:00,2025-11-08 07:00,2025-11-08 07:00,0,10,100
CN.SEB1.10540,"IMPACT-CHIP CONCRETE, REPARE EDGE OF SLAB, SHEATHING & POUR BACK GL 6-26 - N LINE (SUPPORT EXTERIOR AREA) - L4",Active,CONSTRUCTION,,SUEN-1 - 19-22,EXTERIOR SKIN,,CONSTRUCTION,BERG,,,,2025-02-25 07:00,2025-04-07 17:00,2025-02-25 07:00,,2025-11-24 07:00,2025-12-01 17:00,2025-12-02 07:00,2025-12-05 17:00,40,300,0
CN.SEA5.10840,WATERPROOFING CRICKETS & FLASHING FOR PIPE PENETRATION - GL 13-19  A LINE - L4 ROOF,Complete,CONSTRUCTION,,SUES-3 - 13-9,L4 - SUP Roof - FAB Roof,,CONSTRUCTION,BRAZOS,,,,2025-04-30 07:00,2025-05-28 17:00,2025-02-10 07:32,2025-04-26 17:00,2025-11-20 17:00,2025-11-20 17:00,2025-12-03 07:00,2025-12-03 07:00,0,200,100
CN.SEB1.10550,BERG WOOD NAILER INSTALL - GL 5-31 - A LINE - L4 ROOF,Complete,CONSTRUCTION,,SUEN-4 - 28-31,L4 - SUP Roof - FAB Roof,,CONSTRUCTION,BRAZOS,,,,2025-07-09 07:00,2025-07-15 17:00,2025-06-27 07:00,2025-08-29 17:00,2025-11-20 17:00,2025-11-20 17:00,2025-12-03 07:00,2025-12-03 07:00,0,50,100
STAIR.2600,IMPACT - SECAI SCAFFOLDING IN THE WAY STAIR #72-SUE-5-C-LEVEL 04(Removed 04/10) need pricing for refab stair RFI 1750,Complete,CONSTRUCTION,,INTERIOR STAIRS,L4 - SUP Roof - FAB Roof,SUE - SUPPORT EAST,CONSTRUCTION,,,,,2024-09-09 07:00,2024-09-17 17:00,2024-08-01 07:00,2025-09-04 17:00,2025-11-20 17:00,2025-11-20 17:00,2025-11-10 07:00,2025-11-10 07:00,0,60,100
STAIR.2610,IMPACT - SECAI SCAFFOLDING IN THE WAY STAIR #73-SUE-5-C-LEVEL 04(EXP REMOVAL 2/28) need pricing for refab stair RFI 1750,Complete,CONSTRUCTION,,INTERIOR STAIRS,L4 - SUP Roof - FAB Roof,SUE - SUPPORT EAST,CONSTRUCTION,,,,,2024-09-09 07:00,2024-09-17 17:00,2024-08-01 07:00,2025-09-04 17:00,2025-11-20 17:00,2025-11-20 17:00,2025-11-10 07:00,2025-11-10 07:00,0,60,100
STAIR.2620,IMPACT - IOCC FOR DRYWALL DEMO & DEMO DRYWALL STAIR #64 - SUW - 18-K - LEVEL 04,Complete,CONSTRUCTION,,INTERIOR STAIRS,L4 - SUP Roof - FAB Roof,SUW - SUPPORT WEST,CONSTRUCTION,,,,,2025-01-29 07:00,2025-02-05 17:00,2025-01-29 07:00,2025-02-14 17:00,2025-11-20 17:00,2025-11-20 17:00,2025-11-25 17:00,2025-11-25 17:00,0,60,100
STAIR.2630,"IMPACT - RFI 1715 FOR CONNECTION DETAIL STAIR #65, 64, 72 & 73 - SUW - 18/19-L - LEVEL 04",Complete,CONSTRUCTION,,INTERIOR STAIRS,L4 - SUP Roof - FAB Roof,SUW - SUPPORT WEST,CONSTRUCTION,,,,,2025-01-29 07:00,2025-02-05 17:00,2025-01-29 07:00,2025-03-04 17:00,2025-11-20 17:00,2025-11-20 17:00,2025-11-10 07:00,2025-11-10 07:00,0,60,100
STAIR.2640,"IMPACT - SECAI SCAFFOLDING IN THE WAY STAIR #76, - SUE - 5-C - LEVEL 04(EXP REMOVAL 2/8)",Complete,CONSTRUCTION,,INTERIOR STAIRS,L4 - SUP Roof - FAB Roof,SUE - SUPPORT EAST,CONSTRUCTION,,,,,2024-09-09 07:00,2024-09-17 17:00,2024-08-01 07:00,2025-02-08 17:00,2025-11-20 17:00,2025-11-20 17:00,2025-12-05 17:00,2025-12-05 17:00,0,60,100
STAIR.2650,IMPACT - PLYWOOD IN THE WAY RAMP IS IN THE WAY - STAIR/RAMP #2B - SUE - 2-B - LEVEL 04,Complete,CONSTRUCTION,,INTERIOR STAIRS,L4 - SUP Roof - FAB Roof,SUE - SUPPORT EAST,CONSTRUCTION,,,,,2024-06-24 07:00,2024-07-02 17:00,2024-06-24 07:00,2025-06-09 17:00,2025-11-20 17:00,2025-11-20 17:00,2025-12-05 17:00,2025-12-05 17:00,0,60,100
STAIR.2660,IMPACT - NEW GRATING DELIVERY - STAIR/RAMP #R11 & 5-C - SUE - 5-B - LEVEL 04 (5C completed/R11 not on site),Complete,CONSTRUCTION,,INTERIOR STAIRS,L4 - SUP Roof - FAB Roof,SUE - SUPPORT EAST,CONSTRUCTION,,,,,2024-10-17 07:00,2024-10-28 17:00,2024-12-23 07:00,2025-09-16 17:00,2025-11-20 17:00,2025-11-20 17:00,2025-12-05 17:00,2025-12-05 17:00,0,70,100
CN.SWA4.7170,IMPACT - NEED SUPER DECK DEMO / AWAIT SECAI - GL 3 - N LINE(11/30),Complete,CONSTRUCTION,,FIZ 2 / SUWS 5  (GL6-1) - GL J - N - DATA CENTER 1,EXTERIOR SKIN,,CONSTRUCTION,KOVACH,INSULATED METAL PANELS,,,2025-01-27 07:00,2025-02-07 17:00,2024-07-04 07:00,2024-12-05 17:00,2025-11-20 17:00,2025-11-20 17:00,2025-12-05 17:00,2025-12-05 17:00,0,100,100
CN.SWA4.7180,INSTALL INSULATED METAL PANEL MODULES - GL 1-4 - N LINE [SUP EXTERIOR WALL] (SUPER DECK LEAVE OUT ),Complete,CONSTRUCTION,,FIZ 2 / SUWS 5  (GL6-1) - GL J - N - DATA CENTER 1,EXTERIOR SKIN,,CONSTRUCTION,KOVACH,INSULATED METAL PANELS,,,2025-02-04 07:00,2025-02-06 17:00,2025-02-04 07:00,2025-03-01 17:00,2025-11-20 17:00,2025-11-20 17:00,2025-12-05 17:00,2025-12-05 17:00,0,30,100
CN.SWB3.5320,CANOPY - KOVACH PANEL - GL 27-33 - A LINE - NE,Not Started,CONSTRUCTION,,SUEN-4 - 28-31,EXTERIOR SKIN,,CONSTRUCTION,,,,,2025-12-22 07:00,2026-01-14 17:00,,,2025-12-22 07:00,2026-01-14 17:00,2025-10-24 07:00,2025-11-13 17:00,150,150,0
EJCN.SWB3.5330,CANOPY - GDA WATERPROOFING - GL 27-33 - A LINE - NE - A28,Not Started,CONSTRUCTION,,SUEN-4 - 28-31,EXTERIOR SKIN,,CONSTRUCTION,,,,,2025-12-18 07:00,2025-12-19 17:00,,,2025-12-18 07:00,2025-12-19 17:00,2025-10-22 07:00,2025-10-23 17:00,20,20,0
CN.SWB3.5340,CANOPY - BERG FRAMING (Facia Sheathing) - GL 27-33 - A LINE - NE,Complete,CONSTRUCTION,,SUEN-4 - 28-31,EXTERIOR SKIN,,CONSTRUCTION,,,,,2025-09-15 07:00,2025-10-03 17:00,2025-09-15 07:00,2025-10-24 17:00,2025-11-21 17:00,2025-11-21 17:00,2025-09-30 07:00,2025-09-30 07:00,0,150,100
CN.SWB3.5350,CANOPY - SECAI MEP - ELECTRICAL TEAM (LIGHTING) - GL 27-33 - A LINE - NE,Not Started,CONSTRUCTION,,SUEN-4 - 28-31,EXTERIOR SKIN,,CONSTRUCTION,,,,,2025-12-03 07:00,2025-12-09 17:00,,,2025-12-03 07:00,2025-12-09 17:00,2025-10-07 07:00,2025-10-13 17:00,50,50,0
CN.SWB3.5360,IMPACT - PATRIOT RE-FABRICATION (elevations busts) - GL 27-33 - A LINE,Complete,CONSTRUCTION,,SUEN-4 - 28-31,EXTERIOR SKIN,,CONSTRUCTION,,,,,2025-04-21 07:00,2025-05-08 17:00,2025-04-09 07:00,2025-06-06 14:00,2025-11-20 17:00,2025-11-20 17:00,2025-09-30 07:00,2025-09-30 07:00,0,140,100
CN.SWA4.7190,IMPACT -INSTALL DRY WALL PATCH & WATER PROOFING -N1 - (OFFICE BLDG RETURN),Complete,CONSTRUCTION,,FIZ 2 / SUWS 5  (GL6-1) - GL J - N - DATA CENTER 1,EXTERIOR SKIN,,CONSTRUCTION,KOVACH,INSULATED METAL PANELS,,,2024-12-09 07:00,2024-12-13 17:00,2025-02-06 07:00,2025-02-18 17:00,2025-11-20 17:00,2025-11-20 17:00,2025-12-05 17:00,2025-12-05 17:00,0,40,100
CN.SWA5.9650,IMPACT - MEP MATERIAL IN THE WAY (1 SIDE) - BATHROOM - GL 3 - M-N - L1,Complete,CONSTRUCTION,,FIZ 2 / SUWS 5  (GL6-1) - GL J - N - DATA CENTER 1,L1 - Fndn Slab,BATHROOM,CONSTRUCTION,,,,,2024-12-02 07:00,2024-12-06 17:00,2024-12-02 07:00,2025-05-30 17:00,2025-11-20 17:00,2025-11-20 17:00,2025-11-20 07:00,2025-11-20 07:00,0,40,100
CN.SWB5.10810,IMPACT-RFI 1686 BREEZEWAY TRANSITION- HAT CHANNEL APPROVAL AND DELIVERY BY SECAI - NW PENTHOUSE,Complete,CONSTRUCTION,,NORTH WEST PENTHOUSE,EXTERIOR SKIN,,CONSTRUCTION,ALPHA,,,,2024-12-23 07:00,2024-12-26 17:00,2025-01-30 07:00,2025-02-10 17:00,2025-11-20 17:00,2025-11-20 17:00,2025-11-17 07:00,2025-11-17 07:00,0,20,100
CN.SWB5.10820,IMPACT-RFI 1686 BREEZEWAY TRANSITION- HAT CHANNEL AND CLADDING STEEL INSTALL - NW PENTHOUSE,Complete,CONSTRUCTION,,NORTH WEST PENTHOUSE,EXTERIOR SKIN,,CONSTRUCTION,ALPHA,,,,2025-02-11 07:00,2025-02-17 17:00,2025-02-11 07:00,2025-02-15 17:00,2025-11-20 17:00,2025-11-20 17:00,2025-11-17 07:00,2025-11-17 07:00,0,50,100
CN.SWB5.10830,WELD STIFNERS - NW PENTHOUSE - NORTH WALL,Complete,CONSTRUCTION,,NORTH WEST PENTHOUSE,EXTERIOR SKIN,,CONSTRUCTION,,,,,2025-02-14 07:00,2025-02-19 17:00,2025-02-14 07:00,2025-02-20 17:00,2025-11-20 17:00,2025-11-20 17:00,2025-11-25 07:00,2025-11-25 07:00,0,40,100
STAIR.2690,"INSTALL & INSPECT STAIR/RAMP # 5-L - SUE - 5-B - LEVEL 04 (RFI was answered, pending SECAI install backing for IMP)",Complete,CONSTRUCTION,,INTERIOR STAIRS,L4 - SUP Roof - FAB Roof,SUE - SUPPORT EAST,CONSTRUCTION,,,,,2025-05-13 07:00,2025-05-15 17:00,2025-05-21 07:00,2025-08-18 17:00,2025-11-20 17:00,2025-11-20 17:00,2025-12-05 17:00,2025-12-05 17:00,0,30,100
CN.SEA5.10850,IMPACT - DRAIN PIPE RELOCAION DELAY - GL 7-13 A LINE - L4 ROOF,Complete,CONSTRUCTION,,SUES-3 - 13-9,L4 - SUP Roof - FAB Roof,,CONSTRUCTION,BRAZOS,,,,2025-01-06 07:00,2025-01-24 17:00,2025-02-10 07:00,2025-03-17 17:00,2025-11-20 17:00,2025-11-20 17:00,2025-12-05 17:00,2025-12-05 17:00,0,150,100
STAIR.2700,IMPACT - AC UNIT NEEDS TO BE INSTALLED BY SECAI #56 - FIZ - 1-H - LEVEL 02 (FINAL ANCHORING & INSPECTIONS) -,Complete,CONSTRUCTION,,INTERIOR STAIRS,L2 - SubFab Level,FIZ,CONSTRUCTION,,,,,2024-11-12 07:00,2024-11-15 17:00,2025-02-17 07:00,2025-03-06 17:00,2025-11-20 17:00,2025-11-20 17:00,2025-11-20 07:00,2025-11-20 07:00,0,30,100
INT.DH.2510,IMPACT - Procurement - Sansblast/Prime/Paint Ext.Door Frames - Delivery,Complete,CONSTRUCTION,,Doors & Hardware - INTERIOR,DOORS & HARDWARE INTERIOR,"Int. Doors Filter 1, 2, 3",PRE - CON / BUYOUT / IMPACTS,DOORS AND HARDWARE,,,,2025-01-13 07:00,2025-04-25 17:00,2024-12-06 07:00,2025-03-20 07:00,2025-11-20 17:00,2025-11-20 17:00,2025-11-13 07:00,2025-11-13 07:00,0,750,100
CN.SWA3.9730,IMPACT - MEP MATERIAL IN THE WAY - BATHROOM - GL 11-12 - L-N - L1,Complete,CONSTRUCTION,,SUWS-3 - 12-9,L1 - Fndn Slab,BATHROOM,CONSTRUCTION,,,,,2024-12-02 07:00,2024-12-03 17:00,2024-12-02 07:00,2025-08-25 17:00,2025-11-20 17:00,2025-11-20 17:00,2025-11-20 07:00,2025-11-20 07:00,0,20,100
STAIR.2710,IMPACT - CONFILICT WITH FIRE CONTROL BOXES - STAIR #49 - SUW - 18-19-L - LEVEL 01,Complete,CONSTRUCTION,,INTERIOR STAIRS,L1 - Fndn Slab,SUW - SUPPORT WEST,CONSTRUCTION,,,,,2025-02-14 07:00,2025-02-19 17:00,2025-02-14 07:00,2025-06-23 17:00,2025-11-20 17:00,2025-11-20 17:00,2025-12-05 17:00,2025-12-05 17:00,0,40,100
STAIR.2720,"IMPACT - NEED RFI FOR GRATING HOLES - SUE - 2B & 5C - LEVEL 04 (NEEDS REDETAILING , grating needs to be refab )",Complete,CONSTRUCTION,,INTERIOR STAIRS,L4 - SUP Roof - FAB Roof,SUE - SUPPORT EAST,CONSTRUCTION,,,,,2025-04-04 07:00,2025-04-04 17:00,2025-04-04 07:00,2025-04-04 17:00,2025-11-20 17:00,2025-11-20 17:00,2025-12-05 17:00,2025-12-05 17:00,0,10,100
STAIR.2730,"IMPACT-PRICING/IOCC&APPROVAL FOR CON DETAIL ST #65, 64, 72 & 73 - SUW - 18/19-L - LEVEL 04(RFI 1750 changed all stairs)",Complete,CONSTRUCTION,,INTERIOR STAIRS,L4 - SUP Roof - FAB Roof,SUW - SUPPORT WEST,CONSTRUCTION,,,,,2025-04-07 07:00,2025-05-16 17:00,2025-04-01 07:00,2025-06-10 17:00,2025-11-20 17:00,2025-11-20 17:00,2025-12-05 17:00,2025-12-05 17:00,0,300,100
CN.SWA4.7200,IMPACT - SECAI CONDENSATION PIPE IN THE WAY & INSTALL EMSEAL (OFFICE BLDG RETURN),Complete,CONSTRUCTION,,FIZ 2 / SUWS 5  (GL6-1) - GL J - N - DATA CENTER 1,EXTERIOR SKIN,,CONSTRUCTION,KOVACH,INSULATED METAL PANELS,,,2025-03-03 07:00,2025-03-06 17:00,2025-03-04 07:00,2025-04-25 17:00,2025-11-20 17:00,2025-11-20 17:00,2025-12-05 17:00,2025-12-05 17:00,0,40,100
CN.SWA4.7210,"IMPACT - IOCC 1251, 1252, 1253, 1254 $& 1327 approval - Holding Patriot new scope",Complete,CONSTRUCTION,,SUWN-5 - 30-33,EXTERIOR SKIN,,CONSTRUCTION,KOVACH,INSULATED METAL PANELS,,,2025-04-21 07:00,2025-04-24 17:00,2025-02-11 07:00,2025-03-20 17:00,2025-11-20 17:00,2025-11-20 17:00,2025-11-13 07:00,2025-11-13 07:00,0,40,100
CN.SWA4.7220,IMPACT - RFI 8632- INSTALL CLADDING STEEL - TRESTLE & CANOPY N32-33,Complete,CONSTRUCTION,,SUWN-5 - 30-33,EXTERIOR SKIN,,CONSTRUCTION,KOVACH,INSULATED METAL PANELS,,,2025-06-27 07:00,2025-07-11 17:00,2025-06-10 07:00,2025-06-24 17:00,2025-11-20 17:00,2025-11-20 17:00,2025-11-13 07:00,2025-11-13 07:00,0,100,100
CN.SWA4.7230,IMPACT - RFI 8632- INSTALL INSULATED METAL PANELS @CANOPY - TRESTLE & CANOPY N32-33,Complete,CONSTRUCTION,,SUWN-5 - 30-33,EXTERIOR SKIN,,CONSTRUCTION,KOVACH,INSULATED METAL PANELS,,,2025-07-21 07:00,2025-07-25 17:00,2025-06-26 07:00,2025-06-30 17:00,2025-11-20 17:00,2025-11-20 17:00,2025-11-13 07:00,2025-11-13 07:00,0,50,100
CN.SWB1..4620,FRAMING & DRYWALL - H2SO4 & NAOH TRANSFER - GL 18-21 K-N - L3,Complete,CONSTRUCTION,,SUWN-1 - 18-21,L3 / Waffle Slab Level,H2O4 & NAOH ,CONSTRUCTION,,,,,2025-08-25 07:00,2025-08-26 17:00,2025-08-25 07:00,2025-08-26 17:00,2025-11-21 07:00,2025-11-21 07:00,2025-12-01 07:00,2025-12-01 07:00,0,20,100
CN.AB.AR.8670,CUT STEEL AND SLAB WW - ELEVATOR 01,Complete,CONSTRUCTION,,FIZ 2 / SUWS 5  (GL6-1) - GL J - N - DATA CENTER 1,,ELEVATOR,CONSTRUCTION,BAKER,,,,2025-09-08 07:00,2025-09-26 17:00,2025-09-08 07:00,2025-10-28 17:00,2025-11-20 17:00,2025-11-20 17:00,2025-12-05 17:00,2025-12-05 17:00,0,150,100
CN.SEA5.10880,IMPACT - IOCC APPROVAL TO REPAIR TOP COAT - L4 ROOF,Complete,CONSTRUCTION,,SUES-3 - 13-9,L4 - SUP Roof - FAB Roof,,CONSTRUCTION,BRAZOS,,,,2025-01-06 07:00,2025-01-24 17:00,2025-03-17 07:00,2025-04-28 17:00,2025-11-20 17:00,2025-11-20 17:00,2025-12-03 07:00,2025-12-03 07:00,0,150,100
CN.SEB1.10580,IMPACT - IOCC 1427 DUE TO CHANGE IN WORK CONDITIONS (SUPPORT EXTERIOR AREA) - L4,Active,CONSTRUCTION,,SUEN-1 - 19-22,EXTERIOR SKIN,,CONSTRUCTION,BERG,,,,2025-02-25 07:00,2025-04-07 17:00,2025-02-25 07:00,,2025-11-21 07:00,2025-11-21 07:00,2025-11-26 17:00,2025-11-26 17:00,0,300,0
CN.SWA5..2200,IMPACT - SECAI ELECTRICAL CONDUITS IN THE WAY - TURN OVER 3/31,Complete,CONSTRUCTION,,SUWN-1 - 18-21,INTERIOR STAIR TOWER - STAIR #3,,CONSTRUCTION,,,,,2025-03-24 07:00,2025-03-27 17:00,2025-02-19 07:00,2025-04-01 17:00,2025-11-20 17:00,2025-11-20 17:00,2025-11-03 07:00,2025-11-03 07:00,0,40,100
INT.DH.2520,IMPACT - IOCC 1428 - 4 HM Frames Fire rated - Fabrication 10 weeks,Complete,CONSTRUCTION,,Doors & Hardware - INTERIOR,DOORS & HARDWARE INTERIOR,"Int. Doors Filter 1, 2, 3",PRE - CON / BUYOUT / IMPACTS,DOORS AND HARDWARE,,,,2025-04-04 07:00,2025-06-27 17:00,2025-03-18 07:00,2025-04-10 07:00,2025-11-20 17:00,2025-11-20 17:00,2025-11-19 07:00,2025-11-19 07:00,0,600,100
CN.SWB3.5390,CANOPY - KOVACH PANEL - GL 19-16 - A 17,Not Started,CONSTRUCTION,,SUES-1 - 19-16,EXTERIOR SKIN,,CONSTRUCTION,,,,,2026-01-15 07:00,2026-01-23 17:00,,,2026-01-15 07:00,2026-01-23 17:00,2025-11-14 07:00,2025-11-24 17:00,70,70,0
EJCN.SWB3.5380,CANOPY - GDA WATERPROOFING - GL 19-16 - A 17,Not Started,CONSTRUCTION,,SUES-1 - 19-16,EXTERIOR SKIN,,CONSTRUCTION,,,,,2025-12-10 07:00,2025-12-11 17:00,,,2025-12-10 07:00,2025-12-11 17:00,2025-11-12 07:00,2025-11-13 17:00,20,20,0
CN.SWB3.5370,CANOPY - BERG FRAMING (Facia Sheathing) - GL 19-16 - A 17,Complete,CONSTRUCTION,,SUES-1 - 19-16,EXTERIOR SKIN,,CONSTRUCTION,,,,,2025-10-08 07:00,2025-10-10 17:00,2025-10-08 07:00,2025-10-14 17:00,2025-11-21 17:00,2025-11-21 17:00,2025-10-29 07:00,2025-10-29 07:00,0,30,100
CN.SWB3.5450,IMPACT - SECAI MEP ROOF DRAIN INSTALL WATERPROOFING - GL 19-16 - N LINE,Complete,CONSTRUCTION,,SUWS-1 - 18-15,EXTERIOR SKIN,,CONSTRUCTION,,,,,2025-10-31 07:00,2025-11-03 17:00,2025-10-22 07:00,2025-10-24 17:00,2025-11-20 17:00,2025-11-20 17:00,2025-12-05 17:00,2025-12-05 17:00,0,20,100
CN.SWB3.5420,CANOPY - BERG FRAMING FACIA - GL 19-16 - N LINE,Complete,CONSTRUCTION,,SUWN-1 - 18-21,EXTERIOR SKIN,,CONSTRUCTION,,,,,2025-09-10 07:00,2025-09-12 17:00,2025-09-10 07:00,2025-09-12 17:00,2025-11-21 17:00,2025-11-21 17:00,2025-11-20 07:00,2025-11-20 07:00,0,30,100
CN.SWB3.5490,CANOPY - KOVACH PANEL INSTALL - GL 4-5 - N LINE,Not Started,CONSTRUCTION,,FIZ 2 / SUWS 5  (GL6-1) - GL J - N - DATA CENTER 1,EXTERIOR SKIN,,CONSTRUCTION,,,,,2025-12-11 07:00,2025-12-19 17:00,,,2025-12-11 07:00,2025-12-19 17:00,2025-10-15 07:00,2025-10-23 17:00,70,70,0
CN.SWB3.5480,CANOPY - BRAZOS WATERPROOFING (ROOF) - GL 4-5 - N LINE,Complete,CONSTRUCTION,,FIZ 2 / SUWS 5  (GL6-1) - GL J - N - DATA CENTER 1,EXTERIOR SKIN,,CONSTRUCTION,,,,,2025-10-27 07:00,2025-11-03 17:00,2025-10-27 07:00,2025-10-28 17:00,2025-11-20 17:00,2025-11-20 17:00,2025-10-15 07:00,2025-10-15 07:00,0,60,100
CN.SWB3.5470,CANOPY - BERG FRAMING - GL 4-5 - N LINE,Complete,CONSTRUCTION,,FIZ 2 / SUWS 5  (GL6-1) - GL J - N - DATA CENTER 1,EXTERIOR SKIN,,CONSTRUCTION,,,,,2025-09-12 07:00,2025-09-16 17:00,2025-09-12 07:00,2025-09-16 17:00,2025-11-20 17:00,2025-11-20 17:00,2025-10-15 07:00,2025-10-15 07:00,0,30,100
CN.SWB3.5500,CANOPY - latcon strucutural install and inspection - GL 19-16 - A LINE,Complete,CONSTRUCTION,,SUES-1 - 19-16,EXTERIOR SKIN,,CONSTRUCTION,,,,,2025-06-23 07:00,2025-06-27 17:00,2025-06-11 12:00,2025-06-17 16:00,2025-11-20 17:00,2025-11-20 17:00,2025-10-29 07:00,2025-10-29 07:00,0,50,100
CN.SWB3.5510,CANOPY - LATCON INSTALL STEEL & PATIROT DECKING - GL 4-5 - N LINE,Complete,CONSTRUCTION,,FIZ 2 / SUWS 5  (GL6-1) - GL J - N - DATA CENTER 1,EXTERIOR SKIN,,CONSTRUCTION,,,,,2025-06-09 07:00,2025-06-20 17:00,2025-06-09 07:00,2025-06-23 07:00,2025-11-20 17:00,2025-11-20 17:00,2025-10-15 07:00,2025-10-15 07:00,0,100,100
CN.SWB3.5520,CANOPY - LATCON INSTALL STEEL & PATRIOT DECKING - GL 19-16 - N LINE,Complete,CONSTRUCTION,,SUWN-1 - 18-21,EXTERIOR SKIN,,CONSTRUCTION,,,,,2025-07-18 07:00,2025-07-31 17:00,2025-07-07 07:00,2025-07-17 09:00,2025-11-20 17:00,2025-11-20 17:00,2025-11-14 07:00,2025-11-14 07:00,0,100,100
CN.SWB3.5530,CANOPY - BERG FRAMING (Facia Sheathing) - GL 5 - A LINE - move to SUES%,Complete,CONSTRUCTION,,SUES-5 - 6-1 - FIZ - GL A -E,EXTERIOR SKIN,,CONSTRUCTION,,,,,2025-10-30 07:00,2025-11-04 17:00,2025-10-30 07:00,2025-11-04 17:00,2025-11-21 17:00,2025-11-21 17:00,2025-11-10 07:00,2025-11-10 07:00,0,40,100
STAIR.2740,INSTALL & INSPECT STAIR #64 - SUE - 32-C - LEVEL 04,Complete,CONSTRUCTION,,INTERIOR STAIRS,L4 - SUP Roof - FAB Roof,SUE - SUPPORT EAST,CONSTRUCTION,,,,,2025-04-04 07:00,2025-04-11 17:00,2025-04-03 07:00,2025-04-03 17:00,2025-11-20 17:00,2025-11-20 17:00,2025-12-05 17:00,2025-12-05 17:00,0,60,100
CN.SWB5.10920,IMPACT - RFI #9745/1740 INSTALL INSULATED METAL PANELS - NW PENTHOUSE - NORTH WALL,Complete,CONSTRUCTION,,NORTH WEST PENTHOUSE,EXTERIOR SKIN,,CONSTRUCTION,,,,,2025-07-18 07:00,2025-07-23 17:00,2025-07-07 07:00,2025-07-11 17:00,2025-11-20 17:00,2025-11-20 17:00,2025-11-25 07:00,2025-11-25 07:00,0,40,100
CN.BB51.ST.3292,IMPACT -RFI 1691/ 10032 EXPANJOINT DETAIL - GL 33 - STAIR 5 - K-L (HORIZONTAL EJ),Complete,CONSTRUCTION,,GRIDLINE 33,GL 33 STAIR 5 (WEST),STAIR 5 (WEST) - K-L,CONSTRUCTION,BRAZOS,,,,2025-01-20 07:00,2025-01-22 17:00,2025-04-09 07:00,2025-05-19 17:00,2025-11-20 17:00,2025-11-20 17:00,2025-11-12 07:00,2025-11-12 07:00,0,30,100
CN.SWA5..5860,IMPACT - NCR#0268 - DRYWALL REWORK NEEDED - STAIR #2 & STAIR #3 - 18/L - ALL LEVELS,Complete,CONSTRUCTION,,SUWN-1 - 18-21,INTERIOR STAIR TOWER - STAIR #3,,CONSTRUCTION,,,,,2025-03-24 07:00,2025-03-27 17:00,2025-04-07 07:00,2025-06-18 17:00,2025-11-20 17:00,2025-11-20 17:00,2025-11-12 07:00,2025-11-12 07:00,0,40,100
CN.SWA5..5870,IMPACT - NCR#0267 Drywall rework Needed - Interior STAIR 21 & STAIR #20 - 19/D - ALL LEVELS,Complete,CONSTRUCTION,,SUES-1 - 19-16,INTERIOR STAIR TOWER - STAIR #20,,CONSTRUCTION,,,,,2024-11-20 07:00,2024-11-23 17:00,2025-04-02 07:00,2025-06-18 17:00,2025-11-20 17:00,2025-11-20 17:00,2025-11-12 07:00,2025-11-12 07:00,0,40,100
CN.SWB3.5540,CANOPY - PATRIOT DECKING - GL 19-16 -A 17,Complete,CONSTRUCTION,,SUES-1 - 19-16,EXTERIOR SKIN,,CONSTRUCTION,,,,,2025-06-19 07:00,2025-06-25 17:00,2025-06-19 07:00,2025-06-25 17:00,2025-11-20 17:00,2025-11-20 17:00,2025-10-29 07:00,2025-10-29 07:00,0,50,100
CN.SWB3.5550,IMPACT - CANOPY - SECAI MEP - ELECTRICAL TEAM (LIGHTING) - GL 19-16 - A 17,Complete,CONSTRUCTION,,SUES-1 - 19-16,EXTERIOR SKIN,,CONSTRUCTION,,,,,2025-11-05 07:00,2025-11-11 17:00,2025-10-27 07:00,2025-10-27 17:00,2025-12-03 17:00,2025-12-03 17:00,2025-11-07 07:00,2025-11-07 07:00,0,50,100
CN.SWB3.5560,CANOPY - BRAZOS TYPE C ROOFING - GL 19-16 - A 17,Complete,CONSTRUCTION,,SUES-1 - 19-16,EXTERIOR SKIN,,CONSTRUCTION,,,,,2025-10-30 07:00,2025-11-04 17:00,2025-10-27 07:00,2025-10-27 17:00,2025-12-03 17:00,2025-12-03 17:00,2025-11-06 07:00,2025-11-06 07:00,0,40,100
CN.SWB3.5570,INSTALL LARGE CANOPY BEAMS & COLUMNS & REMAINING DETAILING - GL 27-33 - A LINE,Complete,CONSTRUCTION,,SUEN-4 - 28-31,EXTERIOR SKIN,,CONSTRUCTION,,,,,2025-04-21 07:00,2025-05-08 17:00,2025-04-09 07:00,2025-06-06 17:00,2025-11-20 17:00,2025-11-20 17:00,2025-09-30 07:00,2025-09-30 07:00,0,140,100
CN.SWB3.5580,CANOPY - ALPHA Paint Cladding steel - GL 27-33 - A LINE,Complete,CONSTRUCTION,,SUEN-4 - 28-31,EXTERIOR SKIN,,CONSTRUCTION,,,,,2025-07-08 07:00,2025-07-14 17:00,2025-06-09 07:00,2025-07-17 07:00,2025-11-20 17:00,2025-11-20 17:00,2025-09-30 07:00,2025-09-30 07:00,0,50,100
CN.SWB3.5590,CANOPY - - BRAZOS TYPE C ROOFING - GL 27-33 - A LINE - NE,Not Started,CONSTRUCTION,,SUEN-4 - 28-31,EXTERIOR SKIN,,CONSTRUCTION,,,,,2025-11-24 07:00,2025-12-02 17:00,,,2025-11-24 07:00,2025-12-02 17:00,2025-09-30 07:00,2025-10-06 17:00,50,50,0
CN.SWB3.5660,CANOPY - KOVACH PANEL - GL 5 - A LINE,Not Started,CONSTRUCTION,,SUES-5 - 6-1 - FIZ - GL A -E,EXTERIOR SKIN,,CONSTRUCTION,,,,,2026-01-26 07:00,2026-02-03 17:00,,,2026-01-26 07:00,2026-02-03 17:00,2025-11-25 07:00,2025-12-05 17:00,70,70,0
EJCN.SWB3.5650,CANOPY - GDA WATERPROOFING - GL 5 - A LINE A4,Not Started,CONSTRUCTION,,SUES-5 - 6-1 - FIZ - GL A -E,EXTERIOR SKIN,,CONSTRUCTION,,,,,2025-12-12 07:00,2025-12-17 17:00,,,2025-12-12 07:00,2025-12-17 17:00,2025-11-19 07:00,2025-11-24 17:00,40,40,0
CN.SWB3.5670,CANOPY BERG SHEATHING (bottom) - GL 5 - A LINE,Not Started,CONSTRUCTION,,SUES-5 - 6-1 - FIZ - GL A -E,EXTERIOR SKIN,,CONSTRUCTION,,,,,2025-12-09 07:00,2025-12-11 17:00,,,2025-12-09 07:00,2025-12-11 17:00,2025-11-14 07:00,2025-11-18 17:00,30,30,0
CN.SWB3.5600,CANOPY - latcon strucutural install and inspection - GL 5 - A LINE,Complete,CONSTRUCTION,,SUES-5 - 6-1 - FIZ - GL A -E,EXTERIOR SKIN,,CONSTRUCTION,,,,,2025-04-21 07:00,2025-04-25 17:00,2025-03-10 07:00,2025-03-25 17:00,2025-11-20 17:00,2025-11-20 17:00,2025-11-04 07:00,2025-11-04 07:00,0,50,100
CN.SWB3.5610,CANOPY - PATRIOT DECKING - GL 5 - A LINE,Complete,CONSTRUCTION,,SUES-5 - 6-1 - FIZ - GL A -E,EXTERIOR SKIN,,CONSTRUCTION,,,,,2025-04-21 07:00,2025-04-25 17:00,2025-03-31 07:00,2025-04-07 16:00,2025-11-20 17:00,2025-11-20 17:00,2025-11-04 07:00,2025-11-04 07:00,0,50,100
CN.SEA5.10890,WATERPROOFING CRICKETS & FLASHING FOR PIPE PENETRATION - GL 7-19 - A LINE - L4 ROOF,Complete,CONSTRUCTION,,SUES-3 - 13-9,L4 - SUP Roof - FAB Roof,,CONSTRUCTION,BRAZOS,,,,2025-05-05 07:00,2025-05-06 17:00,2025-04-28 07:00,2025-05-21 17:00,2025-11-20 17:00,2025-11-20 17:00,2025-12-03 07:00,2025-12-03 07:00,0,20,100
CN.SEB1.10590,TOPPING SLAB - GL 19-28 - A LINE - L4 ROOF,Complete,CONSTRUCTION,,SUEN-3 - 25-28,L4 - SUP Roof - FAB Roof,,CONSTRUCTION,BRAZOS,,,,2025-05-27 07:00,2025-06-02 17:00,2025-05-27 07:00,2025-06-02 17:00,2025-11-20 17:00,2025-11-20 17:00,2025-12-03 07:00,2025-12-03 07:00,0,50,100
CN.SEB1.10600,BRAZOS INSTALL CLIPS & PVC EDGE METAL INSTALL - GL 5-31 - A LINE - L4 ROOF,Active,CONSTRUCTION,,SUEN-4 - 28-31,L4 - SUP Roof - FAB Roof,,CONSTRUCTION,BRAZOS,,,,2025-09-16 07:00,2025-09-22 17:00,2025-09-01 07:00,,2025-11-21 07:00,2025-11-21 17:00,2025-12-03 07:00,2025-12-03 17:00,10,50,0
CN.SEB1.10610,IMPACT - BOTTOM IMP PANEL REMOVAL TO INSTALL FULL ROOF EDGE METAL SYSTEM - GL 5 AND 31- A LINE - L4 ROOF,Complete,CONSTRUCTION,,SUEN-4 - 28-31,L4 - SUP Roof - FAB Roof,,CONSTRUCTION,BRAZOS,,,,2025-07-03 07:00,2025-07-07 17:00,2025-06-17 07:00,2025-08-21 07:00,2025-11-20 17:00,2025-11-20 17:00,2025-12-03 07:00,2025-12-03 07:00,0,20,100
CN.SEB1.10620,IMPACT - BRAZOS - INSTALL SADDLE BACK - GL 5 AND 31- A LINE - L4 ROOF,Complete,CONSTRUCTION,,SUEN-4 - 28-31,L4 - SUP Roof - FAB Roof,,CONSTRUCTION,BRAZOS,,,,2025-09-15 07:00,2025-09-15 17:00,2025-08-27 07:00,2025-08-29 17:00,2025-11-20 17:00,2025-11-20 17:00,2025-12-03 07:00,2025-12-03 07:00,0,10,100
CN.SEB1.10630,IMPACT - REMOVE SADDLE - GL 5 AND 31- A LINE - L4 ROOF,Complete,CONSTRUCTION,,SUEN-4 - 28-31,L4 - SUP Roof - FAB Roof,,CONSTRUCTION,BRAZOS,,,,2025-07-08 07:00,2025-07-08 17:00,2025-06-23 07:00,2025-08-25 17:00,2025-11-20 17:00,2025-11-20 17:00,2025-12-03 07:00,2025-12-03 07:00,0,10,100
CN.SEB1.10640,KOVACH INSTALL STACK JOINT IMP PANEL - GL 5 AND 31 - A LINE - L4 ROOF,Not Started,CONSTRUCTION,,SUEN-4 - 28-31,L4 - SUP Roof - FAB Roof,,CONSTRUCTION,BRAZOS,,,,2025-11-24 07:00,2025-11-25 17:00,,,2025-11-24 07:00,2025-11-25 17:00,2025-12-04 07:00,2025-12-05 17:00,20,20,0
CN.SEB1.10650,IMPACT - RFI # BERG NEW DETAIL FOR MIDDLE OF PARAPET FRAMING V/S WOOD NAILER INSTALL - GL - A LINE - L4 ROOF,Complete,CONSTRUCTION,,SUEN-4 - 28-31,L4 - SUP Roof - FAB Roof,,CONSTRUCTION,BRAZOS,,,,2025-07-03 07:00,2025-07-10 17:00,2025-06-18 07:00,2025-08-21 10:00,2025-11-20 17:00,2025-11-20 17:00,2025-12-03 07:00,2025-12-03 07:00,0,50,100
CN.SEB1.10680,BERG REWORK - BLOCKING WOOD NAILER INSTALL - GL 5 - 31 - L4 - N PARAPET ROOF,Complete,CONSTRUCTION,,FIZ 2 / SUWS 5  (GL6-1) - GL J - N - DATA CENTER 1,L4 - SUP Roof - FAB Roof,,CONSTRUCTION,BRAZOS,,,,2025-05-27 07:00,2025-05-28 17:00,2025-06-04 07:00,2025-07-03 17:00,2025-11-20 17:00,2025-11-20 17:00,2025-12-05 17:00,2025-12-05 17:00,0,20,100
CN.SEB1.10660,TOPPING SLAB - GL 1-3 - N LINE - L4 ROOF,Complete,CONSTRUCTION,,FIZ 2 / SUWS 5  (GL6-1) - GL J - N - DATA CENTER 1,L4 - SUP Roof - FAB Roof,,CONSTRUCTION,BRAZOS,,,,2025-05-27 07:00,2025-06-02 17:00,2025-05-27 07:00,2025-06-02 17:00,2025-11-20 17:00,2025-11-20 17:00,2025-12-05 17:00,2025-12-05 17:00,0,50,100
CN.SEB1.10690,BRAZOS INSTALL CLIPS & PVC EDGE METAL INSTALL/ COPING CAP - GL 5 - 31 - L4 - N PARAPET ROOF,Complete,CONSTRUCTION,,FIZ 2 / SUWS 5  (GL6-1) - GL J - N - DATA CENTER 1,L4 - SUP Roof - FAB Roof,,CONSTRUCTION,BRAZOS,,,,2025-07-22 07:00,2025-07-30 17:00,2025-07-07 15:09,2025-07-11 17:00,2025-11-20 17:00,2025-11-20 17:00,2025-12-05 17:00,2025-12-05 17:00,0,70,100
CN.SEB1.10670,BRAZOS INSTALL CELL SPRAY FOAM - GL 3-1- N LINE - L4 ROOF,Complete,CONSTRUCTION,,FIZ 2 / SUWS 5  (GL6-1) - GL J - N - DATA CENTER 1,L4 - SUP Roof - FAB Roof,,CONSTRUCTION,BRAZOS,,,,2025-06-03 07:00,2025-06-03 17:00,2025-05-02 12:00,2025-05-05 17:00,2025-11-20 17:00,2025-11-20 17:00,2025-12-05 17:00,2025-12-05 17:00,0,10,100
CN.SEB1.10700,BERG INSTALL SHEATHING TOP HALF - GL 3-1- N LINE - L4 ROOF,Complete,CONSTRUCTION,,FIZ 2 / SUWS 5  (GL6-1) - GL J - N - DATA CENTER 1,L4 - SUP Roof - FAB Roof,,CONSTRUCTION,BRAZOS,,,,2025-05-27 07:00,2025-05-27 17:00,2025-05-27 07:00,2025-05-27 17:00,2025-11-20 17:00,2025-11-20 17:00,2025-12-05 17:00,2025-12-05 17:00,0,10,100
CN.SEB1.10710,BRAZOS WATERPROOF TOP HALF - GL 3-1- N LINE - L4 ROOF,Complete,CONSTRUCTION,,FIZ 2 / SUWS 5  (GL6-1) - GL J - N - DATA CENTER 1,L4 - SUP Roof - FAB Roof,,CONSTRUCTION,BRAZOS,,,,2025-05-28 07:00,2025-06-02 17:00,2025-05-28 07:00,2025-06-02 17:00,2025-11-20 17:00,2025-11-20 17:00,2025-12-05 17:00,2025-12-05 17:00,0,40,100
CN.SWA4.7240,IMPACT - RFI 8632 - KOVACH REMOVE IMP PANELS - TRESTLE & CANOPY N32-33,Complete,CONSTRUCTION,,SUWN-5 - 30-33,EXTERIOR SKIN,,CONSTRUCTION,KOVACH,INSULATED METAL PANELS,,,2025-06-23 07:00,2025-06-26 17:00,2025-06-02 07:00,2025-06-09 17:00,2025-11-20 17:00,2025-11-20 17:00,2025-11-13 07:00,2025-11-13 07:00,0,40,100
CN.SWA4.7250,"IMPACT - IOCC 1251, 1252, 1253, 1254 $& 1327 approval - YATES issues SCOs to Patriot to continue work",Complete,CONSTRUCTION,,SUWN-5 - 30-33,EXTERIOR SKIN,,CONSTRUCTION,KOVACH,INSULATED METAL PANELS,,,2025-04-21 07:00,2025-04-24 17:00,2025-03-21 07:00,2025-04-04 17:00,2025-11-20 17:00,2025-11-20 17:00,2025-11-04 07:00,2025-11-04 07:00,0,40,100
CN.SWA4.7260,IMPACT - RFI 8632 - SHOP DRAWINGS PREP PATRIOT - TRESTLE & CANOPY N32,Complete,CONSTRUCTION,,SUWN-5 - 30-33,EXTERIOR SKIN,,CONSTRUCTION,KOVACH,INSULATED METAL PANELS,,,2025-04-21 07:00,2025-04-24 17:00,2025-04-07 07:00,2025-04-23 07:00,2025-11-20 17:00,2025-11-20 17:00,2025-11-13 07:00,2025-11-13 07:00,0,40,100
CN.SWA4.7270,IMPACT - RFI 8632 - SHOP DRAWINGS APPROVAL - TRESTLE & CANOPY N32,Complete,CONSTRUCTION,,SUWN-5 - 30-33,EXTERIOR SKIN,,CONSTRUCTION,KOVACH,INSULATED METAL PANELS,,,2025-04-21 07:00,2025-05-02 17:00,2025-04-25 07:00,2025-05-02 17:00,2025-11-20 17:00,2025-11-20 17:00,2025-11-13 07:00,2025-11-13 07:00,0,100,100
CN.SWB3.5710,CANOPY - ALPHA PAINT CLADDING STEEL - GL 19-16 - N LINE,Complete,CONSTRUCTION,,SUWN-1 - 18-21,EXTERIOR SKIN,,CONSTRUCTION,,,,,2025-09-10 07:00,2025-09-16 17:00,2025-08-06 12:00,2025-08-14 17:00,2025-11-20 17:00,2025-11-20 17:00,2025-11-20 07:00,2025-11-20 07:00,0,50,100
CN.SWA4.7280,IMPACT - MK MARLOW CONTRACT EXECUTION - TRESTLE B INFILL (OVERBRIDGE DESCOPED),Complete,CONSTRUCTION,,SUWN-5 - 30-33,EXTERIOR SKIN,,CONSTRUCTION,KOVACH,INSULATED METAL PANELS,,,2025-07-16 07:00,2025-07-29 17:00,2025-05-29 15:28,2025-06-10 17:00,2025-11-20 17:00,2025-11-20 17:00,2025-11-04 07:00,2025-11-04 07:00,0,100,100
CN.SWA4.7290,IMPACT - SECAI/ JACOBS WALL TYPE RFI RESPONSE - RFI 9978 - N30-31 TRESTLE B INFILL,Complete,CONSTRUCTION,,SUWN-5 - 30-33,EXTERIOR SKIN,,CONSTRUCTION,KOVACH,INSULATED METAL PANELS,,,2025-04-21 07:00,2025-05-08 17:00,2025-01-31 07:00,2025-09-11 07:00,2025-11-20 17:00,2025-11-20 17:00,2025-11-04 07:00,2025-11-04 07:00,0,140,100
CN.SWA4.7300,"IMPACT - MK MARLOW, GDA & KOVACH - PRICING - N30-31 TRESTLE B INFILL",Complete,CONSTRUCTION,,SUWN-5 - 30-33,EXTERIOR SKIN,,CONSTRUCTION,KOVACH,INSULATED METAL PANELS,,,2025-04-21 07:00,2025-05-02 17:00,2025-04-14 07:00,2025-05-27 17:00,2025-11-20 17:00,2025-11-20 17:00,2025-11-04 07:00,2025-11-04 07:00,0,100,100
CN.SWA4.7310,IMPACT - MK MARLOW SUBMITTAL APPROVAL - N30-31 TRESTLE B INFILL (OVERBRIDGE DESCOPED),Complete,CONSTRUCTION,,SUWN-5 - 30-33,EXTERIOR SKIN,,CONSTRUCTION,KOVACH,INSULATED METAL PANELS,,,2025-07-30 07:00,2025-08-19 17:00,2025-05-29 12:00,2025-06-09 11:00,2025-11-20 17:00,2025-11-20 17:00,2025-11-04 07:00,2025-11-04 07:00,0,150,100
CN.SWA4.7320,IMPACT - SECAI INSTALL - MKM SCAFFOLDING - N30-31 TRESTLE B INFILL (OVERBRIDGE DESCOPED),Complete,CONSTRUCTION,,SUWN-5 - 30-33,EXTERIOR SKIN,,CONSTRUCTION,KOVACH,INSULATED METAL PANELS,,,2025-06-23 07:00,2025-06-27 17:00,2025-06-23 07:00,2025-07-14 09:00,2025-11-20 17:00,2025-11-20 17:00,2025-11-04 07:00,2025-11-04 07:00,0,50,100
CN.SWA4.7330,IMPACT - GDA WATERPROOFING - N30-31 TRESTLE B INFILL,Not Started,CONSTRUCTION,,SUWN-5 - 30-33,EXTERIOR SKIN,,CONSTRUCTION,KOVACH,INSULATED METAL PANELS,,,2025-12-02 07:00,2025-12-03 17:00,,,2025-12-02 07:00,2025-12-03 17:00,2025-11-11 07:00,2025-11-12 17:00,20,20,0
CN.SWA4.7340,IMPACT - KOVACH INSTALL K-WALL PANEL (Z-CLIP) - N30-31 TRESTLE B INFILL,Not Started,CONSTRUCTION,,SUWN-5 - 30-33,EXTERIOR SKIN,,CONSTRUCTION,KOVACH,INSULATED METAL PANELS,,,2025-12-15 07:00,2026-01-07 17:00,,,2025-12-15 07:00,2026-01-07 17:00,2025-11-13 07:00,2025-12-05 17:00,150,150,0
CN.SWA4.7350,IMPACT - INSTALL CLADDING + TOUCH UP PAINT - N30-31 TRESTLE B INFILL (OVERBRIDGE DESCOPED),Complete,CONSTRUCTION,,SUWN-5 - 30-33,EXTERIOR SKIN,,CONSTRUCTION,KOVACH,INSULATED METAL PANELS,,,2025-07-18 07:00,2025-07-28 17:00,2025-07-01 15:23,2025-07-11 17:00,2025-11-20 17:00,2025-11-20 17:00,2025-11-04 07:00,2025-11-04 07:00,0,70,100
CN.SWA4.7360,IMPACT - MKM FRAMING & SHEATHING COLD FRAME & INSULATION - N30-31 TRESTLE B INFILL - EXTERIOR,Complete,CONSTRUCTION,,SUWN-5 - 30-33,EXTERIOR SKIN,,CONSTRUCTION,KOVACH,INSULATED METAL PANELS,,,2025-10-01 07:00,2025-10-28 17:00,2025-09-18 07:00,2025-10-10 13:00,2025-11-20 17:00,2025-11-20 17:00,2025-11-04 07:00,2025-11-04 07:00,0,200,100
CN.SWA4.7370,IMPACT - RFI 8632 - FABRICATION & DELIVERY - TRESTLE & CANOPY N32,Complete,CONSTRUCTION,,SUWN-5 - 30-33,EXTERIOR SKIN,,CONSTRUCTION,KOVACH,INSULATED METAL PANELS,,,2025-05-13 07:00,2025-06-05 17:00,2025-05-13 07:00,2025-06-05 17:00,2025-11-20 17:00,2025-11-20 17:00,2025-11-13 07:00,2025-11-13 07:00,0,170,100
CN.SWA4.7380,IMPACT - RFI 8632- ALPHA PAINT CLADDING STEEL - TRESTLE & CANOPY N32,Complete,CONSTRUCTION,,SUWN-5 - 30-33,EXTERIOR SKIN,,CONSTRUCTION,KOVACH,INSULATED METAL PANELS,,,2025-07-14 07:00,2025-07-18 17:00,2025-06-25 07:00,2025-06-25 17:00,2025-11-20 17:00,2025-11-20 17:00,2025-11-13 07:00,2025-11-13 07:00,0,50,100
CN.SEB1.10790,BERG INSTALL WOOD BLOCKING - GL 19-28 - A LINE - L4 ROOF,Complete,CONSTRUCTION,,SUEN-3 - 25-28,L4 - SUP Roof - FAB Roof,,CONSTRUCTION,BRAZOS,,,,2025-07-03 07:00,2025-07-23 17:00,2025-06-04 07:00,2025-07-14 08:00,2025-11-20 17:00,2025-11-20 17:00,2025-12-03 07:00,2025-12-03 07:00,0,140,100
CN.SEB1.10800,IMPACT - PENDING COPING CAP INSTALL - GL 17-18 - L LINE (DS AREA) - VOC ROOM,Not Started,CONSTRUCTION,,SUWS-1 - 18-15,L6 - PENTHOUSE / DS ROOF,,CONSTRUCTION,PATRIOT,INSULATED METAL PANELS,,,2025-11-21 07:00,2025-11-21 17:00,,,2025-11-21 07:00,2025-11-21 17:00,2025-12-05 07:00,2025-12-05 17:00,10,10,0
CN.SEB5.9430,INSTALL COPING CAP - SEB5 - GL 31-33 - CA-D - L6 - NORTH EAST PENTHOUSE,Not Started,CONSTRUCTION,,NORTH EAST PENTHOUSE,L6 - PENTHOUSE / DS ROOF,,CONSTRUCTION,BRAZOS,TOPPING,,,2025-11-21 07:00,2025-11-21 07:00,,,2025-11-21 07:00,2025-11-21 07:00,2025-12-05 17:00,2025-12-05 17:00,0,0,0
STAIR.2750,"IMPACT - RFI 1750 - ELEVATION DIFFERENCE - STAIR #63, 65, 66, 72, 73, 76 - SUW - 18/19-L - LEVEL 04 (pending pricing)",Complete,CONSTRUCTION,,INTERIOR STAIRS,L4 - SUP Roof - FAB Roof,SUW - SUPPORT WEST,CONSTRUCTION,,,,,2025-01-29 07:00,2025-02-05 17:00,2025-03-05 07:00,2025-09-12 17:00,2025-11-20 17:00,2025-11-20 17:00,2025-11-10 07:00,2025-11-10 07:00,0,60,100
STAIR.2760,IMPACT - SCAFFOLD & PLYWOOD/TEMP ELECTRICAL PANEL NEED MOVED OUT - STAIR # 91 - FIZ - 1-F.2 - LEVEL 03 (IOCC SUB 02/05),Active,CONSTRUCTION,,INTERIOR STAIRS,L3 / Waffle Slab Level,FIZ,CONSTRUCTION,,,,,2024-08-30 07:00,2024-10-21 17:00,2024-12-18 07:00,,2025-11-21 07:00,2025-12-15 17:00,2025-10-30 07:00,2025-11-19 17:00,150,300,0
INT.DH.2530,"IMPACT - SECAI directive to hold up doors until 5/15 - LVL 2- FAB120112A, FAB120201A, FAB126109A, FAB126401B",Complete,CONSTRUCTION,,Doors & Hardware - INTERIOR,DOORS & HARDWARE INTERIOR,"Int. Doors Filter 1, 2, 3",PRE - CON / BUYOUT / IMPACTS,DOORS AND HARDWARE,,,,2025-01-13 07:00,2025-04-25 17:00,2025-04-21 07:00,2025-05-16 17:00,2025-11-20 17:00,2025-11-20 17:00,2025-12-03 07:00,2025-12-03 07:00,0,750,100
INT.DH.2540,IMPACT - SECAI directive to hold up doors until 5/25 - LVL 3- FAB130502B -,Complete,CONSTRUCTION,,Doors & Hardware - INTERIOR,DOORS & HARDWARE INTERIOR,"Int. Doors Filter 1, 2, 3",PRE - CON / BUYOUT / IMPACTS,DOORS AND HARDWARE,,,,2025-01-13 07:00,2025-04-25 17:00,2025-04-15 07:00,2025-05-30 07:00,2025-11-20 17:00,2025-11-20 17:00,2025-12-04 07:00,2025-12-04 07:00,0,750,100
INT.DH.2550,"IMPACT - SECAI directive to hold up doors until 6/20 - LVL 1- FAB110101A, FAB110402C, FAB110514A,FAB110514B, FAB116202D,",Complete,CONSTRUCTION,,Doors & Hardware - INTERIOR,DOORS & HARDWARE INTERIOR,"Int. Doors Filter 1, 2, 3",PRE - CON / BUYOUT / IMPACTS,DOORS AND HARDWARE,,,,2025-01-13 07:00,2025-04-25 17:00,2025-04-21 07:00,2025-06-20 17:00,2025-11-20 17:00,2025-11-20 17:00,2025-12-05 17:00,2025-12-05 17:00,0,750,100
INT.DH.2560,IMPACT - RFI 10662 - RAISED ACCESS FLOOR DESIGN CONFLICT - LVL 1 - DOOR FRAMES,Complete,CONSTRUCTION,,Doors & Hardware - INTERIOR,DOORS & HARDWARE INTERIOR,"Int. Doors Filter 1, 2, 3",PRE - CON / BUYOUT / IMPACTS,DOORS AND HARDWARE,,,,2025-01-13 07:00,2025-04-25 17:00,2025-04-23 07:00,2025-06-02 07:00,2025-11-20 17:00,2025-11-20 17:00,2025-11-21 07:00,2025-11-21 07:00,0,750,100
INT.DH.2570,IMPACT - DESIGN CHANGE RFI 9750 - OHC TO HM FRAME - LVL 3,Complete,CONSTRUCTION,,Doors & Hardware - INTERIOR,DOORS & HARDWARE INTERIOR,"Int. Doors Filter 1, 2, 3",PRE - CON / BUYOUT / IMPACTS,DOORS AND HARDWARE,,,,2025-01-13 07:00,2025-04-25 17:00,2025-01-06 00:00,2025-01-13 17:00,2025-11-20 17:00,2025-11-20 17:00,2025-11-19 07:00,2025-11-19 07:00,0,750,100
CN.SWB5.10960,IMPACT - SECAI - AWAIT ELEVATOR COMPLETION - WAITING FOR DATE CONFIRMATION,Complete,CONSTRUCTION,,SUWN-5 - 30-33,,ELEVATOR,CONSTRUCTION,BAKER,,,,2025-08-18 07:00,2025-09-03 17:00,2025-07-01 12:06,2025-07-03 17:00,2025-11-20 17:00,2025-11-20 17:00,2025-12-03 07:00,2025-12-03 07:00,0,120,100
CN.SWA4.7400,CANOPY - ALPHA - TOUCH-UP PAINT - GL A/4-5 (N/4-5 Canopy),Complete,CONSTRUCTION,,SUES-5 - 6-1 - FIZ - GL A -E,EXTERIOR SKIN,,CONSTRUCTION,KOVACH,INSULATED METAL PANELS,,,2025-06-27 07:00,2025-07-03 17:00,2025-06-16 07:00,2025-06-23 17:00,2025-11-20 17:00,2025-11-20 17:00,2025-11-04 07:00,2025-11-04 07:00,0,50,100
CN.SWB3.5720,CANOPY - ALPHA Paint - Touch-up paint - GL 4-5 - N LINE,Complete,CONSTRUCTION,,FIZ 2 / SUWS 5  (GL6-1) - GL J - N - DATA CENTER 1,EXTERIOR SKIN,,CONSTRUCTION,,,,,2025-06-23 07:00,2025-06-27 17:00,2025-06-23 07:00,2025-06-27 17:00,2025-11-20 17:00,2025-11-20 17:00,2025-10-15 07:00,2025-10-15 07:00,0,50,100
CN.SWB3.5740,CANOPY - BERG SHEATHING (Facia Sheath) - GL 4-5 - N LINE,Complete,CONSTRUCTION,,FIZ 2 / SUWS 5  (GL6-1) - GL J - N - DATA CENTER 1,EXTERIOR SKIN,,CONSTRUCTION,,,,,2025-10-08 07:00,2025-10-13 17:00,2025-10-06 07:00,2025-10-08 17:00,2025-11-20 17:00,2025-11-20 17:00,2025-10-15 07:00,2025-10-15 07:00,0,40,100
CN.SWB3.5750,CANOPY - SECAI MEP - MECHANICAL TEAM (RD) - GL 4-5 - N LINE,Complete,CONSTRUCTION,,FIZ 2 / SUWS 5  (GL6-1) - GL J - N - DATA CENTER 1,EXTERIOR SKIN,,CONSTRUCTION,,,,,2025-10-10 07:00,2025-10-13 17:00,2025-10-10 07:00,2025-10-16 17:00,2025-11-20 17:00,2025-11-20 17:00,2025-10-15 07:00,2025-10-15 07:00,0,20,100
CN.SWB3.5760,CANOPY - BERG SHEATHING (bottom) - GL 4-5 - N LINE,Complete,CONSTRUCTION,,FIZ 2 / SUWS 5  (GL6-1) - GL J - N - DATA CENTER 1,EXTERIOR SKIN,,CONSTRUCTION,,,,,2025-10-23 07:00,2025-10-27 17:00,2025-10-23 07:00,2025-10-27 17:00,2025-11-20 17:00,2025-11-20 17:00,2025-10-15 07:00,2025-10-15 07:00,0,30,100
CN.SWB3.5770,CANOPY - GDA WATERPROOFING (SHEET) - GL 4-5 - N LINE,Complete,CONSTRUCTION,,FIZ 2 / SUWS 5  (GL6-1) - GL J - N - DATA CENTER 1,EXTERIOR SKIN,,CONSTRUCTION,,,,,2025-10-28 07:00,2025-10-31 17:00,2025-10-28 07:00,2025-11-01 17:00,2025-11-20 17:00,2025-11-20 17:00,2025-10-15 07:00,2025-10-15 07:00,0,40,100
CN.SWB3.5780,CANOPY - KOVACH PANEL - FIELD MEASURE / DETAIL/ SHOP DWG /FAB / DEL - LEAD TIME - GL 4-5 - N LINE,Complete,CONSTRUCTION,,FIZ 2 / SUWS 5  (GL6-1) - GL J - N - DATA CENTER 1,EXTERIOR SKIN,,CONSTRUCTION,,,,,2025-10-20 07:00,2025-11-21 17:00,2025-10-10 07:00,2025-10-17 17:00,2025-11-20 17:00,2025-11-20 17:00,2025-10-15 07:00,2025-10-15 07:00,0,250,100
CN.SWB3.5790,CANOPY - BERG SHEATHING (side) - GL 19-16 - N LINE,Complete,CONSTRUCTION,,SUWN-1 - 18-21,EXTERIOR SKIN,,CONSTRUCTION,,,,,2025-09-11 07:00,2025-09-12 17:00,2025-09-11 07:00,2025-09-12 17:00,2025-11-21 17:00,2025-11-21 17:00,2025-11-20 07:00,2025-11-20 07:00,0,20,100
CN.SWB3.5800,CANOPY - BRAZOS WATERPROOFING (ROOF) - GL 19-16 - N LINE,Complete,CONSTRUCTION,,SUWN-1 - 18-21,EXTERIOR SKIN,,CONSTRUCTION,,,,,2025-10-16 07:00,2025-10-21 17:00,2025-10-11 07:00,2025-10-11 17:00,2025-11-20 17:00,2025-11-20 17:00,2025-10-15 07:00,2025-10-15 07:00,0,40,100
CN.SWB3.5820,CANOPY - SECAI MEP - INSUALTION WRAP FOR RD - GL 19-16 - N LINE,Complete,CONSTRUCTION,,SUWN-1 - 18-21,EXTERIOR SKIN,,CONSTRUCTION,,,,,2025-10-31 07:00,2025-11-04 17:00,2025-10-24 07:00,2025-10-24 17:00,2025-11-26 17:00,2025-11-26 17:00,2025-11-20 07:00,2025-11-20 07:00,0,30,100
CN.SWB3.5830,CANOPY - KOVACH PANEL - FIELD MEASURE / DETAIL/ SHOP DWG /FAB / DEL - LEAD TIME - GL 19-16 - N LINE,Complete,CONSTRUCTION,,SUWN-1 - 18-21,EXTERIOR SKIN,,CONSTRUCTION,,,,,2025-10-13 07:00,2025-11-11 17:00,2025-10-07 07:00,2025-10-17 17:00,2025-11-21 17:00,2025-11-21 17:00,2025-11-20 07:00,2025-11-20 07:00,0,220,100
CN.SWB3.5840,CANOPY - BERG SHEATHING (bottom) - GL 19-16 - N17 LINE,Complete,CONSTRUCTION,,SUWN-1 - 18-21,EXTERIOR SKIN,,CONSTRUCTION,,,,,2025-10-23 07:00,2025-10-27 17:00,2025-10-23 07:00,2025-10-27 17:00,2025-11-26 17:00,2025-11-26 17:00,2025-11-20 07:00,2025-11-20 07:00,0,30,100
CN.SWB3.5860,CANOPY - KOVACH PANEL INSTALL - GL 19-16 - N LINE,Not Started,CONSTRUCTION,,SUWN-1 - 18-21,EXTERIOR SKIN,,CONSTRUCTION,,,,,2025-12-08 07:00,2025-12-19 17:00,,,2025-12-08 07:00,2025-12-19 17:00,2025-11-20 07:00,2025-12-05 17:00,100,100,0
CN.SWB3.5850,CANOPY - GDA WATERPROOFING (SHEET) - GL 19-16 - N LINE N17,Complete,CONSTRUCTION,,SUWN-1 - 18-21,EXTERIOR SKIN,,CONSTRUCTION,,,,,2025-10-28 07:00,2025-11-03 17:00,2025-10-28 07:00,2025-11-03 17:00,2025-11-26 17:00,2025-11-26 17:00,2025-11-20 07:00,2025-11-20 07:00,0,50,100
CN.SWB3.5870,IMPACT - RFI 10809 RESPONSE - TRESTLE B OVERBRIDGE INTERIOR WALL,Complete,CONSTRUCTION,,SUWN-5 - 30-33,EXTERIOR SKIN,,CONSTRUCTION,,,,,2025-06-27 07:00,2025-07-11 17:00,2025-04-30 07:00,2025-05-16 17:00,2025-11-20 17:00,2025-11-20 17:00,2025-11-04 07:00,2025-11-04 07:00,0,100,100
CN.SWB3.5880,CANOPY - BERG FRAMING (FACIA SHEATHING)- TRESTLE & CANOPY N32-33,Complete,CONSTRUCTION,,SUWN-5 - 30-33,EXTERIOR SKIN,,CONSTRUCTION,,,,,2025-10-06 07:00,2025-10-09 17:00,2025-10-06 07:00,2025-10-08 17:00,2025-11-20 17:00,2025-11-20 17:00,2025-11-13 07:00,2025-11-13 07:00,0,40,100
CN.SWB3.5900,CANOPY - BRAZOS WATERPROOFING (ROOF) - TRESTLE & CANOPY N32-33,Complete,CONSTRUCTION,,SUWN-5 - 30-33,EXTERIOR SKIN,,CONSTRUCTION,,,,,2025-10-16 07:00,2025-10-20 17:00,2025-10-13 07:00,2025-10-14 17:00,2025-11-20 17:00,2025-11-20 17:00,2025-11-13 07:00,2025-11-13 07:00,0,30,100
CN.SWB3.5920,AWNING - INSTALL - N/27-33,Complete,CONSTRUCTION,,SUWN-5 - 30-33,EXTERIOR SKIN,,CONSTRUCTION,,,,,2025-11-03 11:00,2025-11-10 11:00,2025-11-03 11:00,2025-11-10 11:00,2025-11-20 17:00,2025-11-20 17:00,2025-11-20 07:00,2025-11-20 07:00,0,50,100
CN.SWB3.5930,CANOPY - KOVACH PANEL - FIELD MEASURE / DETAIL/ SHOP DWG /FAB / DEL - LEAD TIME - TRESTLE & CANOPY N32-33,Complete,CONSTRUCTION,,SUWN-5 - 30-33,EXTERIOR SKIN,,CONSTRUCTION,,,,,2025-09-15 07:00,2025-09-29 17:00,2025-09-15 07:00,2025-09-19 17:00,2025-11-20 17:00,2025-11-20 17:00,2025-11-20 07:00,2025-11-20 07:00,0,110,100
CN.SWB3.5940,CANOPY - BERG SHEATHING (bottom) - TRESTLE & CANOPY N32-33,Complete,CONSTRUCTION,,SUWN-5 - 30-33,EXTERIOR SKIN,,CONSTRUCTION,,,,,2025-10-27 07:00,2025-10-29 17:00,2025-10-27 07:00,2025-10-29 17:00,2025-11-20 17:00,2025-11-20 17:00,2025-11-13 07:00,2025-11-13 07:00,0,30,100
CN.SWB3.5960,CANOPY - KOVACH PANEL INSTALL - TRESTLE & CANOPY N32-33,Not Started,CONSTRUCTION,,SUWN-5 - 30-33,EXTERIOR SKIN,,CONSTRUCTION,,,,,2025-12-15 07:00,2025-12-30 17:00,,,2025-12-15 07:00,2025-12-30 17:00,2025-11-20 07:00,2025-12-05 17:00,100,100,0
CN.SWB3.5950,CANOPY - GDA WATERPROOFING (SHEET) - TRESTLE & CANOPY N32-33,Complete,CONSTRUCTION,,SUWN-5 - 30-33,EXTERIOR SKIN,,CONSTRUCTION,,,,,2025-10-30 07:00,2025-10-31 17:00,2025-10-30 07:00,2025-11-01 17:00,2025-11-20 17:00,2025-11-20 17:00,2025-11-13 07:00,2025-11-13 07:00,0,20,100
CN.SWB3.5970,CANOPY - ALPHA Paint - Touch-up paint - TRESTLE & CANOPY N32-33,Complete,CONSTRUCTION,,SUWN-5 - 30-33,EXTERIOR SKIN,,CONSTRUCTION,,,,,2025-09-04 07:00,2025-09-04 17:00,2025-08-25 07:00,2025-09-04 17:00,2025-11-20 17:00,2025-11-20 17:00,2025-11-13 07:00,2025-11-13 07:00,0,10,100
CN.SWB3.5990,CANOPY - BERG FRAMING - GL 23-29 - N LINE,Complete,CONSTRUCTION,,SUWN-3 - 24-27,EXTERIOR SKIN,,CONSTRUCTION,,,,,2025-08-14 07:00,2025-08-27 17:00,2025-07-28 07:00,2025-09-10 17:00,2025-11-20 17:00,2025-11-20 17:00,2025-09-29 07:00,2025-09-29 07:00,0,100,100
CN.SWB3.6000,CANOPY - BERG SHEATHING (side) - GL 23-29 - N LINE,Complete,CONSTRUCTION,,SUWN-3 - 24-27,EXTERIOR SKIN,,CONSTRUCTION,,,,,2025-09-10 07:00,2025-09-15 17:00,2025-09-10 07:00,2025-09-15 17:00,2025-11-20 17:00,2025-11-20 17:00,2025-09-29 07:00,2025-09-29 07:00,0,40,100
CN.SWB3.6010,CANOPY - BRAZOS WATERPROOFING (ROOF) - GL 23-29 - N LINE,Complete,CONSTRUCTION,,SUWN-3 - 24-27,EXTERIOR SKIN,,CONSTRUCTION,,,,,2025-10-06 07:00,2025-10-10 17:00,2025-10-03 07:00,2025-10-07 17:00,2025-11-20 17:00,2025-11-20 17:00,2025-09-29 07:00,2025-09-29 07:00,0,50,100
CN.SWB3.6020,CANOPY - SECAI MEP - ELECTRICAL TEAM (LIGHTING) - GL 23-29 - N LINE,Complete,CONSTRUCTION,,SUWN-3 - 24-27,EXTERIOR SKIN,,CONSTRUCTION,,,,,2025-09-12 07:00,2025-10-02 17:00,2025-09-12 07:00,2025-09-16 17:00,2025-11-20 17:00,2025-11-20 17:00,2025-09-29 07:00,2025-09-29 07:00,0,150,100
CN.SWB3.6030,CANOPY - SECAI MEP - MECHANICAL TEAM (RD) - GL 23-29 - N LINE - DRAINS + FIRE SPRINKLERS,Complete,CONSTRUCTION,,SUWN-3 - 24-27,EXTERIOR SKIN,,CONSTRUCTION,,,,,2025-10-02 07:00,2025-10-22 17:00,2025-09-17 07:00,2025-09-29 17:00,2025-11-20 17:00,2025-11-20 17:00,2025-09-29 07:00,2025-09-29 07:00,0,150,100
CN.SWB3.6040,CANOPY - KOVACH PANEL - FIELD MEASURE / DETAIL/ SHOP DWG /FAB / DEL - LEAD TIME - GL 23-29 - N LINE,Complete,CONSTRUCTION,,SUWN-3 - 24-27,EXTERIOR SKIN,,CONSTRUCTION,,,,,2025-09-29 07:00,2025-12-09 17:00,2025-09-17 07:00,2025-09-19 17:00,2025-11-20 17:00,2025-11-20 17:00,2025-10-16 17:00,2025-10-16 17:00,0,500,100
CN.SWB3.6050,CANOPY - BERG SHEATHING (bottom) - GL 23-29 - N LINE,Complete,CONSTRUCTION,,SUWN-3 - 24-27,EXTERIOR SKIN,,CONSTRUCTION,,,,,2025-10-09 07:00,2025-10-16 17:00,2025-10-09 07:00,2025-10-24 17:00,2025-11-20 17:00,2025-11-20 17:00,2025-09-29 07:00,2025-09-29 07:00,0,60,100
CN.SWB3.6070,CANOPY - KOVACH PANEL INSTALL - GL 23-29 - N LINE,Active,CONSTRUCTION,,SUWN-3 - 24-27,EXTERIOR SKIN,,CONSTRUCTION,,,,,2025-11-03 07:00,2025-11-21 17:00,2025-10-29 07:00,,2025-12-02 07:00,2025-12-12 17:00,2025-10-06 07:00,2025-10-16 17:00,90,150,0
EJCN.SWB3.6060,CANOPY - GDA WATERPROOFING (SHEET) - GL 23-29 - N LINE  NW,Active,CONSTRUCTION,,SUWN-3 - 24-27,EXTERIOR SKIN,,CONSTRUCTION,,,,,2025-11-04 07:00,2025-11-10 17:00,2025-10-27 07:00,,2025-11-21 07:00,2025-12-01 17:00,2025-09-29 07:00,2025-10-03 17:00,50,50,0
CN.SWB3.5980,CANOPY - ALPHA Paint - Touch-up paint - GL 23-29 - N LINE - NW,Complete,CONSTRUCTION,,SUWN-3 - 24-27,EXTERIOR SKIN,,CONSTRUCTION,,,,,2025-08-01 07:00,2025-08-13 17:00,2025-07-18 07:00,2025-07-28 17:00,2025-11-20 17:00,2025-11-20 17:00,2025-09-29 07:00,2025-09-29 07:00,0,90,100
CN.SWB3.6080,CANOPY - SECAI MEP - FIRE LINE HANGER - GL 23-29 - N LINE,Complete,CONSTRUCTION,,SUWN-3 - 24-27,EXTERIOR SKIN,,CONSTRUCTION,,,,,2025-10-02 07:00,2025-10-03 17:00,2025-09-26 07:00,2025-09-29 17:00,2025-11-20 17:00,2025-11-20 17:00,2025-09-29 07:00,2025-09-29 07:00,0,20,100
CN.SWB3.6090,CANOPY - ALPHA Paint - Touch-up paint - GL 19-16 -A 17,Complete,CONSTRUCTION,,SUES-1 - 19-16,EXTERIOR SKIN,,CONSTRUCTION,,,,,2025-06-26 07:00,2025-07-09 17:00,2025-06-26 07:00,2025-09-12 17:00,2025-11-20 17:00,2025-11-20 17:00,2025-10-29 07:00,2025-10-29 07:00,0,90,100
CN.SWB3.6100,IMPACT - CANOPY - SECAI MEP - MECHANICAL TEAM (RD) - GL 19-16 - A 17,Not Started,CONSTRUCTION,,SUES-1 - 19-16,EXTERIOR SKIN,,CONSTRUCTION,,,,,2025-11-24 07:00,2025-12-03 17:00,,,2025-11-24 07:00,2025-12-03 17:00,2025-10-29 07:00,2025-11-05 17:00,60,60,0
CN.SWB3.6120,CANOPY - BERG SHEATHING (bottom) - GL 19-16 - A 17,Not Started,CONSTRUCTION,,SUES-1 - 19-16,EXTERIOR SKIN,,CONSTRUCTION,,,,,2025-12-05 07:00,2025-12-09 17:00,,,2025-12-05 07:00,2025-12-09 17:00,2025-11-07 07:00,2025-11-11 17:00,30,30,0
CN.SWB3.6110,CANOPY - KOVACH PANEL - - FIELD MEASURE / DETAIL/ SHOP DWG /FAB / DEL - LEAD TIME - GL 19-16 - A 17,Active,CONSTRUCTION,,SUES-1 - 19-16,EXTERIOR SKIN,,CONSTRUCTION,,,,,2025-10-21 07:00,2025-11-20 17:00,2025-10-08 07:00,,2025-11-24 07:00,2025-12-09 17:00,2025-10-31 07:00,2025-11-13 17:00,100,230,0
CN.SWB3.6130,IMPACT - CANOPY - SECAI MEP - MECHANICAL (RD) - GL 5 - A LINE,Complete,CONSTRUCTION,,SUES-5 - 6-1 - FIZ - GL A -E,EXTERIOR SKIN,,CONSTRUCTION,,,,,2025-10-27 07:00,2025-10-28 17:00,2025-10-24 07:00,2025-10-24 17:00,2025-11-20 17:00,2025-11-20 17:00,2025-11-10 07:00,2025-11-10 07:00,0,20,100
CN.SWB3.6150,CANOPY - BRAZOS TYPE C ROOFING - GL 5 - A LINE -,Not Started,CONSTRUCTION,,SUES-5 - 6-1 - FIZ - GL A -E,EXTERIOR SKIN,,CONSTRUCTION,,,,,2025-12-03 07:00,2025-12-08 17:00,,,2025-12-03 07:00,2025-12-08 17:00,2025-11-10 07:00,2025-11-13 17:00,40,40,0
CN.SWB3.6140,CANOPY - KOVACH PANEL - FIELD MEASURE / DETAIL/ SHOP DWG /FAB / DEL - LEAD TIME - GL 5 - A LINE,Not Started,CONSTRUCTION,,SUES-5 - 6-1 - FIZ - GL A -E,EXTERIOR SKIN,,CONSTRUCTION,,,,,2025-11-24 07:00,2025-12-04 17:00,,,2025-11-24 07:00,2025-12-04 17:00,2025-11-14 07:00,2025-11-24 17:00,70,70,0
CN.SWB3.6160,CANOPY - SECAI MEP - MECHANICAL TEAM (RD) - GL 27-33 - A LINE - NE,Not Started,CONSTRUCTION,,SUEN-4 - 28-31,EXTERIOR SKIN,,CONSTRUCTION,,,,,2025-12-03 07:00,2025-12-05 17:00,,,2025-12-03 07:00,2025-12-05 17:00,2025-10-08 07:00,2025-10-10 17:00,30,30,0
CN.SWB3.6180,CANOPY - BERG SHEATHING (bottom) - GL 27-33 - A LINE - NE,Not Started,CONSTRUCTION,,SUEN-4 - 28-31,EXTERIOR SKIN,,CONSTRUCTION,,,,,2025-12-10 07:00,2025-12-17 17:00,,,2025-12-10 07:00,2025-12-17 17:00,2025-10-14 07:00,2025-10-21 17:00,60,60,0
CN.SWB3.6170,CANOPY - KOVACH PANEL - - FIELD MEASURE / DETAIL/ SHOP DWG /FAB / DEL - LEAD TIME - GL GL 27-33 - A LINE - NE,Active,CONSTRUCTION,,SUEN-4 - 28-31,EXTERIOR SKIN,,CONSTRUCTION,,,,,2025-10-21 07:00,2025-11-18 17:00,2025-10-27 07:00,,2025-11-24 07:00,2025-12-09 17:00,2025-10-10 07:00,2025-10-23 17:00,100,210,0
CN.SWB3.6190,IMPACT - SECAI MEP - FIRE LINE HANGER - GL 27-33 - A LINE,Not Started,CONSTRUCTION,,SUEN-4 - 28-31,EXTERIOR SKIN,,CONSTRUCTION,,,,,2025-12-03 07:00,2025-12-09 17:00,,,2025-12-03 07:00,2025-12-09 17:00,2025-10-15 07:00,2025-10-21 17:00,50,50,0
CN.BB51.ST.3302,INSTALL CLIPS FOR FRONT WALL,Complete,CONSTRUCTION,,GRIDLINE 33,GL 33 STAIR 5 (WEST),STAIR 5 (WEST) - K-L,CONSTRUCTION,BERG,,,,2025-06-17 07:00,2025-06-20 17:00,2025-06-17 07:00,2025-06-25 17:00,2025-11-20 17:00,2025-11-20 17:00,2025-11-12 07:00,2025-11-12 07:00,0,40,100
CN.BB51.ST.3312,ROLLING PLAINS - CLIP FIRE PROOFING TOUCH-UP,Complete,CONSTRUCTION,,GRIDLINE 33,GL 33 STAIR 5 (WEST),STAIR 5 (WEST) - K-L,CONSTRUCTION,BERG,,,,2025-06-26 07:00,2025-07-01 17:00,2025-06-26 07:00,2025-07-03 17:00,2025-11-20 17:00,2025-11-20 17:00,2025-11-12 07:00,2025-11-12 07:00,0,40,100
CN.BB51.ST.3322,INSTALL CLIPS FOR FRONT WALL,Complete,CONSTRUCTION,,GRIDLINE 33,GL 33 STAIR 18 (EAST),STAIR 18 (EAST) - C-D,CONSTRUCTION,BERG,,,,2025-06-30 07:00,2025-07-03 17:00,2025-06-27 07:00,2025-06-30 17:00,2025-11-20 17:00,2025-11-20 17:00,2025-11-12 07:00,2025-11-12 07:00,0,40,100
CN.BB51.ST.3332,ROLLING PLAINS - CLIP FIRE PROOFING TOUCH-UP,Complete,CONSTRUCTION,,GRIDLINE 33,GL 33 STAIR 18 (EAST),STAIR 18 (EAST) - C-D,CONSTRUCTION,BERG,,,,2025-07-01 07:00,2025-07-07 17:00,2025-07-01 07:00,2025-07-03 17:00,2025-11-20 17:00,2025-11-20 17:00,2025-11-12 07:00,2025-11-12 07:00,0,40,100
CN.BB51.ST.3342,INSTALL & INSPECT FRAMING/DRYWALL 1 LAYER EXTERIOR WALLS/EXPANSION JOINT - GL 33/34 - STAIR 5 - K-L,Complete,CONSTRUCTION,,GRIDLINE 33,GL 33 STAIR 5 (WEST),STAIR 5 (WEST) - K-L,CONSTRUCTION,BERG,,,,2025-06-23 07:00,2025-07-08 17:00,2025-06-12 07:00,2025-06-25 17:00,2025-11-20 17:00,2025-11-20 17:00,2025-11-12 07:00,2025-11-12 07:00,0,110,100
CN.BB51.ST.3352,SCAFFOLD MODIFY FOR CLIP INSTALLATION - GL 33 - STAIR 5 - K-L,Complete,CONSTRUCTION,,GRIDLINE 33,GL 33 STAIR 5 (WEST),STAIR 5 (WEST) - K-L,CONSTRUCTION,BERG,,,,2025-06-16 07:00,2025-06-16 17:00,2025-06-16 07:00,2025-06-16 17:00,2025-11-20 17:00,2025-11-20 17:00,2025-11-12 07:00,2025-11-12 07:00,0,10,100
CN.BB51.ST.3362,INSTALL & INSPECT INTERIOR DRYWALL CEILING 1ST-2ND LAYER  - GL 33 - STAIR 5 - K-L,Complete,CONSTRUCTION,,GRIDLINE 33,GL 33 STAIR 5 (WEST),STAIR 5 (WEST) - K-L,CONSTRUCTION,BERG,,,,2025-09-09 07:00,2025-09-12 17:00,2025-09-04 07:00,2025-09-05 17:00,2025-11-20 17:00,2025-11-20 17:00,2025-11-13 07:00,2025-11-13 07:00,0,40,100
CN.BB51.ST.3372,INSTALL & INSPECT FRAMING/SHAFT INTERIOR CEILING - GL 33 - STAIR 5 - K-L INCLUDES SCAFFOLD MODIFICATION,Complete,CONSTRUCTION,,GRIDLINE 33,GL 33 STAIR 5 (WEST),STAIR 5 (WEST) - K-L,CONSTRUCTION,BERG,,,,2025-09-04 07:00,2025-09-08 17:00,2025-09-03 07:00,2025-09-04 07:00,2025-11-20 17:00,2025-11-20 17:00,2025-11-13 07:00,2025-11-13 07:00,0,30,100
CN.BB51.ST.3392,INSTALL & INSPECT INTERIOR DRYWALL CEILING 1ST-2ND LAYER - GL 33 - STAIR 18 - C-D (),Complete,CONSTRUCTION,,GRIDLINE 33,GL 33 STAIR 18 (EAST),STAIR 18 (EAST) - C-D,CONSTRUCTION,BERG,,,,2025-10-10 07:00,2025-10-22 17:00,2025-10-10 07:00,2025-10-13 17:00,2025-11-20 17:00,2025-11-20 17:00,2025-11-19 07:00,2025-11-19 07:00,0,90,100
CN.BB51.ST.3402,INSTALL & INSPECT FRAMING INTERIOR CEILING - GL 33 - STAIR 18 - C-D () Includes Scaffold Modification,Complete,CONSTRUCTION,,GRIDLINE 33,GL 33 STAIR 18 (EAST),STAIR 18 (EAST) - C-D,CONSTRUCTION,BERG,,,,2025-10-06 07:00,2025-10-08 17:00,2025-10-03 07:00,2025-10-10 17:00,2025-11-20 17:00,2025-11-20 17:00,2025-11-19 07:00,2025-11-19 07:00,0,30,100
CN.BB51.ST.3412,FIREPROOFING UNDERSIDE STAIR 18 ROOF SOMD CEILING - GL 33 - STAIR 18 - C-D (),Complete,CONSTRUCTION,,GRIDLINE 33,GL 33 STAIR 18 (EAST),STAIR 18 (EAST) - C-D,CONSTRUCTION,BERG,,,,2025-09-04 07:00,2025-09-09 17:00,2025-08-25 07:00,2025-09-03 17:00,2025-11-20 17:00,2025-11-20 17:00,2025-11-19 07:00,2025-11-19 07:00,0,40,100
CN.BB51.ST.3422,FIREPROOFING CEILING - GL 33 - STAIR 5 - K-L,Complete,CONSTRUCTION,,GRIDLINE 33,GL 33 STAIR 5 (WEST),STAIR 5 (WEST) - K-L,CONSTRUCTION,BERG,,,,2025-08-19 07:00,2025-08-22 17:00,2025-08-14 07:00,2025-08-19 17:00,2025-11-20 17:00,2025-11-20 17:00,2025-11-13 07:00,2025-11-13 07:00,0,40,100
STAIR.2770,IMPACT - SECAI SCAFFOLD BLOCKING ACCESS - STAIR #46 - FIZ - 1-M - LEVEL 02 (FINAL ANCHORING & INSPECTIONS),Complete,CONSTRUCTION,,INTERIOR STAIRS,L2 - SubFab Level,FIZ,CONSTRUCTION,,,,,2025-05-19 07:00,2025-06-09 17:00,2025-05-19 07:00,2025-07-04 17:00,2025-11-20 17:00,2025-11-20 17:00,2025-11-20 07:00,2025-11-20 07:00,0,150,100
CN.SWB2.7010,IMPACT - SECAI MEP PIPE & DUCT PENETRATIONS - RFI #1733,Complete,CONSTRUCTION,,ENCLOSURE,EXTERIOR SKIN,,PRE - CON / BUYOUT / IMPACTS,,INSULATED METAL PANELS,,,2024-04-01 07:00,2024-04-03 11:00,2025-04-01 07:00,2025-05-13 11:00,2025-11-20 17:00,2025-11-20 17:00,2025-12-05 17:00,2025-12-05 17:00,0,24,100
CN.SWB2.7020,IMPACT - SECAI MEP PIPE & DUCT PENETRATIONS - KINGSPAN LETTER - DESIGN DISCUSSION,Complete,CONSTRUCTION,,ENCLOSURE,EXTERIOR SKIN,,PRE - CON / BUYOUT / IMPACTS,,INSULATED METAL PANELS,,,2024-04-01 07:00,2024-04-03 11:00,2025-05-14 07:00,2025-06-10 15:00,2025-11-20 17:00,2025-11-20 17:00,2025-12-05 17:00,2025-12-05 17:00,0,24,100
CN.SWB3.6200,IMPACT - N25 - N27 - WASTE DISCHARGE CABINET - IMP REMOVAL,Complete,CONSTRUCTION,,SUWN-3 - 24-27,EXTERIOR SKIN,,CONSTRUCTION,,,,,2025-05-27 07:00,2025-06-06 17:00,2025-04-01 07:00,2025-04-22 17:00,2025-11-20 17:00,2025-11-20 17:00,2025-09-29 07:00,2025-09-29 07:00,0,90,100
CN.SWB3.6210,IMPACT - N25 - N27 - WASTE DISCHARGE CABINET - PATRIOT SHOP DWGS REVISE,Complete,CONSTRUCTION,,SUWN-3 - 24-27,EXTERIOR SKIN,,CONSTRUCTION,,,,,2025-05-27 07:00,2025-06-06 17:00,2025-04-23 07:00,2025-05-01 17:00,2025-11-20 17:00,2025-11-20 17:00,2025-10-06 07:00,2025-10-06 07:00,0,90,100
CN.SWB3.6220,IMPACT - N25 - N27 - WASTE DISCHARGE CABINET - SHOP DWGS 0790 APPROVAL,Complete,CONSTRUCTION,,SUWN-3 - 24-27,EXTERIOR SKIN,,CONSTRUCTION,,,,,2025-05-27 07:00,2025-06-06 17:00,2025-05-02 07:00,2025-05-16 17:00,2025-11-20 17:00,2025-11-20 17:00,2025-10-06 07:00,2025-10-06 07:00,0,90,100
CN.SWB3.6230,IMPACT - N25 - N29 - WASTE DISCHARGE CABINET - TURNEED OVER TO SECAI,Complete,CONSTRUCTION,,SUWN-3 - 24-27,EXTERIOR SKIN,,CONSTRUCTION,,,,,2025-06-23 07:00,2025-07-10 17:00,2025-06-23 07:00,2025-08-08 17:00,2025-11-20 17:00,2025-11-20 17:00,2025-10-16 17:00,2025-10-16 17:00,0,130,100
CN.SWB5.10970,IMPACT - NW BREEZEWAY - SOFFIT CEILING - DESIGN CHANGE,Complete,CONSTRUCTION,,NORTH WEST PENTHOUSE,EXTERIOR SKIN,,CONSTRUCTION,ALPHA,,,,2025-02-11 07:00,2025-02-17 17:00,2025-05-07 07:00,2025-08-06 17:00,2025-11-20 17:00,2025-11-20 17:00,2025-11-17 07:00,2025-11-17 07:00,0,50,100
CN.BB51.ST.3432,"IMPACT - RFI 1659 VERT EJ PRICING KOVACH, BERG, GDA - GL 33 - STAIR 5 - K-L",Complete,CONSTRUCTION,,GRIDLINE 33,GL 33 STAIR 5 (WEST),STAIR 5 (WEST) - K-L,CONSTRUCTION,BRAZOS,,,,2025-01-20 07:00,2025-01-22 17:00,2025-02-12 00:00,2025-03-11 17:00,2025-11-20 17:00,2025-11-20 17:00,2025-11-12 07:00,2025-11-12 07:00,0,30,100
CN.BB51.ST.3442,IMPACT - RFI 1659 VERT EJ - BERG IOCC APPROVAL - GL 33 - STAIR 5 - K-L,Complete,CONSTRUCTION,,GRIDLINE 33,GL 33 STAIR 5 (WEST),STAIR 5 (WEST) - K-L,CONSTRUCTION,BRAZOS,,,,2025-01-20 07:00,2025-01-22 17:00,2025-03-12 00:00,2025-04-14 17:00,2025-11-20 17:00,2025-11-20 17:00,2025-11-12 07:00,2025-11-12 07:00,0,30,100
CN.SEB55430,IMPACT - SCAFFOLDING MODIFICATION AXIOS/SECAI,Complete,CONSTRUCTION,,SUEN-4 - 28-31,,ELEVATOR,CONSTRUCTION,BAKER,,,,2025-05-28 07:00,2025-06-10 17:00,2025-05-28 07:00,2025-06-02 17:00,2025-11-20 17:00,2025-11-20 17:00,2025-12-02 07:00,2025-12-02 07:00,0,100,100
CN.SEB1.10850,IMPACT - MEP PIPE PENETRATIONS - REWORK - TOPPING & PARAPETS - GL 29- A LINE - L4 ROOF,Complete,CONSTRUCTION,,SUEN-4 - 28-31,L4 - SUP Roof - FAB Roof,,CONSTRUCTION,BRAZOS,,,,2025-06-03 07:00,2025-06-04 17:00,2025-05-26 07:00,2025-07-03 17:00,2025-11-20 17:00,2025-11-20 17:00,2025-12-05 17:00,2025-12-05 17:00,0,20,100
CN.SWB5.10980,BERG REWORK - BLOCKING PARAPET - GL 5 - 31 - L4 - N PARAPET ROOF,Complete,CONSTRUCTION,,SUWN-5 - 30-33,L4 - SUP Roof - FAB Roof,,CONSTRUCTION,BRAZOS,TOPPING,,,2025-05-27 07:00,2025-05-28 17:00,2025-06-03 07:00,2025-07-03 17:00,2025-11-20 17:00,2025-11-20 17:00,2025-12-05 17:00,2025-12-05 17:00,0,20,100
CN.SWB5.10990,IMPACT - MEP PIPE PENETRATION - BRAZOS - INSTALL COPING CAP - GL 5 - 31 - L4 - N PARAPET ROOF,Complete,CONSTRUCTION,,SUWN-5 - 30-33,L4 - SUP Roof - FAB Roof,,CONSTRUCTION,BRAZOS,TOPPING,,,2025-07-03 07:00,2025-07-07 17:00,2025-06-24 07:00,2025-07-08 17:00,2025-11-20 17:00,2025-11-20 17:00,2025-12-05 17:00,2025-12-05 17:00,0,20,100
CN.SEB1.10860,REWORK - REMOVE IMP - GL 5 & 31 - L4 - N PARAPET ROOF,Complete,CONSTRUCTION,,FIZ 2 / SUWS 5  (GL6-1) - GL J - N - DATA CENTER 1,L4 - SUP Roof - FAB Roof,,CONSTRUCTION,BRAZOS,,,,2025-07-18 07:00,2025-07-21 17:00,2025-07-02 07:00,2025-07-07 17:00,2025-11-20 17:00,2025-11-20 17:00,2025-12-05 17:00,2025-12-05 17:00,0,20,100
CN.SEB1.10870,REWORK - BERG SADDLE & BLOCKING INSTALL - GL 5 & 31 - L4 - N PARAPET ROOF,Complete,CONSTRUCTION,,FIZ 2 / SUWS 5  (GL6-1) - GL J - N - DATA CENTER 1,L4 - SUP Roof - FAB Roof,,CONSTRUCTION,BRAZOS,,,,2025-07-22 07:00,2025-07-23 17:00,2025-07-14 07:00,2025-07-15 17:00,2025-11-20 17:00,2025-11-20 17:00,2025-12-05 17:00,2025-12-05 17:00,0,20,100
CN.SEB1.10880,REWORK - RE INSTALL IMP & FLASHING - GL 5 & 31 - L4 - N PARAPET ROOF,Complete,CONSTRUCTION,,FIZ 2 / SUWS 5  (GL6-1) - GL J - N - DATA CENTER 1,L4 - SUP Roof - FAB Roof,,CONSTRUCTION,BRAZOS,,,,2025-07-24 07:00,2025-07-25 17:00,2025-07-16 07:00,2025-07-16 13:00,2025-11-20 17:00,2025-11-20 17:00,2025-12-05 17:00,2025-12-05 17:00,0,20,100
CN.SWB3.6240,IMPACT - IOCC 1487&1489 (GDA) 1337&1339 (Kovach) - SECAI APPROVAL - TRESTLE B ONLY (overbridge Not approved),Complete,CONSTRUCTION,,SUWN-5 - 30-33,EXTERIOR SKIN,,CONSTRUCTION,,,,,2025-06-27 07:00,2025-07-11 17:00,2025-05-27 00:00,2025-06-10 17:00,2025-11-20 17:00,2025-11-20 17:00,2025-11-04 07:00,2025-11-04 07:00,0,100,100
INT.DH.2580,IMPACT - Procurement - DSAD WALL THICKNESS - IOCC 1464,Complete,CONSTRUCTION,,Doors & Hardware - INTERIOR,DOORS & HARDWARE INTERIOR,"Int. Doors Filter 1, 2, 3",PRE - CON / BUYOUT / IMPACTS,DOORS AND HARDWARE,,,,2025-01-13 07:00,2025-04-25 17:00,2025-04-14 07:00,2025-04-14 07:00,2025-11-20 17:00,2025-11-20 17:00,2025-11-17 10:00,2025-11-17 10:00,0,750,100
CN.SWB3.6241,IMPACT - ABR SECAI Civil work is ongoing impacting access,Complete,CONSTRUCTION,,SUWN-3 - 24-27,EXTERIOR SKIN,,CONSTRUCTION,,,,,2025-06-23 07:00,2025-07-07 17:00,2025-05-26 07:00,2025-06-10 17:00,2025-11-20 17:00,2025-11-20 17:00,2025-09-29 07:00,2025-09-29 07:00,0,100,100
INT.DH.2590,IMPACT - RFI 10662 - PATRIOT STAIR REMOVAL & INSTALL THRESHOLD - LVL 1 - DOOR FRAMES,Active,CONSTRUCTION,,Doors & Hardware - INTERIOR,DOORS & HARDWARE INTERIOR,"Int. Doors Filter 1, 2, 3",PRE - CON / BUYOUT / IMPACTS,DOORS AND HARDWARE,,,,2025-10-06 07:00,2025-10-17 17:00,2025-09-17 07:00,,2025-11-21 07:00,2025-11-21 17:00,2025-11-20 07:00,2025-11-20 17:00,10,100,100
CN.SEB55440,IMPACT - SECAI SCAFFOLD PREVEINTING INSTALL ACCESS LADDER - ELEVATOR 19,Complete,CONSTRUCTION,,SUEN-4 - 28-31,,ELEVATOR,CONSTRUCTION,BAKER,,,,2025-06-20 07:00,2025-07-11 17:00,2025-06-20 07:00,2025-07-25 17:00,2025-11-20 17:00,2025-11-20 17:00,2025-12-02 07:00,2025-12-02 07:00,0,150,100
CN.SWB2.7030,IMPACT MOCKUPS- SECAI MEP PIPE & DUCT PENETRATIONS - KINGSPAN,Complete,CONSTRUCTION,,ENCLOSURE,EXTERIOR SKIN,,PRE - CON / BUYOUT / IMPACTS,,INSULATED METAL PANELS,,,2024-04-01 07:00,2024-04-04 17:00,2025-06-20 07:00,2025-09-15 17:00,2025-11-20 17:00,2025-11-20 17:00,2025-12-05 17:00,2025-12-05 17:00,0,40,100
CN.SWA4.7410,IMPACT RFI (HP GCS to FAB) - GL 31-33 - N LINE - ABOVE OVERBRIDGE,Complete,CONSTRUCTION,,SUWN-5 - 30-33,EXTERIOR SKIN,,CONSTRUCTION,KOVACH,INSULATED METAL PANELS,,,2025-08-01 07:00,2025-08-07 17:00,2025-07-21 07:00,2025-07-25 17:00,2025-11-20 17:00,2025-11-20 17:00,2025-11-13 07:00,2025-11-13 07:00,0,50,100
CN.SWA4.7420,KOVACH NCR - INSTALL FRAMING & IMP - GL 31-33 - N LINE - ABOVE TRESTLE,Complete,CONSTRUCTION,,SUWN-5 - 30-33,EXTERIOR SKIN,,CONSTRUCTION,KOVACH,INSULATED METAL PANELS,,,2025-08-08 07:00,2025-08-21 17:00,2025-07-21 07:00,2025-09-23 17:00,2025-11-20 17:00,2025-11-20 17:00,2025-11-04 07:00,2025-11-04 07:00,0,100,100
CN.SWB3.6251,CANOPY - BERG SUBMITTAL PREP & APPROVAL - GL 5 - A LINE,Complete,CONSTRUCTION,,SUES-5 - 6-1 - FIZ - GL A -E,EXTERIOR SKIN,,CONSTRUCTION,,,,,2025-06-09 07:00,2025-06-13 17:00,2025-06-09 07:00,2025-07-29 11:00,2025-11-20 17:00,2025-11-20 17:00,2025-11-04 07:00,2025-11-04 07:00,0,50,100
CN.SWA5..5960,IMPACT - EJ FIRESTOP WORK INSIDE CHASE WALL - Interior STAIR #20 - 19/D - ALL LEVELS,Complete,CONSTRUCTION,,SUES-1 - 19-16,INTERIOR STAIR TOWER - STAIR #20,,CONSTRUCTION,,,,,2025-09-27 07:00,2025-09-30 17:00,2025-09-23 07:00,2025-09-30 17:00,2025-11-20 17:00,2025-11-20 17:00,2025-11-12 07:00,2025-11-12 07:00,0,30,100
CN.SWA5..5970,IMPACT - SECAI STOP WORK 6/27 FOR MEP FIRE SPRINKLER - Interior STAIR #20 - 19/D - ALL LEVELS,Complete,CONSTRUCTION,,SUES-1 - 19-16,INTERIOR STAIR TOWER - STAIR #20,,CONSTRUCTION,,,,,2024-11-20 07:00,2024-11-23 17:00,2025-06-23 07:00,2025-09-19 17:00,2025-11-20 17:00,2025-11-20 17:00,2025-11-12 07:00,2025-11-12 07:00,0,40,100
CN.SWA5..5980,IMPACT - ADDED SCOPE FOR EXP JOINT CLOSURE - Interior STAIR #20 - 19/D - ALL LEVELS,Complete,CONSTRUCTION,,SUES-1 - 19-16,INTERIOR STAIR TOWER - STAIR #20,,CONSTRUCTION,,,,,2025-09-25 07:00,2025-09-30 17:00,2025-09-25 07:00,2025-09-30 17:00,2025-11-20 17:00,2025-11-20 17:00,2025-11-12 07:00,2025-11-12 07:00,0,50,100
CN.SWA5..5990,BERG - SCAFFOLD INSTALL FOR EJ/ EXP JOINT WORK - Interior STAIR #20 - 19/D - ALL LEVELS,Complete,CONSTRUCTION,,SUES-1 - 19-16,INTERIOR STAIR TOWER - STAIR #20,,CONSTRUCTION,,,,,2025-09-23 07:00,2025-09-27 17:00,2025-09-23 07:00,2025-09-27 17:00,2025-11-20 17:00,2025-11-20 17:00,2025-11-12 07:00,2025-11-12 07:00,0,50,100
CN.SWA5..6010,IMPACT - EJ FIRESTOP WORK INSIDE CHASE WALL - STAIR #2 & STAIR #3 - 18/L - ALL LEVELS,Complete,CONSTRUCTION,,SUWN-1 - 18-21,INTERIOR STAIR TOWER - STAIR #3,,CONSTRUCTION,,,,,2025-09-23 07:00,2025-09-26 17:00,2025-09-23 07:00,2025-09-26 17:00,2025-11-20 17:00,2025-11-20 17:00,2025-11-08 07:00,2025-11-08 07:00,0,40,100
CN.SWA5..6030,IMPACT - ADDED SCOPE FOR EXP JOINT CLOSURE - CHASE WALL - STAIR #2 & STAIR #3 - 18/L - ALL LEVELS,Complete,CONSTRUCTION,,SUWN-1 - 18-21,INTERIOR STAIR TOWER - STAIR #3,,CONSTRUCTION,,,,,2025-09-26 07:00,2025-09-26 17:00,2025-09-26 07:00,2025-09-26 17:00,2025-11-20 17:00,2025-11-20 17:00,2025-11-08 07:00,2025-11-08 07:00,0,10,100
CN.SWA5..6040,BERG - SCAFFOLD INSTALL FOR E/J EXP JOINT WORK - CHASE WALL - STAIR #2 & STAIR #3 - 18/L - ALL LEVELS,Complete,CONSTRUCTION,,SUWN-1 - 18-21,INTERIOR STAIR TOWER - STAIR #3,,CONSTRUCTION,,,,,2025-09-24 07:00,2025-09-25 17:00,2025-09-24 07:00,2025-09-25 17:00,2025-11-20 17:00,2025-11-20 17:00,2025-11-08 07:00,2025-11-08 07:00,0,20,100
CN.SWA5..6120,IMPACT - SECAI STOP WORK 6/11 FOR EGRESS - STAIR #3 - 18/L - ALL LEVELS,Complete,CONSTRUCTION,,SUWN-1 - 18-21,INTERIOR STAIR TOWER - STAIR #3,,CONSTRUCTION,,,,,2025-03-24 07:00,2025-03-27 17:00,2025-06-11 07:00,2025-09-05 17:00,2025-11-20 17:00,2025-11-20 17:00,2025-11-03 07:00,2025-11-03 07:00,0,40,100
CN.SWA5..6160,"MASKING, SCAFFOLDING WRAPPING AND FLOOR COVERING - STAIR #22 -REMAINING ALL LEVELS",Not Started,CONSTRUCTION,,SUES-5 - 6-1 - FIZ - GL A -E,INTERIOR STAIR TOWER - STAIR #22 - DE-SCOPED,,CONSTRUCTION,,,,,2025-11-26 15:00,2025-11-29 15:00,,,2025-11-26 15:00,2025-11-29 15:00,2025-11-01 07:00,2025-11-01 17:00,10,10,0
CN.SWA5..6170,PRIME & INSPECT COATING - STAIR #22 - REMAINING ALL LEVELS,Not Started,CONSTRUCTION,,SUES-5 - 6-1 - FIZ - GL A -E,INTERIOR STAIR TOWER - STAIR #22 - DE-SCOPED,,CONSTRUCTION,,,,,2025-12-06 15:00,2025-12-12 15:00,,,2025-12-06 15:00,2025-12-12 15:00,2025-11-10 07:00,2025-11-14 17:00,50,50,0
CN.SWA5..6180,STAIR PREP FOR COATING  - STAIR #22 - REMAINING ALL LEVELS,Not Started,CONSTRUCTION,,SUES-5 - 6-1 - FIZ - GL A -E,INTERIOR STAIR TOWER - STAIR #22 - DE-SCOPED,,CONSTRUCTION,,,,,2025-11-29 15:00,2025-12-05 15:00,,,2025-11-29 15:00,2025-12-05 15:00,2025-11-03 07:00,2025-11-07 17:00,50,50,0
CN.SWA5..6190,INSPECT - STAIR PREP FOR COATING  - STAIR #22 - REMAINING ALL LEVELS,Not Started,CONSTRUCTION,,SUES-5 - 6-1 - FIZ - GL A -E,INTERIOR STAIR TOWER - STAIR #22 - DE-SCOPED,,CONSTRUCTION,,,,,2025-12-05 15:00,2025-12-06 15:00,,,2025-12-05 15:00,2025-12-06 15:00,2025-11-08 07:00,2025-11-08 17:00,10,10,0
CN.SWA5..6220,"MASKING, SCAFFOLDING WRAPPING AND FLOOR COVERING - STAIR #1 - REMAINING ALL LEVELS",Not Started,CONSTRUCTION,,FIZ 2 / SUWS 5  (GL6-1) - GL J - N - DATA CENTER 1,INTERIOR STAIR TOWER - STAIR #1 - DE-SCOPED,,CONSTRUCTION,,,,,2025-12-05 15:00,2025-12-09 15:00,,,2025-12-05 15:00,2025-12-09 15:00,2025-11-08 07:00,2025-11-11 17:00,30,30,0
CN.SWA5..6240,PRIME & INSPECT COATING - STAIR #1 - 5/L - REMAINING ALL LEVELS,Not Started,CONSTRUCTION,,FIZ 2 / SUWS 5  (GL6-1) - GL J - N - DATA CENTER 1,INTERIOR STAIR TOWER - STAIR #1 - DE-SCOPED,,CONSTRUCTION,,,,,2025-12-09 15:00,2025-12-15 15:00,,,2025-12-09 15:00,2025-12-15 15:00,2025-11-12 07:00,2025-11-17 17:00,50,50,0
CN.SWA5..6230,PRIMER COAT INSTALL - STAIR #1 - REMAINING ALL LEVELS,Complete,CONSTRUCTION,,FIZ 2 / SUWS 5  (GL6-1) - GL J - N - DATA CENTER 1,INTERIOR STAIR TOWER - STAIR #1 - DE-SCOPED,,CONSTRUCTION,,,,,2025-06-25 07:00,2025-06-27 17:00,2025-06-25 07:00,2025-06-27 17:00,2025-12-09 15:00,2025-12-09 15:00,2025-11-12 07:00,2025-11-12 07:00,0,30,100
CN.BB51.ST.3452,IMPACT - SECAI/AXIOS STUD FRAMING & SHEATING LEVEL 4C - GL 33 - STAIR 5 - K-L,Complete,CONSTRUCTION,,GRIDLINE 33,GL 33 STAIR 5 (WEST),STAIR 5 (WEST) - K-L,CONSTRUCTION,BRAZOS,,,,2025-07-01 07:00,2025-07-08 17:00,2025-07-01 07:00,2025-07-17 07:00,2025-11-20 17:00,2025-11-20 17:00,2025-11-12 07:00,2025-11-12 07:00,0,50,100
CN.BB51.ST.3462,INSTALL & INSPECT FRAMING WALL  FOR STAIR 5 INTERIOR WALLS - GL 33 - STAIR 5 - K-L,Complete,CONSTRUCTION,,GRIDLINE 33,GL 33 STAIR 5 (WEST),STAIR 5 (WEST) - K-L,CONSTRUCTION,BERG,,,,2025-07-03 07:00,2025-07-24 17:00,2025-05-26 07:00,2025-06-20 17:00,2025-11-20 17:00,2025-11-20 17:00,2025-11-12 07:00,2025-11-12 07:00,0,150,100
CN.BB51.ST.3472,STAIR PREP & COATING/PRIMER/PAINT & INSPECT - REMAINING - GL 33 - STAIR 18 - C-D,Complete,CONSTRUCTION,,GRIDLINE 33,GL 33 STAIR 18 (EAST),STAIR 18 (EAST) - C-D,CONSTRUCTION,BERG,,,,2025-10-31 07:00,2025-11-06 17:00,2025-10-31 07:00,2025-11-11 17:00,2025-11-20 17:00,2025-11-20 17:00,2025-12-02 07:00,2025-12-02 07:00,0,50,100
STAIR.2780,IMPACT - SECAI SCAFFOLD REINSTALLED OBSTRUCTING INSTALL STAIR #52 - SUW - 30-32-N - LEVEL 02,Complete,CONSTRUCTION,,INTERIOR STAIRS,L2 - SubFab Level,SUW - SUPPORT WEST,CONSTRUCTION,,,,,2025-07-07 07:00,2025-07-18 17:00,2025-07-07 07:00,2025-10-13 17:00,2025-11-20 17:00,2025-11-20 17:00,2025-12-05 17:00,2025-12-05 17:00,0,100,100
STAIR.2790,IMPACT - UNISTRUD OBSTRUCTING INSTALLATION - STAIR #R30 - SUE - 31-A.5 - LEVEL 04(ELEVATION ISSUE),Complete,CONSTRUCTION,,INTERIOR STAIRS,L4 - SUP Roof - FAB Roof,SUE - SUPPORT EAST,CONSTRUCTION,,,,,2024-07-01 07:00,2024-07-24 17:00,2024-07-01 07:00,2025-08-01 17:00,2025-11-20 17:00,2025-11-20 17:00,2025-11-06 07:00,2025-11-06 07:00,0,150,100
STAIR.2800,IMPACT PENDING SECAI INSTALL BACKING FOR IMP STAIR/RAMP # 5-L - SUE - 5-B - LEVEL 04,Complete,CONSTRUCTION,,INTERIOR STAIRS,L4 - SUP Roof - FAB Roof,SUE - SUPPORT EAST,CONSTRUCTION,,,,,2025-07-07 07:00,2025-07-18 17:00,2025-07-07 07:00,2025-08-13 07:00,2025-11-20 17:00,2025-11-20 17:00,2025-12-05 17:00,2025-12-05 17:00,0,100,100
MS.ALL.TU.1010,OWNER - TEMPORARY POWER FOR FAB 1F (480v MAIN),Complete,CONSTRUCTION MILESTONES,Key Milestones,Key Milestones,Milestones,,MILESTONE,,Key Milestones,PROJECT MILESTONES,,2022-08-31 16:00,2022-08-31 16:00,2022-08-31 16:00,2022-08-31 16:00,2025-11-20 17:00,2025-11-20 17:00,2025-06-13 08:00,2025-06-13 08:00,0,0,100
MS.ALL.TU.1020,OWNER - ELECTRICAL GROUNDING,Complete,CONSTRUCTION MILESTONES,Key Milestones,Key Milestones,Milestones,,MILESTONE,,Key Milestones,PROJECT MILESTONES,,2022-08-01 16:00,2022-08-01 16:00,2022-08-01 16:00,2022-08-01 16:00,2025-11-20 17:00,2025-11-20 17:00,2025-06-13 08:00,2025-06-13 08:00,0,0,100
MS.ALL.TU.1030,OWNER - SITE UTILITIES,Complete,CONSTRUCTION MILESTONES,Key Milestones,Key Milestones,Milestones,,MILESTONE,,Key Milestones,PROJECT MILESTONES,,2022-06-18 12:00,2022-06-18 12:00,2022-06-18 12:00,2022-06-18 12:00,2025-11-20 17:00,2025-11-20 17:00,2025-06-13 08:00,2025-06-13 08:00,0,0,100
MS.ALL.TU.1040,OWNER - GRADING & ACCESS ROADS FOR PIERS,Complete,CONSTRUCTION MILESTONES,Key Milestones,Key Milestones,Milestones,,MILESTONE,,Key Milestones,PROJECT MILESTONES,,2022-10-10 07:00,2022-10-10 07:00,2022-10-10 07:00,2022-10-10 07:00,2025-11-20 17:00,2025-11-20 17:00,2025-06-13 08:00,2025-06-13 08:00,0,0,100
MS.ALL.TU.1140,OWNER - GENERAL CONTRACTOR EXECUTED AGREEMENT - YATES,Complete,CONSTRUCTION MILESTONES,Key Milestones,Key Milestones,Milestones,,MILESTONE,,Key Milestones,PROJECT MILESTONES,,2022-05-27 08:00,2022-05-27 08:00,2022-05-27 08:00,2022-05-27 08:00,2025-11-20 17:00,2025-11-20 17:00,2025-06-13 08:00,2025-06-13 08:00,0,0,100
MS.ALL.TU.1150,OWNER - GRADING & ACCESS ROADS FOR PRECAST & STEEL ERECTION,Complete,CONSTRUCTION MILESTONES,Key Milestones,Key Milestones,Milestones,,MILESTONE,,Key Milestones,PROJECT MILESTONES,,2022-09-01 16:00,2022-09-01 16:00,2022-09-01 16:00,2022-09-01 16:00,2025-11-20 17:00,2025-11-20 17:00,2025-06-13 08:00,2025-06-13 08:00,0,0,100
MS.ALL.TU.1170,OWNER - RELEASE ACCESS AREA G/L - A,Complete,CONSTRUCTION MILESTONES,Key Milestones,Key Milestones,Milestones,,MILESTONE,,Key Milestones,PROJECT MILESTONES,,2022-10-10 07:00,2022-10-10 07:00,2022-10-10 07:00,2022-10-10 07:00,2025-11-20 17:00,2025-11-20 17:00,2025-06-13 08:00,2025-06-13 08:00,0,0,100
MS.ALL.TU.1180,OWNER - AWARD U/G FIRE & PLUMBING,Complete,CONSTRUCTION MILESTONES,Key Milestones,Key Milestones,Milestones,,MILESTONE,,Key Milestones,PROJECT MILESTONES,,2022-08-22 12:00,2022-08-22 12:00,2022-08-22 12:00,2022-08-22 12:00,2025-11-20 17:00,2025-11-20 17:00,2025-06-13 08:00,2025-06-13 08:00,0,0,100
MS.ALL.TU.1190,OWNER - BEGIN STEEL ERECTION CONSTRUCTION,Complete,CONSTRUCTION MILESTONES,Key Milestones,Key Milestones,Milestones,,MILESTONE,,Key Milestones,PROJECT MILESTONES,,2022-12-27 07:00,2022-12-27 07:00,2022-12-05 07:00,2022-12-05 07:00,2025-11-20 17:00,2025-11-20 17:00,2025-06-13 08:00,2025-06-13 08:00,0,0,100
MS.ALL.TU.1200,OWNER - BEGIN PRECAST CONSTRUCTION,Complete,CONSTRUCTION MILESTONES,Key Milestones,Key Milestones,Milestones,,MILESTONE,,Key Milestones,PROJECT MILESTONES,,2022-12-29 07:00,2022-12-29 07:00,2022-11-03 17:00,2022-11-03 17:00,2025-11-20 17:00,2025-11-20 17:00,2025-06-13 08:00,2025-06-13 08:00,0,0,100
MS.ALL.MS.1000,GC - PH1 PIERS - COMPLETE,Complete,CONSTRUCTION MILESTONES,Drilled Piers,Key Milestones,Milestones,,MILESTONE,,Key Milestones,PROJECT MILESTONES,,2022-11-10 14:00,2022-11-10 14:00,2022-11-10 14:00,2022-11-10 14:00,2025-11-20 17:00,2025-11-20 17:00,2025-12-05 17:00,2025-12-05 17:00,0,0,100
MS.ALL.MS.1020,GC - BELOW GRADE UTILITIES - COMPLETE,Complete,CONSTRUCTION MILESTONES,Key Milestones,Key Milestones,Milestones,,MILESTONE,,Key Milestones,PROJECT MILESTONES,,2022-12-27 07:00,2022-12-27 07:00,2022-12-22 00:00,2022-12-22 00:00,2025-11-20 17:00,2025-11-20 17:00,2025-12-05 17:00,2025-12-05 17:00,0,0,100
MS.ALL.MS.1060,GC - ALL FOUNDATIONS - COMPLETE,Complete,CONSTRUCTION MILESTONES,Key Milestones,Key Milestones,Milestones,,MILESTONE,,Key Milestones,PROJECT MILESTONES,,2023-05-08 17:00,2023-05-08 17:00,2023-05-08 17:00,2023-05-08 17:00,2025-11-20 17:00,2025-11-20 17:00,2025-12-05 17:00,2025-12-05 17:00,0,0,100
MS.ALL.MS.1070,GC - SUP EAST STRUCTURAL STEEL DSAD TOPOUT - COMPLETE,Complete,CONSTRUCTION MILESTONES,Key Milestones,Key Milestones,Milestones,,MILESTONE,,Key Milestones,PROJECT MILESTONES,,2024-12-13 17:00,2024-12-13 17:00,2024-08-17 17:00,2024-08-17 17:00,2025-11-20 17:00,2025-11-20 17:00,2025-10-16 07:00,2025-10-16 07:00,0,0,100
MS.ALL.MS.1080,GC - SUP WEST STRUCTURAL STEEL DSAD TOPOUT - COMPLETE,Complete,CONSTRUCTION MILESTONES,Key Milestones,Key Milestones,Milestones,,MILESTONE,,Key Milestones,PROJECT MILESTONES,,2024-12-02 07:00,2024-12-02 07:00,2024-09-09 07:00,2024-09-09 07:00,2025-11-20 17:00,2025-11-20 17:00,2025-12-05 17:00,2025-12-05 17:00,0,0,100
MS.ALL.MS.1100,GC - FIZ DATA CENTER 2 TURNOVER TO MEP,Complete,CONSTRUCTION MILESTONES,Key Milestones,Key Milestones,Milestones,,MILESTONE,,Key Milestones,PROJECT MILESTONES,,2023-09-05 07:00,2023-09-05 07:00,2023-07-29 07:00,2023-07-29 07:00,2025-11-20 17:00,2025-11-20 17:00,2025-12-05 17:00,2025-12-05 17:00,0,0,100
MS.ALL.MS.1110,GC - FAB BUILDING DRY IN - COMPLETE,Complete,CONSTRUCTION MILESTONES,Key Milestones,Key Milestones,Milestones,,MILESTONE,,Key Milestones,PROJECT MILESTONES,SOMD / Roofing / Waterproofing,2024-12-02 07:00,2024-12-02 07:00,2024-09-10 07:00,2024-09-10 07:00,2025-11-20 17:00,2025-11-20 17:00,2025-12-05 17:00,2025-12-05 17:00,0,0,100
MS.ALL.MS.1120,GC - SUP EAST DRY IN - COMPLETE,Not Started,CONSTRUCTION MILESTONES,Key Milestones,Key Milestones,Milestones,,MILESTONE,,Key Milestones,PROJECT MILESTONES,SOMD / Roofing / Waterproofing,2026-02-27 17:00,2026-02-27 17:00,,,2026-02-27 17:00,2026-02-27 17:00,2025-12-05 17:00,2025-12-05 17:00,0,0,0
MS.ALL.MS.1130,GC - SUP WEST DRY IN - COMPLETE,Not Started,CONSTRUCTION MILESTONES,Key Milestones,Key Milestones,Milestones,,MILESTONE,,Key Milestones,PROJECT MILESTONES,SOMD / Roofing / Waterproofing,2026-01-21 17:00,2026-01-21 17:00,,,2026-01-21 17:00,2026-01-21 17:00,2025-12-05 17:00,2025-12-05 17:00,0,0,0
MS.ALL.MS.5000,YATES - ALL SCOPE BUILDING SUBSTANTIAL COMPLETION,Not Started,CONSTRUCTION MILESTONES,Key Milestones,Key Milestones,Milestones,,MILESTONE,,Key Milestones,PROJECT MILESTONES,,2026-05-15 17:00,2026-05-15 17:00,,,2026-05-15 17:00,2026-05-15 17:00,2025-12-05 17:00,2025-12-05 17:00,0,0,0
MS.ALL.MS.5010,GC - SHELL COMPLETION,Not Started,CONSTRUCTION MILESTONES,Key Milestones,Key Milestones,Milestones,,MILESTONE,,Key Milestones,PROJECT MILESTONES,,2026-02-27 17:00,2026-02-27 17:00,,,2026-02-27 17:00,2026-02-27 17:00,2025-12-05 17:00,2025-12-05 17:00,0,0,0
MS.ALL.MS.5020,PH1-SOMD ROOF DECK SUP EAST COMPLETE,Complete,CONSTRUCTION MILESTONES,Key Milestones,Key Milestones,Milestones,,MILESTONE,,Key Milestones,PROJECT MILESTONES,SOMD / Roofing / Waterproofing,2024-02-10 08:00,2024-02-10 08:00,2023-09-23 08:00,2023-09-23 08:00,2025-11-20 17:00,2025-11-20 17:00,2025-12-05 17:00,2025-12-05 17:00,0,0,100
MS.ALL.MS.5030,PH1-SOMD ROOF DECK SUP WEST COMPLETE,Complete,CONSTRUCTION MILESTONES,Key Milestones,Key Milestones,Milestones,,MILESTONE,,Key Milestones,PROJECT MILESTONES,SOMD / Roofing / Waterproofing,2024-02-10 08:00,2024-02-10 08:00,2023-12-30 08:00,2023-12-30 08:00,2025-11-20 17:00,2025-11-20 17:00,2025-12-05 17:00,2025-12-05 17:00,0,0,100
MS.ALL.MS.5040,PH1-PIT WALLS COMPLETE,Complete,CONSTRUCTION MILESTONES,Key Milestones,Key Milestones,Milestones,,MILESTONE,,Key Milestones,PROJECT MILESTONES,,2023-07-03 07:00,2023-07-03 07:00,2023-02-09 07:00,2023-02-09 07:00,2025-11-20 17:00,2025-11-20 17:00,2025-12-05 17:00,2025-12-05 17:00,0,0,100
MS.ALL.MS.5050,PH1- FAB STEEL TRUSS INSTALLATION COMPLETE,Complete,CONSTRUCTION MILESTONES,Key Milestones,Key Milestones,Milestones,,MILESTONE,,Key Milestones,PROJECT MILESTONES,,2023-05-19 09:00,2023-05-19 09:00,2023-05-19 09:00,2023-05-19 09:00,2025-11-20 17:00,2025-11-20 17:00,2025-12-05 17:00,2025-12-05 17:00,0,0,100
MS.ALL.MS.5060,PH1- ERECT STEEL TRUSSES & INFILL SOUTH (A) SECTION COMPLETE,Complete,CONSTRUCTION MILESTONES,Key Milestones,Key Milestones,Milestones,,MILESTONE,,Key Milestones,PROJECT MILESTONES,,2023-05-08 07:00,2023-05-08 07:00,2023-05-08 07:00,2023-05-08 07:00,2025-11-20 17:00,2025-11-20 17:00,2025-12-05 17:00,2025-12-05 17:00,0,0,100
MS.ALL.MS.5070,PH1- ERECT PRECAST COLUMNS SUP EAST COMPLETE,Complete,CONSTRUCTION MILESTONES,Key Milestones,Key Milestones,Milestones,,MILESTONE,,Key Milestones,PROJECT MILESTONES,,2023-08-20 12:00,2023-08-20 12:00,2023-08-03 12:00,2023-08-03 12:00,2025-11-20 17:00,2025-11-20 17:00,2025-10-16 07:00,2025-10-16 07:00,0,0,100
MS.ALL.MS.5080,PH1- ERECT PRECAST COLUMNS SUP WEST COMPLETE,Complete,CONSTRUCTION MILESTONES,Key Milestones,Key Milestones,Milestones,,MILESTONE,,Key Milestones,PROJECT MILESTONES,,2023-09-12 15:00,2023-09-12 15:00,2023-08-18 15:00,2023-08-18 15:00,2025-11-20 17:00,2025-11-20 17:00,2025-12-05 17:00,2025-12-05 17:00,0,0,100
MS.ALL.MS.5090,PH1- FAB SLAB POURS NORTH (B) COMPLETE,Complete,CONSTRUCTION MILESTONES,Key Milestones,Key Milestones,Milestones,,MILESTONE,,Key Milestones,PROJECT MILESTONES,,2023-03-13 07:00,2023-03-13 07:00,2023-02-24 07:00,2023-02-24 07:00,2025-11-20 17:00,2025-11-20 17:00,2025-12-05 17:00,2025-12-05 17:00,0,0,100
MS.ALL.MS.5100,PH1- FAB SLAB POURS SOUTH (A) COMPLETE,Complete,CONSTRUCTION MILESTONES,Key Milestones,Key Milestones,Milestones,,MILESTONE,,Key Milestones,PROJECT MILESTONES,,2023-05-08 07:00,2023-05-08 07:00,2023-02-23 07:00,2023-02-23 07:00,2025-11-20 17:00,2025-11-20 17:00,2025-12-05 17:00,2025-12-05 17:00,0,0,100
MS.ALL.MS.5110,PH1-BEGIN PRECAST DELIVERIES,Complete,CONSTRUCTION MILESTONES,Key Milestones,Key Milestones,Milestones,,MILESTONE,,Key Milestones,PROJECT MILESTONES,,2022-11-01 07:00,2022-11-01 07:00,2022-11-01 07:00,2022-11-01 07:00,2025-11-20 17:00,2025-11-20 17:00,2025-06-13 08:00,2025-06-13 08:00,0,0,100
MS.ALL.MS.5120,PH1-BEGIN STEEL TRUSS DELIVERIES,Complete,CONSTRUCTION MILESTONES,Key Milestones,Key Milestones,Milestones,,MILESTONE,,Key Milestones,PROJECT MILESTONES,,2022-10-25 07:00,2022-10-25 07:00,2022-10-25 07:00,2022-10-25 07:00,2025-11-20 17:00,2025-11-20 17:00,2025-06-13 08:00,2025-06-13 08:00,0,0,100
MS.ALL.MS.5310,YATES - FAB WAFFLE SLAB PAINTING - COMPLETE,Complete,CONSTRUCTION MILESTONES,Key Milestones,Key Milestones,Milestones,,MILESTONE,,Key Milestones,PROJECT MILESTONES,,2024-06-29 17:00,2024-06-29 17:00,2024-06-27 17:00,2024-06-27 17:00,2025-11-20 17:00,2025-11-20 17:00,2025-12-05 17:00,2025-12-05 17:00,0,0,100
MS.ALL.MS.5320,GC - SUP EAST ROOF TOPPING CONCRETE - COMPLETE,Not Started,CONSTRUCTION MILESTONES,Key Milestones,Key Milestones,Milestones,,MILESTONE,,Key Milestones,PROJECT MILESTONES,SOMD / Roofing / Waterproofing,2026-01-21 17:00,2026-01-21 17:00,,,2026-01-21 17:00,2026-01-21 17:00,2025-12-05 17:00,2025-12-05 17:00,0,0,0
MS.ALL.MS.5330,GC - SUP WEST ROOF TOPPING CONCRETE - COMPLETE,Not Started,CONSTRUCTION MILESTONES,Key Milestones,Key Milestones,Milestones,,MILESTONE,,Key Milestones,PROJECT MILESTONES,SOMD / Roofing / Waterproofing,2026-01-21 17:00,2026-01-21 17:00,,,2026-01-21 17:00,2026-01-21 17:00,2025-12-05 17:00,2025-12-05 17:00,0,0,0
MS.ALL.MS.5340,GC - FAB WAFFLE & PRECAST COMPLETION - COMPLETE,Complete,CONSTRUCTION MILESTONES,Key Milestones,Key Milestones,Milestones,,MILESTONE,,Key Milestones,PROJECT MILESTONES,,2023-09-05 07:00,2023-09-05 07:00,2023-07-15 07:00,2023-07-15 07:00,2025-11-20 17:00,2025-11-20 17:00,2025-12-05 17:00,2025-12-05 17:00,0,0,100
MS.ALL.MS.5350,GC - FIZ ROOF SLAB TOPPING COMPLETION (GL E-J only),Complete,CONSTRUCTION MILESTONES,Key Milestones,Key Milestones,Milestones,,MILESTONE,BAKER,Key Milestones,PROJECT MILESTONES,SOMD / Roofing / Waterproofing,2024-08-09 07:00,2024-08-09 07:00,2024-06-18 07:00,2024-06-18 07:00,2025-11-20 17:00,2025-11-20 17:00,2025-12-05 17:00,2025-12-05 17:00,0,0,100
MS.ALL.MS.5360,GC - FIZ 2F RFP - COMPLETE GL G-N (Slab pour only),Complete,CONSTRUCTION MILESTONES,Key Milestones,Key Milestones,Milestones,,MILESTONE,,Key Milestones,PROJECT MILESTONES,,2023-07-14 09:00,2023-07-14 09:00,2023-07-08 09:00,2023-07-08 09:00,2025-11-20 17:00,2025-11-20 17:00,2025-12-05 17:00,2025-12-05 17:00,0,0,100
MS.ALL.MS.5370,GC - FIZ 3F RFP - COMPLETE GL G-N (Slab pour only),Complete,CONSTRUCTION MILESTONES,Key Milestones,Key Milestones,Milestones,,MILESTONE,,Key Milestones,PROJECT MILESTONES,,2023-07-18 13:00,2023-07-18 13:00,2023-07-12 13:00,2023-07-12 13:00,2025-11-20 17:00,2025-11-20 17:00,2025-12-05 17:00,2025-12-05 17:00,0,0,100
MS.ALL.MS.5380,GC - SUP EAST ROOF 1ST AREA HANDOVER SEA - COMPLETE,Complete,CONSTRUCTION MILESTONES,Key Milestones,Key Milestones,Milestones,,MILESTONE,,Key Milestones,PROJECT MILESTONES,SOMD / Roofing / Waterproofing,2023-07-17 07:00,2023-07-17 07:00,2023-07-16 07:00,2023-07-16 07:00,2025-11-20 17:00,2025-11-20 17:00,2025-12-05 17:00,2025-12-05 17:00,0,0,100
MS.ALL.MS.5390,GC - SUP WEST ROOF 1ST AREA HANDOVER SWA - COMPLETE,Complete,CONSTRUCTION MILESTONES,Key Milestones,Key Milestones,Milestones,,MILESTONE,,Key Milestones,PROJECT MILESTONES,SOMD / Roofing / Waterproofing,2023-09-08 17:00,2023-09-08 17:00,2023-09-01 17:00,2023-09-01 17:00,2025-11-20 17:00,2025-11-20 17:00,2025-12-05 17:00,2025-12-05 17:00,0,0,100
MS.ALL.MS.5410,YATES - TURNOVER FOR FFU INSTALLATION,Not Started,CONSTRUCTION MILESTONES,Key Milestones,Key Milestones,Milestones,,MILESTONE,,Key Milestones,PROJECT MILESTONES,,2025-12-02 07:00,2025-12-02 07:00,,,2025-12-02 07:00,2025-12-02 07:00,2025-12-05 17:00,2025-12-05 17:00,0,0,0
MS.ALL.MS.5420,YATES - MCC ROOF TURNOVER - SOUTH EAST PENTHOUSE,Not Started,CONSTRUCTION MILESTONES,Key Milestones,Key Milestones,Milestones,,MILESTONE,,Key Milestones,PROJECT MILESTONES,,2025-11-21 07:00,2025-11-21 07:00,,,2025-11-21 07:00,2025-11-21 07:00,2025-12-05 17:00,2025-12-05 17:00,0,0,0
MS.ALL.MS.5430,YATES - D & K LINE AD SHAFT WALLS - SGP TURNOVER,Complete,CONSTRUCTION MILESTONES,Key Milestones,Key Milestones,Milestones,,MILESTONE,SECAI,Key Milestones,PROJECT MILESTONES,,2024-12-02 07:00,2024-12-02 07:00,2024-09-27 07:00,2024-09-27 07:00,2025-11-20 17:00,2025-11-20 17:00,2025-06-13 08:00,2025-06-13 08:00,0,0,100
CN.FIZ1.DP.1000,PH1- SLAB FIZ1FIZ1 (WEST INNER @ DATA CENTER AREA),Complete,Area FIZ1 (West Inner),Data Center (Gridlines 1-3),FIZ1 (West Inner) GL J-G - DATA CENTER 2,L1 - Fndn Slab,,CONSTRUCTION,,Cast-in Place Concrete - Baker Concrete,FIZ DATA CENTER,,2022-10-01 10:00,2022-10-20 08:00,2022-10-01 10:00,2022-10-24 15:00,2025-11-20 17:00,2025-11-20 17:00,2025-06-13 08:00,2025-06-13 08:00,0,168,100
CN.FIZ1.DP.1010,PH1- CURE SLAB FIZ1 (WEST INNER @ DATA CENTER AREA),Complete,Area FIZ1 (West Inner),Data Center (Gridlines 1-3),FIZ1 (West Inner) GL J-G - DATA CENTER 2,L1 - Fndn Slab,,CONSTRUCTION,,Concrete Cure,FIZ DATA CENTER,,2022-11-14 16:00,2022-11-21 12:00,2022-10-05 16:00,2022-10-11 17:00,2025-11-20 17:00,2025-11-20 17:00,2025-12-05 17:00,2025-12-05 17:00,0,56,100
FIZ.WEST.1000,PRECAST COLUMN ERECTION - J-G,Complete,Area FIZ1 (West Inner),Data Center (Gridlines 1-3),FIZ1 (West Inner) GL J-G - DATA CENTER 2,ALL LEVELS,,CONSTRUCTION,,Precast,FIZ DATA CENTER,,2023-05-09 13:00,2023-05-12 09:00,2023-05-05 13:00,2023-05-06 00:00,2025-11-20 17:00,2025-11-20 17:00,2025-06-13 08:00,2025-06-13 08:00,0,16,100
FIZ.WEST.1011,STEEL POST INSTALL ANCHORS - J-G,Complete,Area FIZ1 (West Inner),Data Center (Gridlines 1-3),FIZ1 (West Inner) GL J-G - DATA CENTER 2,ALL LEVELS,,CONSTRUCTION,,Precast,FIZ DATA CENTER,,2023-05-25 13:00,2023-05-27 09:00,2023-05-25 13:00,2023-05-27 10:00,2025-11-20 17:00,2025-11-20 17:00,2025-06-13 08:00,2025-06-13 08:00,0,16,100
FIZ.WEST.1021,STEEL COLUMN ERECTION - J-G,Complete,Area FIZ1 (West Inner),Data Center (Gridlines 1-3),FIZ1 (West Inner) GL J-G - DATA CENTER 2,ALL LEVELS,,CONSTRUCTION,,Steel Erection,FIZ DATA CENTER,,2023-06-02 07:00,2023-06-12 13:00,2023-05-31 07:00,2023-06-26 17:00,2025-11-20 17:00,2025-11-20 17:00,2025-06-13 08:00,2025-06-13 08:00,0,96,100
FIZ.WEST.1031,STEEL DECKING LEVELS 2 & 3 J-G,Complete,Area FIZ1 (West Inner),Data Center (Gridlines 1-3),FIZ1 (West Inner) GL J-G - DATA CENTER 2,ALL LEVELS,,CONSTRUCTION,,Decking & Detail,FIZ DATA CENTER,,2023-06-29 12:00,2023-07-07 16:00,2023-06-29 12:00,2023-07-06 17:00,2025-11-20 17:00,2025-11-20 17:00,2025-06-13 08:00,2025-06-13 08:00,0,64,100
FIZ.WEST.1041,SET CLADDING COLUMNS PATRIOT TO DECK J-G,Complete,Area FIZ1 (West Inner),Data Center (Gridlines 1-3),FIZ1 (West Inner) GL J-G - DATA CENTER 2,ALL LEVELS,,CONSTRUCTION,,INSULATED METAL PANELS,FIZ DATA CENTER,,2023-07-24 07:00,2023-07-28 15:00,2023-07-24 07:00,2023-07-28 15:00,2025-11-20 17:00,2025-11-20 17:00,2025-12-04 17:00,2025-12-04 17:00,0,48,100
FIZ.WEST.1051,FRP SLAB ON METAL DECK - ROOF - J-G,Complete,Area FIZ1 (West Inner),Data Center (Gridlines 1-3),FIZ1 (West Inner) GL J-G - DATA CENTER 2,L4 - SUP Roof - FAB Roof,,CONSTRUCTION,,SOMD,CONCRETE,,2023-07-31 07:00,2023-08-03 09:00,2023-07-31 07:00,2023-08-03 09:00,2025-11-20 17:00,2025-11-20 17:00,2025-06-13 08:00,2025-06-13 08:00,0,32,100
FIZ.WEST.1061,FRP SLAB ON METAL DECK - L3 - J-G,Complete,Area FIZ1 (West Inner),Data Center (Gridlines 1-3),FIZ1 (West Inner) GL J-G - DATA CENTER 2,L3 / Waffle Slab Level,,CONSTRUCTION,,SOMD,CONCRETE,,2023-07-10 07:00,2023-07-13 09:00,2023-07-08 07:00,2023-07-12 09:00,2025-11-20 17:00,2025-11-20 17:00,2025-06-13 08:00,2025-06-13 08:00,0,32,100
FIZ.WEST.1071,FRP SLAB ON METAL DECK - L2 - J-G - DATA CTR 2 .,Complete,Area FIZ1 (West Inner),Data Center (Gridlines 1-3),FIZ1 (West Inner) GL J-G - DATA CENTER 2,L2 - SubFab Level,,CONSTRUCTION,,SOMD,CONCRETE,,2023-07-11 07:00,2023-07-14 09:00,2023-07-07 07:00,2023-07-08 09:00,2025-11-20 17:00,2025-11-20 17:00,2025-11-13 17:00,2025-11-13 17:00,0,32,100
FIZ.WEST.1081,INSTALL DOWELS & EPOXY PADS & CURBS - ROOF- J-G,Complete,Area FIZ1 (West Inner),Data Center (Gridlines 1-3),FIZ1 (West Inner) GL J-G - DATA CENTER 2,L4 - SUP Roof - FAB Roof,,CONSTRUCTION,,SOMD,FIZ DATA CENTER,,2023-08-03 09:00,2023-08-04 15:00,2023-08-03 09:00,2023-08-15 15:00,2025-11-20 17:00,2025-11-20 17:00,2025-06-13 08:00,2025-06-13 08:00,0,16,100
FIZ.WEST.1101,PARAPET WALL FRP & FRAME DRYWALL - ROOF - SWA - L3 - J-G GL 1-3,Complete,Area FIZ1 (West Inner),Data Center (Gridlines 1-3),FIZ1 (West Inner) GL J-G - DATA CENTER 2,L4 - SUP Roof - FAB Roof,,CONSTRUCTION,,DRYWALL,FIZ DATA CENTER,,2023-12-01 07:00,2023-12-04 17:00,2023-12-01 07:00,2023-12-05 11:00,2025-11-20 17:00,2025-11-20 17:00,2025-12-04 17:00,2025-12-04 17:00,0,40,100
FIZ.WEST.1111,LIGHT GUAGE FRAMING FOR IMP - GL3 - J-G - L4 ROOF,Complete,Area FIZ1 (West Inner),Data Center (Gridlines 1-3),FIZ1 (West Inner) GL J-G - DATA CENTER 2,L4 - SUP Roof - FAB Roof,,CONSTRUCTION,BERG,INSULATED METAL PANELS,FIZ DATA CENTER,,2024-08-09 07:00,2024-08-13 17:00,2024-07-30 07:00,2024-08-08 17:00,2025-11-20 17:00,2025-11-20 17:00,2025-12-05 17:00,2025-12-05 17:00,0,30,100
FIZ.WEST.1121,INSTALL INSULATED METAL PANEL MODULES - GL3 - J-G - L4 ROOF,Complete,Area FIZ1 (West Inner),Data Center (Gridlines 1-3),FIZ1 (West Inner) GL J-G - DATA CENTER 2,L4 - SUP Roof - FAB Roof,,CONSTRUCTION,KOVACH,INSULATED METAL PANELS,FIZ DATA CENTER,,2024-08-25 07:00,2024-08-28 17:00,2024-08-14 07:00,2024-08-19 17:00,2025-11-20 17:00,2025-11-20 17:00,2025-12-05 17:00,2025-12-05 17:00,0,40,100
FIZ.WEST.1131,WATERPROOFING 1ST LAYER - ROOF - J-G GL 1-3,Complete,Area FIZ1 (West Inner),Data Center (Gridlines 1-3),FIZ1 (West Inner) GL J-G - DATA CENTER 2,L4 - SUP Roof - FAB Roof,,CONSTRUCTION,,INSULATED METAL PANELS,FIZ DATA CENTER,,2023-10-07 08:00,2023-10-08 14:00,2023-09-19 08:00,2023-09-21 09:00,2025-11-20 17:00,2025-11-20 17:00,2025-12-05 17:00,2025-12-05 17:00,0,16,100
FIZ.WEST.1141,CRICKET @ PARAPET - ROOF - J-G GL 1-3,Complete,Area FIZ1 (West Inner),Data Center (Gridlines 1-3),FIZ1 (West Inner) GL J-G - DATA CENTER 2,L4 - SUP Roof - FAB Roof,,CONSTRUCTION,,INSULATED METAL PANELS,FIZ DATA CENTER,,2023-10-09 15:00,2023-10-10 13:00,2023-09-21 14:58,2023-09-23 16:00,2025-11-20 17:00,2025-11-20 17:00,2025-12-05 17:00,2025-12-05 17:00,0,8,100
FIZ.WEST.1151,WATERPROOFING 2ND LAYER - ROOF - J-G GL 1-3,Complete,Area FIZ1 (West Inner),Data Center (Gridlines 1-3),FIZ1 (West Inner) GL J-G - DATA CENTER 2,L4 - SUP Roof - FAB Roof,,CONSTRUCTION,,INSULATED METAL PANELS,FIZ DATA CENTER,,2023-10-10 13:00,2023-10-12 09:00,2023-09-23 08:00,2023-09-26 17:00,2025-11-20 17:00,2025-11-20 17:00,2025-12-05 17:00,2025-12-05 17:00,0,16,100
FIZ.WEST.1161,FRP MECH PADS & PLINTH - ROOF - J-G GL 1-3,Complete,Area FIZ1 (West Inner),Data Center (Gridlines 1-3),FIZ1 (West Inner) GL J-G - DATA CENTER 2,L4 - SUP Roof - FAB Roof,,CONSTRUCTION,,INSULATED METAL PANELS,CONCRETE,,2023-10-13 09:00,2023-10-17 17:00,2023-09-26 07:00,2023-10-01 11:00,2025-11-20 17:00,2025-11-20 17:00,2025-12-05 17:00,2025-12-05 17:00,0,48,100
FIZ.WEST.1171,IMPACT - REPAIR PRIME & WATERPROOF - ROOF - J-H.5 GL 1-3,Complete,Area FIZ1 (West Inner),Data Center (Gridlines 1-3),FIZ1 (West Inner) GL J-G - DATA CENTER 2,L4 - SUP Roof - FAB Roof,,CONSTRUCTION,,INSULATED METAL PANELS,FIZ DATA CENTER,,2024-03-09 08:00,2024-03-09 16:00,2024-03-09 08:00,2024-03-09 16:00,2025-11-20 17:00,2025-11-20 17:00,2025-12-05 17:00,2025-12-05 17:00,0,8,100
FIZ.WEST.1181,FLOOD TEST - ROOF - J-H.5 GL 1-3,Complete,Area FIZ1 (West Inner),Data Center (Gridlines 1-3),FIZ1 (West Inner) GL J-G - DATA CENTER 2,L4 - SUP Roof - FAB Roof,,CONSTRUCTION,,INSULATED METAL PANELS,FIZ DATA CENTER,,2024-03-10 08:00,2024-03-10 16:00,2024-03-10 08:00,2024-03-10 16:00,2025-11-20 17:00,2025-11-20 17:00,2025-12-05 17:00,2025-12-05 17:00,0,8,100
FIZ.WEST.1191,FRP TOPPING SLAB - ROOF - J-H.5 GL 1-3,Complete,Area FIZ1 (West Inner),Data Center (Gridlines 1-3),FIZ1 (West Inner) GL J-G - DATA CENTER 2,L4 - SUP Roof - FAB Roof,,CONSTRUCTION,,TOPPING,CONCRETE,,2024-03-17 07:00,2024-03-19 11:00,2024-03-14 07:00,2024-03-14 12:00,2025-11-20 17:00,2025-11-20 17:00,2025-12-05 17:00,2025-12-05 17:00,0,24,100
FIZ.WEST.1221,STEEL DECKING LEVEL 4 ROOF J-G,Complete,Area FIZ1 (West Inner),Data Center (Gridlines 1-3),FIZ1 (West Inner) GL J-G - DATA CENTER 2,ALL LEVELS,,CONSTRUCTION,,Decking & Detail,FIZ DATA CENTER,,2023-06-22 11:00,2023-06-27 09:00,2023-06-22 11:00,2023-06-29 11:00,2025-11-20 17:00,2025-11-20 17:00,2025-06-13 08:00,2025-06-13 08:00,0,48,100
CN.FIZ1.DP.1070,METAL STUD FRAMING (2hr)  FIZ1 - L2 - Temp opening in North Wall - DATA CTR 2 .,Complete,Area FIZ1 (West Inner),West Support Building,FIZ1 (West Inner) GL J-G - DATA CENTER 2,L2 - SubFab Level,DATA CENTER 2,CONSTRUCTION,BERG,TBD Architectural Finishes,FIZ DATA CENTER,INTERIORS,2023-07-25 13:00,2023-07-30 11:00,2023-07-25 13:00,2023-07-27 09:00,2025-11-20 17:00,2025-11-20 17:00,2025-12-05 07:00,2025-12-05 07:00,0,48,100
CN.FIZ1.1020,MEP ROUGH IN & INSPECTION (by SECAI) FIZ1 - L2 - DATA CTR 2 .,Complete,Area FIZ1 (West Inner),West Support Building,FIZ1 (West Inner) GL J-G - DATA CENTER 2,L2 - SubFab Level,DATA CENTER 2,CONSTRUCTION,,Owner & Design Team,FIZ DATA CENTER,INTERIORS,2023-07-28 15:00,2023-08-01 15:00,2023-07-28 15:00,2023-08-08 11:00,2025-11-20 17:00,2025-11-20 17:00,2025-12-05 07:00,2025-12-05 07:00,0,40,100
CN.FIZ1.1050,INSIDE TAPE & FINISH DRYWALL FIZ1 - L2 (Moisture Resistant Paperless) - DATA CTR 2 .,Complete,Area FIZ1 (West Inner),West Support Building,FIZ1 (West Inner) GL J-G - DATA CENTER 2,L2 - SubFab Level,DATA CENTER 2,CONSTRUCTION,,DRYWALL,FIZ DATA CENTER,INTERIORS,2023-08-03 15:00,2023-08-08 13:00,2023-07-26 15:00,2023-07-29 15:00,2025-11-20 17:00,2025-11-20 17:00,2025-12-05 07:00,2025-12-05 07:00,0,48,100
CN.FIZ1.1070,FINISH PAINT FIZ1 - L2 GL 1-3 - DATA CTR 2 .,Complete,Area FIZ1 (West Inner),West Support Building,FIZ1 (West Inner) GL J-G - DATA CENTER 2,L2 - SubFab Level,DATA CENTER 2,CONSTRUCTION,,TBD Architectural Finishes,FIZ DATA CENTER,INTERIORS,2023-08-28 15:00,2023-09-02 15:00,2023-08-28 15:00,2023-09-11 13:00,2025-11-20 17:00,2025-11-20 17:00,2025-12-05 07:00,2025-12-05 07:00,0,40,100
CN.FIZ1.1040,DRYWALL 2 SIDE FIZ1 - L2 - DATA CTR 2 .,Complete,Area FIZ1 (West Inner),West Support Building,FIZ1 (West Inner) GL J-G - DATA CENTER 2,L2 - SubFab Level,DATA CENTER 2,CONSTRUCTION,,DRYWALL,FIZ DATA CENTER,INTERIORS,2023-08-02 09:00,2023-08-06 09:00,2023-07-25 09:00,2023-07-28 11:00,2025-11-20 17:00,2025-11-20 17:00,2025-12-05 07:00,2025-12-05 07:00,0,40,100
CN.FIZ1.1030,DRYWALL & INSULATION (1 side) (INT) FIZ1 - L2 - DATA CTR 2 .,Complete,Area FIZ1 (West Inner),West Support Building,FIZ1 (West Inner) GL J-G - DATA CENTER 2,L2 - SubFab Level,DATA CENTER 2,CONSTRUCTION,,DRYWALL,FIZ DATA CENTER,INTERIORS,2023-07-28 15:00,2023-08-02 13:00,2023-07-24 15:00,2023-07-28 15:00,2025-11-20 17:00,2025-11-20 17:00,2025-12-05 07:00,2025-12-05 07:00,0,48,100
CN.FIZ1.1080,INSTALL ACCESS FLOOR (BY SECAI)  FIZ1-L2 GL 1-3 - DATA CTR 2 .,Complete,Area FIZ1 (West Inner),West Support Building,FIZ1 (West Inner) GL J-G - DATA CENTER 2,L2 - SubFab Level,DATA CENTER 2,CONSTRUCTION,,Waterproofing - Preferred,FIZ DATA CENTER,SOMD / Roofing / Waterproofing,2023-10-16 07:00,2023-10-19 17:00,2023-09-18 07:00,2023-09-26 17:00,2025-11-20 17:00,2025-11-20 17:00,2025-12-05 07:00,2025-12-05 07:00,0,40,100
CN.FIZ1.1000,INSTALL METAL STAIRS/ RAMPS - SWA - FIZ1 - L2 GL 1-3 J-G - DATA CTR 2 .,Complete,Area FIZ1 (West Inner),West Support Building,FIZ1 (West Inner) GL J-G - DATA CENTER 2,L2 - SubFab Level,DATA CENTER 2,CONSTRUCTION,,INSULATED METAL PANELS,,INTERIORS,2024-02-06 07:00,2024-02-10 09:00,2024-01-10 07:00,2024-01-15 10:00,2025-11-20 17:00,2025-11-20 17:00,2025-12-05 17:00,2025-12-05 17:00,0,32,100
CN.FIZ1.1110,FLOOR STRIPING PAINT - FIZ1 - DATA CENTER 2 - GL 1-3 - J-G - L2,Not Started,Area FIZ1 (West Inner),West Support Building,FIZ1 (West Inner) GL J-G - DATA CENTER 2,L2 - SubFab Level,DATA CENTER 2,CONSTRUCTION,FLOOR STRIPING PAINT,TBD Architectural Finishes,FIZ DATA CENTER,INTERIORS,2025-11-21 07:00,2025-11-21 17:00,,,2025-11-21 07:00,2025-11-21 17:00,2025-12-05 07:00,2025-12-05 17:00,10,10,0
CN.FIZ1.1810,PH1- FIRE PROOFING - SFRM STEEL - FIZ1 - L2 - (Delay - Spray at night due to MEP issue) - DATA CTR 2 .,Complete,Area FIZ1 (West Inner),South Areas (Team A - Gridlines 3-17),FIZ1 (West Inner) GL J-G - DATA CENTER 2,L2 - SubFab Level,DATA CENTER 2,CONSTRUCTION,,FAB Waffle Slabs,FIZ DATA CENTER,,2023-07-25 13:00,2023-08-06 13:00,2023-07-17 13:00,2023-07-24 15:00,2025-11-20 17:00,2025-11-20 17:00,2025-12-05 07:00,2025-12-05 07:00,0,120,100
CN.FIZ1.DP.1080,METAL STUD FRAMING (2hr),Complete,Area FIZ1 (West Inner),West Support Building,FIZ1 (West Inner) GL J-G - DATA CENTER 2,L1 - Fndn Slab,FA/TEM LAB,CONSTRUCTION,BERG,TBD Architectural Finishes,FIZ DATA CENTER,INTERIORS,2023-09-26 07:00,2023-10-01 15:00,2023-09-26 07:00,2023-10-02 17:00,2025-11-20 17:00,2025-11-20 17:00,2025-12-05 07:00,2025-12-05 07:00,0,48,100
CN.FIZ1.DP.1090,METAL STUD FRAMING (2hr) - FIZ1 - L3 GL 1-3 - FIZ,Complete,Area FIZ1 (West Inner),West Support Building,FIZ1 (West Inner) GL J-G - DATA CENTER 2,L3 / Waffle Slab Level,FIZ,CONSTRUCTION,BERG,TBD Architectural Finishes,FIZ DATA CENTER,INTERIORS,2023-08-21 07:00,2023-08-24 11:00,2023-08-18 00:00,2023-08-21 11:00,2025-11-20 17:00,2025-11-20 17:00,2025-12-05 07:00,2025-12-05 07:00,0,24,100
CN.FIZ1.1820,MEP ROUGH IN & INSPECTION (by SECAI) - FA LAB1 - SWA  - FIZ1 - L1 - GL 1-3 J-G,Complete,Area FIZ1 (West Inner),West Support Building,FIZ1 (West Inner) GL J-G - DATA CENTER 2,L1 - Fndn Slab,FA/TEM LAB,CONSTRUCTION,,DRYWALL,FIZ DATA CENTER,INTERIORS,2023-10-16 07:00,2023-10-19 17:00,2023-10-12 07:00,2023-11-13 13:00,2025-11-20 17:00,2025-11-20 17:00,2025-12-05 07:00,2025-12-05 07:00,0,40,100
CN.FIZ1.1850,TAPE & FINISH DRYWALL - FA LAB1 - SWA  - FIZ1 - L1 - GL 1-3 J-G,Complete,Area FIZ1 (West Inner),West Support Building,FIZ1 (West Inner) GL J-G - DATA CENTER 2,L1 - Fndn Slab,FA/TEM LAB,CONSTRUCTION,,DRYWALL,FIZ DATA CENTER,INTERIORS,2023-11-17 07:00,2023-11-20 17:00,2023-11-17 07:00,2023-11-18 11:00,2025-11-20 17:00,2025-11-20 17:00,2025-12-05 07:00,2025-12-05 07:00,0,40,100
CN.FIZ1.1840,DRYWALL 2 SIDE - FA LAB1 - SWA - FIZ1 - L1 - GL 1-3 J-G,Complete,Area FIZ1 (West Inner),West Support Building,FIZ1 (West Inner) GL J-G - DATA CENTER 2,L1 - Fndn Slab,FA/TEM LAB,CONSTRUCTION,,DRYWALL,FIZ DATA CENTER,INTERIORS,2023-11-14 13:00,2023-11-19 13:00,2023-11-14 13:00,2023-11-16 17:00,2025-11-20 17:00,2025-11-20 17:00,2025-12-05 07:00,2025-12-05 07:00,0,40,100
CN.FIZ1.1830,DRYWALL & INSULATION (1 side) (INT) - - L1,Complete,Area FIZ1 (West Inner),West Support Building,FIZ1 (West Inner) GL J-G - DATA CENTER 2,L1 - Fndn Slab,FA/TEM LAB,CONSTRUCTION,,DRYWALL,FIZ DATA CENTER,INTERIORS,2023-10-05 07:00,2023-10-09 15:00,2023-10-05 07:00,2023-10-12 11:00,2025-11-20 17:00,2025-11-20 17:00,2025-12-05 07:00,2025-12-05 07:00,0,48,100
CN.FIZ1.1900,FLOOR STRIPING PAINT (BY SECAI) - FIZ1 - FA LAB 1 - GL 1-3 - J-G - L1,Not Started,Area FIZ1 (West Inner),West Support Building,FIZ1 (West Inner) GL J-G - DATA CENTER 2,L1 - Fndn Slab,FA/TEM LAB,CONSTRUCTION,SECAI,TBD Architectural Finishes,FIZ DATA CENTER,INTERIORS,2025-11-21 07:00,2025-11-21 17:00,,,2025-11-21 07:00,2025-11-21 17:00,2025-12-05 07:00,2025-12-05 17:00,10,10,0
CN.FIZ1.1920,MEP ROUGH IN & INSPECTION (by SECAI) FIZ1 - L3 GL 1-3 - FIZ,Complete,Area FIZ1 (West Inner),West Support Building,FIZ1 (West Inner) GL J-G - DATA CENTER 2,L3 / Waffle Slab Level,FIZ,CONSTRUCTION,,Owner & Design Team,FIZ DATA CENTER,INTERIORS,2023-10-16 07:00,2023-10-18 12:00,2023-10-09 07:00,2023-10-12 17:00,2025-11-20 17:00,2025-11-20 17:00,2025-12-05 07:00,2025-12-05 07:00,0,24,100
CN.FIZ1.1950,TAPE & FINISH DRYWALL FIZ1 - SWA  - L3 GL 1-3 J-G - FIZ,Complete,Area FIZ1 (West Inner),West Support Building,FIZ1 (West Inner) GL J-G - DATA CENTER 2,L3 / Waffle Slab Level,FIZ,CONSTRUCTION,,DRYWALL,FIZ DATA CENTER,INTERIORS,2024-01-22 07:00,2024-01-24 11:00,2024-01-02 07:00,2024-01-10 16:00,2025-11-20 17:00,2025-11-20 17:00,2025-12-05 07:00,2025-12-05 07:00,0,24,100
CN.FIZ1.1940,DRYWALL 2 SIDE FIZ1 - L3 GL 1-3 - FIZ,Complete,Area FIZ1 (West Inner),West Support Building,FIZ1 (West Inner) GL J-G - DATA CENTER 2,L3 / Waffle Slab Level,FIZ,CONSTRUCTION,,DRYWALL,FIZ DATA CENTER,INTERIORS,2023-10-16 15:00,2023-10-19 09:00,2023-10-13 15:00,2023-10-16 17:00,2025-11-20 17:00,2025-11-20 17:00,2025-12-05 07:00,2025-12-05 07:00,0,24,100
CN.FIZ1.1930,DRYWALL & INSULATION (1 side) (INT) - FIZ1 - L3 GL 1-3 - FIZ,Complete,Area FIZ1 (West Inner),West Support Building,FIZ1 (West Inner) GL J-G - DATA CENTER 2,L3 / Waffle Slab Level,FIZ,CONSTRUCTION,,DRYWALL,FIZ DATA CENTER,INTERIORS,2023-10-16 07:00,2023-10-18 12:00,2023-10-12 07:00,2023-10-14 16:00,2025-11-20 17:00,2025-11-20 17:00,2025-12-05 07:00,2025-12-05 07:00,0,24,100
CN.FIZ1.2010,FLOOR STRIPING PAINT - FIZ1 - GL 1-3 - J-G - L3,Not Started,Area FIZ1 (West Inner),West Support Building,FIZ1 (West Inner) GL J-G - DATA CENTER 2,L3 / Waffle Slab Level,FIZ,CONSTRUCTION,FLOOR STRIPING PAINT,TBD Architectural Finishes,FIZ DATA CENTER,INTERIORS,2025-11-21 07:00,2025-11-21 17:00,,,2025-11-21 07:00,2025-11-21 17:00,2025-12-05 07:00,2025-12-05 17:00,10,10,0
FIZ.WEST.2231,IMPACT [CL 11] - CONNECTION FIX DELAY - PRECAST COLUMN TO STEEL - RFI 2685,Complete,Area FIZ1 (West Inner),,FIZ1 (West Inner) GL J-G - DATA CENTER 2,ALL LEVELS,,CONSTRUCTION,,Steel Erection,,,2023-06-17 08:00,2023-06-22 16:00,2023-06-17 08:00,2023-07-29 08:00,2025-11-20 17:00,2025-11-20 17:00,2025-06-13 08:00,2025-06-13 08:00,0,48,100
CN.FIZ1.2020,DRYWALL OUTSIDE TAPE & FINISH DRYWALL FIZ1 - L2 GL 1-3(Moisture Resistant Paperless) - DATA CTR 2 .,Complete,Area FIZ1 (West Inner),West Support Building,FIZ1 (West Inner) GL J-G - DATA CENTER 2,L2 - SubFab Level,DATA CENTER 2,CONSTRUCTION,,DRYWALL,FIZ DATA CENTER,INTERIORS,2023-08-08 11:00,2023-08-14 09:00,2023-08-08 11:00,2023-08-19 16:00,2025-11-20 17:00,2025-11-20 17:00,2025-12-05 07:00,2025-12-05 07:00,0,48,100
FIZ.WEST.2241,HORIZONTAL CLADDING STEEL PATRIOT TO DECK J-G,Complete,Area FIZ1 (West Inner),Data Center (Gridlines 1-3),FIZ1 (West Inner) GL J-G - DATA CENTER 2,ALL LEVELS,,CONSTRUCTION,,INSULATED METAL PANELS,FIZ DATA CENTER,,2023-07-24 07:00,2023-07-28 15:00,2023-07-24 07:00,2023-09-26 15:00,2025-11-20 17:00,2025-11-20 17:00,2025-12-05 07:00,2025-12-05 07:00,0,48,100
FIZ.WEST.2251,IMPACT [CL 36] - WELD LOWER STUB COLUMNS - MEP RACK,Complete,Area FIZ1 (West Inner),Data Center (Gridlines 1-3),FIZ1 (West Inner) GL J-G - DATA CENTER 2,L4 - SUP Roof - FAB Roof,,CONSTRUCTION,,Decking & Detail,FIZ DATA CENTER,,2023-08-28 07:00,2023-09-05 11:00,2023-08-16 13:00,2023-08-22 17:00,2025-11-20 17:00,2025-11-20 17:00,2025-12-04 17:00,2025-12-04 17:00,0,64,100
FIZ.WEST.2261,IMPACT [CL 36] - INSTALL UPPER STUB COLUMNS - MEP RACK - Added scope for WW,Complete,Area FIZ1 (West Inner),Data Center (Gridlines 1-3),FIZ1 (West Inner) GL J-G - DATA CENTER 2,L4 - SUP Roof - FAB Roof,,CONSTRUCTION,,Decking & Detail,FIZ DATA CENTER,,2023-08-28 07:00,2023-09-05 11:00,2023-07-31 07:00,2023-09-18 17:00,2025-11-20 17:00,2025-11-20 17:00,2025-12-04 17:00,2025-12-04 17:00,0,64,100
FIZ.WEST.2281,IMPACT [CL 51] - SUBMITTAL #1398 - SECAI DIRECTED REWORK WW - STUB COLUMNS CUTTING - Rework Waterproofing - G-H.8,Complete,Area FIZ1 (West Inner),Data Center (Gridlines 1-3),FIZ1 (West Inner) GL J-G - DATA CENTER 2,L4 - SUP Roof - FAB Roof,,CONSTRUCTION,,Decking & Detail,FIZ DATA CENTER,,2023-08-28 07:00,2023-09-15 17:00,2023-10-11 07:00,2023-10-27 17:00,2025-11-20 17:00,2025-11-20 17:00,2025-12-05 17:00,2025-12-05 17:00,0,160,100
FIZ.WEST.2291,IMPACT [CL 51] - SUBMITTAL #1398 - SECAI DIRECTED REWORK STARCON - STUB COLUMNS,Complete,Area FIZ1 (West Inner),Data Center (Gridlines 1-3),FIZ1 (West Inner) GL J-G - DATA CENTER 2,L4 - SUP Roof - FAB Roof,,CONSTRUCTION,,Decking & Detail,FIZ DATA CENTER,,2023-08-28 07:00,2023-09-15 17:00,2023-10-28 08:00,2023-12-29 15:00,2025-11-20 17:00,2025-11-20 17:00,2025-12-05 17:00,2025-12-05 17:00,0,160,100
FIZ.WEST.2301,IMPACT - SECAI / STARCON - BASE PLATE WELD & LOWER HORZ BEAM CONNECTIONS,Complete,Area FIZ1 (West Inner),Data Center (Gridlines 1-3),FIZ1 (West Inner) GL J-G - DATA CENTER 2,L4 - SUP Roof - FAB Roof,,CONSTRUCTION,,Decking & Detail,FIZ DATA CENTER,,2023-08-28 07:00,2023-09-15 17:00,2024-01-02 07:00,2024-03-07 00:00,2025-11-20 17:00,2025-11-20 17:00,2025-12-05 17:00,2025-12-05 17:00,0,160,100
FIZ.WEST.2311,IMPACT [C29 / S12] - F04.01 / RFI 6488 - ADDED STRUCTURAL STEEL CCD/SHOPS/APPROVAL - FIZ ROOF GL 1-3 - J-L / C-E,Complete,Area FIZ1 (West Inner),Data Center (Gridlines 1-3),STEEL,L4 - SUP Roof - FAB Roof,,PRE - CON / BUYOUT / IMPACTS,W&W,TOPPING,FIZ DATA CENTER,,2024-02-05 07:00,2024-02-14 17:00,2024-01-25 07:00,2024-04-24 17:00,2025-11-20 17:00,2025-11-20 17:00,2025-12-05 17:00,2025-12-05 17:00,0,80,100
FIZ.WEST.2321,IMPACT - WWSE SOMD PENETRATIONS - ROOF L4 GL 1-3,Complete,Area FIZ1 (West Inner),Data Center (Gridlines 1-3),FIZ1 (West Inner) GL J-G - DATA CENTER 2,L4 - SUP Roof - FAB Roof,,CONSTRUCTION,,INSULATED METAL PANELS,FIZ DATA CENTER,,2024-03-11 07:00,2024-03-22 13:00,2024-03-09 12:00,2024-04-01 12:00,2025-11-20 17:00,2025-11-20 17:00,2025-12-05 17:00,2025-12-05 17:00,0,56,100
FIZ.WEST.2331,IMPACT - WATERPROOF NEW INSPECTION PROCEDURE CAUSING DELAY - ROOF - J-H.5 GL 1-3,Complete,Area FIZ1 (West Inner),Data Center (Gridlines 1-3),FIZ1 (West Inner) GL J-G - DATA CENTER 2,L4 - SUP Roof - FAB Roof,,CONSTRUCTION,,INSULATED METAL PANELS,FIZ DATA CENTER,,2024-03-12 07:00,2024-03-18 11:00,2024-03-12 07:00,2024-03-12 17:00,2025-11-20 17:00,2025-11-20 17:00,2025-12-05 17:00,2025-12-05 17:00,0,24,100
FIZ.WEST.2341,FRP TOPPING SLAB - ROOF - H.5-G GL 1-3,Complete,Area FIZ1 (West Inner),Data Center (Gridlines 1-3),FIZ1 (West Inner) GL J-G - DATA CENTER 2,L4 - SUP Roof - FAB Roof,,CONSTRUCTION,,TOPPING,CONCRETE,,2024-03-23 07:00,2024-03-25 11:00,2024-02-19 00:00,2024-02-28 00:00,2025-11-20 17:00,2025-11-20 17:00,2025-12-05 17:00,2025-12-05 17:00,0,24,100
FIZ.WEST.2351,FLOOD TEST - ROOF - H.5-G GL 1-3,Complete,Area FIZ1 (West Inner),Data Center (Gridlines 1-3),FIZ1 (West Inner) GL J-G - DATA CENTER 2,L4 - SUP Roof - FAB Roof,,CONSTRUCTION,,INSULATED METAL PANELS,FIZ DATA CENTER,,2024-03-17 07:00,2024-03-18 13:00,2024-02-12 00:00,2024-02-16 00:00,2025-11-20 17:00,2025-11-20 17:00,2025-12-05 17:00,2025-12-05 17:00,0,16,100
FIZ.WEST.2371,FRP TOPPING SLAB - GL 1-3 - J-L - L4 ROOF,Complete,Area FIZ1 (West Inner),Data Center (Gridlines 1-3),FIZ 2 / SUWS 5  (GL6-1) - GL J - N - DATA CENTER 1,L4 - SUP Roof - FAB Roof,,CONSTRUCTION,BAKER,TOPPING,CONCRETE,,2024-06-24 07:00,2024-06-27 17:00,2024-06-17 07:00,2024-06-18 17:00,2025-11-20 17:00,2025-11-20 17:00,2025-12-05 17:00,2025-12-05 17:00,0,30,100
FIZ.WEST.2381,IMPACT - RFI 4691 - REMOVE TPO INSULATION - J-G - GL 3,Complete,Area FIZ1 (West Inner),Data Center (Gridlines 1-3),FIZ1 (West Inner) GL J-G - DATA CENTER 2,L4 - SUP Roof - FAB Roof,,CONSTRUCTION,BRAZOS,INSULATED METAL PANELS,FIZ DATA CENTER,,2024-05-03 07:00,2024-05-09 17:00,2024-04-16 07:00,2024-04-19 17:00,2025-11-20 17:00,2025-11-20 17:00,2025-12-04 17:00,2025-12-04 17:00,0,40,100
FIZ.WEST.2391,IMPACT - RFI 4691 - INSTALL BENT PLATE - GL3 - J-G - L4,Complete,Area FIZ1 (West Inner),Data Center (Gridlines 1-3),FIZ1 (West Inner) GL J-G - DATA CENTER 2,L4 - SUP Roof - FAB Roof,,CONSTRUCTION,SECAI,INSULATED METAL PANELS,FIZ DATA CENTER,,2024-05-24 07:00,2024-06-20 17:00,2024-04-22 07:00,2024-05-16 17:00,2025-11-20 17:00,2025-11-20 17:00,2025-12-04 17:00,2025-12-04 17:00,0,150,100
FIZ.WEST.2401,IMPACT - RFI 4691 - REINSTALL TPO INSULATION - GL3 - J-G - L4 ROOF,Complete,Area FIZ1 (West Inner),Data Center (Gridlines 1-3),FIZ1 (West Inner) GL J-G - DATA CENTER 2,L4 - SUP Roof - FAB Roof,,CONSTRUCTION,BRAZOS,INSULATED METAL PANELS,FIZ DATA CENTER,,2024-08-23 07:00,2024-08-30 17:00,2024-08-21 07:00,2024-08-30 17:00,2025-11-20 17:00,2025-11-20 17:00,2025-12-05 17:00,2025-12-05 17:00,0,60,100
FIZ.WEST.2421,IMPACT [S12] - F04.01 / RFI 6488 - INSTALL STRUCTURAL STEEL - GL 1-3 - J-L - L3-L4,Complete,Area FIZ1 (West Inner),Data Center (Gridlines 1-3),FIZ 2 / SUWS 5  (GL6-1) - GL J - N - DATA CENTER 1,L4 - SUP Roof - FAB Roof,,CONSTRUCTION,W&W,TOPPING,FIZ DATA CENTER,,2024-06-07 07:00,2024-07-19 17:00,2024-05-24 07:00,2024-07-02 17:00,2025-11-20 17:00,2025-11-20 17:00,2025-12-05 17:00,2025-12-05 17:00,0,250,100
FIZ.WEST.2431,IMPACT [S12] - F04.01 / RFI 6488 - INSTALL STRUCTURAL STEEL - GL 1-3 - C-E - L3-L4,Complete,Area FIZ1 (West Inner),Data Center (Gridlines 1-3),SUES-5 - 6-1 - FIZ - GL A -E,L4 - SUP Roof - FAB Roof,,CONSTRUCTION,W&W,TOPPING,FIZ DATA CENTER,,2024-06-07 07:00,2024-07-19 17:00,2024-05-24 07:00,2024-06-21 17:00,2025-11-20 17:00,2025-11-20 17:00,2025-12-05 17:00,2025-12-05 17:00,0,250,100
FIZ.WEST.2601,IMPACT - CUT BACK BENT PLATE [NOT COMPLETE / WORK STOPPED] - GL3 - J-G - L4,Complete,Area FIZ1 (West Inner),Data Center (Gridlines 1-3),FIZ1 (West Inner) GL J-G - DATA CENTER 2,L4 - SUP Roof - FAB Roof,,CONSTRUCTION,SECAI,INSULATED METAL PANELS,FIZ DATA CENTER,,2024-07-09 07:00,2024-07-16 17:00,2024-07-02 07:00,2024-07-03 17:00,2025-11-20 17:00,2025-11-20 17:00,2025-12-04 17:00,2025-12-04 17:00,0,50,100
FIZ.WEST.2611,IMPACT - INSTALL ANCHOR BOLTS - DRILL/EPOXY AT ROOF EDGE ANGLE - GL3 - J-G - L4,Complete,Area FIZ1 (West Inner),Data Center (Gridlines 1-3),FIZ1 (West Inner) GL J-G - DATA CENTER 2,L4 - SUP Roof - FAB Roof,,CONSTRUCTION,SECAI,INSULATED METAL PANELS,FIZ DATA CENTER,,2024-05-24 07:00,2024-06-03 17:00,2024-06-25 07:00,2024-07-03 17:00,2025-11-20 17:00,2025-11-20 17:00,2025-12-04 17:00,2025-12-04 17:00,0,50,100
FIZ.WEST.2621,IMPACT - ALPHA PAINT BENT PLATE - GL3 - J-G - L4,Complete,Area FIZ1 (West Inner),Data Center (Gridlines 1-3),FIZ1 (West Inner) GL J-G - DATA CENTER 2,L4 - SUP Roof - FAB Roof,,CONSTRUCTION,SECAI,INSULATED METAL PANELS,FIZ DATA CENTER,,2024-07-29 07:00,2024-07-30 17:00,2024-07-25 07:00,2024-07-29 17:00,2025-11-20 17:00,2025-11-20 17:00,2025-12-05 17:00,2025-12-05 17:00,0,20,100
FIZ.WEST.2631,IMPACT - Y_RFI#1390 - PREP/SUBMIT RFI FOR DEFLECTION & IMP SEALING - GL3 - J-E - L4 ROOF,Complete,Area FIZ1 (West Inner),Data Center (Gridlines 1-3),FIZ1 (West Inner) GL J-G - DATA CENTER 2,L4 - SUP Roof - FAB Roof,,CONSTRUCTION,BERG,INSULATED METAL PANELS,FIZ DATA CENTER,,2024-07-26 07:00,2024-08-01 17:00,2024-06-13 07:00,2024-06-19 17:00,2025-11-20 17:00,2025-11-20 17:00,2025-12-04 17:00,2025-12-04 17:00,0,50,100
FIZ.WEST.2641,IMPACT - Y_RFI#1390 - SECAI REVIEW / PROVIDE DIRECTION FOR DEFLECTION & IMP SEALING - GL3 - J-E - L4 ROOF,Complete,Area FIZ1 (West Inner),Data Center (Gridlines 1-3),FIZ1 (West Inner) GL J-G - DATA CENTER 2,L4 - SUP Roof - FAB Roof,,CONSTRUCTION,BERG,INSULATED METAL PANELS,FIZ DATA CENTER,,2024-07-26 07:00,2024-08-09 17:00,2024-06-20 07:00,2024-07-01 17:00,2025-11-20 17:00,2025-11-20 17:00,2025-12-04 17:00,2025-12-04 17:00,0,100,100
FIZ.WEST.2671,IMPACT - INSTALL SEALANT - GL3 - J-G - L4 ROOF,Complete,Area FIZ1 (West Inner),Data Center (Gridlines 1-3),FIZ1 (West Inner) GL J-G - DATA CENTER 2,L4 - SUP Roof - FAB Roof,,CONSTRUCTION,BRAZOS,INSULATED METAL PANELS,FIZ DATA CENTER,,2024-09-03 07:00,2024-09-04 17:00,2024-09-03 07:00,2024-09-04 17:00,2025-11-20 17:00,2025-11-20 17:00,2025-12-05 17:00,2025-12-05 17:00,0,20,100
FIZ.WEST.2681,IMPACT - INSTALL METAL FLASHING W/ ROOF DRIP - GL3 - J-G - L4 ROOF,Complete,Area FIZ1 (West Inner),Data Center (Gridlines 1-3),FIZ1 (West Inner) GL J-G - DATA CENTER 2,L4 - SUP Roof - FAB Roof,,CONSTRUCTION,BRAZOS,INSULATED METAL PANELS,FIZ DATA CENTER,,2024-09-06 07:00,2024-09-09 17:00,2024-09-06 07:00,2024-09-07 17:00,2025-11-20 17:00,2025-11-20 17:00,2025-12-05 17:00,2025-12-05 17:00,0,20,100
FIZ.WEST.2691,IMPACT - CUT BENT PLATE STOP WORK - CONFIRM DESIGN REQUIRED - GL3 - J-G - L4,Complete,Area FIZ1 (West Inner),Data Center (Gridlines 1-3),FIZ1 (West Inner) GL J-G - DATA CENTER 2,L4 - SUP Roof - FAB Roof,,CONSTRUCTION,SECAI,INSULATED METAL PANELS,FIZ DATA CENTER,,2024-07-09 07:00,2024-07-16 17:00,2024-07-03 07:00,2024-07-03 17:00,2025-11-20 17:00,2025-11-20 17:00,2025-12-04 17:00,2025-12-04 17:00,0,50,100
FIZ.WEST.2701,IMPACT - Y_RFI#1420 - PREP & SUBMIT RFI FOR BENT PLATE FIX - GL3 - J-G - L4,Complete,Area FIZ1 (West Inner),Data Center (Gridlines 1-3),FIZ1 (West Inner) GL J-G - DATA CENTER 2,L4 - SUP Roof - FAB Roof,,CONSTRUCTION,SECAI,INSULATED METAL PANELS,FIZ DATA CENTER,,2024-07-09 07:00,2024-07-16 17:00,2024-07-04 07:00,2024-07-08 17:00,2025-11-20 17:00,2025-11-20 17:00,2025-12-04 17:00,2025-12-04 17:00,0,50,100
FIZ.WEST.2711,IMPACT - Y_RFI#1420 - SECAI REVIEW & REJECT PROPOSED BENT PLATE FIX - GL3 - J-G - L4,Complete,Area FIZ1 (West Inner),Data Center (Gridlines 1-3),FIZ1 (West Inner) GL J-G - DATA CENTER 2,L4 - SUP Roof - FAB Roof,,CONSTRUCTION,SECAI,INSULATED METAL PANELS,FIZ DATA CENTER,,2024-07-16 07:00,2024-07-22 17:00,2024-07-09 07:00,2024-07-09 17:00,2025-11-20 17:00,2025-11-20 17:00,2025-12-04 17:00,2025-12-04 17:00,0,50,100
FIZ.WEST.2721,IMPACT - COMPLETE CUT BACK BENT PLATE PER RFI RESPONSE - GL3 - J-G - L4,Complete,Area FIZ1 (West Inner),Data Center (Gridlines 1-3),FIZ1 (West Inner) GL J-G - DATA CENTER 2,L4 - SUP Roof - FAB Roof,,CONSTRUCTION,SECAI,INSULATED METAL PANELS,FIZ DATA CENTER,,2024-07-19 07:00,2024-07-23 17:00,2024-07-18 07:00,2024-07-21 17:00,2025-11-20 17:00,2025-11-20 17:00,2025-12-05 17:00,2025-12-05 17:00,0,30,100
FIZ.WEST.2731,IMPACT - Y_RFI#1420 - REVISE & RESUBMIT RFI FOR ALTERNATIVE BENT PLATE FIX - GL3 - J-G - L4,Complete,Area FIZ1 (West Inner),Data Center (Gridlines 1-3),FIZ1 (West Inner) GL J-G - DATA CENTER 2,L4 - SUP Roof - FAB Roof,,CONSTRUCTION,SECAI,INSULATED METAL PANELS,FIZ DATA CENTER,,2024-07-09 07:00,2024-07-16 17:00,2024-07-10 07:00,2024-07-10 17:00,2025-11-20 17:00,2025-11-20 17:00,2025-12-04 17:00,2025-12-04 17:00,0,50,100
FIZ.WEST.2741,IMPACT - Y_RFI#1420 - SECAI REVIEW & APPROVE ALTERNATIVE BENT PLATE FIX - GL3 - J-G - L4,Complete,Area FIZ1 (West Inner),Data Center (Gridlines 1-3),FIZ1 (West Inner) GL J-G - DATA CENTER 2,L4 - SUP Roof - FAB Roof,,CONSTRUCTION,SECAI,INSULATED METAL PANELS,FIZ DATA CENTER,,2024-07-16 07:00,2024-07-22 17:00,2024-07-11 07:00,2024-07-18 17:00,2025-11-20 17:00,2025-11-20 17:00,2025-12-04 17:00,2025-12-04 17:00,0,50,100
CN.FIZ1.2160,INSTALL GOAL POSTS(KING STUDD) - FIZ1 - DATA CENTER 2 - GL 1-3 - J-G - L2,Not Started,Area FIZ1 (West Inner),West Support Building,FIZ1 (West Inner) GL J-G - DATA CENTER 2,L2 - SubFab Level,DATA CENTER 2,CONSTRUCTION,ALK,TBD Architectural Finishes,FIZ DATA CENTER,INTERIORS,2025-11-21 07:00,2025-11-21 17:00,,,2025-11-21 07:00,2025-11-21 17:00,2025-11-26 07:00,2025-11-26 17:00,10,10,0
FIZ.WEST.2751,IMPACT - WATERPROOFING FOR IMP - GL3 - J-G - L4 ROOF,Complete,Area FIZ1 (West Inner),Data Center (Gridlines 1-3),FIZ1 (West Inner) GL J-G - DATA CENTER 2,L4 - SUP Roof - FAB Roof,,CONSTRUCTION,KOVACH,INSULATED METAL PANELS,FIZ DATA CENTER,,2024-08-23 07:00,2024-08-24 17:00,2024-08-09 07:00,2024-08-13 17:00,2025-11-20 17:00,2025-11-20 17:00,2025-12-05 17:00,2025-12-05 17:00,0,20,100
FIZ.WEST.2761,IMPACT - COMPLETE FRAMING FIX AT DOGHOUSE - GL3 - J-G - L4 ROOF,Complete,Area FIZ1 (West Inner),Data Center (Gridlines 1-3),FIZ1 (West Inner) GL J-G - DATA CENTER 2,L4 - SUP Roof - FAB Roof,,CONSTRUCTION,KOVACH,INSULATED METAL PANELS,FIZ DATA CENTER,,2024-08-25 07:00,2024-08-28 17:00,2024-08-19 07:00,2024-08-20 17:00,2025-11-20 17:00,2025-11-20 17:00,2025-12-05 17:00,2025-12-05 17:00,0,40,100
FIZ.WEST.2771,IMPACT - INSTALL INSULATED METAL PANEL MODULES AT DOGHOUSE - GL3 - J-G - L4 ROOF,Complete,Area FIZ1 (West Inner),Data Center (Gridlines 1-3),FIZ1 (West Inner) GL J-G - DATA CENTER 2,L4 - SUP Roof - FAB Roof,,CONSTRUCTION,KOVACH,INSULATED METAL PANELS,FIZ DATA CENTER,,2024-08-25 07:00,2024-08-28 17:00,2024-08-21 07:00,2024-08-22 17:00,2025-11-20 17:00,2025-11-20 17:00,2025-12-05 17:00,2025-12-05 17:00,0,40,100
CN.FIZ1.2310,IMPACT Pending Man Power Issue due to NO Payment DOOR FRAMES -,Complete,Area FIZ1 (West Inner),West Support Building,SUES-5 - 6-1 - FIZ - GL A -E,L3 / Waffle Slab Level,ELECTRIC RM 2,CONSTRUCTION,FINISH PAINT,TBD Architectural Finishes,FIZ DATA CENTER,INTERIORS,2024-12-31 07:00,2025-01-03 17:00,2024-12-17 07:00,2025-01-08 17:00,2025-11-20 17:00,2025-11-20 17:00,2025-11-10 07:00,2025-11-10 07:00,0,30,100
CN.FIZ1.2320,INSTALL FRAMES & DOORS - SUE - 62 - GL 8-15 & A-E - L3,Active,Area FIZ1 (West Inner),West Support Building,SUE - 62 - GL 8-15 & A -E,L3 / Waffle Slab Level,FIZ,CONSTRUCTION,FINISH PAINT,TBD Architectural Finishes,FIZ DATA CENTER,INTERIORS,2025-02-14 07:00,2025-02-18 17:00,2025-01-15 07:00,,2025-11-26 07:00,2025-11-26 07:00,2025-11-25 17:00,2025-11-25 17:00,0,30,100
CN.FIZ1.2330,SECAI ROUGH IN/SECURITY - SUE - 62 - GL 8-15 & A-E - L3,Complete,Area FIZ1 (West Inner),West Support Building,SUE - 62 - GL 8-15 & A -E,L3 / Waffle Slab Level,FIZ,CONSTRUCTION,FINISH PAINT,TBD Architectural Finishes,FIZ DATA CENTER,INTERIORS,2025-02-10 07:00,2025-02-14 17:00,2025-01-14 07:00,2025-05-09 17:00,2025-11-20 17:00,2025-11-20 17:00,2025-11-25 17:00,2025-11-25 17:00,0,50,100
CN.FIZ1.2350,INSTALL FRAMES & DOORS - SUE - 61 - GL 1-8 & A-E - L3,Active,Area FIZ1 (West Inner),West Support Building,SUE - 61 - GL 1-8 & A -E,L3 / Waffle Slab Level,FIZ,CONSTRUCTION,FINISH PAINT,TBD Architectural Finishes,FIZ DATA CENTER,INTERIORS,2025-02-17 07:00,2025-02-19 17:00,2025-01-16 00:00,,2025-12-17 07:00,2025-12-18 17:00,2025-12-04 07:00,2025-12-05 17:00,20,30,0
CN.FIZ1.2360,SECAI ROUGH IN/SECURITY - SUE - 61 - GL 1-8 & A-E - L3,Complete,Area FIZ1 (West Inner),West Support Building,SUE - 61 - GL 1-8 & A -E,L3 / Waffle Slab Level,FIZ,CONSTRUCTION,FINISH PAINT,TBD Architectural Finishes,FIZ DATA CENTER,INTERIORS,2025-02-12 07:00,2025-02-18 17:00,2025-01-15 07:00,2025-06-02 17:00,2025-11-20 17:00,2025-11-20 17:00,2025-12-05 17:00,2025-12-05 17:00,0,50,100
CN.FIZ1.2380,INSTALL FRAMES & DOORS - SUE - 63 - GL 15-21 & A-E - L3,Active,Area FIZ1 (West Inner),West Support Building,SUE - 63 - GL 15-21 & A -E,L3 / Waffle Slab Level,FIZ,CONSTRUCTION,FINISH PAINT,TBD Architectural Finishes,FIZ DATA CENTER,INTERIORS,2025-02-12 07:00,2025-02-14 17:00,2025-01-29 07:00,,2025-11-21 07:00,2025-11-24 17:00,2025-12-04 07:00,2025-12-05 17:00,20,30,0
CN.FIZ1.2390,SECAI ROUGH IN/SECURITY - SUE - 63 - GL 15-21 & A-E - L3,Complete,Area FIZ1 (West Inner),West Support Building,SUE - 63 - GL 15-21 & A -E,L3 / Waffle Slab Level,FIZ,CONSTRUCTION,FINISH PAINT,TBD Architectural Finishes,FIZ DATA CENTER,INTERIORS,2025-02-07 07:00,2025-02-13 17:00,2025-01-13 07:00,2025-06-27 17:00,2025-11-20 17:00,2025-11-20 17:00,2025-11-25 17:00,2025-11-25 17:00,0,50,100
CN.FIZ1.2410,INSTALL FRAMES & DOORS - SUE - 64 - GL 21-27 & A-E - L3,Active,Area FIZ1 (West Inner),West Support Building,SUE - 64 - GL 22-27 & A -E,L3 / Waffle Slab Level,FIZ,CONSTRUCTION,FINISH PAINT,TBD Architectural Finishes,FIZ DATA CENTER,INTERIORS,2025-02-10 07:00,2025-02-12 17:00,2025-01-29 07:00,,2025-11-21 07:00,2025-11-24 17:00,2025-12-04 07:00,2025-12-05 17:00,20,30,0
CN.FIZ1.2420,SECAI ROUGH IN/SECURITY - SUE - 64 - GL 21-27 & A-E - L3,Complete,Area FIZ1 (West Inner),West Support Building,SUE - 64 - GL 22-27 & A -E,L3 / Waffle Slab Level,FIZ,CONSTRUCTION,FINISH PAINT,TBD Architectural Finishes,FIZ DATA CENTER,INTERIORS,2025-02-05 07:00,2025-02-11 17:00,2025-01-10 07:00,2025-06-20 17:00,2025-11-20 17:00,2025-11-20 17:00,2025-11-25 17:00,2025-11-25 17:00,0,50,100
CN.FIZ1.2440,INSTALL FRAMES & DOORS - SUE - 65 - GL 27-33 & A-E - L3,Active,Area FIZ1 (West Inner),West Support Building,SUE - 65 - GL 27-31 & A -E,L3 / Waffle Slab Level,FIZ,CONSTRUCTION,FINISH PAINT,TBD Architectural Finishes,FIZ DATA CENTER,INTERIORS,2025-02-04 07:00,2025-02-06 17:00,2025-01-16 07:00,,2025-11-24 07:00,2025-11-25 17:00,2025-12-04 07:00,2025-12-05 17:00,20,30,0
CN.FIZ1.2480,SECAI ROUGH IN/SECURITY - SUE - 66 - GL 33-40 & A-E - L3,Complete,Area FIZ1 (West Inner),West Support Building,SUE - 65 - GL 31-33 & A -E,L3 / Waffle Slab Level,FIZ,CONSTRUCTION,FINISH PAINT,TBD Architectural Finishes,FIZ DATA CENTER,INTERIORS,2025-01-28 07:00,2025-02-03 17:00,2025-01-07 07:00,2025-06-05 17:00,2025-11-20 17:00,2025-11-20 17:00,2025-11-25 17:00,2025-11-25 17:00,0,50,100
CN.FIZ1.2900,INSTALL FRAMES & DOORS - SUE - 62 - GL 8-15 & A-E - L2,Active,Area FIZ1 (West Inner),West Support Building,SUE - 62 - GL 8-15 & A -E,L2 - SubFab Level,,CONSTRUCTION,FINISH PAINT,TBD Architectural Finishes,FIZ DATA CENTER,INTERIORS,2025-08-25 07:00,2025-08-27 17:00,2025-04-28 07:00,,2025-12-03 07:00,2025-12-05 17:00,2025-12-01 07:00,2025-12-03 17:00,30,30,0
CN.FIZ1.2940,INSTALL FRAMES & DOORS - SUE - 61 - GL 1-8 & A-E - L2,Active,Area FIZ1 (West Inner),West Support Building,SUE - 61 - GL 1-8 & A -E,L2 - SubFab Level,,CONSTRUCTION,FINISH PAINT,TBD Architectural Finishes,FIZ DATA CENTER,INTERIORS,2025-08-27 07:00,2025-08-29 17:00,2025-02-25 07:00,,2025-12-05 07:00,2025-12-09 17:00,2025-12-03 07:00,2025-12-05 17:00,30,30,0
CN.FIZ1.2870,INSTALL FRAMES & DOORS - SUE - 63 - GL 15-21 & A-E - L2,Active,Area FIZ1 (West Inner),West Support Building,SUE - 63 - GL 15-21 & A -E,L2 - SubFab Level,,CONSTRUCTION,FINISH PAINT,TBD Architectural Finishes,FIZ DATA CENTER,INTERIORS,2025-08-21 07:00,2025-08-25 17:00,2025-03-28 07:00,,2025-12-01 07:00,2025-12-03 17:00,2025-11-25 07:00,2025-12-01 17:00,30,30,0
CN.FIZ1.2830,INSTALL FRAMES & DOORS - SUE - 64 - GL 21-27 & A-E - L2,Active,Area FIZ1 (West Inner),West Support Building,SUE - 64 - GL 22-27 & A -E,L2 - SubFab Level,,CONSTRUCTION,FINISH PAINT,TBD Architectural Finishes,FIZ DATA CENTER,INTERIORS,2025-08-19 07:00,2025-08-21 17:00,2025-03-28 07:00,,2025-11-25 07:00,2025-12-01 17:00,2025-11-21 07:00,2025-11-25 17:00,30,30,0
CN.FIZ1.2790,INSTALL FRAMES & DOORS - SUE - 65 - GL 27-33 & A-E - L2,Active,Area FIZ1 (West Inner),West Support Building,SUE - 65 - GL 27-31 & A -E,L2 - SubFab Level,,CONSTRUCTION,FINISH PAINT,TBD Architectural Finishes,FIZ DATA CENTER,INTERIORS,2025-08-18 07:00,2025-08-20 17:00,2025-02-26 07:00,,2025-11-21 07:00,2025-11-25 17:00,2025-11-19 07:00,2025-11-21 17:00,30,30,0
CN.FIZ1.3140,INSTALL FRAMES & DOORS - SUE - 62 - GL 8-15 & A-E - L1,Active,Area FIZ1 (West Inner),West Support Building,SUE - 62 - GL 8-15 & A -E,L1 - Fndn Slab,,CONSTRUCTION,FINISH PAINT,TBD Architectural Finishes,FIZ DATA CENTER,INTERIORS,2025-08-19 07:00,2025-08-21 17:00,2025-03-26 07:00,,2025-11-21 07:00,2025-11-25 17:00,2025-12-03 07:00,2025-12-05 17:00,30,30,0
CN.FIZ1.3180,INSTALL FRAMES & DOORS - SUE - 61 - GL 1-8 & A-E - L1,Active,Area FIZ1 (West Inner),West Support Building,SUE - 61 - GL 1-8 & A -E,L1 - Fndn Slab,,CONSTRUCTION,FINISH PAINT,TBD Architectural Finishes,FIZ DATA CENTER,INTERIORS,2025-08-19 07:00,2025-08-21 17:00,2025-03-17 07:00,,2025-11-21 07:00,2025-11-25 17:00,2025-12-03 07:00,2025-12-05 17:00,30,30,0
CN.FIZ1.3110,INSTALL FRAMES & DOORS - SUE - 63 - GL 15-21 & A-E - L1,Active,Area FIZ1 (West Inner),West Support Building,SUE - 63 - GL 15-21 & A -E,L1 - Fndn Slab,,CONSTRUCTION,FINISH PAINT,TBD Architectural Finishes,FIZ DATA CENTER,INTERIORS,2025-08-19 07:00,2025-08-21 17:00,2025-03-21 07:00,,2025-11-21 07:00,2025-11-25 17:00,2025-12-03 07:00,2025-12-05 17:00,30,30,0
CN.FIZ1.3070,INSTALL FRAMES & DOORS - SUE - 64 - GL 21-27 & A-E - L1,Active,Area FIZ1 (West Inner),West Support Building,SUE - 64 - GL 22-27 & A -E,L1 - Fndn Slab,,CONSTRUCTION,FINISH PAINT,TBD Architectural Finishes,FIZ DATA CENTER,INTERIORS,2025-08-18 07:00,2025-08-20 17:00,2025-04-18 07:00,,2025-11-21 07:00,2025-11-25 17:00,2025-11-21 07:00,2025-11-25 17:00,30,30,0
CN.FIZ1.3030,INSTALL FRAMES & DOORS - SUE - 65 - GL 27-33 & A-E - L1,Active,Area FIZ1 (West Inner),West Support Building,SUE - 65 - GL 27-31 & A -E,L1 - Fndn Slab,,CONSTRUCTION,FINISH PAINT,TBD Architectural Finishes,FIZ DATA CENTER,INTERIORS,2025-08-21 07:00,2025-08-25 17:00,2025-03-14 07:00,,2025-11-21 07:00,2025-11-25 17:00,2025-12-03 07:00,2025-12-05 17:00,30,30,0
CN.FIZ1.3230,INSTALL FRAMES & DOORS - SUW - 01 - GL 1-8 & J-N - L3,Active,Area FIZ1 (West Inner),West Support Building,SUW - 01 - GL 1-5 & J-N,L3 / Waffle Slab Level,FIZ,CONSTRUCTION,FINISH PAINT,TBD Architectural Finishes,FIZ DATA CENTER,INTERIORS,2025-02-19 07:00,2025-02-21 17:00,2025-01-08 07:00,,2025-11-21 07:00,2025-11-24 17:00,2025-12-04 07:00,2025-12-05 17:00,20,30,0
CN.FIZ1.3220,SECAI ROUGH IN/SECURITY - SUW - 01 - GL 1-8 & J-N - L3,Complete,Area FIZ1 (West Inner),West Support Building,SUW - 01 - GL 1-5 & J-N,L3 / Waffle Slab Level,FIZ,CONSTRUCTION,FINISH PAINT,TBD Architectural Finishes,FIZ DATA CENTER,INTERIORS,2025-02-14 07:00,2025-02-20 17:00,2025-01-16 07:00,2025-06-23 13:00,2025-11-20 17:00,2025-11-20 17:00,2025-12-05 17:00,2025-12-05 17:00,0,50,100
CN.FIZ1.3270,INSTALL FRAMES & DOORS - SUW - 02 - GL 8-15 & J-N - L3,Active,Area FIZ1 (West Inner),West Support Building,SUW - 02 - GL 5-11 & J-N,L3 / Waffle Slab Level,,CONSTRUCTION,FINISH PAINT,TBD Architectural Finishes,FIZ DATA CENTER,INTERIORS,2025-02-21 07:00,2025-02-25 17:00,2025-01-17 07:00,,2025-11-21 07:00,2025-11-24 17:00,2025-12-04 07:00,2025-12-05 17:00,20,30,0
CN.FIZ1.3260,SECAI ROUGH IN/SECURITY - SUW - 02 - GL 8-15 & J-N - L3,Complete,Area FIZ1 (West Inner),West Support Building,SUW - 02 - GL 5-11 & J-N,L3 / Waffle Slab Level,,CONSTRUCTION,FINISH PAINT,TBD Architectural Finishes,FIZ DATA CENTER,INTERIORS,2025-02-17 07:00,2025-02-21 17:00,2025-01-17 07:00,2025-06-24 17:00,2025-11-20 17:00,2025-11-20 17:00,2025-12-05 17:00,2025-12-05 17:00,0,50,100
CN.FIZ1.3310,INSTALL FRAMES - SUW - 03 - GL 15-21 & J-N - L3,Active,Area FIZ1 (West Inner),West Support Building,SUW - 03 - GL 11-20 & J-N,L3 / Waffle Slab Level,,CONSTRUCTION,FINISH PAINT,TBD Architectural Finishes,FIZ DATA CENTER,INTERIORS,2025-02-24 07:00,2025-02-26 17:00,2025-01-21 07:00,,2025-11-21 07:00,2025-11-21 07:00,2025-12-05 17:00,2025-12-05 17:00,0,30,100
CN.FIZ1.3300,SECAI ROUGH IN/SECURITY - SUW - 03 - GL 15-21 & J-N - L3,Complete,Area FIZ1 (West Inner),West Support Building,SUW - 03 - GL 11-20 & J-N,L3 / Waffle Slab Level,,CONSTRUCTION,FINISH PAINT,TBD Architectural Finishes,FIZ DATA CENTER,INTERIORS,2025-02-19 07:00,2025-02-25 17:00,2025-01-20 07:00,2025-06-23 17:00,2025-11-21 07:00,2025-11-21 07:00,2025-12-05 17:00,2025-12-05 17:00,0,50,100
CN.FIZ1.3350,INSTALL FRAMES & DOORS - SUW - 04 - GL 21-27 & J-N - L3,Active,Area FIZ1 (West Inner),West Support Building,SUW - 04 - GL 21-23 & J-N,L3 / Waffle Slab Level,,CONSTRUCTION,FINISH PAINT,TBD Architectural Finishes,FIZ DATA CENTER,INTERIORS,2025-02-26 07:00,2025-02-28 17:00,2025-01-22 07:00,,2025-11-21 07:00,2025-11-21 07:00,2025-12-05 17:00,2025-12-05 17:00,0,30,100
CN.FIZ1.3340,SECAI ROUGH IN/SECURITY - SUW - 04 - GL 21-27 & J-N - L3,Complete,Area FIZ1 (West Inner),West Support Building,SUW - 04 - GL 21-23 & J-N,L3 / Waffle Slab Level,,CONSTRUCTION,FINISH PAINT,TBD Architectural Finishes,FIZ DATA CENTER,INTERIORS,2025-02-21 07:00,2025-02-27 17:00,2025-01-21 07:00,2025-06-06 17:00,2025-11-21 07:00,2025-11-21 07:00,2025-12-05 17:00,2025-12-05 17:00,0,50,100
CN.FIZ1.3390,INSTALL FRAMES & DOORSS - SUW - 05 - GL 27-33 & J-N - L3,Active,Area FIZ1 (West Inner),West Support Building,SUW - 05 - GL 23-30 & J-N,L3 / Waffle Slab Level,,CONSTRUCTION,FINISH PAINT,TBD Architectural Finishes,FIZ DATA CENTER,INTERIORS,2025-02-28 07:00,2025-03-04 17:00,2025-01-20 07:00,,2025-12-01 07:00,2025-12-02 17:00,2025-12-04 07:00,2025-12-05 17:00,20,30,0
CN.FIZ1.3380,SECAI ROUGH IN/SECURITY - SUW - 05 - GL 27-33 & J-N - L3,Complete,Area FIZ1 (West Inner),West Support Building,SUW - 05 - GL 23-30 & J-N,L3 / Waffle Slab Level,,CONSTRUCTION,FINISH PAINT,TBD Architectural Finishes,FIZ DATA CENTER,INTERIORS,2025-02-24 07:00,2025-02-28 17:00,2025-01-23 07:00,2025-05-30 17:00,2025-11-21 07:00,2025-11-21 07:00,2025-12-05 17:00,2025-12-05 17:00,0,50,100
CN.FIZ1.3510,INSTALL FRAMES & DOORS - SUW - 01 - GL 1-8 & J-N - L2,Active,Area FIZ1 (West Inner),West Support Building,SUW - 01 - GL 1-5 & J-N,L2 - SubFab Level,FIZ,CONSTRUCTION,FINISH PAINT,TBD Architectural Finishes,FIZ DATA CENTER,INTERIORS,2025-01-16 07:00,2025-01-20 17:00,2025-02-03 07:00,,2025-11-21 07:00,2025-11-25 17:00,2025-12-03 07:00,2025-12-05 17:00,30,30,0
CN.FIZ1.3470,INSTALL FRAMES & DOORS - SUW - 02 - GL 8-15 & J-N - L2,Active,Area FIZ1 (West Inner),West Support Building,SUW - 02 - GL 5-11 & J-N,L2 - SubFab Level,,CONSTRUCTION,FINISH PAINT,TBD Architectural Finishes,FIZ DATA CENTER,INTERIORS,2025-02-18 07:00,2025-02-20 17:00,2025-02-18 07:00,,2025-11-21 07:00,2025-11-25 17:00,2025-12-03 07:00,2025-12-05 17:00,30,30,0
CN.FIZ1.3540,INSTALL FRAMES & DOORS - SUW - 03 - GL 15-21 & J-N - L2,Active,Area FIZ1 (West Inner),West Support Building,SUW - 03 - GL 11-20 & J-N,L2 - SubFab Level,,CONSTRUCTION,FINISH PAINT,TBD Architectural Finishes,FIZ DATA CENTER,INTERIORS,2025-02-19 07:00,2025-02-21 17:00,2025-02-19 07:00,,2025-11-21 07:00,2025-11-25 17:00,2025-12-03 07:00,2025-12-05 17:00,30,30,0
CN.FIZ1.3580,INSTALL FRAMES & DOORS - SUW - 04 - GL 21-27 & J-N - L2,Active,Area FIZ1 (West Inner),West Support Building,SUW - 04 - GL 21-23 & J-N,L2 - SubFab Level,,CONSTRUCTION,FINISH PAINT,TBD Architectural Finishes,FIZ DATA CENTER,INTERIORS,2025-04-01 07:00,2025-04-03 17:00,2025-04-01 07:00,,2025-11-21 07:00,2025-11-25 17:00,2025-12-03 07:00,2025-12-05 17:00,30,30,0
CN.FIZ1.3620,INSTALL FRAMES & DOORS - SUW - 05 - GL 27-33 & J-N - L2,Active,Area FIZ1 (West Inner),West Support Building,SUW - 05 - GL 23-30 & J-N,L2 - SubFab Level,,CONSTRUCTION,FINISH PAINT,TBD Architectural Finishes,FIZ DATA CENTER,INTERIORS,2025-02-18 07:00,2025-02-20 17:00,2025-02-18 07:00,,2025-11-21 07:00,2025-11-25 17:00,2025-12-03 07:00,2025-12-05 17:00,30,30,0
CN.FIZ1.3760,INSTALL FRAMES & DOORS - SUW - 01 - GL 1-8 & J-N - L1,Active,Area FIZ1 (West Inner),West Support Building,SUW - 01 - GL 1-5 & J-N,L1 - Fndn Slab,FIZ,CONSTRUCTION,FINISH PAINT,TBD Architectural Finishes,FIZ DATA CENTER,INTERIORS,2025-03-10 07:00,2025-03-12 17:00,2025-03-10 07:00,,2025-11-21 07:00,2025-11-25 17:00,2025-12-03 07:00,2025-12-05 17:00,30,30,0
CN.FIZ1.3720,INSTALL FRAMES & DOORS - SUW - 02 - GL 8-15 & J-N - L1,Active,Area FIZ1 (West Inner),West Support Building,SUW - 02 - GL 5-11 & J-N,L1 - Fndn Slab,,CONSTRUCTION,FINISH PAINT,TBD Architectural Finishes,FIZ DATA CENTER,INTERIORS,2025-07-02 07:00,2025-07-07 17:00,2025-07-10 07:00,,2025-11-21 07:00,2025-11-25 17:00,2025-12-03 07:00,2025-12-05 17:00,30,30,0
CN.FIZ1.3790,INSTALL FRAMES & DOORS - SUW - 03 - GL 15-21 & J-N - L1,Active,Area FIZ1 (West Inner),West Support Building,SUW - 03 - GL 11-20 & J-N,L1 - Fndn Slab,,CONSTRUCTION,FINISH PAINT,TBD Architectural Finishes,FIZ DATA CENTER,INTERIORS,2025-04-03 07:00,2025-04-07 17:00,2025-04-03 07:00,,2025-11-21 07:00,2025-11-25 17:00,2025-12-03 07:00,2025-12-05 17:00,30,30,0
CN.FIZ1.3830,INSTALL FRAMES & DOORS - SUW - 04 - GL 21-27 & J-N - L1,Not Started,Area FIZ1 (West Inner),West Support Building,SUW - 04 - GL 21-23 & J-N,L1 - Fndn Slab,,CONSTRUCTION,FINISH PAINT,TBD Architectural Finishes,FIZ DATA CENTER,INTERIORS,2025-11-21 07:00,2025-11-21 17:00,,,2025-11-21 07:00,2025-11-21 17:00,2025-12-05 07:00,2025-12-05 17:00,10,10,0
CN.FIZ1.3870,INSTALL FRAMES & DOORS - SUW - 05 - GL 27-31 & J-N - L1,Active,Area FIZ1 (West Inner),West Support Building,SUW - 05 - GL 23-30 & J-N,L1 - Fndn Slab,,CONSTRUCTION,FINISH PAINT,TBD Architectural Finishes,FIZ DATA CENTER,INTERIORS,2025-03-17 07:00,2025-03-19 17:00,2025-03-17 07:00,,2025-11-21 07:00,2025-11-25 17:00,2025-12-03 07:00,2025-12-05 17:00,30,30,0
CN.FIZ1.4360,IMPACT - INSTALL/REWORK DRYWALL FRAMING AROUND DOORS - SUE - 62 - GL 8-15 & A-E - L3,Complete,Area FIZ1 (West Inner),West Support Building,SUE - 62 - GL 8-15 & A -E,L3 / Waffle Slab Level,FIZ,CONSTRUCTION,FINISH PAINT,TBD Architectural Finishes,FIZ DATA CENTER,INTERIORS,2025-02-04 07:00,2025-02-10 17:00,2025-01-13 07:00,2025-06-16 10:00,2025-11-20 17:00,2025-11-20 17:00,2025-11-10 07:00,2025-11-10 07:00,0,50,100
CN.FIZ1.4370,IMPACT - INSTALL/REWORK DRYWALL FRAMING AROUND DOORS - SUE - 61 - GL 1-8 & A-E - L3,Complete,Area FIZ1 (West Inner),West Support Building,SUE - 61 - GL 1-8 & A -E,L3 / Waffle Slab Level,FIZ,CONSTRUCTION,FINISH PAINT,TBD Architectural Finishes,FIZ DATA CENTER,INTERIORS,2025-02-06 07:00,2025-02-12 17:00,2025-01-14 07:00,2025-06-02 17:00,2025-11-20 17:00,2025-11-20 17:00,2025-11-10 07:00,2025-11-10 07:00,0,50,100
CN.FIZ1.4350,IMPACT - INSTALL/REWORK DRYWALL FRAMING AROUND DOORS - SUE - 63 - GL 15-21 & A-E - L3,Complete,Area FIZ1 (West Inner),West Support Building,SUE - 63 - GL 15-21 & A -E,L3 / Waffle Slab Level,FIZ,CONSTRUCTION,FINISH PAINT,TBD Architectural Finishes,FIZ DATA CENTER,INTERIORS,2025-02-03 07:00,2025-02-07 17:00,2025-01-10 07:00,2025-06-25 17:00,2025-11-20 17:00,2025-11-20 17:00,2025-11-10 07:00,2025-11-10 07:00,0,50,100
CN.FIZ1.4340,IMPACT - INSTALL/REWORK DRYWALL FRAMING AROUND DOORS - SUE - 64 - GL 21-27 & A-E - L3,Complete,Area FIZ1 (West Inner),West Support Building,SUE - 64 - GL 22-27 & A -E,L3 / Waffle Slab Level,FIZ,CONSTRUCTION,FINISH PAINT,TBD Architectural Finishes,FIZ DATA CENTER,INTERIORS,2025-01-30 07:00,2025-02-05 17:00,2025-01-09 07:00,2025-06-12 17:00,2025-11-20 17:00,2025-11-20 17:00,2025-11-10 07:00,2025-11-10 07:00,0,50,100
CN.FIZ1.4320,IMPACT - INSTALL/REWORK DRYWALL FRAMING AROUND DOORS - SUE - 66 - GL 33-40 & A-E - L3,Complete,Area FIZ1 (West Inner),West Support Building,SUE - 65 - GL 31-33 & A -E,L3 / Waffle Slab Level,FIZ,CONSTRUCTION,FINISH PAINT,TBD Architectural Finishes,FIZ DATA CENTER,INTERIORS,2025-01-27 07:00,2025-01-31 17:00,2025-01-06 07:00,2025-06-02 17:00,2025-11-20 17:00,2025-11-20 17:00,2025-11-10 07:00,2025-11-10 07:00,0,50,100
CN.FIZ1.4530,IMPACT - PATRIOT HEADER FIX & ALPHA PAINT CLADDING STEEL - SUE - 62 - GL 8-15 & A-E - L1,Complete,Area FIZ1 (West Inner),West Support Building,SUE - 62 - GL 8-15 & A -E,L1 - Exterior,,CONSTRUCTION,FINISH PAINT,TBD Architectural Finishes,FIZ DATA CENTER,INTERIORS,2025-05-23 07:00,2025-05-27 17:00,2025-05-15 07:00,2025-06-23 17:00,2025-11-20 17:00,2025-11-20 17:00,2025-11-13 17:00,2025-11-13 17:00,0,20,100
CN.FIZ1.4550,IMPACT - PATRIOT HEADER FIX & ALPHA PAINT CLADDING STEEL - SUE - 61 - GL 1-8 & A-E - L1,Active,Area FIZ1 (West Inner),West Support Building,SUE - 61 - GL 1-8 & A -E,L1 - Exterior,,CONSTRUCTION,FINISH PAINT,TBD Architectural Finishes,FIZ DATA CENTER,INTERIORS,2025-08-15 07:00,2025-08-18 17:00,2025-05-26 07:00,,2025-11-21 07:00,2025-11-21 07:00,2025-11-13 17:00,2025-11-13 17:00,0,20,0
CN.FIZ1.4510,IMPACT - PATRIOT HEADER FIX & ALPHA PAINT CLADDING STEEL - SUE - 63 - GL 15-21 & A-E - L1,Complete,Area FIZ1 (West Inner),West Support Building,SUE - 63 - GL 15-21 & A -E,L1 - Exterior,,CONSTRUCTION,FINISH PAINT,TBD Architectural Finishes,FIZ DATA CENTER,INTERIORS,2025-05-13 07:00,2025-05-19 17:00,2025-05-02 07:00,2025-06-19 17:00,2025-11-20 17:00,2025-11-20 17:00,2025-11-13 17:00,2025-11-13 17:00,0,50,100
CN.FIZ1.4490,IMPACT - PATRIOT HEADER FIX & ALPHA PAINT CLADDING STEEL - SUE - 64 - GL 21-27 & A-E - L1,Complete,Area FIZ1 (West Inner),West Support Building,SUE - 64 - GL 22-27 & A -E,L1 - Exterior,,CONSTRUCTION,FINISH PAINT,TBD Architectural Finishes,FIZ DATA CENTER,INTERIORS,2025-05-06 07:00,2025-05-12 17:00,2025-05-02 07:00,2025-06-06 17:00,2025-11-20 17:00,2025-11-20 17:00,2025-11-13 17:00,2025-11-13 17:00,0,50,100
CN.FIZ1.4470,IMPACT - PATRIOT HEADER FIX & ALPHA PAINT CLADDING STEEL - SUE - 65 - GL 27-33 & A-E - L1,Complete,Area FIZ1 (West Inner),West Support Building,SUE - 65 - GL 27-31 & A -E,L1 - Exterior,,CONSTRUCTION,FINISH PAINT,TBD Architectural Finishes,FIZ DATA CENTER,INTERIORS,2025-04-29 07:00,2025-05-05 17:00,2025-04-30 07:00,2025-06-03 17:00,2025-11-20 17:00,2025-11-20 17:00,2025-11-13 07:00,2025-11-13 07:00,0,50,100
CN.FIZ1.4380,IMPACT - INSTALL/REWORK DRYWALL FRAMING AROUND DOORS - SUW - 01 - GL 1-8 & J-N - L3,Complete,Area FIZ1 (West Inner),West Support Building,SUW - 01 - GL 1-5 & J-N,L3 / Waffle Slab Level,FIZ,CONSTRUCTION,FINISH PAINT,TBD Architectural Finishes,FIZ DATA CENTER,INTERIORS,2025-02-10 07:00,2025-02-14 17:00,2025-01-15 07:00,2025-06-19 17:00,2025-11-20 17:00,2025-11-20 17:00,2025-11-26 07:00,2025-11-26 07:00,0,50,100
CN.FIZ1.4390,IMPACT - INSTALL/REWORK DRYWALL FRAMING AROUND DOORS - SUW - 02 - GL 8-15 & J-N - L3,Complete,Area FIZ1 (West Inner),West Support Building,SUW - 02 - GL 5-11 & J-N,L3 / Waffle Slab Level,,CONSTRUCTION,FINISH PAINT,TBD Architectural Finishes,FIZ DATA CENTER,INTERIORS,2025-02-11 07:00,2025-02-17 17:00,2025-01-16 07:00,2025-06-17 17:00,2025-11-20 17:00,2025-11-20 17:00,2025-11-26 07:00,2025-11-26 07:00,0,50,100
CN.FIZ1.4400,IMPACT - INSTALL/REWORK DRYWALL FRAMING AROUND DOORS - SUW - 03 - GL 15-21 & J-N - L3,Complete,Area FIZ1 (West Inner),West Support Building,SUW - 03 - GL 11-20 & J-N,L3 / Waffle Slab Level,,CONSTRUCTION,FINISH PAINT,TBD Architectural Finishes,FIZ DATA CENTER,INTERIORS,2025-02-13 07:00,2025-02-19 17:00,2025-01-17 07:00,2025-05-30 17:00,2025-11-21 07:00,2025-11-21 07:00,2025-11-26 07:00,2025-11-26 07:00,0,50,100
CN.FIZ1.4410,IMPACT - INSTALL/REWORK DRYWALL FRAMING AROUND DOORS - SUW - 04 - GL 21-27 & J-N - L3,Complete,Area FIZ1 (West Inner),West Support Building,SUW - 04 - GL 21-23 & J-N,L3 / Waffle Slab Level,,CONSTRUCTION,FINISH PAINT,TBD Architectural Finishes,FIZ DATA CENTER,INTERIORS,2025-02-17 07:00,2025-02-21 17:00,2025-01-20 07:00,2025-06-06 17:00,2025-11-21 07:00,2025-11-21 07:00,2025-11-26 07:00,2025-11-26 07:00,0,50,100
CN.FIZ1.4420,IMPACT - INSTALL/REWORK DRYWALL FRAMING AROUND DOORS - SUW - 05 - GL 27-33 & J-N - L3,Complete,Area FIZ1 (West Inner),West Support Building,SUW - 05 - GL 23-30 & J-N,L3 / Waffle Slab Level,,CONSTRUCTION,FINISH PAINT,TBD Architectural Finishes,FIZ DATA CENTER,INTERIORS,2025-02-18 07:00,2025-02-24 17:00,2025-01-22 07:00,2025-05-28 17:00,2025-11-21 07:00,2025-11-21 07:00,2025-11-26 07:00,2025-11-26 07:00,0,50,100
CN.FIZ1.4570,IMPACT - PATRIOT HEADER FIX & ALPHA PAINT CLADDING STEEL - SUW - 01 - GL 1-8 & J-N - L1,Complete,Area FIZ1 (West Inner),West Support Building,SUW - 01 - GL 1-5 & J-N,L1 - Exterior,FIZ,CONSTRUCTION,FINISH PAINT,TBD Architectural Finishes,FIZ DATA CENTER,INTERIORS,2025-05-09 07:00,2025-05-12 17:00,2025-05-09 07:00,2025-06-16 17:00,2025-11-20 17:00,2025-11-20 17:00,2025-11-21 07:00,2025-11-21 07:00,0,20,100
CN.FIZ1.4590,IMPACT - PATRIOT HEADER FIX & ALPHA PAINT CLADDING STEEL - SUW - 02 - GL 8-15 & J-N - L1,Complete,Area FIZ1 (West Inner),West Support Building,SUW - 02 - GL 5-11 & J-N,L1 - Exterior,,CONSTRUCTION,FINISH PAINT,TBD Architectural Finishes,FIZ DATA CENTER,INTERIORS,2025-05-13 07:00,2025-05-14 17:00,2025-05-22 07:00,2025-06-10 07:00,2025-11-20 17:00,2025-11-20 17:00,2025-11-21 07:00,2025-11-21 07:00,0,20,100
CN.FIZ1.4610,IMPACT - PATRIOT HEADER FIX & ALPHA PAINT CLADDING STEEL - SUW - 03 - GL 15-21 & J-N - L1,Complete,Area FIZ1 (West Inner),West Support Building,SUW - 03 - GL 11-20 & J-N,L1 - Exterior,,CONSTRUCTION,FINISH PAINT,TBD Architectural Finishes,FIZ DATA CENTER,INTERIORS,2025-06-16 07:00,2025-06-17 17:00,2025-06-16 07:00,2025-07-25 07:00,2025-11-20 17:00,2025-11-20 17:00,2025-11-21 07:00,2025-11-21 07:00,0,20,100
CN.FIZ1.4630,IMPACT - PATRIOT HEADER FIX & ALPHA PAINT CLADDING STEEL - SUW - 04 - GL 21-27 & J-N - L1,Complete,Area FIZ1 (West Inner),West Support Building,SUW - 04 - GL 21-23 & J-N,L1 - Exterior,,CONSTRUCTION,FINISH PAINT,TBD Architectural Finishes,FIZ DATA CENTER,INTERIORS,2025-05-15 07:00,2025-05-16 17:00,2025-05-15 07:00,2025-07-18 07:00,2025-11-20 17:00,2025-11-20 17:00,2025-11-21 07:00,2025-11-21 07:00,0,20,100
CN.FIZ1.4650,IMPACT - PATRIOT HEADER FIX & ALPHA PAINT CLADDING STEEL - SUW - 05 - GL 27-31 & J-N - L1,Complete,Area FIZ1 (West Inner),West Support Building,SUW - 05 - GL 23-30 & J-N,L1 - Exterior,,CONSTRUCTION,FINISH PAINT,TBD Architectural Finishes,FIZ DATA CENTER,INTERIORS,2025-05-22 07:00,2025-05-23 17:00,2025-05-22 07:00,2025-07-18 17:00,2025-11-20 17:00,2025-11-20 17:00,2025-11-21 07:00,2025-11-21 07:00,0,20,100
CN.FIZ1.5040,INSTALL DOOR HARDWARE - SUE - 62 - GL 8-15 - A - L1 - Ext.,Not Started,Area FIZ1 (West Inner),West Support Building,SUE - 62 - GL 8-15 & A -E,L1 - Exterior,,CONSTRUCTION,ALK,TBD Architectural Finishes,FIZ DATA CENTER,INTERIORS,2025-12-08 07:00,2025-12-10 17:00,,,2025-12-08 07:00,2025-12-10 17:00,2025-12-03 07:00,2025-12-05 17:00,30,30,0
CN.FIZ1.4930,INSTALL FRAMES & DOORS- SUE - 62 - GL 8-15 - A - L1 - Ext.,Active,Area FIZ1 (West Inner),West Support Building,SUE - 62 - GL 8-15 & A -E,L1 - Exterior,,CONSTRUCTION,FINISH PAINT,TBD Architectural Finishes,FIZ DATA CENTER,INTERIORS,2025-08-28 07:00,2025-09-02 17:00,2025-06-23 07:00,,2025-11-26 07:00,2025-12-02 17:00,2025-11-18 07:00,2025-11-20 17:00,30,30,0
CN.FIZ1.5100,INSTALL DOOR HARDWARE - SUE - 61 - GL 1-8 & - A - L1 - Ext.,Not Started,Area FIZ1 (West Inner),West Support Building,SUE - 61 - GL 1-8 & A -E,L1 - Exterior,,CONSTRUCTION,ALK,TBD Architectural Finishes,FIZ DATA CENTER,INTERIORS,2025-12-08 07:00,2025-12-10 17:00,,,2025-12-08 07:00,2025-12-10 17:00,2025-12-03 07:00,2025-12-05 17:00,30,30,0
CN.FIZ1.4990,INSTALL FRAMES & DOORS - SUE - 61 - GL 1-8 - A - L1 - Ext.,Active,Area FIZ1 (West Inner),West Support Building,SUE - 61 - GL 1-8 & A -E,L1 - Exterior,,CONSTRUCTION,FINISH PAINT,TBD Architectural Finishes,FIZ DATA CENTER,INTERIORS,2025-09-03 07:00,2025-09-05 17:00,2025-07-30 07:00,,2025-11-26 07:00,2025-12-02 17:00,2025-11-18 07:00,2025-11-20 17:00,30,30,0
CN.FIZ1.4980,INSTALL DOOR HARDWARE - SUE - 63 - GL 15-21 - A - L1 - Ext.,Not Started,Area FIZ1 (West Inner),West Support Building,SUE - 63 - GL 15-21 & A -E,L1 - Exterior,,CONSTRUCTION,ALK,TBD Architectural Finishes,FIZ DATA CENTER,INTERIORS,2025-12-08 07:00,2025-12-10 17:00,,,2025-12-08 07:00,2025-12-10 17:00,2025-12-03 07:00,2025-12-05 17:00,30,30,0
CN.FIZ1.4880,INSTALL FRAMES & DOORS - SUE - 63 - GL 15-21 - A - L1 - Ext.,Not Started,Area FIZ1 (West Inner),West Support Building,SUE - 63 - GL 15-21 & A -E,L1 - Exterior,,CONSTRUCTION,FINISH PAINT,TBD Architectural Finishes,FIZ DATA CENTER,INTERIORS,2025-11-26 07:00,2025-12-02 17:00,,,2025-11-26 07:00,2025-12-02 17:00,2025-11-18 07:00,2025-11-20 17:00,30,30,0
CN.FIZ1.4920,INSTALL DOOR HARDWARE - SUE - 64 - GL 21-27 - A - L1 - Ext.,Not Started,Area FIZ1 (West Inner),West Support Building,SUE - 64 - GL 22-27 & A -E,L1 - Exterior,,CONSTRUCTION,ALK,TBD Architectural Finishes,FIZ DATA CENTER,INTERIORS,2025-12-03 07:00,2025-12-05 17:00,,,2025-12-03 07:00,2025-12-05 17:00,2025-12-03 07:00,2025-12-05 17:00,30,30,0
CN.FIZ1.4820,INSTALL FRAMES & DOORS - SUE - 64 - GL 21-27 - A - L1 - Ext.,Active,Area FIZ1 (West Inner),West Support Building,SUE - 64 - GL 22-27 & A -E,L1 - Exterior,,CONSTRUCTION,FINISH PAINT,TBD Architectural Finishes,FIZ DATA CENTER,INTERIORS,2025-08-20 07:00,2025-08-22 17:00,2025-06-09 07:00,,2025-11-26 07:00,2025-11-26 07:00,2025-11-17 17:00,2025-11-17 17:00,0,30,0
CN.FIZ1.4860,INSTALL DOOR HARDWARE - SUE - 65 - GL 27-33 - A - L1 - Ext.,Not Started,Area FIZ1 (West Inner),West Support Building,SUE - 65 - GL 27-31 & A -E,L1 - Exterior,,CONSTRUCTION,ALK,TBD Architectural Finishes,FIZ DATA CENTER,INTERIORS,2025-12-03 07:00,2025-12-05 17:00,,,2025-12-03 07:00,2025-12-05 17:00,2025-12-03 07:00,2025-12-05 17:00,30,30,0
CN.FIZ1.4760,INSTALL FRAMES & DOORS - SUE - 65 - GL 27-33 - A - L1 - Ext.,Active,Area FIZ1 (West Inner),West Support Building,SUE - 65 - GL 27-31 & A -E,L1 - Exterior,,CONSTRUCTION,FINISH PAINT,TBD Architectural Finishes,FIZ DATA CENTER,INTERIORS,2025-08-15 07:00,2025-08-19 17:00,2025-04-21 07:00,,2025-11-21 07:00,2025-11-25 17:00,2025-11-13 07:00,2025-11-17 17:00,30,30,0
CN.FIZ1.4720,IMPACT - SECAI HOLD UP INSTALL DOOR FRAMES - LVL 1 - A & N LINE EXTERIOR - SUE - 66 - GL 33-40 - A - L1 - Ext.,Complete,Area FIZ1 (West Inner),West Support Building,SUE - 65 - GL 31-33 & A -E,L1 - Exterior,,CONSTRUCTION,FINISH PAINT,TBD Architectural Finishes,FIZ DATA CENTER,INTERIORS,2025-03-21 07:00,2025-03-25 17:00,2025-03-27 07:00,2025-06-18 17:00,2025-11-20 17:00,2025-11-20 17:00,2025-11-13 07:00,2025-11-13 07:00,0,30,100
CN.FIZ1.4840,PAINT & PROTECT DOORS & FRAMES - SUE - 65 - GL 27-33 - A - L1 - Ext.,Not Started,Area FIZ1 (West Inner),West Support Building,SUE - 65 - GL 27-31 & A -E,L1 - Exterior,,CONSTRUCTION,FINISH PAINT,TBD Architectural Finishes,FIZ DATA CENTER,INTERIORS,2025-11-26 07:00,2025-12-02 17:00,,,2025-11-26 07:00,2025-12-02 17:00,2025-11-26 07:00,2025-12-02 17:00,30,30,0
CN.FIZ1.4900,PAINT & PROTECT DOORS & FRAMES - SUE - 64 - GL 21-27 - A - L1 - Ext.,Not Started,Area FIZ1 (West Inner),West Support Building,SUE - 64 - GL 22-27 & A -E,L1 - Exterior,,CONSTRUCTION,FINISH PAINT,TBD Architectural Finishes,FIZ DATA CENTER,INTERIORS,2025-11-26 07:00,2025-12-02 17:00,,,2025-11-26 07:00,2025-12-02 17:00,2025-11-26 07:00,2025-12-02 17:00,30,30,0
CN.FIZ1.4960,PAINT & PROTECT DOORS & FRAMES - SUE - 63 - GL 15-21 - A - L1 - Ext.,Not Started,Area FIZ1 (West Inner),West Support Building,SUE - 63 - GL 15-21 & A -E,L1 - Exterior,,CONSTRUCTION,FINISH PAINT,TBD Architectural Finishes,FIZ DATA CENTER,INTERIORS,2025-12-03 07:00,2025-12-05 17:00,,,2025-12-03 07:00,2025-12-05 17:00,2025-11-26 07:00,2025-12-02 17:00,30,30,0
CN.FIZ1.5020,PAINT & PROTECT DOORS & FRAMES - SUE - 62 - GL 8-15 - A - L1 - Ext.,Not Started,Area FIZ1 (West Inner),West Support Building,SUE - 62 - GL 8-15 & A -E,L1 - Exterior,,CONSTRUCTION,FINISH PAINT,TBD Architectural Finishes,FIZ DATA CENTER,INTERIORS,2025-12-03 07:00,2025-12-05 17:00,,,2025-12-03 07:00,2025-12-05 17:00,2025-11-26 07:00,2025-12-02 17:00,30,30,0
CN.FIZ1.5080,PAINT & PROTECT DOORS & FRAMES - SUE - 61 - GL 1-8 - A - L1 - Ext.,Not Started,Area FIZ1 (West Inner),West Support Building,SUE - 61 - GL 1-8 & A -E,L1 - Exterior,,CONSTRUCTION,FINISH PAINT,TBD Architectural Finishes,FIZ DATA CENTER,INTERIORS,2025-12-03 07:00,2025-12-05 17:00,,,2025-12-03 07:00,2025-12-05 17:00,2025-11-26 07:00,2025-12-02 17:00,30,30,0
CN.FIZ1.5160,INSTALL DOOR HARDWARE - SUW - 01 - GL 1-8 N - L1 - Ext.,Not Started,Area FIZ1 (West Inner),West Support Building,SUW - 01 - GL 1-5 & J-N,L1 - Exterior,FIZ,CONSTRUCTION,ALK,TBD Architectural Finishes,FIZ DATA CENTER,INTERIORS,2025-12-11 07:00,2025-12-15 17:00,,,2025-12-11 07:00,2025-12-15 17:00,2025-12-03 07:00,2025-12-05 17:00,30,30,0
CN.FIZ1.5050,INSTALL FRAMES & DOORS - SUW - 01 - GL 1-8 N - L1 - Ext.,Not Started,Area FIZ1 (West Inner),West Support Building,SUW - 01 - GL 1-5 & J-N,L1 - Exterior,FIZ,CONSTRUCTION,FINISH PAINT,TBD Architectural Finishes,FIZ DATA CENTER,INTERIORS,2025-12-03 07:00,2025-12-05 17:00,,,2025-12-03 07:00,2025-12-05 17:00,2025-11-21 07:00,2025-11-25 17:00,30,30,0
CN.FIZ1.5140,PAINT & PROTECT DOORS & FRAMES - SUW - 01 - GL 1-8 N - L1 - Ext.,Not Started,Area FIZ1 (West Inner),West Support Building,SUW - 01 - GL 1-5 & J-N,L1 - Exterior,FIZ,CONSTRUCTION,FINISH PAINT,TBD Architectural Finishes,FIZ DATA CENTER,INTERIORS,2025-12-08 07:00,2025-12-10 17:00,,,2025-12-08 07:00,2025-12-10 17:00,2025-11-26 07:00,2025-12-02 17:00,30,30,0
CN.FIZ1.5220,INSTALL DOOR HARDWARE - SUW - 02 - GL 8-15 - N - L1 - Ext.,Not Started,Area FIZ1 (West Inner),West Support Building,SUW - 02 - GL 5-11 & J-N,L1 - Exterior,,CONSTRUCTION,ALK,TBD Architectural Finishes,FIZ DATA CENTER,INTERIORS,2025-12-11 07:00,2025-12-15 17:00,,,2025-12-11 07:00,2025-12-15 17:00,2025-12-03 07:00,2025-12-05 17:00,30,30,0
CN.FIZ1.5110,INSTALL FRAMES & DOORS - SUW - 02 - GL 8-15 - N - L1 - Ext.,Active,Area FIZ1 (West Inner),West Support Building,SUW - 02 - GL 5-11 & J-N,L1 - Exterior,,CONSTRUCTION,FINISH PAINT,TBD Architectural Finishes,FIZ DATA CENTER,INTERIORS,2025-06-13 07:00,2025-06-17 17:00,2025-06-13 07:00,,2025-12-08 07:00,2025-12-08 07:00,2025-11-25 17:00,2025-11-25 17:00,0,30,0
CN.FIZ1.5200,PAINT & PROTECT DOORS & FRAMES - SUW - 02 - GL 8-15 - N - L1 - Ext.,Not Started,Area FIZ1 (West Inner),West Support Building,SUW - 02 - GL 5-11 & J-N,L1 - Exterior,,CONSTRUCTION,FINISH PAINT,TBD Architectural Finishes,FIZ DATA CENTER,INTERIORS,2025-12-08 07:00,2025-12-10 17:00,,,2025-12-08 07:00,2025-12-10 17:00,2025-11-26 07:00,2025-12-02 17:00,30,30,0
CN.FIZ1.5280,INSTALL DOOR HARDWARE - SUW - 03 - GL 15-21 - N - L1 - Ext.,Not Started,Area FIZ1 (West Inner),West Support Building,SUW - 03 - GL 11-20 & J-N,L1 - Exterior,,CONSTRUCTION,ALK,TBD Architectural Finishes,FIZ DATA CENTER,INTERIORS,2025-12-11 07:00,2025-12-15 17:00,,,2025-12-11 07:00,2025-12-15 17:00,2025-12-03 07:00,2025-12-05 17:00,30,30,0
CN.FIZ1.5170,INSTALL FRAMES & DOORS - SUW - 03 - GL 15-21 - N - L1 - Ext.,Active,Area FIZ1 (West Inner),West Support Building,SUW - 03 - GL 11-20 & J-N,L1 - Exterior,,CONSTRUCTION,FINISH PAINT,TBD Architectural Finishes,FIZ DATA CENTER,INTERIORS,2025-07-02 07:00,2025-07-07 17:00,2025-07-02 07:00,,2025-12-03 07:00,2025-12-08 07:00,2025-11-21 07:00,2025-11-25 17:00,30,30,0
CN.FIZ1.5260,PAINT & PROTECT DOORS & FRAMES - SUW - 03 - GL 15-21 - N - L1 - Ext.,Not Started,Area FIZ1 (West Inner),West Support Building,SUW - 03 - GL 11-20 & J-N,L1 - Exterior,,CONSTRUCTION,FINISH PAINT,TBD Architectural Finishes,FIZ DATA CENTER,INTERIORS,2025-12-08 07:00,2025-12-10 17:00,,,2025-12-08 07:00,2025-12-10 17:00,2025-11-26 07:00,2025-12-02 17:00,30,30,0
CN.FIZ1.5330,INSTALL DOOR HARDWARE - SUW - 04 - GL 21-27 - N - L1 - Ext.,Not Started,Area FIZ1 (West Inner),West Support Building,SUW - 04 - GL 21-23 & J-N,L1 - Exterior,,CONSTRUCTION,ALK,TBD Architectural Finishes,FIZ DATA CENTER,INTERIORS,2025-12-11 07:00,2025-12-15 17:00,,,2025-12-11 07:00,2025-12-15 17:00,2025-12-03 07:00,2025-12-05 17:00,30,30,0
CN.FIZ1.5230,INSTALL FRAMES & DOORS - SUW - 04 - GL 21-27 - N - L1 - Ext.,Active,Area FIZ1 (West Inner),West Support Building,SUW - 04 - GL 21-23 & J-N,L1 - Exterior,,CONSTRUCTION,FINISH PAINT,TBD Architectural Finishes,FIZ DATA CENTER,INTERIORS,2025-05-20 07:00,2025-05-22 17:00,2025-05-20 07:00,,2025-12-03 07:00,2025-12-08 07:00,2025-11-21 07:00,2025-11-25 17:00,30,30,0
CN.FIZ1.5310,PAINT & PROTECT DOORS & FRAMES - SUW - 04 - GL 21-27 - N - L1 - Ext.,Not Started,Area FIZ1 (West Inner),West Support Building,SUW - 04 - GL 21-23 & J-N,L1 - Exterior,,CONSTRUCTION,FINISH PAINT,TBD Architectural Finishes,FIZ DATA CENTER,INTERIORS,2025-12-08 07:00,2025-12-10 17:00,,,2025-12-08 07:00,2025-12-10 17:00,2025-11-26 07:00,2025-12-02 17:00,30,30,0
CN.FIZ1.5370,INSTALL DOOR HARDWARE - SUW - 05 - GL 27-31 - N - L1 - Ext.,Not Started,Area FIZ1 (West Inner),West Support Building,SUW - 05 - GL 23-30 & J-N,L1 - Exterior,,CONSTRUCTION,ALK,TBD Architectural Finishes,FIZ DATA CENTER,INTERIORS,2025-12-11 07:00,2025-12-15 17:00,,,2025-12-11 07:00,2025-12-15 17:00,2025-12-03 07:00,2025-12-05 17:00,30,30,0
CN.FIZ1.5290,INSTALL FRAMES & DOORS - SUW - 05 - GL 27-31 - N - L1 - Ext.,Active,Area FIZ1 (West Inner),West Support Building,SUW - 05 - GL 23-30 & J-N,L1 - Exterior,,CONSTRUCTION,FINISH PAINT,TBD Architectural Finishes,FIZ DATA CENTER,INTERIORS,2025-05-23 07:00,2025-05-28 17:00,2025-05-23 07:00,,2025-12-08 07:00,2025-12-08 07:00,2025-11-25 17:00,2025-11-25 17:00,0,30,0
CN.FIZ1.5350,PAINT & PROTECT DOORS & FRAMES - SUW - 05 - GL 27-31 - N - L1 - Ext.,Not Started,Area FIZ1 (West Inner),West Support Building,SUW - 05 - GL 23-30 & J-N,L1 - Exterior,,CONSTRUCTION,FINISH PAINT,TBD Architectural Finishes,FIZ DATA CENTER,INTERIORS,2025-12-08 07:00,2025-12-10 17:00,,,2025-12-08 07:00,2025-12-10 17:00,2025-11-26 07:00,2025-12-02 17:00,30,30,0
CN.FIZ1.5400,IMPACT - RFI Wall thickness - IOCC 1464 - TR-FAB130190A - GL 1-8 & A-E - L3,Complete,Area FIZ1 (West Inner),West Support Building,SUE - 61 - GL 1-8 & A -E,L3 / Waffle Slab Level,FIZ,CONSTRUCTION,FINISH PAINT,TBD Architectural Finishes,FIZ DATA CENTER,INTERIORS,2025-02-06 07:00,2025-02-12 17:00,2025-01-20 07:00,2025-04-22 17:00,2025-11-20 17:00,2025-11-20 17:00,2025-11-10 07:00,2025-11-10 07:00,0,50,100
CN.FIZ1.5410,"IMPACT - By SECAI Request, remove 6 and suspen 7 doors inst. (Total 13) - SUE - L3",Complete,Area FIZ1 (West Inner),West Support Building,General,L3 / Waffle Slab Level,FIZ,CONSTRUCTION,FINISH PAINT,TBD Architectural Finishes,FIZ DATA CENTER,INTERIORS,2025-01-27 07:00,2025-02-07 17:00,2025-02-17 07:00,2025-04-02 17:00,2025-11-20 17:00,2025-11-20 17:00,2025-12-05 17:00,2025-12-05 17:00,0,100,100
CN.FIZ1.5430,"IMPACT - B/32.5, Battery Rm., FAB126503A , Secai has closed this door opening - SUE - 65 - GL 27-33 & A-E - L2",Complete,Area FIZ1 (West Inner),West Support Building,SUE - 65 - GL 27-31 & A -E,L2 - SubFab Level,,CONSTRUCTION,FINISH PAINT,TBD Architectural Finishes,FIZ DATA CENTER,INTERIORS,2025-02-26 07:00,2025-03-04 17:00,2025-02-17 07:00,2025-06-16 15:00,2025-11-20 17:00,2025-11-20 17:00,2025-11-19 07:00,2025-11-19 07:00,0,50,100
CN.FIZ1.5440,"IMPACT - C/30, PR Lifter Rm., FAB126509A  Wall missing Currently in an RFI - SUE - 65 - GL 27-33 & A-E - L2",Complete,Area FIZ1 (West Inner),West Support Building,SUE - 65 - GL 27-31 & A -E,L2 - SubFab Level,,CONSTRUCTION,FINISH PAINT,TBD Architectural Finishes,FIZ DATA CENTER,INTERIORS,2025-02-26 07:00,2025-03-04 17:00,2025-02-17 07:00,2025-06-16 07:00,2025-11-20 17:00,2025-11-20 17:00,2025-11-19 07:00,2025-11-19 07:00,0,50,100
CN.FIZ1.5450,"IMPACT - B.5/33, Fire Alarm 18, FAB126513A  Wall missing - SUE - 65 - GL 27-33 & A-E - L2",Complete,Area FIZ1 (West Inner),West Support Building,SUE - 65 - GL 27-31 & A -E,L2 - SubFab Level,,CONSTRUCTION,FINISH PAINT,TBD Architectural Finishes,FIZ DATA CENTER,INTERIORS,2025-02-26 07:00,2025-03-04 17:00,2025-02-17 07:00,2025-03-07 07:00,2025-11-20 17:00,2025-11-20 17:00,2025-11-19 07:00,2025-11-19 07:00,0,50,100
CN.FIZ1.5460,"IMPACT - C/24.5, Hall 19, FAB136401B  Wall missing - SUE - 65 - GL 27-33 & A-E - L3",Active,Area FIZ1 (West Inner),West Support Building,SUE - 65 - GL 27-31 & A -E,L3 / Waffle Slab Level,FIZ,CONSTRUCTION,FINISH PAINT,TBD Architectural Finishes,FIZ DATA CENTER,INTERIORS,2025-01-28 07:00,2025-02-03 17:00,2025-02-17 07:00,,2025-11-21 07:00,2025-11-25 17:00,2025-12-03 07:00,2025-12-05 17:00,30,50,0
CN.FIZ1.5470,"IMPACT - C/25.5, Duct shaft, FAB136406A  Wall missing - SUE - 65 - GL 27-33 & A-E - L3",Active,Area FIZ1 (West Inner),West Support Building,SUE - 65 - GL 27-31 & A -E,L3 / Waffle Slab Level,FIZ,CONSTRUCTION,FINISH PAINT,TBD Architectural Finishes,FIZ DATA CENTER,INTERIORS,2025-01-28 07:00,2025-02-03 17:00,2025-02-17 07:00,,2025-11-21 07:00,2025-11-25 17:00,2025-12-03 07:00,2025-12-05 17:00,30,50,0
CN.FIZ1.5480,"IMPACT - C/25, Clean Vestibule 19, FAB136406B  Wall missing - SUE - 65 - GL 27-33 & A-E - L3",Active,Area FIZ1 (West Inner),West Support Building,SUE - 65 - GL 27-31 & A -E,L3 / Waffle Slab Level,FIZ,CONSTRUCTION,FINISH PAINT,TBD Architectural Finishes,FIZ DATA CENTER,INTERIORS,2025-01-28 07:00,2025-02-03 17:00,2025-02-17 07:00,,2025-11-21 07:00,2025-11-25 17:00,2025-12-03 07:00,2025-12-05 17:00,30,50,0
CN.FIZ1.5490,"IMPACT - D/13, Clean Vestibule, FAB13K6201A -No opening - SUE - 62 - GL 8-15 & A-E - L3",Active,Area FIZ1 (West Inner),West Support Building,SUE - 62 - GL 8-15 & A -E,L3 / Waffle Slab Level,FIZ,CONSTRUCTION,FINISH PAINT,TBD Architectural Finishes,FIZ DATA CENTER,INTERIORS,2025-02-04 07:00,2025-02-10 17:00,2025-02-17 07:00,,2025-11-21 07:00,2025-11-25 17:00,2025-11-21 07:00,2025-11-25 17:00,30,50,0
CN.FIZ1.5500,"IMPACT - M/17, Clean toilet (W) FAB130316A- Verify Wall - SUW - 03 - GL 15-21 & J-N - L3",Complete,Area FIZ1 (West Inner),West Support Building,SUW - 03 - GL 11-20 & J-N,L3 / Waffle Slab Level,,CONSTRUCTION,FINISH PAINT,TBD Architectural Finishes,FIZ DATA CENTER,INTERIORS,2025-02-13 07:00,2025-02-19 17:00,2025-02-17 07:00,2025-05-30 11:00,2025-11-21 07:00,2025-11-21 07:00,2025-12-05 17:00,2025-12-05 17:00,0,50,100
CN.FIZ1.5510,"IMPACT - M.5/17, Clean Vestibule FAB130319B  Wall missingl - SUW - 03 - GL 15-21 & J-N - L3",Complete,Area FIZ1 (West Inner),West Support Building,SUW - 03 - GL 11-20 & J-N,L3 / Waffle Slab Level,,CONSTRUCTION,FINISH PAINT,TBD Architectural Finishes,FIZ DATA CENTER,INTERIORS,2025-02-13 07:00,2025-02-19 17:00,2025-02-17 07:00,2025-05-28 17:00,2025-11-21 07:00,2025-11-21 07:00,2025-12-05 17:00,2025-12-05 17:00,0,50,100
CN.FIZ1.5520,"IMPACT - M/17.5, Clean Toilet Corr FAB130319C  Wall missing - SUW - 03 - GL 15-21 & J-N - L3",Complete,Area FIZ1 (West Inner),West Support Building,SUW - 03 - GL 11-20 & J-N,L3 / Waffle Slab Level,,CONSTRUCTION,FINISH PAINT,TBD Architectural Finishes,FIZ DATA CENTER,INTERIORS,2025-02-13 07:00,2025-02-19 17:00,2025-02-17 07:00,2025-05-29 10:00,2025-11-21 07:00,2025-11-21 07:00,2025-12-05 17:00,2025-12-05 17:00,0,50,100
CN.FIZ1.5530,"IMPACT - K/23, Clean Vestibule 4, FAB13K0401A  No openingl - SUW - 03 - GL 15-21 & J-N - L3",Complete,Area FIZ1 (West Inner),West Support Building,SUW - 04 - GL 21-23 & J-N,L3 / Waffle Slab Level,,CONSTRUCTION,FINISH PAINT,TBD Architectural Finishes,FIZ DATA CENTER,INTERIORS,2025-02-13 07:00,2025-02-19 17:00,2025-02-17 07:00,2025-06-06 17:00,2025-11-20 17:00,2025-11-20 17:00,2025-12-05 17:00,2025-12-05 17:00,0,50,100
CN.FIZ1.5540,"IMPACT - L/27.5, Rated Chase- West, FAB120511A - Wall missing - SUW - 05 - GL 27-33 & J-N - L2",Active,Area FIZ1 (West Inner),West Support Building,SUW - 05 - GL 23-30 & J-N,L2 - SubFab Level,,CONSTRUCTION,FINISH PAINT,TBD Architectural Finishes,FIZ DATA CENTER,INTERIORS,2025-02-17 07:00,2025-02-21 17:00,2025-02-17 07:00,,2025-11-21 07:00,2025-11-21 07:00,2025-12-02 17:00,2025-12-02 17:00,0,50,100
CN.FIZ1.5560,IMPACT - SECAI HOLD UP DOOR FRAME INSTALLATION - SUW - 05 - GL 27-33 & J-N - L3,Active,Area FIZ1 (West Inner),West Support Building,SUW - 05 - GL 23-30 & J-N,L3 / Waffle Slab Level,,CONSTRUCTION,FINISH PAINT,TBD Architectural Finishes,FIZ DATA CENTER,INTERIORS,2025-02-24 07:00,2025-02-28 17:00,2025-01-23 07:00,,2025-11-21 07:00,2025-11-26 17:00,2025-11-26 07:00,2025-12-03 17:00,40,50,0
CN.FIZ1.5570,IMPACT - SECAI HOLD UP DOOR FRAME REMOVAL REQUEST - SUE - 61 - GL 1-8 & A-E - L3,Complete,Area FIZ1 (West Inner),West Support Building,SUE - 61 - GL 1-8 & A -E,L3 / Waffle Slab Level,FIZ,CONSTRUCTION,FINISH PAINT,TBD Architectural Finishes,FIZ DATA CENTER,INTERIORS,2025-02-06 07:00,2025-02-12 17:00,2025-01-14 07:00,2025-07-25 17:00,2025-11-20 17:00,2025-11-20 17:00,2025-12-04 07:00,2025-12-04 07:00,0,50,100
CN.FIZ1.5580,IMPACT - SECAI HOLD UP DOOR FRAME REMOVAL REQUEST - SUE - 62 - GL 8-15 & A-E - L3,Complete,Area FIZ1 (West Inner),West Support Building,SUE - 62 - GL 8-15 & A -E,L3 / Waffle Slab Level,FIZ,CONSTRUCTION,FINISH PAINT,TBD Architectural Finishes,FIZ DATA CENTER,INTERIORS,2025-02-04 07:00,2025-02-10 17:00,2025-05-13 07:00,2025-06-02 07:00,2025-11-20 17:00,2025-11-20 17:00,2025-11-25 17:00,2025-11-25 17:00,0,50,100
CN.FIZ1.5600,IMPACT - FABRICATION 8 weeks - IOCC 1464 - TR-FAB130190A - GL 1-8 & A-E - L3,Active,Area FIZ1 (West Inner),West Support Building,SUE - 61 - GL 1-8 & A -E,L3 / Waffle Slab Level,FIZ,CONSTRUCTION,FINISH PAINT,TBD Architectural Finishes,FIZ DATA CENTER,INTERIORS,2025-02-06 07:00,2025-02-12 17:00,2025-04-23 07:00,,2025-11-21 07:00,2025-11-25 17:00,2025-11-10 07:00,2025-11-12 17:00,30,50,0
CN.FIZ3.DP.1000,PH1- SLAB FIZ3 (EAST INNER),Complete,Area FIZ3 (East Inner),Data Center (Gridlines 1-3),FIZ3 (East Inner) GL G-E,L1 - Fndn Slab,,CONSTRUCTION,,Cast-in Place Concrete - Baker Concrete,ANDREA SOLIS,,2022-11-17 09:00,2022-12-06 17:00,2022-09-12 09:00,2022-10-03 13:00,2025-11-20 17:00,2025-11-20 17:00,2025-11-13 17:00,2025-11-13 17:00,0,168,100
CN.FIZ3.DP.1010,PH1- CURE SLAB FIZ3 (EAST INNER),Complete,Area FIZ3 (East Inner),Data Center (Gridlines 1-3),FIZ3 (East Inner) GL G-E,L1 - Fndn Slab,,CONSTRUCTION,,Cast-in Place Concrete - Baker Concrete,ANDREA SOLIS,,2022-12-12 13:00,2022-12-19 09:00,2022-10-03 08:30,2022-10-08 16:00,2025-11-20 17:00,2025-11-20 17:00,2025-11-13 17:00,2025-11-13 17:00,0,56,100
CN.FIZ2.DP.1000,PH1- SLAB FIZ2 (WEST OUTER @ DATA CENTER AREA),Complete,Area FIZ3 (East Inner),Data Center (Gridlines 1-3),FIZ3 (East Inner) GL G-E,ALL LEVELS,,CONSTRUCTION,,Cast-in Place Concrete - Baker Concrete,FIZ DATA CENTER,,2023-01-10 13:00,2023-01-30 11:00,2023-01-10 13:00,2023-02-06 09:00,2025-11-20 17:00,2025-11-20 17:00,2025-06-13 08:00,2025-06-13 08:00,0,168,100
CN.FIZ2.DP.1010,PH1- CURE SLAB FIZ2 (WEST OUTER @ DATA CENTER AREA),Complete,Area FIZ3 (East Inner),Data Center (Gridlines 1-3),FIZ3 (East Inner) GL G-E,ALL LEVELS,,CONSTRUCTION,,Concrete Cure,FIZ DATA CENTER,,2023-01-30 09:00,2023-02-05 15:00,2023-01-30 09:00,2023-02-04 15:00,2025-11-20 17:00,2025-11-20 17:00,2025-06-13 08:00,2025-06-13 08:00,0,56,100
CN.FIZ2.DP.1080,METAL STUD FRAMING (2hr) - FIZ3 - SEA - ALL LEVELS - GL 1-3 - E-G,Complete,Area FIZ3 (East Inner),Data Center (Gridlines 1-3),FIZ3 (East Inner) GL G-E,L1 - Fndn Slab,FA/TEM LAB,CONSTRUCTION,BERG,TBD Architectural Finishes,AMBER CARO,INTERIORS,2023-12-19 07:00,2023-12-28 15:00,2023-12-19 07:00,2023-12-28 15:00,2025-11-20 17:00,2025-11-20 17:00,2025-11-13 17:00,2025-11-13 17:00,0,48,100
FIZ.EAST.1031,STEEL COLUMN ERECTION G-E,Complete,Area FIZ3 (East Inner),,FIZ3 (East Inner) GL G-E,ALL LEVELS,,CONSTRUCTION,,Steel Erection,,,2023-06-03 08:00,2023-06-08 16:00,2023-06-03 08:00,2023-07-21 17:00,2025-11-20 17:00,2025-11-20 17:00,2025-06-13 08:00,2025-06-13 08:00,0,48,100
FIZ.EAST.1041,STEEL DECKING LEVELS 2 & 3 G-E,Complete,Area FIZ3 (East Inner),,FIZ3 (East Inner) GL G-E,ALL LEVELS,,CONSTRUCTION,,Decking & Detail,,,2023-07-06 13:00,2023-07-12 17:00,2023-07-06 13:00,2023-08-05 10:00,2025-11-20 17:00,2025-11-20 17:00,2025-06-13 08:00,2025-06-13 08:00,0,64,100
FIZ.EAST.1061,FRP SLAB ON METAL DECK - ROOF - G-E,Complete,Area FIZ3 (East Inner),,FIZ3 (East Inner) GL G-E,L4 - SUP Roof - FAB Roof,,CONSTRUCTION,,SOMD,CONCRETE,,2023-07-31 07:00,2023-08-03 09:00,2023-07-31 07:00,2023-08-03 09:00,2025-11-20 17:00,2025-11-20 17:00,2025-06-13 08:00,2025-06-13 08:00,0,32,100
FIZ.EAST.2211,SET CLADDING STEEL PATRIOT TO DECK G-E,Complete,Area FIZ3 (East Inner),,FIZ3 (East Inner) GL G-E,ALL LEVELS,,CONSTRUCTION,,INSULATED METAL PANELS,,,2023-08-04 07:00,2023-08-08 15:00,2023-07-27 07:00,2023-08-07 14:00,2025-11-20 17:00,2025-11-20 17:00,2025-11-13 17:00,2025-11-13 17:00,0,48,100
FIZ.EAST.1051,FRP SLAB ON METAL DECK - L3 - G-E GL 1-3 - FIZ,Complete,Area FIZ3 (East Inner),,FIZ3 (East Inner) GL G-E,L3 / Waffle Slab Level,,CONSTRUCTION,,SOMD,CONCRETE,,2023-09-01 09:00,2023-09-05 11:00,2023-08-26 09:00,2023-08-29 13:00,2025-11-20 17:00,2025-11-20 17:00,2025-12-01 07:00,2025-12-01 07:00,0,32,100
FIZ.EAST.2200,FRP SLAB ON METAL DECK - L2 - G-E GL 1-3,Complete,Area FIZ3 (East Inner),,FIZ3 (East Inner) GL G-E,L2 - SubFab Level,,CONSTRUCTION,,SOMD,CONCRETE,,2023-08-28 07:00,2023-09-01 09:00,2023-08-25 07:00,2023-08-28 07:00,2025-11-20 17:00,2025-11-20 17:00,2025-11-13 17:00,2025-11-13 17:00,0,32,100
FIZ.EAST.1081,INSTALL DOWELS FOR PADS & CURBS - ROOF- G-E,Complete,Area FIZ3 (East Inner),,FIZ3 (East Inner) GL G-E,L4 - SUP Roof - FAB Roof,,CONSTRUCTION,,SOMD,,,2023-08-03 09:00,2023-08-04 15:00,2023-08-03 09:00,2023-08-16 11:00,2025-11-20 17:00,2025-11-20 17:00,2025-06-13 08:00,2025-06-13 08:00,0,16,100
FIZ.EAST.1091,INSTALL STAIRS BASES - GL 1-3 - G-E - L4 ROOF,Complete,Area FIZ3 (East Inner),,FIZ3 (East Inner) GL G-E,L4 - SUP Roof - FAB Roof,,CONSTRUCTION,PATRIOT,INSULATED METAL PANELS,,,2024-09-05 07:00,2024-09-06 17:00,2024-09-05 07:00,2024-09-06 17:00,2025-11-20 17:00,2025-11-20 17:00,2025-12-05 17:00,2025-12-05 17:00,0,20,100
FIZ.EAST.1101,PARAPET WALL FRP & FRAME DRYWALL - ROOF - FIZ3 - SEA - L4 GL 1-3 - E-G,Complete,Area FIZ3 (East Inner),,FIZ3 (East Inner) GL G-E,L4 - SUP Roof - FAB Roof,,CONSTRUCTION,,TBD Architectural Finishes,,,2024-01-24 16:00,2024-01-28 16:00,2024-01-10 16:00,2024-01-18 11:00,2025-11-20 17:00,2025-11-20 17:00,2025-12-04 17:00,2025-12-04 17:00,0,40,100
FIZ.EAST.1111,LIGHT GUAGE FRAMING FOR IMP - GL 3 - G-E - L4 ROOF,Complete,Area FIZ3 (East Inner),,FIZ3 (East Inner) GL G-E,L4 - SUP Roof - FAB Roof,,CONSTRUCTION,BERG,Concrete Cure,,,2024-08-09 07:00,2024-08-13 17:00,2024-07-30 07:00,2024-08-08 17:00,2025-11-20 17:00,2025-11-20 17:00,2025-12-04 17:00,2025-12-04 17:00,0,30,100
FIZ.EAST.1121,INSTALL INSULATED METAL PANEL MODULES - GL 3 - G-E - L4 ROOF,Complete,Area FIZ3 (East Inner),,FIZ3 (East Inner) GL G-E,L4 - SUP Roof - FAB Roof,,CONSTRUCTION,KOVACH,Concrete Cure,,,2024-08-25 07:00,2024-08-28 17:00,2024-08-14 07:00,2024-08-19 17:00,2025-11-20 17:00,2025-11-20 17:00,2025-12-04 17:00,2025-12-04 17:00,0,40,100
FIZ.EAST.1131,WATERPROOFING 1ST LAYER - ROOF - G-E,Complete,Area FIZ3 (East Inner),,FIZ3 (East Inner) GL G-E,L4 - SUP Roof - FAB Roof,,CONSTRUCTION,,INSULATED METAL PANELS,,,2023-10-09 15:00,2023-10-11 11:00,2023-09-23 08:00,2023-09-26 17:00,2025-11-20 17:00,2025-11-20 17:00,2025-12-05 17:00,2025-12-05 17:00,0,16,100
FIZ.EAST.1141,CRICKET @ PARAPET - ROOF - G-E GL 1-3,Complete,Area FIZ3 (East Inner),,FIZ3 (East Inner) GL G-E,L4 - SUP Roof - FAB Roof,,CONSTRUCTION,,INSULATED METAL PANELS,,,2023-10-02 07:00,2023-10-03 13:00,2023-09-27 07:00,2023-12-07 17:00,2025-11-20 17:00,2025-11-20 17:00,2025-12-05 17:00,2025-12-05 17:00,0,16,100
FIZ.EAST.1161,FRP MECH PADS & PLINTH - GL 1-3 - G-E - L4 ROOF,Complete,Area FIZ3 (East Inner),,FIZ3 (East Inner) GL G-E,L4 - SUP Roof - FAB Roof,,CONSTRUCTION,BAKER,Concrete Cure,CONCRETE,,2024-03-22 07:00,2024-03-26 17:00,2024-03-18 07:00,2024-03-22 17:00,2025-11-20 17:00,2025-11-20 17:00,2025-12-05 17:00,2025-12-05 17:00,0,30,100
FIZ.EAST.1191,FRP TOPPING SLAB - FIZ3 - GL 1-3 - G-E - L4 ROOF,Complete,Area FIZ3 (East Inner),,FIZ3 (East Inner) GL G-E,L4 - SUP Roof - FAB Roof,,CONSTRUCTION,,Concrete Cure,CONCRETE,,2024-06-21 13:00,2024-06-27 15:00,2024-03-26 00:00,2024-03-27 00:00,2025-11-20 17:00,2025-11-20 17:00,2025-12-05 17:00,2025-12-05 17:00,0,32,100
FIZ.EAST.1211,PRECAST COLUMN ERECTION - G-E,Complete,Area FIZ3 (East Inner),,FIZ3 (East Inner) GL G-E,ALL LEVELS,,CONSTRUCTION,,Precast,,,2023-05-08 07:00,2023-05-09 13:00,2023-05-02 07:00,2023-05-04 11:00,2025-11-20 17:00,2025-11-20 17:00,2025-06-13 08:00,2025-06-13 08:00,0,16,100
FIZ.WEST.1211,STEEL POST INSTALL ANCHORS - G-E,Complete,Area FIZ3 (East Inner),Data Center (Gridlines 1-3),FIZ3 (East Inner) GL G-E,ALL LEVELS,,CONSTRUCTION,,Precast,FIZ DATA CENTER,,2023-07-31 07:00,2023-08-01 13:00,2023-07-17 09:00,2023-07-20 17:00,2025-11-20 17:00,2025-11-20 17:00,2025-06-13 08:00,2025-06-13 08:00,0,16,100
FIZ.EAST.2221,STEEL DECKING LEVEL 4 ROOF G-E,Complete,Area FIZ3 (East Inner),,FIZ3 (East Inner) GL G-E,L4 - SUP Roof - FAB Roof,,CONSTRUCTION,,INSULATED METAL PANELS,,,2023-07-10 16:00,2023-07-15 14:00,2023-07-10 16:00,2023-07-15 15:00,2025-11-20 17:00,2025-11-20 17:00,2025-06-13 08:00,2025-06-13 08:00,0,48,100
CN.FIZ3.DP.1100,METAL STUD FRAMING (2hr) -  FA LAB-2 - FIZ3 - SEA - L1  - GL 1-3 - E-G,Complete,Area FIZ3 (East Inner),West Support Building,FIZ3 (East Inner) GL G-E,L1 - Fndn Slab,FA/TEM LAB,CONSTRUCTION,BERG,TBD Architectural Finishes,FIZ DATA CENTER,INTERIORS,2023-09-18 11:00,2023-09-24 09:00,2023-09-18 11:00,2023-09-24 11:00,2025-11-20 17:00,2025-11-20 17:00,2025-11-13 17:00,2025-11-13 17:00,0,48,100
CN.FIZ3.L3.1100,METAL STUD FRAMING (2hr) - FIZ3 - SEA - L3 GL 1-3 - E-G,Complete,Area FIZ3 (East Inner),West Support Building,FIZ3 (East Inner) GL G-E,L3 / Waffle Slab Level,FIZ,CONSTRUCTION,BERG,TBD Architectural Finishes,FIZ DATA CENTER,INTERIORS,2023-11-14 07:00,2023-11-19 15:00,2023-11-19 07:00,2023-12-01 13:00,2025-11-20 17:00,2025-11-20 17:00,2025-06-13 08:00,2025-06-13 08:00,0,48,100
CN.FIZ3.L2.1110,METAL STUD FRAMING (2hr) - FIZ3 - SEA - FIZ3 - SEA - L2 GL 1-3 - E-G - DATA CENTER 2 & ELECTRICAL ROOM 1,Complete,Area FIZ3 (East Inner),West Support Building,FIZ3 (East Inner) GL G-E,L2 - SubFab Level,BATT. RM 1,CONSTRUCTION,BERG,TBD Architectural Finishes,FIZ DATA CENTER,INTERIORS,2023-09-14 08:00,2023-09-18 16:00,2023-09-14 08:00,2023-09-19 08:00,2025-11-20 17:00,2025-11-20 17:00,2025-12-01 07:00,2025-12-01 07:00,0,48,100
CN.FIZ3.1020,MEP ROUGH IN & INSPECTION (by SECAI) -  FA LAB-2 - FIZ3 - L1 GL 1-3 E-G,Complete,Area FIZ3 (East Inner),West Support Building,FIZ3 (East Inner) GL G-E,L1 - Fndn Slab,FA/TEM LAB,CONSTRUCTION,,Owner & Design Team,FIZ DATA CENTER,INTERIORS,2023-11-02 07:00,2023-11-05 17:00,2023-11-02 07:00,2024-01-21 17:00,2025-11-20 17:00,2025-11-20 17:00,2025-12-04 17:00,2025-12-04 17:00,0,40,100
CN.FIZ3.1050,TAPE & FINISH DRYWALL -  FA LAB-2 - FIZ3 - SEA - L1 - GL 1-3 - E-G,Complete,Area FIZ3 (East Inner),West Support Building,FIZ3 (East Inner) GL G-E,L1 - Fndn Slab,FA/TEM LAB,CONSTRUCTION,,DRYWALL,FIZ DATA CENTER,INTERIORS,2023-12-16 08:00,2023-12-20 08:00,2023-12-11 08:00,2023-12-13 11:00,2025-11-20 17:00,2025-11-20 17:00,2025-12-04 17:00,2025-12-04 17:00,0,40,100
CN.FIZ3.1070,FINISH PAINT - FA LAB-2 - FIZ3 - GL 1-3 - E-G - L1,Not Started,Area FIZ3 (East Inner),West Support Building,FIZ3 (East Inner) GL G-E,L1 - Fndn Slab,FA/TEM LAB,CONSTRUCTION,FINISH PAINT,TBD Architectural Finishes,FIZ DATA CENTER,INTERIORS,2025-11-21 07:00,2025-11-21 07:00,,,2025-11-21 07:00,2025-11-21 07:00,2025-12-04 17:00,2025-12-04 17:00,0,0,0
CN.FIZ3.1040,DRYWALL 2 SIDE - FA LAB-2 - FIZ3 - SEA - L1 - GL 1-3 - E-G,Complete,Area FIZ3 (East Inner),West Support Building,FIZ3 (East Inner) GL G-E,L1 - Fndn Slab,FA/TEM LAB,CONSTRUCTION,,DRYWALL,FIZ DATA CENTER,INTERIORS,2023-11-14 08:00,2023-11-19 08:00,2023-11-14 08:00,2023-11-17 11:00,2025-11-20 17:00,2025-11-20 17:00,2025-12-04 17:00,2025-12-04 17:00,0,40,100
CN.FIZ3.1030,DRYWALL & INSULATION (1 side) (INT) - FA LAB-2 - FIZ3 - L1,Complete,Area FIZ3 (East Inner),West Support Building,FIZ3 (East Inner) GL G-E,L1 - Fndn Slab,FA/TEM LAB,CONSTRUCTION,,DRYWALL,FIZ DATA CENTER,INTERIORS,2023-10-16 07:00,2023-10-20 15:00,2023-10-16 07:00,2023-10-20 16:00,2025-11-20 17:00,2025-11-20 17:00,2025-12-04 17:00,2025-12-04 17:00,0,48,100
CN.FIZ3.1110,FLOOR STRIPING PAINT - FA LAB 2 - FIZ3 - GL 1-3 - E-G - L1,Not Started,Area FIZ3 (East Inner),West Support Building,FIZ3 (East Inner) GL G-E,L1 - Fndn Slab,FA/TEM LAB,CONSTRUCTION,FLOOR STRIPING PAINT,TBD Architectural Finishes,FIZ DATA CENTER,INTERIORS,2025-11-21 07:00,2025-11-21 17:00,,,2025-11-21 07:00,2025-11-21 17:00,2025-12-05 07:00,2025-12-05 17:00,10,10,0
FIZ.EAST.2271,IMPACT [S.TIA-76] - WELD LOWER STUB COLUMNS - MEP RACK,Complete,Area FIZ3 (East Inner),Data Center (Gridlines 1-3),FIZ3 (East Inner) GL G-E,L4 - SUP Roof - FAB Roof,,CONSTRUCTION,,Decking & Detail,FIZ DATA CENTER,,2023-08-28 07:00,2023-09-05 11:00,2023-08-16 13:00,2023-08-22 17:00,2025-11-20 17:00,2025-11-20 17:00,2025-06-13 08:00,2025-06-13 08:00,0,64,100
FIZ.EAST.2281,IMPACT [S.TIA-76] - INSTALL UPPER STUB COLUMNS - MEP RACK - Added scope for WW,Complete,Area FIZ3 (East Inner),Data Center (Gridlines 1-3),FIZ3 (East Inner) GL G-E,L4 - SUP Roof - FAB Roof,,CONSTRUCTION,,Decking & Detail,FIZ DATA CENTER,,2023-08-28 07:00,2023-09-05 11:00,2023-08-23 07:00,2023-09-22 15:00,2025-11-20 17:00,2025-11-20 17:00,2025-06-13 08:00,2025-06-13 08:00,0,64,100
CN.AB.AR.5870,MEP ROUGH IN & INSPECTION (by SECAI) - SWA-5 - L2 GL 1-6- DATA CENTER 2 & ELECTRICAL ROOM 1,Complete,Area FIZ3 (East Inner),West Support Building,FIZ3 (East Inner) GL G-E,L2 - SubFab Level,BATT. RM 1,CONSTRUCTION,,Owner & Design Team,FIZ DATA CENTER,INTERIORS,2023-09-25 07:00,2023-09-29 17:00,2023-09-25 07:00,2023-09-29 17:00,2025-11-20 17:00,2025-11-20 17:00,2025-12-01 07:00,2025-12-01 07:00,0,40,100
CN.AB.AR.5900,TAPE & FINISH DRYWALL - FIZ3 - SEA - L2 GL 1-3 - E-G - DATA CENTER 2 & ELECTRICAL ROOM 1,Complete,Area FIZ3 (East Inner),West Support Building,FIZ3 (East Inner) GL G-E,L2 - SubFab Level,BATT. RM 1,CONSTRUCTION,,DRYWALL,FIZ DATA CENTER,INTERIORS,2023-10-16 07:00,2023-10-19 17:00,2023-10-16 07:00,2023-10-20 17:00,2025-11-20 17:00,2025-11-20 17:00,2025-12-01 07:00,2025-12-01 07:00,0,40,100
CN.AB.AR.5890,DRYWALL 2 SIDE - FIZ3 - SEA - L2 GL 1-3 - E-G - DATA CENTER 2 & ELECTRICAL ROOM 1,Complete,Area FIZ3 (East Inner),West Support Building,FIZ3 (East Inner) GL G-E,L2 - SubFab Level,BATT. RM 1,CONSTRUCTION,,DRYWALL,FIZ DATA CENTER,INTERIORS,2023-10-09 07:00,2023-10-12 17:00,2023-09-30 08:00,2023-10-06 09:00,2025-11-20 17:00,2025-11-20 17:00,2025-12-01 07:00,2025-12-01 07:00,0,40,100
CN.AB.AR.5880,DRYWALL & INSULATION (1 side) (INT) - FIZ3 - SEA - L2 GL 1-3 - E-G - DATA CENTER 2 & ELECTRICAL ROOM 1,Complete,Area FIZ3 (East Inner),West Support Building,FIZ3 (East Inner) GL G-E,L2 - SubFab Level,BATT. RM 1,CONSTRUCTION,,DRYWALL,FIZ DATA CENTER,INTERIORS,2023-09-22 09:00,2023-09-26 17:00,2023-09-20 09:00,2023-09-23 09:00,2025-11-20 17:00,2025-11-20 17:00,2025-12-01 07:00,2025-12-01 07:00,0,48,100
CN.FIZ1.2030,MEP ROUGH IN & INSPECTION (by SECAI) FIZ3 - SEA - L3 GL 1-3 - E-G,Complete,Area FIZ3 (East Inner),West Support Building,FIZ3 (East Inner) GL G-E,L3 / Waffle Slab Level,FIZ,CONSTRUCTION,,TBD Architectural Finishes,FIZ DATA CENTER,INTERIORS,2023-12-04 13:00,2023-12-07 17:00,2023-12-04 13:00,2023-12-07 17:00,2025-11-20 17:00,2025-11-20 17:00,2025-06-13 08:00,2025-06-13 08:00,0,24,100
CN.FIZ1.2060,TAPE & FINISH DRYWALL - FIZ3 - GL 1-3 - E-G - L3,Complete,Area FIZ3 (East Inner),West Support Building,FIZ3 (East Inner) GL G-E,L3 / Waffle Slab Level,FIZ,CONSTRUCTION,CHERRY COATING,DRYWALL,FIZ DATA CENTER,INTERIORS,2024-09-23 07:00,2024-09-26 17:00,2024-09-02 07:00,2024-10-03 17:00,2025-11-20 17:00,2025-11-20 17:00,2025-12-04 17:00,2025-12-04 17:00,0,30,100
CN.FIZ1.2050,DRYWALL 1 SIDE FIZ3 - SEA - L3 GL 1-3 - E-G,Complete,Area FIZ3 (East Inner),West Support Building,FIZ3 (East Inner) GL G-E,L3 / Waffle Slab Level,FIZ,CONSTRUCTION,,DRYWALL,FIZ DATA CENTER,INTERIORS,2024-01-22 07:00,2024-01-24 11:00,2024-01-08 07:00,2024-01-31 17:00,2025-11-20 17:00,2025-11-20 17:00,2025-06-13 08:00,2025-06-13 08:00,0,24,100
CN.FIZ1.2040,DRYWALL & INSULATION (1 side) (INT) - FIZ3 - SEA - L3 GL 1-3 - E-G,Complete,Area FIZ3 (East Inner),West Support Building,FIZ3 (East Inner) GL G-E,L3 / Waffle Slab Level,FIZ,CONSTRUCTION,,DRYWALL,FIZ DATA CENTER,INTERIORS,2023-12-11 07:00,2023-12-14 11:00,2023-12-11 07:00,2023-12-14 11:00,2025-11-20 17:00,2025-11-20 17:00,2025-06-13 08:00,2025-06-13 08:00,0,24,100
CN.FIZ1.2090,INSTALL ACCESS FLOOR  (BY SECAI) - FIZ3 - GL 1-3 - E-G - L3,Not Started,Area FIZ3 (East Inner),West Support Building,FIZ3 (East Inner) GL G-E,L3 / Waffle Slab Level,FIZ,CONSTRUCTION,SECAI,TBD Architectural Finishes,FIZ DATA CENTER,SOMD / Roofing / Waterproofing,2025-11-21 07:00,2025-11-21 07:00,,,2025-11-21 07:00,2025-11-21 07:00,2025-12-04 17:00,2025-12-04 17:00,0,0,0
CN.FIZ1.2120,FLOOR STRIPING PAINT - FIZ3 - GL 1-3 - E-G - L3,Not Started,Area FIZ3 (East Inner),West Support Building,FIZ3 (East Inner) GL G-E,L3 / Waffle Slab Level,FIZ,CONSTRUCTION,FLOOR STRIPING PAINT,TBD Architectural Finishes,FIZ DATA CENTER,INTERIORS,2025-11-21 07:00,2025-11-21 17:00,,,2025-11-21 07:00,2025-11-21 17:00,2025-12-05 07:00,2025-12-05 17:00,10,10,0
IMP.FIZ3.1120,IMPACT MEP OBSTRUCTION BY SECAI,Complete,Area FIZ3 (East Inner),,FIZ3 (East Inner) GL G-E,L1 - Fndn Slab,FA/TEM LAB,CONSTRUCTION,,Owner & Design Team,,,2023-10-30 07:00,2023-11-04 17:00,2023-10-30 07:00,2023-11-13 13:00,2025-11-20 17:00,2025-11-20 17:00,2025-12-04 17:00,2025-12-04 17:00,0,40,100
CN.FIZ3.1130,REMAINING - MEP ROUGH IN & INSPECTION (by SECAI) - FA LAB-2 - FIZ3 - L1 GL 1-3 E-G,Complete,Area FIZ3 (East Inner),West Support Building,FIZ3 (East Inner) GL G-E,L1 - Fndn Slab,FA/TEM LAB,CONSTRUCTION,,Owner & Design Team,FIZ DATA CENTER,INTERIORS,2023-11-02 07:00,2023-11-05 17:00,2024-01-21 07:00,2024-03-14 17:00,2025-11-20 17:00,2025-11-20 17:00,2025-12-04 17:00,2025-12-04 17:00,0,40,100
FIZ.EAST.2291,IMPACT - RFI XXXX - PARAPET WALL FRP & FRAME DRYWALL - ROOF - FIZ3 - SEA - L4 GL 1-3 - E-G,Complete,Area FIZ3 (East Inner),,FIZ3 (East Inner) GL G-E,L4 - SUP Roof - FAB Roof,,CONSTRUCTION,,TBD Architectural Finishes,,,2024-01-24 16:00,2024-01-28 16:00,2024-01-18 16:00,2024-03-12 11:00,2025-11-20 17:00,2025-11-20 17:00,2025-12-04 17:00,2025-12-04 17:00,0,40,100
FIZ.EAST.2301,REMAINING PARAPET WALL FRP & FRAME DRYWALL - ROOF - FIZ3 - SEA - L4 GL 1-3 - E-G,Complete,Area FIZ3 (East Inner),,FIZ3 (East Inner) GL G-E,L4 - SUP Roof - FAB Roof,,CONSTRUCTION,,TBD Architectural Finishes,,,2024-03-12 07:00,2024-03-19 17:00,2024-03-12 07:00,2024-03-15 11:00,2025-11-20 17:00,2025-11-20 17:00,2025-12-04 17:00,2025-12-04 17:00,0,40,100
CN.FIZ1.2130,IMPACT - CCD 271 - REMEDIATION DRYWALL - SUPERSEDED BY 324 MK MARLOW CCD,Complete,Area FIZ3 (East Inner),West Support Building,Gypsum,FRAMING/ DRYWALL GYPSUM,FIZ,CONSTRUCTION,BERG,DRYWALL,FIZ DATA CENTER,INTERIORS,2024-04-08 07:00,2024-04-15 17:00,2024-04-08 07:00,2024-05-20 17:00,2025-11-20 17:00,2025-11-20 17:00,2025-11-13 17:00,2025-11-13 17:00,0,40,100
FIZ.EAST.2311,IMPACT [C28 / C29] - FIZ ROOF F04.01 ADDED INFILL STEEL (C28 P1) - RETRO STEEL (C29 P2) - GL 2-3 - D-B,Complete,Area FIZ3 (East Inner),,FIZ3 (East Inner) GL G-E,L4 - SUP Roof - FAB Roof,,CONSTRUCTION,,INSULATED METAL PANELS,,,2024-02-05 07:00,2024-02-13 17:00,2024-01-25 07:00,2024-03-16 17:00,2025-11-20 17:00,2025-11-20 17:00,2025-12-05 17:00,2025-12-05 17:00,0,80,100
FIZ.EAST.2321,IMPACT [C30] - STARCON WELDING BASE PLATES (C30) - GL 2-3 - G-F.3,Complete,Area FIZ3 (East Inner),,FIZ3 (East Inner) GL G-E,L4 - SUP Roof - FAB Roof,,CONSTRUCTION,,INSULATED METAL PANELS,,,2024-02-05 07:00,2024-02-13 17:00,2024-01-25 07:00,2024-03-07 00:00,2025-11-20 17:00,2025-11-20 17:00,2025-12-05 17:00,2025-12-05 17:00,0,80,100
FIZ.EAST.2331,IMPACT - CCD 127- LATCON L4E ROOF DRAIN PENETRATIONS STEEL - GL 3 - E-G,Complete,Area FIZ3 (East Inner),,FIZ3 (East Inner) GL G-E,L4 - SUP Roof - FAB Roof,,CONSTRUCTION,,INSULATED METAL PANELS,,,2024-03-11 07:00,2024-03-26 17:00,2024-03-09 08:00,2024-04-01 16:00,2025-11-20 17:00,2025-11-20 17:00,2025-06-13 08:00,2025-06-13 08:00,0,80,100
FIZ.EAST.2341,IMPACT - RFI 4691 - REMOVE TPO INSULATION - GL 3 - ROOF - G-E,Complete,Area FIZ3 (East Inner),,FIZ3 (East Inner) GL G-E,L4 - SUP Roof - FAB Roof,,CONSTRUCTION,BRAZOS,Concrete Cure,,,2024-04-19 07:00,2024-04-24 17:00,2024-04-10 07:00,2024-04-15 17:00,2025-11-20 17:00,2025-11-20 17:00,2025-12-04 17:00,2025-12-04 17:00,0,40,100
FIZ.EAST.2351,IMPACT - RFI 4691 - INSTALL BENT PLATE - GL 3 - G-E - L4,Complete,Area FIZ3 (East Inner),,FIZ3 (East Inner) GL G-E,L4 - SUP Roof - FAB Roof,,CONSTRUCTION,W&W,Concrete Cure,,,2024-05-03 07:00,2024-05-30 17:00,2024-04-16 07:00,2024-05-16 17:00,2025-11-20 17:00,2025-11-20 17:00,2025-12-04 17:00,2025-12-04 17:00,0,150,100
FIZ.EAST.2361,IMPACT - RFI 4691 - REINSTALL TPO INSULATION - GL 3 - G-E - L4 ROOF,Complete,Area FIZ3 (East Inner),,FIZ3 (East Inner) GL G-E,L4 - SUP Roof - FAB Roof,,CONSTRUCTION,BRAZOS,Concrete Cure,,,2024-08-23 07:00,2024-08-30 17:00,2024-08-21 07:00,2024-08-30 17:00,2025-11-20 17:00,2025-11-20 17:00,2025-12-05 17:00,2025-12-05 17:00,0,60,100
FIZ.EAST.2381,IMPACT - CUT BACK BENT PLATE - GL 3 - G-E - L4,Complete,Area FIZ3 (East Inner),,FIZ3 (East Inner) GL G-E,L4 - SUP Roof - FAB Roof,,CONSTRUCTION,W&W,Concrete Cure,,,2024-07-19 07:00,2024-07-23 17:00,2024-07-18 07:00,2024-07-21 17:00,2025-11-20 17:00,2025-11-20 17:00,2025-12-04 17:00,2025-12-04 17:00,0,30,100
FIZ.EAST.2391,IMPACT - INSTALL ANCHOR BOLTS - DRILL/EPOXY AT ROOF EDGE ANGLE - GL 3 - G-E - L4,Complete,Area FIZ3 (East Inner),,FIZ3 (East Inner) GL G-E,L4 - SUP Roof - FAB Roof,,CONSTRUCTION,W&W,Concrete Cure,,,2024-05-03 07:00,2024-05-10 17:00,2024-06-25 07:00,2024-07-03 17:00,2025-11-20 17:00,2025-11-20 17:00,2025-12-04 17:00,2025-12-04 17:00,0,50,100
FIZ.EAST.2401,IMPACT - ALPHA PAINT BENT PLATE - GL 3 - G-E - L4,Complete,Area FIZ3 (East Inner),,FIZ3 (East Inner) GL G-E,L4 - SUP Roof - FAB Roof,,CONSTRUCTION,W&W,Concrete Cure,,,2024-07-29 07:00,2024-07-30 17:00,2024-07-22 07:00,2024-07-25 17:00,2025-11-20 17:00,2025-11-20 17:00,2025-12-04 17:00,2025-12-04 17:00,0,20,100
FIZ.EAST.2411,IMPACT - INSTALL SEALANT - GL 3 - G-E - L4 ROOF,Complete,Area FIZ3 (East Inner),,FIZ3 (East Inner) GL G-E,L4 - SUP Roof - FAB Roof,,CONSTRUCTION,BRAZOS,Concrete Cure,,,2024-09-03 07:00,2024-09-04 17:00,2024-09-03 07:00,2024-09-04 17:00,2025-11-20 17:00,2025-11-20 17:00,2025-12-05 17:00,2025-12-05 17:00,0,20,100
FIZ.EAST.2421,IMPACT - INSTALL METAL FLASHING W/ ROOF DRIP - GL 3 - G-E - L4 ROOF,Complete,Area FIZ3 (East Inner),,FIZ3 (East Inner) GL G-E,L4 - SUP Roof - FAB Roof,,CONSTRUCTION,BRAZOS,Concrete Cure,,,2024-09-09 07:00,2024-09-10 17:00,2024-09-09 07:00,2024-09-10 17:00,2025-11-20 17:00,2025-11-20 17:00,2025-12-05 17:00,2025-12-05 17:00,0,20,100
CN.FIZ1.2150,DEMO DRYWALL - INSTALL GOAL POSTS - VIP TOUR/ TQR LAB - GL 2 - H-G - L3,Complete,Area FIZ3 (East Inner),West Support Building,FIZ3 (East Inner) GL G-E,L3 / Waffle Slab Level,FIZ,CONSTRUCTION,CHERRY COATING,DRYWALL,FIZ DATA CENTER,INTERIORS,2024-08-19 07:00,2024-08-28 17:00,2024-07-10 07:00,2024-07-20 17:00,2025-11-20 17:00,2025-11-20 17:00,2025-11-25 07:00,2025-11-25 07:00,0,70,100
CN.AB.AR.7200,INSTALL GOAL POSTS(KING STUDD) - 5A IO RM BATTERY RM - FIZ3 - GL 1-3 - G-F - L2,Not Started,Area FIZ3 (East Inner),West Support Building,FIZ3 (East Inner) GL G-E,L2 - SubFab Level,BATT. RM 1,CONSTRUCTION,ALK,TBD Architectural Finishes,FIZ DATA CENTER,INTERIORS,2025-11-24 07:00,2025-12-02 17:00,,,2025-11-24 07:00,2025-12-02 17:00,2025-12-01 07:00,2025-12-05 17:00,50,50,0
FIZ.EAST.2431,IMPACT - WATERPROOFING FOR IMP - GL 3 - G-E - L4 ROOF,Complete,Area FIZ3 (East Inner),,FIZ3 (East Inner) GL G-E,L4 - SUP Roof - FAB Roof,,CONSTRUCTION,KOVACH,Concrete Cure,,,2024-08-23 07:00,2024-08-24 17:00,2024-08-09 07:00,2024-08-13 17:00,2025-11-20 17:00,2025-11-20 17:00,2025-12-04 17:00,2025-12-04 17:00,0,20,100
CN.A1.ST.1000,STEEL PRE-ASSEMBLE TRUSSES - A1 - 17,Complete,Area A-1,South Areas (Team A - Gridlines 3-17),A1 - Area 6 (Gridlines 18-15),L4 - SUP Roof - FAB Roof,,CONSTRUCTION,,Pre-Assemble Trusses,SEAN MONK,,2022-10-27 07:00,2022-11-03 11:00,2022-10-27 07:00,2022-11-03 13:00,2025-11-20 17:00,2025-11-20 17:00,2025-06-13 08:00,2025-06-13 08:00,0,64,100
CN.AB1.ST.1000,PH1-ERECT STEEL TRUSSES & INFILL - A1 - EARLY 17-18,Complete,Area A-1,South Areas (Team A - Gridlines 3-17),A1 - Area 6 (Gridlines 18-15),L4 - SUP Roof - FAB Roof,,CONSTRUCTION,,"Truss Erect, Infill & Decking",SEAN MONK,,2022-11-23 16:00,2022-12-03 10:00,2022-11-23 16:00,2022-12-05 12:00,2025-11-20 17:00,2025-11-20 17:00,2025-06-13 08:00,2025-06-13 08:00,0,64,100
CN.AB1.ST.1010,PH1-ERECT ROOF DECKING - A1,Complete,Area A-1,South Areas (Team A - Gridlines 3-17),A1 - Area 6 (Gridlines 18-15),L4 - SUP Roof - FAB Roof,,CONSTRUCTION,,INSULATED METAL PANELS,SEAN MONK,SOMD / Roofing / Waterproofing,2023-01-07 12:00,2023-01-28 10:00,2023-01-07 12:00,2023-02-13 16:00,2025-11-20 17:00,2025-11-20 17:00,2025-06-13 08:00,2025-06-13 08:00,0,178,100
CN.AB1.ST.1030,PH1-ERECT ROOFING - A1,Complete,Area A-1,South Areas (Team A - Gridlines 3-17),A1 - Area 6 (Gridlines 18-15),L4 - SUP Roof - FAB Roof,,CONSTRUCTION,,INSULATED METAL PANELS,JAMES LIVELY,SOMD / Roofing / Waterproofing,2023-03-13 07:00,2023-03-28 11:00,2023-03-13 07:00,2023-06-23 17:00,2025-11-20 17:00,2025-11-20 17:00,2025-11-10 07:00,2025-11-10 07:00,0,144,100
CN.AB1.ST.1050,PH1-FRP SLAB ROOF - A1 - GL 15 - 17,Complete,Area A-1,South Areas (Team A - Gridlines 3-17),A1 - Area 6 (Gridlines 18-15),L4 - SUP Roof - FAB Roof,,CONSTRUCTION,,INSULATED METAL PANELS,JAMES LEE,SOMD / Roofing / Waterproofing,2023-02-20 07:00,2023-02-25 16:00,2023-02-20 07:00,2023-02-25 08:00,2025-11-20 17:00,2025-11-20 17:00,2025-11-10 07:00,2025-11-10 07:00,0,49,100
CN.A1.CF.1000,"PH1- SLAB A1 (Slab B6, D9 RAMP, F7)",Complete,Area A-1,South Areas (Team A - Gridlines 3-17),A1 - Area 6 (Gridlines 18-15),L1 - Fndn Slab,,CONSTRUCTION,,Pour Concrete,ANDREA SOLIS,,2022-09-27 07:00,2022-10-24 17:00,2022-09-27 07:00,2022-10-31 17:00,2025-11-20 17:00,2025-11-20 17:00,2025-06-13 08:00,2025-06-13 08:00,0,260,100
CN.A1.CF.1010,PH1- CURE SLAB A1 (Gridline 14-17 Complete),Complete,Area A-1,South Areas (Team A - Gridlines 3-17),A1 - Area 6 (Gridlines 18-15),L1 - Fndn Slab,,CONSTRUCTION,,Concrete Cure,ANDREA SOLIS,,2022-11-03 16:00,2022-11-06 10:00,2022-11-03 16:00,2022-11-07 12:00,2025-11-20 17:00,2025-11-20 17:00,2025-06-13 08:00,2025-06-13 08:00,0,24,100
CN.A1.CF.1020,"SEQ1.1- ERECT EARLY COLUMNS/ GIRDERS W/ GROUT (E,G,J, H&F) - A1 - GL18,17,16",Complete,Area A-1,South Areas (Team A - Gridlines 3-17),A1 - Area 6 (Gridlines 18-15),L1 - Fndn Slab,,CONSTRUCTION,,"Main Columns C,E,G,J,L & Intermediate H,F",SEAN MONK,,2022-11-15 07:00,2022-11-20 17:00,2022-11-15 07:00,2022-12-15 09:00,2025-11-20 17:00,2025-11-20 17:00,2025-06-13 08:00,2025-06-13 08:00,0,50,100
CN.AB1.ST.1020,PH1-ERECT PRECAST WAFFLES GL 18 - 17 (L3) - A1,Complete,Area A-1,South Areas (Team A - Gridlines 3-17),A1 - Area 6 (Gridlines 18-15),L3 / Waffle Slab Level,,CONSTRUCTION,,FAB Waffle Slabs,SEAN MONK,,2023-02-20 15:00,2023-03-02 15:00,2023-02-13 15:00,2023-02-17 10:00,2025-11-20 17:00,2025-11-20 17:00,2025-06-13 08:00,2025-06-13 08:00,0,80,100
CN.AB1.ST.1040,PH1-ERECT PRECAST SUBFAB  GL 18 - 17 (L2) - A1,Complete,Area A-1,South Areas (Team A - Gridlines 3-17),A1 - Area 6 (Gridlines 18-15),L2 - SubFab Level,,CONSTRUCTION,,FAB Subfab and Parapets,SEAN MONK,,2023-02-27 16:00,2023-03-04 16:00,2023-02-23 16:00,2023-03-03 10:00,2025-11-20 17:00,2025-11-20 17:00,2025-11-03 07:00,2025-11-03 07:00,0,40,100
CN.A1.CF.1210,PH1- ERECT REMAINING COLUMNS/GIRDERS - A1 - GL15-14,Complete,Area A-1,South Areas (Team A - Gridlines 3-17),A1 - Area 6 (Gridlines 18-15),L4 - SUP Roof - FAB Roof,,CONSTRUCTION,,"Main Columns C,E,G,J,L & Intermediate H,F",SEAN MONK,,2022-12-22 11:00,2022-12-29 13:00,2022-12-22 11:00,2023-01-04 17:00,2025-11-20 17:00,2025-11-20 17:00,2025-06-13 08:00,2025-06-13 08:00,0,32,100
CN.AB1.ST.1070,PH1- TOPPING SLAB - SUBFAB (L2) - A1,Complete,Area A-1,South Areas (Team A - Gridlines 3-17),A1 - Area 6 (Gridlines 18-15),L2 - SubFab Level,,CONSTRUCTION,,Pour Concrete,JAMES LEE,,2023-05-16 13:00,2023-05-20 15:00,2023-05-11 10:21,2023-05-13 16:00,2025-11-20 17:00,2025-11-20 17:00,2025-11-03 07:00,2025-11-03 07:00,0,32,100
CN.AB1.ST.1120,PH1- CURBS & MEP SLABS - SUBFAB (L2) - A1,Complete,Area A-1,South Areas (Team A - Gridlines 3-17),A1 - Area 6 (Gridlines 18-15),L2 - SubFab Level,,CONSTRUCTION,,Pour Concrete,JAMES LEE,,2023-03-10 08:00,2023-03-11 14:00,2023-03-10 08:00,2023-03-11 15:00,2025-11-20 17:00,2025-11-20 17:00,2025-11-03 07:00,2025-11-03 07:00,0,16,100
CN.AB1.ST.1130,PH1- TOPPING SLAB - SOG (L1) - A1,Complete,Area A-1,South Areas (Team A - Gridlines 3-17),A1 - Area 6 (Gridlines 18-15),L1 - Fndn Slab,,CONSTRUCTION,,Pour Concrete,JAMES LEE,,2023-06-02 07:00,2023-06-09 11:00,2023-06-02 07:00,2023-06-06 08:00,2025-11-20 17:00,2025-11-20 17:00,2025-12-05 17:00,2025-12-05 17:00,0,64,100
CN.AB1.ST.1140,PH1- CURBS & MEP SLABS - SOG (L1) - A1,Complete,Area A-1,South Areas (Team A - Gridlines 3-17),A1 - Area 6 (Gridlines 18-15),L1 - Fndn Slab,,CONSTRUCTION,,Pour Concrete,JAMES LEE,,2023-05-27 10:00,2023-05-28 16:00,2023-05-27 10:00,2023-05-30 17:00,2025-11-20 17:00,2025-11-20 17:00,2025-11-13 17:00,2025-11-13 17:00,0,16,100
CN.AB1.ST.1160,PH1- CURBS & MEP SLABS - ROOF (L4) - A1,Complete,Area A-1,South Areas (Team A - Gridlines 3-17),A1 - Area 6 (Gridlines 18-15),L4 - SUP Roof - FAB Roof,,CONSTRUCTION,,INSULATED METAL PANELS,JAMES LEE,SOMD / Roofing / Waterproofing,2023-02-27 07:00,2023-02-27 15:00,2023-02-27 07:00,2023-02-27 15:00,2025-11-20 17:00,2025-11-20 17:00,2025-11-10 07:00,2025-11-10 07:00,0,8,100
CN.A1.ST.1030,STEEL PRE-ASSEMBLE TRUSSES - A1 - 16,Complete,Area A-1,South Areas (Team A - Gridlines 3-17),A1 - Area 6 (Gridlines 18-15),L4 - SUP Roof - FAB Roof,,CONSTRUCTION,,Pre-Assemble Trusses,SEAN MONK,,2022-11-03 13:00,2022-11-08 11:00,2022-11-03 13:00,2022-11-10 13:00,2025-11-20 17:00,2025-11-20 17:00,2025-06-13 08:00,2025-06-13 08:00,0,48,100
CN.A1.ST.1040,STEEL PRE-ASSEMBLE TRUSSES - A1 - 18,Complete,Area A-1,South Areas (Team A - Gridlines 3-17),A1 - Area 6 (Gridlines 18-15),L4 - SUP Roof - FAB Roof,,CONSTRUCTION,,Pre-Assemble Trusses,SEAN MONK,,2022-11-03 14:00,2022-11-13 12:00,2022-11-03 14:00,2022-11-15 16:00,2025-11-20 17:00,2025-11-20 17:00,2025-06-13 08:00,2025-06-13 08:00,0,88,100
PC.PRE1000,Precast Columns G 17/18 - Set,Complete,Area A-1,South Areas (Team A - Gridlines 3-17),A1 - Area 6 (Gridlines 18-15),L1 - Fndn Slab,,CONSTRUCTION,,"Main Columns C,E,G,J,L & Intermediate H,F",SEAN MONK,,2022-11-03 16:00,2022-11-04 14:00,2022-11-03 16:00,2022-11-04 16:00,2025-11-20 17:00,2025-11-20 17:00,2025-06-13 08:00,2025-06-13 08:00,0,8,100
CN.AB1.ST.1170,PH1-ERECT STEEL TRUSSES & INFILL - A1 - 16,Complete,Area A-1,South Areas (Team A - Gridlines 3-17),A1 - Area 6 (Gridlines 18-15),L4 - SUP Roof - FAB Roof,,CONSTRUCTION,,"Truss Erect, Infill & Decking",SEAN MONK,,2022-12-22 11:00,2022-12-29 13:00,2022-12-14 11:00,2022-12-16 13:00,2025-11-20 17:00,2025-11-20 17:00,2025-06-13 08:00,2025-06-13 08:00,0,32,100
CN.A1.CF.1220,"ERECT COLUMNS & GIRDERS - (E,G,J, H&F) - A1 - GL16",Complete,Area A-1,South Areas (Team A - Gridlines 3-17),A1 - Area 6 (Gridlines 18-15),L4 - SUP Roof - FAB Roof,,CONSTRUCTION,,"Main Columns C,E,G,J,L & Intermediate H,F",SEAN MONK,,2022-12-22 11:00,2022-12-25 17:00,2022-12-13 11:00,2022-12-14 17:00,2025-11-20 17:00,2025-11-20 17:00,2025-06-13 08:00,2025-06-13 08:00,0,16,100
CN.AB1.ST.1180,PH1-WAFFLE COATING complete (L2&3) - A1 GL 18-15,Complete,Area A-1,South Areas (Team A - Gridlines 3-17),A1 - Area 6 (Gridlines 18-15),L2 - SubFab Level,,CONSTRUCTION,CHERRY COATING,Pour Concrete,AMBER CARO,,2024-05-16 07:00,2024-05-16 17:00,2024-05-16 07:00,2024-05-16 17:00,2025-11-20 17:00,2025-11-20 17:00,2025-12-05 17:00,2025-12-05 17:00,0,10,100
CN.A1.ST.1050,STEEL PRE-ASSEMBLE TRUSSES - A1 - 15,Complete,Area A-1,South Areas (Team A - Gridlines 3-17),A1 - Area 6 (Gridlines 18-15),L4 - SUP Roof - FAB Roof,,CONSTRUCTION,,Pre-Assemble Trusses,SEAN MONK,,2022-11-17 07:00,2022-11-23 11:00,2022-11-17 07:00,2022-11-28 13:00,2025-11-20 17:00,2025-11-20 17:00,2025-06-13 08:00,2025-06-13 08:00,0,64,100
CN.AB1.ST.1200,PH1-ERECT STEEL TRUSSES & INFILL - A1 - 15,Complete,Area A-1,South Areas (Team A - Gridlines 3-17),A1 - Area 6 (Gridlines 18-15),L4 - SUP Roof - FAB Roof,,CONSTRUCTION,,"Truss Erect, Infill & Decking",SEAN MONK,,2022-12-27 15:00,2023-01-06 09:00,2022-12-27 15:00,2023-01-07 10:00,2025-11-20 17:00,2025-11-20 17:00,2025-06-13 08:00,2025-06-13 08:00,0,64,100
CN.A1.ST.1060,STEEL PRE-ASSEMBLE TRUSSES - A1 - 14,Complete,Area A-1,South Areas (Team A - Gridlines 3-17),A1 - Area 6 (Gridlines 18-15),L4 - SUP Roof - FAB Roof,,CONSTRUCTION,,Pre-Assemble Trusses,SEAN MONK,,2022-11-21 07:00,2022-11-30 11:00,2022-11-21 07:00,2022-12-08 17:00,2025-11-20 17:00,2025-11-20 17:00,2025-06-13 08:00,2025-06-13 08:00,0,64,100
CN.AB1.ST.1220,PH1-WAFFLE EPOXY COATING (1st Coat in Yard) (L3) - A1,Complete,Area A-1,South Areas (Team A - Gridlines 3-17),A1 - Area 6 (Gridlines 18-15),L3 / Waffle Slab Level,,CONSTRUCTION,,TBD Architectural Finishes,AMBER CARO,,2023-01-10 07:00,2023-01-14 17:00,2023-01-10 07:00,2023-01-21 10:00,2025-11-20 17:00,2025-11-20 17:00,2025-06-13 08:00,2025-06-13 08:00,0,40,100
DS.SECAI.1000,F01B.03 IFC,Complete,Area A-1,,F01B,DRAWING PACKAGES,,DESIGN,,Owner & Design Team,DONGSOO,,2022-12-08 07:00,2022-12-08 07:00,2022-11-07 16:00,2022-11-07 16:00,2025-11-20 17:00,2025-11-20 17:00,2025-06-13 08:00,2025-06-13 08:00,0,0,100
DS.SECAI.1010,F01B.02 IFC,Complete,Area A-1,,F01B,DRAWING PACKAGES,,DESIGN,,Owner & Design Team,DONGSOO,,2022-12-08 07:00,2022-12-08 07:00,2022-08-19 16:00,2022-08-19 16:00,2025-11-20 17:00,2025-11-20 17:00,2025-06-13 08:00,2025-06-13 08:00,0,0,100
DS.SECAI.1020,F01B.01 IFC,Complete,Area A-1,,F01B,DRAWING PACKAGES,,DESIGN,,Owner & Design Team,DONGSOO,,2022-11-03 07:00,2022-11-03 07:00,2022-11-08 08:00,2022-11-08 08:00,2025-11-20 17:00,2025-11-20 17:00,2025-06-13 08:00,2025-06-13 08:00,0,0,100
CN.AB1.ST.1080,PH1- WATERPROOFING - SUBFAB (L2) - A1,Complete,Area A-1,South Areas (Team A - Gridlines 3-17),A1 - Area 6 (Gridlines 18-15),L2 - SubFab Level,,CONSTRUCTION,,Pour Concrete,JAMES LIVELY,,2023-03-10 08:00,2023-03-13 10:00,2023-03-10 08:00,2023-03-14 14:00,2025-11-20 17:00,2025-11-20 17:00,2025-11-03 07:00,2025-11-03 07:00,0,32,100
CN.AB1.ST.1090,PH1- CRC (SECAI) - SUBFAB (L2) - A1 GL 18-15,Complete,Area A-1,South Areas (Team A - Gridlines 3-17),A1 - Area 6 (Gridlines 18-15),L2 - SubFab Level,,CONSTRUCTION,,TBD Architectural Finishes,AMBER CARO,,2023-11-20 07:00,2023-12-04 15:00,2023-11-13 07:00,2023-12-29 15:00,2025-11-20 17:00,2025-11-20 17:00,2025-12-05 17:00,2025-12-05 17:00,0,98,100
CN.AB1.ST.1250,PH1- WATERPROOFING - SOG (L1) - A1,Complete,Area A-1,South Areas (Team A - Gridlines 3-17),A1 - Area 6 (Gridlines 18-15),L1 - Fndn Slab,,CONSTRUCTION,,Pour Concrete,JAMES LIVELY,,2023-06-02 07:00,2023-06-05 09:00,2023-06-02 07:00,2023-06-06 11:00,2025-11-20 17:00,2025-11-20 17:00,2025-11-13 17:00,2025-11-13 17:00,0,32,100
CN.AB1.ST.1270,PH1-ERECT PRECAST SUBFAB GL 17 - 16 (L2) - A1,Complete,Area A-1,South Areas (Team A - Gridlines 3-17),A1 - Area 6 (Gridlines 18-15),L2 - SubFab Level,,CONSTRUCTION,,FAB Subfab and Parapets,SEAN MONK,,2023-03-03 10:00,2023-03-08 16:00,2023-03-03 10:00,2023-03-10 08:00,2025-11-20 17:00,2025-11-20 17:00,2025-11-03 07:00,2025-11-03 07:00,0,56,100
CN.AB1.ST.1280,PH1-ERECT PRECAST SUBFAB GL 16 - 15 (L2) - A1,Complete,Area A-1,South Areas (Team A - Gridlines 3-17),A1 - Area 6 (Gridlines 18-15),L2 - SubFab Level,,CONSTRUCTION,,FAB Subfab and Parapets,SEAN MONK,,2023-03-13 08:00,2023-03-18 08:00,2023-03-13 08:00,2023-03-18 09:00,2025-11-20 17:00,2025-11-20 17:00,2025-11-03 07:00,2025-11-03 07:00,0,40,100
CN.AB1.ST.1290,PH1-ERECT PRECAST WAFFLES GL 17 - 16 (L3) - A1,Complete,Area A-1,South Areas (Team A - Gridlines 3-17),A1 - Area 6 (Gridlines 18-15),L3 / Waffle Slab Level,,CONSTRUCTION,,FAB Waffle Slabs,SEAN MONK,,2023-02-20 15:00,2023-03-02 15:00,2023-02-20 15:00,2023-02-24 10:00,2025-11-20 17:00,2025-11-20 17:00,2025-11-17 07:00,2025-11-17 07:00,0,80,100
CN.AB1.ST.1300,PH1-ERECT PRECAST WAFFLES GL 16 - 15 (L3) - A1,Complete,Area A-1,South Areas (Team A - Gridlines 3-17),A1 - Area 6 (Gridlines 18-15),L3 / Waffle Slab Level,,CONSTRUCTION,,FAB Waffle Slabs,SEAN MONK,,2023-02-20 15:00,2023-03-02 15:00,2023-02-27 15:00,2023-03-09 10:00,2025-11-20 17:00,2025-11-20 17:00,2025-11-17 07:00,2025-11-17 07:00,0,80,100
CN.AB1.ST.1330,PH1- FIRE PROOFING TOUCH UP PRIME - SFRM STEEL COLUMNS / TRUSS WEB / TOP CORD(L3) - A1,Complete,Area A-1,South Areas (Team A - Gridlines 3-17),A1 - Area 6 (Gridlines 18-15),L3 / Waffle Slab Level,,CONSTRUCTION,,FAB Waffle Slabs,AMBER CARO,,2023-06-29 11:00,2023-07-03 11:00,2023-06-29 11:00,2023-07-06 13:00,2025-11-20 17:00,2025-11-20 17:00,2025-12-05 17:00,2025-12-05 17:00,0,40,100
CN.AB1.ST.1340,SAFETY PREP/ FIRE PROOFING & PRIMER APPLY - BOTTOM CORD (L3) - A1,Complete,Area A-1,South Areas (Team A - Gridlines 3-17),A1 - Area 6 (Gridlines 18-15),L3 / Waffle Slab Level,,CONSTRUCTION,,FAB Waffle Slabs,AMBER CARO,,2023-05-23 07:00,2023-05-30 09:00,2023-05-01 07:00,2023-05-03 07:00,2025-11-20 17:00,2025-11-20 17:00,2025-11-17 07:00,2025-11-17 07:00,0,52,100
CN.AB1.ST.1570,FRP - RAKER TOPPING SLAB (MEP left out) - WAFFLE (L3) - A1,Complete,Area A-1,South Areas (Team A - Gridlines 3-17),A1 - Area 6 (Gridlines 18-15),L3 / Waffle Slab Level,,CONSTRUCTION,,Pour Concrete,JAMES LEE,,2023-04-24 08:00,2023-04-25 14:00,2023-04-24 08:00,2023-04-25 14:00,2025-11-20 17:00,2025-11-20 17:00,2025-11-17 07:00,2025-11-17 07:00,0,16,100
CN.AB1.ST.1580,SECAI - INSTALL MEP ANCHOR - WAFFLE (L3) - A1,Complete,Area A-1,South Areas (Team A - Gridlines 3-17),A1 - Area 6 (Gridlines 18-15),L3 / Waffle Slab Level,,CONSTRUCTION,,Pour Concrete,JAMES LEE,,2023-06-19 07:00,2023-06-27 17:00,2023-05-26 16:51,2023-06-03 16:00,2025-11-20 17:00,2025-11-20 17:00,2025-11-17 07:00,2025-11-17 07:00,0,80,100
CN.AB1.ST.1590,SECAI - DRILL & PLUG POSTS FOR RAF - WAFFLE (L3) - A1,Complete,Area A-1,South Areas (Team A - Gridlines 3-17),A1 - Area 6 (Gridlines 18-15),L3 / Waffle Slab Level,,CONSTRUCTION,,Pour Concrete,JAMES LEE,,2023-06-30 09:00,2023-07-06 09:00,2023-06-05 12:57,2023-06-10 16:00,2025-11-20 17:00,2025-11-20 17:00,2025-12-05 17:00,2025-12-05 17:00,0,40,100
CN.AB1.ST.1600,SECAI - INSTALL UPPER CEILING - TRUSS (L4) - A1 GL 18-15,Complete,Area A-1,South Areas (Team A - Gridlines 3-17),A1 - Area 6 (Gridlines 18-15),L3 / Waffle Slab Level,,CONSTRUCTION,,Pour Concrete,JAMES LEE,,2023-11-30 16:00,2023-12-04 16:00,2023-07-07 16:00,2023-07-13 08:00,2025-11-20 17:00,2025-11-20 17:00,2025-12-05 17:00,2025-12-05 17:00,0,40,100
CN.AB1.4990,METAL STUD FRAMING DRYWALL (2hr) - BUNKER RM 1 & 2 (With 12' Opening for Trussels and Modules),Complete,Area A-1,East Support Building,A1 - Area 6 (Gridlines 18-15),L1 - Fndn Slab,BUNKER ROOM,CONSTRUCTION,BERG,DRYWALL,AMBER CARO,INTERIORS,2023-08-03 09:00,2023-08-07 17:00,2023-08-03 09:00,2023-08-28 16:00,2025-11-20 17:00,2025-11-20 17:00,2025-12-05 17:00,2025-12-05 17:00,0,48,100
CN.AB1.5000,TAPE & FLOAT - BUNKER RM 2 and 1 GL 18-15,Complete,Area A-1,East Support Building,A1 - Area 6 (Gridlines 18-15),L1 - Fndn Slab,BUNKER ROOM,CONSTRUCTION,,TBD Architectural Finishes,AMBER CARO,INTERIORS,2023-09-05 07:00,2023-09-08 09:00,2023-08-29 11:00,2023-08-31 17:00,2025-11-20 17:00,2025-11-20 17:00,2025-12-05 17:00,2025-12-05 17:00,0,32,100
CN.AB1.ST.1840,PH1-WAFFLE COATING (L3) TEMPERATURE REMIDIATION - A1 - E4- GL 18-10 - EAST TOP,Complete,Area A-1,,A1 - Area 6 (Gridlines 18-15),L3 / Waffle Slab Level,,CONSTRUCTION,,TBD Architectural Finishes,,,2023-10-02 08:00,2023-10-18 09:00,2023-10-02 08:00,2023-10-29 16:00,2025-11-20 17:00,2025-11-20 17:00,2025-12-05 17:00,2025-12-05 17:00,0,160,100
REMEDY.A1.1000,IMPACT - WAFFLE COATING (L3) GROUT REMOVAL & PREP WORK - ALL WAFFLES,Complete,Area A-1,,A1 - Area 6 (Gridlines 18-15),L3 / Waffle Slab Level,,CONSTRUCTION,,TBD Architectural Finishes,,,2023-06-23 08:00,2023-07-21 08:00,2023-06-23 08:00,2023-08-28 16:00,2025-11-20 17:00,2025-11-20 17:00,2025-12-05 17:00,2025-12-05 17:00,0,240,100
CN.AB1.ST.1850,PH1-WAFFLE COATING (L3) TEMPERATURE REMIDIATION - A1- W4- GL 18-10 - WEST TOP,Complete,Area A-1,,A1 - Area 6 (Gridlines 18-15),L3 / Waffle Slab Level,,CONSTRUCTION,CHERRY COATING,TBD Architectural Finishes,,,2024-03-25 08:00,2024-04-04 16:00,2024-03-25 08:00,2024-05-16 17:00,2025-11-20 17:00,2025-11-20 17:00,2025-12-05 17:00,2025-12-05 17:00,0,88,100
CN.AB1.5200,MEP EQUIPMENT LOADING BY SECAI,Complete,Area A-1,,A1 - Area 6 (Gridlines 18-15),L1 - Fndn Slab,BUNKER ROOM,CONSTRUCTION,SECAI,DRYWALL,,,2023-10-16 08:00,2024-01-17 16:00,2023-10-09 07:00,2024-05-04 17:00,2025-11-20 17:00,2025-11-20 17:00,2025-12-05 17:00,2025-12-05 17:00,0,528,100
CN.AB1.5210,METAL STUD FRAMING DRYWALL AND FINISHES - CLOSING THE OPENING,Complete,Area A-1,,A1 - Area 6 (Gridlines 18-15),L1 - Fndn Slab,BUNKER ROOM,CONSTRUCTION,BERG,DRYWALL,,,2024-05-06 07:00,2024-05-13 17:00,2024-05-06 07:00,2024-05-09 17:00,2025-11-20 17:00,2025-11-20 17:00,2025-12-05 17:00,2025-12-05 17:00,0,50,100
CN.AB1.ST.1830,COLUMN WRAP FRAMING AND DRYWALL - UPTO 8 FEET,Complete,Area A-1,,A1 - Area 6 (Gridlines 18-15),L3 / Waffle Slab Level,,CONSTRUCTION,,DRYWALL,,,2024-03-12 12:00,2024-03-20 12:00,2024-01-17 12:00,2024-01-21 15:00,2025-11-20 17:00,2025-11-20 17:00,2025-12-05 17:00,2025-12-05 17:00,0,40,100
CN.AB1.ST.1870,INSTALL ACCESS FLOORS AROUND COLUMNS (BY SECAI),Complete,Area A-1,,A1 - Area 6 (Gridlines 18-15),L3 / Waffle Slab Level,,CONSTRUCTION,SECAI,DRYWALL,,,2024-05-02 07:00,2024-05-09 17:00,2024-05-02 07:00,2024-05-07 17:00,2025-11-20 17:00,2025-11-20 17:00,2025-12-05 17:00,2025-12-05 17:00,0,50,100
CN.AB1.ST.1880,COLUMN WRAP FRAMING AND DRYWALL - G LINE - ABOVE 8 FEET,Complete,Area A-1,,A1 - Area 6 (Gridlines 18-15),L3 / Waffle Slab Level,,CONSTRUCTION,BERG,DRYWALL,,,2025-10-24 07:00,2025-10-30 17:00,2024-01-22 07:00,2025-03-07 17:00,2025-11-20 17:00,2025-11-20 17:00,2025-12-05 17:00,2025-12-05 17:00,0,50,100
CN.AB1.ST.1970,PH1-WAFFLE COATING (L2) TEMPERATURE REMIDIATION - A1- E4- GL 18-10 - CENTER (SG3),Complete,Area A-1,,A1 - Area 6 (Gridlines 18-15),L2 - SubFab Level,,CONSTRUCTION,CHERRY COATING,TBD Architectural Finishes,,,2024-01-29 13:00,2024-04-12 10:00,2024-01-29 07:00,2024-05-16 17:00,2025-11-20 17:00,2025-11-20 17:00,2025-12-05 17:00,2025-12-05 17:00,0,477,100
CN.AB1.ST.2010,PH1-WAFFLE COATING (L3) TEMPERATURE REMIDIATION - A1- W4- GL 10-8 - WEST TOP,Complete,Area A-1,,A1 - Area 6 (Gridlines 18-15),L3 / Waffle Slab Level,,CONSTRUCTION,,TBD Architectural Finishes,,,2024-01-27 14:00,2024-02-04 08:00,2024-01-09 14:00,2024-01-16 15:00,2025-11-20 17:00,2025-11-20 17:00,2025-12-05 17:00,2025-12-05 17:00,0,74,100
CN.AB1.ST.2040,PH1-WAFFLE COATING (L2) TEMPERATURE REMIDIATION - A1 - E4- GL 18-10 - EAST BOTTOM (S2b),Complete,Area A-1,,A1 - Area 6 (Gridlines 18-15),L2 - SubFab Level,,CONSTRUCTION,,TBD Architectural Finishes,,,2024-01-22 07:00,2024-02-12 09:00,2024-01-19 07:00,2024-04-04 13:00,2025-11-20 17:00,2025-11-20 17:00,2025-12-05 17:00,2025-12-05 17:00,0,152,100
CN.AB1.ST.2030,PH1-WAFFLE COATING (L2) TEMPERATURE REMIDIATION - A1- W4- GL 18-8 - WEST BOTTOM (S5b),Complete,Area A-1,,A1 - Area 6 (Gridlines 18-15),L2 - SubFab Level,,CONSTRUCTION,CHERRY COATING,TBD Architectural Finishes,,,2024-01-29 07:00,2024-03-27 08:00,2024-01-22 07:00,2024-05-16 15:00,2025-11-20 17:00,2025-11-20 17:00,2025-12-05 17:00,2025-12-05 17:00,0,381,100
CN.AB1.ST.2180,COLUMNS- GRINDING/SCRAPING - L2 - GL 18-15 - G-E - EAST,Complete,Area A-1,South Areas (Team A - Gridlines 3-17),A1 - Area 6 (Gridlines 18-15),L2 - SubFab Level,,CONSTRUCTION,,TBD Architectural Finishes,AMBER CARO,,2024-03-07 08:00,2024-03-09 12:00,2024-03-06 08:00,2024-03-12 13:00,2025-11-20 17:00,2025-11-20 17:00,2025-12-05 17:00,2025-12-05 17:00,0,24,100
CN.AB1.ST.2190,"COLUMNS - PRIME, INTERMEDIATE COAT & TOP COAT - L2 - GL 18-15 - G-E - EAST",Complete,Area A-1,South Areas (Team A - Gridlines 3-17),A1 - Area 6 (Gridlines 18-15),L2 - SubFab Level,FAB EAST 17 - 13,CONSTRUCTION,,Pour Concrete,AMBER CARO,,2024-03-28 07:00,2024-04-05 17:00,2024-03-20 08:00,2024-03-29 12:00,2025-11-20 17:00,2025-11-20 17:00,2025-12-05 17:00,2025-12-05 17:00,0,80,100
CN.AB1.ST.2200,COLUMNS- GRINDING/SCRAPING - L2 - GL 18-15 - G-J- WEST,Complete,Area A-1,South Areas (Team A - Gridlines 3-17),A1 - Area 6 (Gridlines 18-15),L2 - SubFab Level,,CONSTRUCTION,,TBD Architectural Finishes,AMBER CARO,,2024-02-20 07:00,2024-02-23 11:00,2024-02-20 07:00,2024-02-23 11:00,2025-11-20 17:00,2025-11-20 17:00,2025-12-05 17:00,2025-12-05 17:00,0,24,100
CN.AB1.ST.2270,IMPACT - SECAI - REMOVE ACCESS FLOOR - WAFFLE (L3) - A1,Complete,Area A-1,South Areas (Team A - Gridlines 3-17),A1 - Area 6 (Gridlines 18-15),L3 / Waffle Slab Level,,CONSTRUCTION,SECAI,Pour Concrete,JAMES LEE,,2024-05-10 07:00,2024-05-10 15:00,2024-03-04 07:00,2024-03-23 15:00,2025-11-20 17:00,2025-11-20 17:00,2025-12-05 17:00,2025-12-05 17:00,0,8,100
CN.A2.ST.1030,STEEL PRE-ASSEMBLE TRUSSES - A2 - 13,Complete,Area A-2,South Areas (Team A - Gridlines 3-17),A2 - Area 5 (Gridlines 15-12),L4 - SUP Roof - FAB Roof,,CONSTRUCTION,,Pre-Assemble Trusses,SEAN MONK,,2022-12-06 07:00,2022-12-13 11:00,2022-12-06 07:00,2022-12-15 13:00,2025-11-20 17:00,2025-11-20 17:00,2025-06-13 08:00,2025-06-13 08:00,0,64,100
CN.AB2.ST.1000,PH1-ERECT STEEL TRUSSES & INFILL - A2 - 13,Complete,Area A-2,South Areas (Team A - Gridlines 3-17),A2 - Area 5 (Gridlines 15-12),L4 - SUP Roof - FAB Roof,,CONSTRUCTION,,"Truss Erect, Infill & Decking",SEAN MONK,,2023-01-13 07:00,2023-01-20 11:00,2023-01-13 07:00,2023-01-21 14:00,2025-11-20 17:00,2025-11-20 17:00,2025-06-13 08:00,2025-06-13 08:00,0,64,100
CN.AB2.ST.1010,PH1-ERECT ROOF DECKING - A2,Complete,Area A-2,South Areas (Team A - Gridlines 3-17),A2 - Area 5 (Gridlines 15-12),L4 - SUP Roof - FAB Roof,,CONSTRUCTION,,INSULATED METAL PANELS,SEAN MONK,SOMD / Roofing / Waterproofing,2023-02-20 15:00,2023-03-10 13:00,2023-02-13 15:00,2023-02-21 10:00,2025-11-20 17:00,2025-11-20 17:00,2025-06-13 08:00,2025-06-13 08:00,0,158,100
CN.AB2.ST.1020,PH1-ERECT ROOFING - A2,Complete,Area A-2,South Areas (Team A - Gridlines 3-17),A2 - Area 5 (Gridlines 15-12),L4 - SUP Roof - FAB Roof,,CONSTRUCTION,,INSULATED METAL PANELS,JAMES LIVELY,SOMD / Roofing / Waterproofing,2023-06-19 07:00,2023-06-30 13:00,2023-06-19 07:00,2023-07-11 11:00,2025-11-20 17:00,2025-11-20 17:00,2025-11-10 07:00,2025-11-10 07:00,0,96,100
CN.AB2.ST.1050,PH1 FRP SLAB ROOF - A2 GL 15 - 13,Complete,Area A-2,South Areas (Team A - Gridlines 3-17),A2 - Area 5 (Gridlines 15-12),L4 - SUP Roof - FAB Roof,,CONSTRUCTION,,INSULATED METAL PANELS,JAMES LEE,SOMD / Roofing / Waterproofing,2023-02-27 07:00,2023-03-04 15:00,2023-02-27 07:00,2023-03-04 16:00,2025-11-20 17:00,2025-11-20 17:00,2025-11-10 07:00,2025-11-10 07:00,0,48,100
CN.A1.CF.1030,PH1- SLAB Area A2 - (Delayed SLAB B5 Direction to proceed. On Hold Void failure 11/11-11/16),Complete,Area A-2,South Areas (Team A - Gridlines 3-17),A2 - Area 5 (Gridlines 15-12),L1 - Fndn Slab,,CONSTRUCTION,,Pour Concrete,ANDREA SOLIS,,2022-10-17 07:00,2022-11-13 09:00,2022-10-17 07:00,2022-11-18 17:00,2025-11-20 17:00,2025-11-20 17:00,2025-06-13 08:00,2025-06-13 08:00,0,232,100
CN.A1.CF.1040,CURE SLAB A2 (Slab B5),Complete,Area A-2,South Areas (Team A - Gridlines 3-17),A2 - Area 5 (Gridlines 15-12),L1 - Fndn Slab,,CONSTRUCTION,,Concrete Cure,ANDREA SOLIS,,2022-11-17 09:00,2022-11-19 13:00,2022-11-17 09:00,2022-11-19 14:00,2025-11-20 17:00,2025-11-20 17:00,2025-06-13 08:00,2025-06-13 08:00,0,24,100
CN.A2.CF.1020,SEQ2- ERECT COLUMNS (36nos) & GIRDERS (12 nos) (E-G-J) - A2 - GL13-11,Complete,Area A-2,South Areas (Team A - Gridlines 3-17),A2 - Area 5 (Gridlines 15-12),L4 - SUP Roof - FAB Roof,,CONSTRUCTION,,"Main Columns C,E,G,J,L & Intermediate H,F",SEAN MONK,,2023-01-07 12:00,2023-01-10 14:00,2023-01-07 12:00,2023-01-23 10:00,2025-11-20 17:00,2025-11-20 17:00,2025-06-13 08:00,2025-06-13 08:00,0,32,100
CN.AB2.ST.1030,PH1-ERECT PRECAST WAFFLES GL 15 - 14 (L3) - A2,Complete,Area A-2,South Areas (Team A - Gridlines 3-17),A2 - Area 5 (Gridlines 15-12),L3 / Waffle Slab Level,,CONSTRUCTION,,FAB Waffle Slabs,SEAN MONK,,2023-02-27 08:00,2023-03-08 08:00,2023-02-27 08:00,2023-03-06 08:00,2025-11-20 17:00,2025-11-20 17:00,2025-06-13 08:00,2025-06-13 08:00,0,80,100
CN.AB2.ST.1040,PH1-ERECT PRECAST SUBFAB GL 15 - 14 (L2) - A2,Complete,Area A-2,South Areas (Team A - Gridlines 3-17),A2 - Area 5 (Gridlines 15-12),L2 - SubFab Level,,CONSTRUCTION,,FAB Subfab and Parapets,SEAN MONK,,2023-03-10 16:00,2023-03-17 12:00,2023-03-10 16:00,2023-03-20 08:00,2025-11-20 17:00,2025-11-20 17:00,2025-11-03 07:00,2025-11-03 07:00,0,56,100
CN.A2.CF.1030,PH1- ERECT INTERMEDIATE COLUMNS/GIRDERS (H&F) - A2 - GL14-11 - FAB SOUTH,Complete,Area A-2,South Areas (Team A - Gridlines 3-17),A2 - Area 5 (Gridlines 15-12),L4 - SUP Roof - FAB Roof,,CONSTRUCTION,,"Main Columns C,E,G,J,L & Intermediate H,F",SEAN MONK,,2023-01-23 10:00,2023-01-29 14:00,2023-01-23 10:00,2023-01-30 11:00,2025-11-20 17:00,2025-11-20 17:00,2025-06-13 08:00,2025-06-13 08:00,0,54,100
CN.AB21.ST.1120,PH1- CURBS & MEP SLABS - SUBFAB (L2) - A2,Complete,Area A-2,South Areas (Team A - Gridlines 3-17),A2 - Area 5 (Gridlines 15-12),L2 - SubFab Level,,CONSTRUCTION,,Pour Concrete,JAMES LEE,,2023-05-23 07:00,2023-05-25 13:00,2023-05-23 07:00,2023-05-25 13:00,2025-11-20 17:00,2025-11-20 17:00,2025-12-05 17:00,2025-12-05 17:00,0,16,100
CN.AB21.ST.1130,PH1- WATERPROOFING - SOG (L1) -A2,Complete,Area A-2,South Areas (Team A - Gridlines 3-17),A2 - Area 5 (Gridlines 15-12),L1 - Fndn Slab,,CONSTRUCTION,,Pour Concrete,JAMES LIVELY,,2023-06-16 09:00,2023-06-19 11:00,2023-06-02 07:00,2023-06-06 16:00,2025-11-20 17:00,2025-11-20 17:00,2025-11-13 17:00,2025-11-13 17:00,0,32,100
CN.AB2.ST.1140,PH1- CURBS & MEP SLABS - SOG (L1) - A2,Complete,Area A-2,South Areas (Team A - Gridlines 3-17),A2 - Area 5 (Gridlines 15-12),L1 - Fndn Slab,,CONSTRUCTION,,Pour Concrete,JAMES LEE,,2023-05-23 07:00,2023-05-25 13:00,2023-05-23 07:00,2023-05-25 13:00,2025-11-20 17:00,2025-11-20 17:00,2025-11-13 17:00,2025-11-13 17:00,0,16,100
CN.AB2.ST.1160,PH1- CURBS & MEP SLABS - ROOF (L4) - A2,Complete,Area A-2,South Areas (Team A - Gridlines 3-17),A2 - Area 5 (Gridlines 15-12),L4 - SUP Roof - FAB Roof,,CONSTRUCTION,,INSULATED METAL PANELS,JAMES LEE,SOMD / Roofing / Waterproofing,2023-03-10 15:00,2023-03-11 13:00,2023-03-10 15:00,2023-03-11 14:00,2025-11-20 17:00,2025-11-20 17:00,2025-11-10 07:00,2025-11-10 07:00,0,8,100
CN.AB2.ST.1170,PH1-WAFFLE COATING- (L2&3) - A2 GL 14-10,Complete,Area A-2,South Areas (Team A - Gridlines 3-17),A1 - Area 6 (Gridlines 18-15),L2 - SubFab Level,,CONSTRUCTION,,TBD Architectural Finishes,AMBER CARO,,2024-03-17 07:00,2024-03-17 15:00,2023-03-18 08:00,2023-03-18 16:00,2025-11-20 17:00,2025-11-20 17:00,2025-12-05 17:00,2025-12-05 17:00,0,8,100
CN.AB1.ST.1210,PH1-ERECT STEEL TRUSSES & INFILL - A1 - 14,Complete,Area A-2,South Areas (Team A - Gridlines 3-17),A2 - Area 5 (Gridlines 15-12),L4 - SUP Roof - FAB Roof,,CONSTRUCTION,,"Truss Erect, Infill & Decking",SEAN MONK,,2023-01-04 07:00,2023-01-10 11:00,2023-01-04 07:00,2023-01-11 17:00,2025-11-20 17:00,2025-11-20 17:00,2025-06-13 08:00,2025-06-13 08:00,0,64,100
CN.A2.ST.1040,STEEL PRE-ASSEMBLE TRUSSES - A2 - 12,Complete,Area A-2,South Areas (Team A - Gridlines 3-17),A2 - Area 5 (Gridlines 15-12),L4 - SUP Roof - FAB Roof,,CONSTRUCTION,,Pre-Assemble Trusses,SEAN MONK,,2022-12-15 07:00,2022-12-21 11:00,2022-12-15 07:00,2023-01-16 09:00,2025-11-20 17:00,2025-11-20 17:00,2025-06-13 08:00,2025-06-13 08:00,0,64,100
CN.AB2.ST.1190,PH1-ERECT STEEL TRUSSES & INFILL - A2 - 12,Complete,Area A-2,South Areas (Team A - Gridlines 3-17),A2 - Area 5 (Gridlines 15-12),L4 - SUP Roof - FAB Roof,,CONSTRUCTION,,"Truss Erect, Infill & Decking",SEAN MONK,,2023-02-02 13:00,2023-02-08 17:00,2023-01-30 13:00,2023-02-03 09:00,2025-11-20 17:00,2025-11-20 17:00,2025-06-13 08:00,2025-06-13 08:00,0,64,100
CN.A2.ST.1050,STEEL PRE-ASSEMBLE TRUSSES - A2 - 11,Complete,Area A-2,South Areas (Team A - Gridlines 3-17),A2 - Area 5 (Gridlines 15-12),L4 - SUP Roof - FAB Roof,,CONSTRUCTION,,Pre-Assemble Trusses,SEAN MONK,,2022-12-27 07:00,2023-01-05 11:00,2022-12-27 07:00,2023-01-06 11:00,2025-11-20 17:00,2025-11-20 17:00,2025-06-13 08:00,2025-06-13 08:00,0,64,100
CN.AB2.ST.1200,PH1-ERECT STEEL TRUSSES & INFILL - A2 - 11,Complete,Area A-2,South Areas (Team A - Gridlines 3-17),A2 - Area 5 (Gridlines 15-12),L4 - SUP Roof - FAB Roof,,CONSTRUCTION,,"Truss Erect, Infill & Decking",SEAN MONK,,2023-02-08 13:00,2023-02-14 17:00,2023-02-04 13:00,2023-02-10 09:00,2025-11-20 17:00,2025-11-20 17:00,2025-06-13 08:00,2025-06-13 08:00,0,64,100
CN.AB2.ST.1070,PH1-WAFFLE EPOXY COATING (1st Coat in Yard(L3) - A2,Complete,Area A-2,South Areas (Team A - Gridlines 3-17),A2 - Area 5 (Gridlines 15-12),L3 / Waffle Slab Level,,CONSTRUCTION,,TBD Architectural Finishes,AMBER CARO,,2023-02-23 07:00,2023-03-03 17:00,2023-02-02 13:00,2023-02-11 16:00,2025-11-20 17:00,2025-11-20 17:00,2025-06-13 08:00,2025-06-13 08:00,0,80,100
CN.AB21.ST.1080,PH1- TOPPING SLAB - SUBFAB (L2) - A2,Complete,Area A-2,South Areas (Team A - Gridlines 3-17),A2 - Area 5 (Gridlines 15-12),L2 - SubFab Level,,CONSTRUCTION,,Pour Concrete,JAMES LEE,,2023-05-22 07:00,2023-05-30 11:00,2023-05-16 13:00,2023-05-20 11:00,2025-11-20 17:00,2025-11-20 17:00,2025-11-03 07:00,2025-11-03 07:00,0,64,100
CN.AB21.ST.1140,PH1- TOPPING SLAB - SOG (L1) -A2,Complete,Area A-2,South Areas (Team A - Gridlines 3-17),A2 - Area 5 (Gridlines 15-12),L1 - Fndn Slab,,CONSTRUCTION,,Pour Concrete,JAMES LEE,,2023-06-20 13:00,2023-06-24 15:00,2023-06-06 08:30,2023-06-12 16:00,2025-11-20 17:00,2025-11-20 17:00,2025-12-05 17:00,2025-12-05 17:00,0,32,100
CN.AB2.ST.1210,PH1 FRP SLAB ROOF - A2 GL 13 - 11,Complete,Area A-2,South Areas (Team A - Gridlines 3-17),A2 - Area 5 (Gridlines 15-12),L4 - SUP Roof - FAB Roof,,CONSTRUCTION,,INSULATED METAL PANELS,JAMES LEE,SOMD / Roofing / Waterproofing,2023-03-06 07:00,2023-03-10 15:00,2023-03-06 07:00,2023-03-10 15:00,2025-11-20 17:00,2025-11-20 17:00,2025-11-10 07:00,2025-11-10 07:00,0,48,100
CN.AB2.ST.1220,PH1-ERECT PRECAST SUBFAB GL 14 - 13 (L2) - A2,Complete,Area A-2,South Areas (Team A - Gridlines 3-17),A2 - Area 5 (Gridlines 15-12),L2 - SubFab Level,,CONSTRUCTION,,FAB Subfab and Parapets,SEAN MONK,,2023-03-20 08:00,2023-03-25 14:00,2023-03-20 08:00,2023-03-25 15:00,2025-11-20 17:00,2025-11-20 17:00,2025-11-03 07:00,2025-11-03 07:00,0,56,100
CN.AB2.ST.1230,PH1-ERECT PRECAST SUBFAB GL 13 - 12 (L2) - A2,Complete,Area A-2,South Areas (Team A - Gridlines 3-17),A2 - Area 5 (Gridlines 15-12),L2 - SubFab Level,,CONSTRUCTION,,FAB Subfab and Parapets,SEAN MONK,,2023-03-25 15:00,2023-04-01 11:00,2023-03-25 15:00,2023-04-03 14:00,2025-11-20 17:00,2025-11-20 17:00,2025-11-03 07:00,2025-11-03 07:00,0,56,100
CN.AB2.ST.1240,PH1-ERECT PRECAST WAFFLES GL 14 - 13 (L3) - A2,Complete,Area A-2,South Areas (Team A - Gridlines 3-17),A2 - Area 5 (Gridlines 15-12),L3 / Waffle Slab Level,,CONSTRUCTION,,FAB Waffle Slabs,SEAN MONK,,2023-03-06 08:00,2023-03-14 08:00,2023-03-06 08:00,2023-03-10 16:00,2025-11-20 17:00,2025-11-20 17:00,2025-06-13 08:00,2025-06-13 08:00,0,80,100
CN.AB2.ST.1250,PH1-ERECT PRECAST WAFFLES GL 13 - 12 (L3) - A2,Complete,Area A-2,South Areas (Team A - Gridlines 3-17),A2 - Area 5 (Gridlines 15-12),L3 / Waffle Slab Level,,CONSTRUCTION,,FAB Waffle Slabs,SEAN MONK,,2023-03-10 16:00,2023-03-19 16:00,2023-03-10 16:00,2023-03-18 09:00,2025-11-20 17:00,2025-11-20 17:00,2025-06-13 08:00,2025-06-13 08:00,0,80,100
CN.AB1.ST.1350,PH1- FIRE PROOFING TOUCH UP PRIME - SFRM STEEL COLUMNS / TRUSS WEB / TOP CORD(L3) - A2,Complete,Area A-2,South Areas (Team A - Gridlines 3-17),A2 - Area 5 (Gridlines 15-12),L3 / Waffle Slab Level,,CONSTRUCTION,,FAB Waffle Slabs,AMBER CARO,,2023-07-06 13:00,2023-07-10 13:00,2023-06-19 13:00,2023-06-23 15:00,2025-11-20 17:00,2025-11-20 17:00,2025-11-17 07:00,2025-11-17 07:00,0,40,100
CN.AB1.ST.1360,PH1- FIRE PROOFING - INTUMSCENT PAINT / EPOXY BOTTOM CORD (L3) - A2 - GL 15-12 - L3,Complete,Area A-2,South Areas (Team A - Gridlines 3-17),A2 - Area 5 (Gridlines 15-12),L3 / Waffle Slab Level,,CONSTRUCTION,,FAB Waffle Slabs,AMBER CARO,,2023-05-12 13:00,2023-05-16 13:00,2023-05-12 13:00,2023-05-18 15:00,2025-11-20 17:00,2025-11-20 17:00,2025-11-17 07:00,2025-11-17 07:00,0,40,100
CN.AB1.ST.1620,FRP - RAKER TOPPING SLAB - WAFFLE (L3) - A2,Complete,Area A-2,South Areas (Team A - Gridlines 3-17),A2 - Area 5 (Gridlines 15-12),L3 / Waffle Slab Level,,CONSTRUCTION,,Pour Concrete,JAMES LEE,,2023-05-15 07:00,2023-05-18 11:00,2023-05-15 07:00,2023-05-18 11:00,2025-11-20 17:00,2025-11-20 17:00,2025-11-17 07:00,2025-11-17 07:00,0,24,100
CN.AB1.ST.1610,SECAI - INSTALL MEP ANCHOR - WAFFLE (L3) - A2,Complete,Area A-2,South Areas (Team A - Gridlines 3-17),A2 - Area 5 (Gridlines 15-12),L3 / Waffle Slab Level,,CONSTRUCTION,,Pour Concrete,JAMES LEE,,2023-05-08 07:00,2023-05-13 15:00,2023-05-08 07:00,2023-05-13 16:00,2025-11-20 17:00,2025-11-20 17:00,2025-11-17 07:00,2025-11-17 07:00,0,48,100
CN.AB1.ST.1630,SECAI - DRILL & PLUG POSTS FOR RAF - WAFFLE (L3) - A2,Complete,Area A-2,South Areas (Team A - Gridlines 3-17),A2 - Area 5 (Gridlines 15-12),L3 / Waffle Slab Level,,CONSTRUCTION,,Pour Concrete,JAMES LEE,,2023-05-18 11:00,2023-05-22 11:00,2023-05-18 11:00,2023-05-23 13:00,2025-11-20 17:00,2025-11-20 17:00,2025-11-17 07:00,2025-11-17 07:00,0,40,100
CN.AB1.ST.1640,SECAI - INSTALL UPPER CEILING - TRUSS (L4) - A2,Complete,Area A-2,South Areas (Team A - Gridlines 3-17),A2 - Area 5 (Gridlines 15-12),L3 / Waffle Slab Level,,CONSTRUCTION,,Pour Concrete,JAMES LEE,,2023-06-29 11:00,2023-07-03 11:00,2023-06-26 11:00,2023-06-29 13:00,2025-11-20 17:00,2025-11-20 17:00,2025-12-05 17:00,2025-12-05 17:00,0,40,100
CN.AB11000,METAL STUD FRAMING DRYWALL (2hr) - IO RM 2 GL 15-12 (With 12' Opening for Trussels and Modules),Complete,Area A-2,East Support Building,A2 - Area 5 (Gridlines 15-12),L1 - Fndn Slab,BUNKER ROOM,CONSTRUCTION,BERG,DRYWALL,AMBER CARO,INTERIORS,2023-08-28 07:00,2023-09-02 15:00,2023-08-25 11:00,2023-08-29 17:00,2025-11-20 17:00,2025-11-20 17:00,2025-12-05 17:00,2025-12-05 17:00,0,48,100
CN.AB11010,TAPE & FLOAT - IO RM 2 - A2 - GL 15-12 - L1,Complete,Area A-2,East Support Building,A2 - Area 5 (Gridlines 15-12),L1 - Fndn Slab,BUNKER ROOM,CONSTRUCTION,,TBD Architectural Finishes,AMBER CARO,INTERIORS,2023-09-05 07:00,2023-09-08 09:00,2023-08-29 13:30,2023-09-01 17:00,2025-11-20 17:00,2025-11-20 17:00,2025-12-05 17:00,2025-12-05 17:00,0,32,100
CN.AB11020,IMPACT - MEP EQUIPMENT LOADING BY SECAI - A2 - GL 15-12 - L1,Complete,Area A-2,,A2 - Area 5 (Gridlines 15-12),L1 - Fndn Slab,BUNKER ROOM,CONSTRUCTION,SECAI,TBD Architectural Finishes,,,2023-11-20 07:00,2024-02-14 15:00,2023-11-13 07:00,2024-05-04 17:00,2025-11-20 17:00,2025-11-20 17:00,2025-12-05 17:00,2025-12-05 17:00,0,528,100
CN.AB11030,METAL STUD FRAMING DRYWALL AND FINISHES - CLOSING THE OPENING - A2 - GL 15-12 - L1,Complete,Area A-2,,A2 - Area 5 (Gridlines 15-12),L1 - Fndn Slab,BUNKER ROOM,CONSTRUCTION,BERG,DRYWALL,,,2024-05-06 07:00,2024-05-13 17:00,2024-05-06 07:00,2024-05-09 17:00,2025-11-20 17:00,2025-11-20 17:00,2025-12-05 17:00,2025-12-05 17:00,0,50,100
CN.AB2.ST.1171,COLUMN WRAP FRAMING AND DRYWALL - UPTO 8 FEET - A2 - GL 15-12 - L3,Complete,Area A-2,,A2 - Area 5 (Gridlines 15-12),L3 / Waffle Slab Level,,CONSTRUCTION,,DRYWALL,,,2024-01-22 07:00,2024-01-25 17:00,2024-01-16 07:00,2024-01-20 17:00,2025-11-20 17:00,2025-11-20 17:00,2025-12-05 17:00,2025-12-05 17:00,0,40,100
CN.AB2.ST.1172,INSTALL ACCESS FLOORS AROUND COLUMNS (BY SECAI) - A2 - GL 15-12 - L3,Complete,Area A-2,,A2 - Area 5 (Gridlines 15-12),L3 / Waffle Slab Level,,CONSTRUCTION,SECAI,TBD Architectural Finishes,,,2024-05-07 07:00,2024-05-14 17:00,2024-05-07 07:00,2024-05-13 17:00,2025-11-20 17:00,2025-11-20 17:00,2025-12-05 17:00,2025-12-05 17:00,0,50,100
CN.AB2.ST.1173,CLOUMN WRAP FRAMING AND DRYWALL - ABOVE 8 FEET - A2 - GL 15-12 - L3,Complete,Area A-2,,A2 - Area 5 (Gridlines 15-12),L3 / Waffle Slab Level,,CONSTRUCTION,BERG,DRYWALL,,,2024-04-01 07:00,2024-04-05 17:00,2024-04-01 07:00,2024-04-05 17:00,2025-11-20 17:00,2025-11-20 17:00,2025-12-05 17:00,2025-12-05 17:00,0,50,100
CN.AB21.ST.1150,COLUMNS- GRINDING/SCRAPING - L2 - GL 15-12 - G-E - EAST,Complete,Area A-2,South Areas (Team A - Gridlines 3-17),A2 - Area 5 (Gridlines 15-12),L2 - SubFab Level,,CONSTRUCTION,,TBD Architectural Finishes,AMBER CARO,,2024-03-28 07:00,2024-03-30 11:00,2024-03-19 08:00,2024-03-21 12:00,2025-11-20 17:00,2025-11-20 17:00,2025-12-05 17:00,2025-12-05 17:00,0,24,100
CN.AB21.ST.1160,"COLUMNS - PRIME, INTERMEDIATE COAT & TOP COAT - L2 - GL 15-12 - G-E - EAST",Complete,Area A-2,South Areas (Team A - Gridlines 3-17),A2 - Area 5 (Gridlines 15-12),L2 - SubFab Level,FAB EAST 17 - 13,CONSTRUCTION,,TBD Architectural Finishes,AMBER CARO,,2024-03-20 13:00,2024-03-30 13:00,2024-03-20 13:00,2024-03-29 17:00,2025-11-20 17:00,2025-11-20 17:00,2025-12-05 17:00,2025-12-05 17:00,0,80,100
CN.AB21.ST.1170,COLUMNS- GRINDING/SCRAPING - L2 - GL 15-12 - G-J- WEST,Complete,Area A-2,South Areas (Team A - Gridlines 3-17),A2 - Area 5 (Gridlines 15-12),L2 - SubFab Level,,CONSTRUCTION,CHERRY COATING,TBD Architectural Finishes,AMBER CARO,,2024-04-23 07:00,2024-04-23 17:00,2024-04-23 07:00,2024-04-23 17:00,2025-11-20 17:00,2025-11-20 17:00,2025-12-05 17:00,2025-12-05 17:00,0,10,100
CN.AB21.ST.1190,IMPACT 2ND FLOOR MEP MATERIAL CONSTRAINT - L2 - GL 14-12 - G-J,Complete,Area A-2,South Areas (Team A - Gridlines 3-17),A2 - Area 5 (Gridlines 15-12),L2 - SubFab Level,,CONSTRUCTION,,Pour Concrete,AMBER CARO,,2024-03-01 08:00,2024-03-18 08:00,2024-03-01 07:00,2024-03-18 17:00,2025-11-20 17:00,2025-11-20 17:00,2025-12-05 17:00,2025-12-05 17:00,0,80,100
CN.A3.ST.1060,STEEL PRE-ASSEMBLE TRUSSES - A3 - 10,Complete,Area A-3,South Areas (Team A - Gridlines 3-17),A3 - Area 4 (Gridlines 12-9),L4 - SUP Roof - FAB Roof,,CONSTRUCTION,,Pre-Assemble Trusses,SEAN MONK,,2023-01-17 16:00,2023-01-26 10:00,2023-01-17 16:00,2023-01-27 12:00,2025-11-20 17:00,2025-11-20 17:00,2025-06-13 08:00,2025-06-13 08:00,0,64,100
CN.AB3.ST.1000,PH1-ERECT STEEL TRUSSES & INFILL - A3 - 10,Complete,Area A-3,South Areas (Team A - Gridlines 3-17),A3 - Area 4 (Gridlines 12-9),L4 - SUP Roof - FAB Roof,,CONSTRUCTION,,"Truss Erect, Infill & Decking",SEAN MONK,,2023-02-28 13:00,2023-03-07 17:00,2023-02-13 13:00,2023-02-18 13:00,2025-11-20 17:00,2025-11-20 17:00,2025-06-13 08:00,2025-06-13 08:00,0,64,100
CN.AB3.ST.1010,PH1-ERECT ROOF DECKING GL 12 - 11 - A3,Complete,Area A-3,South Areas (Team A - Gridlines 3-17),A3 - Area 4 (Gridlines 12-9),L4 - SUP Roof - FAB Roof,,CONSTRUCTION,,INSULATED METAL PANELS,SEAN MONK,SOMD / Roofing / Waterproofing,2023-02-27 15:00,2023-03-05 13:00,2023-02-27 15:00,2023-03-06 15:00,2025-11-20 17:00,2025-11-20 17:00,2025-06-13 08:00,2025-06-13 08:00,0,48,100
CN.AB3.ST.1020,PH1-ERECT ROOFING - A3,Complete,Area A-3,South Areas (Team A - Gridlines 3-17),A3 - Area 4 (Gridlines 12-9),L4 - SUP Roof - FAB Roof,,CONSTRUCTION,,INSULATED METAL PANELS,JAMES LIVELY,SOMD / Roofing / Waterproofing,2023-07-26 11:00,2023-08-03 11:00,2023-07-13 11:00,2023-07-17 13:00,2025-11-20 17:00,2025-11-20 17:00,2025-11-10 07:00,2025-11-10 07:00,0,80,100
CN.AB3.ST.1050,PH1- FRP SLAB ROOF - A3 GL 11 - 9,Complete,Area A-3,South Areas (Team A - Gridlines 3-17),A3 - Area 4 (Gridlines 12-9),L4 - SUP Roof - FAB Roof,,CONSTRUCTION,,INSULATED METAL PANELS,JAMES LEE,SOMD / Roofing / Waterproofing,2023-05-01 07:00,2023-05-05 17:00,2023-05-05 07:00,2023-05-18 17:00,2025-11-20 17:00,2025-11-20 17:00,2025-11-10 07:00,2025-11-10 07:00,0,40,100
CN.A1.CF.1070,"PH1- SLAB A3 (Gridline 9-11 Complete) - (Slab B4,C4, D4, E4) - (Delayed Pour Only)",Complete,Area A-3,South Areas (Team A - Gridlines 3-17),A3 - Area 4 (Gridlines 12-9),L1 - Fndn Slab,,CONSTRUCTION,,Pour Concrete,ANDREA SOLIS,,2022-12-27 15:00,2023-01-03 15:00,2022-12-09 15:00,2023-01-06 17:00,2025-11-20 17:00,2025-11-20 17:00,2025-06-13 08:00,2025-06-13 08:00,0,40,100
CN.A1.CF.1080,PH1- CURE SLAB A3 (Gridline 9-11 Complete),Complete,Area A-3,South Areas (Team A - Gridlines 3-17),A3 - Area 4 (Gridlines 12-9),L1 - Fndn Slab,,CONSTRUCTION,,Concrete Cure,JAMES LEE,,2023-01-05 13:04,2023-01-12 08:04,2023-01-05 13:04,2023-01-10 17:00,2025-11-20 17:00,2025-11-20 17:00,2025-06-13 08:00,2025-06-13 08:00,0,55,100
CN.A3.CF.1020,SEQ3-ERECT COLUMNS (27nos) & GIRDERS (12 nos) - (E-G-J) - A3 - GL11-9,Complete,Area A-3,South Areas (Team A - Gridlines 3-17),A3 - Area 4 (Gridlines 12-9),L4 - SUP Roof - FAB Roof,,CONSTRUCTION,,"Main Columns C,E,G,J,L & Intermediate H,F",SEAN MONK,,2023-01-23 10:00,2023-02-02 08:00,2023-01-23 10:00,2023-02-03 09:00,2025-11-20 17:00,2025-11-20 17:00,2025-06-13 08:00,2025-06-13 08:00,0,78,100
CN.AB3.ST.1030,PH1-ERECT PRECAST WAFFLES GL 12 - 11 (L3) - A3,Complete,Area A-3,South Areas (Team A - Gridlines 3-17),A3 - Area 4 (Gridlines 12-9),L3 / Waffle Slab Level,,CONSTRUCTION,,FAB Waffle Slabs,SEAN MONK,,2023-03-18 09:00,2023-03-26 09:00,2023-03-18 09:00,2023-04-10 16:00,2025-11-20 17:00,2025-11-20 17:00,2025-06-13 08:00,2025-06-13 08:00,0,80,100
CN.AB3.ST.1040,PH1-ERECT PRECAST SUBFAB GL 12 - 11 (L2) - A3,Complete,Area A-3,South Areas (Team A - Gridlines 3-17),A3 - Area 4 (Gridlines 12-9),L2 - SubFab Level,,CONSTRUCTION,,FAB Subfab and Parapets,SEAN MONK,,2023-04-03 14:00,2023-04-10 10:00,2023-04-03 14:00,2023-04-11 12:00,2025-11-20 17:00,2025-11-20 17:00,2025-11-03 07:00,2025-11-03 07:00,0,56,100
CN.A3.CF.1030,PH1- ERECT INTERMEDIATE COLUMNS/GIRDERS (H&F) - A3 - GL11-9,Complete,Area A-3,South Areas (Team A - Gridlines 3-17),A3 - Area 4 (Gridlines 12-9),L4 - SUP Roof - FAB Roof,,CONSTRUCTION,,"Main Columns C,E,G,J,L & Intermediate H,F",SEAN MONK,,2023-02-21 13:00,2023-02-27 11:00,2023-02-06 07:00,2023-02-13 17:00,2025-11-20 17:00,2025-11-20 17:00,2025-06-13 08:00,2025-06-13 08:00,0,48,100
CN.AB31.ST.1070,PH1- WATERPROOFING - SUBFAB (L2) - A3,Complete,Area A-3,South Areas (Team A - Gridlines 3-17),A3 - Area 4 (Gridlines 12-9),L2 - SubFab Level,,CONSTRUCTION,,Pour Concrete,JAMES LIVELY,,2023-05-09 13:00,2023-05-13 15:00,2023-05-09 13:00,2023-05-13 16:00,2025-11-20 17:00,2025-11-20 17:00,2025-11-03 07:00,2025-11-03 07:00,0,32,100
CN.AB31.ST.1120,PH1- CURBS & MEP SLABS - SUBFAB (L2) -  A3,Complete,Area A-3,South Areas (Team A - Gridlines 3-17),A3 - Area 4 (Gridlines 12-9),L2 - SubFab Level,,CONSTRUCTION,,Pour Concrete,JAMES LEE,,2023-05-08 07:00,2023-05-09 13:00,2023-05-08 07:00,2023-05-09 13:00,2025-11-20 17:00,2025-11-20 17:00,2025-11-03 07:00,2025-11-03 07:00,0,16,100
CN.AB31.ST.1130,PH1- WATERPROOFING - SOG (L1) - A3,Complete,Area A-3,South Areas (Team A - Gridlines 3-17),A3 - Area 4 (Gridlines 12-9),L1 - Fndn Slab,,CONSTRUCTION,,Pour Concrete,JAMES LIVELY,,2023-06-12 07:00,2023-06-16 09:00,2023-06-06 08:00,2023-06-10 15:00,2025-11-20 17:00,2025-11-20 17:00,2025-11-13 17:00,2025-11-13 17:00,0,32,100
CN.AB3.ST.1140,PH1- CURBS & MEP SLABS - SOG (L1) -  A3,Complete,Area A-3,South Areas (Team A - Gridlines 3-17),A3 - Area 4 (Gridlines 12-9),L1 - Fndn Slab,,CONSTRUCTION,,Pour Concrete,JAMES LEE,,2023-05-23 07:00,2023-05-25 13:00,2023-05-23 07:00,2023-05-25 13:00,2025-11-20 17:00,2025-11-20 17:00,2025-11-13 17:00,2025-11-13 17:00,0,16,100
CN.AB3.ST.1160,PH1- CURBS & MEP SLABS - ROOF (L4) -  A3,Complete,Area A-3,South Areas (Team A - Gridlines 3-17),A3 - Area 4 (Gridlines 12-9),L4 - SUP Roof - FAB Roof,,CONSTRUCTION,,INSULATED METAL PANELS,JAMES LEE,SOMD / Roofing / Waterproofing,2023-05-23 07:00,2023-05-23 15:00,2023-05-23 07:00,2023-05-23 15:00,2025-11-20 17:00,2025-11-20 17:00,2025-11-10 07:00,2025-11-10 07:00,0,8,100
CN.AB3.ST.1170,PH1-WAFFLE COATING (L2&3) - A3 GL 6-10,Complete,Area A-3,South Areas (Team A - Gridlines 3-17),A1 - Area 6 (Gridlines 18-15),L2 - SubFab Level,,CONSTRUCTION,,TBD Architectural Finishes,AMBER CARO,,2024-03-17 07:00,2024-03-17 15:00,2023-04-21 08:00,2023-04-21 16:00,2025-11-20 17:00,2025-11-20 17:00,2025-11-17 07:00,2025-11-17 07:00,0,8,100
CN.A3.ST.1070,STEEL PRE-ASSEMBLE TRUSSES - A3 - 9,Complete,Area A-3,South Areas (Team A - Gridlines 3-17),A3 - Area 4 (Gridlines 12-9),L4 - SUP Roof - FAB Roof,,CONSTRUCTION,,Pre-Assemble Trusses,SEAN MONK,,2023-01-26 16:00,2023-02-03 10:00,2023-01-26 16:00,2023-02-04 11:00,2025-11-20 17:00,2025-11-20 17:00,2025-06-13 08:00,2025-06-13 08:00,0,64,100
CN.AB3.ST.1190,PH1-ERECT STEEL TRUSSES & INFILL - A3 - 9,Complete,Area A-3,South Areas (Team A - Gridlines 3-17),A3 - Area 4 (Gridlines 12-9),L4 - SUP Roof - FAB Roof,,CONSTRUCTION,,"Truss Erect, Infill & Decking",SEAN MONK,,2023-02-20 07:00,2023-02-25 15:00,2023-02-20 07:00,2023-02-25 16:00,2025-11-20 17:00,2025-11-20 17:00,2025-06-13 08:00,2025-06-13 08:00,0,48,100
CN.AB3.ST.1070,PH1-WAFFLE EPOXY COATING (1st Coat in Yard) (L3) - A3,Complete,Area A-3,South Areas (Team A - Gridlines 3-17),A3 - Area 4 (Gridlines 12-9),L3 / Waffle Slab Level,,CONSTRUCTION,,TBD Architectural Finishes,AMBER CARO,,2023-02-23 07:00,2023-03-03 17:00,2023-02-13 07:00,2023-02-23 11:00,2025-11-20 17:00,2025-11-20 17:00,2025-06-13 08:00,2025-06-13 08:00,0,80,100
CN.AB31.ST.1080,PH1- TOPPING SLAB - SUBFAB (L2) - A3,Complete,Area A-3,South Areas (Team A - Gridlines 3-17),A3 - Area 4 (Gridlines 12-9),L2 - SubFab Level,,CONSTRUCTION,,Pour Concrete,JAMES LEE,,2023-05-23 07:00,2023-05-26 11:00,2023-05-23 07:00,2023-05-26 11:00,2025-11-20 17:00,2025-11-20 17:00,2025-11-03 07:00,2025-11-03 07:00,0,24,100
CN.AB31.ST.1140,PH1- TOPPING SLAB - SOG (L1) - A3,Complete,Area A-3,South Areas (Team A - Gridlines 3-17),A3 - Area 4 (Gridlines 12-9),L1 - Fndn Slab,,CONSTRUCTION,,TOPPING,CONCRETE,,2023-06-19 07:00,2023-06-23 09:00,2023-06-19 07:00,2023-06-23 09:00,2025-11-20 17:00,2025-11-20 17:00,2025-12-05 17:00,2025-12-05 17:00,0,32,100
CN.AB3.ST.1200,PH1-ERECT PRECAST SUBFAB GL 11 - 10 (L2) - A3,Complete,Area A-3,South Areas (Team A - Gridlines 3-17),A3 - Area 4 (Gridlines 12-9),L2 - SubFab Level,,CONSTRUCTION,,FAB Subfab and Parapets,SEAN MONK,,2023-04-14 10:00,2023-04-20 16:00,2023-04-14 10:00,2023-04-22 09:00,2025-11-20 17:00,2025-11-20 17:00,2025-11-03 07:00,2025-11-03 07:00,0,56,100
CN.AB3.ST.1210,PH1-ERECT PRECAST SUBFAB GL 10 - 9 (L2) - A3,Complete,Area A-3,South Areas (Team A - Gridlines 3-17),A3 - Area 4 (Gridlines 12-9),L2 - SubFab Level,,CONSTRUCTION,,FAB Subfab and Parapets,SEAN MONK,,2023-04-22 09:00,2023-04-28 15:00,2023-04-22 09:00,2023-04-27 17:00,2025-11-20 17:00,2025-11-20 17:00,2025-11-03 07:00,2025-11-03 07:00,0,56,100
CN.AB3.ST.1220,PH1-ERECT PRECAST WAFFLES GL 11 - 10 (L3) - A3,Complete,Area A-3,South Areas (Team A - Gridlines 3-17),A3 - Area 4 (Gridlines 12-9),L3 / Waffle Slab Level,,CONSTRUCTION,,FAB Waffle Slabs,SEAN MONK,,2023-04-10 08:00,2023-04-16 12:00,2023-04-10 08:00,2023-04-14 10:00,2025-11-20 17:00,2025-11-20 17:00,2025-06-13 08:00,2025-06-13 08:00,0,64,100
CN.AB3.ST.1230,PH1-ERECT PRECAST WAFFLES GL 10 - 9 (L3) - A3,Complete,Area A-3,South Areas (Team A - Gridlines 3-17),A3 - Area 4 (Gridlines 12-9),L3 / Waffle Slab Level,,CONSTRUCTION,,FAB Waffle Slabs,SEAN MONK,,2023-04-24 08:00,2023-04-29 16:00,2023-04-17 08:00,2023-04-21 08:00,2025-11-20 17:00,2025-11-20 17:00,2025-06-13 08:00,2025-06-13 08:00,0,48,100
CN.AB3.ST.1240,PH1-ERECT ROOF DECKING GL 11 - 10 - A3,Complete,Area A-3,South Areas (Team A - Gridlines 3-17),A3 - Area 4 (Gridlines 12-9),L4 - SUP Roof - FAB Roof,,CONSTRUCTION,,INSULATED METAL PANELS,SEAN MONK,SOMD / Roofing / Waterproofing,2023-03-06 15:00,2023-03-12 11:00,2023-03-06 15:00,2023-03-17 15:00,2025-11-20 17:00,2025-11-20 17:00,2025-11-10 07:00,2025-11-10 07:00,0,56,100
CN.AB3.ST.1250,PH1-ERECT ROOF DECKING GL 10 - 9 - A3,Complete,Area A-3,South Areas (Team A - Gridlines 3-17),A3 - Area 4 (Gridlines 12-9),L4 - SUP Roof - FAB Roof,,CONSTRUCTION,,INSULATED METAL PANELS,SEAN MONK,SOMD / Roofing / Waterproofing,2023-04-24 15:00,2023-04-29 15:00,2023-03-21 15:00,2023-03-25 15:00,2025-11-20 17:00,2025-11-20 17:00,2025-11-10 07:00,2025-11-10 07:00,0,40,100
CN.AB1.ST.1370,PH1- FIRE PROOFING TOUCH UP PRIME - SFRM STEEL COLUMNS / TRUSS WEB / TOP CORD(L3) - A3,Complete,Area A-3,South Areas (Team A - Gridlines 3-17),A3 - Area 4 (Gridlines 12-9),L3 / Waffle Slab Level,,CONSTRUCTION,,FAB Waffle Slabs,AMBER CARO,,2023-06-19 07:00,2023-06-23 17:00,2023-06-24 07:00,2023-06-30 17:00,2025-11-20 17:00,2025-11-20 17:00,2025-11-17 07:00,2025-11-17 07:00,0,40,100
CN.AB1.ST.1380,PH1- FIRE PROOFING - INTUMSCENT PAINT / EPOXY BOTTOM CORD - A4 - GL 12-9 - L3,Complete,Area A-3,South Areas (Team A - Gridlines 3-17),A3 - Area 4 (Gridlines 12-9),L3 / Waffle Slab Level,,CONSTRUCTION,,FAB Waffle Slabs,AMBER CARO,,2023-05-18 15:00,2023-05-23 11:00,2023-05-18 15:00,2023-05-25 13:00,2025-11-20 17:00,2025-11-20 17:00,2025-11-17 07:00,2025-11-17 07:00,0,46,100
CN.AB1.ST.1660,FRP - RAKER TOPPING SLAB - WAFFLE (L3) - A3,Complete,Area A-3,South Areas (Team A - Gridlines 3-17),A3 - Area 4 (Gridlines 12-9),L3 / Waffle Slab Level,,CONSTRUCTION,,Pour Concrete,JAMES LEE,,2023-05-20 08:00,2023-05-27 12:00,2023-05-20 08:00,2023-05-30 15:00,2025-11-20 17:00,2025-11-20 17:00,2025-11-17 07:00,2025-11-17 07:00,0,64,100
CN.AB1.ST.1650,SECAI - INSTALL MEP ANCHOR - WAFFLE (L3) - A3,Complete,Area A-3,South Areas (Team A - Gridlines 3-17),A3 - Area 4 (Gridlines 12-9),L3 / Waffle Slab Level,,CONSTRUCTION,,Pour Concrete,JAMES LEE,,2023-05-15 07:00,2023-05-19 17:00,2023-05-15 07:00,2023-05-19 17:00,2025-11-20 17:00,2025-11-20 17:00,2025-11-17 07:00,2025-11-17 07:00,0,40,100
CN.AB1.ST.1670,SECAI - DRILL & PLUG POSTS FOR RAF - WAFFLE (L3) - A3,Complete,Area A-3,South Areas (Team A - Gridlines 3-17),A3 - Area 4 (Gridlines 12-9),L3 / Waffle Slab Level,,CONSTRUCTION,,Pour Concrete,JAMES LEE,,2023-06-19 07:00,2023-06-23 17:00,2023-06-19 07:00,2023-06-23 17:00,2025-11-20 17:00,2025-11-20 17:00,2025-11-17 07:00,2025-11-17 07:00,0,40,100
CN.AB1.ST.1680,SECAI - INSTALL UPPER CEILING - TRUSS - A4 - GL 12-9 - L3,Complete,Area A-3,South Areas (Team A - Gridlines 3-17),A3 - Area 4 (Gridlines 12-9),L3 / Waffle Slab Level,,CONSTRUCTION,SECAI,Pour Concrete,JAMES LEE,,2024-03-04 07:00,2024-03-08 17:00,2024-03-04 07:00,2024-05-17 17:00,2025-11-20 17:00,2025-11-20 17:00,2025-12-05 17:00,2025-12-05 17:00,0,50,100
CN.AB1.5050,METAL STUD FRAMING DRYWALL (2hr) - BUNKER RM 7-11 GL 12-9(With 12' Opening for Trussels and Modules),Complete,Area A-3,East Support Building,A3 - Area 4 (Gridlines 12-9),L1 - Fndn Slab,BUNKER ROOM,CONSTRUCTION,BERG,DRYWALL,AMBER CARO,INTERIORS,2023-09-30 09:00,2023-10-12 09:00,2023-09-30 09:00,2023-10-06 14:00,2025-11-20 17:00,2025-11-20 17:00,2025-12-05 17:00,2025-12-05 17:00,0,120,100
CN.AB1.5060,TAPE & FLOAT - BUNKER RM 7-11 - A4 - GL 12-9 - L1,Complete,Area A-3,East Support Building,A3 - Area 4 (Gridlines 12-9),L1 - Fndn Slab,BUNKER ROOM,CONSTRUCTION,CHERRY COATING,TBD Architectural Finishes,AMBER CARO,INTERIORS,2024-05-14 07:00,2024-05-28 17:00,2024-05-14 07:00,2024-05-24 17:00,2025-11-20 17:00,2025-11-20 17:00,2025-12-05 17:00,2025-12-05 17:00,0,80,100
CN.AB1.A1420,MEP EQUIPMENT LOADING BY SECAI- BUNKER RM 7-11 GL 12-9,Complete,Area A-3,,A3 - Area 4 (Gridlines 12-9),L1 - Fndn Slab,BUNKER ROOM,CONSTRUCTION,,DRYWALL,,,2023-11-20 07:00,2024-01-07 16:00,2023-11-13 07:00,2024-02-05 17:00,2025-11-20 17:00,2025-11-20 17:00,2025-12-05 17:00,2025-12-05 17:00,0,328,100
CN.AB1.A1410,METAL STUD FRAMING DRYWALL AND FINISHES - CLOSING THE OPENING- BUNKER RM 7-11 GL 12-9,Complete,Area A-3,,A3 - Area 4 (Gridlines 12-9),L1 - Fndn Slab,BUNKER ROOM,CONSTRUCTION,BERG,DRYWALL,,,2024-05-06 07:00,2024-05-13 17:00,2024-05-06 07:00,2024-05-09 17:00,2025-11-20 17:00,2025-11-20 17:00,2025-12-05 17:00,2025-12-05 17:00,0,50,100
CN.AB1.ST.1890,COLUMN WRAP FRAMING AND DRYWALL - G LINE - UPTO 8 FEET,Complete,Area A-3,,A3 - Area 4 (Gridlines 12-9),L3 / Waffle Slab Level,,CONSTRUCTION,,DRYWALL,,,2025-10-24 07:00,2025-10-27 17:00,2024-01-22 07:00,2025-03-07 17:00,2025-11-20 17:00,2025-11-20 17:00,2025-12-05 17:00,2025-12-05 17:00,0,40,100
CN.AB3.ST.1300,INSTALL ACCESS FLOORS AROUND COLUMNS (BY SECAI) - A4 - GL 12-9 - L3,Complete,Area A-3,,A3 - Area 4 (Gridlines 12-9),L3 / Waffle Slab Level,,CONSTRUCTION,SECAI,TBD Architectural Finishes,,,2024-05-20 07:00,2024-05-28 17:00,2024-05-20 07:00,2024-06-10 17:00,2025-11-20 17:00,2025-11-20 17:00,2025-11-17 07:00,2025-11-17 07:00,0,50,100
CN.AB3.ST.1310,COLUMN WRAP FRAMING AND DRYWALL - G LINE - ABOVE 8 FEET - A4 - GL 12-9 - L3,Complete,Area A-3,,A3 - Area 4 (Gridlines 12-9),L3 / Waffle Slab Level,,CONSTRUCTION,BERG,DRYWALL,,,2025-10-31 07:00,2025-11-06 17:00,2024-01-22 07:00,2025-03-07 17:00,2025-11-20 17:00,2025-11-20 17:00,2025-12-05 17:00,2025-12-05 17:00,0,50,100
CN.AB3.ST.2240,PH1-WAFFLE RAKER COATING (L2&3) - A3 GL 18-10 WEST (R3W),Complete,Area A-3,South Areas (Team A - Gridlines 3-17),A1 - Area 6 (Gridlines 18-15),L2 - SubFab Level,,CONSTRUCTION,CHERRY COATING,TBD Architectural Finishes,AMBER CARO,,2024-03-11 07:00,2024-03-25 16:00,2024-03-05 07:00,2024-05-14 17:00,2025-11-20 17:00,2025-11-20 17:00,2025-12-05 17:00,2025-12-05 17:00,0,69,100
CN.AB3.ST.2250,PH1-WAFFLE RAKER COATING (L2&3) - A3 GL 18-10 EAST (R3E),Complete,Area A-3,South Areas (Team A - Gridlines 3-17),A1 - Area 6 (Gridlines 18-15),L2 - SubFab Level,,CONSTRUCTION,,TBD Architectural Finishes,AMBER CARO,,2024-03-11 07:00,2024-03-29 17:00,2024-03-09 07:00,2024-04-11 17:00,2025-11-20 17:00,2025-11-20 17:00,2025-12-05 17:00,2025-12-05 17:00,0,110,100
CN.AB31.ST.1150,COLUMNS- GRINDING/SCRAPING - L2 - GL 12-9 - G-E - EAST,Complete,Area A-3,,A3 - Area 4 (Gridlines 12-9),L2 - SubFab Level,,CONSTRUCTION,,TBD Architectural Finishes,,,2024-03-28 07:00,2024-03-29 09:00,2024-03-21 07:00,2024-03-22 09:00,2025-11-20 17:00,2025-11-20 17:00,2025-12-05 17:00,2025-12-05 17:00,0,12,100
CN.AB31.ST.1160,"COLUMNS - PRIME, INTERMEDIATE COAT & TOP COAT - L2 - GL 12-9 - G-E - EAST[3]",Complete,Area A-3,,A3 - Area 4 (Gridlines 12-9),L2 - SubFab Level,FAB EAST 13 - 10,CONSTRUCTION,,TBD Architectural Finishes,,,2024-03-29 07:00,2024-04-11 17:00,2024-03-29 07:00,2024-04-12 17:00,2025-11-20 17:00,2025-11-20 17:00,2025-12-05 17:00,2025-12-05 17:00,0,80,100
CN.AB31.ST.1170,COLUMNS- GRINDING/SCRAPING - L2 - GL 12-9 - G-J- WEST,Complete,Area A-3,,A3 - Area 4 (Gridlines 12-9),L2 - SubFab Level,,CONSTRUCTION,CHERRY COATING,TBD Architectural Finishes,,,2024-04-24 07:00,2024-04-26 17:00,2024-04-24 07:00,2024-04-25 17:00,2025-11-20 17:00,2025-11-20 17:00,2025-12-05 17:00,2025-12-05 17:00,0,30,100
CN.AB31.ST.1190,IMPACT 2ND FLOOR MEP MATERIAL CONSTRAINT - L2 - GL 12-9 - G-J,Complete,Area A-3,,A3 - Area 4 (Gridlines 12-9),L2 - SubFab Level,,CONSTRUCTION,,TBD Architectural Finishes,,,2024-03-01 08:00,2024-03-03 12:00,2024-03-01 08:00,2024-03-20 16:00,2025-11-20 17:00,2025-11-20 17:00,2025-12-05 17:00,2025-12-05 17:00,0,24,100
CN.A4.ST.1090,STEEL PRE-ASSEMBLE TRUSSES - A4 - 8,Complete,Area A-4,South Areas (Team A - Gridlines 3-17),A4 - Area 3 (Gridlines 9-6),L4 - SUP Roof - FAB Roof,,CONSTRUCTION,,Pre-Assemble Trusses,SEAN MONK,,2023-02-20 07:00,2023-02-27 11:00,2023-02-06 07:00,2023-02-13 13:00,2025-11-20 17:00,2025-11-20 17:00,2025-11-03 07:00,2025-11-03 07:00,0,64,100
CN.AB4.ST.1000,PH1-ERECT STEEL TRUSSES & INFILL - A4 - 8,Complete,Area A-4,South Areas (Team A - Gridlines 3-17),A4 - Area 3 (Gridlines 9-6),L4 - SUP Roof - FAB Roof,,CONSTRUCTION,,"Truss Erect, Infill & Decking",SEAN MONK,,2023-03-14 13:00,2023-03-19 11:00,2023-03-14 13:00,2023-03-20 13:00,2025-11-20 17:00,2025-11-20 17:00,2025-11-03 07:00,2025-11-03 07:00,0,38,100
CN.AB4.ST.1010,PH1-ERECT ROOF DECKING GL 9 - 8 - A4,Complete,Area A-4,South Areas (Team A - Gridlines 3-17),A4 - Area 3 (Gridlines 9-6),L4 - SUP Roof - FAB Roof,,CONSTRUCTION,,Decking & Detail,SEAN MONK,SOMD / Roofing / Waterproofing,2023-04-24 07:00,2023-04-28 17:00,2023-04-28 07:00,2023-05-04 17:00,2025-11-20 17:00,2025-11-20 17:00,2025-11-10 07:00,2025-11-10 07:00,0,40,100
CN.AB4.ST.1020,PH1-ERECT ROOFING - A4 GL 9-6,Complete,Area A-4,South Areas (Team A - Gridlines 3-17),A4 - Area 3 (Gridlines 9-6),L4 - SUP Roof - FAB Roof,,CONSTRUCTION,,Roofing,JAMES LIVELY,SOMD / Roofing / Waterproofing,2023-08-04 13:00,2023-08-13 13:00,2023-07-27 13:00,2023-08-31 11:00,2025-11-20 17:00,2025-11-20 17:00,2025-11-10 07:00,2025-11-10 07:00,0,80,100
CN.AB4.ST.1050,PH1-FRP SLAB ROOF - A4 GL 9 - 7,Complete,Area A-4,South Areas (Team A - Gridlines 3-17),A4 - Area 3 (Gridlines 9-6),L4 - SUP Roof - FAB Roof,,CONSTRUCTION,,SOMD,CONCRETE,SOMD / Roofing / Waterproofing,2023-05-23 07:00,2023-05-27 17:00,2023-05-23 07:00,2023-07-07 11:00,2025-11-20 17:00,2025-11-20 17:00,2025-11-10 07:00,2025-11-10 07:00,0,40,100
CN.A1.CF.1050,"FRP- SLAB A4 Gridline 6-9 Complete (SLABS B3, C3,D3, E3)",Complete,Area A-4,South Areas (Team A - Gridlines 3-17),A4 - Area 3 (Gridlines 9-6),L1 - Fndn Slab,,CONSTRUCTION,,Pour Concrete,ANDREA SOLIS,,2022-11-08 07:00,2022-12-06 09:00,2022-11-08 07:00,2022-12-22 17:00,2025-11-20 17:00,2025-11-20 17:00,2025-06-13 08:00,2025-06-13 08:00,0,232,100
CN.A1.CF.1060,"PH1- CURE SLABS A4 Gridline 6-9 Complete (SLABS B3, C3, D3, E3)",Complete,Area A-4,South Areas (Team A - Gridlines 3-17),A4 - Area 3 (Gridlines 9-6),L1 - Fndn Slab,,CONSTRUCTION,,Concrete Cure,ANDREA SOLIS,,2022-12-27 07:00,2023-01-04 13:00,2022-12-16 16:00,2022-12-26 13:00,2025-11-20 17:00,2025-11-20 17:00,2025-06-13 08:00,2025-06-13 08:00,0,56,100
CN.A4.CF.1020,SEQ4-ERECT COLUMNS (36nos) & GIRDERS (16 nos) - (E-G-J) - A4 - GL9-6,Complete,Area A-4,South Areas (Team A - Gridlines 3-17),A4 - Area 3 (Gridlines 9-6),L4 - SUP Roof - FAB Roof,,CONSTRUCTION,,"Main Columns C,E,G,J,L & Intermediate H,F",SEAN MONK,,2023-02-20 07:00,2023-02-26 13:00,2023-02-10 07:00,2023-02-27 15:00,2025-11-20 17:00,2025-11-20 17:00,2025-06-13 08:00,2025-06-13 08:00,0,56,100
CN.AB4.ST.1030,PH1-ERECT PRECAST WAFFLES GL 9 - 8 (L3) - A4,Complete,Area A-4,South Areas (Team A - Gridlines 3-17),A4 - Area 3 (Gridlines 9-6),L3 / Waffle Slab Level,,CONSTRUCTION,,FAB Waffle Slabs,SEAN MONK,,2023-04-24 08:00,2023-04-28 10:00,2023-04-24 08:00,2023-05-01 17:00,2025-11-20 17:00,2025-11-20 17:00,2025-06-13 08:00,2025-06-13 08:00,0,32,100
CN.AB4.ST.1040,PH1-ERECT PRECAST SUBFAB GL 9 - 8 (L2) - A4,Complete,Area A-4,South Areas (Team A - Gridlines 3-17),A4 - Area 3 (Gridlines 9-6),L2 - SubFab Level,,CONSTRUCTION,,FAB Subfab and Parapets,SEAN MONK,,2023-04-28 10:00,2023-04-30 14:00,2023-04-28 10:00,2023-05-01 16:00,2025-11-20 17:00,2025-11-20 17:00,2025-06-13 08:00,2025-06-13 08:00,0,24,100
CN.A4.CF.1030,PH1- ERECT INTERMEDIATE COLUMNS/GIRDERS (H&F) - A4 - GL9-6,Complete,Area A-4,South Areas (Team A - Gridlines 3-17),A4 - Area 3 (Gridlines 9-6),L4 - SUP Roof - FAB Roof,,CONSTRUCTION,,"Main Columns C,E,G,J,L & Intermediate H,F",SEAN MONK,,2023-02-27 15:00,2023-03-07 09:00,2023-02-27 15:00,2023-03-08 11:00,2025-11-20 17:00,2025-11-20 17:00,2025-06-13 08:00,2025-06-13 08:00,0,64,100
CN.AB41.ST.1070,PH1- WATERPROOFING - SUBFAB (L2) - A4,Complete,Area A-4,South Areas (Team A - Gridlines 3-17),A4 - Area 3 (Gridlines 9-6),L2 - SubFab Level,,CONSTRUCTION,,Pour Concrete,JAMES LIVELY,,2023-06-12 07:00,2023-06-16 09:00,2023-06-05 08:00,2023-06-06 17:00,2025-11-20 17:00,2025-11-20 17:00,2025-11-13 17:00,2025-11-13 17:00,0,32,100
CN.AB41.ST.1120,PH1- CURBS & MEP SLABS - SUBFAB (L2) - A4,Complete,Area A-4,South Areas (Team A - Gridlines 3-17),A4 - Area 3 (Gridlines 9-6),L2 - SubFab Level,,CONSTRUCTION,,Pour Concrete,JAMES LEE,,2023-05-23 15:00,2023-05-26 11:00,2023-05-23 15:00,2023-05-26 11:00,2025-11-20 17:00,2025-11-20 17:00,2025-11-13 17:00,2025-11-13 17:00,0,16,100
CN.AB41.ST.1130,PH1- WATERPROOFING- SOG (L1) - A4,Complete,Area A-4,South Areas (Team A - Gridlines 3-17),A4 - Area 3 (Gridlines 9-6),L1 - Fndn Slab,,CONSTRUCTION,,Pour Concrete,JAMES LIVELY,,2023-06-20 13:00,2023-06-24 15:00,2023-06-20 13:00,2023-06-24 16:00,2025-11-20 17:00,2025-11-20 17:00,2025-11-13 17:00,2025-11-13 17:00,0,32,100
CN.AB4.ST.1240,PH1- CURBS & MEP SLABS - SOG (L1) -  A4,Complete,Area A-4,South Areas (Team A - Gridlines 3-17),A4 - Area 3 (Gridlines 9-6),L1 - Fndn Slab,,CONSTRUCTION,,Pour Concrete,JAMES LEE,,2023-06-19 07:00,2023-06-20 13:00,2023-06-19 07:00,2023-06-20 13:00,2025-11-20 17:00,2025-11-20 17:00,2025-11-13 17:00,2025-11-13 17:00,0,16,100
CN.AB4.ST.1160,PH1- CURBS & MEP SLABS - ROOF (L4) -  A4,Complete,Area A-4,South Areas (Team A - Gridlines 3-17),A4 - Area 3 (Gridlines 9-6),L4 - SUP Roof - FAB Roof,,CONSTRUCTION,,Pour Concrete,JAMES LEE,SOMD / Roofing / Waterproofing,2023-07-12 13:00,2023-07-13 11:00,2023-07-12 13:00,2023-07-13 11:00,2025-11-20 17:00,2025-11-20 17:00,2025-11-10 07:00,2025-11-10 07:00,0,8,100
CN.A4.ST.1100,STEEL PRE-ASSEMBLE TRUSSES - A4 - 7,Complete,Area A-4,South Areas (Team A - Gridlines 3-17),A4 - Area 3 (Gridlines 9-6),L4 - SUP Roof - FAB Roof,,CONSTRUCTION,,Pre-Assemble Trusses,SEAN MONK,,2023-02-20 07:00,2023-02-27 11:00,2023-02-20 07:00,2023-02-28 13:00,2025-11-20 17:00,2025-11-20 17:00,2025-11-03 07:00,2025-11-03 07:00,0,64,100
CN.AB4.ST.1270,PH1-ERECT STEEL TRUSSES & INFILL - A4 - 7,Complete,Area A-4,South Areas (Team A - Gridlines 3-17),A4 - Area 3 (Gridlines 9-6),L4 - SUP Roof - FAB Roof,,CONSTRUCTION,,"Truss Erect, Infill & Decking",SEAN MONK,,2023-03-14 13:00,2023-03-19 11:00,2023-03-14 13:00,2023-03-20 13:00,2025-11-20 17:00,2025-11-20 17:00,2025-11-03 07:00,2025-11-03 07:00,0,38,100
CN.A4.ST.1110,STEEL PRE-ASSEMBLE TRUSSES - A4 - 6,Complete,Area A-4,South Areas (Team A - Gridlines 3-17),A4 - Area 3 (Gridlines 9-6),L4 - SUP Roof - FAB Roof,,CONSTRUCTION,,Pre-Assemble Trusses,SEAN MONK,,2023-02-27 16:00,2023-03-07 10:00,2023-02-27 16:00,2023-03-08 12:00,2025-11-20 17:00,2025-11-20 17:00,2025-11-03 07:00,2025-11-03 07:00,0,64,100
CN.AB4.ST.1280,PH1-ERECT STEEL TRUSSES & INFILL - A4 - 6,Complete,Area A-4,South Areas (Team A - Gridlines 3-17),A4 - Area 3 (Gridlines 9-6),L4 - SUP Roof - FAB Roof,,CONSTRUCTION,,"Truss Erect, Infill & Decking",SEAN MONK,,2023-03-20 13:00,2023-03-25 11:00,2023-03-20 13:00,2023-03-25 12:00,2025-11-20 17:00,2025-11-20 17:00,2025-11-03 07:00,2025-11-03 07:00,0,48,100
CN.A4.ST.1120,PH1-WAFFLE EPOXY COATING (1st Coat in Yard) (L3) - A4,Complete,Area A-4,South Areas (Team A - Gridlines 3-17),A4 - Area 3 (Gridlines 9-6),L3 / Waffle Slab Level,,CONSTRUCTION,,TBD Architectural Finishes,AMBER CARO,,2023-02-27 07:00,2023-03-07 17:00,2023-02-27 07:00,2023-03-09 09:00,2025-11-20 17:00,2025-11-20 17:00,2025-06-13 08:00,2025-06-13 08:00,0,80,100
CN.AB41.ST.1080,PH1- TOPPING SLAB - SUBFAB (L2) - A4,Complete,Area A-4,South Areas (Team A - Gridlines 3-17),A4 - Area 3 (Gridlines 9-6),L2 - SubFab Level,,CONSTRUCTION,,TOPPING,CONCRETE,,2023-06-19 07:00,2023-06-23 09:00,2023-06-19 07:00,2023-06-23 09:00,2025-11-20 17:00,2025-11-20 17:00,2025-12-05 17:00,2025-12-05 17:00,0,32,100
CN.AB41.ST.1140,PH1- TOPPING SLAB - SOG (L1) - A4,Complete,Area A-4,South Areas (Team A - Gridlines 3-17),A4 - Area 3 (Gridlines 9-6),L1 - Fndn Slab,,CONSTRUCTION,,TOPPING,CONCRETE,,2023-07-03 07:00,2023-07-08 09:00,2023-07-03 07:00,2023-07-08 10:00,2025-11-20 17:00,2025-11-20 17:00,2025-11-13 17:00,2025-11-13 17:00,0,32,100
CN.AB41.ST.1150,MOCKUP - CRC (SECAI) & SEALER - SOG (L1) - A4,Complete,Area A-4,South Areas (Team A - Gridlines 3-17),A4 - Area 3 (Gridlines 9-6),L1 - Fndn Slab,,CONSTRUCTION,,Pour Concrete,AMBER CARO,,2023-07-31 07:00,2023-08-03 09:00,2023-07-31 07:00,2023-08-03 09:00,2025-11-20 17:00,2025-11-20 17:00,2025-11-13 17:00,2025-11-13 17:00,0,32,100
CN.AB4.ST.1290,PH1-FRP SLAB ROOF - A4 GL 7 - 5,Complete,Area A-4,South Areas (Team A - Gridlines 3-17),A4 - Area 3 (Gridlines 9-6),L4 - SUP Roof - FAB Roof,,CONSTRUCTION,,SOMD,CONCRETE,SOMD / Roofing / Waterproofing,2023-07-07 11:00,2023-07-11 11:00,2023-07-07 11:00,2023-07-12 13:00,2025-11-20 17:00,2025-11-20 17:00,2025-11-10 07:00,2025-11-10 07:00,0,40,100
CN.AB4.ST.1300,PH1-ERECT PRECAST SUBFAB GL 8 - 7 (L2) - A4,Complete,Area A-4,South Areas (Team A - Gridlines 3-17),A4 - Area 3 (Gridlines 9-6),L2 - SubFab Level,,CONSTRUCTION,,FAB Subfab and Parapets,SEAN MONK,,2023-05-13 08:00,2023-05-15 12:00,2023-05-08 07:00,2023-05-12 08:00,2025-11-20 17:00,2025-11-20 17:00,2025-06-13 08:00,2025-06-13 08:00,0,24,100
CN.AB4.ST.1310,PH1-ERECT PRECAST SUBFAB GL 7 - 6 (L2) - A4,Complete,Area A-4,South Areas (Team A - Gridlines 3-17),A4 - Area 3 (Gridlines 9-6),L2 - SubFab Level,,CONSTRUCTION,,FAB Subfab and Parapets,SEAN MONK,,2023-05-23 07:00,2023-05-25 13:00,2023-05-19 07:00,2023-05-23 15:00,2025-11-20 17:00,2025-11-20 17:00,2025-06-13 08:00,2025-06-13 08:00,0,16,100
CN.AB4.ST.1320,PH1-ERECT PRECAST WAFFLES GL 8 - 7 (L3) - A4,Complete,Area A-4,South Areas (Team A - Gridlines 3-17),A4 - Area 3 (Gridlines 9-6),L3 / Waffle Slab Level,,CONSTRUCTION,,FAB Waffle Slabs,SEAN MONK,,2023-04-28 10:00,2023-04-30 14:00,2023-04-28 10:00,2023-05-08 16:00,2025-11-20 17:00,2025-11-20 17:00,2025-06-13 08:00,2025-06-13 08:00,0,24,100
CN.AB4.ST.1330,PH1-ERECT PRECAST WAFFLES GL 7 - 6 (L3) - A4,Complete,Area A-4,South Areas (Team A - Gridlines 3-17),A4 - Area 3 (Gridlines 9-6),L3 / Waffle Slab Level,,CONSTRUCTION,,FAB Waffle Slabs,SEAN MONK,,2023-06-12 07:00,2023-06-13 13:00,2023-05-24 07:00,2023-05-25 13:00,2025-11-20 17:00,2025-11-20 17:00,2025-06-13 08:00,2025-06-13 08:00,0,16,100
CN.AB4.ST.1340,PH1-ERECT ROOF DECKING GL 8 - 7 - A4,Complete,Area A-4,South Areas (Team A - Gridlines 3-17),A4 - Area 3 (Gridlines 9-6),L4 - SUP Roof - FAB Roof,,CONSTRUCTION,,Decking & Detail,SEAN MONK,SOMD / Roofing / Waterproofing,2023-05-23 07:00,2023-05-27 17:00,2023-05-10 07:00,2023-05-16 17:00,2025-11-20 17:00,2025-11-20 17:00,2025-11-10 07:00,2025-11-10 07:00,0,40,100
CN.AB4.ST.1350,PH1-ERECT ROOF DECKING GL 7 - 6 - A4,Complete,Area A-4,South Areas (Team A - Gridlines 3-17),A4 - Area 3 (Gridlines 9-6),L4 - SUP Roof - FAB Roof,,CONSTRUCTION,,Decking & Detail,SEAN MONK,SOMD / Roofing / Waterproofing,2023-05-05 09:00,2023-05-09 09:00,2023-05-05 09:00,2023-05-09 17:00,2025-11-20 17:00,2025-11-20 17:00,2025-11-10 07:00,2025-11-10 07:00,0,40,100
CN.AB1.ST.1400,PH1- FIRE PROOFING - INTUMSCENT PAINT / EPOXY / PRIMER BOTTOM CORD (L3) - A4,Complete,Area A-4,South Areas (Team A - Gridlines 3-17),A4 - Area 3 (Gridlines 9-6),L3 / Waffle Slab Level,,CONSTRUCTION,,FAB Waffle Slabs,AMBER CARO,,2023-06-19 07:00,2023-06-25 11:00,2023-06-28 07:00,2023-07-02 13:00,2025-11-20 17:00,2025-11-20 17:00,2025-11-17 07:00,2025-11-17 07:00,0,54,100
CN.AB1.ST.1790,SECAI - INSTALL UPPER CEILING - TRUSS (L4) - A4 GL 9-6,Complete,Area A-4,South Areas (Team A - Gridlines 3-17),A4 - Area 3 (Gridlines 9-6),L3 / Waffle Slab Level,,CONSTRUCTION,,Pour Concrete,JAMES LEE,,2023-08-28 07:00,2023-09-01 17:00,2023-08-28 07:00,2023-09-01 17:00,2025-11-20 17:00,2025-11-20 17:00,2025-12-05 17:00,2025-12-05 17:00,0,40,100
CN.AB4.ST.1820,FRP - RAKER TOPPING SLAB - WAFFLE (L3) - A4,Complete,Area A-4,South Areas (Team A - Gridlines 3-17),A4 - Area 3 (Gridlines 9-6),L3 / Waffle Slab Level,,CONSTRUCTION,,TOPPING,CONCRETE,,2023-07-31 07:00,2023-08-06 11:00,2023-07-31 07:00,2023-08-07 13:00,2025-11-20 17:00,2025-11-20 17:00,2025-11-24 07:00,2025-11-24 07:00,0,64,100
CN.AB1.5080,METAL STUD FRAMING DRYWALL (2hr) - IO RM 1 GL 9-6,Complete,Area A-4,East Support Building,A4 - Area 3 (Gridlines 9-6),L1 - Fndn Slab,BUNKER ROOM,CONSTRUCTION,BERG,DRYWALL,AMBER CARO,INTERIORS,2023-08-03 09:00,2023-08-07 17:00,2023-08-03 09:00,2023-08-26 16:00,2025-11-20 17:00,2025-11-20 17:00,2025-11-13 17:00,2025-11-13 17:00,0,48,100
CN.AB1.5090,TAPE & FLOAT - IO RM 1 GL 9-6,Complete,Area A-4,East Support Building,A4 - Area 3 (Gridlines 9-6),L1 - Fndn Slab,BUNKER ROOM,CONSTRUCTION,,TBD Architectural Finishes,AMBER CARO,INTERIORS,2023-09-02 08:00,2023-09-06 10:00,2023-08-26 12:30,2023-08-31 11:00,2025-11-20 17:00,2025-11-20 17:00,2025-11-13 17:00,2025-11-13 17:00,0,32,100
A1440,MEP EQUIPMENT LOADING BY SECAI,Complete,Area A-4,,A4 - Area 3 (Gridlines 9-6),L1 - Fndn Slab,BUNKER ROOM,CONSTRUCTION,SECAI,TBD Architectural Finishes,,,2023-11-20 07:00,2024-02-14 15:00,2023-11-13 07:00,2024-05-03 17:00,2025-11-20 17:00,2025-11-20 17:00,2025-11-13 17:00,2025-11-13 17:00,0,528,100
A1430,METAL STUD FRAMING DRYWALL AND FINISHES - CLOSING THE OPENING,Complete,Area A-4,,A4 - Area 3 (Gridlines 9-6),L1 - Fndn Slab,BUNKER ROOM,CONSTRUCTION,BERG,DRYWALL,,,2024-05-06 07:00,2024-05-13 17:00,2024-05-06 07:00,2024-05-10 17:00,2025-11-20 17:00,2025-11-20 17:00,2025-11-13 17:00,2025-11-13 17:00,0,50,100
CN.AB1.ST.1900,COLUMN WRAP FRAMING AND DRYWALL - G LINE- UPTO 8 FEET - A4 - GL 9-6 - L3,Complete,Area A-4,,A4 - Area 3 (Gridlines 9-6),L3 / Waffle Slab Level,,CONSTRUCTION,BERG,DRYWALL,,,2025-10-24 07:00,2025-10-30 17:00,2024-01-22 07:00,2025-03-07 17:00,2025-11-20 17:00,2025-11-20 17:00,2025-12-05 17:00,2025-12-05 17:00,0,50,100
CN.AB3.ST.1850,IMPACT - INSTALL ACCESS FLOORS (BY SECAI) - A4 - GL 9-6 - L3,Complete,Area A-4,,A4 - Area 3 (Gridlines 9-6),L3 / Waffle Slab Level,,CONSTRUCTION,SECAI,DRYWALL,,,2024-05-20 07:00,2024-05-28 17:00,2024-05-20 07:00,2024-05-31 17:00,2025-11-20 17:00,2025-11-20 17:00,2025-11-17 07:00,2025-11-17 07:00,0,50,100
CN.AB3.ST.1860,COLUMN WRAP FRAMING AND DRYWALL - G LINE - ABOVE 8 FEET - A4 - GL 9-6 - L3,Complete,Area A-4,,A4 - Area 3 (Gridlines 9-6),L3 / Waffle Slab Level,,CONSTRUCTION,BERG,DRYWALL,,,2025-10-24 07:00,2025-10-30 17:00,2024-01-22 07:00,2025-03-07 17:00,2025-11-20 17:00,2025-11-20 17:00,2025-12-05 17:00,2025-12-05 17:00,0,50,100
CN.AB41.ST.1170,MOCKUP - CRC (SECAI) & SEALER - SOG (L1) - A4- REMAINING PORTION,Complete,Area A-4,South Areas (Team A - Gridlines 3-17),A4 - Area 3 (Gridlines 9-6),L1 - Fndn Slab,,CONSTRUCTION,,Pour Concrete,AMBER CARO,,2023-10-09 07:00,2023-10-12 09:00,2023-10-09 07:00,2023-10-13 09:00,2025-11-20 17:00,2025-11-20 17:00,2025-11-13 17:00,2025-11-13 17:00,0,32,100
CN.AB41.ST.1180,COLUMNS- GRINDING/SCRAPING - L2 - GL 9-6 - G-E - EAST,Complete,Area A-4,South Areas (Team A - Gridlines 3-17),A4 - Area 3 (Gridlines 9-6),L2 - SubFab Level,,CONSTRUCTION,,TBD Architectural Finishes,AMBER CARO,,2024-04-01 07:00,2024-04-03 11:00,2024-03-30 13:00,2024-04-04 17:00,2025-11-20 17:00,2025-11-20 17:00,2025-12-05 17:00,2025-12-05 17:00,0,24,100
CN.AB41.ST.1190,COLUMNS- GRINDING/SCRAPING - L2 - GL 9-6 - G-J- WEST,Complete,Area A-4,South Areas (Team A - Gridlines 3-17),A4 - Area 3 (Gridlines 9-6),L2 - SubFab Level,,CONSTRUCTION,CHERRY COATING,TBD Architectural Finishes,AMBER CARO,,2024-04-26 07:00,2024-04-30 17:00,2024-04-22 07:00,2024-04-25 17:00,2025-11-20 17:00,2025-11-20 17:00,2025-12-05 17:00,2025-12-05 17:00,0,30,100
CN.AB41.ST.1200,"COLUMNS - PRIME, INTERMEDIATE COAT & TOP COAT - L2 - GL 10-7 - G-E - EAST [4]",Complete,Area A-4,South Areas (Team A - Gridlines 3-17),A4 - Area 3 (Gridlines 9-6),L2 - SubFab Level,FAB EAST 10 - 7[4],CONSTRUCTION,CHERRY COATING,TBD Architectural Finishes,AMBER CARO,,2024-04-05 07:00,2024-04-18 17:00,2024-04-05 07:00,2024-05-01 13:00,2025-11-20 17:00,2025-11-20 17:00,2025-12-05 17:00,2025-12-05 17:00,0,80,100
CN.AB41.ST.1210,"COLUMNS - PRIME, INTERMEDIATE COAT & TOP COAT - L2 - GL 8-15 - G-J- WEST [C2]",Complete,Area A-4,South Areas (Team A - Gridlines 3-17),A3 - Area 4 (Gridlines 12-9),L2 - SubFab Level,FAB WEST 10 - 8[13],CONSTRUCTION,CHERRY COATING,TBD Architectural Finishes,AMBER CARO,,2024-05-13 07:00,2024-05-23 17:00,2024-05-11 07:00,2024-05-21 17:00,2025-11-20 17:00,2025-11-20 17:00,2025-12-05 17:00,2025-12-05 17:00,0,70,100
CN.AB41.ST.1220,IMPACT 2ND FLOOR MEP MATERIAL CONSTRAINT - L2 - GL 9-6 - G,Complete,Area A-4,South Areas (Team A - Gridlines 3-17),A4 - Area 3 (Gridlines 9-6),L2 - SubFab Level,,CONSTRUCTION,,TBD Architectural Finishes,AMBER CARO,,2024-03-01 07:00,2024-03-12 17:00,2024-03-01 07:00,2024-04-04 17:00,2025-11-20 17:00,2025-11-20 17:00,2025-12-05 17:00,2025-12-05 17:00,0,80,100
CN.A5.ST.1120,STEEL PRE-ASSEMBLE TRUSSES - A5 - 5,Complete,Area A-5,South Areas (Team A - Gridlines 3-17),A5 - Area 2 (Gridlines 6-3),L4 - SUP Roof - FAB Roof,,CONSTRUCTION,,Pre-Assemble Trusses,SEAN MONK,,2023-03-03 16:00,2023-03-10 10:00,2023-03-03 16:00,2023-03-11 13:00,2025-11-20 17:00,2025-11-20 17:00,2025-11-03 07:00,2025-11-03 07:00,0,64,100
CN.AB5.ST.1000,PH1-ERECT STEEL TRUSSES & INFILL - A5 - 5,Complete,Area A-5,South Areas (Team A - Gridlines 3-17),A5 - Area 2 (Gridlines 6-3),L4 - SUP Roof - FAB Roof,,CONSTRUCTION,,"Truss Erect, Infill & Decking",SEAN MONK,,2023-03-27 07:00,2023-04-01 15:00,2023-03-27 07:00,2023-04-01 16:00,2025-11-20 17:00,2025-11-20 17:00,2025-11-03 07:00,2025-11-03 07:00,0,48,100
CN.AB5.ST.1010,PH1-ERECT ROOF DECKING GL 6 - 5 - A5,Complete,Area A-5,South Areas (Team A - Gridlines 3-17),A5 - Area 2 (Gridlines 6-3),L4 - SUP Roof - FAB Roof,,CONSTRUCTION,,Decking & Detail,SEAN MONK,SOMD / Roofing / Waterproofing,2023-06-06 11:00,2023-06-11 11:00,2023-05-10 11:00,2023-05-13 16:00,2025-11-20 17:00,2025-11-20 17:00,2025-11-10 07:00,2025-11-10 07:00,0,40,100
CN.AB5.ST.1020,PH1-ERECT ROOFING - A5 GL 6-3,Complete,Area A-5,South Areas (Team A - Gridlines 3-17),A5 - Area 2 (Gridlines 6-3),L4 - SUP Roof - FAB Roof,,CONSTRUCTION,,Roofing,JAMES LIVELY,SOMD / Roofing / Waterproofing,2023-11-20 07:00,2023-11-28 15:00,2023-09-18 07:00,2023-10-11 07:00,2025-11-20 17:00,2025-11-20 17:00,2025-11-10 07:00,2025-11-10 07:00,0,48,100
CN.AB5.ST.1050,PH1- FRP SLAB ROOF - A5 GL 5 - 3,Complete,Area A-5,South Areas (Team A - Gridlines 3-17),A5 - Area 2 (Gridlines 6-3),L4 - SUP Roof - FAB Roof,,CONSTRUCTION,,SOMD,CONCRETE,SOMD / Roofing / Waterproofing,2023-06-22 11:00,2023-06-27 09:00,2023-06-22 11:00,2023-06-29 11:00,2025-11-20 17:00,2025-11-20 17:00,2025-11-10 07:00,2025-11-10 07:00,0,48,100
CN.A1.CF.1090,"PH1- SLAB A5 Gridline 3-5 Complete (SLABS A2, B2, C2, D2. E2) - (Delayed C2 void form failure - 11/11-11/15)",Complete,Area A-5,South Areas (Team A - Gridlines 3-17),A5 - Area 2 (Gridlines 6-3),L1 - Fndn Slab,,CONSTRUCTION,,Pour Concrete,JAMES LEE,,2023-01-05 07:00,2023-01-13 17:00,2023-01-07 07:00,2023-02-20 07:00,2025-11-20 17:00,2025-11-20 17:00,2025-06-13 08:00,2025-06-13 08:00,0,80,100
CN.A1.CF.1100,PH1- CURE SLAB A5 (Gridline 3-5 Complete),Complete,Area A-5,South Areas (Team A - Gridlines 3-17),A5 - Area 2 (Gridlines 6-3),L1 - Fndn Slab,,CONSTRUCTION,,Concrete Cure,JAMES LEE,,2023-02-20 07:00,2023-02-26 13:00,2023-02-20 07:00,2023-02-25 13:00,2025-11-20 17:00,2025-11-20 17:00,2025-06-13 08:00,2025-06-13 08:00,0,56,100
CN.A5.CF.1020,SEQ5-ERECT COLUMNS (27nos) & GIRDERS (12 nos) - (E-G-J) - A5 - GL6-4,Complete,Area A-5,South Areas (Team A - Gridlines 3-17),A5 - Area 2 (Gridlines 6-3),L4 - SUP Roof - FAB Roof,,CONSTRUCTION,,"Main Columns C,E,G,J,L & Intermediate H,F",SEAN MONK,,2023-03-08 11:00,2023-03-13 17:00,2023-03-08 11:00,2023-03-24 09:00,2025-11-20 17:00,2025-11-20 17:00,2025-06-13 08:00,2025-06-13 08:00,0,56,100
CN.AB5.ST.1030,PH1-ERECT PRECAST WAFFLES GL 6 - 5 (L3) - A5,Complete,Area A-5,South Areas (Team A - Gridlines 3-17),A5 - Area 2 (Gridlines 6-3),L3 / Waffle Slab Level,,CONSTRUCTION,,FAB Waffle Slabs,SEAN MONK,,2023-06-13 13:00,2023-06-16 09:00,2023-06-05 13:00,2023-06-07 13:00,2025-11-20 17:00,2025-11-20 17:00,2025-06-13 08:00,2025-06-13 08:00,0,16,100
CN.AB5.ST.1040,PH1-ERECT PRECAST SUBFAB GL 6 - 5 (L2) - A5,Complete,Area A-5,South Areas (Team A - Gridlines 3-17),A5 - Area 2 (Gridlines 6-3),L2 - SubFab Level,,CONSTRUCTION,,FAB Subfab and Parapets,SEAN MONK,,2023-05-26 11:00,2023-05-28 15:00,2023-05-26 11:00,2023-05-30 17:00,2025-11-20 17:00,2025-11-20 17:00,2025-06-13 08:00,2025-06-13 08:00,0,24,100
CN.A5.CF.1030,PH1- ERECT INTERMEDIATE COLUMNS/GIRDERS (H&F) -  A5 - GL6-4 - FAB SOUTH,Complete,Area A-5,South Areas (Team A - Gridlines 3-17),A5 - Area 2 (Gridlines 6-3),L4 - SUP Roof - FAB Roof,,CONSTRUCTION,,"Main Columns C,E,G,J,L & Intermediate H,F",SEAN MONK,,2023-03-27 07:00,2023-04-03 11:00,2023-03-27 07:00,2023-04-04 13:00,2025-11-20 17:00,2025-11-20 17:00,2025-06-13 08:00,2025-06-13 08:00,0,64,100
CN.AB51.ST.1070,PH1- WATERPROOFING - SUBFAB (L2) - A5,Complete,Area A-5,South Areas (Team A - Gridlines 3-17),A5 - Area 2 (Gridlines 6-3),L2 - SubFab Level,,CONSTRUCTION,,Pour Concrete,JAMES LIVELY,,2023-06-13 13:00,2023-06-17 15:00,2023-06-08 13:00,2023-06-08 16:00,2025-11-20 17:00,2025-11-20 17:00,2025-12-05 17:00,2025-12-05 17:00,0,32,100
CN.AB51.ST.1120,PH1- CURBS & MEP SLABS - SUBFAB (L2) - A5,Complete,Area A-5,South Areas (Team A - Gridlines 3-17),A5 - Area 2 (Gridlines 6-3),L2 - SubFab Level,,CONSTRUCTION,,Pour Concrete,JAMES LEE,,2023-06-12 07:00,2023-06-13 13:00,2023-06-07 12:00,2023-06-08 13:00,2025-11-20 17:00,2025-11-20 17:00,2025-12-05 17:00,2025-12-05 17:00,0,16,100
CN.AB51.ST.1130,PH1- WATERPROOFING - SOG (L1) - A5,Complete,Area A-5,South Areas (Team A - Gridlines 3-17),A5 - Area 2 (Gridlines 6-3),L1 - Fndn Slab,,CONSTRUCTION,,Pour Concrete,JAMES LIVELY,,2023-07-10 09:00,2023-07-13 11:00,2023-07-10 09:00,2023-07-13 11:00,2025-11-20 17:00,2025-11-20 17:00,2025-12-05 17:00,2025-12-05 17:00,0,32,100
CN.AB5.ST.1240,PH1- CURBS & MEP SLABS - SOG (L1) -  A5,Complete,Area A-5,South Areas (Team A - Gridlines 3-17),A5 - Area 2 (Gridlines 6-3),L1 - Fndn Slab,,CONSTRUCTION,,Pour Concrete,JAMES LEE,,2023-07-03 07:00,2023-07-06 13:00,2023-07-03 07:00,2023-07-06 13:00,2025-11-20 17:00,2025-11-20 17:00,2025-12-05 17:00,2025-12-05 17:00,0,16,100
CN.AB5.ST.1160,PH1- CURBS & MEP SLABS - ROOF (L4) -  A5,Complete,Area A-5,South Areas (Team A - Gridlines 3-17),A5 - Area 2 (Gridlines 6-3),L4 - SUP Roof - FAB Roof,,CONSTRUCTION,,Pour Concrete,JAMES LEE,SOMD / Roofing / Waterproofing,2023-06-29 11:00,2023-06-30 09:00,2023-06-29 11:00,2023-06-30 09:00,2025-11-20 17:00,2025-11-20 17:00,2025-11-10 07:00,2025-11-10 07:00,0,8,100
CN.AB5.ST.1250,PH1-WAFFLE COATING (Bottom and Top)(L3) - A5 GL 6-3,Complete,Area A-5,South Areas (Team A - Gridlines 3-17),A5 - Area 2 (Gridlines 6-3),L2 - SubFab Level,,CONSTRUCTION,CHERRY COATING,TBD Architectural Finishes,AMBER CARO,,2024-06-28 07:00,2024-06-28 17:00,2024-06-27 07:00,2024-06-27 17:00,2025-11-20 17:00,2025-11-20 17:00,2025-12-05 17:00,2025-12-05 17:00,0,10,100
CN.A5.ST.1130,STEEL PRE-ASSEMBLE TRUSSES - A5 - 4,Complete,Area A-5,South Areas (Team A - Gridlines 3-17),A5 - Area 2 (Gridlines 6-3),L4 - SUP Roof - FAB Roof,,CONSTRUCTION,,Pre-Assemble Trusses,SEAN MONK,,2023-03-13 07:00,2023-03-20 11:00,2023-03-13 07:00,2023-03-24 13:00,2025-11-20 17:00,2025-11-20 17:00,2025-11-03 07:00,2025-11-03 07:00,0,64,100
CN.AB5.ST.1270,PH1-ERECT STEEL TRUSSES & INFILL - A5 - 4,Complete,Area A-5,South Areas (Team A - Gridlines 3-17),A5 - Area 2 (Gridlines 6-3),L4 - SUP Roof - FAB Roof,,CONSTRUCTION,,"Truss Erect, Infill & Decking",SEAN MONK,,2023-04-17 13:00,2023-04-21 15:00,2023-04-17 13:00,2023-04-21 15:00,2025-11-20 17:00,2025-11-20 17:00,2025-11-03 07:00,2025-11-03 07:00,0,32,100
CN.AB5.ST.1280,PH1-WAFFLE EPOXY COATING (1st Coat in Yard) (L3) - A5,Complete,Area A-5,South Areas (Team A - Gridlines 3-17),A5 - Area 2 (Gridlines 6-3),L3 / Waffle Slab Level,,CONSTRUCTION,,TBD Architectural Finishes,AMBER CARO,,2023-03-06 15:00,2023-03-14 15:00,2023-03-06 15:00,2023-03-16 17:00,2025-11-20 17:00,2025-11-20 17:00,2025-06-13 08:00,2025-06-13 08:00,0,80,100
CN.AB51.ST.1080,PH1- TOPPING SLAB - SUBFAB (L2) - A5 GL 6-3,Complete,Area A-5,South Areas (Team A - Gridlines 3-17),A5 - Area 2 (Gridlines 6-3),L2 - SubFab Level,,CONSTRUCTION,,TOPPING,CONCRETE,,2023-07-03 07:00,2023-07-08 17:00,2023-07-03 07:00,2023-08-26 16:00,2025-11-20 17:00,2025-11-20 17:00,2025-12-05 17:00,2025-12-05 17:00,0,40,100
CN.AB51.ST.1140,PH1- TOPPING SLAB - SOG (L1) - A5,Complete,Area A-5,South Areas (Team A - Gridlines 3-17),A5 - Area 2 (Gridlines 6-3),L1 - Fndn Slab,,CONSTRUCTION,,TOPPING,CONCRETE,,2023-07-13 11:00,2023-07-15 15:00,2023-07-13 11:00,2023-07-15 16:00,2025-11-20 17:00,2025-11-20 17:00,2025-12-05 17:00,2025-12-05 17:00,0,24,100
CN.AB5.ST.1290,PH1-ERECT STEEL TRUSSES & INFILL - A5 - GL 3 - FIZ,Complete,Area A-5,South Areas (Team A - Gridlines 3-17),A5 - Area 2 (Gridlines 6-3),L4 - SUP Roof - FAB Roof,,CONSTRUCTION,,"Truss Erect, Infill & Decking",SEAN MONK,,2023-04-21 15:00,2023-04-24 09:00,2023-04-21 15:00,2023-04-27 11:00,2025-11-20 17:00,2025-11-20 17:00,2025-11-03 07:00,2025-11-03 07:00,0,24,100
CN.AB5.ST.1300,PH1-ERECT PRECAST SUBFAB GL 5 - 4 (L2) - A5,Complete,Area A-5,South Areas (Team A - Gridlines 3-17),A5 - Area 2 (Gridlines 6-3),L2 - SubFab Level,,CONSTRUCTION,,FAB Subfab and Parapets,SEAN MONK,,2023-06-13 13:00,2023-06-15 11:00,2023-06-08 13:00,2023-06-10 16:00,2025-11-20 17:00,2025-11-20 17:00,2025-06-13 08:00,2025-06-13 08:00,0,8,100
CN.AB5.ST.1310,PH1-ERECT PRECAST SUBFAB GL 4 - 3 (L2) - A5,Complete,Area A-5,South Areas (Team A - Gridlines 3-17),A5 - Area 2 (Gridlines 6-3),L2 - SubFab Level,,CONSTRUCTION,,FAB Subfab and Parapets,SEAN MONK,,2023-05-08 07:00,2023-05-11 11:00,2023-05-04 07:00,2023-05-06 17:00,2025-11-20 17:00,2025-11-20 17:00,2025-06-13 08:00,2025-06-13 08:00,0,24,100
CN.AB5.ST.1320,PH1-ERECT PRECAST WAFFLES GL 5 - 4 (L3) - A5,Complete,Area A-5,South Areas (Team A - Gridlines 3-17),A5 - Area 2 (Gridlines 6-3),L3 / Waffle Slab Level,,CONSTRUCTION,,FAB Waffle Slabs,SEAN MONK,,2023-06-12 07:00,2023-06-13 13:00,2023-06-12 07:00,2023-06-13 13:00,2025-11-20 17:00,2025-11-20 17:00,2025-06-13 08:00,2025-06-13 08:00,0,16,100
CN.AB5.ST.1330,PH1-ERECT PRECAST WAFFLES GL 4 - 3 (L3) - A5,Complete,Area A-5,South Areas (Team A - Gridlines 3-17),A5 - Area 2 (Gridlines 6-3),L3 / Waffle Slab Level,,CONSTRUCTION,,FAB Waffle Slabs,SEAN MONK,,2023-05-08 07:00,2023-05-12 09:00,2023-05-08 07:00,2023-05-09 13:00,2025-11-20 17:00,2025-11-20 17:00,2025-06-13 08:00,2025-06-13 08:00,0,32,100
CN.AB5.ST.1340,PH1-ERECT ROOF DECKING GL 5 - 4 - A5,Complete,Area A-5,South Areas (Team A - Gridlines 3-17),A5 - Area 2 (Gridlines 6-3),L4 - SUP Roof - FAB Roof,,CONSTRUCTION,,Decking & Detail,SEAN MONK,SOMD / Roofing / Waterproofing,2023-06-12 13:00,2023-06-17 13:00,2023-05-15 13:00,2023-05-17 13:00,2025-11-20 17:00,2025-11-20 17:00,2025-11-10 07:00,2025-11-10 07:00,0,40,100
CN.AB5.ST.1350,PH1-ERECT ROOF DECKING GL 4 - 3 - A5,Complete,Area A-5,South Areas (Team A - Gridlines 3-17),A5 - Area 2 (Gridlines 6-3),L4 - SUP Roof - FAB Roof,,CONSTRUCTION,,Decking & Detail,SEAN MONK,SOMD / Roofing / Waterproofing,2023-05-23 07:00,2023-05-27 17:00,2023-05-23 07:00,2023-05-30 09:00,2025-11-20 17:00,2025-11-20 17:00,2025-11-10 07:00,2025-11-10 07:00,0,40,100
CN.AB1.ST.1420,PH1- FIRE PROOFING - INTUMSCENT PAINT / EPOXY / PRIMER BOTTOM CORD (L3) - A5,Complete,Area A-5,South Areas (Team A - Gridlines 3-17),A5 - Area 2 (Gridlines 6-3),L3 / Waffle Slab Level,,CONSTRUCTION,,FAB Waffle Slabs,AMBER CARO,,2023-07-24 07:00,2023-07-29 13:00,2023-07-24 07:00,2023-07-27 14:00,2025-11-20 17:00,2025-11-20 17:00,2025-11-17 07:00,2025-11-17 07:00,0,56,100
CN.A5.FIZ.1000,PRECAST COLUMN ERECTION - GL 3,Complete,Area A-5,,A5 - Area 2 (Gridlines 6-3),L4 - SUP Roof - FAB Roof,,CONSTRUCTION,,Precast,,,2023-04-10 07:00,2023-04-12 11:00,2023-04-10 00:00,2023-04-14 11:00,2025-11-20 17:00,2025-11-20 17:00,2025-11-03 07:00,2025-11-03 07:00,0,24,100
CN.AB1.ST.1800,SECAI - INSTALL UPPER CEILING - TRUSS - A5 - GL 6-3 - L3,Complete,Area A-5,South Areas (Team A - Gridlines 3-17),A5 - Area 2 (Gridlines 6-3),L3 / Waffle Slab Level,,CONSTRUCTION,SECAI,Pour Concrete,JAMES LEE,,2024-03-04 07:00,2024-03-08 17:00,2024-03-04 07:00,2024-03-08 17:00,2025-11-20 17:00,2025-11-20 17:00,2025-12-05 17:00,2025-12-05 17:00,0,50,100
CN.AB5.ST.1830,FRP - RAKER TOPPING SLAB - WAFFLE (L3) - A5,Complete,Area A-5,South Areas (Team A - Gridlines 3-17),A5 - Area 2 (Gridlines 6-3),L3 / Waffle Slab Level,,CONSTRUCTION,,TOPPING,CONCRETE,,2023-08-07 13:00,2023-08-12 13:00,2023-08-07 13:00,2023-08-12 14:00,2025-11-20 17:00,2025-11-20 17:00,2025-11-24 07:00,2025-11-24 07:00,0,40,100
CN.AB5.ST.1380,PH1-WAFFLE COATING TEMPERATURE REMIDIATION (L2) - A5 GL 3-10 - W1- CENTER (SG4),Complete,Area A-5,,A5 - Area 2 (Gridlines 6-3),L2 - SubFab Level,,CONSTRUCTION,,TBD Architectural Finishes,,,2024-02-29 07:00,2024-04-04 13:00,2024-02-27 07:00,2024-04-02 17:00,2025-11-20 17:00,2025-11-20 17:00,2025-12-05 17:00,2025-12-05 17:00,0,216,100
CN.AB3.ST.1870,INSTALL ACCESS FLOORS (BY SECAI) - A5 - GL 6-3 - L3,Complete,Area A-5,,A5 - Area 2 (Gridlines 6-3),L3 / Waffle Slab Level,,CONSTRUCTION,SECAI,TBD Architectural Finishes,,,2024-07-11 07:00,2024-07-17 17:00,2024-06-25 07:00,2024-06-28 17:00,2025-11-20 17:00,2025-11-20 17:00,2025-12-05 17:00,2025-12-05 17:00,0,50,100
CN.AB3.ST.1880,COLUMN WRAP FRAMING AND DRYWALL -G LINE- ABOVE 8 FEET - A5 - GL 6-3 - L3,Complete,Area A-5,,A5 - Area 2 (Gridlines 6-3),L3 / Waffle Slab Level,,CONSTRUCTION,BERG,DRYWALL,,,2025-10-24 07:00,2025-10-30 17:00,2024-01-22 07:00,2025-03-07 17:00,2025-11-20 17:00,2025-11-20 17:00,2025-12-05 17:00,2025-12-05 17:00,0,50,100
CN.AB5.ST.1850,PH1-WAFFLE COATING TEMPERATURE REMIDIATION (L3) - A5 GL 3-9 - W1- WEST TOP & BOTTOM,Complete,Area A-5,,A5 - Area 2 (Gridlines 6-3),L3 / Waffle Slab Level,,CONSTRUCTION,,TBD Architectural Finishes,,,2023-09-30 08:00,2023-10-07 10:00,2023-09-30 08:00,2023-10-29 16:00,2025-11-20 17:00,2025-11-20 17:00,2025-12-05 17:00,2025-12-05 17:00,0,72,100
CN.AB5.ST.1860,PH1-WAFFLE COATING TEMPERATURE REMIDIATION (L3) - A5 GL 3-10 - E1- EAST TOP & BOTTOM,Complete,Area A-5,,A5 - Area 2 (Gridlines 6-3),L3 / Waffle Slab Level,,CONSTRUCTION,,TBD Architectural Finishes,,,2023-09-30 08:00,2023-10-07 10:00,2023-09-30 08:00,2023-10-29 16:00,2025-11-20 17:00,2025-11-20 17:00,2025-12-05 17:00,2025-12-05 17:00,0,72,100
CN.AB5.ST.1880,PH1-WAFFLE COATING TEMPERATURE REMIDIATION (L3) - A5 GL 3-7 - W1- WEST TOP (S3),Complete,Area A-5,,A5 - Area 2 (Gridlines 6-3),L3 / Waffle Slab Level,,CONSTRUCTION,,TBD Architectural Finishes,,,2024-01-23 15:00,2024-02-24 17:00,2024-01-19 15:00,2024-03-03 16:00,2025-11-20 17:00,2025-11-20 17:00,2025-12-05 17:00,2025-12-05 17:00,0,302,100
CN.AB5.ST.1890,PH1-WAFFLE COATING TEMPERATURE REMIDIATION (L3) - A5 GL 3-7 - E1- EAST TOP (S4),Complete,Area A-5,,A5 - Area 2 (Gridlines 6-3),L3 / Waffle Slab Level,,CONSTRUCTION,,TBD Architectural Finishes,,,2024-01-22 07:00,2024-02-29 11:00,2024-01-19 07:00,2024-03-23 15:00,2025-11-20 17:00,2025-11-20 17:00,2025-12-05 17:00,2025-12-05 17:00,0,354,100
CN.AB5.ST.1900,PH1-WAFFLE COATING TEMPERATURE REMIDIATION (L2) - A5 GL 3-8 - W1- WEST BOTTOM (Mez (a),Complete,Area A-5,,A5 - Area 2 (Gridlines 6-3),L2 - SubFab Level,,CONSTRUCTION,,TBD Architectural Finishes,,,2024-01-29 07:00,2024-03-27 12:00,2024-01-22 07:00,2024-04-12 17:00,2025-11-20 17:00,2025-11-20 17:00,2025-12-05 17:00,2025-12-05 17:00,0,385,100
CN.AB5.ST.1910,PH1-WAFFLE COATING TEMPERATURE REMIDIATION (L2) - A5 GL 3-10 - E1- EAST BOTTOM (S4a),Complete,Area A-5,,A5 - Area 2 (Gridlines 6-3),L2 - SubFab Level,,CONSTRUCTION,CHERRY COATING,TBD Architectural Finishes,,,2024-01-29 07:00,2024-03-29 13:00,2024-01-22 07:00,2024-05-16 17:00,2025-11-20 17:00,2025-11-20 17:00,2025-12-05 17:00,2025-12-05 17:00,0,406,100
CN.AB5.ST.1930,PH1-WAFFLE RAKER COATING - (L2) - A5 GL 3-10 WEST (R4W),Complete,Area A-5,South Areas (Team A - Gridlines 3-17),A5 - Area 2 (Gridlines 6-3),L2 - SubFab Level,,CONSTRUCTION,CHERRY COATING,TBD Architectural Finishes,AMBER CARO,,2024-04-15 07:00,2024-04-23 16:00,2024-04-09 07:00,2024-06-27 17:00,2025-11-20 17:00,2025-11-20 17:00,2025-12-05 17:00,2025-12-05 17:00,0,69,100
CN.AB5.ST.1940,PH1-WAFFLE RAKER COATING - (L2) - A5 GL 3-10 EAST (R4E),Complete,Area A-5,South Areas (Team A - Gridlines 3-17),A5 - Area 2 (Gridlines 6-3),L2 - SubFab Level,,CONSTRUCTION,,TBD Architectural Finishes,AMBER CARO,,2024-03-11 07:00,2024-03-29 10:00,2024-03-09 07:00,2024-04-11 17:00,2025-11-20 17:00,2025-11-20 17:00,2025-12-05 17:00,2025-12-05 17:00,0,103,100
CN.AB5.ST.1950,COLUMNS- GRINDING/SCRAPING - L2 - GL 6-3 - G-E - EAST,Complete,Area A-5,South Areas (Team A - Gridlines 3-17),A5 - Area 2 (Gridlines 6-3),L2 - SubFab Level,,CONSTRUCTION,,TBD Architectural Finishes,AMBER CARO,,2024-04-01 07:00,2024-04-03 11:00,2024-04-05 07:00,2024-04-08 11:00,2025-11-20 17:00,2025-11-20 17:00,2025-12-05 17:00,2025-12-05 17:00,0,24,100
CN.AB5.ST.1960,COLUMNS- GRINDING/SCRAPING - L2 - GL 6-3 - G-J- WEST,Complete,Area A-5,South Areas (Team A - Gridlines 3-17),A5 - Area 2 (Gridlines 6-3),L2 - SubFab Level,"FAB WEST 8 - 3[15,16]",CONSTRUCTION,CHERRY COATING,TBD Architectural Finishes,AMBER CARO,,2024-04-22 13:00,2024-04-25 13:00,2024-04-22 13:00,2024-04-25 13:00,2025-11-20 17:00,2025-11-20 17:00,2025-12-05 17:00,2025-12-05 17:00,0,30,100
CN.AB5.ST.1970,"COLUMNS - PRIME, INTERMEDIATE COAT & TOP COAT - L2 - GL 6-3 - G-E - EAST [A3]",Complete,Area A-5,South Areas (Team A - Gridlines 3-17),A5 - Area 2 (Gridlines 6-3),L2 - SubFab Level,FAB EAST 7 - 3[5],CONSTRUCTION,CHERRY COATING,TBD Architectural Finishes,AMBER CARO,,2024-04-15 13:00,2024-04-29 13:00,2024-04-29 13:00,2024-05-13 17:00,2025-11-20 17:00,2025-11-20 17:00,2025-12-05 17:00,2025-12-05 17:00,0,100,100
CN.AB5.ST.1980,"COLUMNS - PRIME, INTERMEDIATE COAT & TOP COAT - L2 - GL 8-3 - G-J- WEST [A6]",Complete,Area A-5,South Areas (Team A - Gridlines 3-17),A5 - Area 2 (Gridlines 6-3),L2 - SubFab Level,"FAB WEST 8 - 3[15,16]",CONSTRUCTION,CHERRY COATING,TBD Architectural Finishes,AMBER CARO,,2024-04-29 13:00,2024-05-13 13:00,2024-04-29 13:00,2024-05-22 17:00,2025-11-20 17:00,2025-11-20 17:00,2025-12-05 17:00,2025-12-05 17:00,0,80,100
CN.AB5.ST.1990,IMPACT 2ND FLOOR MEP MATERIAL CONSTRAINT - L2 - GL 6-3 - G-J,Complete,Area A-5,South Areas (Team A - Gridlines 3-17),A5 - Area 2 (Gridlines 6-3),L2 - SubFab Level,,CONSTRUCTION,,TBD Architectural Finishes,AMBER CARO,,2024-03-01 08:00,2024-03-09 08:00,2024-02-28 08:00,2024-03-09 16:00,2025-11-20 17:00,2025-11-20 17:00,2025-12-05 17:00,2025-12-05 17:00,0,80,100
CN.B1.ST.1150,STEEL PRE-ASSEMBLE TRUSSES - B1 - 19 (Delayed Top chord Delivery),Complete,Area B-1,North Areas (Team B -Gridlines 17-33),B1 - Area 8 (Gridlines 18-21),L4 - SUP Roof - FAB Roof,,CONSTRUCTION,,Pre-Assemble Trusses,SEAN MONK,,2022-12-27 07:00,2023-01-06 10:00,2022-12-27 07:00,2023-01-12 09:00,2025-11-20 17:00,2025-11-20 17:00,2025-06-13 08:00,2025-06-13 08:00,0,73,100
xN.AB1.ST.1000,PH1-ERECT STEEL TRUSSES & INFILL - B1 - 19,Complete,Area B-1,North Areas (Team B -Gridlines 17-33),B1 - Area 8 (Gridlines 18-21),L4 - SUP Roof - FAB Roof,,CONSTRUCTION,,"Truss Erect, Infill & Decking",SEAN MONK,,2023-01-17 11:00,2023-01-24 15:00,2023-01-17 11:00,2023-01-26 17:00,2025-11-20 17:00,2025-11-20 17:00,2025-06-13 08:00,2025-06-13 08:00,0,64,100
xN.AB1.ST.1010,PH1-ERECT ROOF DECKING GL 18 - 19 - B1,Complete,Area B-1,North Areas (Team B -Gridlines 17-33),B1 - Area 8 (Gridlines 18-21),L4 - SUP Roof - FAB Roof,,CONSTRUCTION,,Decking & Detail,SEAN MONK,SOMD / Roofing / Waterproofing,2023-02-21 10:00,2023-02-27 08:00,2023-02-21 10:00,2023-03-02 11:00,2025-11-20 17:00,2025-11-20 17:00,2025-11-03 07:00,2025-11-03 07:00,0,48,100
xN.AB1.ST.1030,PH1-ERECT ROOFING - B1,Complete,Area B-1,North Areas (Team B -Gridlines 17-33),B1 - Area 8 (Gridlines 18-21),L4 - SUP Roof - FAB Roof,,CONSTRUCTION,,Roofing,JAMES LIVELY,SOMD / Roofing / Waterproofing,2023-06-24 08:00,2023-07-06 14:00,2023-06-24 08:00,2023-07-11 17:00,2025-11-20 17:00,2025-11-20 17:00,2025-11-10 07:00,2025-11-10 07:00,0,96,100
xN.AB1.ST.1050,PH1- FRP SLAB ROOF - B1 GL 17 - 19,Complete,Area B-1,North Areas (Team B -Gridlines 17-33),B1 - Area 8 (Gridlines 18-21),L4 - SUP Roof - FAB Roof,,CONSTRUCTION,,SOMD,JAMES LEE,SOMD / Roofing / Waterproofing,2023-03-10 15:00,2023-03-14 15:00,2023-03-10 15:00,2023-03-18 15:00,2025-11-20 17:00,2025-11-20 17:00,2025-11-10 07:00,2025-11-10 07:00,0,40,100
CN.A1.CF.1110,"SLAB B1 18-22 Complete (SLABS B8, C8, D8, E8) - (Delayed SLAB B8 Direction to proceed. On Hold Void failure 11/11-11/16)",Complete,Area B-1,North Areas (Team B -Gridlines 17-33),B1 - Area 8 (Gridlines 18-21),L1 - Fndn Slab,,CONSTRUCTION,,Pour Concrete,ANDREA SOLIS,,2022-09-06 07:00,2022-09-29 09:00,2022-09-06 07:00,2022-11-18 17:00,2025-11-20 17:00,2025-11-20 17:00,2025-06-13 08:00,2025-06-13 08:00,0,232,100
CN.A1.CF.1120,PH1- CURE SLAB B1 (Gridline 18-22 Complete),Complete,Area B-1,North Areas (Team B -Gridlines 17-33),B1 - Area 8 (Gridlines 18-21),L1 - Fndn Slab,,CONSTRUCTION,,Concrete Cure,ANDREA SOLIS,,2022-11-17 07:00,2022-11-22 13:00,2022-11-17 07:00,2022-11-23 13:00,2025-11-20 17:00,2025-11-20 17:00,2025-06-13 08:00,2025-06-13 08:00,0,56,100
CN.AB1.ST.1060,PH1-ERECT PRECAST WAFFLES GL 18 - 19 (L3) - B1,Complete,Area B-1,North Areas (Team B -Gridlines 17-33),B1 - Area 8 (Gridlines 18-21),L3 / Waffle Slab Level,,CONSTRUCTION,,FAB Waffle Slabs,SEAN MONK,,2023-03-02 11:00,2023-03-10 11:00,2023-03-02 11:00,2023-03-08 11:00,2025-11-20 17:00,2025-11-20 17:00,2025-11-03 07:00,2025-11-03 07:00,0,80,100
CN.B1.CF.1020,ERECT COLUMNS (24nos) & GIRDERS (8 nos) (E & J only)- GL19-20 -B1,Complete,Area B-1,North Areas (Team B -Gridlines 17-33),B1 - Area 8 (Gridlines 18-21),L4 - SUP Roof - FAB Roof,,CONSTRUCTION,,"Main Columns C,E,G,J,L & Intermediate H,F",SEAN MONK,,2023-01-04 07:00,2023-01-07 09:00,2023-01-04 07:00,2023-01-07 10:00,2025-11-20 17:00,2025-11-20 17:00,2025-06-13 08:00,2025-06-13 08:00,0,32,100
xN.AB1.ST.1040,PH1-ERECT PRECAST SUBFAB GL 18 - 19 (L2) - B1,Complete,Area B-1,North Areas (Team B -Gridlines 17-33),B1 - Area 8 (Gridlines 18-21),L2 - SubFab Level,,CONSTRUCTION,,FAB Subfab and Parapets,SEAN MONK,,2023-04-10 07:00,2023-04-13 09:00,2023-04-10 07:00,2023-04-13 09:00,2025-11-20 17:00,2025-11-20 17:00,2025-11-03 07:00,2025-11-03 07:00,0,32,100
CN.B1.CF.1030,"PH1- ERECT REMAINING COLUMNS/GIRDERS (G, H & F) - GL21-22 -B1",Complete,Area B-1,North Areas (Team B -Gridlines 17-33),B1 - Area 8 (Gridlines 18-21),L4 - SUP Roof - FAB Roof,,CONSTRUCTION,,"Main Columns C,E,G,J,L & Intermediate H,F",SEAN MONK,,2023-02-20 07:00,2023-02-24 17:00,2023-02-13 07:00,2023-02-18 16:00,2025-11-20 17:00,2025-11-20 17:00,2025-11-03 07:00,2025-11-03 07:00,0,40,100
CN.BB11.ST.1070,PH1- WATERPROOFING - SUBFAB (L2) - B1,Complete,Area B-1,North Areas (Team B -Gridlines 17-33),B1 - Area 8 (Gridlines 18-21),L2 - SubFab Level,,CONSTRUCTION,,Pour Concrete,JAMES LIVELY,,2023-06-02 07:00,2023-06-05 09:00,2023-05-27 10:00,2023-05-30 17:00,2025-11-20 17:00,2025-11-20 17:00,2025-11-03 07:00,2025-11-03 07:00,0,32,100
CN.BB11.ST.1120,PH1- CURBS & MEP SLABS - SUBFAB (L2) - B1,Complete,Area B-1,North Areas (Team B -Gridlines 17-33),B1 - Area 8 (Gridlines 18-21),L2 - SubFab Level,,CONSTRUCTION,,Pour Concrete,JAMES LEE,,2023-05-27 10:00,2023-05-28 16:00,2023-05-27 10:00,2023-05-30 17:00,2025-11-20 17:00,2025-11-20 17:00,2025-11-03 07:00,2025-11-03 07:00,0,16,100
CN.BB11.ST.1130,PH1- WATERPROOFING - SOG (L1) - B1,Complete,Area B-1,North Areas (Team B -Gridlines 17-33),B1 - Area 8 (Gridlines 18-21),L1 - Fndn Slab,,CONSTRUCTION,,Pour Concrete,JAMES LIVELY,,2023-06-13 13:00,2023-06-17 15:00,2023-06-13 13:00,2023-06-17 16:00,2025-11-20 17:00,2025-11-20 17:00,2025-11-03 07:00,2025-11-03 07:00,0,32,100
CN.BB1.ST.1240,PH1- CURBS & MEP SLABS - SOG (L1) -  B1,Complete,Area B-1,North Areas (Team B -Gridlines 17-33),B1 - Area 8 (Gridlines 18-21),L1 - Fndn Slab,,CONSTRUCTION,,Pour Concrete,JAMES LEE,,2023-06-12 07:00,2023-06-13 13:00,2023-06-12 07:00,2023-06-13 13:00,2025-11-20 17:00,2025-11-20 17:00,2025-11-03 07:00,2025-11-03 07:00,0,16,100
CN.BB1.ST.1160,PH1- CURBS & MEP SLABS - ROOF (L4) -  B1,Complete,Area B-1,North Areas (Team B -Gridlines 17-33),B1 - Area 8 (Gridlines 18-21),L4 - SUP Roof - FAB Roof,,CONSTRUCTION,,Pour Concrete,JAMES LEE,SOMD / Roofing / Waterproofing,2023-04-03 07:00,2023-04-03 15:00,2023-04-03 07:00,2023-04-03 15:00,2025-11-20 17:00,2025-11-20 17:00,2025-11-10 07:00,2025-11-10 07:00,0,8,100
CN.AB1.ST.1190,PH1-WAFFLE COATING (Bottom and Top) (L2&3) - B1 GL 18-26,Complete,Area B-1,North Areas (Team B -Gridlines 17-33),B1 - Area 8 (Gridlines 18-21),L2 - SubFab Level,,CONSTRUCTION,CHERRY COATING,TBD Architectural Finishes,AMBER CARO,,2024-06-11 07:00,2024-06-11 17:00,2024-06-11 07:00,2024-06-11 17:00,2025-11-20 17:00,2025-11-20 17:00,2025-12-05 17:00,2025-12-05 17:00,0,10,100
CN.B1.ST.1160,STEEL PRE-ASSEMBLE TRUSSES - B1 - 20,Complete,Area B-1,North Areas (Team B -Gridlines 17-33),B1 - Area 8 (Gridlines 18-21),L4 - SUP Roof - FAB Roof,,CONSTRUCTION,,Pre-Assemble Trusses,SEAN MONK,,2023-01-10 07:00,2023-01-17 11:00,2023-01-10 07:00,2023-01-19 13:00,2025-11-20 17:00,2025-11-20 17:00,2025-11-03 07:00,2025-11-03 07:00,0,64,100
xN.AB1.ST.1060,PH1-ERECT STEEL TRUSSES & INFILL - B1 - 20 (E10 Slab held Due to Pit7),Complete,Area B-1,North Areas (Team B -Gridlines 17-33),B1 - Area 8 (Gridlines 18-21),L4 - SUP Roof - FAB Roof,,CONSTRUCTION,,"Truss Erect, Infill & Decking",SEAN MONK,,2023-02-07 15:00,2023-02-14 09:00,2023-02-06 15:00,2023-02-11 11:00,2025-11-20 17:00,2025-11-20 17:00,2025-11-03 07:00,2025-11-03 07:00,0,64,100
CN.B1.ST.1170,STEEL PRE-ASSEMBLE TRUSSES - B1 - 21,Complete,Area B-1,North Areas (Team B -Gridlines 17-33),B1 - Area 8 (Gridlines 18-21),L4 - SUP Roof - FAB Roof,,CONSTRUCTION,,Pre-Assemble Trusses,SEAN MONK,,2023-01-10 07:00,2023-01-17 11:00,2023-01-10 07:00,2023-01-19 13:00,2025-11-20 17:00,2025-11-20 17:00,2025-11-03 07:00,2025-11-03 07:00,0,64,100
xN.AB1.ST.1070,PH1-ERECT STEEL TRUSSES & INFILL - B1 - 21,Complete,Area B-1,North Areas (Team B -Gridlines 17-33),B1 - Area 8 (Gridlines 18-21),L4 - SUP Roof - FAB Roof,,CONSTRUCTION,,"Truss Erect, Infill & Decking",SEAN MONK,,2023-02-21 13:00,2023-02-27 11:00,2023-02-21 13:00,2023-02-23 13:00,2025-11-20 17:00,2025-11-20 17:00,2025-11-03 07:00,2025-11-03 07:00,0,48,100
xN.AB1.ST.1080,PH1-WAFFLE EPOXY COATING (1st Coat in Yard) (L3) - B1,Complete,Area B-1,North Areas (Team B -Gridlines 17-33),B1 - Area 8 (Gridlines 18-21),L3 / Waffle Slab Level,,CONSTRUCTION,,TBD Architectural Finishes,AMBER CARO,,2023-01-21 10:00,2023-01-30 10:00,2023-01-21 10:00,2023-02-02 17:00,2025-11-20 17:00,2025-11-20 17:00,2025-06-13 08:00,2025-06-13 08:00,0,80,100
CN.BB11.ST.1080,PH1- TOPPING SLAB - SUBFAB (L2) - B1,Complete,Area B-1,North Areas (Team B -Gridlines 17-33),B1 - Area 8 (Gridlines 18-21),L2 - SubFab Level,,CONSTRUCTION,,TOPPING,CONCRETE,,2023-06-19 07:00,2023-06-23 09:00,2023-06-19 07:00,2023-06-23 09:00,2025-11-20 17:00,2025-11-20 17:00,2025-11-03 07:00,2025-11-03 07:00,0,32,100
CN.BB11.ST.1140,PH1- TOPPING SLAB - SOG (L1) - B1,Complete,Area B-1,North Areas (Team B -Gridlines 17-33),B1 - Area 8 (Gridlines 18-21),L1 - Fndn Slab,,CONSTRUCTION,,TOPPING,CONCRETE,,2023-06-19 07:00,2023-06-26 11:00,2023-06-18 07:00,2023-06-24 16:00,2025-11-20 17:00,2025-11-20 17:00,2025-12-05 17:00,2025-12-05 17:00,0,64,100
xN.AB1.ST.1090,PH1- FRP SLAB ROOF - B1 GL 19 - 21,Complete,Area B-1,North Areas (Team B -Gridlines 17-33),B1 - Area 8 (Gridlines 18-21),L4 - SUP Roof - FAB Roof,,CONSTRUCTION,,SOMD,JAMES LEE,SOMD / Roofing / Waterproofing,2023-03-27 15:00,2023-04-01 15:00,2023-03-27 15:00,2023-04-01 16:00,2025-11-20 17:00,2025-11-20 17:00,2025-11-10 07:00,2025-11-10 07:00,0,40,100
xN.AB1.ST.1100,PH1-ERECT PRECAST SUBFAB GL 19 - 20 (L2) - B1,Complete,Area B-1,North Areas (Team B -Gridlines 17-33),B1 - Area 8 (Gridlines 18-21),L2 - SubFab Level,,CONSTRUCTION,,FAB Subfab and Parapets,SEAN MONK,,2023-05-26 11:00,2023-05-28 15:00,2023-05-15 11:00,2023-05-17 11:00,2025-11-20 17:00,2025-11-20 17:00,2025-11-03 07:00,2025-11-03 07:00,0,24,100
xN.AB1.ST.1110,PH1-ERECT PRECAST SUBFAB GL 20 - 21 (L2) - B1,Complete,Area B-1,North Areas (Team B -Gridlines 17-33),B1 - Area 8 (Gridlines 18-21),L2 - SubFab Level,,CONSTRUCTION,,FAB Subfab and Parapets,SEAN MONK,,2023-05-25 13:00,2023-05-27 09:00,2023-05-25 13:00,2023-05-27 10:00,2025-11-20 17:00,2025-11-20 17:00,2025-11-03 07:00,2025-11-03 07:00,0,16,100
CN.AB1.ST.1310,PH1-ERECT PRECAST WAFFLES GL 19 - 20 (L3) - B1,Complete,Area B-1,North Areas (Team B -Gridlines 17-33),B1 - Area 8 (Gridlines 18-21),L3 / Waffle Slab Level,,CONSTRUCTION,,FAB Waffle Slabs,SEAN MONK,,2023-05-23 07:00,2023-05-26 11:00,2023-05-08 07:00,2023-05-10 07:00,2025-11-20 17:00,2025-11-20 17:00,2025-11-03 07:00,2025-11-03 07:00,0,24,100
CN.AB1.ST.1320,PH1-ERECT PRECAST WAFFLES GL 20 - 21 (L3) - B1,Complete,Area B-1,North Areas (Team B -Gridlines 17-33),B1 - Area 8 (Gridlines 18-21),L3 / Waffle Slab Level,,CONSTRUCTION,,FAB Waffle Slabs,SEAN MONK,,2023-05-23 07:00,2023-05-26 11:00,2023-05-23 07:00,2023-05-25 13:00,2025-11-20 17:00,2025-11-20 17:00,2025-11-03 07:00,2025-11-03 07:00,0,24,100
xN.AB1.ST.1120,PH1-ERECT ROOF DECKING GL 19 - 20 - B1,Complete,Area B-1,North Areas (Team B -Gridlines 17-33),B1 - Area 8 (Gridlines 18-21),L4 - SUP Roof - FAB Roof,,CONSTRUCTION,,Decking & Detail,SEAN MONK,SOMD / Roofing / Waterproofing,2023-03-02 11:00,2023-03-06 11:00,2023-03-02 11:00,2023-03-23 17:00,2025-11-20 17:00,2025-11-20 17:00,2025-11-03 07:00,2025-11-03 07:00,0,40,100
xN.AB1.ST.1130,PH1-ERECT ROOF DECKING GL 20 -21 - B1,Complete,Area B-1,North Areas (Team B -Gridlines 17-33),B1 - Area 8 (Gridlines 18-21),L4 - SUP Roof - FAB Roof,,CONSTRUCTION,,Decking & Detail,SEAN MONK,SOMD / Roofing / Waterproofing,2023-03-07 13:00,2023-03-12 11:00,2023-03-07 13:00,2023-03-27 15:00,2025-11-20 17:00,2025-11-20 17:00,2025-11-03 07:00,2025-11-03 07:00,0,48,100
CN.AB1.ST.1430,PH1- FIRE PROOFING TOUCH UP PRIME - SFRM STEEL COLUMNS / TRUSS WEB / TOP CORD - B1 - GL 18-21 - L3,Complete,Area B-1,South Areas (Team A - Gridlines 3-17),B1 - Area 8 (Gridlines 18-21),L3 / Waffle Slab Level,,CONSTRUCTION,ROLLING PLAINS,Fireproofing,AMBER CARO,,2024-07-15 07:00,2024-07-22 17:00,2024-06-24 07:00,2024-06-27 07:00,2025-11-20 17:00,2025-11-20 17:00,2025-12-05 17:00,2025-12-05 17:00,0,60,100
CN.AB1.ST.1440,SAFETY PREP/ FIRE PROOFING & PRIMER APPLY - BOTTOM CORD (L3) - B1,Complete,Area B-1,South Areas (Team A - Gridlines 3-17),B1 - Area 8 (Gridlines 18-21),L3 / Waffle Slab Level,,CONSTRUCTION,,FAB Waffle Slabs,AMBER CARO,,2023-07-03 07:00,2023-07-10 13:00,2023-07-03 07:00,2023-07-11 15:00,2025-11-20 17:00,2025-11-20 17:00,2025-12-05 17:00,2025-12-05 17:00,0,56,100
CN.AB1.ST.1700,FRP - RAKER TOPPING SLAB - WAFFLE (L3) - B1,Complete,Area B-1,South Areas (Team A - Gridlines 3-17),B1 - Area 8 (Gridlines 18-21),L3 / Waffle Slab Level,,CONSTRUCTION,,TOPPING,CONCRETE,,2023-07-31 15:00,2023-08-03 09:00,2023-07-31 15:00,2023-08-03 09:00,2025-11-20 17:00,2025-11-20 17:00,2025-11-24 07:00,2025-11-24 07:00,0,24,100
CN.AB1.ST.1690,SECAI - INSTALL MEP ANCHOR - WAFFLE (L3) - B1,Complete,Area B-1,South Areas (Team A - Gridlines 3-17),B1 - Area 8 (Gridlines 18-21),L3 / Waffle Slab Level,,CONSTRUCTION,,Pour Concrete,JAMES LEE,,2023-07-03 07:00,2023-07-08 17:00,2023-07-03 07:00,2023-07-31 15:00,2025-11-20 17:00,2025-11-20 17:00,2025-11-24 07:00,2025-11-24 07:00,0,40,100
CN.AB1.ST.1710,SECAI - DRILL & PLUG POSTS FOR RAF - WAFFLE (L3) - B1,Complete,Area B-1,South Areas (Team A - Gridlines 3-17),B1 - Area 8 (Gridlines 18-21),L3 / Waffle Slab Level,,CONSTRUCTION,,Pour Concrete,JAMES LEE,,2023-08-03 09:00,2023-08-07 09:00,2023-08-03 09:00,2023-08-08 11:00,2025-11-20 17:00,2025-11-20 17:00,2025-12-05 17:00,2025-12-05 17:00,0,40,100
CN.AB1.ST.1720,SECAI - INSTALL UPPER CEILING - TRUSS - B1 - GL 18-21 - L3,Complete,Area B-1,South Areas (Team A - Gridlines 3-17),B1 - Area 8 (Gridlines 18-21),L3 / Waffle Slab Level,,CONSTRUCTION,SECAI,Pour Concrete,JAMES LEE,,2024-03-04 07:00,2024-03-08 17:00,2024-03-04 07:00,2024-03-08 17:00,2025-11-20 17:00,2025-11-20 17:00,2025-12-05 17:00,2025-12-05 17:00,0,50,100
CN.AB1.5110,METAL STUD FRAMING DRYWALL (2hr) - BUNKER RM 3-6 GL 18-21(12' Header Left out for SECAI MEP ),Complete,Area B-1,East Support Building,B1 - Area 8 (Gridlines 18-21),L1 - Fndn Slab,BUNKER ROOM,CONSTRUCTION,BERG,DRYWALL,AMBER CARO,INTERIORS,2023-08-03 09:00,2023-08-15 11:00,2023-08-03 09:00,2023-08-22 13:00,2025-11-20 17:00,2025-11-20 17:00,2025-12-05 17:00,2025-12-05 17:00,0,112,100
CN.AB1.5120,TAPE & FLOAT - BUNKER RM 3-6 - B1 - GL 21-24 - L1,Complete,Area B-1,East Support Building,B1 - Area 8 (Gridlines 18-21),L1 - Fndn Slab,BUNKER ROOM,CONSTRUCTION,CHERRY COATING,TBD Architectural Finishes,AMBER CARO,INTERIORS,2024-06-03 07:00,2024-06-17 17:00,2024-06-03 07:00,2024-06-14 17:00,2025-11-20 17:00,2025-11-20 17:00,2025-12-05 17:00,2025-12-05 17:00,0,90,100
CN.AB1.ST.1230,PH1-WAFFLE COATING TEMPERATURE REMIDIATION (L3) - B1 - W5- GL 18-26 WEST BOTTOM,Complete,Area B-1,,B1 - Area 8 (Gridlines 18-21),L3 / Waffle Slab Level,,CONSTRUCTION,,TBD Architectural Finishes,,,2023-10-30 08:00,2023-11-18 08:00,2023-10-04 08:00,2023-10-29 16:00,2025-11-20 17:00,2025-11-20 17:00,2025-12-05 17:00,2025-12-05 17:00,0,160,100
A1460,MEP EQUIPMENT LOADING BY SECAI,Complete,Area B-1,,B1 - Area 8 (Gridlines 18-21),L1 - Fndn Slab,BUNKER ROOM,CONSTRUCTION,SECAI,DRYWALL,,,2023-11-20 07:00,2024-01-31 11:00,2023-11-13 07:00,2024-05-04 17:00,2025-11-20 17:00,2025-11-20 17:00,2025-12-05 17:00,2025-12-05 17:00,0,424,100
A1450,METAL STUD FRAMING DRYWALL AND FINISHES - CLOSING THE OPENING,Complete,Area B-1,,B1 - Area 8 (Gridlines 18-21),L1 - Fndn Slab,BUNKER ROOM,CONSTRUCTION,BERG,DRYWALL,,,2024-05-06 07:00,2024-05-13 17:00,2024-05-06 07:00,2024-05-09 17:00,2025-11-20 17:00,2025-11-20 17:00,2025-12-05 17:00,2025-12-05 17:00,0,50,100
CN.AB1.ST.1920,COLUMN WRAP FRAMING AND DRYWALL -G LINE - UPTO 8 FEET - B1 - GL 18-21 - L3,Complete,Area B-1,,B1 - Area 8 (Gridlines 18-21),L3 / Waffle Slab Level,,CONSTRUCTION,BERG,DRYWALL,,,2025-10-24 07:00,2025-10-30 17:00,2024-01-22 07:00,2025-03-07 17:00,2025-11-20 17:00,2025-11-20 17:00,2025-12-05 17:00,2025-12-05 17:00,0,50,100
CN.AB3.ST.1890,IMPACT - INSTALL ACCESS FLOORS (BY SECAI) - B1 - GL 18-21 - L3,Complete,Area B-1,,B1 - Area 8 (Gridlines 18-21),L3 / Waffle Slab Level,,CONSTRUCTION,SECAI,DRYWALL,,,2024-07-22 07:00,2024-07-26 17:00,2024-06-17 07:00,2024-06-24 17:00,2025-11-20 17:00,2025-11-20 17:00,2025-12-05 17:00,2025-12-05 17:00,0,50,100
CN.AB3.ST.1900,COLUMN WRAP FRAMING AND DRYWALL - G LINE - ABOVE 8 FEET - B1 - GL 18-21 - L3,Complete,Area B-1,,B1 - Area 8 (Gridlines 18-21),L3 / Waffle Slab Level,,CONSTRUCTION,BERG,DRYWALL,,,2025-10-24 07:00,2025-10-30 17:00,2024-01-22 07:00,2025-03-07 17:00,2025-11-20 17:00,2025-11-20 17:00,2025-12-05 17:00,2025-12-05 17:00,0,50,100
CN.AB1.ST.1990,PH1-WAFFLE COATING TEMPERATURE REMIDIATION (L3) - B1- W5 GL 21-27 WEST TOP (S2),Complete,Area B-1,,B1 - Area 8 (Gridlines 18-21),L3 / Waffle Slab Level,,CONSTRUCTION,,TBD Architectural Finishes,,,2024-01-22 07:00,2024-02-11 11:00,2024-01-19 07:00,2024-02-10 17:00,2025-11-20 17:00,2025-11-20 17:00,2025-12-05 17:00,2025-12-05 17:00,0,194,100
CN.AB1.ST.2000,PH1-WAFFLE COATING TEMPERATURE REMIDIATION (L3) - B1- E5- GL 19-26 EAST TOP (S1),Complete,Area B-1,,B1 - Area 8 (Gridlines 18-21),L3 / Waffle Slab Level,,CONSTRUCTION,,TBD Architectural Finishes,,,2024-01-22 07:00,2024-02-12 09:00,2024-01-19 07:00,2024-03-09 15:00,2025-11-20 17:00,2025-11-20 17:00,2025-12-05 17:00,2025-12-05 17:00,0,202,100
CN.AB1.ST.2020,PH1-WAFFLE COATING TEMPERATURE REMIDIATION (L2) - B1- E5- GL 18-26 CENTER (SG2),Complete,Area B-1,,B1 - Area 8 (Gridlines 18-21),L2 - SubFab Level,,CONSTRUCTION,,TBD Architectural Finishes,,,2024-01-22 07:00,2024-02-01 11:00,2024-01-21 07:00,2024-04-06 17:00,2025-11-20 17:00,2025-11-20 17:00,2025-12-05 17:00,2025-12-05 17:00,0,84,100
CN.AB1.ST.2050,PH1-WAFFLE COATING TEMPERATURE REMIDIATION (L2) - B1- E5- GL 18-26 EAST BOTTOM (S1a),Complete,Area B-1,,B1 - Area 8 (Gridlines 18-21),L2 - SubFab Level,,CONSTRUCTION,,TBD Architectural Finishes,,,2024-01-22 07:00,2024-02-06 09:00,2024-01-19 07:00,2024-02-16 11:00,2025-11-20 17:00,2025-11-20 17:00,2025-12-05 17:00,2025-12-05 17:00,0,152,100
CN.AB1.ST.2060,PH1-WAFFLE COATING TEMPERATURE REMIDIATION (L2) - B1- W5 GL 18-26 WEST BOTTOM (S3c),Complete,Area B-1,,B1 - Area 8 (Gridlines 18-21),L2 - SubFab Level,,CONSTRUCTION,,TBD Architectural Finishes,,,2024-01-22 07:00,2024-02-13 14:00,2024-01-19 07:00,2024-04-06 17:00,2025-11-20 17:00,2025-11-20 17:00,2025-12-05 17:00,2025-12-05 17:00,0,167,100
CN.AB1.ST.2100,COLUMNS - GRINDING (P2A) - L2 - GL 18-26 / F.8 - G-E,Complete,Area B-1,North Areas (Team B -Gridlines 17-33),B1 - Area 8 (Gridlines 18-21),L2 - SubFab Level,,CONSTRUCTION,,TBD Architectural Finishes,AMBER CARO,,2024-02-29 15:00,2024-03-05 09:00,2024-01-31 15:00,2024-02-02 17:00,2025-11-20 17:00,2025-11-20 17:00,2025-11-24 07:00,2025-11-24 07:00,0,44,100
CN.AB1.ST.2110,"COLUMNS - PRIME, INTERMEDIATE COAT & TOP COAT (P2A) - L2 - GL 18-26 / F.8 - G-E",Complete,Area B-1,North Areas (Team B -Gridlines 17-33),B1 - Area 8 (Gridlines 18-21),L2 - SubFab Level,FAB EAST 24 - 21[11],CONSTRUCTION,,TBD Architectural Finishes,AMBER CARO,,2024-02-19 07:00,2024-02-25 16:00,2024-02-05 07:00,2024-02-15 15:00,2025-11-20 17:00,2025-11-20 17:00,2025-12-05 17:00,2025-12-05 17:00,0,59,100
CN.AB1.ST.2120,COLUMNS - GRINDING (P2B) - L2 - GL 20-24 / E.3-F.6,Complete,Area B-1,North Areas (Team B -Gridlines 17-33),B2 - Area 9 (Gridlines 21-24),L2 - SubFab Level,,CONSTRUCTION,,TBD Architectural Finishes,AMBER CARO,,2024-02-29 15:00,2024-03-05 09:00,2024-01-31 15:00,2024-02-04 15:00,2025-11-20 17:00,2025-11-20 17:00,2025-12-05 17:00,2025-12-05 17:00,0,44,100
CN.AB1.ST.2140,COLUMNS - GRINDING - L2 - GL 18-21 G-J,Complete,Area B-1,North Areas (Team B -Gridlines 17-33),B1 - Area 8 (Gridlines 18-21),L2 - SubFab Level,,CONSTRUCTION,,TBD Architectural Finishes,AMBER CARO,,2024-02-19 07:00,2024-02-27 13:00,2024-02-19 07:00,2024-02-25 15:00,2025-11-20 17:00,2025-11-20 17:00,2025-11-24 07:00,2025-11-24 07:00,0,76,100
CN.AB1.ST.2150,"COLUMNS - PRIME, INTERMEDIATE COAT & TOP COAT - L2 - GL 15-22 G-J- WEST [D1]",Complete,Area B-1,North Areas (Team B -Gridlines 17-33),A1 - Area 6 (Gridlines 18-15),L2 - SubFab Level,FAB WEST 19 - 21[9],CONSTRUCTION,CHERRY COATING,TBD Architectural Finishes,AMBER CARO,,2024-05-20 07:00,2024-05-24 17:00,2024-05-18 07:00,2024-05-31 17:00,2025-11-20 17:00,2025-11-20 17:00,2025-12-05 17:00,2025-12-05 17:00,0,40,100
CN.AB1.ST.2160,COLUMNS- GRINDING/SCRAPING - L2 - GL 21-24 -G-J- WEST,Complete,Area B-1,North Areas (Team B -Gridlines 17-33),B2 - Area 9 (Gridlines 21-24),L2 - SubFab Level,,CONSTRUCTION,,TBD Architectural Finishes,AMBER CARO,,2024-02-19 07:00,2024-02-27 13:00,2024-02-19 07:00,2024-02-28 15:00,2025-11-20 17:00,2025-11-20 17:00,2025-11-24 07:00,2025-11-24 07:00,0,76,100
CN.B2.ST.1180,STEEL PRE-ASSEMBLE TRUSSES - B2 - 22,Complete,Area B-2,North Areas (Team B -Gridlines 17-33),B2 - Area 9 (Gridlines 21-24),L4 - SUP Roof - FAB Roof,,CONSTRUCTION,,Pre-Assemble Trusses,SEAN MONK,,2023-01-10 07:00,2023-01-17 11:00,2023-01-10 07:00,2023-01-19 13:00,2025-11-20 17:00,2025-11-20 17:00,2025-11-03 07:00,2025-11-03 07:00,0,64,100
xN.AB2.ST.1000,PH1-ERECT STEEL TRUSSES & INFILL - B2 - 22,Complete,Area B-2,North Areas (Team B -Gridlines 17-33),B2 - Area 9 (Gridlines 21-24),L4 - SUP Roof - FAB Roof,,CONSTRUCTION,,"Truss Erect, Infill & Decking",SEAN MONK,,2023-03-09 09:00,2023-03-13 09:00,2023-03-09 09:00,2023-03-14 13:00,2025-11-20 17:00,2025-11-20 17:00,2025-11-03 07:00,2025-11-03 07:00,0,40,100
xN.AB2.ST.1010,PH1-ERECT ROOF DECKING GL 21 - 22 - B2,Complete,Area B-2,North Areas (Team B -Gridlines 17-33),B2 - Area 9 (Gridlines 21-24),L4 - SUP Roof - FAB Roof,,CONSTRUCTION,,Decking & Detail,SEAN MONK,SOMD / Roofing / Waterproofing,2023-04-10 07:00,2023-04-13 17:00,2023-04-03 07:00,2023-04-07 17:00,2025-11-20 17:00,2025-11-20 17:00,2025-11-03 07:00,2025-11-03 07:00,0,40,100
xN.AB2.ST.1020,PH1-ERECT ROOFING - B2,Complete,Area B-2,North Areas (Team B -Gridlines 17-33),B2 - Area 9 (Gridlines 21-24),L4 - SUP Roof - FAB Roof,,CONSTRUCTION,,Roofing,JAMES LIVELY,SOMD / Roofing / Waterproofing,2023-07-07 11:00,2023-07-16 17:00,2023-07-07 11:00,2023-07-13 15:00,2025-11-20 17:00,2025-11-20 17:00,2025-11-10 07:00,2025-11-10 07:00,0,96,100
xN.AB2.ST.1050,PH1-FRP SLAB ROOF - B2 GL 21 - 23,Complete,Area B-2,North Areas (Team B -Gridlines 17-33),B2 - Area 9 (Gridlines 21-24),L4 - SUP Roof - FAB Roof,,CONSTRUCTION,,SOMD,JAMES LEE,SOMD / Roofing / Waterproofing,2023-04-17 11:00,2023-04-22 11:00,2023-04-17 11:00,2023-05-04 15:00,2025-11-20 17:00,2025-11-20 17:00,2025-11-10 07:00,2025-11-10 07:00,0,40,100
CN.A1.CF.1130,"PH1- SLAB B2 Gridline 22-25 Complete (SLABS B9,C9,D9,E9)",Complete,Area B-2,North Areas (Team B -Gridlines 17-33),B2 - Area 9 (Gridlines 21-24),L1 - Fndn Slab,,CONSTRUCTION,,Pour Concrete,ANDREA SOLIS,,2022-10-10 15:00,2022-11-06 17:00,2022-11-04 15:00,2022-12-29 13:00,2025-11-20 17:00,2025-11-20 17:00,2025-06-13 08:00,2025-06-13 08:00,0,232,100
CN.A1.CF.1140,"PH1- CURE SLAB B2 Gridline 22-25 Complete (SLABS B9,C9, D9,E9)",Complete,Area B-2,North Areas (Team B -Gridlines 17-33),B2 - Area 9 (Gridlines 21-24),L1 - Fndn Slab,,CONSTRUCTION,,Concrete Cure,ANDREA SOLIS,,2023-01-01 13:00,2023-01-04 17:00,2023-01-01 13:00,2023-01-03 17:00,2025-11-20 17:00,2025-11-20 17:00,2025-06-13 08:00,2025-06-13 08:00,0,24,100
CN.AB2.ST.1060,PH1-ERECT PRECAST WAFFLES GL 21 - 22 (L3) - B2,Complete,Area B-2,North Areas (Team B -Gridlines 17-33),B2 - Area 9 (Gridlines 21-24),L3 / Waffle Slab Level,,CONSTRUCTION,,FAB Waffle Slabs,SEAN MONK,,2023-05-23 07:00,2023-05-25 13:00,2023-05-23 07:00,2023-05-25 13:00,2025-11-20 17:00,2025-11-20 17:00,2025-11-03 07:00,2025-11-03 07:00,0,16,100
CN.B2.CF.1020,SEQ2-ERECT COLUMNS (36nos) & GIRDERS (16 nos) (E-G-J)- GL22-25 - B2,Complete,Area B-2,North Areas (Team B -Gridlines 17-33),B2 - Area 9 (Gridlines 21-24),L4 - SUP Roof - FAB Roof,,CONSTRUCTION,,"Main Columns C,E,G,J,L & Intermediate H,F",SEAN MONK,,2023-02-20 07:00,2023-02-24 09:00,2023-02-20 07:00,2023-03-09 09:00,2025-11-20 17:00,2025-11-20 17:00,2025-11-03 07:00,2025-11-03 07:00,0,32,100
xN.AB2.ST.1040,PH1-ERECT PRECAST SUBFAB GL 21 - 22 (L2) - B2,Complete,Area B-2,North Areas (Team B -Gridlines 17-33),B2 - Area 9 (Gridlines 21-24),L2 - SubFab Level,,CONSTRUCTION,,FAB Subfab and Parapets,SEAN MONK,,2023-05-25 13:00,2023-05-27 09:00,2023-05-25 13:00,2023-05-27 10:00,2025-11-20 17:00,2025-11-20 17:00,2025-11-03 07:00,2025-11-03 07:00,0,16,100
CN.B2.CF.1030,PH1- ERECT INTERMEDIATE COLUMNS/GIRDERS (H&F) - FAB NORTH- GL22-25 - B2,Complete,Area B-2,North Areas (Team B -Gridlines 17-33),B2 - Area 9 (Gridlines 21-24),L4 - SUP Roof - FAB Roof,,CONSTRUCTION,,"Main Columns C,E,G,J,L & Intermediate H,F",SEAN MONK,,2023-03-06 15:00,2023-03-10 15:00,2023-03-06 15:00,2023-03-10 15:00,2025-11-20 17:00,2025-11-20 17:00,2025-11-03 07:00,2025-11-03 07:00,0,40,100
CN.BB21.ST.1070,PH1- WATERPROOFING - SUBFAB (L2) - B2,Complete,Area B-2,North Areas (Team B -Gridlines 17-33),B2 - Area 9 (Gridlines 21-24),L2 - SubFab Level,,CONSTRUCTION,,Pour Concrete,JAMES LIVELY,,2023-06-19 15:00,2023-06-20 13:00,2023-06-19 15:00,2023-06-20 13:00,2025-11-20 17:00,2025-11-20 17:00,2025-11-03 07:00,2025-11-03 07:00,0,8,100
CN.BB21.ST.1120,PH1- CURBS & MEP SLABS - SUBFAB (L2) - B2,Complete,Area B-2,North Areas (Team B -Gridlines 17-33),B2 - Area 9 (Gridlines 21-24),L2 - SubFab Level,,CONSTRUCTION,,Pour Concrete,JAMES LEE,,2023-06-19 07:00,2023-06-19 15:00,2023-06-19 07:00,2023-06-19 15:00,2025-11-20 17:00,2025-11-20 17:00,2025-11-03 07:00,2025-11-03 07:00,0,8,100
CN.BB21.ST.1130,PH1- WATERPROOFING - SOG (L1) - B2,Complete,Area B-2,North Areas (Team B -Gridlines 17-33),B2 - Area 9 (Gridlines 21-24),L1 - Fndn Slab,,CONSTRUCTION,,Pour Concrete,JAMES LIVELY,,2023-06-23 09:00,2023-06-26 11:00,2023-06-23 09:00,2023-06-27 13:00,2025-11-20 17:00,2025-11-20 17:00,2025-11-03 07:00,2025-11-03 07:00,0,32,100
CN.BB2.ST.1240,PH1- CURBS & MEP SLABS - SOG (L1) -  B2,Complete,Area B-2,North Areas (Team B -Gridlines 17-33),B2 - Area 9 (Gridlines 21-24),L1 - Fndn Slab,,CONSTRUCTION,,Pour Concrete,JAMES LEE,,2023-06-20 13:00,2023-06-23 09:00,2023-06-20 13:00,2023-06-23 09:00,2025-11-20 17:00,2025-11-20 17:00,2025-11-03 07:00,2025-11-03 07:00,0,16,100
CN.BB2.ST.1160,PH1- CURBS & MEP SLABS - ROOF (L4) -  B2,Complete,Area B-2,North Areas (Team B -Gridlines 17-33),B2 - Area 9 (Gridlines 21-24),L4 - SUP Roof - FAB Roof,,CONSTRUCTION,,Pour Concrete,JAMES LEE,SOMD / Roofing / Waterproofing,2023-05-23 15:00,2023-05-25 13:00,2023-05-06 12:00,2023-05-09 17:00,2025-11-20 17:00,2025-11-20 17:00,2025-11-10 07:00,2025-11-10 07:00,0,8,100
CN.B2.ST.1190,STEEL PRE-ASSEMBLE TRUSSES - B2 - 23,Complete,Area B-2,North Areas (Team B -Gridlines 17-33),B2 - Area 9 (Gridlines 21-24),L4 - SUP Roof - FAB Roof,,CONSTRUCTION,,Pre-Assemble Trusses,SEAN MONK,,2023-01-10 07:00,2023-01-17 11:00,2023-01-10 07:00,2023-01-19 13:00,2025-11-20 17:00,2025-11-20 17:00,2025-11-03 07:00,2025-11-03 07:00,0,64,100
xN.AB2.ST.1060,PH1-ERECT STEEL TRUSSES & INFILL - B2 - 23,Complete,Area B-2,North Areas (Team B -Gridlines 17-33),B2 - Area 9 (Gridlines 21-24),L4 - SUP Roof - FAB Roof,,CONSTRUCTION,,"Truss Erect, Infill & Decking",SEAN MONK,,2023-03-09 09:00,2023-03-13 09:00,2023-03-09 09:00,2023-03-14 13:00,2025-11-20 17:00,2025-11-20 17:00,2025-11-03 07:00,2025-11-03 07:00,0,40,100
CN.B2.ST.1200,STEEL PRE-ASSEMBLE TRUSSES - B2 - 24,Complete,Area B-2,North Areas (Team B -Gridlines 17-33),B2 - Area 9 (Gridlines 21-24),L4 - SUP Roof - FAB Roof,,CONSTRUCTION,,Pre-Assemble Trusses,SEAN MONK,,2023-01-17 16:00,2023-01-26 10:00,2023-01-17 16:00,2023-01-27 12:00,2025-11-20 17:00,2025-11-20 17:00,2025-11-03 07:00,2025-11-03 07:00,0,64,100
xN.AB2.ST.1070,PH1-ERECT STEEL TRUSSES & INFILL - B2 - 24,Complete,Area B-2,North Areas (Team B -Gridlines 17-33),B2 - Area 9 (Gridlines 21-24),L4 - SUP Roof - FAB Roof,,CONSTRUCTION,,"Truss Erect, Infill & Decking",SEAN MONK,,2023-03-27 07:00,2023-04-01 15:00,2023-03-27 07:00,2023-04-01 16:00,2025-11-20 17:00,2025-11-20 17:00,2025-11-03 07:00,2025-11-03 07:00,0,48,100
xN.AB2.ST.1080,PH1-WAFFLE EPOXY COATING (1st Coat in Yard) (L3) - B2,Complete,Area B-2,North Areas (Team B -Gridlines 17-33),B2 - Area 9 (Gridlines 21-24),L3 / Waffle Slab Level,,CONSTRUCTION,,TBD Architectural Finishes,AMBER CARO,,2023-02-13 11:35,2023-02-23 11:35,2023-02-13 11:35,2023-02-24 09:00,2025-11-20 17:00,2025-11-20 17:00,2025-06-13 08:00,2025-06-13 08:00,0,80,100
CN.BB21.ST.1080,PH1- TOPPING SLAB - SUBFAB (L2) - B2,Complete,Area B-2,North Areas (Team B -Gridlines 17-33),B2 - Area 9 (Gridlines 21-24),L2 - SubFab Level,,CONSTRUCTION,,TOPPING,CONCRETE,,2023-06-20 13:00,2023-06-23 17:00,2023-06-20 13:00,2023-06-23 17:00,2025-11-20 17:00,2025-11-20 17:00,2025-11-24 07:00,2025-11-24 07:00,0,24,100
CN.BB21.ST.1140,PH1- TOPPING SLAB - SOG (L1) - B2,Complete,Area B-2,North Areas (Team B -Gridlines 17-33),B2 - Area 9 (Gridlines 21-24),L1 - Fndn Slab,,CONSTRUCTION,,TOPPING,CONCRETE,,2023-06-27 13:00,2023-07-01 15:00,2023-06-27 13:00,2023-07-01 16:00,2025-11-20 17:00,2025-11-20 17:00,2025-12-05 17:00,2025-12-05 17:00,0,32,100
xN.AB2.ST.1100,PH1-ERECT PRECAST SUBFAB GL 22 - 23 (L2) - B2,Complete,Area B-2,North Areas (Team B -Gridlines 17-33),B2 - Area 9 (Gridlines 21-24),L2 - SubFab Level,,CONSTRUCTION,,FAB Subfab and Parapets,SEAN MONK,,2023-05-27 10:00,2023-05-28 16:00,2023-05-27 10:00,2023-05-30 17:00,2025-11-20 17:00,2025-11-20 17:00,2025-11-03 07:00,2025-11-03 07:00,0,16,100
xN.AB2.ST.1110,PH1-ERECT PRECAST SUBFAB GL 23 - 24 (L2) - B2,Complete,Area B-2,North Areas (Team B -Gridlines 17-33),B2 - Area 9 (Gridlines 21-24),L2 - SubFab Level,,CONSTRUCTION,,FAB Subfab and Parapets,SEAN MONK,,2023-06-02 07:00,2023-06-03 13:00,2023-06-02 07:00,2023-06-13 13:00,2025-11-20 17:00,2025-11-20 17:00,2025-11-03 07:00,2025-11-03 07:00,0,16,100
CN.AB2.ST.1260,PH1-ERECT PRECAST WAFFLES GL 22 - 23 (L3) - B2,Complete,Area B-2,North Areas (Team B -Gridlines 17-33),B2 - Area 9 (Gridlines 21-24),L3 / Waffle Slab Level,,CONSTRUCTION,,FAB Waffle Slabs,SEAN MONK,,2023-05-25 13:00,2023-05-27 09:00,2023-05-25 13:00,2023-05-27 10:00,2025-11-20 17:00,2025-11-20 17:00,2025-11-03 07:00,2025-11-03 07:00,0,16,100
CN.AB2.ST.1270,PH1-ERECT PRECAST WAFFLES GL 23 - 24 (L3) - B2,Complete,Area B-2,North Areas (Team B -Gridlines 17-33),B2 - Area 9 (Gridlines 21-24),L3 / Waffle Slab Level,,CONSTRUCTION,,FAB Waffle Slabs,SEAN MONK,,2023-05-27 10:00,2023-05-28 16:00,2023-05-27 10:00,2023-06-09 13:00,2025-11-20 17:00,2025-11-20 17:00,2025-11-03 07:00,2025-11-03 07:00,0,16,100
xN.AB2.ST.1120,PH1-ERECT ROOF DECKING GL 22 - 23 - B2,Complete,Area B-2,North Areas (Team B -Gridlines 17-33),B2 - Area 9 (Gridlines 21-24),L4 - SUP Roof - FAB Roof,,CONSTRUCTION,,Decking & Detail,SEAN MONK,SOMD / Roofing / Waterproofing,2023-04-13 11:00,2023-04-16 13:00,2023-04-10 11:00,2023-04-11 15:00,2025-11-20 17:00,2025-11-20 17:00,2025-11-03 07:00,2025-11-03 07:00,0,32,100
xN.AB2.ST.1130,PH1-ERECT ROOF DECKING GL 23 - 24 - B2,Complete,Area B-2,North Areas (Team B -Gridlines 17-33),B2 - Area 9 (Gridlines 21-24),L4 - SUP Roof - FAB Roof,,CONSTRUCTION,,Decking & Detail,SEAN MONK,SOMD / Roofing / Waterproofing,2023-04-17 11:00,2023-04-22 11:00,2023-04-11 11:00,2023-04-14 11:00,2025-11-20 17:00,2025-11-20 17:00,2025-11-03 07:00,2025-11-03 07:00,0,40,100
CN.AB1.ST.1450,PH1- FIRE PROOFING TOUCH UP PRIME - SFRM STEEL COLUMNS / TRUSS WEB / TOP CORD - B2 - GL 21-24 - L3,Complete,Area B-2,South Areas (Team A - Gridlines 3-17),B2 - Area 9 (Gridlines 21-24),L3 / Waffle Slab Level,,CONSTRUCTION,ROLLING PLAINS,Fireproofing,AMBER CARO,,2024-07-26 07:00,2024-08-02 17:00,2024-06-18 07:00,2024-06-22 17:00,2025-11-20 17:00,2025-11-20 17:00,2025-12-05 17:00,2025-12-05 17:00,0,60,100
CN.AB1.ST.1460,PH1- FIRE PROOFING - INTUMSCENT PAINT / EPOXY BOTTOM CORD (L3) - B2 GL 21-24,Complete,Area B-2,South Areas (Team A - Gridlines 3-17),B2 - Area 9 (Gridlines 21-24),L3 / Waffle Slab Level,,CONSTRUCTION,,FAB Waffle Slabs,AMBER CARO,,2023-07-03 07:00,2023-07-10 13:00,2023-07-03 07:00,2023-09-28 17:00,2025-11-20 17:00,2025-11-20 17:00,2025-12-05 17:00,2025-12-05 17:00,0,56,100
CN.AB1.ST.1740,FRP - RAKER TOPPING SLAB - WAFFLE (L3) - B2,Complete,Area B-2,South Areas (Team A - Gridlines 3-17),B2 - Area 9 (Gridlines 21-24),L3 / Waffle Slab Level,,CONSTRUCTION,,TOPPING,CONCRETE,,2023-06-24 08:00,2023-06-29 10:00,2023-06-24 08:00,2023-06-30 11:00,2025-11-20 17:00,2025-11-20 17:00,2025-11-24 07:00,2025-11-24 07:00,0,42,100
CN.AB1.ST.1730,SECAI - INSTALL MEP ANCHOR - WAFFLE (L3) - B2,Complete,Area B-2,South Areas (Team A - Gridlines 3-17),B2 - Area 9 (Gridlines 21-24),L3 / Waffle Slab Level,,CONSTRUCTION,,Pour Concrete,JAMES LEE,,2023-06-19 07:00,2023-06-23 17:00,2023-06-19 07:00,2023-06-23 17:00,2025-11-20 17:00,2025-11-20 17:00,2025-11-24 07:00,2025-11-24 07:00,0,40,100
CN.AB1.ST.1750,SECAI - DRILL & PLUG POSTS FOR RAF - WAFFLE (L3) - B2,Complete,Area B-2,South Areas (Team A - Gridlines 3-17),B2 - Area 9 (Gridlines 21-24),L3 / Waffle Slab Level,,CONSTRUCTION,,Pour Concrete,JAMES LEE,,2023-06-30 11:00,2023-07-06 11:00,2023-06-30 11:00,2023-07-07 11:00,2025-11-20 17:00,2025-11-20 17:00,2025-11-24 07:00,2025-11-24 07:00,0,40,100
CN.AB1.ST.1760,SECAI - INSTALL UPPER CEILING - TRUSS - B2 - GL 21-24 - L3,Complete,Area B-2,South Areas (Team A - Gridlines 3-17),B2 - Area 9 (Gridlines 21-24),L3 / Waffle Slab Level,,CONSTRUCTION,SECAI,Pour Concrete,JAMES LEE,,2024-03-04 07:00,2024-03-08 17:00,2024-03-04 07:00,2024-07-31 17:00,2025-11-20 17:00,2025-11-20 17:00,2025-12-05 17:00,2025-12-05 17:00,0,50,100
CN.AB1.5140,METAL STUD FRAMING DRYWALL (2hr) - BUNKER RM 12-14,Complete,Area B-2,East Support Building,B2 - Area 9 (Gridlines 21-24),L1 - Fndn Slab,BUNKER ROOM,CONSTRUCTION,BERG,DRYWALL,AMBER CARO,INTERIORS,2023-08-17 07:00,2023-08-24 11:00,2023-08-17 07:00,2023-08-25 13:00,2025-11-20 17:00,2025-11-20 17:00,2025-12-05 17:00,2025-12-05 17:00,0,64,100
CN.AB1.5150,TAPE & FLOAT - BUNKER RM 12-14,Complete,Area B-2,East Support Building,B2 - Area 9 (Gridlines 21-24),L1 - Fndn Slab,BUNKER ROOM,CONSTRUCTION,,TBD Architectural Finishes,AMBER CARO,INTERIORS,2023-08-25 13:00,2023-09-01 17:00,2023-08-25 13:00,2023-09-05 11:00,2025-11-20 17:00,2025-11-20 17:00,2025-12-05 17:00,2025-12-05 17:00,0,64,100
CN.AB1.ST.1820,FRP - RAKER TOPPING SLAB WEST - WAFFLE (L3) - B2,Complete,Area B-2,South Areas (Team A - Gridlines 3-17),B2 - Area 9 (Gridlines 21-24),L3 / Waffle Slab Level,,CONSTRUCTION,,TOPPING,CONCRETE,,2023-07-31 07:00,2023-08-03 17:00,2023-07-31 07:00,2023-08-03 17:00,2025-11-20 17:00,2025-11-20 17:00,2025-11-24 07:00,2025-11-24 07:00,0,40,100
A1480,MEP EQUIPMENT LOADING BY SECAI,Complete,Area B-2,,B2 - Area 9 (Gridlines 21-24),L1 - Fndn Slab,BUNKER ROOM,CONSTRUCTION,SECAI,TBD Architectural Finishes,,,2023-11-20 07:00,2024-01-31 11:00,2023-11-13 07:00,2024-05-03 17:00,2025-11-20 17:00,2025-11-20 17:00,2025-12-05 17:00,2025-12-05 17:00,0,424,100
A1470,METAL STUD FRAMING DRYWALL AND FINISHES - CLOSING THE OPENING,Complete,Area B-2,,B2 - Area 9 (Gridlines 21-24),L1 - Fndn Slab,BUNKER ROOM,CONSTRUCTION,BERG,DRYWALL,,,2024-05-06 07:00,2024-05-13 17:00,2024-05-06 07:00,2024-05-10 17:00,2025-11-20 17:00,2025-11-20 17:00,2025-12-05 17:00,2025-12-05 17:00,0,50,100
CN.AB1.ST.1930,COLUMN WRAP FRAMING AND DRYWALL - G LINE - UPTO 8 FEET - B2 - GL 21-24 - L3,Complete,Area B-2,,B2 - Area 9 (Gridlines 21-24),L3 / Waffle Slab Level,,CONSTRUCTION,BERG,DRYWALL,,,2025-10-31 07:00,2025-11-06 17:00,2024-01-22 07:00,2025-03-07 17:00,2025-11-20 17:00,2025-11-20 17:00,2025-12-05 17:00,2025-12-05 17:00,0,50,100
CN.AB3.ST.1910,INSTALL ACCESS FLOORS  (BY SECAI) - B2 - GL 21-24 - L3,Complete,Area B-2,,B2 - Area 9 (Gridlines 21-24),L3 / Waffle Slab Level,,CONSTRUCTION,SECAI,DRYWALL,,,2024-07-22 07:00,2024-07-26 17:00,2024-06-15 07:00,2024-06-17 17:00,2025-11-20 17:00,2025-11-20 17:00,2025-12-05 17:00,2025-12-05 17:00,0,50,100
CN.AB3.ST.1920,COLUMN WRAP FRAMING AND DRYWALL - G LINE - ABOVE 8 FEET - B2 - GL 21-24 - L3,Complete,Area B-2,,B2 - Area 9 (Gridlines 21-24),L3 / Waffle Slab Level,,CONSTRUCTION,BERG,DRYWALL,,,2025-10-24 07:00,2025-10-30 17:00,2024-01-22 07:00,2025-03-07 17:00,2025-11-20 17:00,2025-11-20 17:00,2025-12-05 17:00,2025-12-05 17:00,0,50,100
CN.B3.ST.1210,STEEL PRE-ASSEMBLE TRUSSES - B3 - 25,Complete,Area B-3,North Areas (Team B -Gridlines 17-33),B3 - Area 10 (Gridlines 24-27),L4 - SUP Roof - FAB Roof,,CONSTRUCTION,,Pre-Assemble Trusses,SEAN MONK,,2023-01-31 07:00,2023-02-07 11:00,2023-01-26 07:00,2023-02-04 16:00,2025-11-20 17:00,2025-11-20 17:00,2025-11-03 07:00,2025-11-03 07:00,0,64,100
xN.AB3.ST.1000,PH1-ERECT STEEL TRUSSES & INFILL - B3 - 25,Complete,Area B-3,North Areas (Team B -Gridlines 17-33),B3 - Area 10 (Gridlines 24-27),L4 - SUP Roof - FAB Roof,,CONSTRUCTION,,"Truss Erect, Infill & Decking",SEAN MONK,,2023-03-21 13:00,2023-03-25 17:00,2023-03-21 13:00,2023-03-27 09:00,2025-11-20 17:00,2025-11-20 17:00,2025-11-03 07:00,2025-11-03 07:00,0,44,100
xN.AB3.ST.1010,PH1-ERECT ROOF DECKING GL 24 - 25 - B3,Complete,Area B-3,North Areas (Team B -Gridlines 17-33),B3 - Area 10 (Gridlines 24-27),L4 - SUP Roof - FAB Roof,,CONSTRUCTION,,Decking & Detail,SEAN MONK,SOMD / Roofing / Waterproofing,2023-04-24 15:00,2023-04-29 15:00,2023-04-25 07:00,2023-05-04 17:00,2025-11-20 17:00,2025-11-20 17:00,2025-11-03 07:00,2025-11-03 07:00,0,40,100
xN.AB3.ST.1020,PH1-ERECT ROOFING - B3,Complete,Area B-3,North Areas (Team B -Gridlines 17-33),B3 - Area 10 (Gridlines 24-27),L4 - SUP Roof - FAB Roof,,CONSTRUCTION,,Roofing,JAMES LIVELY,SOMD / Roofing / Waterproofing,2023-07-28 15:00,2023-08-07 11:00,2023-07-14 15:00,2023-07-21 15:00,2025-11-20 17:00,2025-11-20 17:00,2025-11-10 07:00,2025-11-10 07:00,0,96,100
xN.AB3.ST.1050,PH1- FRP SLAB ROOF - B3 GL 25 - 27,Complete,Area B-3,North Areas (Team B -Gridlines 17-33),B3 - Area 10 (Gridlines 24-27),L4 - SUP Roof - FAB Roof,,CONSTRUCTION,,SOMD,CONCRETE,SOMD / Roofing / Waterproofing,2023-05-30 09:00,2023-06-10 09:00,2023-05-30 09:00,2023-06-05 11:00,2025-11-20 17:00,2025-11-20 17:00,2025-11-10 07:00,2025-11-10 07:00,0,80,100
CN.A1.CF.1150,"PH1- SLAB B3 (B10, C10, D10, E10)",Complete,Area B-3,North Areas (Team B -Gridlines 17-33),B3 - Area 10 (Gridlines 24-27),L1 - Fndn Slab,,CONSTRUCTION,,Pour Concrete,JAMES LEE,,2023-01-31 07:00,2023-02-09 09:00,2023-01-27 07:00,2023-02-18 16:00,2025-11-20 17:00,2025-11-20 17:00,2025-11-03 07:00,2025-11-03 07:00,0,82,100
CN.A1.CF.1160,PH1- CURE SLAB B3 (Gridline 25-28 Complete),Complete,Area B-3,North Areas (Team B -Gridlines 17-33),B3 - Area 10 (Gridlines 24-27),L1 - Fndn Slab,,CONSTRUCTION,,Concrete Cure,JAMES LEE,,2023-02-20 07:00,2023-02-26 13:00,2023-02-07 07:00,2023-02-19 12:00,2025-11-20 17:00,2025-11-20 17:00,2025-11-03 07:00,2025-11-03 07:00,0,56,100
CN.AB3.ST.1060,PH1-ERECT PRECAST WAFFLES GL 24 - 25 (L3) - B3,Complete,Area B-3,North Areas (Team B -Gridlines 17-33),B3 - Area 10 (Gridlines 24-27),L3 / Waffle Slab Level,,CONSTRUCTION,,FAB Waffle Slabs,SEAN MONK,,2023-06-12 07:00,2023-06-15 11:00,2023-06-09 07:00,2023-06-12 07:00,2025-11-20 17:00,2025-11-20 17:00,2025-11-03 07:00,2025-11-03 07:00,0,24,100
CN.B3.CF.1020,SEQ3-ERECT COLUMNS (36nos) & GIRDERS (16 nos) (E-G-J)- GL25-28 - B3,Complete,Area B-3,North Areas (Team B -Gridlines 17-33),B3 - Area 10 (Gridlines 24-27),L4 - SUP Roof - FAB Roof,,CONSTRUCTION,,"Main Columns C,E,G,J,L & Intermediate H,F",SEAN MONK,,2023-03-09 09:00,2023-03-13 09:00,2023-03-09 09:00,2023-03-14 13:00,2025-11-20 17:00,2025-11-20 17:00,2025-11-03 07:00,2025-11-03 07:00,0,40,100
xN.AB3.ST.1040,PH1-ERECT PRECAST SUBFAB GL 24 - 25 (L2) - B3,Complete,Area B-3,North Areas (Team B -Gridlines 17-33),B3 - Area 10 (Gridlines 24-27),L2 - SubFab Level,,CONSTRUCTION,,FAB Subfab and Parapets,SEAN MONK,,2023-06-15 11:00,2023-06-16 17:00,2023-06-12 11:00,2023-06-12 17:00,2025-11-20 17:00,2025-11-20 17:00,2025-11-03 07:00,2025-11-03 07:00,0,16,100
CN.B3.CF.1030,PH1- ERECT INTERMEDIATE COLUMNS/GIRDERS (H&F) - FAB NORTH- GL25-28 - B3,Complete,Area B-3,North Areas (Team B -Gridlines 17-33),B3 - Area 10 (Gridlines 24-27),L4 - SUP Roof - FAB Roof,,CONSTRUCTION,,"Main Columns C,E,G,J,L & Intermediate H,F",SEAN MONK,,2023-03-27 07:00,2023-03-31 17:00,2023-03-27 07:00,2023-03-31 17:00,2025-11-20 17:00,2025-11-20 17:00,2025-11-03 07:00,2025-11-03 07:00,0,40,100
CN.BB31.ST.1070,PH1- WATERPROOFING - SUBFAB (L2) - B3,Complete,Area B-3,North Areas (Team B -Gridlines 17-33),B3 - Area 10 (Gridlines 24-27),L2 - SubFab Level,,CONSTRUCTION,,Pour Concrete,JAMES LIVELY,,2023-07-06 13:00,2023-07-09 15:00,2023-07-06 13:00,2023-07-10 17:00,2025-11-20 17:00,2025-11-20 17:00,2025-11-03 07:00,2025-11-03 07:00,0,32,100
CN.BB31.ST.1120,PH1- CURBS & MEP SLABS - SUBFAB (L2) - B3,Complete,Area B-3,North Areas (Team B -Gridlines 17-33),B3 - Area 10 (Gridlines 24-27),L2 - SubFab Level,,CONSTRUCTION,,Pour Concrete,JAMES LEE,,2023-07-03 07:00,2023-07-06 13:00,2023-07-03 07:00,2023-07-06 13:00,2025-11-20 17:00,2025-11-20 17:00,2025-11-03 07:00,2025-11-03 07:00,0,16,100
CN.BB31.ST.1130,PH1- WATERPROOFING - SOG (L1) - B3,Complete,Area B-3,North Areas (Team B -Gridlines 17-33),B3 - Area 10 (Gridlines 24-27),L1 - Fndn Slab,,CONSTRUCTION,,Pour Concrete,JAMES LIVELY,,2023-06-30 09:00,2023-07-03 11:00,2023-06-30 09:00,2023-07-03 17:00,2025-11-20 17:00,2025-11-20 17:00,2025-11-03 07:00,2025-11-03 07:00,0,32,100
CN.BB3.ST.1240,PH1- CURBS & MEP SLABS - SOG (L1) -  B3,Complete,Area B-3,North Areas (Team B -Gridlines 17-33),B3 - Area 10 (Gridlines 24-27),L1 - Fndn Slab,,CONSTRUCTION,,Pour Concrete,JAMES LEE,,2023-06-27 13:00,2023-06-30 09:00,2023-06-27 13:00,2023-06-30 09:00,2025-11-20 17:00,2025-11-20 17:00,2025-11-03 07:00,2025-11-03 07:00,0,16,100
CN.BB3.ST.1160,PH1- CURBS & MEP SLABS - ROOF (L4) -  B3,Complete,Area B-3,North Areas (Team B -Gridlines 17-33),B3 - Area 10 (Gridlines 24-27),L4 - SUP Roof - FAB Roof,,CONSTRUCTION,,Pour Concrete,JAMES LEE,SOMD / Roofing / Waterproofing,2023-06-15 11:00,2023-06-16 09:00,2023-06-03 11:00,2023-06-04 09:00,2025-11-20 17:00,2025-11-20 17:00,2025-11-10 07:00,2025-11-10 07:00,0,8,100
CN.AB3.ST.1180,PH1-WAFFLE COATING (Bottom and Top) (L2&3) - B3 GL 22-26,Complete,Area B-3,North Areas (Team B -Gridlines 17-33),B1 - Area 8 (Gridlines 18-21),L2 - SubFab Level,,CONSTRUCTION,,TBD Architectural Finishes,AMBER CARO,,2024-02-22 15:00,2024-02-23 13:00,2023-06-12 15:00,2023-06-24 13:00,2025-11-20 17:00,2025-11-20 17:00,2025-12-05 17:00,2025-12-05 17:00,0,8,100
CN.B3.ST.1220,STEEL PRE-ASSEMBLE TRUSSES - B3 - 26,Complete,Area B-3,North Areas (Team B -Gridlines 17-33),B3 - Area 10 (Gridlines 24-27),L4 - SUP Roof - FAB Roof,,CONSTRUCTION,,Pre-Assemble Trusses,SEAN MONK,,2023-02-27 07:00,2023-03-06 11:00,2023-02-27 07:00,2023-03-07 13:00,2025-11-20 17:00,2025-11-20 17:00,2025-11-03 07:00,2025-11-03 07:00,0,64,100
xN.AB3.ST.1060,PH1-ERECT STEEL TRUSSES & INFILL - B3 - 26,Complete,Area B-3,North Areas (Team B -Gridlines 17-33),B3 - Area 10 (Gridlines 24-27),L4 - SUP Roof - FAB Roof,,CONSTRUCTION,,"Truss Erect, Infill & Decking",SEAN MONK,,2023-04-03 07:00,2023-04-08 11:00,2023-04-03 07:00,2023-04-08 12:00,2025-11-20 17:00,2025-11-20 17:00,2025-11-03 07:00,2025-11-03 07:00,0,44,100
CN.B3.ST.1230,STEEL PRE-ASSEMBLE TRUSSES - B3 - 27,Complete,Area B-3,North Areas (Team B -Gridlines 17-33),B3 - Area 10 (Gridlines 24-27),L4 - SUP Roof - FAB Roof,,CONSTRUCTION,,Pre-Assemble Trusses,SEAN MONK,,2023-02-27 07:00,2023-03-06 11:00,2023-02-27 07:00,2023-03-07 13:00,2025-11-20 17:00,2025-11-20 17:00,2025-11-03 07:00,2025-11-03 07:00,0,64,100
xN.AB3.ST.1070,PH1-ERECT STEEL TRUSSES & INFILL - B3 - 27,Complete,Area B-3,North Areas (Team B -Gridlines 17-33),B3 - Area 10 (Gridlines 24-27),L4 - SUP Roof - FAB Roof,,CONSTRUCTION,,"Truss Erect, Infill & Decking",SEAN MONK,,2023-04-03 07:00,2023-04-08 11:00,2023-04-03 07:00,2023-04-08 12:00,2025-11-20 17:00,2025-11-20 17:00,2025-11-03 07:00,2025-11-03 07:00,0,44,100
xN.AB3.ST.1080,PH1-WAFFLE EPOXY COATING (1st Coat in Yard) (L3) - B3,Complete,Area B-3,North Areas (Team B -Gridlines 17-33),B3 - Area 10 (Gridlines 24-27),L3 / Waffle Slab Level,,CONSTRUCTION,,TBD Architectural Finishes,AMBER CARO,,2023-02-24 09:00,2023-03-05 09:00,2023-02-24 09:00,2023-03-06 15:00,2025-11-20 17:00,2025-11-20 17:00,2025-06-13 08:00,2025-06-13 08:00,0,80,100
CN.BB31.ST.1080,PH1- TOPPING SLAB - SUBFAB (L2) - B3,Complete,Area B-3,North Areas (Team B -Gridlines 17-33),B3 - Area 10 (Gridlines 24-27),L2 - SubFab Level,,CONSTRUCTION,,TOPPING,CONCRETE,,2023-07-06 13:00,2023-07-11 11:00,2023-07-06 13:00,2023-07-10 13:00,2025-11-20 17:00,2025-11-20 17:00,2025-11-24 07:00,2025-11-24 07:00,0,48,100
CN.BB31.ST.1140,PH1- TOPPING SLAB - SOG (L1) - B3,Complete,Area B-3,North Areas (Team B -Gridlines 17-33),B3 - Area 10 (Gridlines 24-27),L1 - Fndn Slab,,CONSTRUCTION,,TOPPING,CONCRETE,,2023-07-11 15:00,2023-07-16 13:00,2023-07-05 15:00,2023-07-13 15:00,2025-11-20 17:00,2025-11-20 17:00,2025-12-05 17:00,2025-12-05 17:00,0,48,100
CN.BB31.ST.1150,PH1-SEALER DDENSIFIER - SOG (L1) - B3,Complete,Area B-3,North Areas (Team B -Gridlines 17-33),B3 - Area 10 (Gridlines 24-27),L1 - Fndn Slab,,CONSTRUCTION,,Pour Concrete,AMBER CARO,,2023-08-12 14:00,2023-08-15 16:00,2023-08-12 14:00,2023-08-16 17:00,2025-11-20 17:00,2025-11-20 17:00,2025-12-05 17:00,2025-12-05 17:00,0,32,100
xN.AB2.ST.1090,PH1-FRP SLAB ROOF - B2 GL 23 - 25,Complete,Area B-3,North Areas (Team B -Gridlines 17-33),B3 - Area 10 (Gridlines 24-27),L4 - SUP Roof - FAB Roof,,CONSTRUCTION,,SOMD,JAMES LEE,SOMD / Roofing / Waterproofing,2023-05-01 07:00,2023-05-05 17:00,2023-05-01 07:00,2023-05-05 17:00,2025-11-20 17:00,2025-11-20 17:00,2025-11-10 07:00,2025-11-10 07:00,0,40,100
xN.AB3.ST.1090,PH1-ERECT PRECAST SUBFAB GL 25 - 26 (L2) - B3,Complete,Area B-3,North Areas (Team B -Gridlines 17-33),B3 - Area 10 (Gridlines 24-27),L2 - SubFab Level,,CONSTRUCTION,,FAB Subfab and Parapets,SEAN MONK,,2023-06-17 08:00,2023-06-18 14:00,2023-06-14 08:00,2023-06-16 15:00,2025-11-20 17:00,2025-11-20 17:00,2025-11-03 07:00,2025-11-03 07:00,0,16,100
xN.AB3.ST.1100,PH1-ERECT PRECAST SUBFAB GL 26 - 27 (L2) - B3,Complete,Area B-3,North Areas (Team B -Gridlines 17-33),B3 - Area 10 (Gridlines 24-27),L2 - SubFab Level,,CONSTRUCTION,,FAB Subfab and Parapets,SEAN MONK,,2023-06-19 15:00,2023-06-22 11:00,2023-06-19 15:00,2023-06-24 16:00,2025-11-20 17:00,2025-11-20 17:00,2025-11-03 07:00,2025-11-03 07:00,0,16,100
CN.AB3.ST.1260,PH1-ERECT PRECAST WAFFLES GL 25 - 26 (L3) - B3,Complete,Area B-3,North Areas (Team B -Gridlines 17-33),B3 - Area 10 (Gridlines 24-27),L3 / Waffle Slab Level,,CONSTRUCTION,,FAB Waffle Slabs,SEAN MONK,,2023-06-15 11:00,2023-06-16 17:00,2023-06-12 11:00,2023-06-14 17:00,2025-11-20 17:00,2025-11-20 17:00,2025-11-03 07:00,2025-11-03 07:00,0,16,100
CN.AB3.ST.1270,PH1-ERECT PRECAST WAFFLES GL 26 - 27 (L3) - B3,Complete,Area B-3,North Areas (Team B -Gridlines 17-33),B3 - Area 10 (Gridlines 24-27),L3 / Waffle Slab Level,,CONSTRUCTION,,FAB Waffle Slabs,SEAN MONK,,2023-07-03 07:00,2023-07-06 13:00,2023-06-16 07:00,2023-06-20 07:00,2025-11-20 17:00,2025-11-20 17:00,2025-11-03 07:00,2025-11-03 07:00,0,16,100
xN.AB3.ST.1110,PH1-ERECT ROOF DECKING GL 25 - 26 - B3,Complete,Area B-3,North Areas (Team B -Gridlines 17-33),B3 - Area 10 (Gridlines 24-27),L4 - SUP Roof - FAB Roof,,CONSTRUCTION,,Decking & Detail,SEAN MONK,SOMD / Roofing / Waterproofing,2023-05-23 07:00,2023-05-27 17:00,2023-05-08 07:00,2023-05-12 15:00,2025-11-20 17:00,2025-11-20 17:00,2025-11-03 07:00,2025-11-03 07:00,0,40,100
xN.AB3.ST.1120,PH1-ERECT ROOF DECKING GL 26 - 27 - B3,Complete,Area B-3,North Areas (Team B -Gridlines 17-33),B3 - Area 10 (Gridlines 24-27),L4 - SUP Roof - FAB Roof,,CONSTRUCTION,,Decking & Detail,SEAN MONK,SOMD / Roofing / Waterproofing,2023-05-23 07:00,2023-05-27 17:00,2023-05-23 07:00,2023-05-30 09:00,2025-11-20 17:00,2025-11-20 17:00,2025-11-03 07:00,2025-11-03 07:00,0,40,100
CN.AB1.ST.1480,PH1- FIRE PROOFING TOUCH UP PRIME - SFRM STEEL COLUMNS / TRUSS WEB / TOP CORD - B3 - GL 24-27 - L3,Complete,Area B-3,South Areas (Team A - Gridlines 3-17),B3 - Area 10 (Gridlines 24-27),L3 / Waffle Slab Level,,CONSTRUCTION,ROLLING PLAINS,Fireproofing,AMBER CARO,,2024-07-09 07:00,2024-07-17 17:00,2024-07-05 07:00,2024-07-12 17:00,2025-11-20 17:00,2025-11-20 17:00,2025-12-05 17:00,2025-12-05 17:00,0,60,100
CN.AB1.ST.1810,PH1- FIRE PROOFING - INTUMSCENT PAINT / EPOXY BOTTOM CORD (L3) - B3 GL 24-27,Complete,Area B-3,South Areas (Team A - Gridlines 3-17),B3 - Area 10 (Gridlines 24-27),L3 / Waffle Slab Level,,CONSTRUCTION,,FAB Waffle Slabs,AMBER CARO,,2023-07-11 15:00,2023-07-17 11:00,2023-07-11 15:00,2023-09-23 16:00,2025-11-20 17:00,2025-11-20 17:00,2025-12-05 17:00,2025-12-05 17:00,0,56,100
CN.AB3.ST.1820,FRP - RAKER TOPPING SLAB - WAFFLE (L3) - B3,Complete,Area B-3,South Areas (Team A - Gridlines 3-17),B3 - Area 10 (Gridlines 24-27),L3 / Waffle Slab Level,,CONSTRUCTION,,TOPPING,CONCRETE,,2023-08-04 07:00,2023-08-08 09:00,2023-08-04 07:00,2023-08-10 11:00,2025-11-20 17:00,2025-11-20 17:00,2025-11-24 07:00,2025-11-24 07:00,0,42,100
CN.AB1.5170,METAL STUD FRAMING DRYWALL (2hr) - IO RM 3 & 4 GL 24-27(12' Header left out for SECAI MEP),Complete,Area B-3,East Support Building,B3 - Area 10 (Gridlines 24-27),L1 - Fndn Slab,BUNKER ROOM,CONSTRUCTION,BERG,DRYWALL,AMBER CARO,INTERIORS,2023-08-17 07:00,2023-08-21 15:00,2023-08-17 07:00,2023-08-28 11:00,2025-11-20 17:00,2025-11-20 17:00,2025-12-05 17:00,2025-12-05 17:00,0,48,100
CN.AB1.5180,TAPE & FLOAT - IO RM 3 & 4 GL 24-27,Complete,Area B-3,East Support Building,B3 - Area 10 (Gridlines 24-27),L1 - Fndn Slab,BUNKER ROOM,CONSTRUCTION,,DRYWALL,AMBER CARO,INTERIORS,2023-08-24 07:00,2023-08-28 15:00,2023-08-19 07:00,2023-08-25 17:00,2025-11-20 17:00,2025-11-20 17:00,2025-12-05 17:00,2025-12-05 17:00,0,48,100
CN.AB1.5190,REMAINING 2ND LAYER DRYWALL - IO RM 3&4 - B3 - GL 24-27 - L1,Complete,Area B-3,East Support Building,B3 - Area 10 (Gridlines 24-27),L1 - Fndn Slab,BUNKER ROOM,CONSTRUCTION,FINISH PAINT,DRYWALL,AMBER CARO,INTERIORS,2024-11-21 07:00,2024-11-22 17:00,2024-11-21 07:00,2024-11-25 17:00,2025-11-20 17:00,2025-11-20 17:00,2025-12-05 17:00,2025-12-05 17:00,0,20,100
A1500,MEP EQUIPMENT LOADING BY SECAI,Complete,Area B-3,,B3 - Area 10 (Gridlines 24-27),L1 - Fndn Slab,BUNKER ROOM,CONSTRUCTION,SECAI,DRYWALL,,,2024-02-05 07:00,2024-04-01 15:00,2023-11-13 07:00,2024-05-04 17:00,2025-11-20 17:00,2025-11-20 17:00,2025-12-05 17:00,2025-12-05 17:00,0,368,100
A1490,METAL STUD FRAMING DRYWALL AND FINISHES - CLOSING THE OPENING,Complete,Area B-3,,B3 - Area 10 (Gridlines 24-27),L1 - Fndn Slab,BUNKER ROOM,CONSTRUCTION,BERG,DRYWALL,,,2024-05-06 07:00,2024-05-13 17:00,2024-05-06 07:00,2024-05-10 17:00,2025-11-20 17:00,2025-11-20 17:00,2025-12-05 17:00,2025-12-05 17:00,0,50,100
CN.AB1.ST.1940,COLUMN WRAP FRAMING AND DRYWALL - F LINE - UPTO 8 FEET,Complete,Area B-3,,B3 - Area 10 (Gridlines 24-27),L3 / Waffle Slab Level,,CONSTRUCTION,,DRYWALL,,,2024-01-22 07:00,2024-01-25 17:00,2024-01-15 07:00,2024-01-19 17:00,2025-11-20 17:00,2025-11-20 17:00,2025-12-05 17:00,2025-12-05 17:00,0,40,100
CN.AB3.ST.1930,INSTALL ACCESS FLOORS  (BY SECAI) - B3 - GL 23-27 - L3,Complete,Area B-3,,B3 - Area 10 (Gridlines 24-27),L3 / Waffle Slab Level,,CONSTRUCTION,SECAI,DRYWALL,,,2024-07-01 07:00,2024-07-09 17:00,2024-06-25 07:00,2024-07-04 17:00,2025-11-20 17:00,2025-11-20 17:00,2025-12-05 17:00,2025-12-05 17:00,0,50,100
CN.AB3.ST.1940,COLUMN WRAP FRAMING AND DRYWALL - G LINE - UPTO 8 FEET - B3 - GL 23-27 - L3,Complete,Area B-3,,B3 - Area 10 (Gridlines 24-27),L3 / Waffle Slab Level,,CONSTRUCTION,BERG,DRYWALL,,,2025-10-24 07:00,2025-10-30 17:00,2024-01-22 07:00,2025-03-07 17:00,2025-11-20 17:00,2025-11-20 17:00,2025-12-05 17:00,2025-12-05 17:00,0,50,100
CN.AB3.ST.2230,IMPACT - SECAI EUV EQUIPMENT INSTALL - B3 - GL 26-33 - L3,Complete,Area B-3,,B3 - Area 10 (Gridlines 24-27),L3 / Waffle Slab Level,,CONSTRUCTION,SECAI,DRYWALL,,,2025-05-02 07:00,2025-05-02 07:00,2025-05-02 07:00,2025-05-02 07:00,2025-11-20 17:00,2025-11-20 17:00,2025-12-05 17:00,2025-12-05 17:00,0,0,100
CN.AB3.ST.2260,PH1-WAFFLE RAKER COATING - (L2&3) - B3 GL 18-26 WEST (R2W),Complete,Area B-3,North Areas (Team B -Gridlines 17-33),B1 - Area 8 (Gridlines 18-21),L2 - SubFab Level,,CONSTRUCTION,,TBD Architectural Finishes,AMBER CARO,,2024-03-11 07:00,2024-03-29 16:00,2024-03-08 07:00,2024-04-06 17:00,2025-11-20 17:00,2025-11-20 17:00,2025-12-05 17:00,2025-12-05 17:00,0,109,100
CN.AB3.ST.2270,PH1-WAFFLE RAKER COATING - (L2&3) - B3 GL 18-26 EAST (R2E),Complete,Area B-3,North Areas (Team B -Gridlines 17-33),B1 - Area 8 (Gridlines 18-21),L2 - SubFab Level,,CONSTRUCTION,CHERRY COATING,TBD Architectural Finishes,AMBER CARO,,2024-03-11 07:00,2024-04-05 17:00,2024-03-09 07:00,2024-06-11 17:00,2025-11-20 17:00,2025-11-20 17:00,2025-12-05 17:00,2025-12-05 17:00,0,160,100
CN.AB1.ST.2070,COLUMN WRAP FRAMING AND DRYWALL - F LINE - ABOVE 8 FEET - B3 - GL 23-27 - L3,Complete,Area B-3,,B3 - Area 10 (Gridlines 24-27),L3 / Waffle Slab Level,,CONSTRUCTION,BERG,DRYWALL,,,2025-11-07 07:00,2025-11-12 17:00,2024-01-22 07:00,2025-03-07 17:00,2025-11-20 17:00,2025-11-20 17:00,2025-12-05 17:00,2025-12-05 17:00,0,40,100
CN.AB3.ST.2280,COLUMN WRAP FRAMING AND DRYWALL - G LINE - ABOVE 8 FEET - B3 - GL 23-27 - L3,Complete,Area B-3,,B3 - Area 10 (Gridlines 24-27),L3 / Waffle Slab Level,,CONSTRUCTION,BERG,DRYWALL,,,2025-10-24 07:00,2025-10-30 17:00,2024-01-22 07:00,2025-03-07 17:00,2025-11-20 17:00,2025-11-20 17:00,2025-12-05 17:00,2025-12-05 17:00,0,50,100
CN.BB31.ST.1160,COLUMNS - GRINDING (P1B) - L2 - GL 26-24 / E.3 - G-E,Complete,Area B-3,North Areas (Team B -Gridlines 17-33),B3 - Area 10 (Gridlines 24-27),L2 - SubFab Level,,CONSTRUCTION,,TBD Architectural Finishes,AMBER CARO,,2024-02-05 07:00,2024-02-16 14:00,2024-01-26 07:00,2024-01-30 09:00,2025-11-20 17:00,2025-11-20 17:00,2025-11-24 07:00,2025-11-24 07:00,0,107,100
CN.BB31.ST.1170,"COLUMNS - PRIME, INTERMEDIATE COAT & TOP COAT (P1B) - L2 - GL 26-24 / E.3 - G-E",Complete,Area B-3,North Areas (Team B -Gridlines 17-33),B3 - Area 10 (Gridlines 24-27),L2 - SubFab Level,FAB EAST 21 - 17,CONSTRUCTION,,TBD Architectural Finishes,AMBER CARO,,2024-02-05 07:00,2024-02-16 14:00,2024-01-29 07:00,2024-02-12 13:00,2025-11-20 17:00,2025-11-20 17:00,2025-12-05 17:00,2025-12-05 17:00,0,107,100
CN.BB31.ST.1180,COLUMNS- GRINDING/SCRAPING J- L2 - GL 27-24 - G-J- WEST,Complete,Area B-3,North Areas (Team B -Gridlines 17-33),B3 - Area 10 (Gridlines 24-27),L2 - SubFab Level,,CONSTRUCTION,CHERRY COATING,TBD Architectural Finishes,AMBER CARO,,2024-02-19 07:00,2024-02-28 09:00,2024-02-19 07:00,2024-04-22 17:00,2025-11-20 17:00,2025-11-20 17:00,2025-11-24 07:00,2025-11-24 07:00,0,72,100
CN.BB31.ST.1190,"COLUMNS - PRIME, INTERMEDIATE COAT & TOP COAT - L2 - GL 28-22 - G-J- WEST [C1]",Complete,Area B-3,North Areas (Team B -Gridlines 17-33),B1 - Area 8 (Gridlines 18-21),L2 - SubFab Level,FAB WEST 24 - 27[7],CONSTRUCTION,CHERRY COATING,TBD Architectural Finishes,AMBER CARO,,2024-05-31 07:00,2024-06-11 17:00,2024-05-14 07:00,2024-05-27 17:00,2025-11-20 17:00,2025-11-20 17:00,2025-11-24 07:00,2025-11-24 07:00,0,70,100
CN.AB1.ST.2290,PH1- FIRE PROOFING TOUCH UP PRIME - SFRM STEEL COLUMNS / TRUSS WEB / TOP CORD - A4 - GL 9-6 - L3,Complete,Area B-3,South Areas (Team A - Gridlines 3-17),A4 - Area 3 (Gridlines 9-6),L3 / Waffle Slab Level,,CONSTRUCTION,ROLLING PLAINS,Fireproofing,AMBER CARO,,2024-05-30 07:00,2024-06-07 17:00,2024-05-30 07:00,2024-06-27 17:00,2025-11-20 17:00,2025-11-20 17:00,2025-11-17 07:00,2025-11-17 07:00,0,60,100
CN.AB1.ST.2310,PH1- FIRE PROOFING TOUCH UP PRIME - SFRM STEEL COLUMNS / TRUSS WEB / TOP CORD - A4 - GL 6-3 - L3,Complete,Area B-3,South Areas (Team A - Gridlines 3-17),A5 - Area 2 (Gridlines 6-3),L3 / Waffle Slab Level,,CONSTRUCTION,ROLLING PLAINS,Fireproofing,AMBER CARO,,2024-07-11 07:00,2024-07-18 17:00,2024-07-02 07:00,2024-07-08 17:00,2025-11-20 17:00,2025-11-20 17:00,2025-12-05 17:00,2025-12-05 17:00,0,60,100
CN.AB1.ST.2350,PH1- FIRE PROOFING TOUCH UP PRIME - SFRM STEEL COLUMNS / TRUSS WEB / TOP CORD - B3 - GL 24-27 - L3,Complete,Area B-3,South Areas (Team A - Gridlines 3-17),B4 - Area 11 (Gridlines 27-30),L3 / Waffle Slab Level,,CONSTRUCTION,ROLLING PLAINS,Fireproofing,AMBER CARO,,2024-07-05 07:00,2024-07-12 17:00,2024-07-05 07:00,2024-07-12 17:00,2025-11-20 17:00,2025-11-20 17:00,2025-12-05 17:00,2025-12-05 17:00,0,50,100
CN.B4.ST.1240,STEEL PRE-ASSEMBLE TRUSSES - B4 - 28,Complete,Area B-4,North Areas (Team B -Gridlines 17-33),B4 - Area 11 (Gridlines 27-30),L4 - SUP Roof - FAB Roof,,CONSTRUCTION,,Pre-Assemble Trusses,SEAN MONK,,2023-02-27 16:00,2023-03-07 10:00,2023-02-27 16:00,2023-03-08 12:00,2025-11-20 17:00,2025-11-20 17:00,2025-11-03 07:00,2025-11-03 07:00,0,64,100
xN.AB4.ST.1000,PH1-ERECT STEEL TRUSSES & INFILL - B4 - 28,Complete,Area B-4,North Areas (Team B -Gridlines 17-33),B4 - Area 11 (Gridlines 27-30),L4 - SUP Roof - FAB Roof,,CONSTRUCTION,,"Truss Erect, Infill & Decking",SEAN MONK,,2023-04-10 07:00,2023-04-16 11:00,2023-04-10 07:00,2023-04-17 13:00,2025-11-20 17:00,2025-11-20 17:00,2025-11-03 07:00,2025-11-03 07:00,0,64,100
xN.AB4.ST.1010,PH1-ERECT ROOF DECKING GL 27 - 28 - B4,Complete,Area B-4,North Areas (Team B -Gridlines 17-33),B4 - Area 11 (Gridlines 27-30),L4 - SUP Roof - FAB Roof,,CONSTRUCTION,,Decking & Detail,SEAN MONK,SOMD / Roofing / Waterproofing,2023-06-12 07:00,2023-06-16 17:00,2023-05-26 07:00,2023-05-31 07:00,2025-11-20 17:00,2025-11-20 17:00,2025-11-03 07:00,2025-11-03 07:00,0,40,100
xN.AB4.ST.1020,PH1-ERECT ROOFING - B4,Complete,Area B-4,North Areas (Team B -Gridlines 17-33),B4 - Area 11 (Gridlines 27-30),L4 - SUP Roof - FAB Roof,,CONSTRUCTION,,Roofing,JAMES LIVELY,SOMD / Roofing / Waterproofing,2023-08-10 15:00,2023-08-20 11:00,2023-07-22 15:00,2023-07-28 15:00,2025-11-20 17:00,2025-11-20 17:00,2025-12-05 17:00,2025-12-05 17:00,0,96,100
xN.AB4.ST.1050,PH1- FRP SLAB ROOF - B4 GL 27 - 29,Complete,Area B-4,North Areas (Team B -Gridlines 17-33),B4 - Area 11 (Gridlines 27-30),L4 - SUP Roof - FAB Roof,,CONSTRUCTION,,SOMD,CONCRETE,SOMD / Roofing / Waterproofing,2023-06-29 11:00,2023-07-03 11:00,2023-06-08 11:00,2023-06-15 13:00,2025-11-20 17:00,2025-11-20 17:00,2025-11-14 07:00,2025-11-14 07:00,0,40,100
CN.A1.CF.1170,PH1- SLAB B4 (Gridline 26-29 Complete),Complete,Area B-4,North Areas (Team B -Gridlines 17-33),B4 - Area 11 (Gridlines 27-30),L1 - Fndn Slab,,CONSTRUCTION,,Pour Concrete,JAMES LEE,,2023-02-20 07:00,2023-02-28 17:00,2023-02-02 07:00,2023-02-11 07:00,2025-11-20 17:00,2025-11-20 17:00,2025-11-03 07:00,2025-11-03 07:00,0,80,100
CN.A1.CF.1180,PH1- CURE SLAB B4 (Gridline 26-29 Complete),Complete,Area B-4,North Areas (Team B -Gridlines 17-33),B4 - Area 11 (Gridlines 27-30),L1 - Fndn Slab,,CONSTRUCTION,,Concrete Cure,JAMES LEE,,2023-03-02 07:00,2023-03-07 13:00,2023-02-09 09:00,2023-02-14 15:00,2025-11-20 17:00,2025-11-20 17:00,2025-11-03 07:00,2025-11-03 07:00,0,56,100
CN.AB4.ST.1060,PH1-ERECT PRECAST WAFFLES GL 27 - 28 (L3) - B4,Complete,Area B-4,North Areas (Team B -Gridlines 17-33),B4 - Area 11 (Gridlines 27-30),L3 / Waffle Slab Level,,CONSTRUCTION,,FAB Waffle Slabs,SEAN MONK,,2023-07-03 07:00,2023-07-06 13:00,2023-07-03 07:00,2023-07-06 13:00,2025-11-20 17:00,2025-11-20 17:00,2025-11-03 07:00,2025-11-03 07:00,0,16,100
CN.B4.CF.1020,SEQ4-ERECT COLUMNS (36nos) & GIRDERS (16 nos) (E-G-J)- GL28-31 - B4,Complete,Area B-4,North Areas (Team B -Gridlines 17-33),B4 - Area 11 (Gridlines 27-30),L4 - SUP Roof - FAB Roof,,CONSTRUCTION,,"Main Columns C,E,G,J,L & Intermediate H,F",SEAN MONK,,2023-03-27 07:00,2023-04-06 09:00,2023-03-30 07:00,2023-04-07 11:00,2025-11-20 17:00,2025-11-20 17:00,2025-11-03 07:00,2025-11-03 07:00,0,82,100
xN.AB4.ST.1040,PH1-ERECT PRECAST SUBFAB GL 27 - 28 (L2) - B4,Complete,Area B-4,North Areas (Team B -Gridlines 17-33),B4 - Area 11 (Gridlines 27-30),L2 - SubFab Level,,CONSTRUCTION,,FAB Subfab and Parapets,SEAN MONK,,2023-07-06 13:00,2023-07-08 09:00,2023-07-06 13:00,2023-07-08 10:00,2025-11-20 17:00,2025-11-20 17:00,2025-12-05 17:00,2025-12-05 17:00,0,16,100
CN.B4.CF.1030,PH1- ERECT INTERMEDIATE COLUMNS/GIRDERS (H&F) - FAB NORTH- GL28-31 - B4,Complete,Area B-4,North Areas (Team B -Gridlines 17-33),B4 - Area 11 (Gridlines 27-30),L4 - SUP Roof - FAB Roof,,CONSTRUCTION,,"Main Columns C,E,G,J,L & Intermediate H,F",SEAN MONK,,2023-04-10 07:00,2023-04-12 11:00,2023-04-10 07:00,2023-04-12 11:00,2025-11-20 17:00,2025-11-20 17:00,2025-11-03 07:00,2025-11-03 07:00,0,24,100
CN.BB41.ST.1070,PH1- WATERPROOFING - SUBFAB (L2) - B4,Complete,Area B-4,North Areas (Team B -Gridlines 17-33),B4 - Area 11 (Gridlines 27-30),L2 - SubFab Level,,CONSTRUCTION,,Pour Concrete,JAMES LIVELY,,2023-07-03 07:00,2023-07-08 09:00,2023-07-03 07:00,2023-07-08 10:00,2025-11-20 17:00,2025-11-20 17:00,2025-11-03 07:00,2025-11-03 07:00,0,32,100
CN.BB41.ST.1120,PH1- CURBS & MEP SLABS - SUBFAB - B4 - GL 27-30 - L2,Complete,Area B-4,North Areas (Team B -Gridlines 17-33),B4 - Area 11 (Gridlines 27-30),L2 - SubFab Level,,CONSTRUCTION,BAKER,Pour Concrete,JAMES LEE,,2023-07-17 07:00,2023-07-18 17:00,2023-07-15 07:00,2023-07-17 17:00,2025-11-20 17:00,2025-11-20 17:00,2025-12-05 17:00,2025-12-05 17:00,0,20,100
CN.BB41.ST.1130,PH1- WATERPROOFING - SOG (L1) - B4,Complete,Area B-4,North Areas (Team B -Gridlines 17-33),B4 - Area 11 (Gridlines 27-30),L1 - Fndn Slab,,CONSTRUCTION,,Pour Concrete,JAMES LIVELY,,2023-07-10 09:00,2023-07-10 17:00,2023-07-10 09:00,2023-07-10 17:00,2025-11-20 17:00,2025-11-20 17:00,2025-11-03 07:00,2025-11-03 07:00,0,8,100
CN.BB4.ST.1240,PH1- CURBS & MEP SLABS - SOG (L1) -  B4,Complete,Area B-4,North Areas (Team B -Gridlines 17-33),B4 - Area 11 (Gridlines 27-30),L1 - Fndn Slab,,CONSTRUCTION,,Pour Concrete,JAMES LEE,,2023-07-08 10:00,2023-07-09 08:00,2023-07-08 10:00,2023-07-10 09:00,2025-11-20 17:00,2025-11-20 17:00,2025-11-03 07:00,2025-11-03 07:00,0,8,100
CN.BB4.ST.1160,PH1- CURBS & MEP SLABS - ROOF (L4) -  B4,Complete,Area B-4,North Areas (Team B -Gridlines 17-33),B4 - Area 11 (Gridlines 27-30),L4 - SUP Roof - FAB Roof,,CONSTRUCTION,,Pour Concrete,JAMES LEE,SOMD / Roofing / Waterproofing,2023-07-24 07:00,2023-07-24 15:00,2023-07-24 07:00,2023-07-24 15:00,2025-11-20 17:00,2025-11-20 17:00,2025-12-05 17:00,2025-12-05 17:00,0,8,100
CN.AB4.ST.1260,PH1-WAFFLE COATING (Bottom and Top)(L2&3) - B4 - GL 27-33,Complete,Area B-4,North Areas (Team B -Gridlines 17-33),B4 - Area 11 (Gridlines 27-30),L2 - SubFab Level,,CONSTRUCTION,,TBD Architectural Finishes,AMBER CARO,,2024-04-22 07:00,2024-04-22 07:00,2024-04-20 09:00,2024-04-20 17:00,2025-11-20 17:00,2025-11-20 17:00,2025-12-05 17:00,2025-12-05 17:00,0,0,100
CN.B4.ST.1250,STEEL PRE-ASSEMBLE TRUSSES - B4 - 29,Complete,Area B-4,North Areas (Team B -Gridlines 17-33),B4 - Area 11 (Gridlines 27-30),L4 - SUP Roof - FAB Roof,,CONSTRUCTION,,Pre-Assemble Trusses,SEAN MONK,,2023-03-03 16:00,2023-03-10 10:00,2023-03-03 16:00,2023-03-11 13:00,2025-11-20 17:00,2025-11-20 17:00,2025-11-03 07:00,2025-11-03 07:00,0,64,100
xN.AB4.ST.1060,PH1-ERECT STEEL TRUSSES & INFILL - B4 - 29,Complete,Area B-4,North Areas (Team B -Gridlines 17-33),B4 - Area 11 (Gridlines 27-30),L4 - SUP Roof - FAB Roof,,CONSTRUCTION,,"Truss Erect, Infill & Decking",SEAN MONK,,2023-04-24 13:00,2023-04-27 17:00,2023-04-24 13:00,2023-04-29 16:00,2025-11-20 17:00,2025-11-20 17:00,2025-11-03 07:00,2025-11-03 07:00,0,24,100
CN.B4.ST.1260,STEEL PRE-ASSEMBLE TRUSSES - B4 - 30,Complete,Area B-4,North Areas (Team B -Gridlines 17-33),B4 - Area 11 (Gridlines 27-30),L4 - SUP Roof - FAB Roof,,CONSTRUCTION,,Pre-Assemble Trusses,SEAN MONK,,2023-03-27 16:00,2023-04-04 10:00,2023-03-13 16:00,2023-03-17 10:00,2025-11-20 17:00,2025-11-20 17:00,2025-11-03 07:00,2025-11-03 07:00,0,64,100
xN.AB4.ST.1070,PH1-ERECT STEEL TRUSSES & INFILL - B4 - 30,Complete,Area B-4,North Areas (Team B -Gridlines 17-33),B4 - Area 11 (Gridlines 27-30),L4 - SUP Roof - FAB Roof,,CONSTRUCTION,,"Truss Erect, Infill & Decking",SEAN MONK,,2023-04-27 09:00,2023-04-29 13:00,2023-04-29 14:00,2023-05-02 17:00,2025-11-20 17:00,2025-11-20 17:00,2025-11-03 07:00,2025-11-03 07:00,0,24,100
CN.AB4.ST.1070,PH1-WAFFLE EPOXY COATING (1st Coat in Yard) (L3) - B4,Complete,Area B-4,North Areas (Team B -Gridlines 17-33),B4 - Area 11 (Gridlines 27-30),L3 / Waffle Slab Level,,CONSTRUCTION,,TBD Architectural Finishes,AMBER CARO,,2023-03-27 07:00,2023-04-04 17:00,2023-03-27 07:00,2023-04-07 09:00,2025-11-20 17:00,2025-11-20 17:00,2025-11-03 07:00,2025-11-03 07:00,0,80,100
CN.BB41.ST.1080,PH1- TOPPING SLAB - SUBFAB (L2) - B4 GL 27-30,Complete,Area B-4,North Areas (Team B -Gridlines 17-33),B4 - Area 11 (Gridlines 27-30),L2 - SubFab Level,,CONSTRUCTION,,TOPPING,CONCRETE,,2023-07-08 10:00,2023-07-13 08:00,2023-07-10 10:00,2023-09-29 17:00,2025-11-20 17:00,2025-11-20 17:00,2025-11-24 07:00,2025-11-24 07:00,0,48,100
CN.BB41.ST.1140,IMPACT - TOPPING SLAB - SOG (L1) - B4 GL 27-30 - Delayed by Nomura SECAI UG Piping Install,Complete,Area B-4,North Areas (Team B -Gridlines 17-33),B4 - Area 11 (Gridlines 27-30),L1 - Fndn Slab,,CONSTRUCTION,,TOPPING,CONCRETE,,2023-07-11 07:00,2023-07-13 11:00,2023-07-11 07:00,2023-08-24 15:00,2025-11-20 17:00,2025-11-20 17:00,2025-11-24 07:00,2025-11-24 07:00,0,24,100
xN.AB4.ST.1080,PH1- FRP SLAB ROOF - B4 GL 29 - 31,Complete,Area B-4,North Areas (Team B -Gridlines 17-33),B4 - Area 11 (Gridlines 27-30),L4 - SUP Roof - FAB Roof,,CONSTRUCTION,,SOMD,CONCRETE,SOMD / Roofing / Waterproofing,2023-06-19 07:00,2023-06-23 17:00,2023-06-19 07:00,2023-06-23 17:00,2025-11-20 17:00,2025-11-20 17:00,2025-12-05 17:00,2025-12-05 17:00,0,40,100
xN.AB4.ST.1090,PH1-ERECT PRECAST SUBFAB GL 28 - 29 (L2) - B4,Complete,Area B-4,North Areas (Team B -Gridlines 17-33),B4 - Area 11 (Gridlines 27-30),L2 - SubFab Level,,CONSTRUCTION,,FAB Subfab and Parapets,SEAN MONK,,2023-07-08 10:00,2023-07-09 16:00,2023-07-08 10:00,2023-07-10 17:00,2025-11-20 17:00,2025-11-20 17:00,2025-12-05 17:00,2025-12-05 17:00,0,16,100
xN.AB4.ST.1100,PH1-ERECT PRECAST SUBFAB GL 29 - 30 (L2) - B4,Complete,Area B-4,North Areas (Team B -Gridlines 17-33),B4 - Area 11 (Gridlines 27-30),L2 - SubFab Level,,CONSTRUCTION,,FAB Subfab and Parapets,SEAN MONK,,2023-07-11 07:00,2023-07-12 13:00,2023-07-11 07:00,2023-07-12 13:00,2025-11-20 17:00,2025-11-20 17:00,2025-12-05 17:00,2025-12-05 17:00,0,16,100
CN.AB4.ST.1360,PH1-ERECT PRECAST WAFFLES GL 28 - 29 (L3) - B4,Complete,Area B-4,North Areas (Team B -Gridlines 17-33),B4 - Area 11 (Gridlines 27-30),L3 / Waffle Slab Level,,CONSTRUCTION,,FAB Waffle Slabs,SEAN MONK,,2023-07-06 13:00,2023-07-08 09:00,2023-07-06 13:00,2023-07-08 10:00,2025-11-20 17:00,2025-11-20 17:00,2025-11-03 07:00,2025-11-03 07:00,0,16,100
CN.AB4.ST.1370,PH1-ERECT PRECAST WAFFLES GL 29 - 30 (L3) - B4,Complete,Area B-4,North Areas (Team B -Gridlines 17-33),B4 - Area 11 (Gridlines 27-30),L3 / Waffle Slab Level,,CONSTRUCTION,,FAB Waffle Slabs,SEAN MONK,,2023-07-08 10:00,2023-07-09 16:00,2023-07-08 10:00,2023-07-10 17:00,2025-11-20 17:00,2025-11-20 17:00,2025-11-03 07:00,2025-11-03 07:00,0,16,100
xN.AB4.ST.1110,PH1-ERECT ROOF DECKING GL 28 - 29 - B4,Complete,Area B-4,North Areas (Team B -Gridlines 17-33),B4 - Area 11 (Gridlines 27-30),L4 - SUP Roof - FAB Roof,,CONSTRUCTION,,Decking & Detail,SEAN MONK,SOMD / Roofing / Waterproofing,2023-06-17 08:00,2023-06-22 08:00,2023-05-31 08:00,2023-06-02 09:00,2025-11-20 17:00,2025-11-20 17:00,2025-11-14 07:00,2025-11-14 07:00,0,40,100
xN.AB4.ST.1120,PH1-ERECT ROOF DECKING GL 29 - 30 - B4,Complete,Area B-4,North Areas (Team B -Gridlines 17-33),B4 - Area 11 (Gridlines 27-30),L4 - SUP Roof - FAB Roof,,CONSTRUCTION,,Decking & Detail,SEAN MONK,SOMD / Roofing / Waterproofing,2023-06-23 09:00,2023-06-27 09:00,2023-06-03 09:00,2023-06-06 11:00,2025-11-20 17:00,2025-11-20 17:00,2025-11-14 07:00,2025-11-14 07:00,0,40,100
CN.AB1.ST.1490,PH1- FIRE PROOFING - SFRM STEEL COLUMNS / TRUSS WEB / TOP CORD - B4 - GL 28-29 - L3,Complete,Area B-4,South Areas (Team A - Gridlines 3-17),B4 - Area 11 (Gridlines 27-30),L3 / Waffle Slab Level,,CONSTRUCTION,ROLLING PLAINS,Fireproofing,AMBER CARO,,2024-07-15 07:00,2024-07-17 17:00,2024-07-13 07:00,2024-07-17 17:00,2025-11-20 17:00,2025-11-20 17:00,2025-12-05 17:00,2025-12-05 17:00,0,30,100
CN.AB1.ST.1500,PH1- FIRE PROOFING - INTUMSCENT PAINT / EPOXY / PRIMER BOTTOM CORD (L3) - B4,Complete,Area B-4,South Areas (Team A - Gridlines 3-17),B4 - Area 11 (Gridlines 27-30),L3 / Waffle Slab Level,,CONSTRUCTION,,FAB Waffle Slabs,AMBER CARO,,2023-07-27 09:00,2023-08-01 15:00,2023-07-27 09:00,2023-08-12 14:00,2025-11-20 17:00,2025-11-20 17:00,2025-12-05 17:00,2025-12-05 17:00,0,56,100
CN.AB1.ST.1770,SECAI - INSTALL UPPER CEILING - TRUSS - B4 - GL 27-30 - L3,Complete,Area B-4,South Areas (Team A - Gridlines 3-17),B4 - Area 11 (Gridlines 27-30),L3 / Waffle Slab Level,,CONSTRUCTION,SECAI,Pour Concrete,JAMES LEE,,2024-03-04 07:00,2024-03-08 17:00,2024-03-04 07:00,2024-03-08 17:00,2025-11-20 17:00,2025-11-20 17:00,2025-12-05 17:00,2025-12-05 17:00,0,50,100
CN.AB4.ST.1830,FRP - RAKER TOPPING SLAB - WAFFLE (L3) - B4,Complete,Area B-4,South Areas (Team A - Gridlines 3-17),B4 - Area 11 (Gridlines 27-30),L3 / Waffle Slab Level,,CONSTRUCTION,,TOPPING,CONCRETE,,2023-08-10 11:00,2023-08-14 13:00,2023-08-10 11:00,2023-08-15 15:00,2025-11-20 17:00,2025-11-20 17:00,2025-11-24 07:00,2025-11-24 07:00,0,42,100
CN.AB4.ST.1390,PH1-WAFFLE COATING TEMPERATURE REMIDIATION (L2) - B4 - E7- GL 26-33 - CENTER (SG1),Complete,Area B-4,,B4 - Area 11 (Gridlines 27-30),L2 - SubFab Level,,CONSTRUCTION,,TBD Architectural Finishes,,,2024-01-22 07:00,2024-02-02 13:00,2024-01-19 07:00,2024-03-29 08:00,2025-11-20 17:00,2025-11-20 17:00,2025-12-05 17:00,2025-12-05 17:00,0,96,100
CN.AB1.ST.1950,COLUMN WRAP FRAMING AND DRYWALL - G LINE - UPTO 8 FEET - B4 - GL 27-30 - L3,Complete,Area B-4,,B4 - Area 11 (Gridlines 27-30),L3 / Waffle Slab Level,,CONSTRUCTION,BERG,DRYWALL,,,2025-10-24 07:00,2025-10-30 17:00,2024-01-22 07:00,2025-03-07 17:00,2025-11-20 17:00,2025-11-20 17:00,2025-12-05 17:00,2025-12-05 17:00,0,50,100
CN.AB3.ST.1950,INSTALL ACCESS FLOORS  (BY SECAI) - B4 - GL 27-30 - L3,Complete,Area B-4,,B4 - Area 11 (Gridlines 27-30),L4 - SUP Roof - FAB Roof,,CONSTRUCTION,SECAI,TBD Architectural Finishes,,,2024-07-25 07:00,2024-07-31 17:00,2024-06-25 07:00,2024-07-04 17:00,2025-11-20 17:00,2025-11-20 17:00,2025-12-05 17:00,2025-12-05 17:00,0,50,100
CN.AB3.ST.1960,COLUMN WRAP FRAMING AND DRYWALL - G LINE - ABOVE 8 FEET - B4 - GL 27-30 - L3,Complete,Area B-4,,B4 - Area 11 (Gridlines 27-30),L3 / Waffle Slab Level,,CONSTRUCTION,BERG,DRYWALL,,,2025-10-24 07:00,2025-10-30 17:00,2024-01-22 07:00,2025-03-07 17:00,2025-11-20 17:00,2025-11-20 17:00,2025-12-05 17:00,2025-12-05 17:00,0,50,100
CN.AB4.ST.1840,PH1-WAFFLE COATING TEMPERATURE REMIDIATION (L3) - B4 - E7- GL 26-33 - EAST TOP,Complete,Area B-4,,B4 - Area 11 (Gridlines 27-30),L3 / Waffle Slab Level,,CONSTRUCTION,,TBD Architectural Finishes,,,2023-08-31 07:00,2023-09-11 11:00,2023-08-30 08:00,2023-09-12 16:00,2025-11-20 17:00,2025-11-20 17:00,2025-11-24 07:00,2025-11-24 07:00,0,104,100
CN.AB5.ST.1870,PH1-WAFFLE COATING TEMPERATURE REMIDIATION(L3) - B5 - W7- GL 27-33 - WEST TOP (S2),Complete,Area B-4,,B4 - Area 11 (Gridlines 27-30),L3 / Waffle Slab Level,,CONSTRUCTION,,TBD Architectural Finishes,,,2024-03-01 07:00,2024-03-23 15:00,2024-02-12 07:00,2024-03-24 16:00,2025-11-20 17:00,2025-11-20 17:00,2025-12-05 17:00,2025-12-05 17:00,0,168,100
CN.AB4.ST.1850,PH1-WAFFLE COATING TEMPERATURE REMIDIATION (L2) - B4 - E7- GL 26-33 - EAST BOTTOM,Complete,Area B-4,,B4 - Area 11 (Gridlines 27-30),L2 - SubFab Level,,CONSTRUCTION,,TBD Architectural Finishes,,,2024-01-27 14:00,2024-02-09 10:00,2024-01-08 14:00,2024-01-19 10:00,2025-11-20 17:00,2025-11-20 17:00,2025-11-24 07:00,2025-11-24 07:00,0,116,100
CN.AB5.ST.1920,PH1-WAFFLE COATING TEMPERATURE REMIDIATION (L2) - B5 - W7- GL 26-33 - WEST BOTTOM (S6c),Complete,Area B-4,,B4 - Area 11 (Gridlines 27-30),L2 - SubFab Level,,CONSTRUCTION,,TBD Architectural Finishes,,,2024-01-29 07:00,2024-03-25 09:00,2024-01-22 07:00,2024-04-06 17:00,2025-11-20 17:00,2025-11-20 17:00,2025-12-05 17:00,2025-12-05 17:00,0,362,100
CN.AB4.ST.1860,PH1-WAFFLE RAKER COATING - B4 - GL 26-33 - WEST (R1W) - L2,Complete,Area B-4,North Areas (Team B -Gridlines 17-33),B4 - Area 11 (Gridlines 27-30),L2 - SubFab Level,,CONSTRUCTION,CHERRY COATING,TBD Architectural Finishes,AMBER CARO,,2024-03-22 13:00,2024-04-03 09:00,2024-02-29 07:00,2024-05-06 17:00,2025-11-20 17:00,2025-11-20 17:00,2025-12-05 17:00,2025-12-05 17:00,0,76,100
CN.AB4.ST.1870,PH1-WAFFLE RAKER COATING - B4 - GL 26-33 - EAST (R1E) - L2,Complete,Area B-4,North Areas (Team B -Gridlines 17-33),B4 - Area 11 (Gridlines 27-30),L2 - SubFab Level,,CONSTRUCTION,CHERRY COATING,TBD Architectural Finishes,AMBER CARO,,2024-02-29 07:00,2024-03-12 09:00,2024-02-29 07:00,2024-05-06 17:00,2025-11-20 17:00,2025-11-20 17:00,2025-12-05 17:00,2025-12-05 17:00,0,82,100
CN.AB1.ST.2080,COLUMN WRAP FRAMING AND DRYWALL - F LINE UP TO 8 FEET - B4 - GL 27-30 - L3,Complete,Area B-4,,B4 - Area 11 (Gridlines 27-30),L3 / Waffle Slab Level,,CONSTRUCTION,BERG,DRYWALL,,,2025-10-24 07:00,2025-10-30 17:00,2024-01-22 07:00,2025-03-07 17:00,2025-11-20 17:00,2025-11-20 17:00,2025-12-05 17:00,2025-12-05 17:00,0,50,100
CN.AB3.ST.2290,COLUMN WRAP FRAMING AND DRYWALL - F LINE - ABOVE 8 FEET - B4 - GL 27-30 - L3,Complete,Area B-4,,B4 - Area 11 (Gridlines 27-30),L3 / Waffle Slab Level,,CONSTRUCTION,BERG,DRYWALL,,,2025-10-24 07:00,2025-10-30 17:00,2024-01-22 07:00,2025-03-07 17:00,2025-11-20 17:00,2025-11-20 17:00,2025-12-05 17:00,2025-12-05 17:00,0,50,100
CN.AB1.ST.2300,PH1- FIRE PROOFING - SFRM STEEL COLUMNS / TRUSS WEB / TOP CORD - A4 - GL 9-6 - L3,Complete,Area B-4,South Areas (Team A - Gridlines 3-17),A4 - Area 3 (Gridlines 9-6),L3 / Waffle Slab Level,,CONSTRUCTION,ROLLING PLAINS,Fireproofing,AMBER CARO,,2024-07-22 07:00,2024-07-25 17:00,2024-06-29 07:00,2024-07-02 07:00,2025-11-20 17:00,2025-11-20 17:00,2025-12-05 17:00,2025-12-05 17:00,0,40,100
CN.AB1.ST.2320,PH1- FIRE PROOFING - SFRM STEEL COLUMNS / TRUSS WEB / TOP CORD - A4 - GL 6-3 - L3,Complete,Area B-4,South Areas (Team A - Gridlines 3-17),A5 - Area 2 (Gridlines 6-3),L3 / Waffle Slab Level,,CONSTRUCTION,ROLLING PLAINS,Fireproofing,AMBER CARO,,2024-07-09 07:00,2024-07-12 17:00,2024-07-09 07:00,2024-07-15 17:00,2025-11-20 17:00,2025-11-20 17:00,2025-12-05 17:00,2025-12-05 17:00,0,30,100
CN.AB1.ST.2340,PH1- FIRE PROOFING - SFRM STEEL COLUMNS / TRUSS WEB / TOP CORD - B2 - GL 21-22 - L3,Complete,Area B-4,South Areas (Team A - Gridlines 3-17),B2 - Area 9 (Gridlines 21-24),L3 / Waffle Slab Level,,CONSTRUCTION,ROLLING PLAINS,Fireproofing,AMBER CARO,,2024-08-05 07:00,2024-08-08 17:00,2024-06-24 07:00,2024-06-28 07:00,2025-11-20 17:00,2025-11-20 17:00,2025-12-05 17:00,2025-12-05 17:00,0,30,100
CN.B5.ST.1270,STEEL PRE-ASSEMBLE TRUSSES - B5 - 31,Complete,Area B-5,North Areas (Team B -Gridlines 17-33),B5 - Area 12 (Gridlines 30-33),L4 - SUP Roof - FAB Roof,,CONSTRUCTION,,Pre-Assemble Trusses,SEAN MONK,,2023-04-12 16:00,2023-04-20 10:00,2023-03-13 16:00,2023-03-24 17:00,2025-11-20 17:00,2025-11-20 17:00,2025-11-03 07:00,2025-11-03 07:00,0,64,100
xN.AB5.ST.1000,PH1-ERECT STEEL TRUSSES & INFILL - B5 -31,Complete,Area B-5,North Areas (Team B -Gridlines 17-33),B5 - Area 12 (Gridlines 30-33),L4 - SUP Roof - FAB Roof,,CONSTRUCTION,,"Truss Erect, Infill & Decking",SEAN MONK,,2023-05-23 07:00,2023-05-27 09:00,2023-05-05 07:00,2023-05-11 13:00,2025-11-20 17:00,2025-11-20 17:00,2025-11-03 07:00,2025-11-03 07:00,0,32,100
xN.AB5.ST.1010,PH1-ERECT ROOF DECKING GL 30 -31 - B5,Complete,Area B-5,North Areas (Team B -Gridlines 17-33),B5 - Area 12 (Gridlines 30-33),L4 - SUP Roof - FAB Roof,,CONSTRUCTION,,Decking & Detail,SEAN MONK,,2023-06-12 07:00,2023-06-16 17:00,2023-06-12 07:00,2023-06-16 17:00,2025-11-20 17:00,2025-11-20 17:00,2025-11-14 07:00,2025-11-14 07:00,0,40,100
xN.AB5.ST.1020,PH1-ERECT ROOFING - B5 GL 27-33 - EXPANSION JOINTS & REMAINING,Complete,Area B-5,North Areas (Team B -Gridlines 17-33),B5 - Area 12 (Gridlines 30-33),L4 - SUP Roof - FAB Roof,,CONSTRUCTION,,Roofing,JAMES LIVELY,SOMD / Roofing / Waterproofing,2023-10-09 07:00,2023-10-18 14:00,2023-09-04 07:00,2023-09-06 07:00,2025-11-20 17:00,2025-11-20 17:00,2025-12-05 17:00,2025-12-05 17:00,0,96,100
xN.AB5.ST.1050,PH1-FRP SLAB ROOF - B5 GL 31 - 33,Complete,Area B-5,North Areas (Team B -Gridlines 17-33),B5 - Area 12 (Gridlines 30-33),L4 - SUP Roof - FAB Roof,,CONSTRUCTION,,SOMD,CONCRETE,SOMD / Roofing / Waterproofing,2023-07-03 07:00,2023-07-12 17:00,2023-07-04 07:00,2023-07-16 16:00,2025-11-20 17:00,2025-11-20 17:00,2025-11-14 07:00,2025-11-14 07:00,0,80,100
CN.A1.CF.1190,PH1- SLAB B5 (Gridline 29-33 Complete),Complete,Area B-5,North Areas (Team B -Gridlines 17-33),B5 - Area 12 (Gridlines 30-33),L1 - Fndn Slab,,CONSTRUCTION,,Pour Concrete,JAMES LEE,,2023-02-20 07:00,2023-02-26 11:00,2023-02-07 07:00,2023-02-10 07:00,2025-11-20 17:00,2025-11-20 17:00,2025-11-03 07:00,2025-11-03 07:00,0,54,100
CN.A1.CF.1200,PH1- CURE SLAB B5 (Gridline 29-33 Complete),Complete,Area B-5,North Areas (Team B -Gridlines 17-33),B5 - Area 12 (Gridlines 30-33),L1 - Fndn Slab,,CONSTRUCTION,,Concrete Cure,JAMES LEE,,2023-02-25 11:00,2023-03-03 17:00,2023-02-11 09:00,2023-02-14 17:00,2025-11-20 17:00,2025-11-20 17:00,2025-11-03 07:00,2025-11-03 07:00,0,56,100
CN.AB5.ST.1060,PH1-ERECT PRECAST WAFFLES GL 30 - 31 (L3) - B5,Complete,Area B-5,North Areas (Team B -Gridlines 17-33),B5 - Area 12 (Gridlines 30-33),L3 / Waffle Slab Level,,CONSTRUCTION,,FAB Waffle Slabs,SEAN MONK,,2023-07-11 07:00,2023-07-12 13:00,2023-07-11 07:00,2023-07-12 13:00,2025-11-20 17:00,2025-11-20 17:00,2025-11-03 07:00,2025-11-03 07:00,0,16,100
CN.B5.CF.1020,SEQ5-ERECT COLUMNS (27nos) & GIRDERS (12 nos) (E-G-J)- GL31-33 -B5,Complete,Area B-5,North Areas (Team B -Gridlines 17-33),B5 - Area 12 (Gridlines 30-33),L4 - SUP Roof - FAB Roof,,CONSTRUCTION,,"Main Columns C,E,G,J,L & Intermediate H,F",SEAN MONK,,2023-04-24 07:00,2023-04-28 09:00,2023-04-27 11:00,2023-05-02 15:00,2025-11-20 17:00,2025-11-20 17:00,2025-11-03 07:00,2025-11-03 07:00,0,32,100
xN.AB5.ST.1040,PH1-ERECT PRECAST SUBFAB GL 30 - 31 (L2) - B5,Complete,Area B-5,North Areas (Team B -Gridlines 17-33),B5 - Area 12 (Gridlines 30-33),L2 - SubFab Level,,CONSTRUCTION,,FAB Subfab and Parapets,SEAN MONK,,2023-07-12 13:00,2023-07-14 09:00,2023-07-12 13:00,2023-07-14 09:00,2025-11-20 17:00,2025-11-20 17:00,2025-11-03 07:00,2025-11-03 07:00,0,16,100
CN.B5.CF.1030,PH1- ERECT INTERMEDIATE COLUMNS/GIRDERS (H&F) - FAB NORTH- GL31-33 -B5,Complete,Area B-5,North Areas (Team B -Gridlines 17-33),B5 - Area 12 (Gridlines 30-33),L4 - SUP Roof - FAB Roof,,CONSTRUCTION,,"Main Columns C,E,G,J,L & Intermediate H,F",SEAN MONK,,2023-04-28 09:00,2023-04-30 13:00,2023-05-02 07:00,2023-05-06 16:00,2025-11-20 17:00,2025-11-20 17:00,2025-11-03 07:00,2025-11-03 07:00,0,24,100
CN.BB51.ST.1070,PH1- WATERPROOFING - SUBFAB (L2) - B5,Complete,Area B-5,North Areas (Team B -Gridlines 17-33),B5 - Area 12 (Gridlines 30-33),L2 - SubFab Level,,CONSTRUCTION,,Pour Concrete,JAMES LIVELY,,2023-08-02 11:00,2023-08-05 13:00,2023-08-02 11:00,2023-08-05 14:00,2025-11-20 17:00,2025-11-20 17:00,2025-11-03 07:00,2025-11-03 07:00,0,32,100
CN.BB51.ST.1120,PH1- CURBS & MEP SLABS - SUBFAB (L2) - B5,Complete,Area B-5,North Areas (Team B -Gridlines 17-33),B5 - Area 12 (Gridlines 30-33),L2 - SubFab Level,,CONSTRUCTION,,Pour Concrete,JAMES LEE,,2023-07-31 15:00,2023-08-02 11:00,2023-07-31 15:00,2023-08-02 11:00,2025-11-20 17:00,2025-11-20 17:00,2025-11-03 07:00,2025-11-03 07:00,0,16,100
CN.BB51.ST.1130,PH1- WATERPROOFING - SOG (L1) - B5 GL 30-33,Complete,Area B-5,North Areas (Team B -Gridlines 17-33),B5 - Area 12 (Gridlines 30-33),L1 - Fndn Slab,,CONSTRUCTION,,Pour Concrete,JAMES LIVELY,,2023-09-06 13:00,2023-09-09 15:00,2023-08-21 11:00,2023-08-24 17:00,2025-11-20 17:00,2025-11-20 17:00,2025-11-03 07:00,2025-11-03 07:00,0,32,100
CN.BB5.ST.1240,PH1- CURBS & MEP SLABS - SOG (L1) -  B5 GL 30-33,Complete,Area B-5,North Areas (Team B -Gridlines 17-33),B5 - Area 12 (Gridlines 30-33),L1 - Fndn Slab,,CONSTRUCTION,,Pour Concrete,JAMES LEE,,2023-09-05 07:00,2023-09-06 13:00,2023-08-17 09:00,2023-08-19 16:00,2025-11-20 17:00,2025-11-20 17:00,2025-11-03 07:00,2025-11-03 07:00,0,16,100
CN.BB5.ST.1160,PH1- CURBS & MEP SLABS - ROOF (L4) -  B5,Complete,Area B-5,North Areas (Team B -Gridlines 17-33),B5 - Area 12 (Gridlines 30-33),L4 - SUP Roof - FAB Roof,,CONSTRUCTION,,Pour Concrete,JAMES LEE,SOMD / Roofing / Waterproofing,2023-07-03 07:00,2023-07-03 15:00,2023-07-16 07:00,2023-07-16 15:00,2025-11-20 17:00,2025-11-20 17:00,2025-12-05 17:00,2025-12-05 17:00,0,8,100
CN.B5.ST.1280,STEEL PRE-ASSEMBLE TRUSSES - B5 - 32,Complete,Area B-5,North Areas (Team B -Gridlines 17-33),B5 - Area 12 (Gridlines 30-33),L4 - SUP Roof - FAB Roof,,CONSTRUCTION,,Pre-Assemble Trusses,SEAN MONK,,2023-04-13 16:00,2023-04-21 10:00,2023-04-13 16:00,2023-04-14 00:00,2025-11-20 17:00,2025-11-20 17:00,2025-11-03 07:00,2025-11-03 07:00,0,64,100
xN.AB5.ST.1060,PH1-ERECT STEEL TRUSSES & INFILL - B5 -32,Complete,Area B-5,North Areas (Team B -Gridlines 17-33),B5 - Area 12 (Gridlines 30-33),L4 - SUP Roof - FAB Roof,,CONSTRUCTION,,"Truss Erect, Infill & Decking",SEAN MONK,,2023-05-25 13:00,2023-05-28 15:00,2023-05-11 13:00,2023-05-15 13:00,2025-11-20 17:00,2025-11-20 17:00,2025-11-03 07:00,2025-11-03 07:00,0,32,100
CN.B5.ST.1290,STEEL PRE-ASSEMBLE TRUSSES - B5 - 33,Complete,Area B-5,North Areas (Team B -Gridlines 17-33),B5 - Area 12 (Gridlines 30-33),L4 - SUP Roof - FAB Roof,,CONSTRUCTION,,Pre-Assemble Trusses,SEAN MONK,,2023-04-14 16:00,2023-04-22 10:00,2023-04-14 16:00,2023-04-24 14:00,2025-11-20 17:00,2025-11-20 17:00,2025-11-03 07:00,2025-11-03 07:00,0,64,100
xN.AB5.ST.1070,PH1-ERECT STEEL TRUSSES & INFILL - B5 -33,Complete,Area B-5,North Areas (Team B -Gridlines 17-33),B5 - Area 12 (Gridlines 30-33),L4 - SUP Roof - FAB Roof,,CONSTRUCTION,,"Truss Erect, Infill & Decking",SEAN MONK,,2023-06-02 07:00,2023-06-05 09:00,2023-05-16 07:00,2023-05-19 07:00,2025-11-20 17:00,2025-11-20 17:00,2025-11-03 07:00,2025-11-03 07:00,0,32,100
xN.AB5.ST.1080,PH1-WAFFLE EPOXY COATING (1st Coat in Yard) (L3) - B5,Complete,Area B-5,North Areas (Team B -Gridlines 17-33),B5 - Area 12 (Gridlines 30-33),L3 / Waffle Slab Level,,CONSTRUCTION,,TBD Architectural Finishes,AMBER CARO,,2023-04-10 07:00,2023-04-17 17:00,2023-04-10 07:00,2023-04-20 09:00,2025-11-20 17:00,2025-11-20 17:00,2025-11-03 07:00,2025-11-03 07:00,0,80,100
CN.BB51.ST.1080,PH1- TOPPING SLAB - SUBFAB (L2) - B5,Complete,Area B-5,North Areas (Team B -Gridlines 17-33),B5 - Area 12 (Gridlines 30-33),L2 - SubFab Level,,CONSTRUCTION,,TOPPING,CONCRETE,,2023-08-05 14:00,2023-08-11 12:00,2023-08-05 14:00,2023-08-12 14:00,2025-11-20 17:00,2025-11-20 17:00,2025-11-24 07:00,2025-11-24 07:00,0,48,100
CN.BB51.ST.1140,PH1- TOPPING SLAB - SOG (L1) - B5 GL 30-33,Complete,Area B-5,North Areas (Team B -Gridlines 17-33),B5 - Area 12 (Gridlines 30-33),L1 - Fndn Slab,,CONSTRUCTION,,TOPPING,CONCRETE,,2023-09-11 07:00,2023-09-16 15:00,2023-08-22 10:16,2023-08-26 16:00,2025-11-20 17:00,2025-11-20 17:00,2025-11-03 07:00,2025-11-03 07:00,0,48,100
xN.AB5.ST.1090,PH1-ERECT PRECAST SUBFAB GL 31 - 32 (L2) - B5,Complete,Area B-5,North Areas (Team B -Gridlines 17-33),B5 - Area 12 (Gridlines 30-33),L2 - SubFab Level,,CONSTRUCTION,,FAB Subfab and Parapets,SEAN MONK,,2023-07-14 09:00,2023-07-15 15:00,2023-07-14 09:00,2023-07-15 16:00,2025-11-20 17:00,2025-11-20 17:00,2025-11-03 07:00,2025-11-03 07:00,0,16,100
xN.AB5.ST.1100,PH1-ERECT PRECAST SUBFAB GL 32 - 33 (L2) - B5,Complete,Area B-5,North Areas (Team B -Gridlines 17-33),B5 - Area 12 (Gridlines 30-33),L2 - SubFab Level,,CONSTRUCTION,,FAB Subfab and Parapets,SEAN MONK,,2023-07-17 07:00,2023-07-18 13:00,2023-07-15 07:00,2023-07-31 15:00,2025-11-20 17:00,2025-11-20 17:00,2025-11-03 07:00,2025-11-03 07:00,0,16,100
CN.AB5.ST.1360,PH1-ERECT PRECAST WAFFLES GL 31 - 32 (L3) - B5,Complete,Area B-5,North Areas (Team B -Gridlines 17-33),B5 - Area 12 (Gridlines 30-33),L3 / Waffle Slab Level,,CONSTRUCTION,,FAB Waffle Slabs,SEAN MONK,,2023-07-12 13:00,2023-07-14 09:00,2023-07-12 13:00,2023-07-14 09:00,2025-11-20 17:00,2025-11-20 17:00,2025-12-04 07:00,2025-12-04 07:00,0,16,100
CN.AB5.ST.1370,PH1-ERECT PRECAST WAFFLES GL 32 - 33 (L3) - B5,Complete,Area B-5,North Areas (Team B -Gridlines 17-33),B5 - Area 12 (Gridlines 30-33),L3 / Waffle Slab Level,,CONSTRUCTION,,FAB Waffle Slabs,SEAN MONK,,2023-07-14 09:00,2023-07-15 15:00,2023-07-14 09:00,2023-07-15 16:00,2025-11-20 17:00,2025-11-20 17:00,2025-12-04 07:00,2025-12-04 07:00,0,16,100
xN.AB5.ST.1110,PH1-ERECT ROOF DECKING GL 31 - 32 - B5,Complete,Area B-5,North Areas (Team B -Gridlines 17-33),B5 - Area 12 (Gridlines 30-33),L4 - SUP Roof - FAB Roof,,CONSTRUCTION,,Decking & Detail,SEAN MONK,,2023-06-17 08:00,2023-06-22 08:00,2023-06-17 08:00,2023-06-18 09:00,2025-11-20 17:00,2025-11-20 17:00,2025-11-14 07:00,2025-11-14 07:00,0,40,100
xN.AB5.ST.1120,PH1-ERECT ROOF DECKING GL 32 - 33 - B5,Complete,Area B-5,North Areas (Team B -Gridlines 17-33),B5 - Area 12 (Gridlines 30-33),L4 - SUP Roof - FAB Roof,,CONSTRUCTION,,Decking & Detail,SEAN MONK,,2023-07-03 07:00,2023-07-08 17:00,2023-06-28 07:00,2023-07-03 07:00,2025-11-20 17:00,2025-11-20 17:00,2025-11-14 07:00,2025-11-14 07:00,0,40,100
CN.AB1.ST.1510,PH1- FIRE PROOFING TOUCH UP PRIME - SFRM STEEL COLUMNS / TRUSS WEB / BOTTOM CORD - B2 - GL 30-33 - L3,Complete,Area B-5,South Areas (Team A - Gridlines 3-17),B5 - Area 12 (Gridlines 30-33),L3 / Waffle Slab Level,,CONSTRUCTION,ROLLING PLAINS,Fireproofing,AMBER CARO,,2024-07-29 07:00,2024-08-02 17:00,2024-07-02 07:00,2024-07-08 17:00,2025-11-20 17:00,2025-11-20 17:00,2025-12-05 17:00,2025-12-05 17:00,0,50,100
CN.AB1.ST.1520,PH1- FIRE PROOFING - INTUMSCENT PAINT / EPOXY / PRIMER BOTTOM CORD (L3) - B5,Complete,Area B-5,South Areas (Team A - Gridlines 3-17),B5 - Area 12 (Gridlines 30-33),L3 / Waffle Slab Level,,CONSTRUCTION,,Fireproofing,AMBER CARO,,2023-08-03 07:00,2023-08-08 13:00,2023-07-27 07:00,2023-07-30 15:00,2025-11-20 17:00,2025-11-20 17:00,2025-11-17 07:00,2025-11-17 07:00,0,56,100
CN.AB1.ST.1780,SECAI - INSTALL UPPER CEILING - TRUSS - B5 - GL 27-33 - L3,Complete,Area B-5,South Areas (Team A - Gridlines 3-17),B5 - Area 12 (Gridlines 30-33),L3 / Waffle Slab Level,,CONSTRUCTION,SECAI,Pour Concrete,JAMES LEE,,2024-03-04 07:00,2024-03-08 17:00,2024-03-04 07:00,2024-03-08 17:00,2025-11-20 17:00,2025-11-20 17:00,2025-12-05 17:00,2025-12-05 17:00,0,50,100
CN.AB5.ST.1840,FRP - RAKER TOPPING SLAB - WAFFLE (L3) - B5,Complete,Area B-5,South Areas (Team A - Gridlines 3-17),B5 - Area 12 (Gridlines 30-33),L3 / Waffle Slab Level,,CONSTRUCTION,,TOPPING,CONCRETE,,2023-08-15 15:00,2023-08-18 09:00,2023-08-15 15:00,2023-08-18 09:00,2025-11-20 17:00,2025-11-20 17:00,2025-12-04 07:00,2025-12-04 07:00,0,24,100
CN.AB1.ST.1960,COLUMN WRAP FRAMING AND DRYWALL - G LINE - UPTO 8 FEET,Complete,Area B-5,,B5 - Area 12 (Gridlines 30-33),L3 / Waffle Slab Level,,CONSTRUCTION,,DRYWALL,,,2024-01-22 07:00,2024-01-25 17:00,2024-01-13 07:00,2024-01-18 17:00,2025-11-20 17:00,2025-11-20 17:00,2025-12-05 17:00,2025-12-05 17:00,0,40,100
CN.AB3.ST.1970,INSTALL ACCESS FLOORS (BY SECAI) - B5 - GL 30-33 - L3,Complete,Area B-5,,B5 - Area 12 (Gridlines 30-33),L3 / Waffle Slab Level,,CONSTRUCTION,SECAI,TBD Architectural Finishes,,,2024-05-06 07:00,2024-05-13 17:00,2024-05-06 07:00,2024-05-11 17:00,2025-11-20 17:00,2025-11-20 17:00,2025-12-05 17:00,2025-12-05 17:00,0,50,100
CN.AB3.ST.1980,COLUMN WRAP FRAMING AND DRYWALL - G LINE - ABOVE 8 FEET - B5 - GL 30-33 - L3,Complete,Area B-5,,B5 - Area 12 (Gridlines 30-33),L3 / Waffle Slab Level,,CONSTRUCTION,BERG,TBD Architectural Finishes,,,2025-10-24 07:00,2025-10-30 17:00,2024-01-22 07:00,2025-03-07 17:00,2025-11-20 17:00,2025-11-20 17:00,2025-12-05 17:00,2025-12-05 17:00,0,50,100
CN.SWB5.6220,METAL STUD FRAMING - GL 33 - L1 - D-G,Complete,Area B-5,West Support Building,GRIDLINE 33,L1 - Fndn Slab,GL33 EXTERIOR AREA (FAB EAST) - D-G,CONSTRUCTION,BERG,DRYWALL,JAMES LIVELY,,2024-02-05 07:00,2024-02-12 13:00,2024-01-03 14:00,2024-01-09 14:00,2025-11-20 17:00,2025-11-20 17:00,2025-11-14 07:00,2025-11-14 07:00,0,56,100
CN.SWB5.6230,HANG INTEROR DRYWALL (3-LAYERS) - GL 33 - L1 - D-G,Complete,Area B-5,West Support Building,GRIDLINE 33,L1 - Fndn Slab,GL33 EXTERIOR AREA (FAB EAST) - D-G,CONSTRUCTION,,DRYWALL,JAMES LIVELY,,2024-02-12 07:00,2024-02-23 13:00,2024-01-04 14:00,2024-01-12 17:00,2025-11-20 17:00,2025-11-20 17:00,2025-11-14 07:00,2025-11-14 07:00,0,96,100
CN.SWB5.6240,INSTALL FIBERGLASS INSULATION - GL 33 - L1 - D-G,Complete,Area B-5,West Support Building,GRIDLINE 33,L1 - Fndn Slab,GL33 EXTERIOR AREA (FAB EAST) - D-G,CONSTRUCTION,BERG,DRYWALL,JAMES LIVELY,,2024-05-03 07:00,2024-05-14 17:00,2024-04-29 07:00,2024-05-13 17:00,2025-11-20 17:00,2025-11-20 17:00,2025-11-14 07:00,2025-11-14 07:00,0,70,100
CN.SWB5.6250,HANG EXTERIOR DRYWALL (3-LAYERS) - GL 33 - L1 - E-G,Complete,Area B-5,West Support Building,GRIDLINE 33,L1 - Fndn Slab,GL33 EXTERIOR AREA (FAB EAST) - D-G,CONSTRUCTION,BERG,DRYWALL,JAMES LIVELY,,2024-05-13 07:00,2024-05-28 17:00,2024-05-01 07:00,2024-06-14 17:00,2025-11-20 17:00,2025-11-20 17:00,2025-11-14 07:00,2025-11-14 07:00,0,90,100
CN.SWB5.6260,METAL STUD FRAMING - GL 33 - L1 - G-K,Complete,Area B-5,West Support Building,GRIDLINE 33,L1 - Fndn Slab,GL33 EXTERIOR AREA (FAB WEST) - G-K,CONSTRUCTION,BERG,DRYWALL,JAMES LIVELY,,2024-02-12 07:00,2024-02-16 15:00,2024-01-03 14:00,2024-01-09 14:00,2025-11-20 17:00,2025-11-20 17:00,2025-11-24 07:00,2025-11-24 07:00,0,48,100
CN.SWB5.6270,HANG INTEROR DRYWALL (3-LAYERS) - GL 33 - L1 - G-K,Complete,Area B-5,West Support Building,GRIDLINE 33,L1 - Fndn Slab,GL33 EXTERIOR AREA (FAB WEST) - G-K,CONSTRUCTION,,DRYWALL,JAMES LIVELY,,2024-02-22 07:00,2024-03-04 17:00,2024-01-04 14:00,2024-01-12 17:00,2025-11-20 17:00,2025-11-20 17:00,2025-12-04 07:00,2025-12-04 07:00,0,80,100
CN.SWB5.6280,HANG EXTERIOR DRYWALL (3-LAYERS) - GL 33 - L1 - G-K,Complete,Area B-5,West Support Building,GRIDLINE 33,L1 - Fndn Slab,GL33 EXTERIOR AREA (FAB WEST) - G-K,CONSTRUCTION,BERG,DRYWALL,JAMES LIVELY,,2024-09-20 07:00,2024-09-27 17:00,2024-09-16 07:00,2024-10-05 17:00,2025-11-20 17:00,2025-11-20 17:00,2025-12-04 07:00,2025-12-04 07:00,0,50,100
CN.SWB5.6290,INSTALL FIBERGLASS INSULATION - GL 33 - L1 - G-K,Complete,Area B-5,West Support Building,GRIDLINE 33,L1 - Fndn Slab,GL33 EXTERIOR AREA (FAB WEST) - G-K,CONSTRUCTION,BERG,DRYWALL,JAMES LIVELY,,2024-09-20 07:00,2024-09-30 17:00,2024-09-13 07:00,2024-09-14 17:00,2025-11-20 17:00,2025-11-20 17:00,2025-12-04 07:00,2025-12-04 07:00,0,60,100
CN.BB51.ST.1170,HANG INTEROR DRYWALL (3-LAYERS) - GL 33 - L2 - D-G,Complete,Area B-5,North Areas (Team B -Gridlines 17-33),GRIDLINE 33,L2 - SubFab Level,GL33 EXTERIOR AREA (FAB EAST) - D-G,CONSTRUCTION,,DRYWALL,AMBER CARO,,2023-11-20 07:00,2023-12-01 11:00,2023-11-08 07:00,2023-11-14 15:00,2025-11-20 17:00,2025-11-20 17:00,2025-11-14 07:00,2025-11-14 07:00,0,64,100
CN.BB51.ST.1180,HANG INTEROR DRYWALL (3-LAYERS) - GL 33 - L2 - G-K,Complete,Area B-5,North Areas (Team B -Gridlines 17-33),GRIDLINE 33,L2 - SubFab Level,GL33 EXTERIOR AREA (FAB WEST) - G-K,CONSTRUCTION,,DRYWALL,AMBER CARO,,2024-01-29 07:00,2024-02-07 09:00,2024-01-12 14:00,2024-01-19 13:00,2025-11-20 17:00,2025-11-20 17:00,2025-12-04 07:00,2025-12-04 07:00,0,72,100
CN.BB51.ST.1190,INSTALL FIBERGLASS INSULATION - GL 33 - L2 - D-G,Complete,Area B-5,North Areas (Team B -Gridlines 17-33),GRIDLINE 33,L2 - SubFab Level,GL33 EXTERIOR AREA (FAB EAST) - D-G,CONSTRUCTION,,DRYWALL,AMBER CARO,,2024-01-22 07:00,2024-01-26 15:00,2023-12-26 07:00,2024-01-01 15:00,2025-11-20 17:00,2025-11-20 17:00,2025-11-14 07:00,2025-11-14 07:00,0,48,100
CN.BB51.ST.1200,INSTALL FIBERGLASS INSULATION - GL 33 - L2 - G-H,Complete,Area B-5,North Areas (Team B -Gridlines 17-33),GRIDLINE 33,L2 - SubFab Level,GL33 EXTERIOR AREA (FAB WEST) - G-K,CONSTRUCTION,,DRYWALL,AMBER CARO,,2024-02-05 13:00,2024-02-12 11:00,2024-01-15 07:00,2024-01-25 14:00,2025-11-20 17:00,2025-11-20 17:00,2025-12-04 07:00,2025-12-04 07:00,0,48,100
CN.BB51.ST.1210,HANG EXTERIOR DRYWALL (3-LAYERS) - GL 33 - L2 - D-G,Complete,Area B-5,North Areas (Team B -Gridlines 17-33),GRIDLINE 33,L2 - SubFab Level,GL33 EXTERIOR AREA (FAB EAST) - D-G,CONSTRUCTION,,DRYWALL,AMBER CARO,,2024-01-26 15:00,2024-02-02 13:00,2024-01-06 15:00,2024-01-13 17:00,2025-11-20 17:00,2025-11-20 17:00,2025-11-14 07:00,2025-11-14 07:00,0,48,100
CN.BB51.ST.1220,HANG EXTERIOR DRYWALL (3-LAYERS) - GL 33 - L2 - G-H,Complete,Area B-5,North Areas (Team B -Gridlines 17-33),GRIDLINE 33,L2 - SubFab Level,GL33 EXTERIOR AREA (FAB WEST) - G-K,CONSTRUCTION,,DRYWALL,AMBER CARO,,2024-02-12 07:00,2024-02-20 11:00,2024-02-08 14:00,2024-02-15 12:00,2025-11-20 17:00,2025-11-20 17:00,2025-12-04 07:00,2025-12-04 07:00,0,64,100
CN.BB51.ST.1230,METAL STUD FRAMING VIBRATION PAD INSTALL - GL 33 - L2 - D-G,Complete,Area B-5,North Areas (Team B -Gridlines 17-33),GRIDLINE 33,L2 - SubFab Level,GL33 EXTERIOR AREA (FAB EAST) - D-G,CONSTRUCTION,BERG,DRYWALL,AMBER CARO,,2023-11-13 07:00,2023-11-22 11:00,2023-10-31 07:00,2023-11-14 15:00,2025-11-20 17:00,2025-11-20 17:00,2025-11-14 07:00,2025-11-14 07:00,0,64,100
CN.BB51.ST.1240,METAL STUD FRAMING VIBRATION PAD INSTALL - GL 33 - L2 - G-K,Complete,Area B-5,North Areas (Team B -Gridlines 17-33),GRIDLINE 33,L2 - SubFab Level,GL33 EXTERIOR AREA (FAB WEST) - G-K,CONSTRUCTION,BERG,DRYWALL,AMBER CARO,,2024-01-22 07:00,2024-01-30 11:00,2024-01-01 07:00,2024-01-08 14:00,2025-11-20 17:00,2025-11-20 17:00,2025-11-14 07:00,2025-11-14 07:00,0,64,100
CN.AB3.ST.2030,METAL STUD FRAMING VIBRATION PAD INSTALL - GL 33 - L3 - D-G,Complete,Area B-5,,GRIDLINE 33,L3 / Waffle Slab Level,GL33 EXTERIOR AREA (FAB EAST) - D-G,CONSTRUCTION,BERG,DRYWALL,,,2024-01-22 07:00,2024-02-02 13:00,2024-01-02 07:00,2024-01-12 17:00,2025-11-20 17:00,2025-11-20 17:00,2025-11-14 07:00,2025-11-14 07:00,0,96,100
CN.AB3.ST.2040,HANG INTEROR DRYWALL (3-LAYERS) - GL 33 - L3 - D-G,Complete,Area B-5,,GRIDLINE 33,L3 / Waffle Slab Level,GL33 EXTERIOR AREA (FAB EAST) - D-G,CONSTRUCTION,,DRYWALL,,,2024-03-11 07:00,2024-03-28 13:00,2024-01-29 00:00,2024-02-09 00:00,2025-11-20 17:00,2025-11-20 17:00,2025-11-14 07:00,2025-11-14 07:00,0,96,100
CN.AB3.ST.2050,INSTALL FIBERGLASS INSULATION - GL 33 - L3 - D-G,Complete,Area B-5,,GRIDLINE 33,L3 / Waffle Slab Level,GL33 EXTERIOR AREA (FAB EAST) - D-G,CONSTRUCTION,,DRYWALL,,,2024-04-01 07:00,2024-04-05 15:00,2024-02-16 07:00,2024-04-08 17:00,2025-11-20 17:00,2025-11-20 17:00,2025-11-14 07:00,2025-11-14 07:00,0,48,100
CN.AB3.ST.2060,HANG EXTERIOR DRYWALL (3-LAYERS) - GL 33 - L3 - D-G,Complete,Area B-5,,GRIDLINE 33,L3 / Waffle Slab Level,GL33 EXTERIOR AREA (FAB EAST) - D-G,CONSTRUCTION,,DRYWALL,,,2024-04-04 11:00,2024-04-19 17:00,2024-02-22 07:00,2024-04-13 17:00,2025-11-20 17:00,2025-11-20 17:00,2025-11-14 07:00,2025-11-14 07:00,0,96,100
CN.AB3.ST.2070,METAL STUD FRAMING VIBRATION PAD INSTALL - GL 33 - L3 - G-H,Complete,Area B-5,,GRIDLINE 33,L3 / Waffle Slab Level,GL33 EXTERIOR AREA (FAB WEST) - G-K,CONSTRUCTION,BERG,DRYWALL,,,2024-01-22 07:00,2024-01-31 17:00,2024-01-13 07:00,2024-01-21 11:00,2025-11-20 17:00,2025-11-20 17:00,2025-12-04 07:00,2025-12-04 07:00,0,80,100
CN.AB3.ST.2080,HANG INTEROR DRYWALL (3-LAYERS) - GL 33 - L3 - G-H,Complete,Area B-5,,GRIDLINE 33,L3 / Waffle Slab Level,GL33 EXTERIOR AREA (FAB WEST) - G-K,CONSTRUCTION,,DRYWALL,,,2024-03-11 07:00,2024-03-28 13:00,2024-02-26 00:00,2024-03-08 00:00,2025-11-20 17:00,2025-11-20 17:00,2025-12-04 07:00,2025-12-04 07:00,0,96,100
CN.AB3.ST.2090,INSTALL FIBERGLASS INSULATION - GL 33 - L3 - G-K,Complete,Area B-5,,GRIDLINE 33,L3 / Waffle Slab Level,GL33 EXTERIOR AREA (FAB WEST) - G-K,CONSTRUCTION,BERG,DRYWALL,,,2024-08-30 07:00,2024-09-09 17:00,2024-04-17 07:00,2024-04-26 17:00,2025-11-20 17:00,2025-11-20 17:00,2025-12-04 07:00,2025-12-04 07:00,0,60,100
CN.AB3.ST.2100,HANG EXTERIOR DRYWALL (3-LAYERS) - GL 33 - L3 - G-K,Complete,Area B-5,,GRIDLINE 33,L3 / Waffle Slab Level,GL33 EXTERIOR AREA (FAB WEST) - G-K,CONSTRUCTION,BERG,DRYWALL,,,2024-09-09 07:00,2024-09-27 17:00,2024-04-22 07:00,2024-05-04 17:00,2025-11-20 17:00,2025-11-20 17:00,2025-12-04 07:00,2025-12-04 07:00,0,120,100
CN.BB5.ST.1250,METAL STUD FRAMING - GL 33 - L4 - D-G,Complete,Area B-5,North Areas (Team B -Gridlines 17-33),GRIDLINE 33,L4 - SUP Roof - FAB Roof,GL33 EXTERIOR AREA (FAB EAST) - D-G,CONSTRUCTION,BERG,DRYWALL,JAMES LEE,SOMD / Roofing / Waterproofing,2024-02-12 07:00,2024-02-28 15:00,2024-02-06 07:00,2024-02-27 17:00,2025-11-20 17:00,2025-11-20 17:00,2025-11-14 07:00,2025-11-14 07:00,0,128,100
CN.BB5.ST.1260,HANG EXTERIOR DRYWALL (3-LAYERS) - GL 33 - L4 - D-G,Complete,Area B-5,North Areas (Team B -Gridlines 17-33),GRIDLINE 33,L4 - SUP Roof - FAB Roof,GL33 EXTERIOR AREA (FAB EAST) - D-G,CONSTRUCTION,BERG,DRYWALL,JAMES LEE,SOMD / Roofing / Waterproofing,2024-05-03 07:00,2024-05-21 17:00,2024-04-12 07:00,2024-05-24 17:00,2025-11-20 17:00,2025-11-20 17:00,2025-11-14 07:00,2025-11-14 07:00,0,110,100
CN.BB5.ST.1270,INSTALL FIBERGLASS INSULATION - GL 33 - L4 - D-G,Complete,Area B-5,North Areas (Team B -Gridlines 17-33),GRIDLINE 33,L4 - SUP Roof - FAB Roof,GL33 EXTERIOR AREA (FAB EAST) - D-G,CONSTRUCTION,BERG,DRYWALL,JAMES LEE,SOMD / Roofing / Waterproofing,2024-09-20 07:00,2024-09-30 17:00,2024-07-22 07:00,2024-07-26 17:00,2025-11-20 17:00,2025-11-20 17:00,2025-12-04 07:00,2025-12-04 07:00,0,60,100
CN.BB5.ST.1280,HANG INTERIOR DRYWALL (3-LAYERS) - GL 33 - L4 - D-G,Complete,Area B-5,North Areas (Team B -Gridlines 17-33),GRIDLINE 33,L4 - SUP Roof - FAB Roof,GL33 EXTERIOR AREA (FAB EAST) - D-G,CONSTRUCTION,BERG,DRYWALL,JAMES LEE,SOMD / Roofing / Waterproofing,2024-07-29 07:00,2024-08-13 17:00,2024-07-29 07:00,2024-08-08 17:00,2025-11-20 17:00,2025-11-20 17:00,2025-12-04 07:00,2025-12-04 07:00,0,110,100
CN.BB5.ST.1290,METAL STUD FRAMING - GL 33 - L4 - G-K,Complete,Area B-5,North Areas (Team B -Gridlines 17-33),GRIDLINE 33,L4 - SUP Roof - FAB Roof,GL33 EXTERIOR AREA (FAB WEST) - G-K,CONSTRUCTION,BERG,DRYWALL,JAMES LEE,SOMD / Roofing / Waterproofing,2024-02-27 15:00,2024-03-20 13:00,2024-02-27 15:00,2024-03-02 11:00,2025-11-20 17:00,2025-11-20 17:00,2025-12-04 07:00,2025-12-04 07:00,0,128,100
CN.BB5.ST.1300,HANG INTEROR DRYWALL (3-LAYERS) - GL 33 - L4 - G-K,Complete,Area B-5,North Areas (Team B -Gridlines 17-33),GRIDLINE 33,L4 - SUP Roof - FAB Roof,GL33 EXTERIOR AREA (FAB WEST) - G-K,CONSTRUCTION,BERG,DRYWALL,JAMES LEE,SOMD / Roofing / Waterproofing,2024-05-13 07:00,2024-05-31 17:00,2024-04-30 07:00,2024-06-20 17:00,2025-11-20 17:00,2025-11-20 17:00,2025-12-04 07:00,2025-12-04 07:00,0,110,100
CN.BB5.ST.1310,INSTALL FIBERGLASS INSULATION - GL 33 - L4 - G-K,Complete,Area B-5,North Areas (Team B -Gridlines 17-33),GRIDLINE 33,L4 - SUP Roof - FAB Roof,GL33 EXTERIOR AREA (FAB WEST) - G-K,CONSTRUCTION,BERG,DRYWALL,JAMES LEE,SOMD / Roofing / Waterproofing,2024-09-30 07:00,2024-10-08 17:00,2024-08-27 07:00,2024-08-30 17:00,2025-11-20 17:00,2025-11-20 17:00,2025-12-04 07:00,2025-12-04 07:00,0,60,100
CN.BB5.ST.1320,HANG EXTERIOR DRYWALL (3-LAYERS) - GL 33 - L4 - G-K,Complete,Area B-5,North Areas (Team B -Gridlines 17-33),GRIDLINE 33,L4 - SUP Roof - FAB Roof,GL33 EXTERIOR AREA (FAB WEST) - G-K,CONSTRUCTION,BERG,DRYWALL,JAMES LEE,SOMD / Roofing / Waterproofing,2024-09-20 07:00,2024-10-08 17:00,2024-08-28 07:00,2024-09-10 17:00,2025-11-20 17:00,2025-11-20 17:00,2025-12-04 07:00,2025-12-04 07:00,0,110,100
CN.BB51.ST.1250,INSTALL WATERPROOFING / BUILDING WRAP - GL 33 - L2 - E-G,Complete,Area B-5,North Areas (Team B -Gridlines 17-33),GRIDLINE 33,L2 - SubFab Level,GL33 EXTERIOR AREA (FAB EAST) - D-G,CONSTRUCTION,WATER PROOFING GL33,DRYWALL,AMBER CARO,,2024-06-20 07:00,2024-06-24 17:00,2024-06-20 07:00,2024-07-13 17:00,2025-11-20 17:00,2025-11-20 17:00,2025-11-14 07:00,2025-11-14 07:00,0,30,100
CN.BB51.ST.1270,INSTALL WATERPROOFING / BUILDING WRAP - GL 33 - L2 - G-K,Complete,Area B-5,North Areas (Team B -Gridlines 17-33),GRIDLINE 33,L2 - SubFab Level,GL33 EXTERIOR AREA (FAB WEST) - G-K,CONSTRUCTION,WATER PROOFING GL33,DRYWALL,AMBER CARO,,2024-06-17 07:00,2024-06-24 17:00,2024-06-17 07:00,2024-06-22 17:00,2025-11-20 17:00,2025-11-20 17:00,2025-12-04 07:00,2025-12-04 07:00,0,50,100
CN.SWB5.6300,INSTALL WATERPROOFING / BUILDING WRAP - GL 33 - L1 - D-G,Complete,Area B-5,West Support Building,GRIDLINE 33,L1 - Fndn Slab,GL33 EXTERIOR AREA (FAB EAST) - D-G,CONSTRUCTION,WATER PROOFING GL33,DRYWALL,JAMES LIVELY,,2024-10-21 07:00,2024-10-25 17:00,2024-10-14 07:00,2024-10-16 17:00,2025-11-20 17:00,2025-11-20 17:00,2025-11-14 07:00,2025-11-14 07:00,0,40,100
CN.SWB5.6310,INSTALL CORRUGATED METAL PANELS - GL 33 - L1-L3 - E-G (EXCLUDING LEAVEOUTS),Complete,Area B-5,West Support Building,GRIDLINE 33,,GL33 EXTERIOR AREA (FAB EAST) - D-G,CONSTRUCTION,KOVACH,DRYWALL,JAMES LIVELY,,2024-10-31 07:00,2024-11-15 17:00,2024-10-31 07:00,2024-12-18 17:00,2025-11-20 17:00,2025-11-20 17:00,2025-11-14 07:00,2025-11-14 07:00,0,100,100
CN.SWB5.6320,INSTALL WATERPROOFING / BUILDING WRAP - GL 33 - L1 - G-K,Complete,Area B-5,West Support Building,GRIDLINE 33,L1 - Fndn Slab,GL33 EXTERIOR AREA (FAB WEST) - G-K,CONSTRUCTION,WATER PROOFING GL33,DRYWALL,JAMES LIVELY,,2024-10-31 07:00,2024-11-04 17:00,2024-10-31 07:00,2024-11-07 17:00,2025-11-20 17:00,2025-11-20 17:00,2025-12-04 07:00,2025-12-04 07:00,0,30,100
CN.SWB5.6330,INSTALL CORRUGATED METAL PANELS - GL 33 - L1-L3- G-J (EXCLUDING LEAVEOUTS ),Complete,Area B-5,West Support Building,GRIDLINE 33,,GL33 EXTERIOR AREA (FAB WEST) - G-K,CONSTRUCTION,KOVACH,DRYWALL,JAMES LIVELY,,2024-11-14 07:00,2024-11-26 17:00,2024-11-14 07:00,2025-05-30 17:00,2025-11-20 17:00,2025-11-20 17:00,2025-12-04 07:00,2025-12-04 07:00,0,80,100
CN.AB3.ST.2110,INSTALL WATERPROOFING / BUILDING WRAP - GL 33 - L3 - E-G,Complete,Area B-5,,GRIDLINE 33,L3 / Waffle Slab Level,GL33 EXTERIOR AREA (FAB EAST) - D-G,CONSTRUCTION,WATER PROOFING GL33,DRYWALL,,,2024-06-18 07:00,2024-06-21 17:00,2024-06-18 07:00,2024-07-01 17:00,2025-11-20 17:00,2025-11-20 17:00,2025-11-14 07:00,2025-11-14 07:00,0,30,100
CN.AB3.ST.2130,INSTALL WATERPROOFING / BUILDING WRAP - GL 33 - L3 - G-K,Complete,Area B-5,,GRIDLINE 33,L3 / Waffle Slab Level,GL33 EXTERIOR AREA (FAB WEST) - G-K,CONSTRUCTION,,DRYWALL,,,2024-10-01 07:00,2024-10-08 17:00,2024-05-13 07:00,2024-05-25 17:00,2025-11-20 17:00,2025-11-20 17:00,2025-12-04 07:00,2025-12-04 07:00,0,50,100
CN.BB5.ST.1330,INSTALL WATERPROOFING / BUILDING WRAP - GL 33 - L4 - E-G,Complete,Area B-5,North Areas (Team B -Gridlines 17-33),GRIDLINE 33,L4 - SUP Roof - FAB Roof,GL33 EXTERIOR AREA (FAB EAST) - D-G,CONSTRUCTION,WATER PROOFING GL33,DRYWALL,JAMES LEE,SOMD / Roofing / Waterproofing,2024-10-01 07:00,2024-10-11 17:00,2024-10-01 07:00,2024-10-10 17:00,2025-11-20 17:00,2025-11-20 17:00,2025-11-14 07:00,2025-11-14 07:00,0,70,100
CN.BB5.ST.1350,INSTALL WATERPROOFING / BUILDING WRAP - GL 33 - L4 - G-K,Complete,Area B-5,North Areas (Team B -Gridlines 17-33),GRIDLINE 33,L4 - SUP Roof - FAB Roof,GL33 EXTERIOR AREA (FAB WEST) - G-K,CONSTRUCTION,WATER PROOFING GL33,DRYWALL,JAMES LEE,SOMD / Roofing / Waterproofing,2024-10-31 07:00,2024-11-04 17:00,2024-10-31 07:00,2024-11-07 17:00,2025-11-20 17:00,2025-11-20 17:00,2025-12-04 07:00,2025-12-04 07:00,0,30,100
CN.BB51.ST.1310,INSTALL SHEET METAL COVER AT SLAB EDGE - GL 33 - L2 - D-G,Complete,Area B-5,North Areas (Team B -Gridlines 17-33),GRIDLINE 33,L2 - SubFab Level,GL33 EXTERIOR AREA (FAB EAST) - D-G,CONSTRUCTION,,DRYWALL,AMBER CARO,,2024-10-22 07:00,2024-10-31 17:00,2024-10-22 07:00,2024-10-29 17:00,2025-11-20 17:00,2025-11-20 17:00,2025-12-05 17:00,2025-12-05 17:00,0,60,100
CN.AB3.ST.2170,INSTALL SHEET METAL COVER AT SLAB EDGE - GL 33 - L3 - D-G,Complete,Area B-5,,GRIDLINE 33,L3 / Waffle Slab Level,GL33 EXTERIOR AREA (FAB EAST) - D-G,CONSTRUCTION,,DRYWALL,,,2024-11-08 07:00,2024-11-14 17:00,2024-11-08 07:00,2024-11-12 17:00,2025-11-20 17:00,2025-11-20 17:00,2025-11-14 07:00,2025-11-14 07:00,0,40,100
CN.AB3.ST.2180,INSTALL SHEET METAL COVER AT SLAB EDGE - GL 33 - L3 - G-K,Complete,Area B-5,,GRIDLINE 33,L3 / Waffle Slab Level,GL33 EXTERIOR AREA (FAB WEST) - G-K,CONSTRUCTION,,DRYWALL,,,2024-11-14 07:00,2024-11-21 17:00,2024-11-14 07:00,2024-11-19 17:00,2025-11-20 17:00,2025-11-20 17:00,2025-12-04 07:00,2025-12-04 07:00,0,50,100
CN.AB3.ST.2190,INSTALL MINERAL WOOL AT SLAB EDGE - GL 33 - L3 - D-G,Complete,Area B-5,,GRIDLINE 33,L3 / Waffle Slab Level,GL33 EXTERIOR AREA (FAB EAST) - D-G,CONSTRUCTION,BERG,DRYWALL,,,2024-11-04 07:00,2024-11-08 17:00,2024-11-04 07:00,2024-11-08 17:00,2025-11-20 17:00,2025-11-20 17:00,2025-11-14 07:00,2025-11-14 07:00,0,40,100
CN.AB3.ST.2200,INSTALL MINERAL WOOL AT SLAB EDGE - GL 33 - L3 - G-K,Complete,Area B-5,,GRIDLINE 33,L3 / Waffle Slab Level,GL33 EXTERIOR AREA (FAB WEST) - G-K,CONSTRUCTION,,DRYWALL,,,2024-06-03 07:00,2024-06-10 17:00,2024-06-01 07:00,2024-06-07 17:00,2025-11-20 17:00,2025-11-20 17:00,2025-12-04 07:00,2025-12-04 07:00,0,50,100
CN.BB51.ST.1350,INSTALL FIRE CAULKING (VERT/HORIZ) - GL 33 - L2 - D-G,Complete,Area B-5,North Areas (Team B -Gridlines 17-33),GRIDLINE 33,L2 - SubFab Level,GL33 EXTERIOR AREA (FAB EAST) - D-G,CONSTRUCTION,,DRYWALL,AMBER CARO,,2024-01-22 07:00,2024-01-25 09:00,2024-01-13 07:00,2024-01-16 09:00,2025-11-20 17:00,2025-11-20 17:00,2025-11-14 07:00,2025-11-14 07:00,0,32,100
CN.BB51.ST.1360,INSTALL FIRE CAULKING (VERT/HORIZ) - GL 33 - L2 - G-K,Complete,Area B-5,North Areas (Team B -Gridlines 17-33),GRIDLINE 33,L2 - SubFab Level,GL33 EXTERIOR AREA (FAB WEST) - G-K,CONSTRUCTION,BERG,DRYWALL,AMBER CARO,,2024-03-11 07:00,2024-03-19 17:00,2024-03-11 07:00,2024-03-19 17:00,2025-11-20 17:00,2025-11-20 17:00,2025-12-04 07:00,2025-12-04 07:00,0,40,100
CN.AB3.ST.2210,INSTALL FIRE CAULKING (VERT/HORIZ) - GL 33 - L3 - D-G,Complete,Area B-5,,GRIDLINE 33,L3 / Waffle Slab Level,GL33 EXTERIOR AREA (FAB EAST) - D-G,CONSTRUCTION,BERG,DRYWALL,,,2024-06-03 07:00,2024-06-10 17:00,2024-06-01 07:00,2024-06-06 17:00,2025-11-20 17:00,2025-11-20 17:00,2025-11-14 07:00,2025-11-14 07:00,0,50,100
CN.AB3.ST.2220,INSTALL FIRE CAULKING (VERT/HORIZ) - GL 33 - L3 - G-K,Complete,Area B-5,,GRIDLINE 33,L3 / Waffle Slab Level,GL33 EXTERIOR AREA (FAB WEST) - G-K,CONSTRUCTION,BERG,DRYWALL,,,2024-09-24 07:00,2024-10-01 17:00,2024-05-06 07:00,2024-05-10 17:00,2025-11-20 17:00,2025-11-20 17:00,2025-12-04 07:00,2025-12-04 07:00,0,50,100
CN.AB1.ST.2090,COLUMN WRAP FRAMING AND DRYWALL - F LINE - UP TO 8 FEET - B5 - GL 30-33 - L3,Complete,Area B-5,,B5 - Area 12 (Gridlines 30-33),L3 / Waffle Slab Level,,CONSTRUCTION,BERG,DRYWALL,,,2025-10-24 07:00,2025-10-30 17:00,2024-01-22 07:00,2025-03-07 17:00,2025-11-20 17:00,2025-11-20 17:00,2025-12-05 17:00,2025-12-05 17:00,0,50,100
CN.AB3.ST.2300,COLUMN WRAP FRAMING AND DRYWALL - F LINE - ABOVE 8 FEET - B5 - GL 30-33 - L3,Complete,Area B-5,,B5 - Area 12 (Gridlines 30-33),L3 / Waffle Slab Level,,CONSTRUCTION,BERG,TBD Architectural Finishes,,,2025-10-24 07:00,2025-10-30 17:00,2024-01-22 07:00,2025-03-07 17:00,2025-11-20 17:00,2025-11-20 17:00,2025-12-05 17:00,2025-12-05 17:00,0,50,100
CN.BB5.ST.1370,IMPACT - MISSING DETAIL CLOSING WALL - GL 33 - L4 - D-G,Complete,Area B-5,North Areas (Team B -Gridlines 17-33),GRIDLINE 33,L4 - SUP Roof - FAB Roof,GL33 EXTERIOR AREA (FAB EAST) - D-G,CONSTRUCTION,,TBD Architectural Finishes,JAMES LEE,SOMD / Roofing / Waterproofing,2024-01-22 07:00,2024-01-25 17:00,2024-01-19 07:00,2024-01-31 16:00,2025-11-20 17:00,2025-11-20 17:00,2025-11-14 07:00,2025-11-14 07:00,0,40,100
CN.SWB5.6660,METAL STUD FRAMING - GL 33 - L1 - A-B,Complete,Area B-5,West Support Building,GRIDLINE 33,L1 - Fndn Slab,GL33 EXTERIOR AREA (SUE) - A-C,CONSTRUCTION,BERG,DRYWALL,JAMES LIVELY,,2024-03-11 07:00,2024-03-20 15:00,2024-02-26 08:00,2024-02-29 09:00,2025-11-20 17:00,2025-11-20 17:00,2025-11-24 07:00,2025-11-24 07:00,0,48,100
CN.SWB5.6670,METAL STUD FRAMING - GL 33 - L1 - L-N,Complete,Area B-5,West Support Building,GRIDLINE 33,L1 - Fndn Slab,GL33 EXTERIOR AREA (SUW) - L-N,CONSTRUCTION,BERG,DRYWALL,JAMES LIVELY,,2024-03-18 07:00,2024-03-25 15:00,2024-02-26 09:00,2024-03-26 11:00,2025-11-20 17:00,2025-11-20 17:00,2025-11-24 07:00,2025-11-24 07:00,0,48,100
CN.SWB5.6680,HANG INTEROR DRYWALL (3-LAYERS) - GL 33 - L1 - A-B,Complete,Area B-5,West Support Building,GRIDLINE 33,L1 - Fndn Slab,GL33 EXTERIOR AREA (SUE) - A-C,CONSTRUCTION,BERG,DRYWALL,JAMES LIVELY,,2024-03-18 07:00,2024-03-28 17:00,2024-03-18 00:00,2024-03-29 14:00,2025-11-20 17:00,2025-11-20 17:00,2025-12-02 07:00,2025-12-02 07:00,0,80,100
CN.SWB5.6690,HANG INTEROR DRYWALL (3-LAYERS) - GL 33 - L1 - L-M,Complete,Area B-5,West Support Building,GRIDLINE 33,L1 - Fndn Slab,GL33 EXTERIOR AREA (SUW) - L-N,CONSTRUCTION,,DRYWALL,JAMES LIVELY,,2024-03-22 07:00,2024-03-27 17:00,2024-03-19 00:00,2024-03-30 00:00,2025-11-20 17:00,2025-11-20 17:00,2025-11-24 07:00,2025-11-24 07:00,0,40,100
CN.SWB5.6700,INSTALL FIBERGLASS INSULATION - GL 33 - L1 - A-C,Complete,Area B-5,West Support Building,GRIDLINE 33,L1 - Fndn Slab,GL33 EXTERIOR AREA (SUE) - A-C,CONSTRUCTION,BERG,DRYWALL,JAMES LIVELY,,2024-10-04 07:00,2024-10-14 17:00,2024-09-28 07:00,2024-10-02 17:00,2025-11-20 17:00,2025-11-20 17:00,2025-12-02 07:00,2025-12-02 07:00,0,60,100
CN.SWB5.6710,INSTALL FIBERGLASS INSULATION - GL 33 - L1 - L-N (EXCLUDING BUCK HOIST LEAVEOUT ),Complete,Area B-5,West Support Building,GRIDLINE 33,L1 - Fndn Slab,GL33 EXTERIOR AREA (SUW) - L-N,CONSTRUCTION,BERG,DRYWALL,JAMES LIVELY,,2025-07-11 07:00,2025-07-16 17:00,2025-06-19 07:00,2025-06-20 08:00,2025-11-20 17:00,2025-11-20 17:00,2025-11-24 07:00,2025-11-24 07:00,0,40,100
CN.SWB5.6720,BERG - HANG EXTERIOR DRYWALL (3-LAYERS) - GL 33 - L1 - B-C,Complete,Area B-5,West Support Building,GRIDLINE 33,L1 - Fndn Slab,GL33 EXTERIOR AREA (SUE) - A-C,CONSTRUCTION,BERG,DRYWALL,JAMES LIVELY,,2025-06-24 11:00,2025-07-02 11:00,2025-06-20 11:00,2025-08-15 17:00,2025-11-20 17:00,2025-11-20 17:00,2025-12-02 07:00,2025-12-02 07:00,0,60,100
CN.SWB5.6730,SECAI/ AXIOS - EXTERIOR SHEATHING (3-LAYERS) - GL 33 - L1 - L-N(EXCLUDING BUCK HOIST LEAVEOUT ),Complete,Area B-5,West Support Building,GRIDLINE 33,L1 - Fndn Slab,GL33 EXTERIOR AREA (SUW) - L-N,CONSTRUCTION,BERG,DRYWALL,JAMES LIVELY,,2025-06-23 07:00,2025-07-31 17:00,2025-06-23 07:00,2025-08-29 17:00,2025-11-20 17:00,2025-11-20 17:00,2025-11-24 07:00,2025-11-24 07:00,0,280,100
CN.SWB5.6740,GDA WATERPROOFING / BUILDING WRAP - GL 33 - L2 - B-C,Complete,Area B-5,West Support Building,GRIDLINE 33,L1 - Fndn Slab,GL33 EXTERIOR AREA (SUE) - A-C,CONSTRUCTION,WATER PROOFING GL33,DRYWALL,JAMES LIVELY,,2025-10-02 07:00,2025-10-06 17:00,2025-09-24 12:00,2025-09-26 17:00,2025-11-20 17:00,2025-11-20 17:00,2025-12-02 07:00,2025-12-02 07:00,0,30,100
CN.SWB5.6750,BRAZOS WATERPROOFING / BUILDING WRAP - GL 33 - L1 - L-N(EXCLUDING BUCK HOIST LEAVEOUT ),Not Started,Area B-5,West Support Building,GRIDLINE 33,L1 - Fndn Slab,GL33 EXTERIOR AREA (SUW) - L-N,CONSTRUCTION,WATER PROOFING GL33,DRYWALL,JAMES LIVELY,,2025-11-21 07:00,2025-12-02 17:00,,,2025-11-21 07:00,2025-12-02 17:00,2025-11-24 07:00,2025-12-03 17:00,60,60,0
CN.SWB5.6760,INSTALL CORRUGATED METAL PANELS - GL 33 - L1-L3 - B-C,Not Started,Area B-5,West Support Building,GRIDLINE 33,,GL33 EXTERIOR AREA (SUE) - A-C,CONSTRUCTION,KOVACH,DRYWALL,JAMES LIVELY,,2025-12-12 07:00,2025-12-12 17:00,,,2025-12-12 07:00,2025-12-12 17:00,2025-12-05 07:00,2025-12-05 17:00,10,10,0
CN.SWB5.6770,INSTALL CORRUGATED METAL PANELS - GL 33 - L1-L3 - L-N (EXCLUDING BUCK HOIST LEAVEOUT ),Not Started,Area B-5,West Support Building,GRIDLINE 33,,GL33 EXTERIOR AREA (SUW) - L-N,CONSTRUCTION,KOVACH,DRYWALL,JAMES LIVELY,,2025-12-03 07:00,2025-12-04 17:00,,,2025-12-03 07:00,2025-12-04 17:00,2025-12-04 07:00,2025-12-05 17:00,20,20,0
CN.BB51.ST.1400,BRAZOS WATERPROOFING - GL 33 - L2 - A-B,Complete,Area B-5,North Areas (Team B -Gridlines 17-33),GRIDLINE 33,L2 - SubFab Level,GL33 EXTERIOR AREA (SUE) - A-C,CONSTRUCTION,BERG,DRYWALL,AMBER CARO,,2025-10-02 07:00,2025-10-02 17:00,2025-09-29 07:00,2025-09-30 17:00,2025-11-20 17:00,2025-11-20 17:00,2025-12-05 07:00,2025-12-05 07:00,0,10,100
CN.BB51.ST.1440,HANG EXTERIOR DRYWALL (3-LAYERS) - GL 33 - L2 - A-B,Complete,Area B-5,North Areas (Team B -Gridlines 17-33),GRIDLINE 33,L2 - SubFab Level,GL33 EXTERIOR AREA (SUE) - A-C,CONSTRUCTION,BERG,DRYWALL,AMBER CARO,,2025-06-24 11:00,2025-07-02 11:00,2025-05-28 08:24,2025-06-03 13:00,2025-11-20 17:00,2025-11-20 17:00,2025-12-02 07:00,2025-12-02 07:00,0,60,100
CN.BB51.ST.1450,HANG EXTERIOR DRYWALL (3-LAYERS) - GL 33 - K-L.5 LVL 4-6,Complete,Area B-5,North Areas (Team B -Gridlines 17-33),GRIDLINE 33,L2 - SubFab Level,GL33 EXTERIOR AREA (SUW) - L-N,CONSTRUCTION,BERG,DRYWALL,AMBER CARO,,2024-09-06 07:00,2024-09-17 17:00,2024-07-29 14:07,2025-06-09 13:00,2025-11-20 17:00,2025-11-20 17:00,2025-11-24 07:00,2025-11-24 07:00,0,70,100
CN.BB51.ST.1460,INSTALL FIRE CAULKING (VERT/HORIZ) - GL 33 - L2 -A-B,Complete,Area B-5,North Areas (Team B -Gridlines 17-33),GRIDLINE 33,L2 - SubFab Level,GL33 EXTERIOR AREA (SUE) - A-C,CONSTRUCTION,BERG,DRYWALL,AMBER CARO,,2025-07-02 11:00,2025-07-09 11:00,2025-06-04 07:00,2025-06-05 17:00,2025-11-20 17:00,2025-11-20 17:00,2025-12-02 07:00,2025-12-02 07:00,0,40,100
CN.BB51.ST.1470,INSTALL FIRE CAULKING (VERT/HORIZ) - GL 33 - K-L.5 LVL 4-6,Complete,Area B-5,North Areas (Team B -Gridlines 17-33),GRIDLINE 33,L2 - SubFab Level,GL33 EXTERIOR AREA (SUW) - L-N,CONSTRUCTION,BERG,DRYWALL,AMBER CARO,,2025-06-30 07:00,2025-07-03 17:00,2025-06-10 07:05,2025-06-13 17:00,2025-11-20 17:00,2025-11-20 17:00,2025-11-24 07:00,2025-11-24 07:00,0,40,100
CN.BB51.ST.1480,INSTALL FIBERGLASS INSULATION - GL 33 - L2 - A-C,Complete,Area B-5,North Areas (Team B -Gridlines 17-33),GRIDLINE 33,L2 - SubFab Level,GL33 EXTERIOR AREA (SUE) - A-C,CONSTRUCTION,BERG,DRYWALL,AMBER CARO,,2024-09-30 07:00,2024-10-03 17:00,2024-09-30 07:00,2024-10-03 17:00,2025-11-20 17:00,2025-11-20 17:00,2025-12-02 07:00,2025-12-02 07:00,0,30,100
CN.BB51.ST.1490,INSTALL FIBERGLASS INSULATION - GL 33 - L2 - L-N,Complete,Area B-5,North Areas (Team B -Gridlines 17-33),GRIDLINE 33,L2 - SubFab Level,GL33 EXTERIOR AREA (SUW) - L-N,CONSTRUCTION,BERG,DRYWALL,AMBER CARO,,2024-08-23 07:00,2024-08-30 17:00,2024-08-23 07:00,2024-08-29 17:00,2025-11-20 17:00,2025-11-20 17:00,2025-11-24 07:00,2025-11-24 07:00,0,60,100
CN.BB51.ST.1500,HANG INTEROR DRYWALL (3-LAYERS) - GL 33 - L2 - A-B,Complete,Area B-5,North Areas (Team B -Gridlines 17-33),GRIDLINE 33,L2 - SubFab Level,GL33 EXTERIOR AREA (SUE) - A-C,CONSTRUCTION,,DRYWALL,AMBER CARO,,2024-02-26 07:00,2024-03-05 11:00,2024-02-26 07:00,2024-03-08 00:00,2025-11-20 17:00,2025-11-20 17:00,2025-12-02 07:00,2025-12-02 07:00,0,64,100
CN.BB51.ST.1510,HANG INTEROR DRYWALL (3-LAYERS) - GL 33 - L2 - L-N,Complete,Area B-5,North Areas (Team B -Gridlines 17-33),GRIDLINE 33,L2 - SubFab Level,GL33 EXTERIOR AREA (SUW) - L-N,CONSTRUCTION,,DRYWALL,AMBER CARO,,2024-03-11 07:00,2024-03-25 11:00,2024-03-04 08:00,2024-03-22 00:00,2025-11-20 17:00,2025-11-20 17:00,2025-11-24 07:00,2025-11-24 07:00,0,64,100
CN.BB51.ST.1540,GDA - WATERPROOFING / BUILDING WRAP - GL 33 - L3 - A-B,Complete,Area B-5,North Areas (Team B -Gridlines 17-33),GRIDLINE 33,L2 - SubFab Level,GL33 EXTERIOR AREA (SUE) - A-C,CONSTRUCTION,WATER PROOFING GL33,DRYWALL,AMBER CARO,,2025-07-09 11:00,2025-07-14 11:00,2025-06-06 11:00,2025-08-15 08:00,2025-11-20 17:00,2025-11-20 17:00,2025-12-02 07:00,2025-12-02 07:00,0,30,100
CN.BB51.ST.1550,INSTALL WATERPROOFING / BUILDING WRAP - GL 33 - K-L.5 LVL 4-6,Complete,Area B-5,North Areas (Team B -Gridlines 17-33),GRIDLINE 33,L2 - SubFab Level,GL33 EXTERIOR AREA (SUW) - L-N,CONSTRUCTION,WATER PROOFING GL33,DRYWALL,AMBER CARO,,2025-09-09 07:00,2025-09-15 17:00,2025-08-20 07:00,2025-08-29 17:00,2025-11-20 17:00,2025-11-20 17:00,2025-12-04 07:00,2025-12-04 07:00,0,50,100
CN.AB3.ST.2360,HANG EXTERIOR DRYWALL (3-LAYERS) - GL 33 - L3 - K-N,Complete,Area B-5,,GRIDLINE 33,L3 / Waffle Slab Level,GL33 EXTERIOR AREA (SUW) - L-N,CONSTRUCTION,BERG,DRYWALL,,,2025-08-06 07:00,2025-08-13 17:00,2025-07-24 12:29,2025-08-04 17:00,2025-11-20 17:00,2025-11-20 17:00,2025-12-04 07:00,2025-12-04 07:00,0,60,100
CN.AB3.ST.2390,AXIOS FRAMING/ SHEATHING - GL 33 - A/33 EXTENSION,Complete,Area B-5,,GRIDLINE 33,L3 / Waffle Slab Level,GL33 EXTERIOR AREA (SUE) - A-C,CONSTRUCTION,BERG,DRYWALL,,,2025-06-23 07:00,2025-06-30 17:00,2025-06-30 00:00,2025-09-22 07:00,2025-11-20 17:00,2025-11-20 17:00,2025-12-04 07:00,2025-12-04 07:00,0,60,100
CN.AB3.ST.2410,HANG INTEROR DRYWALL (3-LAYERS) - GL 33 - L3 - A-B,Complete,Area B-5,,GRIDLINE 33,L3 / Waffle Slab Level,GL33 EXTERIOR AREA (SUE) - A-C,CONSTRUCTION,,DRYWALL,,,2024-03-26 13:00,2024-04-11 09:00,2024-02-26 00:00,2024-03-07 00:00,2025-11-20 17:00,2025-11-20 17:00,2025-12-04 07:00,2025-12-04 07:00,0,96,100
CN.AB3.ST.2420,HANG INTEROR DRYWALL (3-LAYERS) - GL 33 - L3 - L-M,Complete,Area B-5,,GRIDLINE 33,L3 / Waffle Slab Level,GL33 EXTERIOR AREA (SUW) - L-N,CONSTRUCTION,BERG,DRYWALL,,,2024-04-22 07:00,2024-04-29 17:00,2024-04-13 07:00,2024-04-18 17:00,2025-11-20 17:00,2025-11-20 17:00,2025-12-04 07:00,2025-12-04 07:00,0,60,100
CN.AB3.ST.2430,KOVACH - INSULATED METAL PANEL - GL 33 - A/33 EXTENSION,Active,Area B-5,,GRIDLINE 33,L3 / Waffle Slab Level,GL33 EXTERIOR AREA (SUE) - A-C,CONSTRUCTION,,DRYWALL,,,2025-10-22 07:00,2025-10-22 07:00,2025-10-15 07:00,,2025-11-21 07:00,2025-11-24 17:00,2025-12-04 07:00,2025-12-05 17:00,20,0,0
CN.AB3.ST.2450,GDA - WATERPROOFING / BUILDING WRAP - GL 33 - A/33 EXTENSION,Complete,Area B-5,,GRIDLINE 33,L3 / Waffle Slab Level,GL33 EXTERIOR AREA (SUE) - A-C,CONSTRUCTION,WATER PROOFING GL33,DRYWALL,,,2025-10-20 07:00,2025-10-22 17:00,2025-10-11 07:00,2025-10-13 17:00,2025-11-20 17:00,2025-11-20 17:00,2025-12-04 07:00,2025-12-04 07:00,0,30,100
CN.AB3.ST.2460,GDA - WATERPROOFING / BUILDING WRAP - GL 33 - L2- L3 - L-N,Complete,Area B-5,,GRIDLINE 33,L3 / Waffle Slab Level,GL33 EXTERIOR AREA (SUW) - L-N,CONSTRUCTION,WATER PROOFING GL33,DRYWALL,,,2025-09-04 07:00,2025-09-04 07:00,2025-08-08 17:51,2025-09-04 07:00,2025-11-20 17:00,2025-11-20 17:00,2025-12-04 07:00,2025-12-04 07:00,0,0,100
CN.BB51.ST.1560,METAL STUD FRAMING - GL 33 - L2 - A-B,Complete,Area B-5,North Areas (Team B -Gridlines 17-33),GRIDLINE 33,L2 - SubFab Level,GL33 EXTERIOR AREA (SUE) - A-C,CONSTRUCTION,BERG,DRYWALL,AMBER CARO,,2024-01-29 07:00,2024-02-05 13:00,2024-01-28 07:00,2024-02-11 16:00,2025-11-20 17:00,2025-11-20 17:00,2025-11-24 07:00,2025-11-24 07:00,0,56,100
CN.AB3.ST.2470,METAL STUD FRAMING - GL 33 - L3 - A-B,Complete,Area B-5,,GRIDLINE 33,L3 / Waffle Slab Level,GL33 EXTERIOR AREA (SUE) - A-C,CONSTRUCTION,BERG,DRYWALL,,,2024-01-29 07:00,2024-02-09 13:00,2024-01-28 07:00,2024-02-13 00:00,2025-11-20 17:00,2025-11-20 17:00,2025-12-04 07:00,2025-12-04 07:00,0,96,100
CN.AB3.ST.2480,METAL STUD FRAMING - GL 33 - L3 - L-M,Complete,Area B-5,,GRIDLINE 33,L3 / Waffle Slab Level,GL33 EXTERIOR AREA (SUW) - L-N,CONSTRUCTION,BERG,DRYWALL,,,2024-04-18 07:00,2024-04-25 17:00,2024-04-08 07:00,2024-04-12 17:00,2025-11-20 17:00,2025-11-20 17:00,2025-12-04 07:00,2025-12-04 07:00,0,60,100
CN.BB51.ST.1570,METAL STUD FRAMING - GL 33 - L2 - L-N,Complete,Area B-5,North Areas (Team B -Gridlines 17-33),GRIDLINE 33,L2 - SubFab Level,GL33 EXTERIOR AREA (SUW) - L-N,CONSTRUCTION,BERG,DRYWALL,AMBER CARO,,2024-02-26 07:00,2024-03-04 13:00,2024-02-26 07:00,2024-02-27 17:00,2025-11-20 17:00,2025-11-20 17:00,2025-11-24 07:00,2025-11-24 07:00,0,56,100
CN.BB51.ST.1580,COLUMNS - GRINDING (P2C) - L2 - GL 31-33 / E3 - F.6 G-E,Complete,Area B-5,North Areas (Team B -Gridlines 17-33),B5 - Area 12 (Gridlines 30-33),L2 - SubFab Level,,CONSTRUCTION,,TBD Architectural Finishes,AMBER CARO,,2024-02-23 15:00,2024-02-26 08:00,2024-01-31 15:00,2024-02-15 15:00,2025-11-20 17:00,2025-11-20 17:00,2025-12-05 17:00,2025-12-05 17:00,0,23,100
CN.BB51.ST.1590,"COLUMNS - PRIME, INTERMEDIATE COAT & TOP COAT (P2C) - L2 - GL 31-33 / E3 - F.6",Complete,Area B-5,North Areas (Team B -Gridlines 17-33),B5 - Area 12 (Gridlines 30-33),L2 - SubFab Level,FAB EAST 33 - 31,CONSTRUCTION,,TBD Architectural Finishes,AMBER CARO,,2024-03-03 11:00,2024-03-06 14:00,2024-02-05 11:00,2024-02-15 16:00,2025-11-20 17:00,2025-11-20 17:00,2025-12-05 17:00,2025-12-05 17:00,0,33,100
CN.BB51.ST.1600,"COLUMNS - PRIME, INTERMEDIATE COAT & TOP COAT - L2 - GL 33-28 - G-J- WEST [B1]",Complete,Area B-5,North Areas (Team B -Gridlines 17-33),B4 - Area 11 (Gridlines 27-30),L2 - SubFab Level,FAB WEST 27 - 33[6],CONSTRUCTION,CHERRY COATING,TBD Architectural Finishes,AMBER CARO,,2024-05-10 07:00,2024-05-20 17:00,2024-05-10 07:00,2024-05-25 17:00,2025-11-20 17:00,2025-11-20 17:00,2025-12-05 17:00,2025-12-05 17:00,0,60,100
CN.BB51.ST.1610,COLUMNS- GRINDING/SCRAPING - B5 - GL 30-33 - G-J - WEST - L2,Complete,Area B-5,North Areas (Team B -Gridlines 17-33),B5 - Area 12 (Gridlines 30-33),L2 - SubFab Level,,CONSTRUCTION,CHERRY COATING,TBD Architectural Finishes,AMBER CARO,,2024-02-19 07:00,2024-02-28 09:00,2024-04-01 07:00,2024-05-09 17:00,2025-11-20 17:00,2025-11-20 17:00,2025-12-05 17:00,2025-12-05 17:00,0,72,100
CN.SWB5.6920,METAL STUD FRAMING - GL 33 - L1 - B-C,Complete,Area B-5,West Support Building,GRIDLINE 33,L1 - Fndn Slab,GL33 EXTERIOR AREA (SUE) - A-C,CONSTRUCTION,BERG,DRYWALL,JAMES LIVELY,,2024-04-01 07:00,2024-04-04 09:00,2024-03-11 00:00,2024-03-21 00:00,2025-11-20 17:00,2025-11-20 17:00,2025-12-02 07:00,2025-12-02 07:00,0,32,100
CN.SWB5.6930,HANG INTEROR DRYWALL (3-LAYERS) - GL 33 - L1 - B-C,Complete,Area B-5,West Support Building,GRIDLINE 33,L1 - Fndn Slab,GL33 EXTERIOR AREA (SUE) - A-C,CONSTRUCTION,BERG,DRYWALL,JAMES LIVELY,,2024-04-15 07:00,2024-04-22 17:00,2024-04-08 07:00,2024-04-13 17:00,2025-11-20 17:00,2025-11-20 17:00,2025-12-02 07:00,2025-12-02 07:00,0,60,100
CN.SWB5.6940,HANG INTEROR DRYWALL (3-LAYERS) - GL 33 - L1 - M-N,Complete,Area B-5,West Support Building,GRIDLINE 33,L1 - Fndn Slab,GL33 EXTERIOR AREA (SUW) - L-N,CONSTRUCTION,,DRYWALL,JAMES LIVELY,,2024-03-22 07:00,2024-03-27 09:00,2024-03-19 00:00,2024-03-30 00:00,2025-11-20 17:00,2025-11-20 17:00,2025-11-24 07:00,2025-11-24 07:00,0,32,100
CN.BB51.ST.1620,METAL STUD FRAMING - GL 33 - L2 - B-C,Complete,Area B-5,North Areas (Team B -Gridlines 17-33),GRIDLINE 33,L2 - SubFab Level,GL33 EXTERIOR AREA (SUE) - A-C,CONSTRUCTION,BERG,DRYWALL,AMBER CARO,,2024-02-20 07:00,2024-02-23 17:00,2024-02-20 07:00,2024-02-28 17:00,2025-11-20 17:00,2025-11-20 17:00,2025-12-01 07:00,2025-12-01 07:00,0,40,100
CN.BB51.ST.1630,HANG INTEROR DRYWALL (3-LAYERS) - GL 33 - L2 - B-C,Complete,Area B-5,North Areas (Team B -Gridlines 17-33),GRIDLINE 33,L2 - SubFab Level,GL33 EXTERIOR AREA (SUE) - A-C,CONSTRUCTION,BERG,DRYWALL,AMBER CARO,,2024-03-01 07:00,2024-03-07 17:00,2024-03-01 07:00,2024-03-06 17:00,2025-11-20 17:00,2025-11-20 17:00,2025-12-01 07:00,2025-12-01 07:00,0,50,100
CN.BB51.ST.1640,INSTALL FIBERGLASS INSULATION - GL 33 - L2 - H-K,Complete,Area B-5,North Areas (Team B -Gridlines 17-33),GRIDLINE 33,L2 - SubFab Level,GL33 EXTERIOR AREA (FAB WEST) - G-K,CONSTRUCTION,BERG,DRYWALL,AMBER CARO,,2024-01-26 07:00,2024-02-02 17:00,2024-01-26 07:00,2024-02-01 17:00,2025-11-20 17:00,2025-11-20 17:00,2025-12-04 07:00,2025-12-04 07:00,0,60,100
CN.BB51.ST.1650,HANG EXTERIOR DRYWALL (3-LAYERS) - GL 33 - L2 - H-K,Complete,Area B-5,North Areas (Team B -Gridlines 17-33),GRIDLINE 33,L2 - SubFab Level,GL33 EXTERIOR AREA (FAB WEST) - G-K,CONSTRUCTION,BERG,DRYWALL,AMBER CARO,,2024-02-05 07:00,2024-02-14 17:00,2024-02-01 07:00,2024-03-04 17:00,2025-11-20 17:00,2025-11-20 17:00,2025-12-04 07:00,2025-12-04 07:00,0,80,100
CN.AB3.ST.2500,HANG INTEROR DRYWALL (3-LAYERS) - GL 33 - L3 - B-C,Complete,Area B-5,,GRIDLINE 33,L3 / Waffle Slab Level,GL33 EXTERIOR AREA (SUE) - A-C,CONSTRUCTION,BERG,DRYWALL,,,2024-04-25 07:00,2024-05-14 17:00,2024-04-13 07:00,2024-04-25 17:00,2025-11-20 17:00,2025-11-20 17:00,2025-12-04 07:00,2025-12-04 07:00,0,120,100
CN.AB3.ST.2490,METAL STUD FRAMING - GL 33 - L3 - B-C,Complete,Area B-5,,GRIDLINE 33,L3 / Waffle Slab Level,GL33 EXTERIOR AREA (SUE) - A-C,CONSTRUCTION,BERG,DRYWALL,,,2024-04-18 07:00,2024-05-06 17:00,2024-04-06 07:00,2024-04-12 17:00,2025-11-20 17:00,2025-11-20 17:00,2025-12-04 07:00,2025-12-04 07:00,0,120,100
CN.AB3.ST.2510,REMAINING METAL STUD FRAMING AT LEAVEOUTS - GL 33 - L3 - H-K,Complete,Area B-5,,GRIDLINE 33,L3 / Waffle Slab Level,GL33 EXTERIOR AREA (FAB WEST) - G-K,CONSTRUCTION,BERG,DRYWALL,,,2024-05-03 07:00,2024-05-07 17:00,2024-03-27 07:00,2024-04-05 17:00,2025-11-20 17:00,2025-11-20 17:00,2025-12-04 07:00,2025-12-04 07:00,0,30,100
CN.AB3.ST.2520,REMAINING HANG INTEROR DRYWALL (3-LAYERS) - GL 33 - L3 - H-K,Complete,Area B-5,,GRIDLINE 33,L3 / Waffle Slab Level,GL33 EXTERIOR AREA (FAB WEST) - G-K,CONSTRUCTION,BERG,DRYWALL,,,2024-05-07 07:00,2024-05-16 17:00,2024-04-06 07:00,2024-04-10 17:00,2025-11-20 17:00,2025-11-20 17:00,2025-12-04 07:00,2025-12-04 07:00,0,60,100
CN.BB5.ST.1380,REMAINING METAL STUD FRAMING AT LEAVEOUTS - GL 33 - L4 - G-K,Complete,Area B-5,North Areas (Team B -Gridlines 17-33),GRIDLINE 33,L4 - SUP Roof - FAB Roof,GL33 EXTERIOR AREA (FAB WEST) - G-K,CONSTRUCTION,BERG,DRYWALL,JAMES LEE,SOMD / Roofing / Waterproofing,2024-04-15 07:00,2024-04-19 17:00,2024-04-09 07:00,2024-04-16 17:00,2025-11-20 17:00,2025-11-20 17:00,2025-12-04 07:00,2025-12-04 07:00,0,50,100
CN.AB3.ST.2540,HANG INTEROR DRYWALL (3-LAYERS) - GL 33 - L3 - N-M,Complete,Area B-5,,GRIDLINE 33,L3 / Waffle Slab Level,GL33 EXTERIOR AREA (SUW) - L-N,CONSTRUCTION,,DRYWALL,,,2024-04-15 07:00,2024-04-19 15:00,2024-03-15 00:00,2024-03-18 00:00,2025-11-20 17:00,2025-11-20 17:00,2025-12-04 07:00,2025-12-04 07:00,0,48,100
CN.AB3.ST.2530,METAL STUD FRAMING - GL 33 - L3 - N-M,Complete,Area B-5,,GRIDLINE 33,L3 / Waffle Slab Level,GL33 EXTERIOR AREA (SUW) - L-N,CONSTRUCTION,BERG,DRYWALL,,,2024-04-01 07:00,2024-04-05 15:00,2024-03-11 00:00,2024-03-14 00:00,2025-11-20 17:00,2025-11-20 17:00,2025-12-04 07:00,2025-12-04 07:00,0,48,100
CN.AB3.ST.2550,IMPACT - CLASH WITH FRAMING & STEEL - MOCKUP & APPROVAL TO PROCEED - GL 33 - L3 - B-C,Complete,Area B-5,,GRIDLINE 33,L3 / Waffle Slab Level,GL33 EXTERIOR AREA (SUE) - A-C,CONSTRUCTION,,DRYWALL,,,2024-04-01 07:00,2024-04-12 17:00,2024-03-18 00:00,2024-03-30 00:00,2025-11-20 17:00,2025-11-20 17:00,2025-12-04 07:00,2025-12-04 07:00,0,80,100
CN.AB3.ST.2560,SPRAY FIREPROOFING AT MEZZANINE STEEL - GL 33 - L3 - B-C,Complete,Area B-5,,GRIDLINE 33,L3 / Waffle Slab Level,GL33 EXTERIOR AREA (SUE) - A-C,CONSTRUCTION,,DRYWALL,,,2024-04-15 07:00,2024-04-16 17:00,2024-04-04 07:00,2024-04-05 17:00,2025-11-20 17:00,2025-11-20 17:00,2025-12-04 07:00,2025-12-04 07:00,0,20,100
CN.AB3.ST.2570,IMPACT - CLASH WITH FRAMING & STEEL - MOCKUP & APPROVAL TO PROCEED - GL 33 - L3 - L-M,Complete,Area B-5,,GRIDLINE 33,L3 / Waffle Slab Level,GL33 EXTERIOR AREA (SUW) - L-N,CONSTRUCTION,,DRYWALL,,,2024-04-01 07:00,2024-04-12 17:00,2024-03-18 00:00,2024-03-30 00:00,2025-11-20 17:00,2025-11-20 17:00,2025-12-04 07:00,2025-12-04 07:00,0,80,100
CN.AB3.ST.2580,SPRAY FIREPROOFING AT MEZZANINE STEEL - GL 33 - L3 - L-M,Complete,Area B-5,,GRIDLINE 33,L3 / Waffle Slab Level,GL33 EXTERIOR AREA (SUW) - L-N,CONSTRUCTION,,DRYWALL,,,2024-04-15 07:00,2024-04-16 17:00,2024-04-05 07:00,2024-04-06 17:00,2025-11-20 17:00,2025-11-20 17:00,2025-12-04 07:00,2025-12-04 07:00,0,20,100
CN.AB1.ST.2280,IMPACT - SECAI MEP DUCT NEED REMOVED - TRUSS FIREPROOFING - B5 - GL 27-33 - L3,Complete,Area B-5,South Areas (Team A - Gridlines 3-17),B5 - Area 12 (Gridlines 30-33),L3 / Waffle Slab Level,,CONSTRUCTION,SECAI,Pour Concrete,JAMES LEE,,2024-07-22 07:00,2024-07-26 17:00,2024-06-30 07:00,2024-07-01 17:00,2025-11-20 17:00,2025-11-20 17:00,2025-12-05 17:00,2025-12-05 17:00,0,50,100
CN.AB1.ST.2360,PH1- FIRE PROOFING TOUCH UP PRIME - SFRM STEEL COLUMNS / TRUSS WEB / TOP CORD - B2 - GL 30-33 - L4,Complete,Area B-5,South Areas (Team A - Gridlines 3-17),B5 - Area 12 (Gridlines 30-33),L3 / Waffle Slab Level,,CONSTRUCTION,ROLLING PLAINS,Fireproofing,AMBER CARO,,2024-07-16 07:00,2024-07-23 17:00,2024-06-28 07:00,2024-06-29 17:00,2025-11-20 17:00,2025-11-20 17:00,2025-11-17 07:00,2025-11-17 07:00,0,60,100
CN.AB3.ST.2590,FAB & DELIVER SUPPORTS FOR CORBELS - GL 33 - L3&L4 - D-G,Complete,Area B-5,,GRIDLINE 33,L3 / Waffle Slab Level,GL33 EXTERIOR AREA (FAB EAST) - D-G,CONSTRUCTION,BERG,DRYWALL,,,2024-10-17 07:00,2024-11-01 17:00,2024-10-17 07:00,2025-03-14 17:00,2025-11-20 17:00,2025-11-20 17:00,2025-11-14 07:00,2025-11-14 07:00,0,100,100
CN.AB3.ST.2600,FAB & DELIVER SUPPORTS FOR CORBEL - GL 33 - L4&L5 - G-K,Complete,Area B-5,,GRIDLINE 33,L3 / Waffle Slab Level,GL33 EXTERIOR AREA (FAB WEST) - G-K,CONSTRUCTION,BERG,DRYWALL,,,2024-10-24 07:00,2024-11-08 17:00,2024-10-24 07:00,2025-03-14 17:00,2025-11-20 17:00,2025-11-20 17:00,2025-12-04 07:00,2025-12-04 07:00,0,100,100
CN.SWB5.9350,IMPACT - REPAIR CONCRETE CURB TO FINISH DRYWALL - GL 33 - L1 - L-N,Complete,Area B-5,West Support Building,GRIDLINE 33,L1 - Fndn Slab,GL33 EXTERIOR AREA (SUW) - L-N,CONSTRUCTION,BERG,DRYWALL,JAMES LIVELY,,2024-08-01 07:00,2024-08-06 17:00,2024-08-01 07:00,2024-08-05 17:00,2025-11-20 17:00,2025-11-20 17:00,2025-11-24 07:00,2025-11-24 07:00,0,40,100
CN.BB51.ST.2690,IMPACT - COLUMNS - SECAI TO PROVIDE DIRECTION ON SCAFFOLDING - L2 - GL 33-28 - G-J- WEST [B1],Complete,Area B-5,North Areas (Team B -Gridlines 17-33),B4 - Area 11 (Gridlines 27-30),L2 - SubFab Level,FAB WEST 27 - 33[6],CONSTRUCTION,CHERRY COATING,TBD Architectural Finishes,AMBER CARO,,2024-05-10 07:00,2024-05-20 17:00,2024-05-10 07:00,2024-05-20 17:00,2025-11-20 17:00,2025-11-20 17:00,2025-12-05 17:00,2025-12-05 17:00,0,60,100
CN.SWB5.9950,IMPACT - T&T CRANE IN THE WAY - GL 33 - L1 - A-C,Complete,Area B-5,West Support Building,GRIDLINE 33,L1 - Fndn Slab,GL33 EXTERIOR AREA (SUE) - A-C,CONSTRUCTION,BERG,DRYWALL,JAMES LIVELY,,2024-08-08 07:00,2024-08-20 17:00,2024-08-08 07:00,2024-09-19 17:00,2025-11-20 17:00,2025-11-20 17:00,2025-12-02 07:00,2025-12-02 07:00,0,80,100
CN.SWB5.10170,INSTALL Z-CLIPS FOR CMP - GL 33 - L1-L4 - G-J,Complete,Area B-5,West Support Building,GRIDLINE 33,,GL33 EXTERIOR AREA (FAB WEST) - G-K,CONSTRUCTION,KOVACH,DRYWALL,JAMES LIVELY,,2024-11-08 07:00,2024-11-14 17:00,2024-11-08 07:00,2024-11-14 17:00,2025-11-20 17:00,2025-11-20 17:00,2025-12-04 07:00,2025-12-04 07:00,0,40,100
CN.SWB5.10180,INSTALL Z-CLIPS FOR CMP - GL 33 - L1-L4 - D-G,Complete,Area B-5,West Support Building,GRIDLINE 33,,GL33 EXTERIOR AREA (FAB EAST) - D-G,CONSTRUCTION,KOVACH,DRYWALL,JAMES LIVELY,,2024-10-15 07:00,2024-10-21 17:00,2024-10-15 07:00,2024-10-21 17:00,2025-11-20 17:00,2025-11-20 17:00,2025-11-14 07:00,2025-11-14 07:00,0,40,100
CN.SWB5.10610,IMPACT - REINSTALL WATERPROOFING DUE TO 180 DAYS EXPIRATION - GL 33 - L1-L4 - G-J (EXCLUDING LEAVEOUTS ),Complete,Area B-5,West Support Building,GRIDLINE 33,L4 - SUP Roof - FAB Roof,GL33 EXTERIOR AREA (FAB WEST) - G-K,CONSTRUCTION,KOVACH,DRYWALL,JAMES LIVELY,,2024-11-14 07:00,2024-11-26 17:00,2024-11-22 07:00,2024-11-27 17:00,2025-11-20 17:00,2025-11-20 17:00,2025-12-04 07:00,2025-12-04 07:00,0,80,100
CN.SWB5.10680,INSTALL CORRUGATED METAL PANELS - GL 33 - L4 - E-G,Complete,Area B-5,West Support Building,GRIDLINE 33,,GL33 EXTERIOR AREA (FAB EAST) - D-G,CONSTRUCTION,KOVACH,DRYWALL,JAMES LIVELY,,2025-06-24 07:00,2025-07-08 17:00,2025-05-16 07:00,2025-05-23 15:00,2025-11-20 17:00,2025-11-20 17:00,2025-11-14 07:00,2025-11-14 07:00,0,100,100
CN.SWB5.10690,IMPACT - GDA CLIPS WRONG ISNTALLED REWORK FOR CMP - GL 33 - L1-L4 - D-G,Complete,Area B-5,West Support Building,GRIDLINE 33,,GL33 EXTERIOR AREA (FAB EAST) - D-G,CONSTRUCTION,KOVACH,DRYWALL,JAMES LIVELY,,2024-10-15 07:00,2024-10-21 17:00,2024-11-27 07:00,2024-12-06 17:00,2025-11-20 17:00,2025-11-20 17:00,2025-11-14 07:00,2025-11-14 07:00,0,40,100
CN.SWB5.10750,INSTALL Z-METAL & CORRUGATED METAL PANELS - GL 33 - L1-L3 - A-B,Not Started,Area B-5,West Support Building,GRIDLINE 33,,GL33 EXTERIOR AREA (SUE) - A-C,CONSTRUCTION,KOVACH,DRYWALL,JAMES LIVELY,,2025-11-21 07:00,2025-12-11 17:00,,,2025-11-21 07:00,2025-12-11 17:00,2025-11-14 07:00,2025-12-04 17:00,130,130,0
CN.SWB5.10800,INSTALL CORRUGATED METAL PANELS - GL 33 - L4- G-J,Complete,Area B-5,West Support Building,GRIDLINE 33,,GL33 EXTERIOR AREA (FAB WEST) - G-K,CONSTRUCTION,KOVACH,DRYWALL,JAMES LIVELY,,2025-11-07 07:00,2025-11-07 07:00,2025-10-09 07:00,2025-10-13 17:00,2025-11-20 17:00,2025-11-20 17:00,2025-12-04 07:00,2025-12-04 07:00,0,0,100
CN.AB3.ST.2610,INSTALL CORBEL COVERS - GL 33 - L4 - D-G,Complete,Area B-5,,GRIDLINE 33,,GL33 EXTERIOR AREA (FAB EAST) - D-G,CONSTRUCTION,BERG,DRYWALL,,,2025-03-19 07:00,2025-04-02 17:00,2025-03-19 07:00,2025-05-14 16:00,2025-11-20 17:00,2025-11-20 17:00,2025-11-14 07:00,2025-11-14 07:00,0,110,100
CN.AB3.ST.2620,INSTALL CORBEL COVERS - GL 33 - L4 - G-K,Complete,Area B-5,,GRIDLINE 33,,GL33 EXTERIOR AREA (FAB WEST) - G-K,CONSTRUCTION,BERG,DRYWALL,,,2025-03-19 07:00,2025-04-01 17:00,2025-03-19 07:00,2025-06-05 17:00,2025-11-20 17:00,2025-11-20 17:00,2025-12-04 07:00,2025-12-04 07:00,0,100,100
CN.AB3.ST.2630,INSTALL CORBEL COVERS - GL 33 - L5 - D-G,Complete,Area B-5,,GRIDLINE 33,,GL33 EXTERIOR AREA (FAB EAST) - D-G,CONSTRUCTION,BERG,DRYWALL,,,2025-07-09 07:00,2025-07-23 17:00,2025-05-23 10:22,2025-06-03 17:00,2025-11-20 17:00,2025-11-20 17:00,2025-12-05 17:00,2025-12-05 17:00,0,110,100
CN.AB3.ST.2640,INSTALL CORRUGATED METAL PANELS - GL 33 - L4- J-K,Complete,Area B-5,,GRIDLINE 33,,GL33 EXTERIOR AREA (FAB WEST) - G-K,CONSTRUCTION,BERG,DRYWALL,,,2025-11-07 07:00,2025-11-07 07:00,2025-10-14 07:00,2025-10-16 07:00,2025-11-20 17:00,2025-11-20 17:00,2025-12-04 07:00,2025-12-04 07:00,0,0,100
CN.BB5.ST.1390,BRAZOS WATERPROOFING BASE L1 - GL 33 - D-F,Complete,Area B-5,North Areas (Team B -Gridlines 17-33),GRIDLINE 33,L4 - SUP Roof - FAB Roof,GL33 EXTERIOR AREA (FAB EAST) - D-G,CONSTRUCTION,WATER PROOFING GL33,DRYWALL,JAMES LEE,SOMD / Roofing / Waterproofing,2025-08-11 07:00,2025-08-14 17:00,2025-08-07 07:00,2025-09-25 15:00,2025-11-20 17:00,2025-11-20 17:00,2025-12-05 17:00,2025-12-05 17:00,0,40,100
CN.BB5.ST.1400,GDA INSTALL WATERPROOFING SUPOREMA UP WALL - GL 33 - GL 33 - D-F,Complete,Area B-5,North Areas (Team B -Gridlines 17-33),GRIDLINE 33,L4 - SUP Roof - FAB Roof,GL33 EXTERIOR AREA (FAB EAST) - D-G,CONSTRUCTION,WATER PROOFING GL33,DRYWALL,JAMES LEE,SOMD / Roofing / Waterproofing,2025-07-24 08:00,2025-07-28 08:00,2025-07-08 08:00,2025-07-18 17:00,2025-11-20 17:00,2025-11-20 17:00,2025-11-17 07:00,2025-11-17 07:00,0,20,100
CN.BB5.ST.1410,KOVACH INSTALL IMP / CMP PANEL -GL 33 - GL 33 - D-F,Active,Area B-5,North Areas (Team B -Gridlines 17-33),GRIDLINE 33,L4 - SUP Roof - FAB Roof,GL33 EXTERIOR AREA (FAB EAST) - D-G,CONSTRUCTION,WATER PROOFING GL33,DRYWALL,JAMES LEE,SOMD / Roofing / Waterproofing,2025-08-01 07:00,2025-08-11 17:00,2025-08-04 07:00,,2025-12-11 07:00,2025-12-11 17:00,2025-12-05 07:00,2025-12-05 17:00,10,70,0
CN.SWB5.11000,IMPACT - RFI #1769 for GL 33 - L-N level 1 is holding drywall and CMP completion,Complete,Area B-5,West Support Building,GRIDLINE 33,L1 - Fndn Slab,GL33 EXTERIOR AREA (SUW) - L-N,CONSTRUCTION,BERG,DRYWALL,JAMES LIVELY,,2025-06-23 07:00,2025-07-03 17:00,2025-06-23 07:00,2025-06-30 17:00,2025-11-20 17:00,2025-11-20 17:00,2025-11-24 07:00,2025-11-24 07:00,0,90,100
CN.SWB5.11060,BRAZOS WATERPROOFING / BUILDING WRAP - GL 33 - L1 - B-C,Not Started,Area B-5,West Support Building,GRIDLINE 33,L1 - Fndn Slab,GL33 EXTERIOR AREA (SUE) - A-C,CONSTRUCTION,WATER PROOFING GL33,DRYWALL,JAMES LIVELY,,2025-11-21 07:00,2025-11-25 17:00,,,2025-11-21 07:00,2025-11-25 17:00,2025-12-02 07:00,2025-12-04 17:00,30,30,0
MS.AL.DP.1000,MILE - FAB - DRILL PIER COMMENCEMENT,Complete,Pier Drilling,Key Milestones,Pier Drilling (TBD - NOVATED CONTRACT),L1 - Fndn Slab,,CONSTRUCTION,,Key Milestones,ANDREA SOLIS,,2022-05-23 07:00,2022-05-23 07:00,2022-05-21 08:00,2022-05-21 08:00,2025-11-20 17:00,2025-11-20 17:00,2025-06-13 08:00,2025-06-13 08:00,0,0,100
CN.A1.DP.1000,PH1- DRILL PIERS - Group A1 - FAB,Complete,Pier Drilling,Drilled Piers,Pier Drilling (TBD - NOVATED CONTRACT),Drilled Piers,,CONSTRUCTION,,Drilled Shaft Subcontractor - AH Beck,ANDREA SOLIS,,2022-05-31 07:00,2022-07-14 09:00,2022-05-30 08:00,2022-07-22 16:00,2025-11-20 17:00,2025-11-20 17:00,2025-06-13 08:00,2025-06-13 08:00,0,432,100
CN.FIZ.DP.1000,PH1- DRILL PIERS - DATA CENTER FIZ (286 Piers),Complete,Pier Drilling,Drilled Piers,Pier Drilling (TBD - NOVATED CONTRACT),Drilled Piers,,CONSTRUCTION,,Drilled Shaft Subcontractor - AH Beck,ANDREA SOLIS,,2022-06-06 08:00,2022-07-31 12:00,2022-07-12 08:00,2022-08-29 16:00,2025-11-20 17:00,2025-11-20 17:00,2025-06-13 08:00,2025-06-13 08:00,0,544,100
CN.A3.DP.1000,PH1- DRILL PIERS - Group A3 - FAB,Complete,Pier Drilling,Drilled Piers,Pier Drilling (TBD - NOVATED CONTRACT),Drilled Piers,,CONSTRUCTION,,Drilled Shaft Subcontractor - AH Beck,ANDREA SOLIS,,2022-06-06 08:00,2022-09-11 10:00,2022-06-06 08:00,2022-09-30 12:00,2025-11-20 17:00,2025-11-20 17:00,2025-06-13 08:00,2025-06-13 08:00,0,952,100
CN.A2.DP.1000,PH1- DRILL PIERS - Group A2 - FAB,Complete,Pier Drilling,Drilled Piers,Pier Drilling (TBD - NOVATED CONTRACT),Drilled Piers,,CONSTRUCTION,,Drilled Shaft Subcontractor - AH Beck,ANDREA SOLIS,,2022-06-13 08:00,2022-08-20 10:00,2022-06-13 08:00,2022-08-15 16:00,2025-11-20 17:00,2025-11-20 17:00,2025-06-13 08:00,2025-06-13 08:00,0,672,100
CN.B1.DP.1000,PH1- DRILL PIERS - Group B1 (381 Piers),Complete,Pier Drilling,Drilled Piers,Pier Drilling (TBD - NOVATED CONTRACT),Drilled Piers,,CONSTRUCTION,,Drilled Shaft Subcontractor - AH Beck,ANDREA SOLIS,,2022-06-06 08:00,2022-07-21 16:00,2022-06-06 08:00,2022-08-18 08:00,2025-11-20 17:00,2025-11-20 17:00,2025-06-13 08:00,2025-06-13 08:00,0,448,100
CN.B2.DP.1000,PH1- DRILL PIERS - Group B2 (381 Piers),Complete,Pier Drilling,Drilled Piers,Pier Drilling (TBD - NOVATED CONTRACT),Drilled Piers,,CONSTRUCTION,,Drilled Shaft Subcontractor - AH Beck,ANDREA SOLIS,,2022-05-27 08:00,2022-06-12 12:00,2022-08-18 08:00,2022-10-01 16:00,2025-11-20 17:00,2025-11-20 17:00,2025-06-13 08:00,2025-06-13 08:00,0,154,100
CN.B3.DP.1000,PH1- DRILL PIERS - Group B3 (380 Piers),Complete,Pier Drilling,Drilled Piers,Pier Drilling (TBD - NOVATED CONTRACT),Drilled Piers,,CONSTRUCTION,,Drilled Shaft Subcontractor - AH Beck,ANDREA SOLIS,,2022-06-15 10:00,2022-09-20 12:00,2022-06-15 10:00,2022-10-10 16:00,2025-11-20 17:00,2025-11-20 17:00,2025-06-13 08:00,2025-06-13 08:00,0,952,100
CN.A1.DP.1010,PH1- DRILL PIERS - Group A1 - SEA-1,Complete,Pier Drilling,Drilled Piers,Pier Drilling (TBD - NOVATED CONTRACT),Drilled Piers,,CONSTRUCTION,,Drilled Shaft Subcontractor - AH Beck,ANDREA SOLIS,,2022-05-31 07:00,2022-07-14 09:00,2022-07-27 08:00,2022-09-30 17:00,2025-11-20 17:00,2025-11-20 17:00,2025-06-13 08:00,2025-06-13 08:00,0,432,100
CN.A1.DP.1020,PH1- DRILL PIERS - Group A1 - SWA-1,Complete,Pier Drilling,Drilled Piers,Pier Drilling (TBD - NOVATED CONTRACT),Drilled Piers,,CONSTRUCTION,,Drilled Shaft Subcontractor - AH Beck,ANDREA SOLIS,,2022-05-31 07:00,2022-07-14 09:00,2022-06-21 08:00,2022-09-08 16:00,2025-11-20 17:00,2025-11-20 17:00,2025-06-13 08:00,2025-06-13 08:00,0,432,100
CN.A3.DP.1010,PH1- DRILL PIERS - Group A3 - SEA-3,Complete,Pier Drilling,Drilled Piers,Pier Drilling (TBD - NOVATED CONTRACT),Drilled Piers,,CONSTRUCTION,,Drilled Shaft Subcontractor - AH Beck,ANDREA SOLIS,,2022-10-31 13:00,2022-11-04 11:00,2022-10-31 13:00,2022-11-03 11:00,2025-11-20 17:00,2025-11-20 17:00,2025-06-13 08:00,2025-06-13 08:00,0,28,100
CN.A3.DP.1020,PH1- DRILL PIERS - Group A3 - SWA-3,Complete,Pier Drilling,Drilled Piers,Pier Drilling (TBD - NOVATED CONTRACT),Drilled Piers,,CONSTRUCTION,,Drilled Shaft Subcontractor - AH Beck,ANDREA SOLIS,,2022-06-06 08:00,2022-09-11 10:00,2022-06-06 08:00,2022-09-30 12:00,2025-11-20 17:00,2025-11-20 17:00,2025-06-13 08:00,2025-06-13 08:00,0,952,100
CN.A2.DP.1010,PH1- DRILL PIERS - Group A2 - SEA-2,Complete,Pier Drilling,Drilled Piers,Pier Drilling (TBD - NOVATED CONTRACT),Drilled Piers,,CONSTRUCTION,,Drilled Shaft Subcontractor - AH Beck,ANDREA SOLIS,,2022-08-16 08:00,2022-10-25 10:00,2022-08-16 08:00,2022-11-11 14:00,2025-11-20 17:00,2025-11-20 17:00,2025-06-13 08:00,2025-06-13 08:00,0,672,100
CN.A2.DP.1020,PH1- DRILL PIERS - Group A2 - SWA-2,Complete,Pier Drilling,Drilled Piers,Pier Drilling (TBD - NOVATED CONTRACT),Drilled Piers,,CONSTRUCTION,,Drilled Shaft Subcontractor - AH Beck,ANDREA SOLIS,,2022-06-13 08:00,2022-08-20 10:00,2022-09-12 00:00,2022-09-24 12:00,2025-11-20 17:00,2025-11-20 17:00,2025-06-13 08:00,2025-06-13 08:00,0,672,100
CN.AB.AR.1000,METAL STUD FRAMING (2hr) - SWA-1 - L1-WASTE WATER TANK RM NORTH( Mezzanine concrete to be poured)- GL 18-15 K-N,Complete,SWA - 1,West Support Building,SUWS-1 - 18-15,L1 - Fndn Slab,MCC/IO,CONSTRUCTION,BERG,TBD Architectural Finishes,AMBER CARO,INTERIORS,2024-01-09 10:00,2024-01-14 14:00,2024-01-08 15:00,2024-01-12 15:00,2025-11-20 17:00,2025-11-20 17:00,2025-11-26 07:00,2025-11-26 07:00,0,40,100
CN.A2.UG.1030,PH1- UNDERGROUND ELECTRICAL SWA1,Complete,SWA - 1,West Support Building,SUWS-1 - 18-15,L1 - Fndn Slab,,CONSTRUCTION,,Underground Electrical - (By Owner),ANDREA SOLIS,,2022-09-30 08:00,2022-10-04 08:00,2022-09-22 12:00,2022-09-26 16:00,2025-11-20 17:00,2025-11-20 17:00,2025-06-13 08:00,2025-06-13 08:00,0,40,100
CN.A2.UG.1040,PH1- UNDERSLAB WATERPROOFING SWA1,Complete,SWA - 1,West Support Building,SUWS-1 - 18-15,L1 - Fndn Slab,,CONSTRUCTION,,Waterproofing - Preferred,ANDREA SOLIS,,2022-09-28 14:00,2022-10-02 14:00,2022-09-28 14:00,2022-10-03 16:00,2025-11-20 17:00,2025-11-20 17:00,2025-06-13 08:00,2025-06-13 08:00,0,40,100
CN.A2.UG.1050,PH1- WATERPROOF WALL SWA1,Complete,SWA - 1,West Support Building,SUWS-1 - 18-15,L1 - Fndn Slab,,CONSTRUCTION,,Waterproofing - Preferred,ANDREA SOLIS,,2022-10-20 09:00,2022-10-23 11:00,2022-10-20 09:00,2022-10-24 13:00,2025-11-20 17:00,2025-11-20 17:00,2025-06-13 08:00,2025-06-13 08:00,0,32,100
CN.A2.UG.1060,PH1- FRENCH DRAIN SWA1,Complete,SWA - 1,West Support Building,SUWS-1 - 18-15,L1 - Fndn Slab,,CONSTRUCTION,,Waterproofing - Preferred,ANDREA SOLIS,,2022-10-21 07:00,2022-10-24 17:00,2022-10-21 07:00,2022-10-27 09:00,2025-11-20 17:00,2025-11-20 17:00,2025-06-13 08:00,2025-06-13 08:00,0,40,100
CN.SWA1.1010,PH1-FRP GRADE BEAM - SWA1,Complete,SWA - 1,West Support Building,SUWS-1 - 18-15,L1 - Fndn Slab,,CONSTRUCTION,,Pour Concrete,ANDREA SOLIS,,2022-09-28 14:00,2022-10-01 08:00,2022-09-28 14:00,2022-10-01 09:00,2025-11-20 17:00,2025-11-20 17:00,2025-06-13 08:00,2025-06-13 08:00,0,24,100
CN.SWA1.1120,PH1- FRP SLAB - SWA-1-L3,Complete,SWA - 1,West Support Building,SUWS-1 - 18-15,L3 / Waffle Slab Level,,CONSTRUCTION,,SOMD,CONCRETE,,2023-08-18 07:00,2023-08-20 11:00,2023-08-18 07:00,2023-08-21 13:00,2025-11-20 17:00,2025-11-20 17:00,2025-11-24 07:00,2025-11-24 07:00,0,24,100
CN.SWA1.1170,PH1- FRP SLAB - SWA-1-ROOF,Complete,SWA - 1,West Support Building,SUWS-1 - 18-15,L4 - SUP Roof - FAB Roof,,CONSTRUCTION,,SOMD,CONCRETE,SOMD / Roofing / Waterproofing,2023-08-16 07:00,2023-08-18 11:00,2023-08-16 07:00,2023-08-18 11:00,2025-11-20 17:00,2025-11-20 17:00,2025-06-13 08:00,2025-06-13 08:00,0,24,100
CN.SWA1.1030,PH1-BLACK BASE (NOW RAT SLAB) - SWA1,Complete,SWA - 1,West Support Building,SUWS-1 - 18-15,L1 - Fndn Slab,,CONSTRUCTION,,RAT SLAB,ANDREA SOLIS,,2022-09-27 07:00,2022-09-28 13:00,2022-09-27 07:00,2022-09-28 13:00,2025-11-20 17:00,2025-11-20 17:00,2025-06-13 08:00,2025-06-13 08:00,0,16,100
CN.SWA1.1020,PH1-CURE PIER CAPS - SWA1,Complete,SWA - 1,West Support Building,SUWS-1 - 18-15,L1 - Fndn Slab,,CONSTRUCTION,,Concrete Cure,ANDREA SOLIS,,2022-09-27 07:00,2022-09-27 07:00,2022-09-27 07:00,2022-09-27 07:00,2025-11-20 17:00,2025-11-20 17:00,2025-06-13 08:00,2025-06-13 08:00,0,0,100
CN.SWA1.1140,PH1- CURE SOMD - SWA-1-L3,Complete,SWA - 1,West Support Building,SUWS-1 - 18-15,L3 / Waffle Slab Level,,CONSTRUCTION,,Concrete Cure,JAMES LEE,,2023-08-24 07:00,2023-08-26 11:00,2023-08-22 20:44,2023-08-23 20:44,2025-11-20 17:00,2025-11-20 17:00,2025-11-24 07:00,2025-11-24 07:00,0,24,100
CN.SWA1.1200,PH1- CURE SOMD - SWA-1-ROOF,Complete,SWA - 1,West Support Building,SUWS-1 - 18-15,L4 - SUP Roof - FAB Roof,,CONSTRUCTION,,Concrete Cure,JAMES LEE,SOMD / Roofing / Waterproofing,2023-09-05 07:00,2023-09-07 11:00,2023-08-19 20:44,2023-08-20 20:44,2025-11-20 17:00,2025-11-20 17:00,2025-12-05 17:00,2025-12-05 17:00,0,24,100
CN.SWA1.1130,PH1- 1st FLOOR SLAB - SWA-1-L1,Complete,SWA - 1,West Support Building,SUWS-1 - 18-15,L1 - Fndn Slab,,CONSTRUCTION,,Pour Concrete,ANDREA SOLIS,,2022-10-01 08:00,2022-10-10 14:00,2022-10-01 08:00,2022-10-13 17:00,2025-11-20 17:00,2025-11-20 17:00,2025-06-13 08:00,2025-06-13 08:00,0,96,100
CN.SWA1.1280,FRP TOPPING SLAB - SWA1 - GL 18-15 - L-N - L4 ROOF,Complete,SWA - 1,West Support Building,SUWS-1 - 18-15,L4 - SUP Roof - FAB Roof,,CONSTRUCTION,,TOPPING,CONCRETE,SOMD / Roofing / Waterproofing,2024-02-06 13:00,2024-02-09 17:00,2024-01-14 13:00,2024-01-16 16:00,2025-11-20 17:00,2025-11-20 17:00,2025-12-05 17:00,2025-12-05 17:00,0,24,100
CN.SWA1.1300,MEP EQPT PADS (LAYOUT & INSTALL DOWELS)- SWA-1-ROOF,Complete,SWA - 1,West Support Building,SUWS-1 - 18-15,L4 - SUP Roof - FAB Roof,,CONSTRUCTION,,Cast-in Place Concrete - Baker Concrete,JAMES LEE,SOMD / Roofing / Waterproofing,2023-09-05 07:00,2023-09-05 15:00,2023-08-21 07:00,2023-08-31 15:00,2025-11-20 17:00,2025-11-20 17:00,2025-11-25 07:00,2025-11-25 07:00,0,8,100
CN.SWA1.1040,PH1-FRP PIT WALLS - SWA1,Complete,SWA - 1,West Support Building,SUWS-1 - 18-15,L1 - Fndn Slab,,CONSTRUCTION,,Pour Concrete,ANDREA SOLIS,,2022-10-11 11:00,2022-10-17 17:00,2022-10-11 11:00,2022-10-20 09:00,2025-11-20 17:00,2025-11-20 17:00,2025-06-13 08:00,2025-06-13 08:00,0,56,100
CN.SWA1.1100,PH1-BACKFILL PIT WALLS - SWA1,Complete,SWA - 1,West Support Building,SUWS-1 - 18-15,L1 - Fndn Slab,,CONSTRUCTION,,BACKFILL,ANDREA SOLIS,,2022-10-21 07:00,2022-10-24 17:00,2022-10-21 07:00,2022-10-27 09:00,2025-11-20 17:00,2025-11-20 17:00,2025-06-13 08:00,2025-06-13 08:00,0,40,100
CN.SWA2.1240,PH1- SUP - EXCAVATE PITS - SWA1,Complete,SWA - 1,West Support Building,SUWS-1 - 18-15,L1 - Fndn Slab,,CONSTRUCTION,,Excavate CIP,ANDREA SOLIS,,2022-08-30 08:00,2022-09-01 12:00,2022-08-30 08:00,2022-09-13 12:00,2025-11-20 17:00,2025-11-20 17:00,2025-06-13 08:00,2025-06-13 08:00,0,24,100
CN.SWA1.1080,TIER 1 ERECT PRECAST COLUMNS & BEAMS - SWA1,Complete,SWA - 1,West Support Building,SUWS-1 - 18-15,L3 / Waffle Slab Level,,CONSTRUCTION,,"SUP WEST N,M",SEAN MONK,,2023-03-27 07:00,2023-04-02 13:00,2023-04-03 07:00,2023-05-25 13:00,2025-11-20 17:00,2025-11-20 17:00,2025-06-13 08:00,2025-06-13 08:00,0,56,100
CN.SWA1.1210,PH1-ROOF LAYER PARAPET - SWA1,Complete,SWA - 1,West Support Building,SUWS-1 - 18-15,L4 - SUP Roof - FAB Roof,,CONSTRUCTION,,FAB Subfab and Parapets,JAMES LIVELY,SOMD / Roofing / Waterproofing,2024-02-05 07:00,2024-02-05 15:00,2024-01-02 07:00,2024-01-03 07:00,2025-11-20 17:00,2025-11-20 17:00,2025-12-05 17:00,2025-12-05 17:00,0,8,100
CN.SWA1.1230,PH1-FLUID APPLIED MEMBRANE ROOFING - SWA1,Complete,SWA - 1,West Support Building,SUWS-1 - 18-15,L4 - SUP Roof - FAB Roof,,CONSTRUCTION,,Roofing,JAMES LIVELY,SOMD / Roofing / Waterproofing,2024-02-05 07:00,2024-02-06 13:00,2024-01-04 07:00,2024-01-06 13:00,2025-11-20 17:00,2025-11-20 17:00,2025-12-05 17:00,2025-12-05 17:00,0,16,100
CN.SWA1.1250,PH1 - CLADDING STEEL INTERIOR GL 15-18 - K LINE (AD AREA),Complete,SWA - 1,West Support Building,SUWS-1 - 18-15,EXTERIOR SKIN,,CONSTRUCTION,,INSULATED METAL PANELS,JAMES LIVELY,,2024-03-18 07:00,2024-03-25 13:00,2024-03-08 07:00,2024-03-22 17:00,2025-11-20 17:00,2025-11-20 17:00,2025-11-25 07:00,2025-11-25 07:00,0,46,100
CN.SWA1.1270,PH1 - INSTALL INSULATED METAL PANEL MODULES - GL 15-18.5 - L LINE (DS AREA) [SKIP VOC LEAVEOUT 17~18],Complete,SWA - 1,West Support Building,SUWS-1 - 18-15,EXTERIOR SKIN,,CONSTRUCTION,KOVACH,INSULATED METAL PANELS,JAMES LIVELY,,2024-06-28 07:00,2024-07-08 17:00,2024-06-27 07:00,2024-07-05 17:00,2025-11-20 17:00,2025-11-20 17:00,2025-11-25 07:00,2025-11-25 07:00,0,90,100
CN.SWA1.1220,PH1 - CLADDING STEEL  - SWA-1  N LINE [SUP EXTERIOR WALL],Complete,SWA - 1,West Support Building,SUWS-1 - 18-15,EXTERIOR SKIN,,CONSTRUCTION,,INSULATED METAL PANELS,JAMES LIVELY,,2023-10-14 08:00,2023-10-19 14:00,2023-10-14 08:00,2023-10-24 17:00,2025-11-20 17:00,2025-11-20 17:00,2025-08-26 07:00,2025-08-26 07:00,0,56,100
CN.SWA1.1260,PH1 - INSTALL INSULATED METAL PANEL MODULES - SWA-1 - N Line 17-15 [SUP EXTERIOR WALL],Complete,SWA - 1,West Support Building,SUWS-1 - 18-15,EXTERIOR SKIN,,CONSTRUCTION,,INSULATED METAL PANELS,JAMES LIVELY,,2024-02-13 07:00,2024-02-17 15:00,2024-02-13 07:00,2024-02-27 13:00,2025-11-20 17:00,2025-11-20 17:00,2025-08-26 07:00,2025-08-26 07:00,0,48,100
CN.SWA1.1180,PH1- AD STEEL FRAME INSTALL - SWA-1 fab side(14-17),Complete,SWA - 1,West Support Building,NORTH WEST PENTHOUSE,DS/AD,,CONSTRUCTION,,Steel Erection,SEAN MONK,,2023-11-07 15:00,2023-11-10 09:00,2023-10-29 15:00,2023-11-10 09:00,2025-11-20 17:00,2025-11-20 17:00,2025-06-13 08:00,2025-06-13 08:00,0,24,100
CN.SEA1.1230,PH1- MOBILIZE U/G SPRINKLER & PLUMBING,Complete,SWA - 1,West Support Building,SUWS-1 - 18-15,L1 - Fndn Slab,,CONSTRUCTION,,U/G FIRE & PLUMBING,ANDREA SOLIS,,2022-08-22 12:00,2022-08-26 12:00,2022-08-22 12:00,2022-09-05 10:00,2025-11-20 17:00,2025-11-20 17:00,2025-06-13 08:00,2025-06-13 08:00,0,40,100
CN.SEA1.1240,PH1- U/G - R/I - SPRINKLER & PLUMBING - SWA1,Complete,SWA - 1,West Support Building,SUWS-1 - 18-15,L1 - Fndn Slab,,CONSTRUCTION,,U/G FIRE & PLUMBING,ANDREA SOLIS,,2022-09-07 08:00,2022-09-11 08:00,2022-09-07 08:00,2022-09-26 14:00,2025-11-20 17:00,2025-11-20 17:00,2025-06-13 08:00,2025-06-13 08:00,0,40,100
CN.AB.AR.1100,MEP ROUGH IN & INSPECTION (by SECAI) - SWA-1 - L1-WASTE WATER TANK RM NORTH- GL 18-15 K-N,Complete,SWA - 1,West Support Building,SUWS-1 - 18-15,L1 - Fndn Slab,MCC/IO,CONSTRUCTION,,TBD Architectural Finishes,AMBER CARO,,2024-01-13 08:00,2024-01-19 08:00,2024-01-13 08:00,2024-01-15 11:00,2025-11-20 17:00,2025-11-20 17:00,2025-12-01 07:00,2025-12-01 07:00,0,40,100
CN.AB.AR.1110,TAPE & FINISH DRYWALL - SWA--L1-MCC/IO- GL 18-15 K-N  - SECAI TOOK OVER FOR ACCELERATION,Complete,SWA - 1,West Support Building,SUWS-1 - 18-15,L1 - Fndn Slab,MCC/IO,CONSTRUCTION,CHERRY COATING,DRYWALL,AMBER CARO,INTERIORS,2025-06-04 07:00,2025-06-10 17:00,2025-06-10 07:00,2025-06-10 17:00,2025-11-20 17:00,2025-11-20 17:00,2025-12-01 07:00,2025-12-01 07:00,0,50,100
CN.AB.AR.1120,SET/ FIX ANCHOR BOLTS - SWA-1,Complete,SWA - 1,West Support Building,SUWS-1 - 18-15,L1 - Fndn Slab,,CONSTRUCTION,,TBD Architectural Finishes,JAMES LEE,INTERIORS,2023-10-16 07:00,2023-10-17 13:00,2023-10-02 07:00,2023-10-05 13:00,2025-11-20 17:00,2025-11-20 17:00,2025-06-13 08:00,2025-06-13 08:00,0,16,100
CN.AB.AR.1150,FLOOR STRIPING PAINT - SWA-1 - L1 - WASTE WATER RM NORTH- GL 18-15 K-N,Not Started,SWA - 1,West Support Building,SUWS-1 - 18-15,L1 - Fndn Slab,MCC/IO,CONSTRUCTION,FLOOR STRIPING PAINT,TBD Architectural Finishes,AMBER CARO,INTERIORS,2025-11-26 07:00,2025-12-04 17:00,,,2025-11-26 07:00,2025-12-04 17:00,2025-12-01 07:00,2025-12-05 17:00,50,50,0
CN.AB.AR.1160,INSTALL WALL PROTECTION - ELEVATOR MECH ROOM 3 - GL 16-17 - K-L - L1,Not Started,SWA - 1,West Support Building,SUWS-1 - 18-15,L1 - Fndn Slab,ELEVATOR,CONSTRUCTION,BERNCO,TBD Architectural Finishes,JAMES LEE,INTERIORS,2025-11-21 07:00,2025-11-25 17:00,,,2025-11-21 07:00,2025-11-25 17:00,2025-11-24 07:00,2025-11-26 17:00,30,30,0
CN.AB.AR.1170,FINISH PAINT - SWA-1 - L1 - WASTE WATER RM NORTH- GL 18-15 K-N,Not Started,SWA - 1,West Support Building,SUWS-1 - 18-15,L1 - Fndn Slab,MCC/IO,CONSTRUCTION,FINISH PAINT,TBD Architectural Finishes,JAMES LEE,INTERIORS,2025-11-25 07:00,2025-12-03 17:00,,,2025-11-25 07:00,2025-12-03 17:00,2025-12-01 07:00,2025-12-05 17:00,50,50,0
CN.SWA1.1340,DS STEEL SPRAY FIREPROOFING SFRM - SWA-1 - L4&L5 CEILING GL 15-17/J-L,Complete,SWA - 1,West Support Building,SUWS-1 - 18-15,L4 - SUP Roof - FAB Roof,DS/AD INTERIORS,CONSTRUCTION,ROLLING PLAINS,Fireproofing,HOON WOO,,2024-09-27 07:00,2024-10-10 17:00,2024-09-09 07:00,2024-09-18 17:00,2025-11-20 17:00,2025-11-20 17:00,2025-12-05 17:00,2025-12-05 17:00,0,80,100
CN.SWA1.1320,PH1- MEP EQPT PADS (PLACE STRIP PATCH - BLOCK) - SWA-1-ROOF,Complete,SWA - 1,West Support Building,SUWS-1 - 18-15,L4 - SUP Roof - FAB Roof,,CONSTRUCTION,,Waterproofing - Preferred,JAMES LIVELY,SOMD / Roofing / Waterproofing,2023-12-11 07:00,2023-12-12 13:00,2023-11-01 07:00,2023-11-02 17:00,2025-11-20 17:00,2025-11-20 17:00,2025-12-05 17:00,2025-12-05 17:00,0,16,100
CN.SWA1.1330,PH1- FRP SLAB - SWA-1-L2,Complete,SWA - 1,West Support Building,SUWS-1 - 18-15,L2 - SubFab Level,,CONSTRUCTION,,SOMD,CONCRETE,,2023-08-22 07:00,2023-08-25 11:00,2023-08-22 07:00,2023-08-25 11:00,2025-11-20 17:00,2025-11-20 17:00,2025-11-24 07:00,2025-11-24 07:00,0,24,100
CN.SWA1.1350,PH1- CURE SOMD - SWA-1-L2,Complete,SWA - 1,West Support Building,SUWS-1 - 18-15,L2 - SubFab Level,,CONSTRUCTION,,Pour Concrete,JAMES LEE,,2023-08-27 08:00,2023-08-29 12:00,2023-08-26 20:44,2023-08-27 20:44,2025-11-20 17:00,2025-11-20 17:00,2025-11-24 07:00,2025-11-24 07:00,0,24,100
CN.SWA1.1360,PH1- DECKING GL 18 - 17 - SWA-1-ROOF,Complete,SWA - 1,West Support Building,SUWS-1 - 18-15,L4 - SUP Roof - FAB Roof,,CONSTRUCTION,,Decking & Detail,SEAN MONK,SOMD / Roofing / Waterproofing,2023-08-10 07:00,2023-08-11 13:00,2023-08-10 07:00,2023-08-11 13:00,2025-11-20 17:00,2025-11-20 17:00,2025-06-13 08:00,2025-06-13 08:00,0,16,100
CN.SWA1.1370,PH1- DECKING GL 18 - 17 - SWA-1-L3,Complete,SWA - 1,West Support Building,SUWS-1 - 18-15,L3 / Waffle Slab Level,,CONSTRUCTION,,Decking & Detail,SEAN MONK,,2023-08-17 13:00,2023-08-19 09:00,2023-08-14 13:00,2023-08-15 10:00,2025-11-20 17:00,2025-11-20 17:00,2025-11-24 07:00,2025-11-24 07:00,0,16,100
CN.SWA1.1380,PH1- DECKING GL 18 - 17 - SWA-1-L2,Complete,SWA - 1,West Support Building,SUWS-1 - 18-15,L2 - SubFab Level,,CONSTRUCTION,,Decking & Detail,SEAN MONK,,2023-08-11 13:00,2023-08-13 09:00,2023-08-11 13:00,2023-08-14 11:00,2025-11-20 17:00,2025-11-20 17:00,2025-11-03 07:00,2025-11-03 07:00,0,16,100
CN.SEA1.2210,PH1- MEP EQPT PADS (FORM REBAR - BLOCK)- SWA-1-ROOF,Complete,SWA - 1,West Support Building,SUWS-1 - 18-15,L4 - SUP Roof - FAB Roof,,CONSTRUCTION,,OAC/ MECH PADS,CONCRETE,SOMD / Roofing / Waterproofing,2023-10-02 07:00,2023-10-04 11:00,2023-10-02 07:00,2023-10-04 11:00,2025-11-20 17:00,2025-11-20 17:00,2025-12-05 17:00,2025-12-05 17:00,0,24,100
CN.SEA3.1340,PH1-CIP WALL (DS)- SWA-1,Complete,SWA - 1,West Support Building,SUWS-1 - 18-15,L4 - SUP Roof - FAB Roof,,CONSTRUCTION,,CIP WALL,CONCRETE,SOMD / Roofing / Waterproofing,2023-09-05 07:00,2023-09-06 13:00,2023-08-23 07:00,2023-08-25 13:00,2025-11-20 17:00,2025-11-20 17:00,2025-11-25 07:00,2025-11-25 07:00,0,16,100
CN.SWA1.1390,PH1- WATERPROOFING - SWA-1-L3,Complete,SWA - 1,West Support Building,SUWS-1 - 18-15,L3 / Waffle Slab Level,,CONSTRUCTION,,Waterproofing - Preferred,JAMES LIVELY,SOMD / Roofing / Waterproofing,2023-10-16 07:00,2023-10-17 13:00,2023-08-24 07:00,2023-08-25 13:00,2025-11-20 17:00,2025-11-20 17:00,2025-11-24 07:00,2025-11-24 07:00,0,16,100
CN.SWA1.1400,PH1- WATERPROOFING - SWA-1-L2- BATTERY ROOM 1,Complete,SWA - 1,West Support Building,SUWS-1 - 18-15,L2 - SubFab Level,BATT. RM 1,CONSTRUCTION,,Waterproofing - Preferred,JAMES LIVELY,SOMD / Roofing / Waterproofing,2023-10-16 07:00,2023-10-17 13:00,2023-08-28 07:00,2023-08-29 13:00,2025-11-20 17:00,2025-11-20 17:00,2025-11-24 07:00,2025-11-24 07:00,0,16,100
CN.SWA1.1410,PH1 - IMPACT [C31] - FRP REMAINING TOPPING SLAB (17-20)(C31) - SWA-1-L1,Complete,SWA - 1,West Support Building,SUWS-1 - 18-15,L1 - Fndn Slab,,CONSTRUCTION,BAKER,Waterproofing - Preferred,JAMES LIVELY,SOMD / Roofing / Waterproofing,2024-06-13 07:00,2024-06-14 17:00,2024-03-02 07:00,2024-03-05 17:00,2025-11-20 17:00,2025-11-20 17:00,2025-12-05 17:00,2025-12-05 17:00,0,20,100
CN.SWA1.1420,PH1-TOPPING SLAB- SWA-1-L3,Complete,SWA - 1,West Support Building,SUWS-1 - 18-15,L3 / Waffle Slab Level,,CONSTRUCTION,BAKER,TOPPING,CONCRETE,SOMD / Roofing / Waterproofing,2024-05-10 07:00,2024-05-13 17:00,2023-11-13 07:00,2023-11-18 17:00,2025-11-20 17:00,2025-11-20 17:00,2025-12-05 17:00,2025-12-05 17:00,0,20,100
CN.SWA1.1440,PH1-TOPPING SLAB w TRENCH & ANGLE EMBEDS- SWA-1-L1,Complete,SWA - 1,West Support Building,SUWS-1 - 18-15,L1 - Fndn Slab,,CONSTRUCTION,,TOPPING,CONCRETE,SOMD / Roofing / Waterproofing,2023-11-13 07:00,2023-11-16 11:00,2023-11-14 07:00,2023-11-19 11:00,2025-11-20 17:00,2025-11-20 17:00,2025-12-05 17:00,2025-12-05 17:00,0,24,100
CN.SWA1.1450,PH1- DS/AD DECKING & DETAILNG GL 18 - 15 DS/AD SWA-1 L6,Complete,SWA - 1,West Support Building,SUWS-1 - 18-15,DS/AD,,CONSTRUCTION,,Decking & Detail,SEAN MONK,,2023-11-30 07:00,2023-12-03 17:00,2023-11-30 07:00,2023-12-03 11:00,2025-11-20 17:00,2025-11-20 17:00,2025-06-13 08:00,2025-06-13 08:00,0,40,100
CN.SWA1.1460,PH1- DS/AD FRP SLAB - DS/AD SWA-1 - L4/E,Complete,SWA - 1,West Support Building,SUWS-1 - 18-15,DS/AD,,CONSTRUCTION,,SOMD,CONCRETE,,2024-01-29 11:00,2024-01-31 15:00,2024-01-29 11:00,2024-02-01 15:00,2025-11-20 17:00,2025-11-20 17:00,2025-06-13 08:00,2025-06-13 08:00,0,24,100
CN.SWA1.1470,AD WATERPROOFING - SWA1 - GL 18-15 - J-K - L4/E,Complete,SWA - 1,West Support Building,SUWS-1 - 18-15,DS/AD,,CONSTRUCTION,BRAZOS,Waterproofing - Preferred,JAMES LIVELY,,2024-07-22 07:00,2024-08-05 17:00,2024-07-13 07:00,2024-07-18 17:00,2025-11-20 17:00,2025-11-20 17:00,2025-11-25 07:00,2025-11-25 07:00,0,110,100
CN.SWA1.1480,AD TOPPING SLAB - SWA1 - GL 18-15 - J-K - L4/E,Complete,SWA - 1,West Support Building,SUWS-1 - 18-15,DS/AD,,CONSTRUCTION,BAKER,Roofing,CONCRETE,,2024-08-16 07:00,2024-08-22 17:00,2024-07-19 07:00,2024-07-23 17:00,2025-11-20 17:00,2025-11-20 17:00,2025-12-05 17:00,2025-12-05 17:00,0,40,100
TIER 21.1080,TIER 2 GROUT PRECAST COLUMNS & BEAMS - SWA1,Complete,SWA - 1,West Support Building,SUWS-1 - 18-15,L4 - SUP Roof - FAB Roof,,CONSTRUCTION,,"SUP WEST N,M",SEAN MONK,,2023-07-31 07:00,2023-08-05 13:00,2023-07-31 07:00,2023-08-05 14:00,2025-11-20 17:00,2025-11-20 17:00,2025-06-13 08:00,2025-06-13 08:00,0,56,100
CN.SWA1.1490,PH1- DECKING GL 17 - 16 - SWA-1-L2,Complete,SWA - 1,West Support Building,SUWS-1 - 18-15,L2 - SubFab Level,,CONSTRUCTION,,Decking & Detail,SEAN MONK,,2023-08-14 11:00,2023-08-15 17:00,2023-08-14 11:00,2023-08-15 17:00,2025-11-20 17:00,2025-11-20 17:00,2025-11-24 07:00,2025-11-24 07:00,0,16,100
CN.SWA1.1500,PH1- DECKING GL 16 - 15 - SWA-1-L2,Complete,SWA - 1,West Support Building,SUWS-1 - 18-15,L2 - SubFab Level,,CONSTRUCTION,,Decking & Detail,SEAN MONK,,2023-08-16 07:00,2023-08-17 13:00,2023-08-16 07:00,2023-08-17 13:00,2025-11-20 17:00,2025-11-20 17:00,2025-11-24 07:00,2025-11-24 07:00,0,16,100
CN.SWA1.1510,PH1- DECKING GL 17 - 16 - SWA-1-L3,Complete,SWA - 1,West Support Building,SUWS-1 - 18-15,L3 / Waffle Slab Level,,CONSTRUCTION,,Decking & Detail,SEAN MONK,,2023-08-19 10:00,2023-08-20 16:00,2023-08-16 10:00,2023-08-17 17:00,2025-11-20 17:00,2025-11-20 17:00,2025-11-24 07:00,2025-11-24 07:00,0,16,100
CN.SWA1.1520,PH1- DECKING GL 16 - 15 - SWA-1-L3,Complete,SWA - 1,West Support Building,SUWS-1 - 18-15,L3 / Waffle Slab Level,,CONSTRUCTION,,Decking & Detail,SEAN MONK,,2023-08-22 07:00,2023-08-24 13:00,2023-08-18 07:00,2023-08-19 13:00,2025-11-20 17:00,2025-11-20 17:00,2025-11-24 07:00,2025-11-24 07:00,0,16,100
CN.SWA1.1530,PH1- DECKING GL 17 - 16 - SWA-1-ROOF,Complete,SWA - 1,West Support Building,SUWS-1 - 18-15,L4 - SUP Roof - FAB Roof,,CONSTRUCTION,,Decking & Detail,SEAN MONK,SOMD / Roofing / Waterproofing,2023-08-11 13:00,2023-08-13 09:00,2023-08-11 13:00,2023-08-14 11:00,2025-11-20 17:00,2025-11-20 17:00,2025-06-13 08:00,2025-06-13 08:00,0,16,100
CN.SWA1.1540,PH1- DECKING GL 16 - 15 - SWA-1-ROOF,Complete,SWA - 1,West Support Building,SUWS-1 - 18-15,L4 - SUP Roof - FAB Roof,,CONSTRUCTION,,Decking & Detail,SEAN MONK,SOMD / Roofing / Waterproofing,2023-08-14 11:00,2023-08-15 17:00,2023-08-14 11:00,2023-08-15 17:00,2025-11-20 17:00,2025-11-20 17:00,2025-06-13 08:00,2025-06-13 08:00,0,16,100
CN.SWA1.1550,PH1- DS/AD DECKING & DETAILING GL18 - 15 DS/AD SWA-1 L4 & L4/E,Complete,SWA - 1,West Support Building,SUWS-1 - 18-15,DS/AD,,CONSTRUCTION,,Decking & Detail,SEAN MONK,,2024-01-18 13:00,2024-01-23 11:00,2024-01-18 13:00,2024-01-23 07:00,2025-11-20 17:00,2025-11-20 17:00,2025-06-13 08:00,2025-06-13 08:00,0,48,100
CN.AB.AR.4440,DRYWALL 2 SIDE - SWA-1 - L1-WASTE WATER TANK RM NORTH - GL 18-15 K-N - SECAI TOOK OVER FOR ACCELERATION,Complete,SWA - 1,West Support Building,SUWS-1 - 18-15,L1 - Fndn Slab,MCC/IO,CONSTRUCTION,BERG,DRYWALL,AMBER CARO,INTERIORS,2024-03-22 07:00,2024-03-27 17:00,2024-03-11 07:00,2025-06-10 17:00,2025-11-20 17:00,2025-11-20 17:00,2025-12-01 07:00,2025-12-01 07:00,0,40,100
CN.AB.AR.4450,DRYWALL & INSULATION (1 side) (INT) - SWA-1 - L1 WASTE WATER TANK RM NORTH- GL 17 K-N - SECAI TOOK OVER FORACCELERATION,Complete,SWA - 1,West Support Building,SUWS-1 - 18-15,L1 - Fndn Slab,MCC/IO,CONSTRUCTION,BERG,DRYWALL,AMBER CARO,INTERIORS,2024-03-11 07:00,2024-03-19 17:00,2024-03-01 07:00,2025-06-10 17:00,2025-11-20 17:00,2025-11-20 17:00,2025-12-01 07:00,2025-12-01 07:00,0,40,100
CN.SWA1.1570,PH1- DS STEEL FRAME INSTALL - SWA-1 Comeback Sup Side(14-17),Complete,SWA - 1,West Support Building,SUWS-1 - 18-15,DS/AD,,CONSTRUCTION,,Steel Erection,SEAN MONK,,2023-11-05 08:00,2023-11-08 14:00,2023-11-05 08:00,2023-11-10 15:00,2025-11-20 17:00,2025-11-20 17:00,2025-06-13 08:00,2025-06-13 08:00,0,36,100
CN.SWA1.1580,PH1- EXTERIOR CURBS - SWA-1-L1,Complete,SWA - 1,West Support Building,SUWS-1 - 18-15,L1 - Fndn Slab,,CONSTRUCTION,,Pour Concrete,JAMES LEE,SOMD / Roofing / Waterproofing,2023-10-09 13:00,2023-10-11 17:00,2023-10-09 13:00,2023-10-12 17:00,2025-11-20 17:00,2025-11-20 17:00,2025-06-13 08:00,2025-06-13 08:00,0,24,100
CN.SWA1.1590,PH1- MEP PADS - SWA-1-L1,Complete,SWA - 1,West Support Building,SUWS-1 - 18-15,L1 - Fndn Slab,,CONSTRUCTION,BRAZOS,Pour Concrete,JAMES LEE,SOMD / Roofing / Waterproofing,2024-06-07 07:00,2024-06-10 17:00,2024-03-02 07:00,2024-03-05 17:00,2025-11-20 17:00,2025-11-20 17:00,2025-12-05 17:00,2025-12-05 17:00,0,20,100
CN.SWA1.1521,PH1- INSTALL ELEVATOR STEEL(D6) - SWA-1 - L1- ELEVATOR 03 GL 16-17 L-M (all levles),Complete,SWA - 1,West Support Building,SUWS-1 - 18-15,,ELEVATOR,CONSTRUCTION,W&W,Steel Erection,JAMES LIVELY,INTERIORS,2024-02-08 07:00,2024-02-23 17:00,2023-12-15 07:00,2024-05-17 17:00,2025-11-20 17:00,2025-11-20 17:00,2025-11-24 07:00,2025-11-24 07:00,0,120,100
CN.SWA1.1600,PH1- INSTALL H FRAME - ROLL UP DOOR - SWA-1 - L1-WASTE WATER TANK RM NORTH- GL 18-15 K-N,Not Started,SWA - 1,West Support Building,SUWS-1 - 18-15,L1 - Fndn Slab,MCC/IO,CONSTRUCTION,PATRIOT,TBD Architectural Finishes,JAMES LIVELY,INTERIORS,2025-11-21 07:00,2025-11-24 17:00,,,2025-11-21 07:00,2025-11-24 17:00,2025-11-25 07:00,2025-11-26 17:00,20,20,0
CN.AB.AR.4700,INSTALL ROLL UP DOORS - SWA-1 - L1 - (N17.5 - 301B) WASTE WATER RM NORTH - (MEP ROUGH IN NOT INCLUDED),Not Started,SWA - 1,West Support Building,SUWS-1 - 18-15,EXTERIOR SKIN,,CONSTRUCTION,PATRIOT,INSULATED METAL PANELS,AMBER CARO,INTERIORS,2025-11-26 07:00,2025-12-01 17:00,,,2025-11-26 07:00,2025-12-01 17:00,2025-12-04 07:00,2025-12-05 17:00,20,20,0
CN.AB.AR.5570,METAL STUD FRAMING (2hr) - SWA-1 - L2- BATTERY ROOM 1- GL 18-15 J-N,Complete,SWA - 1,West Support Building,SUWS-1 - 18-15,L2 - SubFab Level,BATT. RM 1,CONSTRUCTION,BERG,TBD Architectural Finishes,AMBER CARO,INTERIORS,2023-10-27 07:00,2023-10-30 17:00,2023-10-24 07:00,2023-11-03 08:00,2025-11-20 17:00,2025-11-20 17:00,2025-11-24 07:00,2025-11-24 07:00,0,40,100
CN.AB.AR.5580,MEP ROUGH IN & INSPECTION (by SECAI) - SWA-1 - L2- BATTERY ROOM 1- GL 18-15 J-N,Complete,SWA - 1,West Support Building,SUWS-1 - 18-15,L2 - SubFab Level,BATT. RM 1,CONSTRUCTION,,Owner & Design Team,AMBER CARO,,2023-11-06 08:00,2023-11-10 08:00,2023-11-06 08:00,2023-11-08 08:00,2025-11-20 17:00,2025-11-20 17:00,2025-11-24 07:00,2025-11-24 07:00,0,40,100
CN.AB.AR.5610,TAPE & FINISH DRYWALL - SWA-1 - L2- BATTERY ROOM 1- GL 18-15 K-N,Complete,SWA - 1,West Support Building,SUWS-1 - 18-15,L2 - SubFab Level,BATT. RM 1,CONSTRUCTION,,DRYWALL,AMBER CARO,INTERIORS,2024-01-02 09:00,2024-01-07 08:00,2024-01-02 07:00,2024-01-07 10:00,2025-11-20 17:00,2025-11-20 17:00,2025-11-24 07:00,2025-11-24 07:00,0,40,100
CN.AB.AR.5660,FLOOR STRIPING PAINT - SWA-1 - L2- BATTERY ROOM 1- GL 18-15 K-N,Not Started,SWA - 1,West Support Building,SUWS-1 - 18-15,L2 - SubFab Level,BATT. RM 1,CONSTRUCTION,FLOOR STRIPING PAINT,TBD Architectural Finishes,AMBER CARO,INTERIORS,2025-11-26 07:00,2025-12-04 17:00,,,2025-11-26 07:00,2025-12-04 17:00,2025-12-01 07:00,2025-12-05 17:00,50,50,0
CN.AB.AR.5650,INSTALL WALL PROTECTION - AIR LOCK 3 / ELEVATOR HALL 3 - GL 17-18 - K-L - L2,Not Started,SWA - 1,West Support Building,SUWS-1 - 18-15,L2 - SubFab Level,DS/AD INTERIORS,CONSTRUCTION,BERNCO,TBD Architectural Finishes,JAMES LEE,INTERIORS,2025-11-21 07:00,2025-11-25 17:00,,,2025-11-21 07:00,2025-11-25 17:00,2025-11-24 07:00,2025-11-26 17:00,30,30,0
CN.AB.AR.5600,DRYWALL 2 SIDE - SWA-1 - L2- BATTERY ROOM 1- GL 18-15 K-N,Complete,SWA - 1,West Support Building,SUWS-1 - 18-15,L2 - SubFab Level,BATT. RM 1,CONSTRUCTION,,DRYWALL,AMBER CARO,INTERIORS,2023-12-12 10:00,2023-12-17 10:00,2023-12-12 10:00,2023-12-17 13:00,2025-11-20 17:00,2025-11-20 17:00,2025-11-24 07:00,2025-11-24 07:00,0,40,100
CN.AB.AR.5590,DRYWALL & INSULATION (1 side) (INT) - SWA-1 - L2- BATTERY ROOM 1- GL 18-15 K-N,Complete,SWA - 1,West Support Building,SUWS-1 - 18-15,L2 - SubFab Level,BATT. RM 1,CONSTRUCTION,,DRYWALL,AMBER CARO,INTERIORS,2023-11-10 12:00,2023-11-14 12:00,2023-11-09 12:00,2023-11-14 10:00,2025-11-20 17:00,2025-11-20 17:00,2025-11-24 07:00,2025-11-24 07:00,0,40,100
CN.AB.AR.5670,METAL STUD FRAMING (2hr) - SWA-1 - L3 - SUB CLEAN ROOM NORTH- GL 18-15 K-N,Complete,SWA - 1,West Support Building,SUWS-1 - 18-15,L3 / Waffle Slab Level,SUB CLEAN RM,CONSTRUCTION,BERG,TBD Architectural Finishes,AMBER CARO,INTERIORS,2024-04-11 07:00,2024-04-17 17:00,2024-04-11 07:00,2024-05-08 17:00,2025-11-20 17:00,2025-11-20 17:00,2025-11-24 07:00,2025-11-24 07:00,0,50,100
CN.AB.AR.5680,MEP ROUGH IN & INSPECTION (by SECAI) - SWA-1 - L3 - SUB CLEAN ROOM NORTH- GL 18-15 K-N,Complete,SWA - 1,West Support Building,SUWS-1 - 18-15,L3 / Waffle Slab Level,SUB CLEAN RM,CONSTRUCTION,SECAI,Owner & Design Team,AMBER CARO,,2024-05-07 07:00,2024-05-14 17:00,2024-05-07 07:00,2024-05-13 17:00,2025-11-20 17:00,2025-11-20 17:00,2025-11-24 07:00,2025-11-24 07:00,0,50,100
CN.AB.AR.5710,TAPE & FINISH DRYWALL - SWA-1 - L3 - SUB CLEAN ROOM NORTH- GL 18-15 K-N,Complete,SWA - 1,West Support Building,SUWS-1 - 18-15,L3 / Waffle Slab Level,SUB CLEAN RM,CONSTRUCTION,CHERRY COATING,DRYWALL,AMBER CARO,INTERIORS,2025-06-09 07:00,2025-06-13 17:00,2025-06-09 07:00,2025-06-13 17:00,2025-11-20 17:00,2025-11-20 17:00,2025-11-24 07:00,2025-11-24 07:00,0,50,100
CN.AB.AR.5760,FLOOR STRIPING PAINT - SWA-1 - L3 - SUB CLEAN ROOM NORTH- GL 18-15 K-N,Not Started,SWA - 1,West Support Building,SUWS-1 - 18-15,L3 / Waffle Slab Level,SUB CLEAN RM,CONSTRUCTION,FLOOR STRIPING PAINT,TBD Architectural Finishes,AMBER CARO,INTERIORS,2025-11-26 07:00,2025-12-04 17:00,,,2025-11-26 07:00,2025-12-04 17:00,2025-12-01 07:00,2025-12-05 17:00,50,50,0
CN.AB.AR.5750,INSTALL WALL PROTECTION - ELEVATOR HALL 3 - GL 17-19 - L-M - L3,Not Started,SWA - 1,West Support Building,SUWS-1 - 18-15,L3 / Waffle Slab Level,,CONSTRUCTION,BERNCO,TBD Architectural Finishes,JAMES LEE,INTERIORS,2025-11-21 07:00,2025-11-25 17:00,,,2025-11-21 07:00,2025-11-25 17:00,2025-11-24 07:00,2025-11-26 17:00,30,30,0
CN.AB.AR.5730,FINISH PAINT - SWA-1 - L3 - SUB CLEAN ROOM NORTH- GL 18-15 K-N,Not Started,SWA - 1,West Support Building,SUWS-1 - 18-15,L3 / Waffle Slab Level,SUB CLEAN RM,CONSTRUCTION,FINISH PAINT,TBD Architectural Finishes,JAMES LEE,INTERIORS,2025-11-21 07:00,2025-12-01 17:00,,,2025-11-21 07:00,2025-12-01 17:00,2025-12-01 07:00,2025-12-05 17:00,50,50,0
CN.AB.AR.5700,DRYWALL 2 SIDE - SWA-1 - L3 - SUB CLEAN ROOM NORTH- GL 18-15 K-N,Complete,SWA - 1,West Support Building,SUWS-1 - 18-15,L3 / Waffle Slab Level,SUB CLEAN RM,CONSTRUCTION,BERG,DRYWALL,AMBER CARO,INTERIORS,2025-06-02 07:00,2025-06-06 17:00,2025-06-02 07:00,2025-06-06 17:00,2025-11-20 17:00,2025-11-20 17:00,2025-11-24 07:00,2025-11-24 07:00,0,50,100
CN.AB.AR.5690,DRYWALL & INSULATION (1 side) (INT) - SWA-1 - L3 - SUB CLEAN ROOM NORTH- GL 18-15 K-N,Complete,SWA - 1,West Support Building,SUWS-1 - 18-15,L3 / Waffle Slab Level,SUB CLEAN RM,CONSTRUCTION,BERG,DRYWALL,AMBER CARO,INTERIORS,2024-05-09 07:00,2024-05-16 17:00,2024-05-09 07:00,2024-05-14 17:00,2025-11-20 17:00,2025-11-20 17:00,2025-11-24 07:00,2025-11-24 07:00,0,50,100
CN.SWA1.1190,IMPACT - DRB-01 ADDITIONAL BEAMS BETWEEN FAB AND AD GL 18 - 15 ROOF,Complete,SWA - 1,,SUWS-1 - 18-15,DS/AD,,CONSTRUCTION,,Roofing,,,2023-11-27 07:00,2023-12-01 09:00,2023-11-20 07:00,2024-01-06 10:00,2025-11-20 17:00,2025-11-20 17:00,2025-06-13 08:00,2025-06-13 08:00,0,32,100
SEC.AR.4490,SECAI - MEP PIPE RACK INSTALL AREA B DS SIDE - SWA-1 - L4,Complete,SWA - 1,East Support Building,SUWS-1 - 18-15,L4 - SUP Roof - FAB Roof,,CONSTRUCTION,SECAI,Owner & Design Team,,INTERIORS,2023-11-27 07:00,2023-11-27 17:00,2023-11-25 07:00,2023-11-25 17:00,2025-11-20 17:00,2025-11-20 17:00,2025-12-05 17:00,2025-12-05 17:00,0,10,100
CN.AB.AR.5770,METAL STUD FRAMING (2hr) - SWA-1 - L2- BATTERY ROOM 2,Complete,SWA - 1,West Support Building,SUWS-1 - 18-15,L2 - SubFab Level,BATT. RM 2,CONSTRUCTION,BERG,TBD Architectural Finishes,AMBER CARO,INTERIORS,2023-10-24 07:00,2023-10-28 17:00,2023-10-24 07:00,2023-10-30 09:00,2025-11-20 17:00,2025-11-20 17:00,2025-11-24 07:00,2025-11-24 07:00,0,40,100
CN.AB.AR.5780,MEP ROUGH IN & INSPECTION (by SECAI) - SWA-1 - L2- BATTERY ROOM 2- GL 18-15 J-N,Complete,SWA - 1,West Support Building,SUWS-1 - 18-15,L2 - SubFab Level,BATT. RM 2,CONSTRUCTION,,Owner & Design Team,AMBER CARO,,2023-11-13 07:00,2023-11-17 17:00,2023-11-13 07:00,2023-11-14 17:00,2025-11-20 17:00,2025-11-20 17:00,2025-11-24 07:00,2025-11-24 07:00,0,40,100
CN.AB.AR.5810,TAPE & FINISH DRYWALL - SWA-1 - L2- BATTERY ROOM 2- GL 18-15 K-N,Complete,SWA - 1,West Support Building,SUWS-1 - 18-15,L2 - SubFab Level,BATT. RM 2,CONSTRUCTION,,DRYWALL,AMBER CARO,INTERIORS,2024-01-02 09:00,2024-01-07 08:00,2024-01-02 07:00,2024-01-07 10:00,2025-11-20 17:00,2025-11-20 17:00,2025-11-24 07:00,2025-11-24 07:00,0,40,100
CN.AB.AR.5860,FLOOR STRIPING PAINT - SWA-1 - L2- BATTERY ROOM 2- GL 18-15 K-N,Not Started,SWA - 1,West Support Building,SUWS-1 - 18-15,L2 - SubFab Level,BATT. RM 2,CONSTRUCTION,FLOOR STRIPING PAINT,TBD Architectural Finishes,AMBER CARO,INTERIORS,2025-11-21 07:00,2025-11-21 07:00,,,2025-11-21 07:00,2025-11-21 07:00,2025-12-05 17:00,2025-12-05 17:00,0,0,0
CN.AB.AR.5800,DRYWALL 2 SIDE - SWA-1 - L2- BATTERY ROOM 2- GL 18-15 K-N,Complete,SWA - 1,West Support Building,SUWS-1 - 18-15,L2 - SubFab Level,BATT. RM 2,CONSTRUCTION,,DRYWALL,AMBER CARO,INTERIORS,2023-12-11 07:00,2023-12-15 17:00,2023-12-11 07:00,2023-12-15 17:00,2025-11-20 17:00,2025-11-20 17:00,2025-11-24 07:00,2025-11-24 07:00,0,40,100
CN.AB.AR.5790,DRYWALL & INSULATION (1 side) (INT) - SWA-1 - L2- BATTERY ROOM 2- GL 18-15 J-N,Complete,SWA - 1,West Support Building,SUWS-1 - 18-15,L2 - SubFab Level,BATT. RM 2,CONSTRUCTION,,DRYWALL,AMBER CARO,INTERIORS,2023-11-16 07:00,2023-11-19 17:00,2023-11-14 07:00,2023-11-18 11:00,2025-11-20 17:00,2025-11-20 17:00,2025-11-24 07:00,2025-11-24 07:00,0,40,100
CN.SWA1.1620,PH1 - CLADDING STEEL  EXTERIOR - GL 18-15 SWA-1 L LINE (DS AREA),Complete,SWA - 1,West Support Building,SUWS-1 - 18-15,EXTERIOR SKIN,,CONSTRUCTION,,INSULATED METAL PANELS,JAMES LIVELY,,2023-11-14 09:00,2023-11-28 15:00,2023-11-13 09:00,2023-11-15 09:00,2025-11-20 17:00,2025-11-20 17:00,2025-06-13 08:00,2025-06-13 08:00,0,96,100
EMB1009,IMPACT - Missing Precast Embeds GL M17 Level 1A SEQ 9301,Complete,SWA - 1,West Support Building,SUWS-1 - 18-15,DS/AD,,CONSTRUCTION,,Steel Erection,SEAN MONK,,2023-10-24 13:00,2023-10-27 09:00,2023-10-12 13:00,2023-10-13 09:00,2025-11-20 17:00,2025-11-20 17:00,2025-06-13 08:00,2025-06-13 08:00,0,16,100
CN.SWA1.1412,INSTALL CERAMIC TILE (WALLS & FLOOR) - BATHROOM - GL 15-18 - K-N - L3,Complete,SWA - 1,,SUWS-1 - 18-15,L3 / Waffle Slab Level,BATHROOM,CONSTRUCTION,SPECTRA,TBD Architectural Finishes,,,2025-06-16 07:00,2025-06-20 17:00,2025-06-16 07:00,2025-09-26 07:00,2025-11-20 17:00,2025-11-20 17:00,2025-12-01 07:00,2025-12-01 07:00,0,50,100
CN.SWA1.1432,INSTALL MIRRORS - BATHROOM - GL 15-18 - K-N - L3,Active,SWA - 1,,SUWS-1 - 18-15,L3 / Waffle Slab Level,BATHROOM,CONSTRUCTION,,TBD Architectural Finishes,,,2025-10-16 07:00,2025-10-22 17:00,2025-10-16 07:00,,2025-11-21 07:00,2025-12-01 17:00,2025-11-20 07:00,2025-11-26 17:00,50,50,0
CN.SWA1.1442,INSTALL COUNTERTOPS - BATHROOM - GL 15-18 - K-N - L3,Complete,SWA - 1,,SUWS-1 - 18-15,L3 / Waffle Slab Level,BATHROOM,CONSTRUCTION,H2I,TBD Architectural Finishes,,,2025-10-06 07:00,2025-10-10 17:00,2025-10-06 07:00,2025-10-10 17:00,2025-11-20 17:00,2025-11-20 17:00,2025-11-20 07:00,2025-11-20 07:00,0,50,100
CN.SWA1.1630,PH1- DS/AD DECKING & DETAILNG GL 18 - 15 DS/AD SWA-1 L2-L3,Complete,SWA - 1,West Support Building,SUWS-1 - 18-15,DS/AD,,CONSTRUCTION,,Decking & Detail,SEAN MONK,,2023-12-04 07:00,2023-12-15 13:00,2023-12-01 07:00,2024-01-06 16:00,2025-11-20 17:00,2025-11-20 17:00,2025-11-24 07:00,2025-11-24 07:00,0,96,100
CN.SWA1.1640,PH1- DS/AD FRP SLAB - SWA-1  L3,Complete,SWA - 1,West Support Building,SUWS-1 - 18-15,DS/AD,,CONSTRUCTION,,SOMD,CONCRETE,,2023-12-01 08:00,2023-12-05 08:00,2023-12-01 08:00,2023-12-05 12:00,2025-11-20 17:00,2025-11-20 17:00,2025-11-24 07:00,2025-11-24 07:00,0,40,100
CN.SWA1.1650,AD STEEL PAINT FIREPROOFING IFRM - SWA-1 - GL 18-15 - J-K - L2-CEILING,Complete,SWA - 1,West Support Building,SUWS-1 - 18-15,DS/AD,,CONSTRUCTION,ROLLING PLAINS,Fireproofing,HOON WOO,,2024-07-18 07:00,2024-07-24 17:00,2024-06-25 07:00,2024-06-27 17:00,2025-11-20 17:00,2025-11-20 17:00,2025-11-24 07:00,2025-11-24 07:00,0,50,100
CN.SWA1.1242,METAL STUD FRAMING (2hr)- SWA1- GL 18-15 - K LINE - L1,Complete,SWA - 1,West Support Building,SUWS-1 - 18-15,L1 - Fndn Slab,DS/AD INTERIORS,CONSTRUCTION,BERG,TBD Architectural Finishes,FIZ DATA CENTER,INTERIORS,2023-12-04 10:00,2023-12-10 08:00,2023-12-04 10:00,2023-12-08 11:00,2025-11-20 17:00,2025-11-20 17:00,2025-12-05 17:00,2025-12-05 17:00,0,48,100
CN.SWA1.1352,TAPE & FINISH DRYWALL- SWA1- GL 18-15  - K LINE  -  L1,Complete,SWA - 1,West Support Building,SUWS-1 - 18-15,L1 - Fndn Slab,DS/AD INTERIORS,CONSTRUCTION,,DRYWALL,FIZ DATA CENTER,INTERIORS,2024-03-20 11:00,2024-03-26 11:00,2024-03-11 00:00,2024-03-18 00:00,2025-11-20 17:00,2025-11-20 17:00,2025-12-05 17:00,2025-12-05 17:00,0,40,100
CN.SWA1.1382,PRIMER & PAINT DRYWALL - GL 18-15 - K LINE - L1,Complete,SWA - 1,West Support Building,SUWS-1 - 18-15,L1 - Fndn Slab,DS/AD INTERIORS,CONSTRUCTION,FINISH PAINT,TBD Architectural Finishes,FIZ DATA CENTER,INTERIORS,2024-10-21 07:00,2024-10-24 17:00,2024-10-19 07:00,2024-10-22 17:00,2025-11-20 17:00,2025-11-20 17:00,2025-12-05 17:00,2025-12-05 17:00,0,30,100
CN.SWA1.1322,DRYWALL 2 SIDE - SWA1- GL 18-15 - K LINE - L1,Complete,SWA - 1,West Support Building,SUWS-1 - 18-15,L1 - Fndn Slab,DS/AD INTERIORS,CONSTRUCTION,,DRYWALL,FIZ DATA CENTER,INTERIORS,2024-03-09 08:00,2024-03-17 08:00,2024-03-03 00:00,2024-03-08 00:00,2025-11-20 17:00,2025-11-20 17:00,2025-12-05 17:00,2025-12-05 17:00,0,40,100
CN.SWA1.1292,DRYWALL & INSULATION (1 side) (INT)- SWA1- GL 18-15 - K LINE - L1,Complete,SWA - 1,West Support Building,SUWS-1 - 18-15,L1 - Fndn Slab,DS/AD INTERIORS,CONSTRUCTION,,DRYWALL,FIZ DATA CENTER,INTERIORS,2023-12-11 07:00,2023-12-16 15:00,2023-12-11 07:00,2023-12-19 09:00,2025-11-20 17:00,2025-11-20 17:00,2025-12-05 17:00,2025-12-05 17:00,0,48,100
CN.SWA1.1252,METAL STUD FRAMING (2hr)- SWA1- GL 18-15 K LINE - L2,Complete,SWA - 1,West Support Building,SUWS-1 - 18-15,L2 - SubFab Level,DS/AD INTERIORS,CONSTRUCTION,BERG,TBD Architectural Finishes,FIZ DATA CENTER,INTERIORS,2024-01-08 11:00,2024-01-17 09:00,2024-01-08 11:00,2024-01-12 17:00,2025-11-20 17:00,2025-11-20 17:00,2025-11-24 07:00,2025-11-24 07:00,0,48,100
CN.SWA1.1362,REMEDY - TAPE & FINISH DRYWALL- SWA1- GL 18-15 K LINE L2,Complete,SWA - 1,West Support Building,SUWS-1 - 18-15,L2 - SubFab Level,DS/AD INTERIORS,CONSTRUCTION,CHERRY COATING,DRYWALL,FIZ DATA CENTER,INTERIORS,2024-08-12 07:00,2024-08-15 17:00,2024-08-10 07:00,2024-08-13 17:00,2025-11-20 17:00,2025-11-20 17:00,2025-11-24 07:00,2025-11-24 07:00,0,30,100
CN.SWA1.1392,FINISH PAINT - FA LAB 1 - SWA1- GL 18-15 K LINE L2,Not Started,SWA - 1,West Support Building,SUWS-1 - 18-15,L2 - SubFab Level,DS/AD INTERIORS,CONSTRUCTION,FINISH PAINT,TBD Architectural Finishes,FIZ DATA CENTER,INTERIORS,2025-11-21 07:00,2025-11-21 07:00,,,2025-11-21 07:00,2025-11-21 07:00,2025-12-05 17:00,2025-12-05 17:00,0,0,0
CN.SWA1.1332,REMEDY - FRAME & DRYWALL - SWA1- GL 18-15 K LINE L2,Complete,SWA - 1,West Support Building,SUWS-1 - 18-15,L2 - SubFab Level,DS/AD INTERIORS,CONSTRUCTION,BERG,DRYWALL,FIZ DATA CENTER,INTERIORS,2024-07-18 07:00,2024-08-08 17:00,2024-07-17 07:00,2024-08-03 17:00,2025-11-20 17:00,2025-11-20 17:00,2025-11-24 07:00,2025-11-24 07:00,0,150,100
CN.SWA1.1302,DRYWALL & INSULATION (1 side) (INT) - SWA1- GL 18-15 K LINE - L2,Complete,SWA - 1,West Support Building,SUWS-1 - 18-15,L2 - SubFab Level,DS/AD INTERIORS,CONSTRUCTION,,DRYWALL,FIZ DATA CENTER,INTERIORS,2024-01-08 09:00,2024-01-14 17:00,2024-01-08 07:00,2024-01-12 15:00,2025-11-20 17:00,2025-11-20 17:00,2025-11-24 07:00,2025-11-24 07:00,0,48,100
CN.SWA1.1212,TEMP WALLS Framing and Drywall- SWA1- GL 18-15 - L2- GL 18-15 K-N,Complete,SWA - 1,,SUWS-1 - 18-15,L2 - SubFab Level,BATT. RM 1,CONSTRUCTION,,DRYWALL,,,2024-02-19 07:00,2024-02-23 17:00,2024-02-19 07:00,2024-02-23 17:00,2025-11-20 17:00,2025-11-20 17:00,2025-11-24 07:00,2025-11-24 07:00,0,40,100
CN.SWA1.1222,TEMP WALLS Framing and Drywall- SWA1- GL 18-15 -  L2- GL 18-15 K-N,Complete,SWA - 1,,SUWS-1 - 18-15,L2 - SubFab Level,BATT. RM 2,CONSTRUCTION,,DRYWALL,,,2024-01-02 09:00,2024-01-07 08:00,2024-01-16 07:00,2024-01-23 10:00,2025-11-20 17:00,2025-11-20 17:00,2025-11-24 07:00,2025-11-24 07:00,0,40,100
CN.SWA1.1660,PH1 -WELD CLIPS - CLADDING STEEL - SWA-1 L LINE (DS AREA),Complete,SWA - 1,West Support Building,SUWS-1 - 18-15,EXTERIOR SKIN,,CONSTRUCTION,,INSULATED METAL PANELS,JAMES LIVELY,,2023-11-13 07:00,2023-11-14 09:00,2023-11-10 07:00,2023-11-14 09:00,2025-11-20 17:00,2025-11-20 17:00,2025-06-13 08:00,2025-06-13 08:00,0,12,100
CN.SWA1.1452,LOADING DOCK - LOADING DOCK RETAINING WALLS EXCAVATION & FRP- SWB1- GL 14-18 N- LINE,Complete,SWA - 1,East Support Building,SUWS-1 - 18-15,L1 - Fndn Slab,,CONSTRUCTION,BAKER,TBD Architectural Finishes,AMBER CARO,INTERIORS,2025-04-01 07:00,2025-04-16 17:00,2025-02-28 07:00,2025-03-10 17:00,2025-11-20 17:00,2025-11-20 17:00,2025-08-26 07:00,2025-08-26 07:00,0,120,100
CN.SWA1.1560,IMPACT - DS STEEL BEAM STIFFNER CONNECTION FIXES L4 GL 18-15,Complete,SWA - 1,,SUWS-1 - 18-15,DS/AD,,CONSTRUCTION,,Steel Erection,,,2024-01-22 07:00,2024-01-25 17:00,2024-01-02 07:00,2024-01-18 07:00,2025-11-20 17:00,2025-11-20 17:00,2025-06-13 08:00,2025-06-13 08:00,0,40,100
CN.SWA1.1282,METAL STUD FRAMING (2hr) - SWA1- GL 18-15 K Line - L3,Complete,SWA - 1,West Support Building,SUWS-1 - 18-15,L3 / Waffle Slab Level,DS/AD INTERIORS,CONSTRUCTION,BERG,TBD Architectural Finishes,FIZ DATA CENTER,INTERIORS,2024-04-08 11:00,2024-04-16 11:00,2024-04-08 11:00,2024-04-15 17:00,2025-11-20 17:00,2025-11-20 17:00,2025-06-13 08:00,2025-06-13 08:00,0,40,100
CN.SWA1.1402,TAPE & FINISH DRYWALL - SWA1- GL 18-15 K LINE  -  L3,Complete,SWA - 1,West Support Building,SUWS-1 - 18-15,L3 / Waffle Slab Level,DS/AD INTERIORS,CONSTRUCTION,CHERRY COATING,DRYWALL,FIZ DATA CENTER,INTERIORS,2024-08-02 07:00,2024-08-08 17:00,2024-07-15 07:00,2024-07-20 17:00,2025-11-20 17:00,2025-11-20 17:00,2025-06-13 08:00,2025-06-13 08:00,0,40,100
CN.SWA1.1422,D/S SGP Wall Turnover - SWA1- GL 18-15 K LINE L3,Complete,SWA - 1,West Support Building,SUWS-1 - 18-15,L3 / Waffle Slab Level,DS/AD INTERIORS,CONSTRUCTION,SECAI,TBD Architectural Finishes,FIZ DATA CENTER,INTERIORS,2024-07-22 07:00,2024-07-22 17:00,2024-07-20 07:00,2024-07-20 17:00,2025-11-20 17:00,2025-11-20 17:00,2025-06-13 08:00,2025-06-13 08:00,0,10,100
CN.SWA1.1372,DRYWALL 2 SIDE- SWA1- GL 18-15 K LINE - L3,Complete,SWA - 1,West Support Building,SUWS-1 - 18-15,L3 / Waffle Slab Level,DS/AD INTERIORS,CONSTRUCTION,BERG,DRYWALL,FIZ DATA CENTER,INTERIORS,2024-05-23 07:00,2024-05-30 17:00,2024-05-23 07:00,2024-06-20 17:00,2025-11-20 17:00,2025-11-20 17:00,2025-06-13 08:00,2025-06-13 08:00,0,40,100
CN.SWA1.1342,DRYWALL & INSULATION (1 side) (INT)- SWA1- GL 18-15 K LINE - L3,Complete,SWA - 1,West Support Building,SUWS-1 - 18-15,L3 / Waffle Slab Level,DS/AD INTERIORS,CONSTRUCTION,BERG,DRYWALL,FIZ DATA CENTER,INTERIORS,2024-04-15 09:00,2024-04-19 09:00,2024-04-10 09:00,2024-04-19 17:00,2025-11-20 17:00,2025-11-20 17:00,2025-06-13 08:00,2025-06-13 08:00,0,40,100
CN.SWA1.6000,WATER PROOF PEDASTALS - GL 14-19 - SWA-1-ROOF,Complete,SWA - 1,West Support Building,SUWS-1 - 18-15,L4 - SUP Roof - FAB Roof,,CONSTRUCTION,,Roofing,FIZ DATA CENTER,SOMD / Roofing / Waterproofing,2024-02-06 13:00,2024-02-08 11:00,2024-01-13 12:00,2024-01-15 17:00,2025-11-20 17:00,2025-11-20 17:00,2025-12-05 17:00,2025-12-05 17:00,0,8,100
CN.SWA1.6010,WATER PROOFING & POUR PEDASTALS - GL 14-19 - SWA-1-ROOF,Complete,SWA - 1,West Support Building,SUWS-1 - 18-15,L4 - SUP Roof - FAB Roof,,CONSTRUCTION,,Roofing,FIZ DATA CENTER,SOMD / Roofing / Waterproofing,2024-02-08 11:00,2024-02-09 09:00,2024-01-18 14:00,2024-01-19 00:00,2025-11-20 17:00,2025-11-20 17:00,2025-12-05 17:00,2025-12-05 17:00,0,8,100
CN.SWA1.6020,FINISH WATER PROOFING & POUR PEDASTALS - GL 14-19 - SWA-1-ROOF,Complete,SWA - 1,West Support Building,SUWS-1 - 18-15,L4 - SUP Roof - FAB Roof,,CONSTRUCTION,,Roofing,FIZ DATA CENTER,SOMD / Roofing / Waterproofing,2024-02-09 09:00,2024-02-09 17:00,2024-01-20 12:00,2024-01-23 17:00,2025-11-20 17:00,2025-11-20 17:00,2025-12-05 17:00,2025-12-05 17:00,0,8,100
CN.SWA1.6030,STRIP PEDSTALS & WORK ON SCRUBBER PAD - GL 14-19 - SWA-1-ROOF,Complete,SWA - 1,West Support Building,SUWS-1 - 18-15,L4 - SUP Roof - FAB Roof,,CONSTRUCTION,,Roofing,FIZ DATA CENTER,SOMD / Roofing / Waterproofing,2024-02-09 09:00,2024-02-09 17:00,2024-01-22 13:00,2024-01-23 17:00,2025-11-20 17:00,2025-11-20 17:00,2025-12-05 17:00,2025-12-05 17:00,0,8,100
CN.SWA1.6040,FINISH FORM & INSPECT - GL 14-19 - SWA-1-ROOF & Pour back - (Brazos Pricng re-send),Complete,SWA - 1,West Support Building,SUWS-1 - 18-15,L4 - SUP Roof - FAB Roof,,CONSTRUCTION,,Roofing,FIZ DATA CENTER,SOMD / Roofing / Waterproofing,2024-02-10 08:00,2024-02-10 16:00,2024-01-24 13:00,2024-01-25 00:00,2025-11-20 17:00,2025-11-20 17:00,2025-12-05 17:00,2025-12-05 17:00,0,8,100
CN.SWA1.6100,INSTALL PRIMER - GL 14-19 - L4 - L-N - ROOF,Complete,SWA - 1,West Support Building,SUWS-1 - 18-15,L4 - SUP Roof - FAB Roof,,CONSTRUCTION,,TOPPING,FIZ DATA CENTER,SOMD / Roofing / Waterproofing,2023-12-20 11:00,2023-12-21 09:00,2023-12-20 11:00,2023-12-21 09:00,2025-11-20 17:00,2025-11-20 17:00,2025-12-05 17:00,2025-12-05 17:00,0,8,100
CN.SWA1.6110,INSPECT PRIMER - GL 14-19 - L4 - L-N - ROOF,Complete,SWA - 1,West Support Building,SUWS-1 - 18-15,L4 - SUP Roof - FAB Roof,,CONSTRUCTION,,TOPPING,FIZ DATA CENTER,SOMD / Roofing / Waterproofing,2023-12-21 09:00,2023-12-21 17:00,2023-12-21 09:00,2023-12-21 17:00,2025-11-20 17:00,2025-11-20 17:00,2025-12-05 17:00,2025-12-05 17:00,0,8,100
CN.SWA1.6120,INSPECT BASE COAT - GL 14-19 - L4 - L-N - ROOF,Complete,SWA - 1,West Support Building,SUWS-1 - 18-15,L4 - SUP Roof - FAB Roof,,CONSTRUCTION,,TOPPING,FIZ DATA CENTER,SOMD / Roofing / Waterproofing,2023-12-22 14:00,2023-12-26 12:00,2023-12-22 14:00,2023-12-26 12:00,2025-11-20 17:00,2025-11-20 17:00,2025-12-05 17:00,2025-12-05 17:00,0,8,100
CN.SWA1.6140,INSTALL BASE COAT - GL 14-19 - L4 - L-N - ROOF,Complete,SWA - 1,West Support Building,SUWS-1 - 18-15,L4 - SUP Roof - FAB Roof,,CONSTRUCTION,,TOPPING,FIZ DATA CENTER,SOMD / Roofing / Waterproofing,2023-12-22 07:00,2023-12-26 13:00,2023-12-22 07:00,2023-12-26 13:00,2025-11-20 17:00,2025-11-20 17:00,2025-12-05 17:00,2025-12-05 17:00,0,16,100
CN.SWA1.1232,FRAMING & DRYWALL - ELEVATOR 03 - SWB-1 - ALL LEVELS GL 19-16 (3 sides only),Complete,SWA - 1,West Support Building,SUWS-1 - 18-15,,ELEVATOR,CONSTRUCTION,BERG,DRYWALL,JAMES LIVELY,INTERIORS,2024-07-17 07:00,2024-08-16 17:00,2024-07-17 07:00,2024-08-14 17:00,2025-11-20 17:00,2025-11-20 17:00,2025-11-24 07:00,2025-11-24 07:00,0,210,100
CN.SWA1.6260,GROUT & PATCH - SWA1- GL 18-15 K-N - L3,Complete,SWA - 1,,SUWS-1 - 18-15,L3 / Waffle Slab Level,SUB CLEAN RM,CONSTRUCTION,,TBD Architectural Finishes,,,2024-02-20 11:00,2024-02-21 17:00,2024-02-20 11:00,2024-02-22 17:00,2025-11-20 17:00,2025-11-20 17:00,2025-12-05 17:00,2025-12-05 17:00,0,16,100
CN.SWA1.6270,"PRIME, PATCH & TOPCOAT PRECAST BEAMS - SWA1- GL 17-15 K-N - L3 (SUB CLEAN RM)",Complete,SWA - 1,,SUWS-1 - 18-15,L3 / Waffle Slab Level,SUB CLEAN RM,CONSTRUCTION,CHERRY COATING,TBD Architectural Finishes,,,2024-08-01 07:00,2024-08-12 17:00,2024-08-01 07:00,2024-08-26 17:00,2025-11-20 17:00,2025-11-20 17:00,2025-12-05 17:00,2025-12-05 17:00,0,70,100
EMB6010,IMPACT - Missing Precast Embeds GL L.5-17 Level 1UA SEQ 9301,Complete,SWA - 1,West Support Building,SUWS-1 - 18-15,DS/AD,,CONSTRUCTION,,Steel Erection,SEAN MONK,,2023-10-24 13:00,2023-10-27 09:00,2023-10-12 13:00,2023-10-13 09:00,2025-11-20 17:00,2025-11-20 17:00,2025-06-13 08:00,2025-06-13 08:00,0,16,100
CN.SWA1.1700,PH1- DS/AD FRP SLAB - DS/AD SWA-1 - L6,Complete,SWA - 1,,SUWS-1 - 18-15,DS/AD,,CONSTRUCTION,,SOMD,,,2023-12-11 07:00,2023-12-14 11:00,2023-12-11 07:00,2023-12-14 17:00,2025-11-20 17:00,2025-11-20 17:00,2025-06-13 08:00,2025-06-13 08:00,0,24,100
CN.SWA1.1710,PH1- DS/AD CURE FRP SLAB - DS/AD SWA-1  L6,Complete,SWA - 1,,SUWS-1 - 18-15,DS/AD,,CONSTRUCTION,,SOMD,,,2023-12-14 11:00,2023-12-16 15:00,2023-12-14 11:00,2023-12-16 16:00,2025-11-20 17:00,2025-11-20 17:00,2025-06-13 08:00,2025-06-13 08:00,0,24,100
CN.SWA1.1290,DETAILING AND INSPECTION CLADDING STEEL - SWA-1 N Line [SUP EXTERIOR WALL],Complete,SWA - 1,,SUWS-1 - 18-15,EXTERIOR SKIN,,CONSTRUCTION,,INSULATED METAL PANELS,,,2024-02-02 08:00,2024-02-08 14:00,2024-02-02 08:00,2024-02-06 17:00,2025-11-20 17:00,2025-11-20 17:00,2025-08-26 07:00,2025-08-26 07:00,0,56,100
CN.SWA1.6320,IMPACT - SECAI MEP DSI CRANE - SUW GL 18-15 - SWA-1,Complete,SWA - 1,West Support Building,SUWS-1 - 18-15,EXTERIOR SKIN,,CONSTRUCTION,,INSULATED METAL PANELS,JAMES LIVELY,,2023-11-02 07:00,2023-11-07 13:00,2023-11-02 07:00,2023-11-16 17:00,2025-11-20 17:00,2025-11-20 17:00,2025-06-13 08:00,2025-06-13 08:00,0,56,100
CN.SWA1.1310,INSTALL INSULATED METAL PANEL MODULES - GL 15-18.5 - K LINE (AD AREA),Complete,SWA - 1,,SUWS-1 - 18-15,EXTERIOR SKIN,,CONSTRUCTION,KOVACH,INSULATED METAL PANELS,,,2024-06-24 07:00,2024-06-29 17:00,2024-06-05 07:00,2024-06-10 17:00,2025-11-20 17:00,2025-11-20 17:00,2025-11-25 07:00,2025-11-25 07:00,0,50,100
EMB6030,IMPACT - Missing Plate - GL 17 3A GIRDER - TR066 - TF1-SMT-SH-1747,Complete,SWA - 1,West Support Building,SUWS-1 - 18-15,DS/AD,,CONSTRUCTION,,Steel Erection,SEAN MONK,,2023-11-27 07:00,2023-11-28 13:00,2023-11-20 07:00,2023-12-01 11:00,2025-11-20 17:00,2025-11-20 17:00,2025-06-13 08:00,2025-06-13 08:00,0,16,100
EMB6040,IMPACT - Missing Plate - GL 17-18 4A GIRDER - TR078B,Complete,SWA - 1,West Support Building,SUWS-1 - 18-15,DS/AD,,CONSTRUCTION,,Steel Erection,SEAN MONK,,2023-11-28 13:00,2023-12-01 09:00,2023-11-20 13:00,2023-12-01 11:00,2025-11-20 17:00,2025-11-20 17:00,2025-06-13 08:00,2025-06-13 08:00,0,16,100
EMB6080,IMPACT - Missing Plate WW COLUMN FIX - GL 17 3A M17 - TR091 - TF1-SMT-SH-2451,Complete,SWA - 1,West Support Building,SUWS-1 - 18-15,DS/AD,,CONSTRUCTION,,Steel Erection,SEAN MONK,,2023-12-04 07:00,2023-12-08 11:00,2023-12-04 07:00,2023-12-29 17:00,2025-11-20 17:00,2025-11-20 17:00,2025-06-13 08:00,2025-06-13 08:00,0,34,100
SUWPIT12-30,IMPACT - TINDAL FIX M17 - SWB-1 - L1 & L3 - GL 12-20 L-N,Complete,SWA - 1,West Support Building,SUWS-1 - 18-15,L1 - Fndn Slab,,CONSTRUCTION,,Decking & Detail,SEAN MONK,,2023-10-17 13:00,2023-10-29 13:00,2023-09-18 13:00,2023-11-11 10:00,2025-11-20 17:00,2025-11-20 17:00,2025-12-04 17:00,2025-12-04 17:00,0,100,100
CN.AB.AR.4810,OVERHEAD DOOR DIMENSIONS FIELD MEASURE- SUW1 - GL 18-15 - L1 - C-E,Complete,SWA - 1,,SUWS-1 - 18-15,EXTERIOR SKIN,,CONSTRUCTION,,INSULATED METAL PANELS,,,2023-11-27 08:00,2023-11-28 14:00,2023-11-16 08:00,2023-11-17 16:00,2025-11-20 17:00,2025-11-20 17:00,2025-11-21 07:00,2025-11-21 07:00,0,16,100
CN.SWA1.6330,IMPACT - SECAI MEP PIPE RACK STARCON CRANE - SUW GL 18-15 - SWA-1,Complete,SWA - 1,West Support Building,SUWS-1 - 18-15,EXTERIOR SKIN,,CONSTRUCTION,,INSULATED METAL PANELS,JAMES LIVELY,,2023-12-11 07:00,2023-12-18 16:00,2023-12-06 07:00,2023-12-11 15:00,2025-11-20 17:00,2025-11-20 17:00,2025-06-13 08:00,2025-06-13 08:00,0,69,100
CN.SWA1.6340,REMAINING - CLADDING STEEL EXTERIOR - SWA-1 L LINE (DS AREA),Complete,SWA - 1,West Support Building,SUWS-1 - 18-15,EXTERIOR SKIN,,CONSTRUCTION,,INSULATED METAL PANELS,JAMES LIVELY,,2023-12-11 15:00,2023-12-15 09:00,2023-12-11 15:00,2023-12-15 09:00,2025-11-20 17:00,2025-11-20 17:00,2025-06-13 08:00,2025-06-13 08:00,0,24,100
CN.SWA1.6350,IMPACT [S.TIA-115] - RFI #1075 STEEL FIX (L LINE BEAM) - SWA1 - L1 - GL 17,Complete,SWA - 1,,SUWS-1 - 18-15,L1 - Fndn Slab,,CONSTRUCTION,,TOPPING,,,2023-11-13 08:00,2023-11-18 08:00,2023-10-31 09:51,2023-11-16 16:00,2025-11-20 17:00,2025-11-20 17:00,2025-11-24 07:00,2025-11-24 07:00,0,40,100
CN.SWA1.1730,KNEE WALL -SWA 1 - GL 18-15 - L4 - J-K -DS/AD,Complete,SWA - 1,,SUWS-1 - 18-15,DS/AD,,CONSTRUCTION,,Cast-in Place Concrete - Baker Concrete,,,2024-02-01 08:00,2024-02-04 10:00,2024-02-01 08:00,2024-02-04 13:00,2025-11-20 17:00,2025-11-20 17:00,2025-11-25 07:00,2025-11-25 07:00,0,32,100
CN.SWA1.6380,DS/AD STEEL SPRAY FIREPROOFING SFRM - SWA-1 - GL 18-15 - L1 CEILING,Complete,SWA - 1,West Support Building,SUWS-1 - 18-15,DS/AD,,CONSTRUCTION,,Fireproofing,HOON WOO,,2023-12-04 07:00,2023-12-11 13:00,2023-12-01 07:00,2023-12-03 17:00,2025-11-20 17:00,2025-11-20 17:00,2025-11-24 07:00,2025-11-24 07:00,0,66,100
CN.SWA1.6390,K-LINE STEEL SPRAY FIREPROOFING SFRM2 - SWA1 - L3-CEILING - GL 15-18,Complete,SWA - 1,West Support Building,SUWS-1 - 18-15,L4 - SUP Roof - FAB Roof,DS/AD INTERIORS,CONSTRUCTION,ROLLING PLAINS,Fireproofing,HOON WOO,,2024-04-25 07:00,2024-04-30 17:00,2024-04-25 07:00,2024-04-29 17:00,2025-11-20 17:00,2025-11-20 17:00,2025-06-13 08:00,2025-06-13 08:00,0,40,100
SUWPIT12-40,IMPACT - WW FIX COLUMN M17 - SWB-1 - L1,Complete,SWA - 1,West Support Building,SUWS-1 - 18-15,L1 - Fndn Slab,,CONSTRUCTION,,Decking & Detail,SEAN MONK,,2023-10-17 13:00,2023-10-29 13:00,2023-11-13 13:00,2023-12-28 17:00,2025-11-20 17:00,2025-11-20 17:00,2025-12-05 17:00,2025-12-05 17:00,0,100,100
CN.SWA1.6400,IMPACT - STARCON PIPE RACK Gridline L - SUW GL 17-16 - L-LINE,Complete,SWA - 1,West Support Building,SUWS-1 - 18-15,EXTERIOR SKIN,,CONSTRUCTION,,INSULATED METAL PANELS,JAMES LIVELY,,2023-12-16 15:00,2023-12-22 11:00,2023-12-16 15:00,2024-01-15 13:00,2025-11-20 17:00,2025-11-20 17:00,2025-06-13 08:00,2025-06-13 08:00,0,56,100
CN.AB.AR.6760,IMPACT - MEZZANINE SOMD (ENGINEERING DRILL & EPOXY) - SWA-1 - L1 - GL 19-13,Complete,SWA - 1,West Support Building,SUWS-1 - 18-15,L1 - Fndn Slab,MCC/IO,CONSTRUCTION,,TBD Architectural Finishes,AMBER CARO,INTERIORS,2024-01-02 09:00,2024-01-07 08:00,2023-10-25 07:00,2024-01-04 17:00,2025-11-20 17:00,2025-11-20 17:00,2025-11-26 07:00,2025-11-26 07:00,0,40,100
CN.SWA1.6410,ROOFTOP DRY PARAPET - SWB-1 (DS AREA) GL 18-15 N (DS AREA),Complete,SWA - 1,West Support Building,SUWS-1 - 18-15,EXTERIOR SKIN,,CONSTRUCTION,,INSULATED METAL PANELS,JAMES LIVELY,,2024-02-19 11:00,2024-02-24 11:00,2024-02-19 11:00,2024-02-24 12:00,2025-11-20 17:00,2025-11-20 17:00,2025-12-05 17:00,2025-12-05 17:00,0,40,100
CN.SWA1.6420,INSTALL INSULATED METAL PANEL MODULES - GL 18-15 - J LINE (AD AREA),Complete,SWA - 1,West Support Building,SUWS-1 - 18-15,DS/AD,,CONSTRUCTION,KOVACH,Fireproofing,HOON WOO,,2024-06-29 07:00,2024-06-30 17:00,2024-06-20 07:00,2024-06-20 17:00,2025-11-20 17:00,2025-11-20 17:00,2025-12-05 17:00,2025-12-05 17:00,0,20,100
CN.SWA1.6440,INSTALL TPO ROOFING - SWA1 - GL 19-15 - K-L - L6,Complete,SWA - 1,West Support Building,SUWS-1 - 18-15,L6 - PENTHOUSE / DS ROOF,,CONSTRUCTION,BRAZOS,Waterproofing - Preferred,JAMES LIVELY,,2024-10-14 07:00,2024-10-17 17:00,2024-10-12 07:00,2024-10-16 17:00,2025-11-20 17:00,2025-11-20 17:00,2025-12-05 17:00,2025-12-05 17:00,0,30,100
CN.SWA1.6450,DCC BEAM (STEEL STRUCTURE) - SWA1- GL 18-15 - L3 K LINE,Complete,SWA - 1,West Support Building,SUWS-1 - 18-15,L3 / Waffle Slab Level,DS/AD INTERIORS,CONSTRUCTION,,TBD Architectural Finishes,FIZ DATA CENTER,INTERIORS,2024-03-01 08:00,2024-03-08 10:00,2024-03-01 08:00,2024-03-09 15:00,2025-11-20 17:00,2025-11-20 17:00,2025-06-13 08:00,2025-06-13 08:00,0,72,100
CN.SWA1.6460,TEMPORARY SCAFFOLD PLATFORM - SWA1- GL 18-15 - L3 K LINE,Complete,SWA - 1,West Support Building,SUWS-1 - 18-15,L3 / Waffle Slab Level,DS/AD INTERIORS,CONSTRUCTION,,TBD Architectural Finishes,FIZ DATA CENTER,INTERIORS,2024-03-12 07:00,2024-03-20 15:00,2024-03-12 07:00,2024-03-19 09:00,2025-11-20 17:00,2025-11-20 17:00,2025-06-13 08:00,2025-06-13 08:00,0,48,100
CN.SWA1.6470,MEP IN WALL ROUGH INS - SWA1- GL 18-15 K LINE L3,Complete,SWA - 1,West Support Building,SUWS-1 - 18-15,L3 / Waffle Slab Level,DS/AD INTERIORS,CONSTRUCTION,SECAI,TBD Architectural Finishes,FIZ DATA CENTER,INTERIORS,2024-05-13 07:00,2024-05-13 17:00,2024-05-13 07:00,2024-05-13 17:00,2025-11-20 17:00,2025-11-20 17:00,2025-06-13 08:00,2025-06-13 08:00,0,10,100
CN.SWA1.6480,Drywall Clips & AMTS Installs Support Beams - SWA-1 L4 GL 18-15 - K LINE,Complete,SWA - 1,West Support Building,SUWS-1 - 18-15,L4 - SUP Roof - FAB Roof,DS/AD INTERIORS,CONSTRUCTION,SECAI,Fireproofing,HOON WOO,,2024-03-25 07:00,2024-04-01 10:00,2024-03-20 07:00,2024-04-05 17:00,2025-11-20 17:00,2025-11-20 17:00,2025-06-13 08:00,2025-06-13 08:00,0,53,100
CN.SWA1.6490,DS STEEL SPRAY SFRM SWA 1 - L3 CEILING GL15-18/K-L,Complete,SWA - 1,West Support Building,SUWS-1 - 18-15,L4 - SUP Roof - FAB Roof,DS/AD INTERIORS,CONSTRUCTION,ROLLING PLAINS,Fireproofing,HOON WOO,,2024-06-03 07:00,2024-06-07 17:00,2024-05-28 07:00,2024-06-04 17:00,2025-11-20 17:00,2025-11-20 17:00,2025-12-05 17:00,2025-12-05 17:00,0,40,100
CN.SWA1.6500,ADD FLANGE EXTENSIONS/ CUT GRATING - SWA-1 L4 GL 18-15 - K LINE,Complete,SWA - 1,West Support Building,SUWS-1 - 18-15,L3 / Waffle Slab Level,DS/AD INTERIORS,CONSTRUCTION,,Fireproofing,HOON WOO,,2024-04-01 07:00,2024-04-03 11:00,2024-04-01 07:00,2024-04-04 11:00,2025-11-20 17:00,2025-11-20 17:00,2025-06-13 08:00,2025-06-13 08:00,0,24,100
CN.SWA1.6510,AD STEEL APPLY INTUMESCENT - SWA1- L3 CEILING - GL 15-18/J-K,Complete,SWA - 1,West Support Building,SUWS-1 - 18-15,L4 - SUP Roof - FAB Roof,DS/AD INTERIORS,CONSTRUCTION,ROLLING PLAINS,Fireproofing,HOON WOO,,2024-06-14 07:00,2024-06-20 17:00,2024-06-14 07:00,2024-06-18 17:00,2025-11-20 17:00,2025-11-20 17:00,2025-06-13 08:00,2025-06-13 08:00,0,40,100
CN.SWA1.6520,CURE INTUMESCENT PAINT AD side- SWA-1 L4 GL 18-15 - K-J LINE,Complete,SWA - 1,West Support Building,SUWS-1 - 18-15,L4 - SUP Roof - FAB Roof,DS/AD INTERIORS,CONSTRUCTION,ROLLING PLAINS,Fireproofing,HOON WOO,,2024-07-16 07:00,2024-07-31 17:00,2024-06-19 07:00,2024-07-10 17:00,2025-11-20 17:00,2025-11-20 17:00,2025-12-05 17:00,2025-12-05 17:00,0,120,100
CN.SWA1.6530,SECAI-AMTS Installs UPPER CEILING - SWA-1 L4 GL 18-15 - K LINE,Complete,SWA - 1,West Support Building,SUWS-1 - 18-15,L4 - SUP Roof - FAB Roof,DS/AD INTERIORS,CONSTRUCTION,SECAI,Fireproofing,HOON WOO,,2024-08-01 07:00,2024-08-05 17:00,2024-08-01 07:00,2024-08-05 17:00,2025-11-20 17:00,2025-11-20 17:00,2025-12-05 17:00,2025-12-05 17:00,0,30,100
SUWPIT12-50,IMPACT [C1] - MEP MATERIAL/EQUIPMENT OBSTRUCTION - SWB-1 - U1A - GL 12-20 L-N,Complete,SWA - 1,West Support Building,SUWS-1 - 18-15,L1 - Fndn Slab,,CONSTRUCTION,,Decking & Detail,SEAN MONK,,2023-10-17 13:00,2023-10-21 13:00,2023-12-31 13:00,2024-01-14 09:00,2025-11-20 17:00,2025-11-20 17:00,2025-12-04 17:00,2025-12-04 17:00,0,40,100
CN.SWA1.6580,IMPACT [C21] - PIPE RACK GROUT - TOP OF VOC CONTROL RM - FRP SLAB - DS/AD SWA-1 GL 17-18,Complete,SWA - 1,West Support Building,SUWS-1 - 18-15,DS/AD,,CONSTRUCTION,BAKER,SOMD,CONCRETE,,2024-01-29 07:00,2024-01-31 11:00,2023-12-15 07:00,2023-12-28 17:00,2025-11-20 17:00,2025-11-20 17:00,2025-11-24 07:00,2025-11-24 07:00,0,24,100
CN.SWA1.6590,REMAINING - DS/AD DECKING & DETAILING GL18 - 15 DS/AD SWA-1 L4 & L4/E,Complete,SWA - 1,West Support Building,SUWS-1 - 18-15,DS/AD,,CONSTRUCTION,,Decking & Detail,SEAN MONK,,2024-01-24 07:00,2024-01-27 09:00,2024-01-24 07:00,2024-01-27 10:00,2025-11-20 17:00,2025-11-20 17:00,2025-06-13 08:00,2025-06-13 08:00,0,32,100
CN.SWA1.6600,IMPACT [S.TIA-9.5] - BENT PLATE CUTOUT GL14 SWA-1 L4,Complete,SWA - 1,West Support Building,SUWS-1 - 18-15,L4 - SUP Roof - FAB Roof,,CONSTRUCTION,,Decking & Detail,SEAN MONK,,2024-01-18 13:00,2024-01-22 15:00,2023-12-22 07:00,2024-04-29 17:00,2025-11-20 17:00,2025-11-20 17:00,2025-12-05 17:00,2025-12-05 17:00,0,22,100
CN.SWA1.6610,REMAINING DRYWALL & INSULATION (1 side) (INT)- SWA1- GL 18-15 - K LINE - L1,Complete,SWA - 1,West Support Building,SUWS-1 - 18-15,L1 - Fndn Slab,DS/AD INTERIORS,CONSTRUCTION,,DRYWALL,FIZ DATA CENTER,INTERIORS,2023-12-11 07:00,2023-12-16 15:00,2023-12-11 07:00,2023-12-19 09:00,2025-11-20 17:00,2025-11-20 17:00,2025-12-05 17:00,2025-12-05 17:00,0,48,100
CN.SWA1.6620,IMPACT [S.TIA-19] - ELEVATOR 3 HSS SPLICE CONNECTION - SWA-1,Complete,SWA - 1,West Support Building,ELEVATORS,L1 - Fndn Slab,ELEVATOR,PRE - CON / BUYOUT / IMPACTS,,Steel Erection,JAMES LIVELY,INTERIORS,2024-04-12 09:00,2024-04-18 15:00,2024-02-26 09:00,2024-03-15 15:00,2025-11-20 17:00,2025-11-20 17:00,2025-11-24 07:00,2025-11-24 07:00,0,46,100
CN.SWA1.6640,IMPACT - LATCON / VELTRI SOMD PENETRATION SUPPORT STEEL - SUW - L-N - L4,Complete,SWA - 1,West Support Building,SUWS-1 - 18-15,L4 - SUP Roof - FAB Roof,,CONSTRUCTION,LATCON,Decking & Detail,SEAN MONK,,2024-09-06 07:00,2024-10-18 17:00,2024-08-06 07:00,2025-06-23 10:00,2025-11-20 17:00,2025-11-20 17:00,2025-12-05 17:00,2025-12-05 17:00,0,250,100
CN.SWA1.6650,INSTALL ELEVATOR HSS STEEL DOOR OPENINGS - ELEVATOR 03 - SWB-1 - ALL LEVELS GL 19-16 [INCOMPLETE SWO],Complete,SWA - 1,West Support Building,SUWS-1 - 18-15,,ELEVATOR,CONSTRUCTION,W&W,DRYWALL,JAMES LIVELY,INTERIORS,2024-04-15 07:00,2024-04-30 17:00,2024-03-18 07:00,2024-04-24 17:00,2025-11-20 17:00,2025-11-20 17:00,2025-11-24 07:00,2025-11-24 07:00,0,120,100
CN.SWA1.6670,"PRIME, PATCH & TOPCOAT PRECAST COULUMNS - SWA1- GL 17-15 K-N - L3 (SUB CLEAN RM)",Complete,SWA - 1,,SUWS-1 - 18-15,L3 / Waffle Slab Level,SUB CLEAN RM,CONSTRUCTION,CHERRY COATING,TBD Architectural Finishes,,,2024-08-01 07:00,2024-08-12 17:00,2024-08-01 07:00,2024-08-26 17:00,2025-11-20 17:00,2025-11-20 17:00,2025-12-05 17:00,2025-12-05 17:00,0,70,100
CN.SWA1.6680,INSTALL BASE COAT CRICKET - GL 14-19 - L4 - L-N - ROOF,Complete,SWA - 1,West Support Building,SUWS-1 - 18-15,L4 - SUP Roof - FAB Roof,,CONSTRUCTION,,TOPPING,FIZ DATA CENTER,SOMD / Roofing / Waterproofing,2024-01-12 13:00,2024-01-17 11:00,2024-01-12 13:00,2024-01-13 12:00,2025-11-20 17:00,2025-11-20 17:00,2025-12-05 17:00,2025-12-05 17:00,0,8,100
CN.SWA1.6710,INSTALL CRICKET - GL 14-19 - L4 - L-N - ROOF,Complete,SWA - 1,West Support Building,SUWS-1 - 18-15,L4 - SUP Roof - FAB Roof,,CONSTRUCTION,,TOPPING,FIZ DATA CENTER,SOMD / Roofing / Waterproofing,2024-01-02 07:00,2024-01-05 17:00,2024-01-02 07:00,2024-01-05 17:00,2025-11-20 17:00,2025-11-20 17:00,2025-12-05 17:00,2025-12-05 17:00,0,40,100
CN.SWA1.6720,INSPECT CRICKET - GL 14-19 - L4 - L-N - ROOF,Complete,SWA - 1,West Support Building,SUWS-1 - 18-15,L4 - SUP Roof - FAB Roof,,CONSTRUCTION,,TOPPING,FIZ DATA CENTER,SOMD / Roofing / Waterproofing,2024-01-08 09:00,2024-01-08 17:00,2024-01-08 09:00,2024-01-08 17:00,2025-11-20 17:00,2025-11-20 17:00,2025-12-05 17:00,2025-12-05 17:00,0,8,100
CN.SWA1.6730,INSTALL PRIMER CRICKET - GL 14-19 - L4 - L-N - ROOF,Complete,SWA - 1,West Support Building,SUWS-1 - 18-15,L4 - SUP Roof - FAB Roof,,CONSTRUCTION,,TOPPING,FIZ DATA CENTER,SOMD / Roofing / Waterproofing,2024-01-09 07:00,2024-01-09 15:00,2024-01-09 07:00,2024-01-09 15:00,2025-11-20 17:00,2025-11-20 17:00,2025-12-05 17:00,2025-12-05 17:00,0,8,100
CN.SWA1.6740,INSPECT PRIMER CRICKET - GL 14-19 - L4 - L-N - ROOF,Complete,SWA - 1,West Support Building,SUWS-1 - 18-15,L4 - SUP Roof - FAB Roof,,CONSTRUCTION,,TOPPING,FIZ DATA CENTER,SOMD / Roofing / Waterproofing,2024-01-11 07:00,2024-01-11 15:00,2024-01-11 07:00,2024-01-11 15:00,2025-11-20 17:00,2025-11-20 17:00,2025-12-05 17:00,2025-12-05 17:00,0,8,100
CN.SWA1.6750,IMPACT - K-LINE STEEL SPRAY FIREPROOFING SFRM2 - SWA1 - L3-CEILING - GL 15-18,Complete,SWA - 1,West Support Building,SUWS-1 - 18-15,L4 - SUP Roof - FAB Roof,DS/AD INTERIORS,CONSTRUCTION,ROLLING PLAINS,Fireproofing,HOON WOO,,2024-04-22 07:00,2024-04-24 17:00,2024-04-22 07:00,2024-04-25 17:00,2025-11-20 17:00,2025-11-20 17:00,2025-06-13 08:00,2025-06-13 08:00,0,30,100
CN.SWA1.6760,STEEL SPRAY FIREPROOFING SFRM - SWA-1 - U1 CEILING - GL 18-19 - SUW 11-19 PIT STEEL,Complete,SWA - 1,West Support Building,SUWS-1 - 18-15,L1 - Fndn Slab,,CONSTRUCTION,ROLLING PLAINS,Fireproofing,HOON WOO,,2024-09-20 07:00,2024-09-26 17:00,2024-09-20 07:00,2024-09-26 17:00,2025-11-20 17:00,2025-11-20 17:00,2025-12-01 07:00,2025-12-01 07:00,0,40,100
CN.SWA5.6770,STEEL SPRAY FIREPROOFING SFRM - SWA-5 - U1 CEILING - GL 3 / 18-19 - SUW 11-19 PIT STEEL,Complete,SWA - 1,West Support Building,FIZ 2 / SUWS 5  (GL6-1) - GL J - N - DATA CENTER 1,L1 - Fndn Slab,,CONSTRUCTION,ROLLING PLAINS,Fireproofing,HOON WOO,,2024-09-12 07:00,2024-09-17 17:00,2024-09-12 07:00,2024-09-17 17:00,2025-11-20 17:00,2025-11-20 17:00,2025-12-05 17:00,2025-12-05 17:00,0,40,100
CN.SWA1.6770,IMPACT - INSPECT & SURFACE PREP ADDITIONAL AD STEEL FOR INTUMESCENT - SWA1 - GL 15-18 - J-K - L3 CEILING,Complete,SWA - 1,West Support Building,SUWS-1 - 18-15,L4 - SUP Roof - FAB Roof,DS/AD INTERIORS,CONSTRUCTION,ROLLING PLAINS,Fireproofing,HOON WOO,,2024-06-04 07:00,2024-06-10 17:00,2024-06-04 07:00,2024-06-13 17:00,2025-11-20 17:00,2025-11-20 17:00,2025-06-13 08:00,2025-06-13 08:00,0,40,100
CN.SWA1.6790,PH1 - IMPACT [C31] - WATERPROOFING FOR REMAINING TOPPING SLAB (17-20)(C31) - SWA-1-L1,Complete,SWA - 1,West Support Building,SUWS-1 - 18-15,L1 - Fndn Slab,,CONSTRUCTION,BRAZOS,Waterproofing - Preferred,JAMES LIVELY,SOMD / Roofing / Waterproofing,2024-06-07 07:00,2024-06-13 17:00,2024-02-29 07:00,2024-03-02 17:00,2025-11-20 17:00,2025-11-20 17:00,2025-12-05 17:00,2025-12-05 17:00,0,40,100
CN.SWA1.6800,INSTALL FRAMING FOR IMP - GL 18-15 - J LINE (AD AREA),Complete,SWA - 1,West Support Building,SUWS-1 - 18-15,DS/AD,,CONSTRUCTION,BERG,Fireproofing,HOON WOO,,2024-06-03 07:00,2024-06-03 17:00,2024-05-01 07:00,2024-05-14 17:00,2025-11-20 17:00,2025-11-20 17:00,2025-12-05 17:00,2025-12-05 17:00,0,10,100
CN.SWA1.9220,IMPACT [S.TIA-147] - NCR 372 - ALPHA PAINT ALL BOLTS - ELEVATOR 03 - ALL LEVELS,Complete,SWA - 1,West Support Building,SUWS-1 - 18-15,,ELEVATOR,CONSTRUCTION,W&W,Steel Erection,JAMES LIVELY,INTERIORS,2024-07-26 07:00,2024-08-09 17:00,2024-07-08 07:00,2024-07-24 17:00,2025-11-20 17:00,2025-11-20 17:00,2025-12-05 17:00,2025-12-05 17:00,0,100,100
CN.SWA1.9400,IMPACT - NCR 372 - REMOVE & REPLACE ACCESSIBLE BOLTS - ELEVATOR 03 - UP TO L1,Complete,SWA - 1,West Support Building,SUWS-1 - 18-15,,ELEVATOR,CONSTRUCTION,W&W,Steel Erection,JAMES LIVELY,INTERIORS,2024-07-26 07:00,2024-07-31 17:00,2024-07-10 07:00,2024-07-15 17:00,2025-11-20 17:00,2025-11-20 17:00,2025-12-05 17:00,2025-12-05 17:00,0,40,100
CN.SWA1.9410,IMPACT - NCR 372 - REPAIR INACCESSIBLE BOLTS - DENSO VOID FILLER - ELEVATOR 03 - UP TO L1,Complete,SWA - 1,West Support Building,SUWS-1 - 18-15,,ELEVATOR,CONSTRUCTION,W&W,Steel Erection,JAMES LIVELY,INTERIORS,2024-09-20 07:00,2024-09-23 17:00,2024-09-19 07:00,2024-09-23 17:00,2025-11-20 17:00,2025-11-20 17:00,2025-10-16 07:00,2025-10-16 07:00,0,20,100
CN.SWA1.9430,CURE - AD STEEL PAINT FIREPROOFING IFRM - SWA-1 - GL 18-15 - J-K - L2-CEILING,Complete,SWA - 1,West Support Building,SUWS-1 - 18-15,DS/AD,,CONSTRUCTION,ROLLING PLAINS,Fireproofing,HOON WOO,,2024-07-25 07:00,2024-08-12 17:00,2024-06-28 07:00,2024-07-15 17:00,2025-11-20 17:00,2025-11-20 17:00,2025-12-05 17:00,2025-12-05 17:00,0,180,100
CN.SWA1.9520,IMPACT - CCD 396 - INSTALL INSULATED METAL PANEL MODULES - GL 17-18 - L LINE (DS AREA) [VOC ROOM],Complete,SWA - 1,West Support Building,SUWS-1 - 18-15,EXTERIOR SKIN,,CONSTRUCTION,KOVACH,INSULATED METAL PANELS,JAMES LIVELY,,2024-11-18 07:00,2024-11-25 17:00,2024-11-18 07:00,2024-11-22 17:00,2025-11-20 17:00,2025-11-20 17:00,2025-12-05 07:00,2025-12-05 07:00,0,50,100
CN.SWA1.9530,IMPACT - LATCON / VELTRI SOMD PENETRATION SUPPORT STEEL - SUW - L-N - L3,Active,SWA - 1,West Support Building,SUWS-1 - 18-15,L3 / Waffle Slab Level,,CONSTRUCTION,LATCON,Decking & Detail,SEAN MONK,,2024-08-13 07:00,2024-09-23 17:00,2024-06-19 07:00,,2025-12-10 07:00,2025-12-10 07:00,2025-12-05 17:00,2025-12-05 17:00,0,250,0
CN.SWA1.9540,IMPACT - LATCON / VELTRI SOMD PENETRATION SUPPORT STEEL - SUW - L-N - L2,Active,SWA - 1,West Support Building,SUWS-1 - 18-15,L2 - SubFab Level,,CONSTRUCTION,LATCON,Decking & Detail,SEAN MONK,,2024-08-13 07:00,2024-09-23 17:00,2024-05-23 07:00,,2025-11-26 07:00,2025-12-02 17:00,2025-12-03 07:00,2025-12-05 17:00,30,250,0
CN.SWA1.9550,IMPACT - LATCON / VELTRI SOMD PENETRATION SUPPORT STEEL - SUW - L-N - L1,Complete,SWA - 1,West Support Building,SUWS-1 - 18-15,L1 - Fndn Slab,,CONSTRUCTION,LATCON,Decking & Detail,SEAN MONK,,2024-09-06 07:00,2024-10-18 17:00,2024-08-30 07:00,2024-09-05 07:00,2025-11-20 17:00,2025-11-20 17:00,2025-08-26 07:00,2025-08-26 07:00,0,250,100
CN.AB.AR.7000,IMPACT - CHANGE OF WALL TYPE TO SHAFT LINER PENDING RFI 6221 - SWA-1 - L1-WASTE WATER TANK RM NORTH- GL 17 K-N,Complete,SWA - 1,West Support Building,SUWS-1 - 18-15,L1 - Fndn Slab,MCC/IO,CONSTRUCTION,BERG,DRYWALL,AMBER CARO,INTERIORS,2024-07-01 08:00,2024-07-09 08:00,2024-07-01 08:00,2024-08-07 17:00,2025-11-20 17:00,2025-11-20 17:00,2025-12-01 07:00,2025-12-01 07:00,0,40,100
CN.AB.AR.7100,INSTALL GOAL POSTS - ELEVATOR HALL 3 - GL 17-19 - L-M - L3,Complete,SWA - 1,West Support Building,SUWS-1 - 18-15,L3 / Waffle Slab Level,,CONSTRUCTION,BERNCO,TBD Architectural Finishes,JAMES LEE,INTERIORS,2024-08-01 07:00,2024-08-05 17:00,2024-06-25 07:00,2024-08-10 17:00,2025-11-20 17:00,2025-11-20 17:00,2025-12-01 07:00,2025-12-01 07:00,0,30,100
CN.AB.AR.7170,INSTALL GOAL POSTS - 7C IT SECURITY - MCC/IO - SWA- L1- GL 18-15 K-N,Complete,SWA - 1,West Support Building,SUWS-1 - 18-15,L1 - Fndn Slab,MCC/IO,CONSTRUCTION,CHERRY COATING,DRYWALL,AMBER CARO,INTERIORS,2024-08-29 07:00,2024-09-05 17:00,2024-08-10 07:00,2025-08-29 17:00,2025-11-20 17:00,2025-11-20 17:00,2025-11-25 07:00,2025-11-25 07:00,0,50,100
CN.SWA1.9570,INSTALL ACCESS LADDER - ELEVATOR 03,Complete,SWA - 1,West Support Building,SUWS-1 - 18-15,,ELEVATOR,CONSTRUCTION,W&W,Steel Erection,JAMES LIVELY,INTERIORS,2024-10-01 07:00,2024-10-11 17:00,2024-10-09 07:00,2024-10-11 17:00,2025-11-20 17:00,2025-11-20 17:00,2025-12-05 17:00,2025-12-05 17:00,0,70,100
CN.SWA1.9580,IMPACT - APACHE DEMO DRYWALL & SCRAPE FIREPROOFING SFRM-1 - ELEVATOR 03 - ALL LEVELS,Complete,SWA - 1,West Support Building,SUWS-1 - 18-15,,ELEVATOR,CONSTRUCTION,W&W,Steel Erection,JAMES LIVELY,INTERIORS,2024-09-03 07:00,2024-09-13 17:00,2024-08-09 07:00,2024-08-13 17:00,2025-11-20 17:00,2025-11-20 17:00,2025-11-24 07:00,2025-11-24 07:00,0,80,100
CN.SWA1.9600,TAPE & FLOAT - INTERIOR SHAFT - ELEVATOR 03,Complete,SWA - 1,West Support Building,SUWS-1 - 18-15,,ELEVATOR,CONSTRUCTION,W&W,Steel Erection,JAMES LIVELY,INTERIORS,2025-04-25 07:00,2025-05-02 17:00,2025-04-09 07:00,2025-04-11 17:00,2025-11-20 17:00,2025-11-20 17:00,2025-11-24 07:00,2025-11-24 07:00,0,60,100
CN.SWA1.9610,DS ROOF PARAPET DRY IN - SWA1 - GL 18-15 - K-L - L6,Complete,SWA - 1,West Support Building,SUWS-1 - 18-15,DS/AD,,CONSTRUCTION,BRAZOS,Waterproofing - Preferred,JAMES LIVELY,,2024-09-13 07:00,2024-10-01 17:00,2024-08-26 07:00,2024-09-12 17:00,2025-11-20 17:00,2025-11-20 17:00,2025-11-25 07:00,2025-11-25 07:00,0,110,100
CN.SWA1.9620,IMPACT - REAPPLY FIREPROOFING SFRM-2 - ELEVATOR 03 - ALL LEVELS,Complete,SWA - 1,West Support Building,SUWS-1 - 18-15,,ELEVATOR,CONSTRUCTION,W&W,Steel Erection,JAMES LIVELY,INTERIORS,2024-09-12 07:00,2024-09-24 17:00,2024-08-14 07:00,2024-08-20 17:00,2025-11-20 17:00,2025-11-20 17:00,2025-11-24 07:00,2025-11-24 07:00,0,80,100
CN.SWA1.9630,IMPACT - COMPLETE REMAINING DRYWALL LEAVEOUTS FOR FIREPROOFING - ELEVATOR 03,Complete,SWA - 1,West Support Building,SUWS-1 - 18-15,,ELEVATOR,CONSTRUCTION,W&W,Steel Erection,JAMES LIVELY,INTERIORS,2024-09-23 07:00,2024-10-01 17:00,2024-08-21 07:00,2024-08-27 17:00,2025-11-20 17:00,2025-11-20 17:00,2025-11-24 07:00,2025-11-24 07:00,0,60,100
CN.SWA1.9640,ELEVATOR TURNEDOVER TO SECAI / AWAIT ELEVATOR CART INSTALL FROM SECAI BE4 FOR REMAINING WORK - ELEVATOR 03,Complete,SWA - 1,West Support Building,SUWS-1 - 18-15,,ELEVATOR,CONSTRUCTION,W&W,Steel Erection,JAMES LIVELY,INTERIORS,2024-09-06 07:00,2024-10-28 17:00,2024-08-28 07:00,2025-01-07 17:00,2025-11-20 17:00,2025-11-20 17:00,2025-11-24 07:00,2025-11-24 07:00,0,300,100
CN.SWA1.9650,COMPLETE MECHANICAL ROOM FRAMING / DRYWALL / TAPE & FLOAT + CEILING - ELEVATOR 03,Complete,SWA - 1,West Support Building,SUWS-1 - 18-15,,ELEVATOR,CONSTRUCTION,W&W,Steel Erection,JAMES LIVELY,INTERIORS,2024-08-02 07:00,2024-09-04 17:00,2024-08-01 07:00,2024-08-23 17:00,2025-11-20 17:00,2025-11-20 17:00,2025-11-24 07:00,2025-11-24 07:00,0,200,100
CN.SWA1.9660,COMPLETE REMAINING HSS STEEL DOOR OPENINGS - ELEVATOR 03,Complete,SWA - 1,West Support Building,SUWS-1 - 18-15,,ELEVATOR,CONSTRUCTION,W&W,DRYWALL,JAMES LIVELY,INTERIORS,2025-01-08 07:00,2025-01-31 17:00,2025-01-08 07:00,2025-01-16 17:00,2025-11-20 17:00,2025-11-20 17:00,2025-11-24 07:00,2025-11-24 07:00,0,180,100
CN.AB.AR.7460,IMPACT - CABLE TRAY & HVAC DUCT IN THE WAY - 7C IT SECURITY - MCC/IO - SWA- L1- GL 18-15 K-N - SECAI TOOK OVER ACCELER,Complete,SWA - 1,West Support Building,SUWS-1 - 18-15,L1 - Fndn Slab,MCC/IO,CONSTRUCTION,CHERRY COATING,DRYWALL,AMBER CARO,INTERIORS,2024-08-29 07:00,2024-09-05 17:00,2024-08-10 07:00,2025-06-10 17:00,2025-11-20 17:00,2025-11-20 17:00,2025-11-25 07:00,2025-11-25 07:00,0,50,100
CN.SWA1.9680,INSTALL ELEVATOR PLATFORM / SAFETY BARRICADE - ELEVATOR 03,Complete,SWA - 1,West Support Building,SUWS-1 - 18-15,,ELEVATOR,CONSTRUCTION,W&W,Steel Erection,JAMES LIVELY,INTERIORS,2025-02-19 07:00,2025-02-24 17:00,2025-02-19 07:00,2025-02-21 17:00,2025-11-20 17:00,2025-11-20 17:00,2025-11-24 07:00,2025-11-24 07:00,0,40,100
CN.SWA1.9690,"COMPLETE REMAINING FRAMING, DRYWALL, FIRE CAULKING - INTERIOR SHAFT & DOOR FRONTS - ELEVATOR 03",Complete,SWA - 1,West Support Building,SUWS-1 - 18-15,,ELEVATOR,CONSTRUCTION,W&W,Steel Erection,JAMES LIVELY,INTERIORS,2025-02-26 07:00,2025-03-21 17:00,2025-02-26 07:00,2025-03-24 17:00,2025-11-20 17:00,2025-11-20 17:00,2025-11-24 07:00,2025-11-24 07:00,0,180,100
CN.SWA1.9710,INSTALL PERMANENT DOOR & FRAME - MECHANICAL ROOM - FAB110303A - ELEVATOR 03,Complete,SWA - 1,West Support Building,SUWS-1 - 18-15,,ELEVATOR,CONSTRUCTION,W&W,Steel Erection,JAMES LIVELY,INTERIORS,2025-04-21 07:00,2025-04-28 17:00,2025-03-26 07:00,2025-04-01 13:00,2025-11-20 17:00,2025-11-20 17:00,2025-11-24 07:00,2025-11-24 07:00,0,60,100
CN.SWA1.9720,"FINAL TURNOVER - SHAFT, DOOR FRONT, MECHANICAL ROOM - ELEVATOR 03 - Complete turned over on",Complete,SWA - 1,West Support Building,SUWS-1 - 18-15,,ELEVATOR,CONSTRUCTION,W&W,Steel Erection,JAMES LIVELY,INTERIORS,2025-05-21 17:00,2025-05-21 17:00,2025-04-25 17:00,2025-04-25 17:00,2025-11-20 17:00,2025-11-20 17:00,2025-11-24 07:00,2025-11-24 07:00,0,0,100
CN.SWA1.9730,"COMPLETE FRAMING, DRYWALL, FIRE CAULKING - DOOR FRONTS - ELEVATOR 03",Complete,SWA - 1,West Support Building,SUWS-1 - 18-15,,ELEVATOR,CONSTRUCTION,W&W,Steel Erection,JAMES LIVELY,INTERIORS,2025-04-21 07:00,2025-05-09 17:00,2025-03-18 12:00,2025-03-25 17:00,2025-11-20 17:00,2025-11-20 17:00,2025-11-24 07:00,2025-11-24 07:00,0,150,100
CN.SWA1.9740,TAPE & FLOAT - DOOR FRONTS - ELEVATOR 03,Complete,SWA - 1,West Support Building,SUWS-1 - 18-15,,ELEVATOR,CONSTRUCTION,W&W,Steel Erection,JAMES LIVELY,INTERIORS,2025-05-12 07:00,2025-05-21 17:00,2025-04-16 07:00,2025-04-22 17:00,2025-11-20 17:00,2025-11-20 17:00,2025-11-24 07:00,2025-11-24 07:00,0,80,100
CN.SWA1.9750,SECAI - INSTALL ELEVATOR DOOR FRONTS - ELEVATOR 03,Complete,SWA - 1,West Support Building,SUWS-1 - 18-15,,ELEVATOR,CONSTRUCTION,W&W,DRYWALL,JAMES LIVELY,INTERIORS,2025-04-25 07:00,2025-05-01 17:00,2025-04-14 07:00,2025-04-15 17:00,2025-11-20 17:00,2025-11-20 17:00,2025-11-24 07:00,2025-11-24 07:00,0,50,100
CN.SWA1.9760,LOADING DOCK - BACK FILL & FINE GRADE - SWB1- GL 14-18 N- LINE,Complete,SWA - 1,East Support Building,SUWS-1 - 18-15,L1 - Fndn Slab,,CONSTRUCTION,BAKER,TBD Architectural Finishes,AMBER CARO,INTERIORS,2025-04-17 07:00,2025-04-21 17:00,2025-03-10 07:00,2025-03-17 17:00,2025-11-20 17:00,2025-11-20 17:00,2025-08-26 07:00,2025-08-26 07:00,0,30,100
CN.SWA1.9780,SECAI - ELEVATOR C-CHANNEL DOOR JAMBS DESIGN / QUOTE CLARIFICATION RFI 1570 - ELEVATOR 03(NOT REQUIRED),Complete,SWA - 1,West Support Building,SUWS-1 - 18-15,,ELEVATOR,CONSTRUCTION,W&W,DRYWALL,JAMES LIVELY,INTERIORS,2024-12-23 07:00,2024-12-31 17:00,2024-09-19 07:00,2024-11-01 17:00,2025-11-20 17:00,2025-11-20 17:00,2025-11-24 07:00,2025-11-24 07:00,0,50,100
CN.SWA1.9800,C-CHANNEL INSTALLATION - ELEVATOR 3,Complete,SWA - 1,West Support Building,SUWS-1 - 18-15,,ELEVATOR,CONSTRUCTION,W&W,DRYWALL,JAMES LIVELY,INTERIORS,2025-04-21 07:00,2025-05-01 17:00,2025-04-03 07:00,2025-04-07 17:00,2025-11-20 17:00,2025-11-20 17:00,2025-11-24 07:00,2025-11-24 07:00,0,90,100
CN.SWA1.9810,SECAI - ELEVATOR C-CHANNEL DOOR JAMBS DESIGN / QUOTE CLARIFICATION RFI 1570  - ELEVATOR 20(NOT REQUIRED),Complete,SWA - 1,West Support Building,SUWS-1 - 18-15,,ELEVATOR,CONSTRUCTION,W&W,DRYWALL,JAMES LIVELY,INTERIORS,2024-12-23 07:00,2024-12-31 17:00,2024-09-19 07:00,2024-11-01 17:00,2025-11-20 17:00,2025-11-20 17:00,2025-12-05 17:00,2025-12-05 17:00,0,50,100
CN.SWA1.9830,SECAI - ELEVATOR C-CHANNEL DOOR JAMBS DESIGN / QUOTE CLARIFICATION  RF1 1570- ELEVATOR 22(NOT REQUIRED),Complete,SWA - 1,West Support Building,SUWS-1 - 18-15,,ELEVATOR,CONSTRUCTION,W&W,DRYWALL,JAMES LIVELY,INTERIORS,2024-12-23 07:00,2024-12-31 17:00,2024-09-19 07:00,2024-11-01 17:00,2025-11-20 17:00,2025-11-20 17:00,2025-12-05 17:00,2025-12-05 17:00,0,50,100
CN.SWA1.9850,SECAI - C- CHANNEL  INSTALLATION - L1-L4 -  ELEVATOR 22 - 3 per front - TURNOVER TO SECAI / VELTRI,Complete,SWA - 1,West Support Building,SUWS-1 - 18-15,,ELEVATOR,CONSTRUCTION,W&W,DRYWALL,JAMES LIVELY,INTERIORS,2025-11-14 07:00,2025-11-25 17:00,2025-09-02 07:00,2025-09-02 17:00,2025-11-20 17:00,2025-11-20 17:00,2025-12-05 17:00,2025-12-05 17:00,0,80,100
CN.SWA1.9860,SECAI - ELEVATOR C-CHANNEL DOOR JAMBS DESIGN / QUOTE CLARIFICATION  - ELEVATOR 5,Complete,SWA - 1,West Support Building,SUWS-1 - 18-15,,ELEVATOR,CONSTRUCTION,W&W,DRYWALL,JAMES LIVELY,INTERIORS,2024-12-23 07:00,2024-12-31 17:00,2024-09-19 07:00,2024-10-29 17:00,2025-11-20 17:00,2025-11-20 17:00,2025-10-16 07:00,2025-10-16 07:00,0,50,100
CN.SWA1.9870,ELEVATOR C-CHANNEL DOOR FAB & INSTALL - ELEVATOR 5- no longer needed C Channel,Complete,SWA - 1,West Support Building,SUWS-1 - 18-15,,ELEVATOR,CONSTRUCTION,W&W,DRYWALL,JAMES LIVELY,INTERIORS,2024-11-21 07:00,2025-02-17 17:00,2024-10-22 12:00,2024-10-29 17:00,2025-11-20 17:00,2025-11-20 17:00,2025-10-16 07:00,2025-10-16 07:00,0,550,100
CN.SWA1.9880,C-CHANNEL INSTALLATION - ELEVATOR 5 - SECAI SCOPE,Not Started,SWA - 1,West Support Building,SUWS-1 - 18-15,,ELEVATOR,CONSTRUCTION,W&W,DRYWALL,JAMES LIVELY,INTERIORS,2026-01-22 07:00,2026-01-28 17:00,,,2026-01-22 07:00,2026-01-28 17:00,2025-11-20 07:00,2025-11-26 17:00,50,50,0
CN.SWA1.9890,SECAI - ELEVATOR C-CHANNEL DOOR JAMBS DESIGN / QUOTE CLARIFICATION RFI- 1570  - ELEVATOR 1B(NOT REQUIRED),Complete,SWA - 1,West Support Building,SUWS-1 - 18-15,,ELEVATOR,CONSTRUCTION,W&W,DRYWALL,JAMES LIVELY,INTERIORS,2024-12-23 07:00,2024-12-31 17:00,2024-09-19 07:00,2024-11-01 17:00,2025-11-20 17:00,2025-11-20 17:00,2025-12-05 17:00,2025-12-05 17:00,0,50,100
CN.SWA1.9910,C- CHANNEL INSTALLATION - ELEVATOR 18 - Gap btw pltfm & pit wall. Yates turned over to SECAI.,Complete,SWA - 1,West Support Building,SUWS-1 - 18-15,,ELEVATOR,CONSTRUCTION,W&W,DRYWALL,JAMES LIVELY,INTERIORS,2025-08-08 07:00,2025-08-08 17:00,2025-08-08 07:00,2025-08-08 17:00,2025-11-20 17:00,2025-11-20 17:00,2025-12-05 17:00,2025-12-05 17:00,0,10,100
CN.SWA1.9920,SECAI - ELEVATOR C-CHANNEL DOOR JAMBS DESIGN / QUOTE CLARIFICATION- RFI 1570  - ELEVATOR 01(NOT REQUIRED),Complete,SWA - 1,West Support Building,SUWS-1 - 18-15,,ELEVATOR,CONSTRUCTION,W&W,DRYWALL,JAMES LIVELY,INTERIORS,2024-12-23 07:00,2024-12-31 17:00,2024-09-19 07:00,2024-11-01 17:00,2025-11-20 17:00,2025-11-20 17:00,2025-12-05 17:00,2025-12-05 17:00,0,50,100
CN.SWA1.9940,C - CHANNEL INSTALL - ELEVATOR 01 SECAI TOOK OVER,Complete,SWA - 1,West Support Building,SUWS-1 - 18-15,,ELEVATOR,CONSTRUCTION,W&W,DRYWALL,JAMES LIVELY,INTERIORS,2025-09-11 07:00,2025-09-12 17:00,2025-09-11 07:00,2025-09-11 17:00,2025-11-20 17:00,2025-11-20 17:00,2025-12-05 17:00,2025-12-05 17:00,0,20,100
CN.SWA1.9950,IMPACT - NO ACCESS FOR SCISSOR LIFTS SOMD PENETRATION SUPPORT STEEL - SUW - L-N - L2,Active,SWA - 1,West Support Building,SUWS-1 - 18-15,L2 - SubFab Level,,CONSTRUCTION,LATCON,Decking & Detail,SEAN MONK,,2024-08-13 07:00,2024-09-23 17:00,2024-05-23 07:00,,2025-11-21 07:00,2025-11-21 17:00,2025-11-26 07:00,2025-11-26 17:00,10,250,0
CN.SWA1.9960,IMPACT - NO ACCESS FOR SCISSER LIFTS SOMD PENETRATION SUPPORT STEEL - SUW - L-N - L3,Active,SWA - 1,West Support Building,SUWS-1 - 18-15,L3 / Waffle Slab Level,,CONSTRUCTION,LATCON,Decking & Detail,SEAN MONK,,2024-08-13 07:00,2024-09-23 17:00,2024-06-19 07:00,,2025-11-21 07:00,2025-11-21 17:00,2025-11-19 07:00,2025-11-19 17:00,10,250,0
CN.SWA1.9970,IMPACT - NO SCAFFOLDING/ SCISSOR LIFT ACCESS & MEP LAYOUT MISSING - SUW - L-N - L4,Complete,SWA - 1,West Support Building,SUWS-1 - 18-15,L4 - SUP Roof - FAB Roof,,CONSTRUCTION,LATCON,Decking & Detail,SEAN MONK,,2024-09-06 07:00,2024-10-18 17:00,2024-08-06 07:00,2025-06-27 17:00,2025-11-20 17:00,2025-11-20 17:00,2025-12-05 17:00,2025-12-05 17:00,0,250,100
CN.SWA1.9980,IMPACT -WAITING ON PLUMBING MEP ROUGH IN - SUW - L-N - L3,Complete,SWA - 1,West Support Building,SUWS-1 - 18-15,L3 / Waffle Slab Level,BATHROOM,CONSTRUCTION,LATCON,Decking & Detail,SEAN MONK,,2024-08-13 07:00,2024-09-23 17:00,2024-06-19 07:00,2025-06-23 17:00,2025-11-20 17:00,2025-11-20 17:00,2025-11-20 07:00,2025-11-20 07:00,0,250,100
CN.SWA1.9990,IMPACT -WAITING ON PLUMBING MEP ROUGH IN - SUW AIRLOCK VESTIBULE 3 - J17 - L3 - GL 18-17,Complete,SWA - 1,West Support Building,SUWS-1 - 18-15,L3 / Waffle Slab Level,SUB CLEAN RM,CONSTRUCTION,LATCON,Decking & Detail,SEAN MONK,,2024-08-13 07:00,2024-09-23 17:00,2024-10-24 07:00,2025-05-30 17:00,2025-11-20 17:00,2025-11-20 17:00,2025-11-24 07:00,2025-11-24 07:00,0,250,100
CN.SWA1.10000,IMPACT - PATRIOT BENT PLATE FIX - STEEL FABRICATION (GALVANIZED) - GL 17-18 - L LINE (DS AREA) [VOC ROOM],Complete,SWA - 1,West Support Building,SUWS-1 - 18-15,EXTERIOR SKIN,,CONSTRUCTION,KOVACH,INSULATED METAL PANELS,JAMES LIVELY,,2025-01-13 07:00,2025-02-07 17:00,2024-11-18 07:00,2024-12-20 17:00,2025-11-20 17:00,2025-11-20 17:00,2025-12-05 07:00,2025-12-05 07:00,0,200,100
CN.SWA1.10010,IMPACT - PATRIOT BENT PLATE FIX - INSTALL STEEL TOP BENT PLATE - GL 17-18 - L LINE (DS AREA) [VOC ROOM],Complete,SWA - 1,West Support Building,SUWS-1 - 18-15,EXTERIOR SKIN,,CONSTRUCTION,KOVACH,INSULATED METAL PANELS,JAMES LIVELY,,2024-12-23 07:00,2024-12-31 17:00,2024-12-23 07:00,2024-12-31 17:00,2025-11-20 17:00,2025-11-20 17:00,2025-12-05 07:00,2025-12-05 07:00,0,50,100
CN.SWA1.10020,IMPACT - PATRIOT BENT PLATE FIX - INSTALL INSULATED METAL PANEL - GL 17-18 - L LINE (DS AREA) [VOC ROOM],Complete,SWA - 1,West Support Building,SUWS-1 - 18-15,EXTERIOR SKIN,,CONSTRUCTION,KOVACH,INSULATED METAL PANELS,JAMES LIVELY,,2025-01-24 07:00,2025-01-30 17:00,2025-01-27 07:00,2025-02-01 17:00,2025-11-20 17:00,2025-11-20 17:00,2025-12-05 07:00,2025-12-05 07:00,0,50,100
CN.SWA1.10030,IMPACT - PATRIOT BENT PLATE FIX - FINISH DRYWALL AND PARAPET - GL 17-18 - L LINE (DS AREA) [VOC ROOM],Complete,SWA - 1,West Support Building,SUWS-1 - 18-15,EXTERIOR SKIN,,CONSTRUCTION,KOVACH,INSULATED METAL PANELS,JAMES LIVELY,,2025-01-14 07:00,2025-01-20 17:00,2025-01-14 07:00,2025-01-22 17:00,2025-11-20 17:00,2025-11-20 17:00,2025-12-05 07:00,2025-12-05 07:00,0,50,100
CN.AB.AR.8370,FINISH DRYWALL & FINISHES - AIRLOCK 3 - GL 17-19 - L-M - L3,Complete,SWA - 1,West Support Building,SUWS-1 - 18-15,L3 / Waffle Slab Level,AIRLOCKS & VESTABLES,CONSTRUCTION,BERNCO,TBD Architectural Finishes,JAMES LEE,INTERIORS,2025-01-23 07:00,2025-01-27 17:00,2025-01-23 07:00,2025-02-01 17:00,2025-11-20 17:00,2025-11-20 17:00,2025-12-05 17:00,2025-12-05 17:00,0,30,100
CN.AB.AR.8380,FINISH DRYWALL & FINISHES - CLEAN VESTIBULE 4 - GL 17-19 - L-M - L3,Complete,SWA - 1,West Support Building,SUWN-2 - 21-24,L3 / Waffle Slab Level,AIRLOCKS & VESTABLES,CONSTRUCTION,BERNCO,TBD Architectural Finishes,JAMES LEE,INTERIORS,2025-02-04 07:00,2025-02-12 17:00,2025-02-04 07:00,2025-02-19 17:00,2025-11-20 17:00,2025-11-20 17:00,2025-11-14 17:00,2025-11-14 17:00,0,70,100
CN.AB.AR.8460,FINISH DRYWALL & FINISHES - VESTIBULE 3 - GL 17-19 - L-M - L3,Complete,SWA - 1,West Support Building,SUWS-1 - 18-15,L3 / Waffle Slab Level,AIRLOCKS & VESTABLES,CONSTRUCTION,BERNCO,TBD Architectural Finishes,JAMES LEE,INTERIORS,2025-02-05 07:00,2025-02-13 17:00,2025-02-05 07:00,2025-09-08 17:00,2025-11-20 17:00,2025-11-20 17:00,2025-12-05 17:00,2025-12-05 17:00,0,70,100
CN.AB.AR.8520,FINISH DRYWALL & FINISHES - CLEAN VESTIBULE 4 - K/23 - L2,Complete,SWA - 1,West Support Building,SUWN-2 - 21-24,L2 - SubFab Level,AIRLOCKS & VESTABLES,CONSTRUCTION,BERNCO,TBD Architectural Finishes,JAMES LEE,INTERIORS,2025-08-04 07:00,2025-08-05 17:00,2025-08-04 07:00,2025-08-15 17:00,2025-11-20 17:00,2025-11-20 17:00,2025-11-14 17:00,2025-11-14 17:00,0,20,100
CN.AB.AR.8530,FINISH DRYWALL & FINISHES - CLEAN VESTIBULE 19 - D/25-29 - L2,Not Started,SWA - 1,West Support Building,SUEN-3 - 25-28,L2 - SubFab Level,AIRLOCKS & VESTABLES,CONSTRUCTION,BERNCO,TBD Architectural Finishes,JAMES LEE,INTERIORS,2025-11-21 07:00,2025-11-24 17:00,,,2025-11-21 07:00,2025-11-24 17:00,2025-11-20 07:00,2025-11-21 17:00,20,20,0
CN.AB.AR.8540,FINISH DRYWALL & FINISHES - CLEAN VESTIBULE 21 - D/13 - L2,Complete,SWA - 1,West Support Building,SUEN-1 - 19-22,L2 - SubFab Level,AIRLOCKS & VESTABLES,CONSTRUCTION,BERNCO,TBD Architectural Finishes,JAMES LEE,INTERIORS,2025-07-24 07:00,2025-07-25 17:00,2025-07-24 07:00,2025-07-25 17:00,2025-11-20 17:00,2025-11-20 17:00,2025-11-21 17:00,2025-11-21 17:00,0,20,100
CN.AB.AR.8550,IMPACT - UNISTRUCT AND HANGER IN THE WAY - L1 WASTE WATER TANK RM NORTH- GL 17 K-N - SECAI TOOK OVER FOR ACCELERATION,Complete,SWA - 1,West Support Building,SUWS-1 - 18-15,L1 - Fndn Slab,MCC/IO,CONSTRUCTION,BERG,DRYWALL,AMBER CARO,INTERIORS,2024-03-11 07:00,2024-03-19 17:00,2024-03-01 07:00,2025-06-10 17:00,2025-11-20 17:00,2025-11-20 17:00,2025-12-05 17:00,2025-12-05 17:00,0,40,100
CN.AB.AR.8620,IMPACT - SECAI ADDS OPENING IMPENDING DRYWALL COMPLETION - CLEAN VESTIBULE 4 - GL 17-19 - L-M - L3,Complete,SWA - 1,West Support Building,SUWN-2 - 21-24,L3 / Waffle Slab Level,AIRLOCKS & VESTABLES,CONSTRUCTION,BERNCO,TBD Architectural Finishes,JAMES LEE,INTERIORS,2025-02-04 07:00,2025-02-12 17:00,2025-01-25 07:00,2025-02-14 17:00,2025-11-20 17:00,2025-11-20 17:00,2025-11-14 17:00,2025-11-14 17:00,0,70,100
CN.AB.AR.8660,PENDING CAT WALK INSTALLATION TO CONTINUE BACK SIDE SHEATHING - VESTIUBEL 3 - GL 17-19 - L-M - L3,Complete,SWA - 1,West Support Building,SUWS-1 - 18-15,L3 / Waffle Slab Level,AIRLOCKS & VESTABLES,CONSTRUCTION,BERNCO,TBD Architectural Finishes,JAMES LEE,INTERIORS,2025-02-05 07:00,2025-02-13 17:00,2025-02-05 07:00,2025-09-10 17:00,2025-11-20 17:00,2025-11-20 17:00,2025-12-05 17:00,2025-12-05 17:00,0,70,100
CN.SWA1.10040,SECAI - CUTTING SLAB - ELEVATOR 5 -  SECAI SCOPE,Not Started,SWA - 1,West Support Building,SUWS-1 - 18-15,,ELEVATOR,CONSTRUCTION,W&W,DRYWALL,JAMES LIVELY,INTERIORS,2025-12-15 07:00,2025-12-19 17:00,,,2025-12-15 07:00,2025-12-19 17:00,2025-10-16 07:00,2025-10-22 17:00,50,50,0
CN.SWA1.10050,IMPACT - PEDESTAL WATERPROOFING - SUW - L-N - L4,Complete,SWA - 1,West Support Building,SUWS-1 - 18-15,L4 - SUP Roof - FAB Roof,,CONSTRUCTION,LATCON,Decking & Detail,SEAN MONK,,2025-06-03 07:00,2025-07-08 17:00,2025-05-26 07:00,2025-07-07 17:00,2025-11-20 17:00,2025-11-20 17:00,2025-12-05 17:00,2025-12-05 17:00,0,250,100
CN.SWA1.10060,ALPHA PREP & PRIMER TOUCH-UP GOAL POST- L1-L4 - ELEVATOR 22,Complete,SWA - 1,West Support Building,SUWS-1 - 18-15,,ELEVATOR,CONSTRUCTION,W&W,DRYWALL,JAMES LIVELY,INTERIORS,2025-08-01 07:00,2025-09-04 17:00,2025-06-23 07:00,2025-07-10 17:00,2025-11-20 17:00,2025-11-20 17:00,2025-11-26 07:00,2025-11-26 07:00,0,240,100
CN.A1.UG.1290,PH1- UNDERGROUND PLUMBING SWA2,Complete,SWA - 2,West Support Building,SUWS-2 - 15-12,L1 - Fndn Slab,,CONSTRUCTION,,Underground Plumbing - Cobb,ANDREA SOLIS,,2022-09-27 07:00,2022-09-30 17:00,2022-09-27 07:00,2022-09-30 17:00,2025-11-20 17:00,2025-11-20 17:00,2025-06-13 08:00,2025-06-13 08:00,0,40,100
CN.A1.UG.1300,PH1- UNDERGROUND ELECTRICAL SWA2,Complete,SWA - 2,West Support Building,SUWS-2 - 15-12,L1 - Fndn Slab,,CONSTRUCTION,,Underground Electrical - (By Owner),ANDREA SOLIS,,2022-09-27 07:00,2022-09-30 17:00,2022-09-27 07:00,2022-09-30 17:00,2025-11-20 17:00,2025-11-20 17:00,2025-06-13 08:00,2025-06-13 08:00,0,40,100
CN.A2.UG.1070,PH1- UNDERSLAB WATERPROOFING SWA2,Complete,SWA - 2,West Support Building,SUWS-2 - 15-12,L1 - Fndn Slab,,CONSTRUCTION,,Waterproofing - Preferred,ANDREA SOLIS,,2022-10-10 13:00,2022-10-15 13:00,2022-10-10 13:00,2022-10-15 14:00,2025-11-20 17:00,2025-11-20 17:00,2025-06-13 08:00,2025-06-13 08:00,0,40,100
CN.A2.UG.1080,PH1- WATERPROOF WALL SWA2,Complete,SWA - 2,West Support Building,SUWS-2 - 15-12,L1 - Fndn Slab,,CONSTRUCTION,,Waterproofing - Preferred,ANDREA SOLIS,,2022-10-27 12:00,2022-10-31 12:00,2022-10-27 12:00,2022-11-01 14:00,2025-11-20 17:00,2025-11-20 17:00,2025-06-13 08:00,2025-06-13 08:00,0,40,100
CN.A2.UG.1090,PH1- FRENCH DRAIN SWA2,Complete,SWA - 2,West Support Building,SUWS-2 - 15-12,L1 - Fndn Slab,,CONSTRUCTION,,Waterproofing - Preferred,ANDREA SOLIS,,2022-10-29 09:00,2022-11-03 09:00,2022-10-29 09:00,2022-11-04 10:00,2025-11-20 17:00,2025-11-20 17:00,2025-06-13 08:00,2025-06-13 08:00,0,40,100
CN.SWA2.1010,PH1- SUP - EXCAVATE PITS - SWA2,Complete,SWA - 2,West Support Building,SUWS-2 - 15-12,L1 - Fndn Slab,,CONSTRUCTION,,Excavate CIP,ANDREA SOLIS,,2022-08-30 08:00,2022-09-01 12:00,2022-08-31 08:00,2022-09-24 17:00,2025-11-20 17:00,2025-11-20 17:00,2025-06-13 08:00,2025-06-13 08:00,0,24,100
CN.SWA2.1020,PH1-FRP GRADE BEAM - SWA2,Complete,SWA - 2,West Support Building,SUWS-2 - 15-12,L1 - Fndn Slab,,CONSTRUCTION,,Pour Concrete,ANDREA SOLIS,,2022-10-03 15:00,2022-10-06 09:00,2022-10-03 15:00,2022-10-06 09:00,2025-11-20 17:00,2025-11-20 17:00,2025-06-13 08:00,2025-06-13 08:00,0,24,100
CN.SWA2.1030,PH1-BLACK BASE (NOW RAT SLAB) - SWA2,Complete,SWA - 2,West Support Building,SUWS-2 - 15-12,L1 - Fndn Slab,,CONSTRUCTION,,RAT SLAB,ANDREA SOLIS,,2022-10-07 15:00,2022-10-09 11:00,2022-10-07 15:00,2022-10-10 13:00,2025-11-20 17:00,2025-11-20 17:00,2025-06-13 08:00,2025-06-13 08:00,0,16,100
CN.SWA2.1040,PH1-CURE PIER CAPS - SWA2,Complete,SWA - 2,West Support Building,SUWS-2 - 15-12,L1 - Fndn Slab,,CONSTRUCTION,,Concrete Cure,ANDREA SOLIS,,2022-10-06 09:00,2022-10-06 09:00,2022-10-06 09:00,2022-10-06 09:00,2025-11-20 17:00,2025-11-20 17:00,2025-06-13 08:00,2025-06-13 08:00,0,0,100
CN.SWA2.1090,PH1- FRP SLAB - SWA-2-L3,Complete,SWA - 2,West Support Building,SUWS-2 - 15-12,L3 / Waffle Slab Level,,CONSTRUCTION,,SOMD,CONCRETE,,2023-10-09 07:00,2023-10-11 11:00,2023-10-09 07:00,2023-10-12 11:00,2025-11-20 17:00,2025-11-20 17:00,2025-11-24 07:00,2025-11-24 07:00,0,24,100
CN.SWA2.1120,PH1- FRP SLAB - SWA-2-ROOF,Complete,SWA - 2,West Support Building,SUWS-1 - 18-15,L4 - SUP Roof - FAB Roof,,CONSTRUCTION,,SOMD,CONCRETE,SOMD / Roofing / Waterproofing,2023-08-29 07:00,2023-09-01 11:00,2023-08-29 07:00,2023-09-01 11:00,2025-11-20 17:00,2025-11-20 17:00,2025-11-21 07:00,2025-11-21 07:00,0,24,100
CN.SWA2.1110,PH1- CURE SOMD - SWA-2-L3,Complete,SWA - 2,West Support Building,SUWS-2 - 15-12,L3 / Waffle Slab Level,,CONSTRUCTION,,Concrete Cure,JAMES LEE,,2023-10-12 07:00,2023-10-15 17:00,2023-10-12 07:00,2023-10-16 11:00,2025-11-20 17:00,2025-11-20 17:00,2025-11-24 07:00,2025-11-24 07:00,0,40,100
CN.SWA2.1140,PH1- CURE SOMD - SWA-2-ROOF,Complete,SWA - 2,West Support Building,SUWS-2 - 15-12,L4 - SUP Roof - FAB Roof,,CONSTRUCTION,,Concrete Cure,JAMES LEE,SOMD / Roofing / Waterproofing,2023-09-02 08:00,2023-09-05 12:00,2023-09-02 08:00,2023-09-05 15:00,2025-11-20 17:00,2025-11-20 17:00,2025-11-21 07:00,2025-11-21 07:00,0,24,100
CN.SWA2.1100,PH1- 1st FLOOR SLAB - SWA-2-L1,Complete,SWA - 2,West Support Building,SUWS-2 - 15-12,L1 - Fndn Slab,,CONSTRUCTION,,Pour Concrete,ANDREA SOLIS,,2022-10-15 08:00,2022-10-22 13:00,2022-10-15 08:00,2022-10-24 16:00,2025-11-20 17:00,2025-11-20 17:00,2025-06-13 08:00,2025-06-13 08:00,0,65,100
CN.SWA2.1200,FRP TOPPING SLAB - SWA2 - GL 12-15 - L-N - L4 ROOF,Complete,SWA - 2,West Support Building,SUWS-2 - 15-12,L4 - SUP Roof - FAB Roof,,CONSTRUCTION,,TOPPING,CONCRETE,SOMD / Roofing / Waterproofing,2024-02-16 08:00,2024-02-18 12:00,2024-02-16 08:00,2024-02-17 15:00,2025-11-20 17:00,2025-11-20 17:00,2025-12-05 17:00,2025-12-05 17:00,0,24,100
CN.SWA2.1230,MEP EQPT PADS (LAYOUT & INSTALL DOWELS)- SWA-2-ROOF,Complete,SWA - 2,West Support Building,SUWS-2 - 15-12,L4 - SUP Roof - FAB Roof,,CONSTRUCTION,,Cast-in Place Concrete - Baker Concrete,JAMES LEE,SOMD / Roofing / Waterproofing,2023-09-28 07:00,2023-09-30 11:00,2023-09-25 07:00,2023-09-27 12:00,2025-11-20 17:00,2025-11-20 17:00,2025-11-25 07:00,2025-11-25 07:00,0,24,100
CN.SWA2.1000,PH1-FRP PIT WALLS - SWA2,Complete,SWA - 2,West Support Building,SUWS-2 - 15-12,L1 - Fndn Slab,,CONSTRUCTION,,Pour Concrete,ANDREA SOLIS,,2022-10-24 16:00,2022-10-30 13:00,2022-10-24 16:00,2022-10-31 15:00,2025-11-20 17:00,2025-11-20 17:00,2025-06-13 08:00,2025-06-13 08:00,0,47,100
CN.SWA2.1070,PH1-BACKFILL PIT WALLS - SWA2,Complete,SWA - 2,West Support Building,SUWS-2 - 15-12,L1 - Fndn Slab,,CONSTRUCTION,,BACKFILL,ANDREA SOLIS,,2022-10-29 09:00,2022-11-07 09:00,2022-10-29 09:00,2022-11-10 12:00,2025-11-20 17:00,2025-11-20 17:00,2025-06-13 08:00,2025-06-13 08:00,0,80,100
CN.SWA2.1050,TIER 1 ERECT PRECAST COLUMNS & BEAMS - SWA2,Complete,SWA - 2,West Support Building,SUWS-2 - 15-12,L3 / Waffle Slab Level,,CONSTRUCTION,,"SUP WEST N,M",SEAN MONK,,2023-04-27 11:00,2023-05-02 09:00,2023-04-27 11:00,2023-08-08 17:00,2025-11-20 17:00,2025-11-20 17:00,2025-06-13 08:00,2025-06-13 08:00,0,48,100
CN.SWA2.1150,PH1-ROOF LAYER PARAPET - SWA2 GL 12-15 L-N,Complete,SWA - 2,West Support Building,SUWS-2 - 15-12,L4 - SUP Roof - FAB Roof,,CONSTRUCTION,,FAB Subfab and Parapets,JAMES LIVELY,SOMD / Roofing / Waterproofing,2024-01-10 07:00,2024-01-13 11:00,2024-01-09 15:00,2024-01-12 09:00,2025-11-20 17:00,2025-11-20 17:00,2025-11-25 07:00,2025-11-25 07:00,0,24,100
CN.SWA2.1170,PH1-FLUID APPLIED MEMBRANE ROOFING - SWA2 GL 12-15 L-N,Complete,SWA - 2,West Support Building,SUWS-2 - 15-12,L4 - SUP Roof - FAB Roof,,CONSTRUCTION,,Roofing,JAMES LIVELY,SOMD / Roofing / Waterproofing,2024-01-03 07:00,2024-01-06 15:00,2024-01-02 15:00,2024-01-07 10:00,2025-11-20 17:00,2025-11-20 17:00,2025-11-25 07:00,2025-11-25 07:00,0,32,100
CN.SWA2.1180,PH1 - CLADDING STEEL INTERIOR GL 12-15 - K LINE (AD AREA),Complete,SWA - 2,West Support Building,SUWS-2 - 15-12,EXTERIOR SKIN,,CONSTRUCTION,,INSULATED METAL PANELS,JAMES LIVELY,,2024-03-01 08:00,2024-03-07 14:00,2024-03-01 07:00,2024-03-28 17:00,2025-11-20 17:00,2025-11-20 17:00,2025-11-25 07:00,2025-11-25 07:00,0,46,100
CN.SWA2.1210,PH1 - INSTALL INSULATED METAL PANEL MODULES - GL 15-12 - L LINE (DS AREA),Complete,SWA - 2,West Support Building,SUWS-2 - 15-12,EXTERIOR SKIN,,CONSTRUCTION,KOVACH,INSULATED METAL PANELS,JAMES LIVELY,,2024-07-12 07:00,2024-07-21 17:00,2024-07-01 07:00,2024-07-12 17:00,2025-11-20 17:00,2025-11-20 17:00,2025-11-25 07:00,2025-11-25 07:00,0,90,100
CN.SWA2.1160,PH1 - CLADDING STEEL  - SWA-2  N LINE [SUP EXTERIOR WALL],Complete,SWA - 2,West Support Building,SUWS-2 - 15-12,EXTERIOR SKIN,,CONSTRUCTION,,INSULATED METAL PANELS,JAMES LIVELY,,2023-10-09 09:00,2023-10-14 15:00,2023-10-09 09:00,2023-10-14 16:00,2025-11-20 17:00,2025-11-20 17:00,2025-06-13 08:00,2025-06-13 08:00,0,56,100
CN.SWA2.1190,PH1 - INSTALL INSULATED METAL PANEL MODULES - SWA-2 N LINE [SUP EXTERIOR WALL] GL 12-15 N,Complete,SWA - 2,West Support Building,SUWS-2 - 15-12,EXTERIOR SKIN,,CONSTRUCTION,,INSULATED METAL PANELS,JAMES LIVELY,,2024-01-11 09:00,2024-01-21 09:00,2024-01-10 07:00,2024-01-20 11:00,2025-11-20 17:00,2025-11-20 17:00,2025-12-04 17:00,2025-12-04 17:00,0,72,100
CN.SWA2.1130,PH1- AD STEEL FRAME INSTALL - SWA-2 fab side,Complete,SWA - 2,West Support Building,SUWS-2 - 15-12,DS/AD,,CONSTRUCTION,,Steel Erection,SEAN MONK,,2023-10-24 07:00,2023-10-28 09:00,2023-10-23 07:00,2023-10-28 10:00,2025-11-20 17:00,2025-11-20 17:00,2025-06-13 08:00,2025-06-13 08:00,0,32,100
CN.AB.AR.2840,METAL STUD FRAMING (2hr) - SWA-2-L1-WASTE WATER TANK RM SOUTH- GL 12-15 L-N,Complete,SWA - 2,West Support Building,SUWS-2 - 15-12,L1 - Fndn Slab,WASTE WATER TANK RM,CONSTRUCTION,BERG,TBD Architectural Finishes,AMBER CARO,INTERIORS,2024-01-29 07:00,2024-02-01 17:00,2024-01-21 07:00,2024-01-25 17:00,2025-11-20 17:00,2025-11-20 17:00,2025-12-04 17:00,2025-12-04 17:00,0,40,100
CN.AB.AR.2850,"IMPACT MEP ROUGH IN, INSPECTION, PIPE RACK & DCC STEEL (by SECAI) - SWA-2-L1-WASTE WATER TANK RM SOUTH- GL 12-15 L-N",Complete,SWA - 2,West Support Building,SUWS-2 - 15-12,L1 - Fndn Slab,WASTE WATER TANK RM,CONSTRUCTION,,Owner & Design Team,AMBER CARO,,2024-02-19 07:00,2024-02-23 17:00,2024-02-19 07:00,2024-02-23 17:00,2025-11-20 17:00,2025-11-20 17:00,2025-12-04 17:00,2025-12-04 17:00,0,40,100
CN.AB.AR.2860,TAPE & FINISH DRYWALL - WASTE WATER TANK RM SOUTH - SWA2 - GL 12-15 - L-N - L1,Complete,SWA - 2,West Support Building,SUWS-2 - 15-12,L1 - Fndn Slab,WASTE WATER TANK RM,CONSTRUCTION,CHERRY COATING,DRYWALL,AMBER CARO,INTERIORS,2024-06-25 07:00,2024-07-02 17:00,2024-03-25 07:00,2024-04-01 00:00,2025-11-20 17:00,2025-11-20 17:00,2025-12-04 17:00,2025-12-04 17:00,0,50,100
CN.AB.AR.2910,FLOORING - WASTE WATER TANK RM SOUTH - SWA2 - GL 12-15 - L-N - L1,Not Started,SWA - 2,West Support Building,SUWS-2 - 15-12,L1 - Fndn Slab,WASTE WATER TANK RM,CONSTRUCTION,,TBD Architectural Finishes,JAMES LEE,INTERIORS,2025-11-21 07:00,2025-11-21 17:00,,,2025-11-21 07:00,2025-11-21 17:00,2025-12-05 07:00,2025-12-05 17:00,10,10,0
CN.AB.AR.2880,INTERIOR GLAZING - SWA2 - GL 12-15 - L-N - L1,Not Started,SWA - 2,West Support Building,SUWS-2 - 15-12,L1 - Fndn Slab,WASTE WATER TANK RM,CONSTRUCTION,,TBD Architectural Finishes,AMBER CARO,INTERIORS,2025-11-21 07:00,2025-11-21 17:00,,,2025-11-21 07:00,2025-11-21 17:00,2025-12-05 07:00,2025-12-05 17:00,10,10,0
CN.AB.AR.2900,FINISH PAINT - WASTE WATER TANK RM SOUTH - SWA2 - GL 12-15 - L-N - L1,Not Started,SWA - 2,West Support Building,SUWS-2 - 15-12,L1 - Fndn Slab,WASTE WATER TANK RM,CONSTRUCTION,FINISH PAINT,TBD Architectural Finishes,JAMES LEE,INTERIORS,2025-11-21 07:00,2025-11-21 07:00,,,2025-11-21 07:00,2025-11-21 07:00,2025-12-04 17:00,2025-12-04 17:00,0,0,0
CN.SWA1.1351,DS STEEL SPRAY FIREPROOFING SFRM - SWA-1 - L4&L5 CEILING GL 12-15/J-L,Complete,SWA - 2,West Support Building,SUWS-2 - 15-12,L4 - SUP Roof - FAB Roof,DS/AD INTERIORS,CONSTRUCTION,ROLLING PLAINS,Fireproofing,HOON WOO,,2024-09-09 07:00,2024-09-20 17:00,2024-09-09 07:00,2024-09-18 17:00,2025-11-20 17:00,2025-11-20 17:00,2025-12-05 17:00,2025-12-05 17:00,0,80,100
CN.SWA2.1250,PH1- CURE SOMD - SWA-2-L2,Complete,SWA - 2,West Support Building,SUWS-2 - 15-12,L2 - SubFab Level,,CONSTRUCTION,,Pour Concrete,JAMES LEE,,2023-10-21 13:00,2023-10-24 17:00,2023-10-21 13:00,2023-10-25 10:30,2025-11-20 17:00,2025-11-20 17:00,2025-12-05 17:00,2025-12-05 17:00,0,24,100
CN.SWA2.1270,PH1- FRP SLAB - SWA-2-L2,Complete,SWA - 2,West Support Building,SUWS-2 - 15-12,L2 - SubFab Level,,CONSTRUCTION,,SOMD,CONCRETE,,2023-10-17 13:00,2023-10-19 17:00,2023-10-17 13:00,2023-10-20 17:00,2025-11-20 17:00,2025-11-20 17:00,2025-11-24 07:00,2025-11-24 07:00,0,24,100
CN.SWA2.1280,PH1- DECKING GL 15 - 14 - SWA-2-ROOF,Complete,SWA - 2,West Support Building,SUWS-2 - 15-12,L4 - SUP Roof - FAB Roof,,CONSTRUCTION,,Decking & Detail,SEAN MONK,SOMD / Roofing / Waterproofing,2023-08-21 07:00,2023-08-22 13:00,2023-08-17 11:00,2023-08-19 13:00,2025-11-20 17:00,2025-11-20 17:00,2025-06-13 08:00,2025-06-13 08:00,0,16,100
CN.SWA2.1290,PH1- DECKING GL 15 - 14 - SWA-2-L3,Complete,SWA - 2,West Support Building,SUWS-2 - 15-12,L3 / Waffle Slab Level,,CONSTRUCTION,,Decking & Detail,SEAN MONK,,2023-08-21 07:00,2023-08-22 13:00,2023-08-08 13:30,2023-08-10 17:00,2025-11-20 17:00,2025-11-20 17:00,2025-11-21 07:00,2025-11-21 07:00,0,16,100
CN.SWA2.1300,PH1- DECKING GL 15 - 14 - SWA-2-L2,Complete,SWA - 2,West Support Building,SUWS-2 - 15-12,L2 - SubFab Level,,CONSTRUCTION,,Decking & Detail,SEAN MONK,,2023-08-22 13:00,2023-08-25 09:00,2023-08-13 08:00,2023-08-15 09:00,2025-11-20 17:00,2025-11-20 17:00,2025-11-24 07:00,2025-11-24 07:00,0,16,100
CN.SEA1.2270,PH1- MEP EQPT PADS (REBAR)- SWA-2 ROOF,Complete,SWA - 2,West Support Building,SUWS-2 - 15-12,L4 - SUP Roof - FAB Roof,,CONSTRUCTION,,OAC/ MECH PADS,CONCRETE,SOMD / Roofing / Waterproofing,2023-09-28 07:00,2023-09-29 13:00,2023-10-01 07:00,2023-10-02 13:00,2025-11-20 17:00,2025-11-20 17:00,2025-11-25 07:00,2025-11-25 07:00,0,16,100
CN.SEA1.2280,PH1- MEP EQPT PADS (PLACE CONCRETE - BLOCK)- SWA-2-ROOF,Complete,SWA - 2,West Support Building,SUWS-2 - 15-12,L4 - SUP Roof - FAB Roof,,CONSTRUCTION,,OAC/ MECH PADS,CONCRETE,SOMD / Roofing / Waterproofing,2023-10-03 08:00,2023-10-03 16:00,2023-10-05 08:00,2023-10-05 16:00,2025-11-20 17:00,2025-11-20 17:00,2025-11-25 07:00,2025-11-25 07:00,0,8,100
CN.SEA1.2290,PH1- MEP EQPT PADS (STRIP / PATCH - BLOCK)- SWA-2-ROOF,Complete,SWA - 2,West Support Building,SUWS-2 - 15-12,L4 - SUP Roof - FAB Roof,,CONSTRUCTION,,OAC/ MECH PADS,CONCRETE,SOMD / Roofing / Waterproofing,2023-10-08 08:00,2023-10-08 16:00,2023-10-08 08:00,2023-10-08 16:00,2025-11-20 17:00,2025-11-20 17:00,2025-11-25 07:00,2025-11-25 07:00,0,8,100
CN.SEA3.1350,PH1-CIP WALL (DS)- SWA-2,Complete,SWA - 2,West Support Building,SUWS-2 - 15-12,L4 - SUP Roof - FAB Roof,,CONSTRUCTION,,CIP WALL,CONCRETE,SOMD / Roofing / Waterproofing,2023-09-28 07:00,2023-09-30 11:00,2023-09-28 07:00,2023-09-30 12:00,2025-11-20 17:00,2025-11-20 17:00,2025-11-21 07:00,2025-11-21 07:00,0,24,100
CN.SEA1.2300,PH1- MEP EQPT PADS (INSTALL DRAIN MATS)- SWA-2-ROOF,Complete,SWA - 2,West Support Building,SUWS-2 - 15-12,L4 - SUP Roof - FAB Roof,,CONSTRUCTION,,Waterproofing - Preferred,JAMES LIVELY,SOMD / Roofing / Waterproofing,2023-09-28 09:00,2023-09-29 15:00,2023-10-03 09:00,2023-10-04 15:00,2025-11-20 17:00,2025-11-20 17:00,2025-11-25 07:00,2025-11-25 07:00,0,16,100
CN.SWA2.1310,PH1- WATERPROOFING - SWA-2-L3,Complete,SWA - 2,West Support Building,SUWS-2 - 15-12,L3 / Waffle Slab Level,,CONSTRUCTION,,Waterproofing - Preferred,JAMES LIVELY,SOMD / Roofing / Waterproofing,2023-12-18 07:00,2023-12-22 15:00,2023-12-18 07:00,2023-12-22 15:00,2025-11-20 17:00,2025-11-20 17:00,2025-11-24 07:00,2025-11-24 07:00,0,48,100
CN.SWA2.1320,PH1- WATERPROOFING - SWA2 - GL 12-15 - L-N - L2,Complete,SWA - 2,West Support Building,SUWS-2 - 15-12,L2 - SubFab Level,,CONSTRUCTION,BRAZOS,TOPPING,JAMES LIVELY,SOMD / Roofing / Waterproofing,2023-12-26 07:00,2024-01-04 17:00,2023-12-26 07:00,2024-01-04 17:00,2025-11-20 17:00,2025-11-20 17:00,2025-12-05 17:00,2025-12-05 17:00,0,60,100
CN.SWA2.1330,PH1- INSTALL ANCHOR BOLTS - SWA-2-L1,Complete,SWA - 2,West Support Building,SUWS-2 - 15-12,L1 - Fndn Slab,,CONSTRUCTION,,Waterproofing - Preferred,JAMES LIVELY,SOMD / Roofing / Waterproofing,2023-09-12 07:00,2023-09-14 13:00,2023-09-12 07:00,2023-09-14 13:00,2025-11-20 17:00,2025-11-20 17:00,2025-06-13 08:00,2025-06-13 08:00,0,16,100
CN.SWA2.1360,PH1- TOPPING SLAB w TRENCH & ANGLE EMBEDS- SWA-2-L1(BOTTOM OF PIT),Complete,SWA - 2,West Support Building,SUWS-2 - 15-12,L1 - Fndn Slab,,CONSTRUCTION,,TOPPING,CONCRETE,SOMD / Roofing / Waterproofing,2024-01-26 07:00,2024-01-28 11:00,2024-01-08 07:00,2024-01-10 07:00,2025-11-20 17:00,2025-11-20 17:00,2025-12-04 17:00,2025-12-04 17:00,0,24,100
CN.SWA2.1370,PH1- DS/AD DECKING & DETAILING  DS/AD SWA-2 L6GL 12-15 J-K,Complete,SWA - 2,West Support Building,SUWS-2 - 15-12,DS/AD,,CONSTRUCTION,,Decking & Detail,SEAN MONK,,2023-12-11 07:00,2023-12-15 17:00,2023-12-09 07:00,2023-12-12 17:00,2025-11-20 17:00,2025-11-20 17:00,2025-06-13 08:00,2025-06-13 08:00,0,40,100
CN.SWA2.1380,PH1- DS/AD FRP SLAB - DS/AD SWA-2 -L4/E GL 12-15 J-K,Complete,SWA - 2,West Support Building,SUWS-2 - 15-12,DS/AD,,CONSTRUCTION,,SOMD,CONCRETE,,2024-01-25 07:00,2024-01-27 11:00,2024-01-25 07:00,2024-01-27 12:00,2025-11-20 17:00,2025-11-20 17:00,2025-06-13 08:00,2025-06-13 08:00,0,24,100
CN.SWA2.1390,AD WATERPROOFING - SWA2 - GL 12-15 - J-K - L4/E,Complete,SWA - 2,West Support Building,SUWS-2 - 15-12,DS/AD,,CONSTRUCTION,BRAZOS,Waterproofing - Preferred,JAMES LIVELY,,2024-07-22 07:00,2024-08-05 17:00,2024-07-13 07:00,2024-07-18 17:00,2025-11-20 17:00,2025-11-20 17:00,2025-11-25 07:00,2025-11-25 07:00,0,110,100
CN.SWA2.1400,AD TOPPING SLAB - SWA2 - GL 12-15 - J-K - L4/E,Complete,SWA - 2,West Support Building,SUWS-2 - 15-12,DS/AD,,CONSTRUCTION,BAKER,SOMD,CONCRETE,,2024-08-01 07:00,2024-08-06 17:00,2024-07-19 07:00,2024-07-23 17:00,2025-11-20 17:00,2025-11-20 17:00,2025-12-05 17:00,2025-12-05 17:00,0,40,100
TIER 22.1053,TIER 2 GROUT PRECAST COLUMNS & BEAMS - SWA2,Complete,SWA - 2,West Support Building,SUWS-2 - 15-12,L4 - SUP Roof - FAB Roof,,CONSTRUCTION,,"SUP WEST N,M",SEAN MONK,,2023-08-21 07:00,2023-08-24 11:00,2023-08-09 07:00,2023-08-12 07:00,2025-11-20 17:00,2025-11-20 17:00,2025-06-13 08:00,2025-06-13 08:00,0,24,100
CN.SWA2.1410,PH1- DECKING GL 14 - 13 - SWA-2-L2,Complete,SWA - 2,West Support Building,SUWS-2 - 15-12,L2 - SubFab Level,,CONSTRUCTION,,Decking & Detail,SEAN MONK,,2023-08-25 09:00,2023-08-26 15:00,2023-08-16 09:00,2023-08-18 16:00,2025-11-20 17:00,2025-11-20 17:00,2025-12-05 17:00,2025-12-05 17:00,0,16,100
CN.SWA2.1420,IMPACT - DECKING LEAVE OUT FOR PIT - SWA2 - GL 13-12 - L2,Complete,SWA - 2,West Support Building,SUWS-2 - 15-12,L2 - SubFab Level,,CONSTRUCTION,W&W,Decking & Detail,SEAN MONK,,2024-01-22 07:00,2024-01-23 13:00,2024-01-02 07:00,2024-01-08 17:00,2025-11-20 17:00,2025-11-20 17:00,2025-12-05 17:00,2025-12-05 17:00,0,16,100
CN.SWA2.1430,PH1- DECKING GL 14 - 13 - SWA-2-L3,Complete,SWA - 2,West Support Building,SUWS-2 - 15-12,L3 / Waffle Slab Level,,CONSTRUCTION,,Decking & Detail,SEAN MONK,,2023-08-22 13:00,2023-08-25 09:00,2023-08-11 07:00,2023-08-12 16:00,2025-11-20 17:00,2025-11-20 17:00,2025-11-21 07:00,2025-11-21 07:00,0,16,100
CN.SWA2.1440,PH1- DECKING GL 13 - 12 - SWA-2-L3 - LEAVE OUT FOR PIT ACCESS,Complete,SWA - 2,West Support Building,SUWS-2 - 15-12,L3 / Waffle Slab Level,,CONSTRUCTION,,Decking & Detail,SEAN MONK,,2023-08-28 07:00,2023-08-29 13:00,2023-08-28 07:00,2023-08-29 13:00,2025-11-20 17:00,2025-11-20 17:00,2025-11-21 07:00,2025-11-21 07:00,0,16,100
CN.SWA2.1450,PH1- DECKING GL 14 - 13 - SWA-2-ROOF,Complete,SWA - 2,West Support Building,SUWS-2 - 15-12,L4 - SUP Roof - FAB Roof,,CONSTRUCTION,,Decking & Detail,SEAN MONK,SOMD / Roofing / Waterproofing,2023-08-24 07:00,2023-08-25 13:00,2023-08-24 07:00,2023-08-25 13:00,2025-11-20 17:00,2025-11-20 17:00,2025-06-13 08:00,2025-06-13 08:00,0,16,100
CN.SWA2.1460,PH1- DECKING GL 13 - 12 - SWA-2-ROOF,Complete,SWA - 2,West Support Building,SUWS-2 - 15-12,L4 - SUP Roof - FAB Roof,,CONSTRUCTION,,Decking & Detail,SEAN MONK,SOMD / Roofing / Waterproofing,2023-08-28 07:00,2023-08-29 13:00,2023-08-28 07:00,2023-08-29 13:00,2025-11-20 17:00,2025-11-20 17:00,2025-11-21 07:00,2025-11-21 07:00,0,16,100
CN.SWA2.1470,PH1- DS/AD DECKING & DETAILING  GL 15 - 12  DS/AD SWA-2 L4 & L4/E GL 12-15 J-K,Complete,SWA - 2,West Support Building,SUWS-2 - 15-12,DS/AD,,CONSTRUCTION,,Decking & Detail,SEAN MONK,,2024-01-18 13:00,2024-01-23 11:00,2024-01-18 13:00,2024-01-23 13:00,2025-11-20 17:00,2025-11-20 17:00,2025-06-13 08:00,2025-06-13 08:00,0,48,100
CN.AB.AR.4460,DRYWALL 2 SIDE - WASTE WATER TANK RM SOUTH - SWA2 - GL 12-15 - L-N - L1,Complete,SWA - 2,West Support Building,SUWS-2 - 15-12,L1 - Fndn Slab,WASTE WATER TANK RM,CONSTRUCTION,BERG,DRYWALL,AMBER CARO,INTERIORS,2024-03-25 07:00,2024-03-29 17:00,2024-03-23 16:05,2024-03-29 16:05,2025-11-20 17:00,2025-11-20 17:00,2025-12-04 17:00,2025-12-04 17:00,0,50,100
CN.AB.AR.4470,DRYWALL & INSULATION (1 side) (INT) - SWA-2-L1-WASTE WATER TANK RM SOUTH- GL 12-15 L-N,Complete,SWA - 2,West Support Building,SUWS-2 - 15-12,L1 - Fndn Slab,WASTE WATER TANK RM,CONSTRUCTION,,DRYWALL,AMBER CARO,INTERIORS,2024-02-01 09:00,2024-02-05 09:00,2024-02-01 09:00,2024-02-05 13:00,2025-11-20 17:00,2025-11-20 17:00,2025-12-04 17:00,2025-12-04 17:00,0,40,100
CN.SWA2.1490,PH1- DS STEEL FRAME INSTALL - SWA-2 Comeback Sup Side (10-14),Complete,SWA - 2,West Support Building,SUWS-2 - 15-12,DS/AD,,CONSTRUCTION,,Steel Erection,SEAN MONK,,2023-10-30 07:00,2023-11-04 09:00,2023-10-30 07:00,2023-11-04 10:00,2025-11-20 17:00,2025-11-20 17:00,2025-06-13 08:00,2025-06-13 08:00,0,32,100
CN.SWA2.1500,PH1- EXTERIOR CURBS - SWA-2-L1,Complete,SWA - 2,West Support Building,SUWS-2 - 15-12,L1 - Fndn Slab,,CONSTRUCTION,,Pour Concrete,JAMES LEE,SOMD / Roofing / Waterproofing,2023-09-18 13:00,2023-09-21 09:00,2023-09-18 13:00,2023-09-21 09:00,2025-11-20 17:00,2025-11-20 17:00,2025-06-13 08:00,2025-06-13 08:00,0,16,100
CN.SWA2.1510,PH1- MEP PADS - SWA-2-L1-WASTE WATER TANK RM SOUTH GL 12-15 L-J,Complete,SWA - 2,West Support Building,SUWS-2 - 15-12,L1 - Fndn Slab,WASTE WATER TANK RM,CONSTRUCTION,,Pour Concrete,JAMES LEE,SOMD / Roofing / Waterproofing,2024-01-29 07:00,2024-01-30 13:00,2024-01-24 07:00,2024-01-26 13:00,2025-11-20 17:00,2025-11-20 17:00,2025-12-04 17:00,2025-12-04 17:00,0,16,100
CN.AB.AR.5350,METAL STUD FRAMING (2hr) - SWA-2-L2- ELECTRICAL ROOM GL 12-15 L-N,Complete,SWA - 2,West Support Building,SUWS-2 - 15-12,L2 - SubFab Level,ELECTRIC RM 1,CONSTRUCTION,BERG,TBD Architectural Finishes,AMBER CARO,INTERIORS,2023-12-01 07:00,2023-12-04 17:00,2023-12-01 07:00,2023-12-06 13:00,2025-11-20 17:00,2025-11-20 17:00,2025-11-24 07:00,2025-11-24 07:00,0,40,100
CN.AB.AR.5360,"IMPACT - MEP ROUGH IN, INSPECTION, PIPE RACK & DCC STEEL (by SECAI) - SWA-2-L2- ELECTRICAL ROOM GL 12-15 L-N",Complete,SWA - 2,West Support Building,SUWS-2 - 15-12,L2 - SubFab Level,ELECTRIC RM 1,CONSTRUCTION,,Owner & Design Team,AMBER CARO,,2024-01-08 09:00,2024-01-14 09:00,2024-01-10 07:00,2024-01-19 17:00,2025-11-20 17:00,2025-11-20 17:00,2025-11-24 07:00,2025-11-24 07:00,0,40,100
CN.AB.AR.5390,TAPE & FINISH DRYWALL - SWA--L2- ELECTRICAL ROOM GL 12-15 L-N,Complete,SWA - 2,West Support Building,SUWS-2 - 15-12,L2 - SubFab Level,ELECTRIC RM 1,CONSTRUCTION,,DRYWALL,AMBER CARO,INTERIORS,2024-01-30 13:00,2024-02-03 13:00,2024-01-27 13:00,2024-02-02 16:00,2025-11-20 17:00,2025-11-20 17:00,2025-11-24 07:00,2025-11-24 07:00,0,40,100
CN.AB.AR.5430,INTERIOR GLAZING - ELECTRICAL ROOM - SWA2 - GL 12-15 - L-N - L2,Not Started,SWA - 2,West Support Building,SUWS-2 - 15-12,L2 - SubFab Level,ELECTRIC RM 1,CONSTRUCTION,,TBD Architectural Finishes,AMBER CARO,INTERIORS,2025-11-21 07:00,2025-11-21 17:00,,,2025-11-21 07:00,2025-11-21 17:00,2025-12-05 07:00,2025-12-05 17:00,10,10,0
CN.AB.AR.5410,FINISH PAINT - ELECTRICAL ROOM - SWA2 - GL 12-15 - L-N - L2,Not Started,SWA - 2,West Support Building,SUWS-2 - 15-12,L2 - SubFab Level,ELECTRIC RM 1,CONSTRUCTION,FINISH PAINT,TBD Architectural Finishes,JAMES LEE,INTERIORS,2025-11-21 07:00,2025-11-21 07:00,,,2025-11-21 07:00,2025-11-21 07:00,2025-12-05 17:00,2025-12-05 17:00,0,0,0
CN.AB.AR.5380,DRYWALL 2 SIDE - SWA-2-L2- ELECTRICAL ROOM GL 12-15 L-N,Complete,SWA - 2,West Support Building,SUWS-2 - 15-12,L2 - SubFab Level,ELECTRIC RM 1,CONSTRUCTION,,DRYWALL,AMBER CARO,INTERIORS,2024-01-30 13:00,2024-02-03 13:00,2024-01-23 13:00,2024-01-27 16:00,2025-11-20 17:00,2025-11-20 17:00,2025-11-24 07:00,2025-11-24 07:00,0,40,100
CN.AB.AR.5370,DRYWALL & INSULATION (1 side) (INT) - SWA-2-L2- ELECTRICAL ROOM GL 12-15 L-N,Complete,SWA - 2,West Support Building,SUWS-2 - 15-12,L2 - SubFab Level,ELECTRIC RM 1,CONSTRUCTION,,DRYWALL,AMBER CARO,INTERIORS,2023-12-18 10:00,2023-12-19 16:00,2023-12-18 10:00,2024-01-08 17:00,2025-11-20 17:00,2025-11-20 17:00,2025-11-24 07:00,2025-11-24 07:00,0,16,100
CN.AB.AR.5460,METAL STUD FRAMING (2hr) - SWA-2-L2 - SUB CLEAN ROOM CENTRAL,Complete,SWA - 2,West Support Building,SUWS-2 - 15-12,L3 / Waffle Slab Level,SUB CLEAN RM,CONSTRUCTION,BERG,TBD Architectural Finishes,AMBER CARO,INTERIORS,2024-03-26 11:00,2024-04-01 11:00,2024-03-08 00:00,2024-03-13 00:00,2025-11-20 17:00,2025-11-20 17:00,2025-11-24 07:00,2025-11-24 07:00,0,40,100
CN.AB.AR.5470,MEP ROUGH IN & INSPECTION (by SECAI) - SUB CLEAN ROOM - SWA2 - GL 15-12 - L3,Complete,SWA - 2,West Support Building,SUWS-2 - 15-12,L3 / Waffle Slab Level,SUB CLEAN RM,CONSTRUCTION,SECAI,TBD Architectural Finishes,AMBER CARO,,2024-05-02 07:00,2024-05-09 17:00,2024-05-02 07:00,2024-05-07 17:00,2025-11-20 17:00,2025-11-20 17:00,2025-11-24 07:00,2025-11-24 07:00,0,50,100
CN.AB.AR.5500,TAPE & FINISH DRYWALL - SUB CLEAN ROOM - SWA2 - GL 15-12 - L3,Complete,SWA - 2,West Support Building,SUWS-2 - 15-12,L3 / Waffle Slab Level,SUB CLEAN RM,CONSTRUCTION,CHERRY COATING,DRYWALL,AMBER CARO,INTERIORS,2024-06-03 07:00,2024-06-10 17:00,2024-06-03 07:00,2024-06-08 17:00,2025-11-20 17:00,2025-11-20 17:00,2025-12-04 17:00,2025-12-04 17:00,0,50,100
CN.AB.AR.5540,INTERIOR GLAZING - SUB CLEAN ROOM - SWA2 - GL 15-12 - L3,Not Started,SWA - 2,West Support Building,SUWS-2 - 15-12,L3 / Waffle Slab Level,SUB CLEAN RM,CONSTRUCTION,,TBD Architectural Finishes,AMBER CARO,INTERIORS,2025-11-21 07:00,2025-11-21 17:00,,,2025-11-21 07:00,2025-11-21 17:00,2025-12-05 07:00,2025-12-05 17:00,10,10,0
CN.AB.AR.5520,FINISH PAINT - SUB CLEAN ROOM - SWA2 - GL 15-12 - L3,Not Started,SWA - 2,West Support Building,SUWS-2 - 15-12,L3 / Waffle Slab Level,SUB CLEAN RM,CONSTRUCTION,FINISH PAINT,TBD Architectural Finishes,JAMES LEE,INTERIORS,2025-11-21 07:00,2025-11-21 07:00,,,2025-11-21 07:00,2025-11-21 07:00,2025-12-04 17:00,2025-12-04 17:00,0,0,0
CN.AB.AR.5490,DRYWALL 2 SIDE - SUB CLEAN ROOM - SWA2 - GL 15-12 - L3,Complete,SWA - 2,West Support Building,SUWS-2 - 15-12,L3 / Waffle Slab Level,SUB CLEAN RM,CONSTRUCTION,BERG,DRYWALL,AMBER CARO,INTERIORS,2024-05-23 07:00,2024-05-31 17:00,2024-05-23 07:00,2024-05-28 17:00,2025-11-20 17:00,2025-11-20 17:00,2025-11-24 07:00,2025-11-24 07:00,0,50,100
CN.AB.AR.5480,DRYWALL & INSULATION (1 side) (INT) - SWA-2-L2 - SUB CLEAN ROOM CENTRAL,Complete,SWA - 2,West Support Building,SUWS-2 - 15-12,L3 / Waffle Slab Level,SUB CLEAN RM,CONSTRUCTION,,DRYWALL,AMBER CARO,INTERIORS,2024-04-05 15:00,2024-04-15 15:00,2024-03-13 00:00,2024-03-20 00:00,2025-11-20 17:00,2025-11-20 17:00,2025-11-24 07:00,2025-11-24 07:00,0,40,100
SUWPIT12-20,SOUTH PIT STEEL INSTALL - SWB-1 - L1 - GL 12-20,Complete,SWA - 2,West Support Building,SUWS-2 - 15-12,L1 - Fndn Slab,WASTE WATER TANK RM,CONSTRUCTION,,Decking & Detail,SEAN MONK,,2023-10-17 13:00,2023-10-29 13:00,2023-10-02 13:00,2023-11-17 11:00,2025-11-20 17:00,2025-11-20 17:00,2025-12-04 17:00,2025-12-04 17:00,0,100,100
CN.SWA2.1520,IMPACT - DRB-01 ADDITIONAL BEAMS BETWEEN FAB AND AD GL 12-15 J-K,Complete,SWA - 2,,SUWS-2 - 15-12,DS/AD,,CONSTRUCTION,,Steel Erection,,,2023-11-27 07:00,2023-12-01 09:00,2023-11-20 07:00,2023-12-22 17:00,2025-11-20 17:00,2025-11-20 17:00,2025-06-13 08:00,2025-06-13 08:00,0,32,100
SEC.AR.4500,SECAI - MEP PIPE RACK INSTALL AREA B DS SIDE - SWA-2 - L4 GL 12-15 L-N,Complete,SWA - 2,East Support Building,SUWS-2 - 15-12,L4 - SUP Roof - FAB Roof,,CONSTRUCTION,SECAI,Owner & Design Team,,INTERIORS,2024-07-12 07:00,2024-07-12 17:00,2024-07-12 07:00,2024-07-12 17:00,2025-11-20 17:00,2025-11-20 17:00,2025-12-05 17:00,2025-12-05 17:00,0,10,100
CN.SWA2.1530,PH1 - REMAINING CLADDING STEEL EXTERIOR - SWA-2 L LINE (DS AREA) GL 12-15,Complete,SWA - 2,West Support Building,SUWS-2 - 15-12,EXTERIOR SKIN,,CONSTRUCTION,,INSULATED METAL PANELS,JAMES LIVELY,,2023-12-15 09:00,2023-12-17 13:00,2023-12-15 09:00,2023-12-16 16:00,2025-11-20 17:00,2025-11-20 17:00,2025-11-21 07:00,2025-11-21 07:00,0,24,100
CN.SWA2.1212,TEMP WALLS Framing and Drywall- SWA2- GL 15-12 - L1,Complete,SWA - 2,,SUWS-2 - 15-12,L2 - SubFab Level,ELECTRIC RM 1,CONSTRUCTION,,DRYWALL,,,2023-12-11 07:00,2023-12-15 17:00,2023-12-11 07:00,2023-12-15 17:00,2025-11-20 17:00,2025-11-20 17:00,2025-11-24 07:00,2025-11-24 07:00,0,40,100
CN.SWA2.1550,PH1 -WELD CLIPS - CLADDING STEEL - SWA-2 (DS/AD AREA),Complete,SWA - 2,West Support Building,SUWS-2 - 15-12,EXTERIOR SKIN,,CONSTRUCTION,,INSULATED METAL PANELS,JAMES LIVELY,,2023-11-02 07:00,2023-11-03 09:00,2023-11-02 07:00,2023-11-03 09:00,2025-11-20 17:00,2025-11-20 17:00,2025-11-21 07:00,2025-11-21 07:00,0,12,100
CN.SWA1.1361,IMPACT - DS STEEL BEAM STIFFNER CONNECTION FIXES L4 GL 12-15 J-K,Complete,SWA - 2,,SUWS-2 - 15-12,DS/AD,,CONSTRUCTION,,Steel Erection,,,2024-01-22 07:00,2024-01-25 17:00,2024-01-02 07:00,2024-01-17 13:00,2025-11-20 17:00,2025-11-20 17:00,2025-06-13 08:00,2025-06-13 08:00,0,40,100
CN.SWA2.1322,METAL STUD FRAMING (2hr)  - SWA2-  GL 12-15 K Line -  L3  K LINE,Complete,SWA - 2,West Support Building,SUWS-2 - 15-12,L3 / Waffle Slab Level,DS/AD INTERIORS,CONSTRUCTION,BERG,TBD Architectural Finishes,FIZ DATA CENTER,INTERIORS,2024-05-06 09:00,2024-05-07 15:00,2024-03-05 00:00,2024-03-11 00:00,2025-11-20 17:00,2025-11-20 17:00,2025-06-13 08:00,2025-06-13 08:00,0,16,100
CN.SWA2.1362,TAPE & FINISH DRYWALL - SWA2 - GL 15-12 - K LINE - L3,Complete,SWA - 2,West Support Building,SUWS-2 - 15-12,L3 / Waffle Slab Level,DS/AD INTERIORS,CONSTRUCTION,CHERRY COATING,DRYWALL,FIZ DATA CENTER,INTERIORS,2024-05-20 07:00,2024-05-24 17:00,2024-05-20 07:00,2024-05-24 17:00,2025-11-20 17:00,2025-11-20 17:00,2025-06-13 08:00,2025-06-13 08:00,0,40,100
CN.SWA2.1372,D/S SGP Wall Turnover - SWA2 - GL 15-12 - K LINE - L3,Complete,SWA - 2,West Support Building,SUWS-2 - 15-12,L3 / Waffle Slab Level,DS/AD INTERIORS,CONSTRUCTION,,TBD Architectural Finishes,FIZ DATA CENTER,INTERIORS,2024-05-28 07:00,2024-05-28 17:00,2024-05-25 07:00,2024-05-25 17:00,2025-11-20 17:00,2025-11-20 17:00,2025-06-13 08:00,2025-06-13 08:00,0,10,100
CN.SWA2.1352,DRYWALL 2 SIDE - SWA2 - GL 15-12 - K LINE - L3,Complete,SWA - 2,West Support Building,SUWS-2 - 15-12,L3 / Waffle Slab Level,DS/AD INTERIORS,CONSTRUCTION,BERG,DRYWALL,FIZ DATA CENTER,INTERIORS,2024-05-13 07:00,2024-05-17 17:00,2024-05-11 07:00,2024-05-16 17:00,2025-11-20 17:00,2025-11-20 17:00,2025-06-13 08:00,2025-06-13 08:00,0,40,100
CN.SWA2.1342,DRYWALL & INSULATION (1 side) (INT)- SWA2- GL 12-15 K LINE - L3,Complete,SWA - 2,West Support Building,SUWS-2 - 15-12,L3 / Waffle Slab Level,DS/AD INTERIORS,CONSTRUCTION,,DRYWALL,FIZ DATA CENTER,INTERIORS,2024-03-29 11:00,2024-04-02 15:00,2024-03-05 11:00,2024-03-11 16:00,2025-11-20 17:00,2025-11-20 17:00,2025-06-13 08:00,2025-06-13 08:00,0,24,100
CN.SWA2.1222,METAL STUD FRAMING (2hr)- SWA2- L1 GL 12-15 K LINE,Complete,SWA - 2,West Support Building,SUWS-2 - 15-12,L1 - Fndn Slab,DS/AD INTERIORS,CONSTRUCTION,BERG,TBD Architectural Finishes,FIZ DATA CENTER,INTERIORS,2023-12-11 11:00,2023-12-17 09:00,2023-12-11 11:00,2023-12-17 12:00,2025-11-20 17:00,2025-11-20 17:00,2025-12-05 17:00,2025-12-05 17:00,0,48,100
CN.SWA2.1292,TAPE & FINISH DRYWALL - SWA2-  GL 12-15 K LINE-  L1,Complete,SWA - 2,West Support Building,SUWS-2 - 15-12,L1 - Fndn Slab,DS/AD INTERIORS,CONSTRUCTION,,DRYWALL,FIZ DATA CENTER,INTERIORS,2024-03-09 08:00,2024-03-17 08:00,2024-03-01 00:00,2024-03-06 00:00,2025-11-20 17:00,2025-11-20 17:00,2025-12-05 17:00,2025-12-05 17:00,0,40,100
CN.SWA2.1312,PRIMER & PAINT DRYWALL - GL 12-15 - K LINE - L1,Complete,SWA - 2,West Support Building,SUWS-2 - 15-12,L1 - Fndn Slab,DS/AD INTERIORS,CONSTRUCTION,FINISH PAINT,TBD Architectural Finishes,FIZ DATA CENTER,INTERIORS,2024-10-21 07:00,2024-10-24 17:00,2024-10-19 07:00,2024-10-22 17:00,2025-11-20 17:00,2025-11-20 17:00,2025-12-05 17:00,2025-12-05 17:00,0,30,100
CN.SWA2.1272,DRYWALL 2 SIDE - SWA2- GL 12-15 K LINE - L1,Complete,SWA - 2,West Support Building,SUWS-2 - 15-12,L1 - Fndn Slab,DS/AD INTERIORS,CONSTRUCTION,,DRYWALL,FIZ DATA CENTER,INTERIORS,2024-02-01 07:00,2024-02-04 17:00,2024-02-01 07:00,2024-02-05 11:00,2025-11-20 17:00,2025-11-20 17:00,2025-12-05 17:00,2025-12-05 17:00,0,40,100
CN.SWA2.1252,DRYWALL & INSULATION (1 side) (INT) - SWA2- GL 12-15 K LINE - L1,Complete,SWA - 2,West Support Building,SUWS-2 - 15-12,L1 - Fndn Slab,DS/AD INTERIORS,CONSTRUCTION,,DRYWALL,FIZ DATA CENTER,INTERIORS,2024-01-30 13:00,2024-02-04 11:00,2024-01-26 13:00,2024-01-30 16:00,2025-11-20 17:00,2025-11-20 17:00,2025-12-05 17:00,2025-12-05 17:00,0,48,100
CN.SWA2.1232,METAL STUD FRAMING (2hr) - SWA2- GL 12-15 K LINE - L2 DS/AD,Complete,SWA - 2,West Support Building,SUWS-2 - 15-12,L2 - SubFab Level,DS/AD INTERIORS,CONSTRUCTION,BERG,TBD Architectural Finishes,FIZ DATA CENTER,INTERIORS,2024-01-10 07:00,2024-01-17 15:00,2024-01-09 13:00,2024-01-11 17:00,2025-11-20 17:00,2025-11-20 17:00,2025-12-05 17:00,2025-12-05 17:00,0,48,100
CN.SWA2.1282,REMEDY - TAPE & FINISH DRYWALL - SWA2 - GL 12-15 - K LINE - L2,Complete,SWA - 2,West Support Building,SUWS-2 - 15-12,L2 - SubFab Level,DS/AD INTERIORS,CONSTRUCTION,CHERRY COATING,DRYWALL,FIZ DATA CENTER,INTERIORS,2024-08-12 07:00,2024-08-15 17:00,2024-08-10 07:00,2024-08-13 17:00,2025-11-20 17:00,2025-11-20 17:00,2025-12-05 17:00,2025-12-05 17:00,0,30,100
CN.SWA2.1302,FINISH PAINT - SWA2 - GL 12-15 - K LINE - L2,Not Started,SWA - 2,West Support Building,SUWS-2 - 15-12,L2 - SubFab Level,DS/AD INTERIORS,CONSTRUCTION,FINISH PAINT,TBD Architectural Finishes,FIZ DATA CENTER,INTERIORS,2025-11-21 07:00,2025-11-21 07:00,,,2025-11-21 07:00,2025-11-21 07:00,2025-12-05 17:00,2025-12-05 17:00,0,0,0
CN.SWA2.1262,REMEDY - FRAME & DRYWALL - SWA2 - GL 9-16 - K LINE - L2,Complete,SWA - 2,West Support Building,SUWS-2 - 15-12,L2 - SubFab Level,DS/AD INTERIORS,CONSTRUCTION,BERG,DRYWALL,FIZ DATA CENTER,INTERIORS,2024-07-22 07:00,2024-08-12 17:00,2024-07-22 07:00,2024-08-05 17:00,2025-11-20 17:00,2025-11-20 17:00,2025-12-05 17:00,2025-12-05 17:00,0,150,100
CN.SWA2.1242,DRYWALL & INSULATION (1 side) (INT) - SWA2- GL 12-15 K LINE - L2 DS/AD,Complete,SWA - 2,West Support Building,SUWS-2 - 15-12,L2 - SubFab Level,DS/AD INTERIORS,CONSTRUCTION,,DRYWALL,FIZ DATA CENTER,INTERIORS,2024-01-17 07:00,2024-01-21 15:00,2024-01-12 15:00,2024-01-14 16:00,2025-11-20 17:00,2025-11-20 17:00,2025-12-05 17:00,2025-12-05 17:00,0,48,100
CN.SWA1.1670,PH1- DS/AD DECKING & DETAILNG GL 15 - 12 DS/AD SWA-1 L2-L3,Complete,SWA - 2,West Support Building,SUWS-2 - 15-12,DS/AD,,CONSTRUCTION,,Decking & Detail,SEAN MONK,,2023-11-05 08:00,2023-11-14 14:00,2023-11-05 08:00,2023-11-08 09:00,2025-11-20 17:00,2025-11-20 17:00,2025-11-24 07:00,2025-11-24 07:00,0,96,100
CN.SWA1.1680,PH1- DS/AD FRP SLAB - SWA-1  L2-L3GL 12-15 J-K,Complete,SWA - 2,West Support Building,SUWS-2 - 15-12,DS/AD,,CONSTRUCTION,,SOMD,CONCRETE,,2023-12-15 07:00,2023-12-18 17:00,2023-12-13 07:00,2024-01-09 17:00,2025-11-20 17:00,2025-11-20 17:00,2025-11-24 07:00,2025-11-24 07:00,0,40,100
CN.SWA1.1690,AD STEEL PAINT FIREPROOFING IFRM - SWA-1 - GL 12-15 - J-K - L2-CEILING,Complete,SWA - 2,West Support Building,SUWS-2 - 15-12,DS/AD,,CONSTRUCTION,ROLLING PLAINS,Fireproofing,HOON WOO,,2024-07-17 07:00,2024-07-23 17:00,2024-06-18 07:00,2024-06-21 17:00,2025-11-20 17:00,2025-11-20 17:00,2025-11-24 07:00,2025-11-24 07:00,0,50,100
CN.SWA2.6000,WATER PROOF PEDASTALS - GL 7-14 - SWA-2-ROOF GL 12-15 L-N,Complete,SWA - 2,West Support Building,SUWS-2 - 15-12,L4 - SUP Roof - FAB Roof,,CONSTRUCTION,,Roofing,FIZ DATA CENTER,SOMD / Roofing / Waterproofing,2023-12-19 13:00,2023-12-20 11:00,2023-11-10 13:00,2023-11-11 11:00,2025-11-20 17:00,2025-11-20 17:00,2025-11-25 07:00,2025-11-25 07:00,0,8,100
CN.SWA2.6010,WATER PROOFING & POUR PEDASTALS - GL 7-14 - SWA-2-ROOF,Complete,SWA - 2,West Support Building,SUWS-2 - 15-12,L4 - SUP Roof - FAB Roof,,CONSTRUCTION,,Roofing,FIZ DATA CENTER,SOMD / Roofing / Waterproofing,2023-12-20 11:00,2023-12-21 09:00,2023-11-12 11:00,2023-11-13 09:00,2025-11-20 17:00,2025-11-20 17:00,2025-11-25 07:00,2025-11-25 07:00,0,8,100
CN.SWA2.6020,FINISH WATER PROOFING & POUR PEDASTALS - GL 7-14 - SWA-2-ROOF,Complete,SWA - 2,West Support Building,SUWS-2 - 15-12,L4 - SUP Roof - FAB Roof,,CONSTRUCTION,,Roofing,FIZ DATA CENTER,SOMD / Roofing / Waterproofing,2023-12-21 09:00,2023-12-21 17:00,2023-11-13 09:00,2023-11-14 17:00,2025-11-20 17:00,2025-11-20 17:00,2025-11-25 07:00,2025-11-25 07:00,0,8,100
CN.SWA2.6030,STRIP PEDSTALS & WORK ON SCRUBBER PAD - GL 7-14 - SWA-2-ROOF,Complete,SWA - 2,West Support Building,SUWS-2 - 15-12,L4 - SUP Roof - FAB Roof,,CONSTRUCTION,,Roofing,FIZ DATA CENTER,SOMD / Roofing / Waterproofing,2023-12-28 07:00,2023-12-28 15:00,2023-11-14 07:00,2023-11-15 15:00,2025-11-20 17:00,2025-11-20 17:00,2025-11-25 07:00,2025-11-25 07:00,0,8,100
CN.SWA2.6040,FINISH FORM & INSPECT - GL 7-14 - SWA-2-ROOF,Complete,SWA - 2,West Support Building,SUWS-2 - 15-12,L4 - SUP Roof - FAB Roof,,CONSTRUCTION,,Roofing,FIZ DATA CENTER,SOMD / Roofing / Waterproofing,2023-12-28 07:00,2023-12-28 15:00,2023-11-16 15:00,2023-11-17 13:00,2025-11-20 17:00,2025-11-20 17:00,2025-11-25 07:00,2025-11-25 07:00,0,8,100
CN.SWA2.6050,PLACE SCRUBBER PAD - GL 7-14 - SWA-2-ROOF,Complete,SWA - 2,West Support Building,SUWS-2 - 15-12,L4 - SUP Roof - FAB Roof,,CONSTRUCTION,,Roofing,FIZ DATA CENTER,SOMD / Roofing / Waterproofing,2023-12-28 13:00,2023-12-29 11:00,2023-11-18 13:00,2023-11-20 11:00,2025-11-20 17:00,2025-11-20 17:00,2025-11-25 07:00,2025-11-25 07:00,0,8,100
CN.SWA2.6060,STRIP FORMS - GL 7-14 - SWA-2-ROOF,Complete,SWA - 2,West Support Building,SUWS-2 - 15-12,L4 - SUP Roof - FAB Roof,,CONSTRUCTION,,Roofing,FIZ DATA CENTER,SOMD / Roofing / Waterproofing,2023-12-11 07:00,2023-12-11 15:00,2023-11-22 13:00,2023-11-28 17:00,2025-11-20 17:00,2025-11-20 17:00,2025-11-25 07:00,2025-11-25 07:00,0,8,100
CN.SWA2.6070,STRIP FORMS & SHORT PATCHING - GL 7-14 - SWA-2-ROOF,Complete,SWA - 2,West Support Building,SUWS-2 - 15-12,L4 - SUP Roof - FAB Roof,,CONSTRUCTION,,Roofing,FIZ DATA CENTER,SOMD / Roofing / Waterproofing,2023-12-11 15:00,2023-12-12 13:00,2023-11-28 15:00,2023-12-02 16:00,2025-11-20 17:00,2025-11-20 17:00,2025-11-25 07:00,2025-11-25 07:00,0,8,100
CN.SWA2.6080,CONTINUE PATCHING & INSPECT - GL 7-14 - SWA-2-ROOF,Complete,SWA - 2,West Support Building,SUWS-2 - 15-12,L4 - SUP Roof - FAB Roof,,CONSTRUCTION,,Roofing,FIZ DATA CENTER,SOMD / Roofing / Waterproofing,2023-12-11 15:00,2023-12-12 13:00,2023-12-02 10:00,2023-12-05 17:00,2025-11-20 17:00,2025-11-20 17:00,2025-11-25 07:00,2025-11-25 07:00,0,8,100
CN.SWA2.6090,PRIMER INSTALL - GL 7-14 - SWA-2-ROOF,Complete,SWA - 2,West Support Building,SUWS-2 - 15-12,L4 - SUP Roof - FAB Roof,,CONSTRUCTION,,Roofing,FIZ DATA CENTER,SOMD / Roofing / Waterproofing,2024-01-12 09:00,2024-01-14 08:00,2024-01-12 09:00,2024-01-13 16:00,2025-11-20 17:00,2025-11-20 17:00,2025-11-25 07:00,2025-11-25 07:00,0,16,100
CN.SWA2.6110,"BASE COAT, INSPECT BASE COAT, & INSPECT - GL 7-14 - SWA-2-ROOF",Complete,SWA - 2,West Support Building,SUWS-2 - 15-12,L4 - SUP Roof - FAB Roof,,CONSTRUCTION,,Roofing,FIZ DATA CENTER,SOMD / Roofing / Waterproofing,2024-01-17 07:00,2024-01-18 13:00,2024-01-14 08:00,2024-01-15 15:00,2025-11-20 17:00,2025-11-20 17:00,2025-11-25 07:00,2025-11-25 07:00,0,16,100
CN.SWA2.6130,TOP COAT - GL 7-14 - SWA-2-ROOF,Complete,SWA - 2,West Support Building,SUWS-2 - 15-12,L4 - SUP Roof - FAB Roof,,CONSTRUCTION,,Roofing,FIZ DATA CENTER,SOMD / Roofing / Waterproofing,2024-01-17 07:00,2024-01-18 13:00,2024-01-15 15:00,2024-01-18 11:00,2025-11-20 17:00,2025-11-20 17:00,2025-11-25 07:00,2025-11-25 07:00,0,16,100
CN.SWA2.6150,START FOAM & CRICKET INSTALL - GL 7-14 - SWA-2-ROOF,Complete,SWA - 2,West Support Building,SUWS-2 - 15-12,L4 - SUP Roof - FAB Roof,,CONSTRUCTION,,Roofing,FIZ DATA CENTER,SOMD / Roofing / Waterproofing,2024-01-18 11:00,2024-01-19 09:00,2024-01-18 11:00,2024-01-19 09:00,2025-11-20 17:00,2025-11-20 17:00,2025-11-25 07:00,2025-11-25 07:00,0,8,100
CN.SWA2.6160,INSTALL CRICKET - GL 7-14 - SWA-2-ROOF,Complete,SWA - 2,West Support Building,SUWS-2 - 15-12,L4 - SUP Roof - FAB Roof,,CONSTRUCTION,,Roofing,FIZ DATA CENTER,SOMD / Roofing / Waterproofing,2024-01-19 09:00,2024-01-25 09:00,2024-01-19 09:00,2024-01-24 11:00,2025-11-20 17:00,2025-11-20 17:00,2025-11-25 07:00,2025-11-25 07:00,0,40,100
CN.SWA2.6170,PRIMER CRICKET - GL 7-14 - SWA-2-ROOF,Complete,SWA - 2,West Support Building,SUWS-2 - 15-12,L4 - SUP Roof - FAB Roof,,CONSTRUCTION,,Roofing,FIZ DATA CENTER,SOMD / Roofing / Waterproofing,2024-01-26 07:00,2024-01-29 13:00,2024-01-26 07:00,2024-01-27 14:00,2025-11-20 17:00,2025-11-20 17:00,2025-11-25 07:00,2025-11-25 07:00,0,16,100
CN.SWA2.6180,BASE COAT CRICKET - GL 7-14 - SWA-2-ROOF,Complete,SWA - 2,West Support Building,SUWS-2 - 15-12,L4 - SUP Roof - FAB Roof,,CONSTRUCTION,,Roofing,FIZ DATA CENTER,SOMD / Roofing / Waterproofing,2024-01-29 07:00,2024-01-29 15:00,2024-01-29 07:00,2024-01-30 15:00,2025-11-20 17:00,2025-11-20 17:00,2025-11-25 07:00,2025-11-25 07:00,0,8,100
CN.SWA2.6190,TOP COAT CRICKET - GL 7-14 - SWA-2-ROOF,Complete,SWA - 2,West Support Building,SUWS-2 - 15-12,L4 - SUP Roof - FAB Roof,,CONSTRUCTION,,Roofing,FIZ DATA CENTER,SOMD / Roofing / Waterproofing,2024-02-02 07:00,2024-02-02 15:00,2024-02-02 07:00,2024-02-02 15:00,2025-11-20 17:00,2025-11-20 17:00,2025-12-05 17:00,2025-12-05 17:00,0,8,100
CN.SWA2.6240,GROUT & PATCH - SWA2 - L3 - GL 15-12,Complete,SWA - 2,West Support Building,SUWS-2 - 15-12,L3 / Waffle Slab Level,SUB CLEAN RM,CONSTRUCTION,,TBD Architectural Finishes,FIZ DATA CENTER,INTERIORS,2024-02-16 15:00,2024-02-20 11:00,2024-02-16 15:00,2024-02-19 13:00,2025-11-20 17:00,2025-11-20 17:00,2025-12-04 17:00,2025-12-04 17:00,0,16,100
CN.SWA2.6250,"PRIME, PATCH & TOPCOAT PRECAST BEAMS - SUB CLEAN ROOM - SWA2 - GL 15-12 - L3",Complete,SWA - 2,West Support Building,SUWS-2 - 15-12,L3 / Waffle Slab Level,SUB CLEAN RM,CONSTRUCTION,CHERRY COATING,TBD Architectural Finishes,FIZ DATA CENTER,INTERIORS,2024-07-24 07:00,2024-08-01 17:00,2024-07-24 07:00,2024-07-29 17:00,2025-11-20 17:00,2025-11-20 17:00,2025-12-04 17:00,2025-12-04 17:00,0,70,100
CN.SWA2.1480,PH1- DS/AD FRP SLAB - DS/AD SWA-2 - L6 GL 12-15 J-K,Complete,SWA - 2,,SUWS-2 - 15-12,DS/AD,,CONSTRUCTION,,SOMD,,,2023-12-14 07:00,2023-12-16 11:00,2023-12-14 07:00,2023-12-15 12:00,2025-11-20 17:00,2025-11-20 17:00,2025-06-13 08:00,2025-06-13 08:00,0,24,100
CN.SWA2.1540,PH1- DS/AD CURE FRP SLAB - DS/AD SWA-2 - L6 GL 12-15 J-K,Complete,SWA - 2,,SUWS-2 - 15-12,DS/AD,,CONSTRUCTION,,SOMD,,,2023-12-16 08:00,2023-12-18 12:00,2023-12-16 08:00,2023-12-18 15:00,2025-11-20 17:00,2025-11-20 17:00,2025-06-13 08:00,2025-06-13 08:00,0,24,100
CN.SWA2.1220,DETAIL & INSPECT CLADDING STEEL - SWA 2 GL 12-15 N [SUP EXTERIOR],Complete,SWA - 2,,SUWS-2 - 15-12,EXTERIOR SKIN,,CONSTRUCTION,,INSULATED METAL PANELS,,,2024-01-03 07:00,2024-01-17 11:00,2023-12-19 15:00,2024-01-09 17:00,2025-11-20 17:00,2025-11-20 17:00,2025-12-04 17:00,2025-12-04 17:00,0,96,100
CN.SWA2.6260,IMPACT - DSI CRANE - SWA-2 - SUW GL 10-17,Complete,SWA - 2,West Support Building,SUWS-2 - 15-12,EXTERIOR SKIN,,CONSTRUCTION,,Steel Erection,SEAN MONK,,2023-10-30 07:00,2023-11-04 09:00,2023-10-30 07:00,2023-11-04 10:00,2025-11-20 17:00,2025-11-20 17:00,2025-06-13 08:00,2025-06-13 08:00,0,32,100
CN.SWA2.1260,INSTALL INSULATED METAL PANEL MODULES - GL 12-15 - K LINE (AD AREA),Complete,SWA - 2,,SUWS-2 - 15-12,EXTERIOR SKIN,,CONSTRUCTION,KOVACH,INSULATED METAL PANELS,,,2024-06-18 07:00,2024-06-23 17:00,2024-06-11 07:00,2024-06-13 17:00,2025-11-20 17:00,2025-11-20 17:00,2025-11-25 07:00,2025-11-25 07:00,0,50,100
CN.SWA1.1720,IMPACT - SHOP DRAWING APPROVAL TOPPING SLAB w TRENCH & ANGLE EMBEDS- SWA-1-L1,Complete,SWA - 2,,SUWS-2 - 15-12,L1 - Fndn Slab,,CONSTRUCTION,,TOPPING,,,2023-11-13 08:00,2023-11-18 08:00,2023-10-31 09:51,2023-11-05 16:00,2025-11-20 17:00,2025-11-20 17:00,2025-12-04 17:00,2025-12-04 17:00,0,40,100
CN.SWA2.6270,IMPACT - DSI CRANE MOVING INTO MATERIAL AREA - SWA2 - GL 14-15,Complete,SWA - 2,West Support Building,SUWS-2 - 15-12,EXTERIOR SKIN,,CONSTRUCTION,,Steel Erection,SEAN MONK,,2023-11-30 13:00,2023-12-01 11:00,2023-11-30 13:00,2023-12-15 15:00,2025-11-20 17:00,2025-11-20 17:00,2025-11-21 07:00,2025-11-21 07:00,0,8,100
CN.SWA2.6280,PH1 - CLADDING STEEL  EXTERIOR - SWA-2 L LINE (DS AREA) GL 12-15 L,Complete,SWA - 2,West Support Building,SUWS-2 - 15-12,EXTERIOR SKIN,,CONSTRUCTION,,INSULATED METAL PANELS,JAMES LIVELY,,2023-11-02 07:00,2023-11-09 09:00,2023-11-02 07:00,2023-11-05 13:00,2025-11-20 17:00,2025-11-20 17:00,2025-11-21 07:00,2025-11-21 07:00,0,72,100
CN.SWA1.1371,KNEE WALL -SWA 1 - GL 15 12 - L4 - J-K -DS/AD,Complete,SWA - 2,,SUWS-2 - 15-12,DS/AD,,CONSTRUCTION,,Cast-in Place Concrete - Baker Concrete,,,2024-02-05 07:00,2024-02-09 09:00,2024-02-05 07:00,2024-02-09 09:00,2025-11-20 17:00,2025-11-20 17:00,2025-11-25 07:00,2025-11-25 07:00,0,32,100
CN.SWA1.1740,IMPACT - REVISED SHOP DRAWING APPROVAL TOPPING SLAB w TRENCH & ANGLE EMBEDS- SWA-1-L1 REV4,Complete,SWA - 2,,SUWS-2 - 15-12,L1 - Fndn Slab,,CONSTRUCTION,,TOPPING,,,2023-11-16 08:00,2023-11-20 08:00,2023-11-16 08:00,2024-01-07 10:00,2025-11-20 17:00,2025-11-20 17:00,2025-12-04 17:00,2025-12-04 17:00,0,40,100
CN.SWA1.6360,DS/AD STEEL SPRAY FIREPROOFING SFRM - SWA-1 - GL 12-15 - J-K - L1 CEILING,Complete,SWA - 2,West Support Building,SUWS-2 - 15-12,DS/AD,,CONSTRUCTION,ROLLING PLAINS,Fireproofing,HOON WOO,,2024-02-12 07:00,2024-02-16 17:00,2024-02-12 07:00,2024-02-12 17:00,2025-11-20 17:00,2025-11-20 17:00,2025-12-05 17:00,2025-12-05 17:00,0,50,100
CN.SWA2.6370,K-LINE STEEL SPRAY FIREPROOFING SFRM2 - SWA1 - L3-CEILING - GL 12-15,Complete,SWA - 2,West Support Building,SUWS-2 - 15-12,L4 - SUP Roof - FAB Roof,DS/AD INTERIORS,CONSTRUCTION,ROLLING PLAINS,Fireproofing,HOON WOO,,2024-04-25 07:00,2024-04-30 17:00,2024-04-25 07:00,2024-04-29 17:00,2025-11-20 17:00,2025-11-20 17:00,2025-06-13 08:00,2025-06-13 08:00,0,40,100
CN.SWA2.6290,IMPACT [S.TIA-10] - TINDALL FIXES (MISSING FORM SAVERS) - SWA2 - GL 14 - L3,Complete,SWA - 2,West Support Building,SUWS-2 - 15-12,L2 - SubFab Level,,CONSTRUCTION,SECAI,Decking & Detail,SEAN MONK,,2024-01-02 07:00,2024-01-05 17:00,2023-11-26 07:00,2024-08-01 17:00,2025-11-20 17:00,2025-11-20 17:00,2025-12-05 17:00,2025-12-05 17:00,0,40,100
CN.SWA2.6300,PH1-ROOF LAYER PARAPET(FRAMING & SHEATING RIP) - SWB4 - GL 15-12- L4 - N,Complete,SWA - 2,West Support Building,SUWS-2 - 15-12,L4 - SUP Roof - FAB Roof,,CONSTRUCTION,,TOPPING,CONCRETE,SOMD / Roofing / Waterproofing,2024-01-07 10:00,2024-01-13 12:00,2024-01-07 10:00,2024-01-11 11:00,2025-11-20 17:00,2025-11-20 17:00,2025-11-25 07:00,2025-11-25 07:00,0,40,100
CN.SWA2.6310,ROOFTOP DRY PARAPET - SWB-1 (DS AREA) GL 15-12 N (DS AREA),Complete,SWA - 2,West Support Building,SUWS-2 - 15-12,EXTERIOR SKIN,,CONSTRUCTION,,INSULATED METAL PANELS,JAMES LIVELY,,2024-02-19 09:00,2024-02-24 09:00,2024-02-19 09:00,2024-02-23 17:00,2025-11-20 17:00,2025-11-20 17:00,2025-12-05 17:00,2025-12-05 17:00,0,40,100
CN.SWA1.6430,INSTALL INSULATED METAL PANEL MODULES - GL 12-15 - J LINE (AD AREA),Complete,SWA - 2,West Support Building,SUWS-2 - 15-12,DS/AD,,CONSTRUCTION,KOVACH,Fireproofing,HOON WOO,,2024-06-28 07:00,2024-06-29 17:00,2024-06-21 07:00,2024-06-21 17:00,2025-11-20 17:00,2025-11-20 17:00,2025-12-05 17:00,2025-12-05 17:00,0,20,100
CN.SWA2.6320,INSTALL TPO ROOFING - SWA2 - GL 10-15 - K-L - L6,Complete,SWA - 2,West Support Building,SUWS-2 - 15-12,L6 - PENTHOUSE / DS ROOF,,CONSTRUCTION,BRAZOS,Waterproofing - Preferred,JAMES LIVELY,,2024-10-04 07:00,2024-10-08 17:00,2024-10-01 07:00,2024-10-04 17:00,2025-11-20 17:00,2025-11-20 17:00,2025-12-05 17:00,2025-12-05 17:00,0,30,100
CN.SWA2.6330,DCC BEAM (STEEL STRUCTURE) - SWA2- GL 15-12 - L3 K LINE,Complete,SWA - 2,West Support Building,SUWS-2 - 15-12,L3 / Waffle Slab Level,DS/AD INTERIORS,CONSTRUCTION,,TBD Architectural Finishes,FIZ DATA CENTER,INTERIORS,2024-01-17 07:00,2024-01-24 09:00,2024-01-16 15:00,2024-01-20 11:00,2025-11-20 17:00,2025-11-20 17:00,2025-06-13 08:00,2025-06-13 08:00,0,72,100
CN.SWA2.6340,TEMPORARY SCAFFOLD PLATFORM - SWA2- GL 15-12 - L3 K LINE,Complete,SWA - 2,West Support Building,SUWS-2 - 15-12,L3 / Waffle Slab Level,DS/AD INTERIORS,CONSTRUCTION,,TBD Architectural Finishes,FIZ DATA CENTER,INTERIORS,2024-01-26 15:00,2024-01-31 13:00,2024-01-26 15:00,2024-02-01 17:00,2025-11-20 17:00,2025-11-20 17:00,2025-06-13 08:00,2025-06-13 08:00,0,48,100
CN.SWA2.6520,Drywall Clips & AMTS Installs Support Beams - SWA-1-L4 GL 12-15 K LINE,Complete,SWA - 2,West Support Building,SUWS-2 - 15-12,L4 - SUP Roof - FAB Roof,DS/AD INTERIORS,CONSTRUCTION,,Fireproofing,HOON WOO,,2024-03-25 07:00,2024-04-01 10:00,2024-03-14 19:00,2024-03-25 17:00,2025-11-20 17:00,2025-11-20 17:00,2025-06-13 08:00,2025-06-13 08:00,0,53,100
CN.SWA2.6530,DS STEEL SPRAY SFRM SWA 4 - L3 CEILING GL12-15/K-L,Complete,SWA - 2,West Support Building,SUWS-2 - 15-12,L4 - SUP Roof - FAB Roof,DS/AD INTERIORS,CONSTRUCTION,ROLLING PLAINS,Fireproofing,HOON WOO,,2024-06-03 07:00,2024-06-07 17:00,2024-05-29 07:00,2024-06-06 17:00,2025-11-20 17:00,2025-11-20 17:00,2025-12-05 17:00,2025-12-05 17:00,0,40,100
CN.SWA2.6540,ADD FLANGE EXTENSIONS/ CUT GRATING - SWA-1-L4 GL 12-15 K LINE,Complete,SWA - 2,West Support Building,SUWS-2 - 15-12,L4 - SUP Roof - FAB Roof,DS/AD INTERIORS,CONSTRUCTION,,Fireproofing,HOON WOO,,2024-04-02 07:00,2024-04-04 17:00,2024-04-02 07:00,2024-04-04 17:00,2025-11-20 17:00,2025-11-20 17:00,2025-06-13 08:00,2025-06-13 08:00,0,30,100
CN.SWA2.6550,AD STEEL APPLY INTUMESCENT - SWA2 - L3 CEILING - GL 12-15/J-K,Complete,SWA - 2,West Support Building,SUWS-2 - 15-12,L4 - SUP Roof - FAB Roof,DS/AD INTERIORS,CONSTRUCTION,ROLLING PLAINS,Fireproofing,HOON WOO,,2024-06-03 07:00,2024-06-06 17:00,2024-06-03 07:00,2024-06-14 17:00,2025-11-20 17:00,2025-11-20 17:00,2025-06-13 08:00,2025-06-13 08:00,0,30,100
CN.SWA2.6560,CURE INTUMESCENT PAINT AD side - SWA2,Complete,SWA - 2,West Support Building,SUWS-2 - 15-12,L4 - SUP Roof - FAB Roof,DS/AD INTERIORS,CONSTRUCTION,ROLLING PLAINS,Fireproofing,HOON WOO,,2024-07-12 07:00,2024-07-26 17:00,2024-06-15 07:00,2024-07-11 17:00,2025-11-20 17:00,2025-11-20 17:00,2025-12-05 17:00,2025-12-05 17:00,0,110,100
CN.SWA2.6570,SECAI -AMTS INSTALL UPPER CEILING - AD - SWA-1-L4 GL 12-15 K LINE,Complete,SWA - 2,West Support Building,SUWS-2 - 15-12,L4 - SUP Roof - FAB Roof,DS/AD INTERIORS,CONSTRUCTION,SECAI,Fireproofing,HOON WOO,,2024-08-01 07:00,2024-08-05 17:00,2024-08-01 07:00,2024-08-05 17:00,2025-11-20 17:00,2025-11-20 17:00,2025-12-05 17:00,2025-12-05 17:00,0,30,100
CN.SWA2.6610,IMPACT [CL 72-73] - SUW ROOF TUBE STEEL - SWA-2-ROOF - GL 10-14 - L-N,Complete,SWA - 2,West Support Building,SUWS-2 - 15-12,L4 - SUP Roof - FAB Roof,,CONSTRUCTION,,TOPPING,CONCRETE,SOMD / Roofing / Waterproofing,2024-02-10 08:00,2024-02-14 08:00,2024-02-15 08:00,2024-02-15 17:00,2025-11-20 17:00,2025-11-20 17:00,2025-12-05 17:00,2025-12-05 17:00,0,40,100
CN.SWA2.6630,"PRIME, PATCH & TOPCOAT PRECAST COLUMNS - SUB CLEAN ROOM - SWA2 - GL 15-12 - L3",Complete,SWA - 2,West Support Building,SUWS-2 - 15-12,L3 / Waffle Slab Level,SUB CLEAN RM,CONSTRUCTION,CHERRY COATING,TBD Architectural Finishes,FIZ DATA CENTER,INTERIORS,2024-07-24 07:00,2024-08-01 17:00,2024-07-24 07:00,2024-07-29 17:00,2025-11-20 17:00,2025-11-20 17:00,2025-12-05 17:00,2025-12-05 17:00,0,70,100
CN.SWA2.6640,IMPACT - K-LINE STEEL SPRAY FIREPROOFING SFRM2 - SWA1 - L3-CEILING - GL 12-15,Complete,SWA - 2,West Support Building,SUWS-2 - 15-12,L4 - SUP Roof - FAB Roof,DS/AD INTERIORS,CONSTRUCTION,ROLLING PLAINS,Fireproofing,HOON WOO,,2024-04-22 07:00,2024-04-24 17:00,2024-04-22 07:00,2024-04-25 17:00,2025-11-20 17:00,2025-11-20 17:00,2025-06-13 08:00,2025-06-13 08:00,0,30,100
CN.SWA2.6650,IMPACT - INSPECT & SURFACE PREP ADDITIONAL AD STEEL FOR INTUMESCENT - SWA2 - GL 12-15 - J-K - L3 CEILING,Complete,SWA - 2,West Support Building,SUWS-2 - 15-12,L4 - SUP Roof - FAB Roof,DS/AD INTERIORS,CONSTRUCTION,ROLLING PLAINS,Fireproofing,HOON WOO,,2024-05-14 07:00,2024-05-20 17:00,2024-05-14 07:00,2024-05-20 17:00,2025-11-20 17:00,2025-11-20 17:00,2025-06-13 08:00,2025-06-13 08:00,0,40,100
CN.SWA1.6780,INSTALL FRAMING FOR IMP - GL 12-15 - J LINE (AD AREA),Complete,SWA - 2,West Support Building,SUWS-2 - 15-12,DS/AD,,CONSTRUCTION,BERG,Fireproofing,HOON WOO,,2024-06-04 07:00,2024-06-06 17:00,2024-05-01 07:00,2024-05-14 17:00,2025-11-20 17:00,2025-11-20 17:00,2025-12-05 17:00,2025-12-05 17:00,0,20,100
CN.SWA2.6680,REMEDY - DEMO DRYWALL (INT) - SWA2- GL 9-16 K LINE - L2 DS/AD,Complete,SWA - 2,West Support Building,SUWS-2 - 15-12,L2 - SubFab Level,DS/AD INTERIORS,CONSTRUCTION,BERG,DRYWALL,FIZ DATA CENTER,INTERIORS,2024-07-08 07:00,2024-07-15 15:00,2024-07-08 07:00,2024-07-13 15:00,2025-11-20 17:00,2025-11-20 17:00,2025-12-05 17:00,2025-12-05 17:00,0,48,100
CN.SWA1.9420,CURE - AD STEEL PAINT FIREPROOFING IFRM - SWA-1 - GL 12-15 - J-K - L2-CEILING,Complete,SWA - 2,West Support Building,SUWS-2 - 15-12,DS/AD,,CONSTRUCTION,ROLLING PLAINS,Fireproofing,HOON WOO,,2024-07-25 07:00,2024-08-12 17:00,2024-06-22 07:00,2024-07-09 17:00,2025-11-20 17:00,2025-11-20 17:00,2025-12-05 17:00,2025-12-05 17:00,0,180,100
CN.SWA1.9440,PRIME & TOUCH UP AD STEEL - SWA-1 - GL 12-24 - J-K - L2-CEILING,Complete,SWA - 2,West Support Building,SUWS-2 - 15-12,DS/AD,,CONSTRUCTION,ROLLING PLAINS,Fireproofing,HOON WOO,,2024-07-12 07:00,2024-07-16 17:00,2024-06-14 07:00,2024-06-17 07:00,2025-11-20 17:00,2025-11-20 17:00,2025-11-24 07:00,2025-11-24 07:00,0,30,100
CN.SWA2.6690,IMPACT - REQUEST SECAI REMOVE DUCT BLOCKING ACCESS / SECAI REMOVE DUCT - GL 17-15 - L LINE (DS AREA),Complete,SWA - 2,West Support Building,SUWS-1 - 18-15,EXTERIOR SKIN,,CONSTRUCTION,KOVACH,INSULATED METAL PANELS,JAMES LIVELY,,2024-07-12 07:00,2024-07-22 17:00,2024-06-17 07:00,2024-07-03 17:00,2025-11-20 17:00,2025-11-20 17:00,2025-11-25 07:00,2025-11-25 07:00,0,100,100
CN.SWA2.6700,IMPACT - SECAI (dsi / strarcon) MATERIAL EQUIPMENT IN THE WAY - GL 14-12 - L LINE (DS AREA),Complete,SWA - 2,West Support Building,SUWS-2 - 15-12,EXTERIOR SKIN,,CONSTRUCTION,KOVACH,INSULATED METAL PANELS,JAMES LIVELY,,2024-07-12 07:00,2024-07-22 17:00,2024-06-27 07:00,2024-07-10 17:00,2025-11-20 17:00,2025-11-20 17:00,2025-11-25 07:00,2025-11-25 07:00,0,100,100
CN.AB.AR.7210,INSTALL GOAL POSTS - 3C BATTERY RM & ELEVATOR HALL 3 - SWA2 - GL 12-15 - L-N - L2,Complete,SWA - 2,West Support Building,SUWS-1 - 18-15,L2 - SubFab Level,BATT. RM 1,CONSTRUCTION,FINISH PAINT,TBD Architectural Finishes,JAMES LEE,INTERIORS,2024-08-23 07:00,2024-09-06 17:00,2024-08-12 07:00,2024-09-06 07:00,2025-11-20 17:00,2025-11-20 17:00,2025-11-24 07:00,2025-11-24 07:00,0,100,100
CN.SWA2.6710,DS ROOF PARAPET DRY IN - SWA2 - GL 12-15 - K-L - L6,Complete,SWA - 2,West Support Building,SUWS-2 - 15-12,DS/AD,,CONSTRUCTION,BRAZOS,Waterproofing - Preferred,JAMES LIVELY,,2024-08-02 07:00,2024-08-20 17:00,2024-08-01 07:00,2024-09-06 17:00,2025-11-20 17:00,2025-11-20 17:00,2025-11-25 07:00,2025-11-25 07:00,0,110,100
CN.AB.AR.7450,IMPACT DEHUMIDIFIER IN THE WAY - 3C BATTERY RM & ELEVATOR HALL 3 - SWA2 - GL 12-15 - L-N - L2,Complete,SWA - 2,West Support Building,SUWS-1 - 18-15,L2 - SubFab Level,BATT. RM 1,CONSTRUCTION,FINISH PAINT,TBD Architectural Finishes,JAMES LEE,INTERIORS,2024-08-23 07:00,2024-09-06 17:00,2024-08-12 07:00,2024-08-30 17:00,2025-11-20 17:00,2025-11-20 17:00,2025-11-24 07:00,2025-11-24 07:00,0,100,100
CN.AB.AR.1020,METAL STUD FRAMING (2hr) - SWA-3 - L1- GAS PURIFER NORTH,Complete,SWA - 3,West Support Building,SUWS-3 - 12-9,L1 - Fndn Slab,GAS PURIFIER RM,CONSTRUCTION,BERG,TBD Architectural Finishes,AMBER CARO,INTERIORS,2023-08-21 07:00,2023-08-25 17:00,2023-08-21 07:00,2023-08-25 17:00,2025-11-20 17:00,2025-11-20 17:00,2025-11-21 07:00,2025-11-21 07:00,0,40,100
CN.A1.UG.1030,PH1- UNDERGROUND PLUMBING SWA3,Complete,SWA - 3,West Support Building,SUWS-3 - 12-9,L1 - Fndn Slab,,CONSTRUCTION,,Underground Plumbing - Cobb,ANDREA SOLIS,,2022-09-06 07:00,2022-09-09 17:00,2022-09-06 07:00,2022-09-09 17:00,2025-11-20 17:00,2025-11-20 17:00,2025-06-13 08:00,2025-06-13 08:00,0,40,100
CN.A1.UG.1040,PH1- UNDERGROUND ELECTRICAL SWA3,Complete,SWA - 3,West Support Building,SUWS-3 - 12-9,L1 - Fndn Slab,,CONSTRUCTION,,Underground Electrical - (By Owner),ANDREA SOLIS,,2022-09-06 08:00,2022-09-10 08:00,2022-09-06 08:00,2022-09-10 09:00,2025-11-20 17:00,2025-11-20 17:00,2025-06-13 08:00,2025-06-13 08:00,0,40,100
CN.SWA3.1020,PH1-FRP GRADE BEAM - SWA3,Complete,SWA - 3,West Support Building,SUWS-3 - 12-9,L1 - Fndn Slab,,CONSTRUCTION,,Pour Concrete,ANDREA SOLIS,,2022-11-04 12:00,2022-11-06 16:00,2022-11-04 12:00,2022-11-08 08:00,2025-11-20 17:00,2025-11-20 17:00,2025-06-13 08:00,2025-06-13 08:00,0,24,100
CN.SWA3.1030,PH1-BLACK BASE (NOW RAT SLAB) - SWA3,Complete,SWA - 3,West Support Building,SUWS-3 - 12-9,L1 - Fndn Slab,,CONSTRUCTION,,RAT SLAB,ANDREA SOLIS,,2022-11-08 08:00,2022-11-11 12:00,2022-11-08 08:00,2022-11-11 12:00,2025-11-20 17:00,2025-11-20 17:00,2025-06-13 08:00,2025-06-13 08:00,0,24,100
CN.SWA3.1040,PH1-CURE PIER CAPS - SWA3,Complete,SWA - 3,West Support Building,SUWS-3 - 12-9,L1 - Fndn Slab,,CONSTRUCTION,,Concrete Cure,ANDREA SOLIS,,2022-11-08 08:00,2022-11-08 08:00,2022-11-08 08:00,2022-11-08 08:00,2025-11-20 17:00,2025-11-20 17:00,2025-06-13 08:00,2025-06-13 08:00,0,0,100
CN.SWA3.1080,PH1- FRP SLAB - SWA-3-L3,Complete,SWA - 3,West Support Building,SUWS-3 - 12-9,L3 / Waffle Slab Level,,CONSTRUCTION,,SOMD,CONCRETE,,2023-07-31 07:00,2023-08-01 12:00,2023-07-24 07:00,2023-07-27 07:00,2025-11-20 17:00,2025-11-20 17:00,2025-06-13 08:00,2025-06-13 08:00,0,15,100
CN.SWA3.1120,PH1- FRP SLAB - SWA-3-ROOF,Complete,SWA - 3,West Support Building,SUWS-3 - 12-9,L4 - SUP Roof - FAB Roof,,CONSTRUCTION,,SOMD,CONCRETE,SOMD / Roofing / Waterproofing,2023-09-11 08:00,2023-09-12 14:00,2023-09-11 08:00,2023-09-12 14:00,2025-11-20 17:00,2025-11-20 17:00,2025-11-24 07:00,2025-11-24 07:00,0,16,100
CN.SWA3.1100,PH1- CURE SOMD - SWA-3-L3,Complete,SWA - 3,West Support Building,SUWS-3 - 12-9,L3 / Waffle Slab Level,,CONSTRUCTION,,Concrete Cure,JAMES LEE,,2023-08-01 12:00,2023-08-03 16:00,2023-07-28 12:00,2023-07-29 05:00,2025-11-20 17:00,2025-11-20 17:00,2025-09-04 07:00,2025-09-04 07:00,0,24,100
CN.SWA3.1130,PH1- CURE SOMD - SWA-3-ROOF,Complete,SWA - 3,West Support Building,SUWS-3 - 12-9,L4 - SUP Roof - FAB Roof,,CONSTRUCTION,,Concrete Cure,JAMES LEE,SOMD / Roofing / Waterproofing,2023-09-14 07:00,2023-09-16 11:00,2023-09-13 20:44,2023-09-14 20:44,2025-11-20 17:00,2025-11-20 17:00,2025-11-25 07:00,2025-11-25 07:00,0,24,100
CN.SWA3.1090,PH1- 1st FLOOR SLAB - SWA-3-L1 - A3,Complete,SWA - 3,West Support Building,SUWS-3 - 12-9,L1 - Fndn Slab,,CONSTRUCTION,,Pour Concrete,ANDREA SOLIS,,2022-12-27 07:00,2023-01-03 09:00,2022-12-27 07:00,2023-01-04 09:00,2025-11-20 17:00,2025-11-20 17:00,2025-06-13 08:00,2025-06-13 08:00,0,42,100
CN.SWA3.1200,FRP TOPPING SLAB - SWA3 - GL 12-10 - L-N - L4 ROOF,Complete,SWA - 3,West Support Building,SUWS-3 - 12-9,L4 - SUP Roof - FAB Roof,,CONSTRUCTION,,TOPPING,CONCRETE,SOMD / Roofing / Waterproofing,2024-02-17 13:00,2024-02-20 17:00,2024-02-17 13:00,2024-02-19 10:00,2025-11-20 17:00,2025-11-20 17:00,2025-11-25 07:00,2025-11-25 07:00,0,34,100
CN.SWA3.1220,MEP EQPT PADS (LAYOUT & INSTALL DOWELS)- SWA-3-ROOF,Complete,SWA - 3,West Support Building,SUWS-3 - 12-9,L4 - SUP Roof - FAB Roof,,CONSTRUCTION,,OAC/ MECH PADS,JAMES LEE,SOMD / Roofing / Waterproofing,2023-10-30 07:00,2023-11-03 11:00,2023-10-30 07:00,2023-11-02 17:00,2025-11-20 17:00,2025-11-20 17:00,2025-11-25 07:00,2025-11-25 07:00,0,24,100
CN.SWA3.1230,PH1-EXCAVATE PITS - SWA3,Complete,SWA - 3,West Support Building,SUWS-3 - 12-9,L1 - Fndn Slab,,CONSTRUCTION,,Pour Concrete,ANDREA SOLIS,,2022-09-02 08:00,2022-09-04 12:00,2022-09-02 08:00,2022-09-06 14:00,2025-11-20 17:00,2025-11-20 17:00,2025-06-13 08:00,2025-06-13 08:00,0,24,100
CN.SWA3.1050,TIER 1 ERECT PRECAST COLUMNS & BEAMS - SWA3,Complete,SWA - 3,West Support Building,SUWS-3 - 12-9,L3 / Waffle Slab Level,,CONSTRUCTION,,"SUP WEST N,M",SEAN MONK,,2023-05-01 13:00,2023-05-07 11:00,2023-05-01 13:00,2023-05-30 09:00,2025-11-20 17:00,2025-11-20 17:00,2025-06-13 08:00,2025-06-13 08:00,0,48,100
CN.SWA3.1140,PH1-ROOF LAYER PARAPET - SWA3 GL 12-9 L-N,Complete,SWA - 3,West Support Building,SUWS-3 - 12-9,L4 - SUP Roof - FAB Roof,,CONSTRUCTION,,Roofing,JAMES LIVELY,SOMD / Roofing / Waterproofing,2024-02-03 08:00,2024-02-04 14:00,2024-02-03 08:00,2024-02-04 16:00,2025-11-20 17:00,2025-11-20 17:00,2025-11-25 07:00,2025-11-25 07:00,0,16,100
CN.SWA3.1160,PH1-FLUID APPLIED MEMBRANE ROOFING - SWA3,Complete,SWA - 3,West Support Building,SUWS-3 - 12-9,L4 - SUP Roof - FAB Roof,,CONSTRUCTION,,Roofing,JAMES LIVELY,SOMD / Roofing / Waterproofing,2023-10-30 07:00,2023-11-04 09:00,2023-11-03 09:00,2023-11-08 16:00,2025-11-20 17:00,2025-11-20 17:00,2025-11-25 07:00,2025-11-25 07:00,0,32,100
CN.SWA3.1170,PH1 - CLADDING STEEL INTERIOR GL 12-9 - K LINE (AD AREA),Complete,SWA - 3,West Support Building,SUWS-3 - 12-9,EXTERIOR SKIN,,CONSTRUCTION,,INSULATED METAL PANELS,JAMES LIVELY,,2024-03-05 07:00,2024-03-11 13:00,2024-03-05 07:00,2024-04-02 17:00,2025-11-20 17:00,2025-11-20 17:00,2025-11-25 07:00,2025-11-25 07:00,0,46,100
CN.SWA3.1190,PH1 - INSTALL INSULATED METAL PANEL MODULES - GL 12-9 - L LINE (DS AREA),Complete,SWA - 3,West Support Building,SUWS-3 - 12-9,EXTERIOR SKIN,,CONSTRUCTION,KOVACH,INSULATED METAL PANELS,JAMES LIVELY,,2024-07-21 07:00,2024-07-30 17:00,2024-07-10 07:00,2024-07-20 17:00,2025-11-20 17:00,2025-11-20 17:00,2025-11-25 07:00,2025-11-25 07:00,0,90,100
CN.SWA3.1150,PH1 - CLADDING STEEL  - SWA-3  N LINE [SUP EXTERIOR WALL]  GL 12-9 N,Complete,SWA - 3,West Support Building,SUWS-3 - 12-9,EXTERIOR SKIN,,CONSTRUCTION,,INSULATED METAL PANELS,JAMES LIVELY,,2024-01-11 09:00,2024-01-20 15:00,2024-01-06 07:00,2024-01-14 17:00,2025-11-20 17:00,2025-11-20 17:00,2025-09-04 07:00,2025-09-04 07:00,0,68,100
CN.SWA3.1180,PH1 - INSTALL INSULATED METAL PANEL MODULES - SWA-3 N LINE [SUP EXTERIOR WALL] GL 12-9 N,Complete,SWA - 3,West Support Building,SUWS-3 - 12-9,EXTERIOR SKIN,,CONSTRUCTION,,INSULATED METAL PANELS,JAMES LIVELY,,2024-01-29 07:00,2024-02-05 16:00,2024-01-29 07:00,2024-02-05 08:00,2025-11-20 17:00,2025-11-20 17:00,2025-12-05 07:00,2025-12-05 07:00,0,79,100
CN.SWA3.1110,PH1- AD STEEL FRAME INSTALL - SWA-3 fab side,Complete,SWA - 3,West Support Building,SUWS-3 - 12-9,DS/AD,,CONSTRUCTION,,Steel Erection,SEAN MONK,,2023-10-02 07:00,2023-10-03 13:00,2023-10-02 07:00,2023-10-08 13:00,2025-11-20 17:00,2025-11-20 17:00,2025-06-13 08:00,2025-06-13 08:00,0,16,100
CN.SEA1.1280,PH1- U/G - R/I - SPRINKLER & PLUMBING - SWA3,Complete,SWA - 3,West Support Building,SUWS-3 - 12-9,L1 - Fndn Slab,,CONSTRUCTION,,U/G FIRE & PLUMBING,ANDREA SOLIS,,2022-10-27 08:00,2022-10-31 08:00,2022-10-27 08:00,2022-11-01 10:00,2025-11-20 17:00,2025-11-20 17:00,2025-06-13 08:00,2025-06-13 08:00,0,40,100
CN.AB.AR.2940,"IMPACT - MEP ROUGH IN, INSPECTION, DUCTING & CABLE TRAYS (by SECAI) - SWA-3 - L1- GAS PURIFER NORTH",Complete,SWA - 3,West Support Building,SUWS-3 - 12-9,L1 - Fndn Slab,GAS PURIFIER RM,CONSTRUCTION,,DRYWALL,AMBER CARO,,2023-10-27 07:00,2023-10-30 17:00,2023-10-27 07:00,2023-11-11 14:00,2025-11-20 17:00,2025-11-20 17:00,2025-12-01 07:00,2025-12-01 07:00,0,40,100
CN.AB.AR.2950,TAPE & FINISH DRYWALL - GAS PURIFER NORTH - GL 12-9 - L-N - L1,Complete,SWA - 3,West Support Building,SUWS-3 - 12-9,L1 - Fndn Slab,GAS PURIFIER RM,CONSTRUCTION,CHERRY COATING,DRYWALL,AMBER CARO,INTERIORS,2024-07-15 07:00,2024-07-19 17:00,2024-07-15 07:00,2024-07-19 17:00,2025-11-20 17:00,2025-11-20 17:00,2025-12-01 07:00,2025-12-01 07:00,0,50,100
CN.AB.AR.3000,INSTALL WALL PROTECTION - STAIR 1 - GL 10-11 - K-L - L1,Not Started,SWA - 3,West Support Building,SUWS-3 - 12-9,L1 - Fndn Slab,DS/AD INTERIORS,CONSTRUCTION,BERNCO,TBD Architectural Finishes,JAMES LEE,INTERIORS,2025-12-29 15:00,2026-01-02 15:00,,,2025-12-29 15:00,2026-01-02 15:00,2025-12-03 07:00,2025-12-05 17:00,30,30,0
CN.AB.AR.2960,FINISH PAINT - GAS PURIFER NORTH - GL 12-9 - L-N - L1,Not Started,SWA - 3,West Support Building,SUWS-3 - 12-9,L1 - Fndn Slab,GAS PURIFIER RM,CONSTRUCTION,FINISH PAINT,TBD Architectural Finishes,JAMES LEE,INTERIORS,2025-11-21 07:00,2025-11-21 07:00,,,2025-11-21 07:00,2025-11-21 07:00,2025-12-05 17:00,2025-12-05 17:00,0,0,0
CN.SWA3.1240,INSTALL METAL STAIRS - STAIR #2 - 11/ - ALL LEVELS,Complete,SWA - 3,West Support Building,SUWS-3 - 12-9,INTERIOR STAIR TOWER - STAIR #2 (CLEAN ROOM),,CONSTRUCTION,W&W,INSULATED METAL PANELS,JAMES LIVELY,INTERIORS,2024-07-26 07:00,2024-08-19 17:00,2024-03-11 07:00,2024-04-22 17:00,2025-11-20 17:00,2025-11-20 17:00,2025-11-12 07:00,2025-11-12 07:00,0,150,100
CN.SWA3.1250,DS STEEL SPRAY FIREPROOFING SFRM - SWA3 - L4&L5 CEILING - GL 9-12 - J-L,Complete,SWA - 3,West Support Building,SUWS-3 - 12-9,L4 - SUP Roof - FAB Roof,DS/AD INTERIORS,CONSTRUCTION,ROLLING PLAINS,Fireproofing,HOON WOO,,2024-09-13 07:00,2024-09-30 17:00,2024-09-13 07:00,2024-09-24 17:00,2025-11-20 17:00,2025-11-20 17:00,2025-12-05 17:00,2025-12-05 17:00,0,100,100
CN.SWA3.1270,PH1- CURE SOMD - SWA-3-L2,Complete,SWA - 3,West Support Building,SUWS-3 - 12-9,L2 - SubFab Level,,CONSTRUCTION,,Pour Concrete,JAMES LEE,,2023-08-01 13:00,2023-08-03 17:00,2023-07-26 01:55,2023-07-28 04:00,2025-11-20 17:00,2025-11-20 17:00,2025-09-04 07:00,2025-09-04 07:00,0,24,100
CN.SWA3.1280,PH1- FRP SLAB - SWA-3-L2,Complete,SWA - 3,West Support Building,SUWS-3 - 12-9,L2 - SubFab Level,,CONSTRUCTION,,SOMD,CONCRETE,,2023-07-31 07:00,2023-08-01 13:00,2023-07-22 08:00,2023-07-25 17:00,2025-11-20 17:00,2025-11-20 17:00,2025-09-04 07:00,2025-09-04 07:00,0,16,100
CN.SWA3.1290,PH1- DECKING GL 12 - 11 - SWA-3-ROOF,Complete,SWA - 3,West Support Building,SUWS-3 - 12-9,L4 - SUP Roof - FAB Roof,,CONSTRUCTION,,Decking & Detail,SEAN MONK,SOMD / Roofing / Waterproofing,2023-09-05 07:00,2023-09-06 13:00,2023-09-03 07:00,2023-09-04 15:00,2025-11-20 17:00,2025-11-20 17:00,2025-06-13 08:00,2025-06-13 08:00,0,16,100
CN.SWA3.1300,PH1- DECKING GL 12 - 11 - SWA-3-L3,Complete,SWA - 3,West Support Building,SUWS-3 - 12-9,L3 / Waffle Slab Level,,CONSTRUCTION,,Decking & Detail,SEAN MONK,,2023-07-03 07:00,2023-07-06 13:00,2023-07-03 07:00,2023-07-08 16:00,2025-11-20 17:00,2025-11-20 17:00,2025-06-13 08:00,2025-06-13 08:00,0,16,100
CN.SWA3.1310,PH1- DECKING GL 12 - 11 - SWA-3-L2,Complete,SWA - 3,West Support Building,SUWS-3 - 12-9,L2 - SubFab Level,,CONSTRUCTION,,Decking & Detail,SEAN MONK,,2023-07-11 07:00,2023-07-12 13:00,2023-07-11 07:00,2023-07-12 13:00,2025-11-20 17:00,2025-11-20 17:00,2025-06-13 08:00,2025-06-13 08:00,0,16,100
CN.SEA1.2350,PH1- MEP EQPT PADS (REBAR)- SWA-3 ROOF GL 12-9 L-N,Complete,SWA - 3,West Support Building,SUWS-3 - 12-9,L4 - SUP Roof - FAB Roof,,CONSTRUCTION,,OAC/ MECH PADS,CONCRETE,SOMD / Roofing / Waterproofing,2023-11-11 13:00,2023-11-13 09:00,2023-11-11 13:00,2023-11-13 12:00,2025-11-20 17:00,2025-11-20 17:00,2025-11-25 07:00,2025-11-25 07:00,0,16,100
CN.SEA1.2360,PH1- MEP EQPT PADS (PLACE CONCRETE - BLOCK)- SWA-3-ROOF GL 12-9 L-N,Complete,SWA - 3,West Support Building,SUWS-3 - 12-9,L4 - SUP Roof - FAB Roof,,CONSTRUCTION,,OAC/ MECH PADS,CONCRETE,SOMD / Roofing / Waterproofing,2023-11-14 09:00,2023-11-14 17:00,2023-11-14 09:00,2023-11-14 17:00,2025-11-20 17:00,2025-11-20 17:00,2025-11-25 07:00,2025-11-25 07:00,0,8,100
CN.SEA1.2370,PH1- MEP EQPT PADS (STRIP / PATCH - BLOCK)- SWA-3-ROOF GL 12-9 L-N,Complete,SWA - 3,West Support Building,SUWS-3 - 12-9,L4 - SUP Roof - FAB Roof,,CONSTRUCTION,,OAC/ MECH PADS,CONCRETE,SOMD / Roofing / Waterproofing,2023-11-20 08:00,2023-11-20 16:00,2023-11-20 08:00,2023-11-20 16:00,2025-11-20 17:00,2025-11-20 17:00,2025-11-25 07:00,2025-11-25 07:00,0,8,100
CN.SEA3.1360,PH1-CIP WALL (DS)- SWA-3,Complete,SWA - 3,West Support Building,SUWS-3 - 12-9,L4 - SUP Roof - FAB Roof,,CONSTRUCTION,,CIP WALL,CONCRETE,SOMD / Roofing / Waterproofing,2023-10-30 07:00,2023-11-03 11:00,2023-10-03 07:00,2023-10-08 16:00,2025-11-20 17:00,2025-11-20 17:00,2025-11-25 07:00,2025-11-25 07:00,0,24,100
CN.SEA1.2380,PH1- MEP EQPT PADS (INSTALL DRAIN MATS)- SWA-3-ROOF GL 12-9 L-N,Complete,SWA - 3,West Support Building,SUWS-3 - 12-9,L4 - SUP Roof - FAB Roof,,CONSTRUCTION,,Waterproofing - Preferred,JAMES LIVELY,SOMD / Roofing / Waterproofing,2023-11-09 07:00,2023-11-10 13:00,2023-11-09 07:00,2023-11-10 13:00,2025-11-20 17:00,2025-11-20 17:00,2025-11-25 07:00,2025-11-25 07:00,0,16,100
CN.SWA3.1320,PH1- WATERPROOFING - SWA-3-L3,Complete,SWA - 3,West Support Building,SUWS-3 - 12-9,L3 / Waffle Slab Level,,CONSTRUCTION,,Waterproofing - Preferred,JAMES LIVELY,SOMD / Roofing / Waterproofing,2023-10-16 07:00,2023-10-17 13:00,2023-07-31 07:00,2023-08-02 13:00,2025-11-20 17:00,2025-11-20 17:00,2025-09-04 07:00,2025-09-04 07:00,0,16,100
CN.SWA3.1340,PH1- WATERPROOFING - SWA-3-L1- GAS PURIFER NORTH,Complete,SWA - 3,West Support Building,SUWS-3 - 12-9,L1 - Fndn Slab,GAS PURIFIER RM,CONSTRUCTION,,Waterproofing - Preferred,JAMES LIVELY,SOMD / Roofing / Waterproofing,2023-10-17 13:00,2023-10-19 09:00,2023-07-29 13:00,2023-07-31 09:00,2025-11-20 17:00,2025-11-20 17:00,2025-09-04 07:00,2025-09-04 07:00,0,16,100
CN.SWA3.1370,PH1- TOPPING SLAB w TRENCH & ANGLE EMBEDS- SWA-3-L1- GAS PURIFER NORTH,Complete,SWA - 3,West Support Building,SUWS-3 - 12-9,L1 - Fndn Slab,GAS PURIFIER RM,CONSTRUCTION,,TOPPING,CONCRETE,SOMD / Roofing / Waterproofing,2023-10-30 07:00,2023-11-03 11:00,2023-08-08 07:00,2023-08-11 07:00,2025-11-20 17:00,2025-11-20 17:00,2025-09-04 07:00,2025-09-04 07:00,0,24,100
CN.SWA3.1380,PH1- DS/AD DECKING & DETAILING GL 12 - 9 DS/AD SWA-3 L6 GL 12-9 L-J,Complete,SWA - 3,West Support Building,SUWS-3 - 12-9,DS/AD,,CONSTRUCTION,,Decking & Detail,SEAN MONK,,2023-12-09 08:00,2023-12-14 08:00,2023-12-09 08:00,2023-12-12 17:00,2025-11-20 17:00,2025-11-20 17:00,2025-06-13 08:00,2025-06-13 08:00,0,40,100
CN.SWA3.1390,PH1- DS/AD FRP SLAB - DS/AD SWA-3 -  L4/E GL 12-9 L-J,Complete,SWA - 3,West Support Building,SUWS-3 - 12-9,DS/AD,,CONSTRUCTION,,SOMD,CONCRETE,,2024-02-06 08:00,2024-02-08 12:00,2024-02-06 08:00,2024-02-08 12:00,2025-11-20 17:00,2025-11-20 17:00,2025-06-13 08:00,2025-06-13 08:00,0,14,100
CN.SWA3.1400,AD WATERPROOFING - SWA3 - GL 12-9 - J-K - L4/E,Complete,SWA - 3,West Support Building,SUWS-3 - 12-9,DS/AD,,CONSTRUCTION,BRAZOS,Waterproofing - Preferred,JAMES LIVELY,,2024-07-22 07:00,2024-08-05 17:00,2024-07-13 07:00,2024-07-18 17:00,2025-11-20 17:00,2025-11-20 17:00,2025-12-05 17:00,2025-12-05 17:00,0,110,100
CN.SWA3.1410,AD TOPPING SLAB - SWA3 - GL 12-9 - J-K - L4/E,Complete,SWA - 3,West Support Building,SUWS-3 - 12-9,DS/AD,,CONSTRUCTION,BAKER,Roofing,CONCRETE,,2024-08-01 07:00,2024-08-06 17:00,2024-07-19 07:00,2024-07-23 17:00,2025-11-20 17:00,2025-11-20 17:00,2025-12-05 17:00,2025-12-05 17:00,0,40,100
TIER23. 105W,TIER 2 GROUT PRECAST COLUMNS & BEAMS - SWA3,Complete,SWA - 3,West Support Building,SUWS-3 - 12-9,L4 - SUP Roof - FAB Roof,,CONSTRUCTION,,"SUP WEST N,M",SEAN MONK,,2023-07-31 07:00,2023-08-12 10:00,2023-07-31 07:00,2023-08-08 17:00,2025-11-20 17:00,2025-11-20 17:00,2025-06-13 08:00,2025-06-13 08:00,0,113,100
CN.SWA3.1420,PH1- DECKING GL 11 - 10 - SWA-3-L2-,Complete,SWA - 3,West Support Building,SUWS-3 - 12-9,L2 - SubFab Level,,CONSTRUCTION,,Decking & Detail,SEAN MONK,,2023-07-12 13:00,2023-07-14 09:00,2023-07-12 13:00,2023-07-14 09:00,2025-11-20 17:00,2025-11-20 17:00,2025-06-13 08:00,2025-06-13 08:00,0,16,100
CN.SWA3.1430,PH1- DECKING GL 10 - 9 - SWA-3-L2,Complete,SWA - 3,West Support Building,SUWS-3 - 12-9,L2 - SubFab Level,,CONSTRUCTION,,Decking & Detail,SEAN MONK,,2023-07-14 09:00,2023-07-15 15:00,2023-07-14 09:00,2023-07-15 16:00,2025-11-20 17:00,2025-11-20 17:00,2025-06-13 08:00,2025-06-13 08:00,0,16,100
CN.SWA3.1440,PH1- DECKING GL 11 - 10 - SWA-3-L3,Complete,SWA - 3,West Support Building,SUWS-3 - 12-9,L3 / Waffle Slab Level,,CONSTRUCTION,,Decking & Detail,SEAN MONK,,2023-07-06 13:00,2023-07-08 09:00,2023-07-06 13:00,2023-07-11 17:00,2025-11-20 17:00,2025-11-20 17:00,2025-06-13 08:00,2025-06-13 08:00,0,16,100
CN.SWA3.1450,PH1- DECKING GL 10 - 9 - SWA-3-L3,Complete,SWA - 3,West Support Building,SUWS-3 - 12-9,L3 / Waffle Slab Level,,CONSTRUCTION,,Decking & Detail,SEAN MONK,,2023-07-08 10:00,2023-07-09 16:00,2023-07-12 10:00,2023-07-20 17:00,2025-11-20 17:00,2025-11-20 17:00,2025-06-13 08:00,2025-06-13 08:00,0,16,100
CN.SWA3.1460,PH1- DECKING GL 11 - 10 - SWA-3-ROOF,Complete,SWA - 3,West Support Building,SUWS-3 - 12-9,L4 - SUP Roof - FAB Roof,,CONSTRUCTION,,Decking & Detail,SEAN MONK,SOMD / Roofing / Waterproofing,2023-09-05 07:00,2023-09-05 15:00,2023-09-05 07:00,2023-09-05 15:00,2025-11-20 17:00,2025-11-20 17:00,2025-11-24 07:00,2025-11-24 07:00,0,8,100
CN.SWA3.1470,PH1- DECKING GL 10 - 9 - SWA-3-ROOF,Complete,SWA - 3,West Support Building,SUWS-3 - 12-9,L4 - SUP Roof - FAB Roof,,CONSTRUCTION,,Decking & Detail,SEAN MONK,SOMD / Roofing / Waterproofing,2023-09-05 15:00,2023-09-07 11:00,2023-09-05 15:00,2023-09-06 13:00,2025-11-20 17:00,2025-11-20 17:00,2025-11-24 07:00,2025-11-24 07:00,0,16,100
CN.SWA3.1480,PH1- DS/AD DECKING & DETAILING  DS/AD SWA-3  L4 & L4/E  GL 12-9 L-J,Complete,SWA - 3,West Support Building,SUWS-3 - 12-9,DS/AD,,CONSTRUCTION,,Decking & Detail,SEAN MONK,,2024-01-19 07:00,2024-01-20 13:00,2024-01-19 07:00,2024-01-23 13:00,2025-11-20 17:00,2025-11-20 17:00,2025-06-13 08:00,2025-06-13 08:00,0,16,100
CN.AB.AR.4480,DRYWALL 2 SIDE - SWA-3 - L1- GAS PURIFER NORTH GL 12-9 L-N,Complete,SWA - 3,West Support Building,SUWS-3 - 12-9,L1 - Fndn Slab,GAS PURIFIER RM,CONSTRUCTION,,DRYWALL,AMBER CARO,INTERIORS,2024-02-01 13:00,2024-02-03 09:00,2024-02-01 13:00,2024-02-03 14:00,2025-11-20 17:00,2025-11-20 17:00,2025-12-01 07:00,2025-12-01 07:00,0,16,100
CN.AB.AR.4490,DRYWALL & INSULATION (1 side) (INT) - SWA-3 - L1- GAS PURIFER NORTH,Complete,SWA - 3,West Support Building,SUWS-3 - 12-9,L1 - Fndn Slab,GAS PURIFIER RM,CONSTRUCTION,,DRYWALL,AMBER CARO,INTERIORS,2023-08-28 09:00,2023-09-02 09:00,2023-08-28 09:00,2023-09-02 10:00,2025-11-20 17:00,2025-11-20 17:00,2025-12-01 07:00,2025-12-01 07:00,0,40,100
CN.SWA3.1500,PH1- DS STEEL FRAME INSTALL - SWA-3 Comeback Sup Side,Complete,SWA - 3,West Support Building,SUWS-3 - 12-9,DS/AD,,CONSTRUCTION,,Steel Erection,SEAN MONK,,2023-10-12 07:00,2023-10-13 13:00,2023-10-12 07:00,2023-10-13 13:00,2025-11-20 17:00,2025-11-20 17:00,2025-06-13 08:00,2025-06-13 08:00,0,16,100
CN.SWA3.1510,PH1- EXTERIOR CURBS - SWA-3-L1- GAS PURIFER NORTH,Complete,SWA - 3,West Support Building,SUWS-3 - 12-9,L1 - Fndn Slab,GAS PURIFIER RM,CONSTRUCTION,,Pour Concrete,JAMES LEE,SOMD / Roofing / Waterproofing,2023-10-24 07:00,2023-10-29 15:00,2023-10-18 11:00,2023-10-20 17:00,2025-11-20 17:00,2025-11-20 17:00,2025-09-04 07:00,2025-09-04 07:00,0,48,100
CN.SWA3.1520,PH1- MEP PADS - SWA-3-L1- GAS PURIFER NORTH,Complete,SWA - 3,West Support Building,SUWS-3 - 12-9,L1 - Fndn Slab,GAS PURIFIER RM,CONSTRUCTION,,Pour Concrete,JAMES LEE,SOMD / Roofing / Waterproofing,2023-10-30 07:00,2023-11-05 15:00,2023-10-24 07:00,2023-10-26 17:00,2025-11-20 17:00,2025-11-20 17:00,2025-12-01 07:00,2025-12-01 07:00,0,48,100
CN.AB.AR.5170,METAL STUD FRAMING (2hr) - SWA-3 - L2- ELECTRICAL ROOM,Complete,SWA - 3,West Support Building,SUWS-3 - 12-9,L2 - SubFab Level,ELECTRIC RM 1,CONSTRUCTION,BERG,TBD Architectural Finishes,AMBER CARO,INTERIORS,2023-10-16 07:00,2023-10-19 17:00,2023-10-16 07:00,2023-10-20 17:00,2025-11-20 17:00,2025-11-20 17:00,2025-12-03 07:00,2025-12-03 07:00,0,40,100
CN.AB.AR.5180,MEP ROUGH IN & INSPECTION (by SECAI) - SWA-3 - L2- ELECTRICAL ROOM,Complete,SWA - 3,West Support Building,SUWS-3 - 12-9,L2 - SubFab Level,ELECTRIC RM 1,CONSTRUCTION,,Owner & Design Team,AMBER CARO,,2023-10-27 07:00,2023-10-27 15:00,2023-10-27 07:00,2023-10-27 15:00,2025-11-20 17:00,2025-11-20 17:00,2025-12-05 17:00,2025-12-05 17:00,0,8,100
CN.AB.AR.5210,TAPE & FINISH DRYWALL - SWA-3 - L2- ELECTRICAL ROOM- GL 12-9,Complete,SWA - 3,West Support Building,SUWS-3 - 12-9,L2 - SubFab Level,ELECTRIC RM 1,CONSTRUCTION,,DRYWALL,AMBER CARO,INTERIORS,2023-12-22 10:00,2024-01-03 15:00,2023-12-22 10:00,2023-12-29 17:00,2025-11-20 17:00,2025-11-20 17:00,2025-12-05 17:00,2025-12-05 17:00,0,40,100
CN.AB.AR.5250,INSTALL WALL PROTECTION - STAIR 1 - GL 10-11 - K-L - L2,Not Started,SWA - 3,West Support Building,SUWS-3 - 12-9,L2 - SubFab Level,DS/AD INTERIORS,CONSTRUCTION,BERNCO,TBD Architectural Finishes,JAMES LEE,INTERIORS,2025-12-29 15:00,2026-01-02 15:00,,,2025-12-29 15:00,2026-01-02 15:00,2025-12-03 07:00,2025-12-05 17:00,30,30,0
CN.AB.AR.5220,FINISH PAINT - ELECTRICAL ROOM - SWA3 - GL 12-9 - L-N - L2,Not Started,SWA - 3,West Support Building,SUWS-3 - 12-9,L2 - SubFab Level,ELECTRIC RM 1,CONSTRUCTION,FINISH PAINT,TBD Architectural Finishes,JAMES LEE,INTERIORS,2025-11-21 07:00,2025-11-21 17:00,,,2025-11-21 07:00,2025-11-21 17:00,2025-12-05 07:00,2025-12-05 17:00,10,10,0
CN.AB.AR.5200,DRYWALL 2 SIDE - SWA-3 - L2- ELECTRICAL ROOM- GL 12-9 L-N,Complete,SWA - 3,West Support Building,SUWS-3 - 12-9,L2 - SubFab Level,ELECTRIC RM 1,CONSTRUCTION,,DRYWALL,AMBER CARO,INTERIORS,2023-12-18 07:00,2023-12-21 17:00,2023-12-18 07:00,2023-12-21 17:00,2025-11-20 17:00,2025-11-20 17:00,2025-12-05 17:00,2025-12-05 17:00,0,40,100
CN.AB.AR.5190,DRYWALL & INSULATION (1 side) (INT) - SWA-3 - L2- ELECTRICAL ROOM,Complete,SWA - 3,West Support Building,SUWS-3 - 12-9,L2 - SubFab Level,ELECTRIC RM 1,CONSTRUCTION,,DRYWALL,AMBER CARO,INTERIORS,2023-10-24 07:00,2023-10-28 17:00,2023-10-24 07:00,2023-10-27 10:00,2025-11-20 17:00,2025-11-20 17:00,2025-12-05 17:00,2025-12-05 17:00,0,40,100
CN.AB.AR.5260,METAL STUD FRAMING (2hr) - SWA-3 - L3 - SUB CLEAN ROOM SOUTH- GL 12-9 L-N,Complete,SWA - 3,West Support Building,SUWS-3 - 12-9,L3 / Waffle Slab Level,SUB CLEAN RM,CONSTRUCTION,BERG,TBD Architectural Finishes,AMBER CARO,INTERIORS,2024-01-29 07:00,2024-02-01 17:00,2023-11-26 07:00,2024-01-23 13:00,2025-11-20 17:00,2025-11-20 17:00,2025-11-24 07:00,2025-11-24 07:00,0,40,100
CN.AB.AR.5270,MEP ROUGH IN & INSPECTION (by SECAI) - SWA-3 - L3 - SUB CLEAN ROOM SOUTH- GL 12-9 L-N,Complete,SWA - 3,West Support Building,SUWS-3 - 12-9,L3 / Waffle Slab Level,SUB CLEAN RM,CONSTRUCTION,,TBD Architectural Finishes,AMBER CARO,,2024-02-01 07:00,2024-02-06 17:00,2024-02-01 07:00,2024-02-05 11:00,2025-11-20 17:00,2025-11-20 17:00,2025-11-24 07:00,2025-11-24 07:00,0,40,100
CN.AB.AR.5300,TAPE & FINISH DRYWALL - SUB CLEAN ROOM SOUTH - SWA3 - GL 12-9 - L-N - L3,Complete,SWA - 3,West Support Building,SUWS-3 - 12-9,L3 / Waffle Slab Level,SUB CLEAN RM,CONSTRUCTION,CHERRY COATING,DRYWALL,AMBER CARO,INTERIORS,2024-06-24 07:00,2024-07-01 17:00,2024-06-24 07:00,2025-09-19 17:00,2025-11-20 17:00,2025-11-20 17:00,2025-12-05 17:00,2025-12-05 17:00,0,50,100
CN.AB.AR.5310,FINISH PAINT - SUB CLEAN ROOM SOUTH - SWA3 - GL 12-9 - L-N - L3,Not Started,SWA - 3,West Support Building,SUWS-3 - 12-9,L3 / Waffle Slab Level,SUB CLEAN RM,CONSTRUCTION,FINISH PAINT,TBD Architectural Finishes,JAMES LEE,INTERIORS,2025-11-21 07:00,2025-11-21 07:00,,,2025-11-21 07:00,2025-11-21 07:00,2025-12-05 17:00,2025-12-05 17:00,0,0,0
CN.AB.AR.5290,DRYWALL 2 SIDE - SUB CLEAN ROOM SOUTH - SWA3 - GL 12-9 - L-N - L3,Complete,SWA - 3,West Support Building,SUWS-3 - 12-9,L3 / Waffle Slab Level,SUB CLEAN RM,CONSTRUCTION,BERG,DRYWALL,AMBER CARO,INTERIORS,2024-05-28 07:00,2024-06-04 17:00,2024-05-28 07:00,2025-09-15 17:00,2025-11-20 17:00,2025-11-20 17:00,2025-11-24 07:00,2025-11-24 07:00,0,50,100
CN.AB.AR.5280,DRYWALL & INSULATION (1 side) (INT) - SWA-3 - L3 - SUB CLEAN ROOM SOUTH- GL 12-9 L-N,Complete,SWA - 3,West Support Building,SUWS-3 - 12-9,L3 / Waffle Slab Level,SUB CLEAN RM,CONSTRUCTION,,DRYWALL,AMBER CARO,INTERIORS,2024-02-06 11:00,2024-02-12 11:00,2024-02-06 11:00,2024-02-11 14:00,2025-11-20 17:00,2025-11-20 17:00,2025-11-24 07:00,2025-11-24 07:00,0,40,100
CN.SWA3.1530,IMPACT - DRB-01 ADDITIONAL BEAMS BETWEEN FAB AND AD GL 12 - 9 ROOF,Complete,SWA - 3,,SUWS-3 - 12-9,DS/AD,,CONSTRUCTION,,Roofing,,,2023-11-27 07:00,2023-12-01 17:00,2023-11-20 07:00,2023-11-24 17:00,2025-11-20 17:00,2025-11-20 17:00,2025-06-13 08:00,2025-06-13 08:00,0,40,100
SEC.AR.4510,SECAI - MEP PIPE RACK INSTALL AREA B DS SIDE - SWA3 - L4,Complete,SWA - 3,East Support Building,SUWS-3 - 12-9,L4 - SUP Roof - FAB Roof,,CONSTRUCTION,SECAI,Owner & Design Team,,INTERIORS,2024-08-20 07:00,2024-08-20 17:00,2024-08-20 07:00,2024-08-20 17:00,2025-11-20 17:00,2025-11-20 17:00,2025-12-05 17:00,2025-12-05 17:00,0,10,100
CN.SWA3.1540,REMAINING - CLADDING STEEL  EXTERIOR - SWA-3 L LINE (DS AREA)  GL 12-9 L,Complete,SWA - 3,West Support Building,SUWS-3 - 12-9,EXTERIOR SKIN,,CONSTRUCTION,,INSULATED METAL PANELS,JAMES LIVELY,,2023-12-16 15:00,2023-12-19 09:00,2023-12-16 15:00,2024-01-21 11:00,2025-11-20 17:00,2025-11-20 17:00,2025-11-25 07:00,2025-11-25 07:00,0,24,100
ANC1006,IMPACT - Missing Anchor Rods GL L10 Level 4A (#06),Complete,SWA - 3,West Support Building,SUWS-3 - 12-9,DS/AD,,CONSTRUCTION,,Steel Erection,SEAN MONK,,2023-10-12 11:00,2023-10-14 15:00,2023-10-12 11:00,2023-10-14 16:00,2025-11-20 17:00,2025-11-20 17:00,2025-06-13 08:00,2025-06-13 08:00,0,24,100
EMB1004,IMPACT - Missing Precast Embed J10 and J11 Level 3 - SEQ 1804,Complete,SWA - 3,West Support Building,SUWS-3 - 12-9,DS/AD,,CONSTRUCTION,,Steel Erection,SEAN MONK,,2023-10-09 07:00,2023-10-11 11:00,2023-10-07 07:00,2023-10-12 11:00,2025-11-20 17:00,2025-11-20 17:00,2025-06-13 08:00,2025-06-13 08:00,0,24,100
CN.SWA3.1252,INSTALL CERAMIC TILE (WALLS & FLOOR) - BATHROOM - GL 11-12 - L-N - L1,Complete,SWA - 3,,SUWS-3 - 12-9,L1 - Fndn Slab,BATHROOM,CONSTRUCTION,SPECTRA,TBD Architectural Finishes,,,2025-08-11 07:00,2025-08-15 17:00,2025-08-11 07:00,2025-09-26 07:00,2025-11-20 17:00,2025-11-20 17:00,2025-12-01 07:00,2025-12-01 07:00,0,50,100
CN.SWA3.1442,INSTALL MIRRORS - BATHROOM - GL 11-12 - L-N - L1,Active,SWA - 3,,SUWS-3 - 12-9,L1 - Fndn Slab,BATHROOM,CONSTRUCTION,,TBD Architectural Finishes,,,2025-10-16 07:00,2025-10-22 17:00,2025-10-16 07:00,,2025-11-21 07:00,2025-12-01 17:00,2025-11-20 07:00,2025-11-26 17:00,50,50,0
CN.SWA3.1452,INSTALL COUNTERTOPS - BATHROOM - GL 11-12 - L-N - L1,Complete,SWA - 3,,SUWS-3 - 12-9,L1 - Fndn Slab,BATHROOM,CONSTRUCTION,H2I,TBD Architectural Finishes,,,2025-09-30 07:00,2025-10-06 17:00,2025-09-30 07:00,2025-10-10 07:00,2025-11-20 17:00,2025-11-20 17:00,2025-11-20 07:00,2025-11-20 07:00,0,50,100
CN.SWA3.1550,PH1- DS/AD DECKING & DETAILING - GL 12 - 9 DS/AD SWA-3  L2-L3,Complete,SWA - 3,West Support Building,SUWS-3 - 12-9,DS/AD,,CONSTRUCTION,,Decking & Detail,SEAN MONK,,2023-10-14 08:00,2023-10-24 14:00,2023-10-13 08:00,2023-11-01 16:00,2025-11-20 17:00,2025-11-20 17:00,2025-11-12 07:00,2025-11-12 07:00,0,96,100
CN.SWA3.1560,PH1- DS/AD FRP SLAB - SWA3 - GL 12-9 - L-J - L3,Complete,SWA - 3,West Support Building,SUWS-3 - 12-9,DS/AD,,CONSTRUCTION,BAKER,SOMD,CONCRETE,,2024-05-24 07:00,2024-05-30 17:00,2024-05-14 07:00,2024-05-24 17:00,2025-11-20 17:00,2025-11-20 17:00,2025-11-12 07:00,2025-11-12 07:00,0,30,100
CN.SWA3.1570,AD STEEL PAINT FIREPROOFING IFRM - SWA3 - GL 12-9 - L-J - L2-CEILING,Complete,SWA - 3,West Support Building,SUWS-3 - 12-9,DS/AD,,CONSTRUCTION,ROLLING PLAINS,Fireproofing,HOON WOO,,2024-07-12 07:00,2024-07-19 17:00,2024-06-27 07:00,2024-07-06 17:00,2025-11-20 17:00,2025-11-20 17:00,2025-11-24 07:00,2025-11-24 07:00,0,60,100
CN.SWA3.1212,DRYWALL 2 SIDE - SWA-3 - L1- GAS PURIFER WEST EXTERIOR WALL TEMP- SWA3- GL 12-9 - L-N,Complete,SWA - 3,,SUWS-3 - 12-9,L1 - Fndn Slab,GAS PURIFIER RM,CONSTRUCTION,,DRYWALL,,,2023-11-13 07:00,2023-11-17 17:00,2023-11-13 07:00,2023-11-17 17:00,2025-11-20 17:00,2025-11-20 17:00,2025-12-05 17:00,2025-12-05 17:00,0,40,100
CN.SWA3.1232,METAL STUD FRAMING (2hr)- SWA3- GL 12-9 - L1 - K LINE,Complete,SWA - 3,West Support Building,SUWS-3 - 12-9,L1 - Fndn Slab,DS/AD INTERIORS,CONSTRUCTION,BERG,TBD Architectural Finishes,FIZ DATA CENTER,INTERIORS,2023-11-28 13:00,2023-12-04 11:00,2023-11-28 13:00,2023-12-04 15:00,2025-11-20 17:00,2025-11-20 17:00,2025-11-21 07:00,2025-11-21 07:00,0,48,100
CN.SWA3.1322,TAPE & FINISH DRYWALL - SWA3- GL 12-9 -  L1 - K LINE,Complete,SWA - 3,West Support Building,SUWS-3 - 12-9,L1 - Fndn Slab,DS/AD INTERIORS,CONSTRUCTION,,DRYWALL,FIZ DATA CENTER,INTERIORS,2024-02-19 07:00,2024-02-23 17:00,2024-02-19 07:00,2024-02-23 17:00,2025-11-20 17:00,2025-11-20 17:00,2025-12-05 17:00,2025-12-05 17:00,0,40,100
CN.SWA3.1342,PRIMER & PAINT DRYWALL - GL 12-9 - K LINE - L1,Complete,SWA - 3,West Support Building,SUWS-3 - 12-9,L1 - Fndn Slab,DS/AD INTERIORS,CONSTRUCTION,FINISH PAINT,TBD Architectural Finishes,FIZ DATA CENTER,INTERIORS,2024-10-15 07:00,2024-10-18 17:00,2024-10-15 07:00,2024-10-18 17:00,2025-11-20 17:00,2025-11-20 17:00,2025-12-05 17:00,2025-12-05 17:00,0,30,100
CN.SWA3.1302,DRYWALL 2 SIDE - SWA3- GL 12-9 - L1 - K LINE,Complete,SWA - 3,West Support Building,SUWS-3 - 12-9,L1 - Fndn Slab,DS/AD INTERIORS,CONSTRUCTION,,DRYWALL,FIZ DATA CENTER,INTERIORS,2023-12-28 07:00,2024-01-04 12:00,2023-12-28 07:00,2024-01-26 13:00,2025-11-20 17:00,2025-11-20 17:00,2025-12-05 17:00,2025-12-05 17:00,0,40,100
CN.SWA3.1282,DRYWALL & INSULATION (1 side) (INT) - SWA3- GL 12-9 - L1 - K LINE,Complete,SWA - 3,West Support Building,SUWS-3 - 12-9,L1 - Fndn Slab,DS/AD INTERIORS,CONSTRUCTION,,DRYWALL,FIZ DATA CENTER,INTERIORS,2023-12-04 12:00,2023-12-10 10:00,2023-12-04 12:00,2023-12-08 13:00,2025-11-20 17:00,2025-11-20 17:00,2025-12-05 17:00,2025-12-05 17:00,0,48,100
CN.SWA3.1242,METAL STUD FRAMING (2hr)- SWA3- GL 12-9 - L2 GL 12-9 K LINE,Complete,SWA - 3,West Support Building,SUWS-3 - 12-9,L2 - SubFab Level,DS/AD INTERIORS,CONSTRUCTION,BERG,TBD Architectural Finishes,FIZ DATA CENTER,INTERIORS,2023-12-18 08:00,2023-12-22 16:00,2023-12-18 08:00,2024-01-25 11:00,2025-11-20 17:00,2025-11-20 17:00,2025-11-24 07:00,2025-11-24 07:00,0,48,100
CN.SWA3.1332,REMEDY - TAPE & FINISH DRYWALL - SWA3 - GL 12-9 - K LINE - L2,Complete,SWA - 3,West Support Building,SUWS-3 - 12-9,L2 - SubFab Level,DS/AD INTERIORS,CONSTRUCTION,CHERRY COATING,DRYWALL,FIZ DATA CENTER,INTERIORS,2024-08-12 07:00,2024-08-15 17:00,2024-08-12 07:00,2024-08-15 17:00,2025-11-20 17:00,2025-11-20 17:00,2025-11-24 07:00,2025-11-24 07:00,0,30,100
CN.SWA3.1352,FINISH PAINT - SWA3 - GL 12-9 - K LINE - L2,Not Started,SWA - 3,West Support Building,SUWS-3 - 12-9,L2 - SubFab Level,DS/AD INTERIORS,CONSTRUCTION,FINISH PAINT,TBD Architectural Finishes,FIZ DATA CENTER,INTERIORS,2025-11-21 07:00,2025-11-21 07:00,,,2025-11-21 07:00,2025-11-21 07:00,2025-12-05 17:00,2025-12-05 17:00,0,0,0
CN.SWA3.1312,REMEDY - FRAME & DRYWALL - SWA3-  GL 12-9 - K LINE - L2,Complete,SWA - 3,West Support Building,SUWS-3 - 12-9,L2 - SubFab Level,DS/AD INTERIORS,CONSTRUCTION,BERG,DRYWALL,FIZ DATA CENTER,INTERIORS,2024-07-15 07:00,2024-08-02 17:00,2024-07-15 07:00,2024-08-05 17:00,2025-11-20 17:00,2025-11-20 17:00,2025-11-24 07:00,2025-11-24 07:00,0,150,100
CN.SWA3.1292,DRYWALL & INSULATION (1 side) (INT) - SWA3- GL 12-9 K LINE - L2,Complete,SWA - 3,West Support Building,SUWS-3 - 12-9,L2 - SubFab Level,DS/AD INTERIORS,CONSTRUCTION,,DRYWALL,FIZ DATA CENTER,INTERIORS,2024-02-22 14:00,2024-02-27 12:00,2023-12-22 14:00,2024-01-25 11:00,2025-11-20 17:00,2025-11-20 17:00,2025-11-24 07:00,2025-11-24 07:00,0,48,100
CN.AB.AR.6100,TEMP WALLS Framing and Drywall,Complete,SWA - 3,,SUWS-3 - 12-9,L2 - SubFab Level,ELECTRIC RM 1,CONSTRUCTION,,DRYWALL,,,2023-10-09 08:00,2023-10-13 08:00,2023-10-09 08:00,2023-10-13 16:00,2025-11-20 17:00,2025-11-20 17:00,2025-11-24 07:00,2025-11-24 07:00,0,40,100
CN.SWA3.1580,PH1 -WELD CLIPS - CLADDING STEEL- SWA-3 L LINE (DS AREA),Complete,SWA - 3,West Support Building,SUWS-3 - 12-9,EXTERIOR SKIN,,CONSTRUCTION,,INSULATED METAL PANELS,JAMES LIVELY,,2023-11-03 08:00,2023-11-04 10:00,2023-11-03 08:00,2023-11-04 11:00,2025-11-20 17:00,2025-11-20 17:00,2025-11-25 07:00,2025-11-25 07:00,0,12,100
CN.SWA3.1490,IMPACT - DS STEEL BEAM STIFFNER CONNECTION FIXES L4 GL 12-9 L-J,Complete,SWA - 3,,SUWS-3 - 12-9,DS/AD,,CONSTRUCTION,,Steel Erection,,,2023-12-21 11:00,2024-01-02 13:00,2023-12-21 11:00,2024-01-15 17:00,2025-11-20 17:00,2025-11-20 17:00,2025-06-13 08:00,2025-06-13 08:00,0,40,100
CN.SWA3.1372,IMPACT - SECAI MEP SPRINKLER OBSTRUCTION L2 & L3 - ELEVATOR 2,Complete,SWA - 3,West Support Building,SUWS-3 - 12-9,,ELEVATOR,CONSTRUCTION,W&W,TBD Architectural Finishes,,INTERIORS,2024-10-01 07:00,2024-10-11 17:00,2024-10-09 07:00,2024-11-21 17:00,2025-11-20 17:00,2025-11-20 17:00,2025-12-05 07:00,2025-12-05 07:00,0,70,100
CN.SWA3.1362,METAL STUD FRAMING (2hr) - SWA3- GL 12-9 K LINE- L3,Complete,SWA - 3,West Support Building,SUWS-3 - 12-9,L3 / Waffle Slab Level,DS/AD INTERIORS,CONSTRUCTION,BERG,TBD Architectural Finishes,FIZ DATA CENTER,INTERIORS,2024-05-04 07:00,2024-05-06 13:00,2024-03-05 00:00,2024-03-11 00:00,2025-11-20 17:00,2025-11-20 17:00,2025-06-13 08:00,2025-06-13 08:00,0,16,100
CN.SWA3.1422,TAPE & FINISH DRYWALL - SWA3 - GL 12-9 - K LINE - L3,Complete,SWA - 3,West Support Building,SUWS-3 - 12-9,L3 / Waffle Slab Level,DS/AD INTERIORS,CONSTRUCTION,CHERRY COATING,DRYWALL,FIZ DATA CENTER,INTERIORS,2024-05-20 07:00,2024-05-24 17:00,2024-05-20 07:00,2024-05-24 17:00,2025-11-20 17:00,2025-11-20 17:00,2025-06-13 08:00,2025-06-13 08:00,0,40,100
CN.SWA3.1432,D/S SGP Wall Turnover - SWA3 - GL 12-9 - K LINE - L3,Complete,SWA - 3,West Support Building,SUWS-3 - 12-9,L3 / Waffle Slab Level,DS/AD INTERIORS,CONSTRUCTION,,TBD Architectural Finishes,FIZ DATA CENTER,INTERIORS,2024-05-24 07:00,2024-05-24 17:00,2024-05-24 07:00,2024-05-24 17:00,2025-11-20 17:00,2025-11-20 17:00,2025-06-13 08:00,2025-06-13 08:00,0,10,100
CN.SWA3.1412,DRYWALL 2 SIDE - SWA3 - GL 11.5-9 - K LINE - L3,Complete,SWA - 3,West Support Building,SUWS-3 - 12-9,L3 / Waffle Slab Level,DS/AD INTERIORS,CONSTRUCTION,BERG,DRYWALL,FIZ DATA CENTER,INTERIORS,2024-05-13 07:00,2024-05-17 17:00,2024-05-13 07:00,2024-05-17 17:00,2025-11-20 17:00,2025-11-20 17:00,2025-06-13 08:00,2025-06-13 08:00,0,40,100
CN.SWA3.1392,DRYWALL & INSULATION (1 side) (INT) - SWA3- GL 12-9 K LINE- L3,Complete,SWA - 3,West Support Building,SUWS-3 - 12-9,L3 / Waffle Slab Level,DS/AD INTERIORS,CONSTRUCTION,,DRYWALL,FIZ DATA CENTER,INTERIORS,2024-05-04 07:00,2024-05-07 11:00,2024-03-13 00:00,2024-03-22 16:00,2025-11-20 17:00,2025-11-20 17:00,2025-06-13 08:00,2025-06-13 08:00,0,24,100
CN.SWA3.1402,INSTALL DRYWALL & FIRE CAULKING (SHAFT LINER) SHAFT - ELEVATOR 2 - SWA3 - GL12-9 - ALL LEVELS,Complete,SWA - 3,West Support Building,SUWS-3 - 12-9,,ELEVATOR,CONSTRUCTION,BERG,DRYWALL,,INTERIORS,2025-07-11 07:00,2025-08-18 17:00,2025-08-05 07:00,2025-10-31 17:00,2025-11-20 17:00,2025-11-20 17:00,2025-12-05 07:00,2025-12-05 07:00,0,270,100
CN.SWA3.1650,GROUT & PATCH - SWA3 - L3 - GL 12-9 L-N,Complete,SWA - 3,West Support Building,SUWS-3 - 12-9,L3 / Waffle Slab Level,SUB CLEAN RM,CONSTRUCTION,,TBD Architectural Finishes,FIZ DATA CENTER,INTERIORS,2024-02-12 08:00,2024-02-13 14:00,2024-02-12 08:00,2024-02-13 14:00,2025-11-20 17:00,2025-11-20 17:00,2025-12-04 17:00,2025-12-04 17:00,0,16,100
CN.SWA3.1660,"PRIME, PATCH & TOPCOAT PRECAST BEAMS - SUB CLEAN ROOM SOUTH - SWA3 - GL 12-9 - L-N - L3",Complete,SWA - 3,West Support Building,SUWS-3 - 12-9,L3 / Waffle Slab Level,SUB CLEAN RM,CONSTRUCTION,CHERRY COATING,TBD Architectural Finishes,FIZ DATA CENTER,INTERIORS,2024-06-17 07:00,2024-06-27 17:00,2024-06-15 07:00,2024-07-17 17:00,2025-11-20 17:00,2025-11-20 17:00,2025-12-05 17:00,2025-12-05 17:00,0,70,100
CN.SWA3.1590,PH1- DS/AD FRP SLAB - DS/AD SWA-3 L6 GL 12-9 L-J,Complete,SWA - 3,,SUWS-3 - 12-9,DS/AD,,CONSTRUCTION,,SOMD,,,2023-12-14 07:00,2023-12-16 11:00,2023-12-14 07:00,2023-12-16 12:00,2025-11-20 17:00,2025-11-20 17:00,2025-06-13 08:00,2025-06-13 08:00,0,24,100
CN.SWA3.1630,PH1- DS/AD CURE FRP SLAB - DS/AD SWA-3  L6 GL 12-9 L-J,Complete,SWA - 3,,SUWS-3 - 12-9,DS/AD,,CONSTRUCTION,,SOMD,,,2023-12-17 08:00,2023-12-19 12:00,2023-12-17 08:00,2023-12-19 13:00,2025-11-20 17:00,2025-11-20 17:00,2025-06-13 08:00,2025-06-13 08:00,0,24,100
CN.SWA3.1210,DETAIL & INSPECT CLADDING STEEL - SWA 3 GL 12-9 N,Complete,SWA - 3,,SUWS-3 - 12-9,EXTERIOR SKIN,,CONSTRUCTION,,INSULATED METAL PANELS,,,2024-01-02 09:00,2024-01-14 16:00,2024-01-10 07:00,2024-01-14 16:00,2025-11-20 17:00,2025-11-20 17:00,2025-12-05 07:00,2025-12-05 07:00,0,96,100
CN.SWA3.1260,INSTALL INSULATED METAL PANEL MODULES - GL 12-9 - K LINE (AD AREA),Complete,SWA - 3,,SUWS-3 - 12-9,EXTERIOR SKIN,,CONSTRUCTION,KOVACH,INSULATED METAL PANELS,,,2024-06-21 07:00,2024-06-25 17:00,2024-06-13 07:00,2024-06-17 17:00,2025-11-20 17:00,2025-11-20 17:00,2025-11-25 07:00,2025-11-25 07:00,0,50,100
EMB6070,IMPACT [S.TIA-16] - Missing Precast Embed L12 and L11 3F L2A SEQ. 1803,Complete,SWA - 3,West Support Building,SUWS-3 - 12-9,DS/AD,,CONSTRUCTION,SECAI,Steel Erection,SEAN MONK,,2023-11-27 07:00,2023-12-08 17:00,2023-11-20 07:00,2024-05-13 17:00,2025-11-20 17:00,2025-11-20 17:00,2025-11-12 07:00,2025-11-12 07:00,0,80,100
CN.SWA3.1670,IMPACT - ABR EXCAVATION FOR MEP TEAM (CRANE MATS REMOVED) - GL 12-9 N,Complete,SWA - 3,West Support Building,SUWS-3 - 12-9,EXTERIOR SKIN,,CONSTRUCTION,,INSULATED METAL PANELS,JAMES LIVELY,,2023-11-13 07:00,2023-11-21 17:00,2023-11-13 07:00,2024-01-05 16:00,2025-11-20 17:00,2025-11-20 17:00,2025-09-04 07:00,2025-09-04 07:00,0,80,100
CN.SWA3.1680,KNEE WALL -SWA 3 - GL 12-9 - L4 - J-K -DS/AD,Complete,SWA - 3,,SUWS-3 - 12-9,DS/AD,,CONSTRUCTION,,Cast-in Place Concrete - Baker Concrete,,,2024-02-10 08:00,2024-02-14 08:00,2024-02-10 08:00,2024-02-12 11:00,2025-11-20 17:00,2025-11-20 17:00,2025-11-25 07:00,2025-11-25 07:00,0,40,100
CN.SWA3.1690,PH1 - CLADDING STEEL  EXTERIOR - SWA-3 L LINE (DS AREA)  GL 12-9 L,Complete,SWA - 3,West Support Building,SUWS-3 - 12-9,EXTERIOR SKIN,,CONSTRUCTION,,INSULATED METAL PANELS,JAMES LIVELY,,2023-11-02 07:00,2023-11-09 09:00,2023-11-02 07:00,2023-11-22 17:00,2025-11-20 17:00,2025-11-20 17:00,2025-11-25 07:00,2025-11-25 07:00,0,72,100
CN.SWA3.1700,DS/AD STEEL SPRAY FIREPROOFING SFRM - SWA3 - GL 12-9 - L-J - L1 CEILING,Complete,SWA - 3,West Support Building,SUWS-3 - 12-9,DS/AD,,CONSTRUCTION,ROLLING PLAINS,Fireproofing,HOON WOO,,2024-02-26 07:00,2024-03-01 17:00,2024-02-26 07:00,2024-03-01 17:00,2025-11-20 17:00,2025-11-20 17:00,2025-12-05 17:00,2025-12-05 17:00,0,50,100
CN.SWA3.1710,K-LINE STEEL SPRAY FIREPROOFING SFRM 2 - SWA3 - L3-CEILING - GL 9-12,Complete,SWA - 3,West Support Building,SUWS-3 - 12-9,L4 - SUP Roof - FAB Roof,DS/AD INTERIORS,CONSTRUCTION,ROLLING PLAINS,Fireproofing,HOON WOO,,2024-04-22 07:00,2024-04-26 17:00,2024-04-22 07:00,2024-04-26 17:00,2025-11-20 17:00,2025-11-20 17:00,2025-06-13 08:00,2025-06-13 08:00,0,50,100
CN.SWA3.1730,ROOFTOP DRY PARAPET - SWB-1 (DS AREA) GL 12-9 N (DS AREA),Complete,SWA - 3,West Support Building,SUWS-3 - 12-9,EXTERIOR SKIN,,CONSTRUCTION,,INSULATED METAL PANELS,JAMES LIVELY,,2024-02-19 15:00,2024-02-24 17:00,2024-02-19 15:00,2024-02-23 09:00,2025-11-20 17:00,2025-11-20 17:00,2025-12-05 17:00,2025-12-05 17:00,0,42,100
CN.SWA3.1740,INSTALL INSULATED METAL PANEL MODULES - GL 12-9 - J LINE (AD AREA),Complete,SWA - 3,West Support Building,SUWS-3 - 12-9,DS/AD,,CONSTRUCTION,KOVACH,Waterproofing - Preferred,JAMES LIVELY,,2024-06-30 07:00,2024-07-01 17:00,2024-06-24 07:00,2024-06-24 17:00,2025-11-20 17:00,2025-11-20 17:00,2025-12-05 17:00,2025-12-05 17:00,0,20,100
CN.SWA3.1750,INSTALL TPO ROOFING - SWA3 - GL 10-6 - K-L - L6,Complete,SWA - 3,West Support Building,SUWS-3 - 12-9,L6 - PENTHOUSE / DS ROOF,,CONSTRUCTION,BRAZOS,Waterproofing - Preferred,JAMES LIVELY,,2024-10-01 07:00,2024-10-01 17:00,2024-10-01 07:00,2024-10-04 17:00,2025-11-20 17:00,2025-11-20 17:00,2025-12-05 17:00,2025-12-05 17:00,0,10,100
CN.SWA3.1760,DCC BEAM (STEEL STRUCTURE) - SWA3- GL 12-9 - L3 K LINE,Complete,SWA - 3,West Support Building,SUWS-3 - 12-9,L3 / Waffle Slab Level,DS/AD INTERIORS,CONSTRUCTION,,TBD Architectural Finishes,FIZ DATA CENTER,INTERIORS,2024-01-25 11:00,2024-02-01 13:00,2024-01-25 11:00,2024-02-02 17:00,2025-11-20 17:00,2025-11-20 17:00,2025-06-13 08:00,2025-06-13 08:00,0,72,100
CN.SWA3.1770,TEMPORARY SCAFFOLD PLATFORM - SWA3- GL 12-9 - L3 K LINE,Complete,SWA - 3,West Support Building,SUWS-3 - 12-9,L3 / Waffle Slab Level,DS/AD INTERIORS,CONSTRUCTION,,TBD Architectural Finishes,FIZ DATA CENTER,INTERIORS,2024-01-26 07:00,2024-01-30 15:00,2024-01-26 07:00,2024-02-01 09:00,2025-11-20 17:00,2025-11-20 17:00,2025-06-13 08:00,2025-06-13 08:00,0,48,100
CN.SWA3.1780,SECAI MEP IN WALL ROUGH INS - SWA2 - GL 15-12 - K LINE - L3,Complete,SWA - 3,West Support Building,SUWS-2 - 15-12,L3 / Waffle Slab Level,DS/AD INTERIORS,CONSTRUCTION,SECAI,TBD Architectural Finishes,FIZ DATA CENTER,INTERIORS,2024-05-06 07:00,2024-05-07 17:00,2024-05-06 07:00,2024-05-09 17:00,2025-11-20 17:00,2025-11-20 17:00,2025-06-13 08:00,2025-06-13 08:00,0,20,100
CN.SWA3.1790,Drywall Clips & AMTS Installs Support Beams - SWA-3 L4 GL 12-9 K LINE,Complete,SWA - 3,West Support Building,SUWS-3 - 12-9,L4 - SUP Roof - FAB Roof,DS/AD INTERIORS,CONSTRUCTION,,Fireproofing,HOON WOO,,2024-03-25 07:00,2024-04-03 09:00,2024-03-14 07:00,2024-04-01 17:00,2025-11-20 17:00,2025-11-20 17:00,2025-06-13 08:00,2025-06-13 08:00,0,72,100
CN.SWA3.1800,DS STEEL SPRAY SFRM - SWA3 - GL12-9 - K-L - L3 CEILING,Complete,SWA - 3,West Support Building,SUWS-3 - 12-9,L4 - SUP Roof - FAB Roof,DS/AD INTERIORS,CONSTRUCTION,ROLLING PLAINS,Fireproofing,HOON WOO,,2024-05-24 07:00,2024-06-03 17:00,2024-05-24 07:00,2024-08-15 17:00,2025-11-20 17:00,2025-11-20 17:00,2025-12-05 17:00,2025-12-05 17:00,0,50,100
CN.SWA3.1810,ADD FLANGE EXTENSIONS/ CUT GRATING - SWA-3 L4 GL 12-9 K LINE,Complete,SWA - 3,West Support Building,SUWS-3 - 12-9,L4 - SUP Roof - FAB Roof,DS/AD INTERIORS,CONSTRUCTION,,Fireproofing,HOON WOO,,2024-04-19 07:00,2024-04-23 17:00,2024-04-02 12:00,2024-04-08 17:00,2025-11-20 17:00,2025-11-20 17:00,2025-06-13 08:00,2025-06-13 08:00,0,30,100
CN.SWA3.1820,AD STEEL APPLY INTUMESCENT - SWA3 - GL 9-12 - J-K - L3 CEILING,Complete,SWA - 3,West Support Building,SUWS-3 - 12-9,L4 - SUP Roof - FAB Roof,DS/AD INTERIORS,CONSTRUCTION,ROLLING PLAINS,Fireproofing,HOON WOO,,2024-05-30 07:00,2024-06-06 17:00,2024-05-30 07:00,2024-06-06 17:00,2025-11-20 17:00,2025-11-20 17:00,2025-06-13 08:00,2025-06-13 08:00,0,50,100
CN.SWA3.1830,CURE AD INTUMESCENT PAINT - SWA3 - GL 9-12 - J-K - L4/E,Complete,SWA - 3,West Support Building,SUWS-3 - 12-9,L4 - SUP Roof - FAB Roof,DS/AD INTERIORS,CONSTRUCTION,ROLLING PLAINS,Fireproofing,HOON WOO,,2024-06-06 07:00,2024-06-28 17:00,2024-06-06 07:00,2024-07-08 13:00,2025-11-20 17:00,2025-11-20 17:00,2025-12-05 17:00,2025-12-05 17:00,0,140,100
CN.SWA3.1840,SECAI - AMTS INSTALL UPPER CEILING - SWA3 - GL 12-9 - K LINE - L4,Complete,SWA - 3,West Support Building,SUWS-3 - 12-9,L4 - SUP Roof - FAB Roof,DS/AD INTERIORS,CONSTRUCTION,SECAI,Fireproofing,HOON WOO,,2024-07-29 07:00,2024-08-01 17:00,2024-07-29 07:00,2024-08-01 17:00,2025-11-20 17:00,2025-11-20 17:00,2025-12-05 17:00,2025-12-05 17:00,0,40,100
CN.AB.AR.6770,IMPACT [C3] - BATHROOM PIT HATCH OPENING - SWA-3 - L1 - GL 11 - L-N (Waiting on Hatch framing),Complete,SWA - 3,West Support Building,SUWS-3 - 12-9,L1 - Fndn Slab,BATHROOM,CONSTRUCTION,,DRYWALL,AMBER CARO,INTERIORS,2024-01-04 13:00,2024-01-10 13:00,2024-01-03 13:00,2024-03-25 17:00,2025-11-20 17:00,2025-11-20 17:00,2025-11-20 07:00,2025-11-20 07:00,0,40,100
CN.SWA3.1890,IMPACT [S.TIA-136] - TINDAL FIXES COMPLETION & SECAI TURNOVER TO YATES / WW COMPLETE FIX - L12 BEAM CONNECTIONS - L3,Complete,SWA - 3,,SUWS-3 - 12-9,L3 / Waffle Slab Level,,CONSTRUCTION,SECAI,Steel Erection,,,2023-12-21 11:00,2023-12-29 11:00,2023-12-10 07:00,2024-05-13 17:00,2025-11-20 17:00,2025-11-20 17:00,2025-12-05 07:00,2025-12-05 07:00,0,40,100
CN.AB.AR.6790,REMAINING DRYWALL 2 SIDE - GAS PURIFER NORTH - GL 12-9 - L-N - L1,Complete,SWA - 3,West Support Building,SUWS-3 - 12-9,L1 - Fndn Slab,GAS PURIFIER RM,CONSTRUCTION,BERG,DRYWALL,AMBER CARO,INTERIORS,2024-07-05 07:00,2024-07-08 17:00,2024-07-05 07:00,2024-07-10 17:00,2025-11-20 17:00,2025-11-20 17:00,2025-12-01 07:00,2025-12-01 07:00,0,20,100
CN.SWA3.1910,IMPACT [S.TIA-19] - ELEVATOR 2 HSS SPLICE CONNECTION - SWA3 GL 12-9,Complete,SWA - 3,West Support Building,ELEVATORS,L1 - Fndn Slab,ELEVATOR,PRE - CON / BUYOUT / IMPACTS,,TBD Architectural Finishes,,INTERIORS,2024-05-13 07:00,2024-05-14 13:00,2023-11-20 00:00,2024-02-21 00:00,2025-11-20 17:00,2025-11-20 17:00,2025-12-05 07:00,2025-12-05 07:00,0,16,100
CN.SWA3.1920,INSTALL ELEVATOR HSS STEEL DOOR OPENINGS - ELEVATOR 2,Complete,SWA - 3,West Support Building,SUWS-3 - 12-9,,ELEVATOR,CONSTRUCTION,W&W,DRYWALL,,INTERIORS,2025-06-17 07:00,2025-06-30 17:00,2025-06-17 07:00,2025-06-26 17:00,2025-11-20 17:00,2025-11-20 17:00,2025-12-05 07:00,2025-12-05 07:00,0,100,100
CN.SWA3.1990,IMPACT [S.TIA-44] - INSTALL ELEVATOR 2 PIT PLATFORM STEEL - SEQ#9901 - SWA3 - L1G,Complete,SWA - 3,West Support Building,SUWS-3 - 12-9,,ELEVATOR,CONSTRUCTION,W&W,SOMD,CONCRETE,,2024-06-17 07:00,2024-07-08 17:00,2024-06-19 07:00,2024-07-15 17:00,2025-11-20 17:00,2025-11-20 17:00,2025-12-02 07:00,2025-12-02 07:00,0,120,100
CN.SWA3.2000,FRP ELEVATOR PIT PLATFORM SLABS / CURE - ELEVATOR 2 - SWA3 - L1G,Complete,SWA - 3,West Support Building,SUWS-3 - 12-9,,ELEVATOR,CONSTRUCTION,BAKER,SOMD,CONCRETE,,2024-08-12 07:00,2024-08-20 17:00,2024-08-05 07:00,2024-08-12 17:00,2025-11-20 17:00,2025-11-20 17:00,2025-12-05 07:00,2025-12-05 07:00,0,60,100
CN.SWA3.2020,"PRIME, PATCH & TOPCOAT PRECAST COLUMNS - SUB CLEAN ROOM SOUTH - SWA3 - GL 12-9 - L-N - L3",Complete,SWA - 3,West Support Building,SUWS-3 - 12-9,L3 / Waffle Slab Level,SUB CLEAN RM,CONSTRUCTION,CHERRY COATING,TBD Architectural Finishes,FIZ DATA CENTER,INTERIORS,2024-06-28 07:00,2024-07-11 17:00,2024-06-15 07:00,2024-07-17 17:00,2025-11-20 17:00,2025-11-20 17:00,2025-12-05 17:00,2025-12-05 17:00,0,70,100
CN.SWA3.2050,IMPACT - K-LINE SPRAY FIREPROOFING - SWA-3 - GL 12-9 - SFRM - SWA3 - L3-CEILING - GL 9-12,Complete,SWA - 3,West Support Building,SUWS-3 - 12-9,L4 - SUP Roof - FAB Roof,DS/AD INTERIORS,CONSTRUCTION,ROLLING PLAINS,Fireproofing,HOON WOO,,2024-04-19 07:00,2024-04-23 17:00,2024-04-19 07:00,2024-04-22 17:00,2025-11-20 17:00,2025-11-20 17:00,2025-06-13 08:00,2025-06-13 08:00,0,30,100
CN.AB.AR.6840,IMPACT [C3] - BATHROOM PIT HATCH OPENING (AWAITING CCD 262 EXECUTION SECAI) - SWA-3 - L1 - GL 11 - L-N,Complete,SWA - 3,West Support Building,SUWS-3 - 12-9,L1 - Fndn Slab,BATHROOM,CONSTRUCTION,,DRYWALL,AMBER CARO,INTERIORS,2024-01-04 13:00,2024-01-10 13:00,2024-03-25 07:00,2024-04-15 17:00,2025-11-20 17:00,2025-11-20 17:00,2025-11-20 07:00,2025-11-20 07:00,0,40,100
CN.SWA3.2060,IMPACT [C3 / D10] - INSTALL BATHROOM PIT HATCH OPENING - SWA3 - GL 12-11 - L-N - L1,Complete,SWA - 3,West Support Building,SUWS-3 - 12-9,L1 - Fndn Slab,BATHROOM,CONSTRUCTION,W&W,SOMD,CONCRETE,,2024-05-10 07:00,2024-06-06 17:00,2024-05-15 07:00,2024-06-06 17:00,2025-11-20 17:00,2025-11-20 17:00,2025-11-20 07:00,2025-11-20 07:00,0,150,100
CN.SWA3.2070,SECAI MEP IN WALL ROUGH INS - SWA3 - GL 12-9 - K LINE - L3,Complete,SWA - 3,West Support Building,SUWS-3 - 12-9,L3 / Waffle Slab Level,DS/AD INTERIORS,CONSTRUCTION,SECAI,TBD Architectural Finishes,FIZ DATA CENTER,INTERIORS,2024-05-13 07:00,2024-05-13 17:00,2024-05-13 07:00,2024-05-13 17:00,2025-11-20 17:00,2025-11-20 17:00,2025-06-13 08:00,2025-06-13 08:00,0,10,100
CN.SWA3.2080,IMPACT [D38] - AWAIT SECAI DIRECTION TO PROCEED / DEMO WALLS FOR ACCESS - ELEVATOR 2 - SWA3 - GL 12-9 - L1,Complete,SWA - 3,West Support Building,SUWS-3 - 12-9,,ELEVATOR,CONSTRUCTION,SECAI,DRYWALL,,INTERIORS,2024-04-08 07:00,2024-04-18 07:48,2024-03-25 07:00,2024-06-08 17:00,2025-11-20 17:00,2025-11-20 17:00,2025-12-02 07:00,2025-12-02 07:00,0,60.8,100
CN.SWA3.2090,IMPACT - INSPECT & SURFACE PREP ADDITIONAL AD STEEL FOR INTUMESCENT - SWA3 - GL 9-12 - J-K - L3 CEILING,Complete,SWA - 3,West Support Building,SUWS-3 - 12-9,L4 - SUP Roof - FAB Roof,DS/AD INTERIORS,CONSTRUCTION,ROLLING PLAINS,Fireproofing,HOON WOO,,2024-05-14 07:00,2024-05-21 17:00,2024-05-14 07:00,2024-05-20 17:00,2025-11-20 17:00,2025-11-20 17:00,2025-06-13 08:00,2025-06-13 08:00,0,50,100
CN.SWA3.6700,INSTALL FRAMING FOR IMP - GL 12-9 - J LINE (AD AREA),Complete,SWA - 3,West Support Building,SUWS-3 - 12-9,DS/AD,,CONSTRUCTION,BERG,Waterproofing - Preferred,JAMES LIVELY,,2024-06-07 07:00,2024-06-07 17:00,2024-05-01 07:00,2024-05-14 17:00,2025-11-20 17:00,2025-11-20 17:00,2025-12-05 17:00,2025-12-05 17:00,0,10,100
CN.SWA3.6710,DS STEEL SPRAY FIREPROOFING SFRM - SWA4 - L4&L5 CEILING - GL 6-9 - J-L,Complete,SWA - 3,West Support Building,SUWS-4 - 9-6,L4 - SUP Roof - FAB Roof,DS/AD INTERIORS,CONSTRUCTION,ROLLING PLAINS,Fireproofing,HOON WOO,,2024-10-14 07:00,2024-10-29 17:00,2024-10-14 07:00,2024-10-16 17:00,2025-11-20 17:00,2025-11-20 17:00,2025-12-05 17:00,2025-12-05 17:00,0,100,100
CN.AB.AR.6920,IMPACT - REMOVE AND REINSTALL DAMAGED DRYWALL - SWA3 - GL 9 - L-N - L3,Complete,SWA - 3,West Support Building,SUWS-4 - 9-6,L3 / Waffle Slab Level,FA LAB,CONSTRUCTION,BERG,DRYWALL,AMBER CARO,INTERIORS,2024-05-16 07:00,2024-05-23 17:00,2024-05-16 07:00,2024-07-01 17:00,2025-11-20 17:00,2025-11-20 17:00,2025-12-01 07:00,2025-12-01 07:00,0,50,100
CN.SWA3.9240,F/R/P TOPPING SLAB - ELEVATOR 2 - LU1,Complete,SWA - 3,West Support Building,SUWS-3 - 12-9,,ELEVATOR,CONSTRUCTION,BAKER,SOMD,CONCRETE,,2025-02-12 07:00,2025-02-13 17:00,2025-02-12 07:00,2025-02-13 17:00,2025-11-20 17:00,2025-11-20 17:00,2025-12-05 07:00,2025-12-05 07:00,0,20,100
CN.SWA3.9250,IMPACT - NEED PLYWOOD FOR ACCESS - SEA3- GL 12-10 - K-L - L3 CEILING,Complete,SWA - 3,West Support Building,SUWS-3 - 12-9,L4 - SUP Roof - FAB Roof,DS/AD INTERIORS,CONSTRUCTION,ROLLING PLAINS,Fireproofing,HOON WOO,,2024-05-24 07:00,2024-06-03 17:00,2024-05-24 07:00,2024-08-10 17:00,2025-11-20 17:00,2025-11-20 17:00,2025-12-05 17:00,2025-12-05 17:00,0,50,100
CN.SWA3.9260,CURE - AD STEEL PAINT FIREPROOFING IFRM - SWA3 - GL 12-9 - L-J - L2-CEILING,Complete,SWA - 3,West Support Building,SUWS-3 - 12-9,DS/AD,,CONSTRUCTION,ROLLING PLAINS,Fireproofing,HOON WOO,,2024-07-19 07:00,2024-08-06 17:00,2024-07-07 07:00,2024-07-23 17:00,2025-11-20 17:00,2025-11-20 17:00,2025-12-05 17:00,2025-12-05 17:00,0,180,100
CN.SWA3.9380,CHIP CONCRETE FOR PLATFORM STEEL / TURNOVER TO WW TO PLATFORM INSTALL - ELEVATOR 2 - SWA3 - L1G,Complete,SWA - 3,West Support Building,SUWS-3 - 12-9,,ELEVATOR,CONSTRUCTION,BAKER,SOMD,CONCRETE,,2024-07-02 07:00,2024-07-15 17:00,2024-06-10 07:00,2024-06-18 17:00,2025-11-20 17:00,2025-11-20 17:00,2025-12-02 07:00,2025-12-02 07:00,0,70,100
CN.SWA3.9390,IMPACT - NOTIFY SECAI TO MOVE MATERIAL BLOCKING ACCESS FOR IMP INSTALL / ACCESS PROVIDED - GL 12-9 - L LINE (DS AREA),Complete,SWA - 3,West Support Building,SUWS-3 - 12-9,EXTERIOR SKIN,,CONSTRUCTION,KOVACH,INSULATED METAL PANELS,JAMES LIVELY,,2024-07-13 07:00,2024-07-23 17:00,2024-06-27 07:00,2024-07-09 17:00,2025-11-20 17:00,2025-11-20 17:00,2025-11-25 07:00,2025-11-25 07:00,0,100,100
CN.SWA3.9400,IMPACT - NEED TO PROCURE ADDITIONAL INSULATED METAL PANEL MODULES / AWAIT DELIVERY - D & L LINE,Complete,SWA - 3,West Support Building,SUWS-3 - 12-9,EXTERIOR SKIN,,CONSTRUCTION,KOVACH,INSULATED METAL PANELS,JAMES LIVELY,,2024-07-21 07:00,2024-07-30 17:00,2024-07-16 07:00,2024-07-20 17:00,2025-11-20 17:00,2025-11-20 17:00,2025-11-25 07:00,2025-11-25 07:00,0,90,100
CN.SWA3.9410,IMPACT - REMEDY -MISSING MEP PENETRATION LAYOUTS - SWA3- GL 12-9 - K LINE - L2,Complete,SWA - 3,West Support Building,SUWS-3 - 12-9,L2 - SubFab Level,DS/AD INTERIORS,CONSTRUCTION,BERG,DRYWALL,FIZ DATA CENTER,INTERIORS,2024-07-15 07:00,2024-08-02 17:00,2024-07-17 07:00,2024-07-29 17:00,2025-11-20 17:00,2025-11-20 17:00,2025-11-24 07:00,2025-11-24 07:00,0,150,100
CN.SWA3.9420,IMPACT - SECAI / AXIOS INSTALL SCAFFOLDING - INSTALL GRATING FOR SUMP PITS - ELEVATOR 2,Complete,SWA - 3,West Support Building,SUWS-3 - 12-9,,ELEVATOR,CONSTRUCTION,BAKER,SOMD,CONCRETE,,2025-07-18 07:00,2025-07-24 17:00,2025-07-07 07:00,2025-07-30 17:00,2025-11-20 17:00,2025-11-20 17:00,2025-12-05 07:00,2025-12-05 07:00,0,50,100
CN.SWA3.9430,INSTALL ACCESS LADDER - ELEVATOR 2,Not Started,SWA - 3,West Support Building,SUWS-3 - 12-9,,ELEVATOR,CONSTRUCTION,BAKER,SOMD,CONCRETE,,2025-11-21 07:00,2025-11-21 17:00,,,2025-11-21 07:00,2025-11-21 17:00,2025-12-05 07:00,2025-12-05 17:00,10,10,0
CN.SWA3.9450,SUMP LAYOUT SURVEY & CONFIRMATION - ELEVATOR 2,Complete,SWA - 3,West Support Building,SUWS-3 - 12-9,,ELEVATOR,CONSTRUCTION,BAKER,SOMD,CONCRETE,,2024-08-09 07:00,2024-08-09 17:00,2024-08-01 07:00,2024-08-01 17:00,2025-11-20 17:00,2025-11-20 17:00,2025-12-05 07:00,2025-12-05 07:00,0,10,100
CN.SWA3.9470,DS ROOF PARAPET DRY IN - SWA3 - GL 12-9 - K-L - L6,Complete,SWA - 3,West Support Building,SUWS-3 - 12-9,DS/AD,,CONSTRUCTION,BRAZOS,Waterproofing - Preferred,JAMES LIVELY,,2024-08-01 07:00,2024-08-19 17:00,2024-08-01 07:00,2024-09-06 11:00,2025-11-20 17:00,2025-11-20 17:00,2025-11-25 07:00,2025-11-25 07:00,0,110,100
CN.SWA3.9480,IMPACT - Y_RFI 1440 - STEEL AT L3 PLATFORM / AWAIT DIRECTION FROM SECAI - ELEVATOR 2,Complete,SWA - 3,West Support Building,SUWS-3 - 12-9,,ELEVATOR,CONSTRUCTION,W&W,TBD Architectural Finishes,,INTERIORS,2024-08-13 07:00,2024-09-13 17:00,2024-07-29 07:00,2024-08-07 17:00,2025-11-20 17:00,2025-11-20 17:00,2025-12-05 07:00,2025-12-05 07:00,0,200,100
CN.SWA3.9490,IMPACT - FIREPROOFING SFRM-2 - ELEVATOR 2,Complete,SWA - 3,West Support Building,SUWS-3 - 12-9,,ELEVATOR,CONSTRUCTION,BAKER,SOMD,CONCRETE,,2025-02-04 07:00,2025-02-12 17:00,2025-02-04 07:00,2025-06-18 17:00,2025-11-20 17:00,2025-11-20 17:00,2025-12-05 07:00,2025-12-05 07:00,0,70,100
CN.SWA3.9510,IMPACT - CCD APPROVAL FOR REVISED SHOPS (WWAFCO) - LVL 3H - ELEVATOR 2,Complete,SWA - 3,West Support Building,SUWS-3 - 12-9,,ELEVATOR,CONSTRUCTION,W&W,TBD Architectural Finishes,,INTERIORS,2024-08-13 07:00,2024-09-13 17:00,2024-08-08 07:00,2024-09-10 17:00,2025-11-20 17:00,2025-11-20 17:00,2025-12-05 07:00,2025-12-05 07:00,0,200,100
CN.SWA3.9520,IMPACT - WWAFCO PREPARE AND SUBMIT REVISED SHOP DRAWINGS - LVL 3H - ELEVATOR 2,Complete,SWA - 3,West Support Building,SUWS-3 - 12-9,,ELEVATOR,CONSTRUCTION,W&W,TBD Architectural Finishes,,INTERIORS,2024-09-13 07:00,2024-09-30 17:00,2024-09-11 07:00,2024-09-23 17:00,2025-11-20 17:00,2025-11-20 17:00,2025-12-05 07:00,2025-12-05 07:00,0,100,100
CN.SWA3.9530,IMPACT - SECAI APPROVAL OF REVISED SHOP DRAWINGS - LVL 3H - ELEVATOR 2,Complete,SWA - 3,West Support Building,SUWS-3 - 12-9,,ELEVATOR,CONSTRUCTION,W&W,TBD Architectural Finishes,,INTERIORS,2024-09-24 07:00,2024-10-10 17:00,2024-09-24 07:00,2024-09-30 17:00,2025-11-20 17:00,2025-11-20 17:00,2025-12-05 07:00,2025-12-05 07:00,0,100,100
CN.SWA3.9550,INSTALL FRAMING/DRYWALL/TAPE+FLOAT - MECHANICAL ROOM - ELEVATOR 2,Active,SWA - 3,West Support Building,SUWS-3 - 12-9,,ELEVATOR,CONSTRUCTION,W&W,TBD Architectural Finishes,,INTERIORS,2024-10-17 07:00,2024-11-27 17:00,2024-10-17 07:00,,2025-11-21 07:00,2025-11-21 17:00,2025-12-05 07:00,2025-12-05 17:00,10,250,0
CN.SWA3.9560,IMPACT - SECAI - INSTALL ELEVATOR DOOR JAMBS - ELEVATOR 2 - WAITING FOR SCHEDULE,Complete,SWA - 3,West Support Building,SUWS-3 - 12-9,,ELEVATOR,CONSTRUCTION,W&W,DRYWALL,,INTERIORS,2025-08-08 07:00,2025-08-21 17:00,2025-08-05 07:00,2025-08-18 17:00,2025-11-20 17:00,2025-11-20 17:00,2025-12-05 17:00,2025-12-05 17:00,0,100,100
CN.SWA3.9570,IMPACT - INSTALL DRYWALL & FIRE CAULKING - DOOR FRONTS - ELEVATOR 2,Complete,SWA - 3,West Support Building,SUWS-3 - 12-9,,ELEVATOR,CONSTRUCTION,W&W,DRYWALL,,INTERIORS,2025-09-19 07:00,2025-09-23 17:00,2025-09-19 07:00,2025-10-31 17:00,2025-11-20 17:00,2025-11-20 17:00,2025-12-05 17:00,2025-12-05 17:00,0,30,100
CN.SWA3.9580,INSTALL PERMANENT DOOR & FRAME - MECHANICAL ROOM - FAB110205A - ELEVATOR 2,Not Started,SWA - 3,West Support Building,SUWS-3 - 12-9,,ELEVATOR,CONSTRUCTION,W&W,DRYWALL,,INTERIORS,2025-11-24 07:00,2025-11-24 07:00,,,2025-11-24 07:00,2025-11-24 07:00,2025-12-05 17:00,2025-12-05 17:00,0,0,0
CN.SWA3.9590,"FINAL TURNOVER - DOOR FRONTS, MECHANICAL ROOM (WITH PERM DOOR) - ELEVATOR 2",Not Started,SWA - 3,West Support Building,SUWS-3 - 12-9,,ELEVATOR,CONSTRUCTION,BAKER,SOMD,CONCRETE,,2025-11-24 07:00,2025-11-24 07:00,,,2025-11-24 07:00,2025-11-24 07:00,2025-12-05 17:00,2025-12-05 17:00,0,0,0
CN.SWA3.9610,TAPE & FLOAT - SHAFT - DOOR FRONTS - ELEVATOR 2,Complete,SWA - 3,West Support Building,SUWS-3 - 12-9,,ELEVATOR,CONSTRUCTION,W&W,DRYWALL,,INTERIORS,2025-11-04 07:00,2025-11-10 17:00,2025-11-04 07:00,2025-11-07 17:00,2025-11-20 17:00,2025-11-20 17:00,2025-12-05 17:00,2025-12-05 17:00,0,50,100
CN.SWA3.9620,SECAI - INSTALL GAS LINE - LEVEL 4 - ELEVATOR 2,Complete,SWA - 3,West Support Building,SUWS-3 - 12-9,,ELEVATOR,CONSTRUCTION,BAKER,SOMD,CONCRETE,,2024-09-19 07:00,2024-11-18 17:00,2024-09-03 07:00,2024-09-18 17:00,2025-11-20 17:00,2025-11-20 17:00,2025-12-05 07:00,2025-12-05 07:00,0,350,100
CN.SWA3.9630,IMPACT - INSTALL REVISED PERIMETER STEEL - - ELEVATOR 2,Complete,SWA - 3,West Support Building,SUWS-3 - 12-9,,ELEVATOR,CONSTRUCTION,W&W,TBD Architectural Finishes,,INTERIORS,2024-11-18 07:00,2024-12-23 17:00,2024-11-18 07:00,2024-12-12 17:00,2025-11-20 17:00,2025-11-20 17:00,2025-12-05 07:00,2025-12-05 07:00,0,200,100
CN.SWA3.9640,IMPACT - MEP GAS PIPE INSTALLATION - SWA4 - L4&L5 CEILING - GL 6-9 - J-L,Complete,SWA - 3,West Support Building,SUWS-4 - 9-6,L4 - SUP Roof - FAB Roof,DS/AD INTERIORS,CONSTRUCTION,ROLLING PLAINS,Fireproofing,HOON WOO,,2024-09-19 07:00,2024-10-04 17:00,2024-09-19 07:00,2024-10-12 17:00,2025-11-20 17:00,2025-11-20 17:00,2025-12-05 17:00,2025-12-05 17:00,0,100,100
CN.SWA3.9650,INSTALL ELEVATOR STEEL (SWAP BEAMS ON LVL 4 FIRST) - ELEVATOR 2,Complete,SWA - 3,West Support Building,SUWS-3 - 12-9,,ELEVATOR,CONSTRUCTION,W&W,TBD Architectural Finishes,,INTERIORS,2024-10-01 07:00,2024-10-11 17:00,2024-10-01 07:00,2024-10-16 17:00,2025-11-20 17:00,2025-11-20 17:00,2025-12-05 07:00,2025-12-05 07:00,0,70,100
CN.SWA3.9660,IMPACT - MATERIAL ACCESS NOT AVAILABLE DUE TO FLOOR COATING AT CLEANROOM - L3 - ELEVATOR 2,Complete,SWA - 3,West Support Building,SUWS-3 - 12-9,,ELEVATOR,CONSTRUCTION,W&W,TBD Architectural Finishes,,INTERIORS,2024-11-01 07:00,2024-11-12 17:00,2024-11-01 07:00,2024-11-09 17:00,2025-11-20 17:00,2025-11-20 17:00,2025-12-05 07:00,2025-12-05 07:00,0,70,100
CN.SWA3.9670,PRIMER & PAINT DRYWALL -  GL 3-6 - K LINE - L1,Complete,SWA - 3,West Support Building,SUWS-3 - 12-9,L1 - Fndn Slab,DS/AD INTERIORS,CONSTRUCTION,FINISH PAINT,TBD Architectural Finishes,FIZ DATA CENTER,INTERIORS,2024-10-15 07:00,2024-10-18 17:00,2024-10-15 07:00,2024-10-18 17:00,2025-11-20 17:00,2025-11-20 17:00,2025-12-05 17:00,2025-12-05 17:00,0,30,100
CN.SWA3.9690,PRIMER & PAINT DRYWALL -  GL E-G - 3 LINE - L1,Not Started,SWA - 3,West Support Building,SUWS-3 - 12-9,L1 - Fndn Slab,DS/AD INTERIORS,CONSTRUCTION,FINISH PAINT,TBD Architectural Finishes,FIZ DATA CENTER,INTERIORS,2025-11-21 07:00,2025-11-24 17:00,,,2025-11-21 07:00,2025-11-24 17:00,2025-12-02 07:00,2025-12-03 17:00,20,20,0
CN.SWA3.9700,PRIMER & PAINT DRYWALL -  GL G-J - 3 LINE - L1,Not Started,SWA - 3,West Support Building,SUWS-3 - 12-9,L1 - Fndn Slab,DS/AD INTERIORS,CONSTRUCTION,FINISH PAINT,TBD Architectural Finishes,FIZ DATA CENTER,INTERIORS,2025-11-25 07:00,2025-11-26 17:00,,,2025-11-25 07:00,2025-11-26 17:00,2025-12-04 07:00,2025-12-05 17:00,20,20,0
CN.SWA3.9720,PRIMER & PAINT DRYWALL -  GL 6-9 - K LINE - L1,Complete,SWA - 3,West Support Building,SUWS-3 - 12-9,L1 - Fndn Slab,DS/AD INTERIORS,CONSTRUCTION,FINISH PAINT,TBD Architectural Finishes,FIZ DATA CENTER,INTERIORS,2024-10-15 07:00,2024-10-18 17:00,2024-10-15 07:00,2024-10-18 17:00,2025-11-20 17:00,2025-11-20 17:00,2025-12-05 17:00,2025-12-05 17:00,0,30,100
CN.SWA3.9740,IMPACT - SCAFFOLD INSTALLATION BY SECAI FOR LVL 3 K LINE BEAMS SFRM - ELEVATOR 2,Complete,SWA - 3,West Support Building,SUWS-3 - 12-9,,ELEVATOR,CONSTRUCTION,BAKER,SOMD,CONCRETE,,2025-05-13 07:00,2025-06-06 17:00,2025-05-13 07:00,2025-06-13 17:00,2025-11-20 17:00,2025-11-20 17:00,2025-12-05 07:00,2025-12-05 07:00,0,180,100
CN.A1.UG.1050,PH1- UNDERGROUND PLUMBING SWA4,Complete,SWA - 4,West Support Building,SUWS-4 - 9-6,L1 - Fndn Slab,,CONSTRUCTION,,Underground Plumbing - Cobb,ANDREA SOLIS,,2022-10-27 08:00,2022-10-29 12:00,2022-10-27 08:00,2022-10-29 13:00,2025-11-20 17:00,2025-11-20 17:00,2025-06-13 08:00,2025-06-13 08:00,0,24,100
CN.A1.UG.1060,PH1- UNDERGROUND ELECTRICAL SWA4,Complete,SWA - 4,West Support Building,SUWS-4 - 9-6,L1 - Fndn Slab,,CONSTRUCTION,,Underground Electrical - (By Owner),ANDREA SOLIS,,2022-10-29 13:00,2022-10-31 17:00,2022-10-29 13:00,2022-11-02 08:00,2025-11-20 17:00,2025-11-20 17:00,2025-06-13 08:00,2025-06-13 08:00,0,24,100
CN.SWA4.1010,PH1- SUP - EXCAVATE PIER CAPS - SWA4,Complete,SWA - 4,West Support Building,SUWS-4 - 9-6,L1 - Fndn Slab,,CONSTRUCTION,,Excavate CIP,ANDREA SOLIS,,2022-10-17 15:00,2022-10-21 09:00,2022-10-17 15:00,2022-10-20 10:00,2025-11-20 17:00,2025-11-20 17:00,2025-06-13 08:00,2025-06-13 08:00,0,24,100
CN.SWA4.1020,PH1-FRP GRADE BEAM - SWA4,Complete,SWA - 4,West Support Building,SUWS-4 - 9-6,L1 - Fndn Slab,,CONSTRUCTION,,Pour Concrete,ANDREA SOLIS,,2022-11-03 07:00,2022-11-05 11:00,2022-11-03 07:00,2022-11-05 12:00,2025-11-20 17:00,2025-11-20 17:00,2025-06-13 08:00,2025-06-13 08:00,0,24,100
CN.SWA4.1030,PH1-BLACK BASE (NOW RAT SLAB) - SWA4,Complete,SWA - 4,West Support Building,SUWS-4 - 9-6,L1 - Fndn Slab,,CONSTRUCTION,,RAT SLAB,JAMES LEE,,2023-02-20 07:00,2023-02-23 11:00,2023-02-03 12:28,2023-02-06 17:00,2025-11-20 17:00,2025-11-20 17:00,2025-06-13 08:00,2025-06-13 08:00,0,24,100
CN.SWA4.1040,PH1-CURE PIER CAPS - SWA4,Complete,SWA - 4,West Support Building,SUWS-4 - 9-6,L1 - Fndn Slab,,CONSTRUCTION,,Concrete Cure,ANDREA SOLIS,,2022-11-04 12:00,2022-11-04 12:00,2022-11-04 12:00,2022-11-04 12:00,2025-11-20 17:00,2025-11-20 17:00,2025-06-13 08:00,2025-06-13 08:00,0,0,100
CN.SWA4.1080,PH1- FRP SLAB - SWA-4-L3,Complete,SWA - 4,West Support Building,SUWS-4 - 9-6,L3 / Waffle Slab Level,,CONSTRUCTION,,SOMD,CONCRETE,,2023-08-04 15:00,2023-08-07 09:00,2023-08-04 15:00,2023-08-08 11:00,2025-11-20 17:00,2025-11-20 17:00,2025-09-04 07:00,2025-09-04 07:00,0,24,100
CN.SWA4.1120,PH1- FRP SLAB - SWA-4-ROOF,Complete,SWA - 4,West Support Building,SUWS-4 - 9-6,L4 - SUP Roof - FAB Roof,,CONSTRUCTION,,SOMD,CONCRETE,SOMD / Roofing / Waterproofing,2023-09-18 07:00,2023-09-21 11:00,2023-09-16 07:00,2023-09-20 11:00,2025-11-20 17:00,2025-11-20 17:00,2025-11-24 07:00,2025-11-24 07:00,0,24,100
CN.SWA4.1100,PH1- CURE SOMD - SWA-4-L3,Complete,SWA - 4,West Support Building,SUWS-4 - 9-6,L3 / Waffle Slab Level,,CONSTRUCTION,,Concrete Cure,JAMES LEE,,2023-08-08 11:00,2023-08-11 15:00,2023-08-08 11:00,2023-08-09 11:00,2025-11-20 17:00,2025-11-20 17:00,2025-09-04 07:00,2025-09-04 07:00,0,24,100
CN.SWA4.1130,PH1- CURE SOMD - SWA-4-ROOF,Complete,SWA - 4,West Support Building,SUWS-4 - 9-6,L4 - SUP Roof - FAB Roof,,CONSTRUCTION,,Concrete Cure,JAMES LEE,SOMD / Roofing / Waterproofing,2023-09-21 07:00,2023-09-23 11:00,2023-09-20 20:44,2023-09-21 20:44,2025-11-20 17:00,2025-11-20 17:00,2025-11-25 07:00,2025-11-25 07:00,0,24,100
CN.SWA4.1090,PH1- 1st FLOOR SLAB - SWA-4-L1,Complete,SWA - 4,West Support Building,SUWS-4 - 9-6,L1 - Fndn Slab,,CONSTRUCTION,,Pour Concrete,JAMES LEE,,2023-02-23 11:00,2023-02-27 11:00,2023-02-07 11:00,2023-02-10 11:00,2025-11-20 17:00,2025-11-20 17:00,2025-09-04 07:00,2025-09-04 07:00,0,40,100
CN.SWA4.1220,MEP EQPT PADS (LAYOUT & INSTALL DOWELS) - SWA4 - GL 9-6 - L4 - L-N - ROOF,Complete,SWA - 4,West Support Building,SUWS-4 - 9-6,L4 - SUP Roof - FAB Roof,,CONSTRUCTION,,OAC/ MECH PADS,JAMES LEE,SOMD / Roofing / Waterproofing,2023-09-25 07:00,2023-09-28 11:00,2023-09-25 07:00,2023-09-28 11:00,2025-11-20 17:00,2025-11-20 17:00,2025-12-05 17:00,2025-12-05 17:00,0,24,100
CN.SWA4.1050,TIER 1 ERECT PRECAST COLUMNS & BEAMS - SWA4,Complete,SWA - 4,West Support Building,SUWS-4 - 9-6,L3 / Waffle Slab Level,,CONSTRUCTION,,"SUP WEST N,M",SEAN MONK,,2023-07-10 09:00,2023-07-15 15:00,2023-07-10 09:00,2023-07-23 14:00,2025-11-20 17:00,2025-11-20 17:00,2025-09-04 07:00,2025-09-04 07:00,0,56,100
CN.SWA4.1140,PH1-ROOF LAYER PARAPET - SWA4 - GL 9-1 - L4 - L-N,Complete,SWA - 4,West Support Building,SUWS-4 - 9-6,L4 - SUP Roof - FAB Roof,,CONSTRUCTION,,TOPPING,JAMES LIVELY,SOMD / Roofing / Waterproofing,2024-02-19 07:00,2024-02-20 13:00,2024-02-19 07:00,2024-02-20 13:00,2025-11-20 17:00,2025-11-20 17:00,2025-11-25 07:00,2025-11-25 07:00,0,16,100
CN.SWA4.1160,PH1-FLUID APPLIED MEMBRANE ROOFING - SWA4 - GL 9-6 - L4 - L-N - ROOF,Complete,SWA - 4,West Support Building,SUWS-4 - 9-6,L4 - SUP Roof - FAB Roof,,CONSTRUCTION,,Roofing,JAMES LIVELY,SOMD / Roofing / Waterproofing,2023-12-04 07:00,2023-12-08 09:00,2023-11-22 07:00,2023-11-27 09:00,2025-11-20 17:00,2025-11-20 17:00,2025-11-25 07:00,2025-11-25 07:00,0,32,100
CN.SWA4.1170,PH1 - CLADDING STEEL INTERIOR GL 9-6 - K LINE (AD AREA),Complete,SWA - 4,West Support Building,SUWS-4 - 9-6,EXTERIOR SKIN,,CONSTRUCTION,,INSULATED METAL PANELS,JAMES LIVELY,,2024-02-29 13:00,2024-03-07 09:00,2024-02-29 07:00,2024-03-18 17:00,2025-11-20 17:00,2025-11-20 17:00,2025-11-25 07:00,2025-11-25 07:00,0,46,100
CN.SWA4.1200,PH1 - INSTALL INSULATED METAL PANEL MODULES - GL 9-6 - L LINE (DS AREA),Complete,SWA - 4,West Support Building,SUWS-4 - 9-6,EXTERIOR SKIN,,CONSTRUCTION,KOVACH,INSULATED METAL PANELS,JAMES LIVELY,,2024-07-29 07:00,2024-08-03 17:00,2024-07-22 07:00,2024-07-30 17:00,2025-11-20 17:00,2025-11-20 17:00,2025-11-25 07:00,2025-11-25 07:00,0,60,100
CN.SWA4.1150,PH1 - CLADDING STEEL  - SWA4 - GL 9-6 - N line  [SUP EXTERIOR WALL],Complete,SWA - 4,West Support Building,SUWS-4 - 9-6,EXTERIOR SKIN,,CONSTRUCTION,,INSULATED METAL PANELS,JAMES LIVELY,,2024-02-26 07:00,2024-03-05 09:00,2024-01-15 07:00,2024-01-23 11:00,2025-11-20 17:00,2025-11-20 17:00,2025-09-04 07:00,2025-09-04 07:00,0,72,100
CN.SWA4.1180,PH1 - INSTALL INSULATED METAL PANEL MODULES - SWA4 - GL 9-6 - N LINE [SUP EXTERIOR WALL],Complete,SWA - 4,West Support Building,SUWS-4 - 9-6,EXTERIOR SKIN,,CONSTRUCTION,,INSULATED METAL PANELS,JAMES LIVELY,,2024-02-08 07:00,2024-02-15 09:00,2024-02-01 07:00,2024-02-10 12:00,2025-11-20 17:00,2025-11-20 17:00,2025-12-05 07:00,2025-12-05 07:00,0,72,100
CN.SWA4.1110,PH1- AD STEEL FRAME INSTALL - SWA-4 fab side,Complete,SWA - 4,West Support Building,SUWS-4 - 9-6,DS/AD,,CONSTRUCTION,,Steel Erection,SEAN MONK,,2023-08-28 07:00,2023-09-02 15:00,2023-08-24 07:00,2023-08-26 16:00,2025-11-20 17:00,2025-11-20 17:00,2025-06-13 08:00,2025-06-13 08:00,0,48,100
CN.AB.AR.3010,METAL STUD FRAMING (2hr) - SWA-4 - L1 - GAS PURIFER SOUTH,Complete,SWA - 4,West Support Building,SUWS-4 - 9-6,L1 - Fndn Slab,GAS PURIFIER RM,CONSTRUCTION,BERG,TBD Architectural Finishes,AMBER CARO,INTERIORS,2023-08-15 11:00,2023-08-19 11:00,2023-08-15 11:00,2023-08-19 12:00,2025-11-20 17:00,2025-11-20 17:00,2025-11-21 07:00,2025-11-21 07:00,0,40,100
CN.AB.AR.3030,MEP ROUGH IN & INSPECTION (by SECAI) - SWA4 - GL 9-6 - L1 - L-N - GAS PURIFER SOUTH,Complete,SWA - 4,West Support Building,SUWS-4 - 9-6,L1 - Fndn Slab,GAS PURIFIER RM,CONSTRUCTION,,TBD Architectural Finishes,AMBER CARO,,2023-12-18 15:00,2023-12-22 15:00,2023-12-18 15:00,2023-12-22 15:00,2025-11-20 17:00,2025-11-20 17:00,2025-12-01 07:00,2025-12-01 07:00,0,40,100
CN.AB.AR.3040,TAPE & FINISH DRYWALL - SWA4 - GL 9-6 - L1 - L-N - GAS PURIFER SOUTH,Complete,SWA - 4,West Support Building,SUWS-4 - 9-6,L1 - Fndn Slab,GAS PURIFIER RM,CONSTRUCTION,,DRYWALL,AMBER CARO,INTERIORS,2024-01-28 08:00,2024-02-01 08:00,2024-01-28 08:00,2024-02-02 09:00,2025-11-20 17:00,2025-11-20 17:00,2025-12-01 07:00,2025-12-01 07:00,0,40,100
CN.AB.AR.3050,FINISH PAINT - GAS PURIFER SOUTH - SWA4 - GL 9-6 - L-N - L1,Not Started,SWA - 4,West Support Building,SUWS-4 - 9-6,L1 - Fndn Slab,GAS PURIFIER RM,CONSTRUCTION,FINISH PAINT,TBD Architectural Finishes,JAMES LEE,INTERIORS,2025-11-21 07:00,2025-11-21 07:00,,,2025-11-21 07:00,2025-11-21 07:00,2025-12-05 17:00,2025-12-05 17:00,0,0,0
CN.SWA4.1230,PH1- METAL STAIR 1 INSTALL - SWA4 - GL 9-6 - L1 - L-N - GAS PURIFER SOUTH,Complete,SWA - 4,West Support Building,SUWS-4 - 9-6,L1 - Fndn Slab,,CONSTRUCTION,,INSULATED METAL PANELS,JAMES LIVELY,INTERIORS,2024-02-26 07:00,2024-03-09 17:00,2024-02-05 07:00,2024-02-19 15:00,2025-11-20 17:00,2025-11-20 17:00,2025-11-12 07:00,2025-11-12 07:00,0,120,100
CN.SWA4.1240,DS STEEL SPRAY SFRM - SWA4 - GL 6-9 - J-L - L3 CEILING,Complete,SWA - 4,West Support Building,SUWS-4 - 9-6,L4 - SUP Roof - FAB Roof,DS/AD INTERIORS,CONSTRUCTION,ROLLING PLAINS,Fireproofing,HOON WOO,,2024-05-07 07:00,2024-05-14 17:00,2024-05-07 07:00,2024-05-13 17:00,2025-11-20 17:00,2025-11-20 17:00,2025-12-05 17:00,2025-12-05 17:00,0,50,100
CN.SWA4.1260,PH1- FRP SLAB - SWA-4-L2,Complete,SWA - 4,West Support Building,SUWS-4 - 9-6,L2 - SubFab Level,,CONSTRUCTION,,SOMD,CONCRETE,,2023-08-07 13:00,2023-08-10 17:00,2023-08-07 13:00,2023-08-10 17:00,2025-11-20 17:00,2025-11-20 17:00,2025-09-04 07:00,2025-09-04 07:00,0,24,100
CN.SWA4.1270,PH1- CURE SOMD - SWA-4-L2,Complete,SWA - 4,West Support Building,SUWS-4 - 9-6,L2 - SubFab Level,,CONSTRUCTION,,Pour Concrete,JAMES LEE,,2023-08-11 07:00,2023-08-13 11:00,2023-08-10 17:00,2023-08-11 17:00,2025-11-20 17:00,2025-11-20 17:00,2025-09-04 07:00,2025-09-04 07:00,0,24,100
CN.SWA4.1280,PH1- DECKING GL 9 - 8 - SWA-4-ROOF,Complete,SWA - 4,West Support Building,SUWS-4 - 9-6,L4 - SUP Roof - FAB Roof,,CONSTRUCTION,,Decking & Detail,SEAN MONK,SOMD / Roofing / Waterproofing,2023-09-07 11:00,2023-09-08 17:00,2023-09-07 11:00,2023-09-08 17:00,2025-11-20 17:00,2025-11-20 17:00,2025-11-24 07:00,2025-11-24 07:00,0,16,100
CN.SWA4.1290,PH1- DECKING GL 9 - 8 - SWA-4-L3,Complete,SWA - 4,West Support Building,SUWS-4 - 9-6,L3 / Waffle Slab Level,,CONSTRUCTION,,Decking & Detail,SEAN MONK,,2023-07-31 07:00,2023-08-01 13:00,2023-07-31 07:00,2023-08-01 13:00,2025-11-20 17:00,2025-11-20 17:00,2025-09-04 07:00,2025-09-04 07:00,0,16,100
CN.SWA4.1300,PH1- DECKING GL 9 - 8 - SWA-4-L2,Complete,SWA - 4,West Support Building,SUWS-4 - 9-6,L2 - SubFab Level,,CONSTRUCTION,,Decking & Detail,SEAN MONK,,2023-08-01 13:00,2023-08-03 09:00,2023-08-01 13:00,2023-08-03 09:00,2025-11-20 17:00,2025-11-20 17:00,2025-09-04 07:00,2025-09-04 07:00,0,16,100
CN.SEA3.1370,PH1-CIP WALL (DS)- SWA-4,Complete,SWA - 4,West Support Building,SUWS-4 - 9-6,L4 - SUP Roof - FAB Roof,,CONSTRUCTION,,CIP WALL,CONCRETE,SOMD / Roofing / Waterproofing,2023-10-30 07:00,2023-11-04 09:00,2023-09-30 15:30,2023-10-09 10:00,2025-11-20 17:00,2025-11-20 17:00,2025-11-25 07:00,2025-11-25 07:00,0,32,100
CN.SWA4.1310,PH1- WATERPROOFING - SWA-4-L3 - FA LAB NORTH,Complete,SWA - 4,West Support Building,SUWS-4 - 9-6,L3 / Waffle Slab Level,,CONSTRUCTION,,Waterproofing - Preferred,JAMES LIVELY,SOMD / Roofing / Waterproofing,2023-10-16 07:00,2023-10-17 13:00,2023-08-10 07:00,2023-08-12 13:00,2025-11-20 17:00,2025-11-20 17:00,2025-09-04 07:00,2025-09-04 07:00,0,16,100
CN.SWA4.1320,PH1- WATERPROOFING - SWA-4-L2 - ELECTRICAL ROOM,Complete,SWA - 4,West Support Building,SUWS-4 - 9-6,L2 - SubFab Level,,CONSTRUCTION,,Waterproofing - Preferred,JAMES LIVELY,SOMD / Roofing / Waterproofing,2023-10-17 13:00,2023-10-19 09:00,2023-08-14 13:00,2023-08-15 09:00,2025-11-20 17:00,2025-11-20 17:00,2025-09-04 07:00,2025-09-04 07:00,0,16,100
CN.SWA4.1330,PH1- WATERPROOFING - SWA-4-L1 - GAS PURIFER SOUTH,Complete,SWA - 4,West Support Building,SUWS-4 - 9-6,L1 - Fndn Slab,GAS PURIFIER RM,CONSTRUCTION,,Waterproofing - Preferred,JAMES LIVELY,SOMD / Roofing / Waterproofing,2023-10-16 07:00,2023-10-17 13:00,2023-07-24 07:00,2023-07-26 13:00,2025-11-20 17:00,2025-11-20 17:00,2025-09-04 07:00,2025-09-04 07:00,0,16,100
CN.SWA4.1360,PH1- TOPPING SLAB w TRENCH & ANGLE EMBEDS- SWA-4-L1 - GAS PURIFER SOUTH,Complete,SWA - 4,West Support Building,SUWS-4 - 9-6,L1 - Fndn Slab,,CONSTRUCTION,,TOPPING,CONCRETE,SOMD / Roofing / Waterproofing,2023-10-01 08:00,2023-10-03 12:00,2023-10-01 08:00,2023-10-03 13:00,2025-11-20 17:00,2025-11-20 17:00,2025-09-04 07:00,2025-09-04 07:00,0,24,100
CN.SWA4.1370,L6 DS DECKING & DETAILING - SWA4 - GL 9-6 - L-J DS/AD,Complete,SWA - 4,West Support Building,SUWS-4 - 9-6,DS/AD,,CONSTRUCTION,,Decking & Detail,SEAN MONK,,2024-01-17 07:00,2024-01-20 17:00,2024-01-04 13:00,2024-01-08 17:00,2025-11-20 17:00,2025-11-20 17:00,2025-06-13 08:00,2025-06-13 08:00,0,40,100
CN.SWA4.1380,DS/AD FRP SLAB - DS/AD - SWA4 - GL 9-6 - L-J - L4 & 4E,Complete,SWA - 4,West Support Building,SUWS-4 - 9-6,DS/AD,,CONSTRUCTION,,SOMD,CONCRETE,,2024-02-06 08:00,2024-02-08 13:00,2024-02-06 08:00,2024-02-08 13:00,2025-11-20 17:00,2025-11-20 17:00,2025-06-13 08:00,2025-06-13 08:00,0,15,100
CN.SWA4.1390,AD WATERPROOFING - SWA4 - GL 9-6 - J-K - L4/E,Complete,SWA - 4,West Support Building,SUWS-4 - 9-6,DS/AD,,CONSTRUCTION,BRAZOS,TOPPING,JAMES LIVELY,,2024-09-23 07:00,2024-10-08 17:00,2024-09-03 07:00,2024-09-14 17:00,2025-11-20 17:00,2025-11-20 17:00,2025-12-05 17:00,2025-12-05 17:00,0,100,100
CN.SWA4.1400,AD TOPPING SLAB - SWA4 - GL 9-6 - J-K - L4/E,Complete,SWA - 4,West Support Building,SUWS-4 - 9-6,DS/AD,,CONSTRUCTION,BAKER,TOPPING,CONCRETE,,2024-10-10 07:00,2024-10-11 17:00,2024-09-16 07:00,2024-09-18 17:00,2025-11-20 17:00,2025-11-20 17:00,2025-12-05 17:00,2025-12-05 17:00,0,20,100
TIER 2. 105W,TIER 2 GROUT PRECAST COLUMNS & BEAMS - SWA4,Complete,SWA - 4,West Support Building,SUWS-4 - 9-6,L4 - SUP Roof - FAB Roof,,CONSTRUCTION,,"SUP WEST N,M",SEAN MONK,,2023-09-05 07:00,2023-09-10 13:00,2023-08-11 07:00,2023-08-17 16:00,2025-11-20 17:00,2025-11-20 17:00,2025-11-12 07:00,2025-11-12 07:00,0,56,100
CN.SWA4.1410,PH1- DECKING GL 8 - 7 - SWA-4-L2,Complete,SWA - 4,West Support Building,SUWS-4 - 9-6,L2 - SubFab Level,,CONSTRUCTION,,Decking & Detail,SEAN MONK,,2023-08-03 09:00,2023-08-04 15:00,2023-08-03 09:00,2023-08-04 15:00,2025-11-20 17:00,2025-11-20 17:00,2025-09-04 07:00,2025-09-04 07:00,0,16,100
CN.SWA4.1420,PH1- DECKING GL 7 - 6 - SWA-4-L2,Complete,SWA - 4,West Support Building,SUWS-4 - 9-6,L2 - SubFab Level,,CONSTRUCTION,,Decking & Detail,SEAN MONK,,2023-08-04 15:00,2023-08-06 11:00,2023-08-04 15:00,2023-08-07 13:00,2025-11-20 17:00,2025-11-20 17:00,2025-09-04 07:00,2025-09-04 07:00,0,16,100
CN.SWA4.1430,PH1- DECKING GL 8 - 7 - SWA-4-L3,Complete,SWA - 4,West Support Building,SUWS-4 - 9-6,L3 / Waffle Slab Level,,CONSTRUCTION,,Decking & Detail,SEAN MONK,,2023-08-01 13:00,2023-08-03 09:00,2023-08-01 13:00,2023-08-03 09:00,2025-11-20 17:00,2025-11-20 17:00,2025-09-04 07:00,2025-09-04 07:00,0,16,100
CN.SWA4.1440,PH1- DECKING GL 7 - 6 - SWA-4-L3,Complete,SWA - 4,West Support Building,SUWS-4 - 9-6,L3 / Waffle Slab Level,,CONSTRUCTION,,Decking & Detail,SEAN MONK,,2023-08-03 09:00,2023-08-04 15:00,2023-08-03 09:00,2023-08-04 15:00,2025-11-20 17:00,2025-11-20 17:00,2025-09-04 07:00,2025-09-04 07:00,0,16,100
CN.SWA4.1450,PH1- DECKING GL 8 - 7 - SWA-4-ROOF,Complete,SWA - 4,West Support Building,SUWS-4 - 9-6,L4 - SUP Roof - FAB Roof,,CONSTRUCTION,,Decking & Detail,SEAN MONK,SOMD / Roofing / Waterproofing,2023-09-09 08:00,2023-09-10 14:00,2023-09-09 08:00,2023-09-10 16:00,2025-11-20 17:00,2025-11-20 17:00,2025-11-24 07:00,2025-11-24 07:00,0,16,100
CN.SWA4.1460,PH1- DECKING GL 7 - 6 - SWA-4-ROOF,Complete,SWA - 4,West Support Building,SUWS-4 - 9-6,L4 - SUP Roof - FAB Roof,,CONSTRUCTION,,Decking & Detail,SEAN MONK,SOMD / Roofing / Waterproofing,2023-09-16 08:00,2023-09-17 14:00,2023-09-13 08:00,2023-09-15 16:00,2025-11-20 17:00,2025-11-20 17:00,2025-11-24 07:00,2025-11-24 07:00,0,16,100
CN.SWA4.1470,PH1- DS/AD DECKING & DETAILING GL 9 - 6- DS/AD - SWA4 - GL 9-6 - L-J - L4& L4/E,Complete,SWA - 4,West Support Building,SUWS-4 - 9-6,DS/AD,,CONSTRUCTION,,Decking & Detail,SEAN MONK,,2024-02-02 13:00,2024-02-05 15:00,2024-02-02 13:00,2024-02-06 09:00,2025-11-20 17:00,2025-11-20 17:00,2025-06-13 08:00,2025-06-13 08:00,0,32,100
CN.AB.AR.4500,DRYWALL 2 SIDE - SWA4 - GL 9-6 - L1 - L-N - GAS PURIFER SOUTH,Complete,SWA - 4,West Support Building,SUWS-4 - 9-6,L1 - Fndn Slab,GAS PURIFIER RM,CONSTRUCTION,,DRYWALL,AMBER CARO,INTERIORS,2024-01-22 09:00,2024-01-26 09:00,2024-01-22 09:00,2024-01-26 09:00,2025-11-20 17:00,2025-11-20 17:00,2025-12-01 07:00,2025-12-01 07:00,0,40,100
CN.AB.AR.4510,DRYWALL & INSULATION (1 side) (INT) - SWA-4 - L1 - GAS PURIFER SOUTH,Complete,SWA - 4,West Support Building,SUWS-4 - 9-6,L1 - Fndn Slab,GAS PURIFIER RM,CONSTRUCTION,,DRYWALL,AMBER CARO,INTERIORS,2023-08-21 15:00,2023-08-26 15:00,2023-08-21 15:00,2023-08-26 16:00,2025-11-20 17:00,2025-11-20 17:00,2025-12-01 07:00,2025-12-01 07:00,0,40,100
CN.SWA4.1490,PH1- DS STEEL FRAME INSTALL - SWA-4 Comeback Sup Side,Complete,SWA - 4,West Support Building,SUWS-4 - 9-6,DS/AD,,CONSTRUCTION,,Steel Erection,SEAN MONK,,2023-08-28 13:00,2023-09-03 11:00,2023-08-26 13:00,2023-09-11 14:00,2025-11-20 17:00,2025-11-20 17:00,2025-06-13 08:00,2025-06-13 08:00,0,48,100
CN.SWA4.1500,PH1- EXTERIOR CURBS - SWA-4-L1 - GAS PURIFER SOUTH,Complete,SWA - 4,West Support Building,SUWS-4 - 9-6,L1 - Fndn Slab,GAS PURIFIER RM,CONSTRUCTION,,Pour Concrete,JAMES LEE,SOMD / Roofing / Waterproofing,2023-10-27 07:00,2023-11-02 15:00,2023-10-23 11:00,2023-10-25 11:00,2025-11-20 17:00,2025-11-20 17:00,2025-09-04 07:00,2025-09-04 07:00,0,48,100
CN.SWA4.1510,REMAINING 1 MEP PADS - SWA-4-L1 - GAS PURIFER SOUTH,Complete,SWA - 4,West Support Building,SUWS-4 - 9-6,L1 - Fndn Slab,GAS PURIFIER RM,CONSTRUCTION,,Pour Concrete,JAMES LEE,SOMD / Roofing / Waterproofing,2023-12-28 07:00,2024-01-05 13:00,2023-12-14 07:00,2023-12-16 15:00,2025-11-20 17:00,2025-11-20 17:00,2025-12-01 07:00,2025-12-01 07:00,0,48,100
CN.AB.AR.4990,METAL STUD FRAMING (2hr) - SWA-4 - L2 - ELECTRICAL ROOM,Complete,SWA - 4,West Support Building,SUWS-4 - 9-6,L2 - SubFab Level,ELECTRIC RM 1,CONSTRUCTION,BERG,TBD Architectural Finishes,AMBER CARO,INTERIORS,2023-10-09 09:00,2023-10-13 09:00,2023-10-09 09:00,2023-10-14 10:00,2025-11-20 17:00,2025-11-20 17:00,2025-12-05 17:00,2025-12-05 17:00,0,40,100
CN.AB.AR.5000,MEP ROUGH IN & INSPECTION (by SECAI) - SWA-4 - L2 - ELECTRICAL ROOM,Complete,SWA - 4,West Support Building,SUWS-4 - 9-6,L2 - SubFab Level,ELECTRIC RM 1,CONSTRUCTION,,Owner & Design Team,AMBER CARO,,2023-10-27 07:00,2023-10-30 17:00,2023-10-27 07:00,2023-10-28 11:00,2025-11-20 17:00,2025-11-20 17:00,2025-12-05 17:00,2025-12-05 17:00,0,40,100
CN.AB.AR.5030,TAPE & FINISH DRYWALL - SWA4 - GL 9-6 - L2 - L-N - ELECTRICAL ROOM,Complete,SWA - 4,West Support Building,SUWS-4 - 9-6,L2 - SubFab Level,ELECTRIC RM 1,CONSTRUCTION,,DRYWALL,AMBER CARO,INTERIORS,2024-01-19 10:00,2024-01-23 10:00,2024-01-19 10:00,2024-01-23 14:00,2025-11-20 17:00,2025-11-20 17:00,2025-12-05 17:00,2025-12-05 17:00,0,40,100
CN.AB.AR.5040,FINISH PAINT - ELECTRICAL ROOM - SWA4 - GL 9-6 - L-N - L2,Not Started,SWA - 4,West Support Building,SUWS-4 - 9-6,L2 - SubFab Level,ELECTRIC RM 1,CONSTRUCTION,FINISH PAINT,TBD Architectural Finishes,JAMES LEE,INTERIORS,2025-11-21 07:00,2025-11-21 07:00,,,2025-11-21 07:00,2025-11-21 07:00,2025-12-05 17:00,2025-12-05 17:00,0,0,0
CN.AB.AR.5020,DRYWALL 2 SIDE - SWA4 - GL 9-6 - L2 - L-N - ELECTRICAL ROOM,Complete,SWA - 4,West Support Building,SUWS-4 - 9-6,L2 - SubFab Level,ELECTRIC RM 1,CONSTRUCTION,,DRYWALL,AMBER CARO,INTERIORS,2023-12-12 07:00,2023-12-16 17:00,2023-12-12 07:00,2023-12-17 10:00,2025-11-20 17:00,2025-11-20 17:00,2025-12-05 17:00,2025-12-05 17:00,0,40,100
CN.AB.AR.5010,DRYWALL & INSULATION (1 side) (INT) - SWA-4 - L2 - ELECTRICAL ROOM,Complete,SWA - 4,West Support Building,SUWS-4 - 9-6,L2 - SubFab Level,ELECTRIC RM 1,CONSTRUCTION,,DRYWALL,AMBER CARO,INTERIORS,2023-10-17 07:00,2023-10-20 17:00,2023-10-17 07:00,2023-10-20 17:00,2025-11-20 17:00,2025-11-20 17:00,2025-12-05 17:00,2025-12-05 17:00,0,40,100
CN.AB.AR.5080,METAL STUD FRAMING (2hr) - SWA4 - GL 9-3 - L3 - L-N - FA LAB NORTH,Complete,SWA - 4,West Support Building,SUWS-4 - 9-6,L3 / Waffle Slab Level,FA LAB,CONSTRUCTION,BERG,TBD Architectural Finishes,AMBER CARO,INTERIORS,2023-11-20 07:00,2023-11-27 17:00,2023-11-18 08:00,2023-12-06 17:00,2025-11-20 17:00,2025-11-20 17:00,2025-11-24 07:00,2025-11-24 07:00,0,40,100
CN.AB.AR.5090,MEP ROUGH IN & INSPECTION (by SECAI) - SWA4 - GL 9-3- L3 - L-N - FA LAB NORTH,Complete,SWA - 4,West Support Building,SUWS-4 - 9-6,L3 / Waffle Slab Level,FA LAB,CONSTRUCTION,,TBD Architectural Finishes,AMBER CARO,,2024-03-05 07:00,2024-03-08 17:00,2024-03-05 07:00,2024-03-10 10:00,2025-11-20 17:00,2025-11-20 17:00,2025-11-24 07:00,2025-11-24 07:00,0,40,100
CN.AB.AR.5120,TAPE & FINISH DRYWALL - FA LAB NORTH - SWA4 - GL 9-3 - L-N - L3,Complete,SWA - 4,West Support Building,SUWS-4 - 9-6,L3 / Waffle Slab Level,FA LAB,CONSTRUCTION,CHERRY COATING,DRYWALL,AMBER CARO,INTERIORS,2024-05-02 07:00,2024-05-09 17:00,2024-05-02 07:00,2024-05-20 17:00,2025-11-20 17:00,2025-11-20 17:00,2025-12-01 07:00,2025-12-01 07:00,0,50,100
CN.AB.AR.5130,FINISH PAINT - FA LAB NORTH - SWA4 - GL 9-3 - L-N - L3,Not Started,SWA - 4,West Support Building,SUWS-4 - 9-6,L3 / Waffle Slab Level,FA LAB,CONSTRUCTION,FINISH PAINT,TBD Architectural Finishes,JAMES LEE,INTERIORS,2025-11-21 07:00,2025-12-01 17:00,,,2025-11-21 07:00,2025-12-01 17:00,2025-12-01 07:00,2025-12-05 17:00,50,50,0
CN.AB.AR.5110,DRYWALL 2 SIDE - FA LAB NORTH - SWA4 - GL 9-3 - L-N - L3,Complete,SWA - 4,West Support Building,SUWS-4 - 9-6,L3 / Waffle Slab Level,FA LAB,CONSTRUCTION,BERG,DRYWALL,AMBER CARO,INTERIORS,2024-05-17 07:00,2024-05-24 17:00,2024-04-15 07:00,2024-05-15 17:00,2025-11-20 17:00,2025-11-20 17:00,2025-11-24 07:00,2025-11-24 07:00,0,50,100
CN.AB.AR.5100,DRYWALL & INSULATION (1 side) (INT) - SWA4 - GL 9-3 - L3 - L-N - FA LAB NORTH,Complete,SWA - 4,West Support Building,SUWS-4 - 9-6,L3 / Waffle Slab Level,FA LAB,CONSTRUCTION,,DRYWALL,AMBER CARO,INTERIORS,2024-03-12 07:00,2024-03-20 17:00,2024-03-12 07:00,2024-03-18 11:00,2025-11-20 17:00,2025-11-20 17:00,2025-11-24 07:00,2025-11-24 07:00,0,40,100
CN.SWA4.1520,IMPACT - DRB-01 ADDITIONAL BEAMS BETWEEN FAB AND AD - SWA4 - GL 9-6 - L-J,Complete,SWA - 4,,SUWS-4 - 9-6,DS/AD,,CONSTRUCTION,,Decking & Detail,,,2024-02-05 07:00,2024-02-06 13:00,2024-02-05 07:00,2024-02-06 13:00,2025-11-20 17:00,2025-11-20 17:00,2025-06-13 08:00,2025-06-13 08:00,0,16,100
CN.SWA4.1530,PH1 - CLADDING STEEL  EXTERIOR - SWA4 - GL 9-6 - L LINE (DS AREA)(Including Detailing),Complete,SWA - 4,West Support Building,SUWS-4 - 9-6,EXTERIOR SKIN,,CONSTRUCTION,,INSULATED METAL PANELS,JAMES LIVELY,,2024-01-22 07:00,2024-02-03 11:00,2023-12-27 07:00,2024-01-12 15:00,2025-11-20 17:00,2025-11-20 17:00,2025-11-25 07:00,2025-11-25 07:00,0,124,100
CN.SWA4.1222,METAL STUD FRAMING (2hr) - SWA4 - GL 9-6 - L1 - K LINE,Complete,SWA - 4,West Support Building,SUWS-4 - 9-6,L1 - Fndn Slab,DS/AD INTERIORS,CONSTRUCTION,BERG,TBD Architectural Finishes,FIZ DATA CENTER,INTERIORS,2023-11-13 07:00,2023-11-18 15:00,2023-11-13 07:00,2023-11-16 16:00,2025-11-20 17:00,2025-11-20 17:00,2025-11-21 07:00,2025-11-21 07:00,0,48,100
CN.SWA4.1312,TAPE & FINISH DRYWALL - SWA4 - GL 9-6 - L1 - K LINE,Complete,SWA - 4,West Support Building,SUWS-4 - 9-6,L1 - Fndn Slab,DS/AD INTERIORS,CONSTRUCTION,,DRYWALL,FIZ DATA CENTER,INTERIORS,2024-01-05 10:00,2024-01-10 15:00,2024-01-05 07:00,2024-01-26 13:00,2025-11-20 17:00,2025-11-20 17:00,2025-12-05 17:00,2025-12-05 17:00,0,40,100
CN.SWA4.1292,DRYWALL 2 SIDE - SWA4 - GL 9-6 - L1 - K LINE,Complete,SWA - 4,West Support Building,SUWS-4 - 9-6,L1 - Fndn Slab,DS/AD INTERIORS,CONSTRUCTION,,DRYWALL,FIZ DATA CENTER,INTERIORS,2023-12-28 07:00,2024-01-04 12:00,2023-12-28 07:00,2024-01-25 13:00,2025-11-20 17:00,2025-11-20 17:00,2025-12-05 17:00,2025-12-05 17:00,0,40,100
CN.SWA4.1262,DRYWALL & INSULATION (1 side) (INT) - SWA4- GL 9-6 - L1 K LINE,Complete,SWA - 4,West Support Building,SUWS-4 - 9-6,L1 - Fndn Slab,DS/AD INTERIORS,CONSTRUCTION,,DRYWALL,FIZ DATA CENTER,INTERIORS,2023-12-04 15:00,2023-12-10 13:00,2023-12-04 15:00,2023-12-07 16:00,2025-11-20 17:00,2025-11-20 17:00,2025-12-05 17:00,2025-12-05 17:00,0,48,100
CN.SWA4.1242,METAL STUD FRAMING (2hr) - SWA4 - GL 9-6 - L2 - K LINE,Complete,SWA - 4,West Support Building,SUWS-4 - 9-6,L2 - SubFab Level,DS/AD INTERIORS,CONSTRUCTION,BERG,TBD Architectural Finishes,FIZ DATA CENTER,INTERIORS,2023-11-17 11:00,2023-11-22 09:00,2023-11-17 11:00,2023-11-22 13:00,2025-11-20 17:00,2025-11-20 17:00,2025-11-24 07:00,2025-11-24 07:00,0,48,100
CN.SWA4.1322,REMEDY - TAPE & FINISH DRYWALL - SWA4 - GL 9-6 - K LINE - L2,Complete,SWA - 4,West Support Building,SUWS-4 - 9-6,L2 - SubFab Level,DS/AD INTERIORS,CONSTRUCTION,CHERRY COATING,DRYWALL,FIZ DATA CENTER,INTERIORS,2024-08-12 07:00,2024-08-15 17:00,2024-08-12 07:00,2024-08-15 17:00,2025-11-20 17:00,2025-11-20 17:00,2025-12-05 17:00,2025-12-05 17:00,0,30,100
CN.SWA4.1342,FINISH PAINT - SWA4 - GL 9-6 - K LINE - L2,Not Started,SWA - 4,West Support Building,SUWS-4 - 9-6,L2 - SubFab Level,DS/AD INTERIORS,CONSTRUCTION,FINISH PAINT,TBD Architectural Finishes,FIZ DATA CENTER,INTERIORS,2025-11-21 07:00,2025-11-21 07:00,,,2025-11-21 07:00,2025-11-21 07:00,2025-12-05 17:00,2025-12-05 17:00,0,0,0
CN.SWA4.1302,REMEDY - FRAME & DRYWALL - SWA4 - GL 9-6 - K LINE - L2,Complete,SWA - 4,West Support Building,SUWS-4 - 9-6,L2 - SubFab Level,DS/AD INTERIORS,CONSTRUCTION,BERG,DRYWALL,FIZ DATA CENTER,INTERIORS,2024-07-16 07:00,2024-08-05 17:00,2024-07-16 07:00,2024-08-05 17:00,2025-11-20 17:00,2025-11-20 17:00,2025-12-05 17:00,2025-12-05 17:00,0,150,100
CN.SWA4.1282,DRYWALL & INSULATION (1 side) (INT) - SWA4 - GL 9-6 - L2 - K LINE,Complete,SWA - 4,West Support Building,SUWS-4 - 9-6,L2 - SubFab Level,DS/AD INTERIORS,CONSTRUCTION,,DRYWALL,FIZ DATA CENTER,INTERIORS,2023-12-04 11:00,2023-12-10 09:00,2023-12-04 11:00,2023-12-08 12:00,2025-11-20 17:00,2025-11-20 17:00,2025-11-24 07:00,2025-11-24 07:00,0,48,100
CN.SWA4.1212,TEMP WALLS Framing and Drywall- SWA4- GL 9-6 - L2,Complete,SWA - 4,,SUWS-4 - 9-6,L2 - SubFab Level,ELECTRIC RM 1,CONSTRUCTION,,DRYWALL,,,2023-10-09 08:00,2023-10-13 08:00,2023-10-09 08:00,2023-10-13 16:00,2025-11-20 17:00,2025-11-20 17:00,2025-12-05 17:00,2025-12-05 17:00,0,40,100
CN.SWA4.1540,PH1 -WELD CLIPS - CLADDING STEEL - SWA4 - GL 9-5 - L LINE (DS AREA),Complete,SWA - 4,West Support Building,SUWS-4 - 9-6,EXTERIOR SKIN,,CONSTRUCTION,,INSULATED METAL PANELS,JAMES LIVELY,,2023-11-20 07:00,2023-11-21 09:00,2023-11-20 07:00,2023-11-21 09:00,2025-11-20 17:00,2025-11-20 17:00,2025-11-25 07:00,2025-11-25 07:00,0,12,100
CN.SWA4.1250,IMPACT - STARCON VERIFY STUB COLUMNS LAYOUTS - L4E - SWA4 - GL 9-6 - L-J,Complete,SWA - 4,,SUWS-4 - 9-6,DS/AD,,CONSTRUCTION,,Steel Erection,,,2024-01-17 07:00,2024-01-18 13:00,2024-01-16 07:00,2024-02-02 13:00,2025-11-20 17:00,2025-11-20 17:00,2025-06-13 08:00,2025-06-13 08:00,0,16,100
CN.SWA4.1480,PH1- DS/AD DETAILING & DECKING - GL 9 - 6  DS/AD SWA-4 L2 - L3,Complete,SWA - 4,,SUWS-4 - 9-6,DS/AD,,CONSTRUCTION,,Decking & Detail,,,2023-09-14 08:00,2023-09-18 08:00,2023-09-14 08:00,2023-09-26 16:00,2025-11-20 17:00,2025-11-20 17:00,2025-06-13 08:00,2025-06-13 08:00,0,40,100
CN.SWA4.1550,PH1- DS/AD FRP SLAB - DS/AD SWA-4 L2,Complete,SWA - 4,,SUWS-4 - 9-6,DS/AD,,CONSTRUCTION,,SOMD,,,2023-09-28 07:00,2023-10-01 17:00,2023-09-27 08:00,2023-10-01 16:00,2025-11-20 17:00,2025-11-20 17:00,2025-06-13 08:00,2025-06-13 08:00,0,40,100
CN.SWA4.1560,DS/AD STEEL SPRAY FIREPROOFING - SWA-4 L1 CEILING,Complete,SWA - 4,,SUWS-4 - 9-6,DS/AD,,CONSTRUCTION,,Roofing,,,2023-10-16 08:00,2023-10-20 16:00,2023-10-16 08:00,2023-11-05 11:00,2025-11-20 17:00,2025-11-20 17:00,2025-11-12 07:00,2025-11-12 07:00,0,48,100
CN.SWA4.1352,METAL STUD FRAMING (2hr) - SWA4 - GL 9-6 - L3 - K Line,Complete,SWA - 4,West Support Building,SUWS-4 - 9-6,L3 / Waffle Slab Level,DS/AD INTERIORS,CONSTRUCTION,BERG,TBD Architectural Finishes,FIZ DATA CENTER,INTERIORS,2024-04-26 11:00,2024-05-04 17:00,2024-03-05 00:00,2024-03-11 00:00,2025-11-20 17:00,2025-11-20 17:00,2025-06-13 08:00,2025-06-13 08:00,0,16,100
CN.SWA4.1392,TAPE & FINISH DRYWALL - SWA4 - GL 9-6 - K LINE - L3,Complete,SWA - 4,West Support Building,SUWS-4 - 9-6,L3 / Waffle Slab Level,DS/AD INTERIORS,CONSTRUCTION,CHERRY COATING,DRYWALL,FIZ DATA CENTER,INTERIORS,2024-05-17 07:00,2024-05-23 17:00,2024-05-17 07:00,2024-05-22 17:00,2025-11-20 17:00,2025-11-20 17:00,2025-06-13 08:00,2025-06-13 08:00,0,40,100
CN.SWA4.1402,D/S SGP Wall Turnover - SWA4 - GL 9-6 - K LINE - L3,Complete,SWA - 4,West Support Building,SUWS-4 - 9-6,L3 / Waffle Slab Level,DS/AD INTERIORS,CONSTRUCTION,,TBD Architectural Finishes,FIZ DATA CENTER,INTERIORS,2024-05-23 07:00,2024-05-23 17:00,2024-05-23 07:00,2024-05-23 17:00,2025-11-20 17:00,2025-11-20 17:00,2025-06-13 08:00,2025-06-13 08:00,0,10,100
CN.SWA4.1382,DRYWALL 2 SIDE - SWA4 - GL 9-6 - K LINE - L3,Complete,SWA - 4,West Support Building,SUWS-4 - 9-6,L3 / Waffle Slab Level,DS/AD INTERIORS,CONSTRUCTION,BERG,DRYWALL,FIZ DATA CENTER,INTERIORS,2024-05-13 07:00,2024-05-17 17:00,2024-05-11 07:00,2024-05-15 17:00,2025-11-20 17:00,2025-11-20 17:00,2025-06-13 08:00,2025-06-13 08:00,0,40,100
CN.SWA4.1372,DRYWALL & INSULATION (1 side) (INT) - SWA4 - GL 9-6 - L3 - K LINE,Complete,SWA - 4,West Support Building,SUWS-4 - 9-6,L3 / Waffle Slab Level,DS/AD INTERIORS,CONSTRUCTION,,DRYWALL,FIZ DATA CENTER,INTERIORS,2024-04-29 07:00,2024-05-03 17:00,2024-03-13 00:00,2024-03-18 15:00,2025-11-20 17:00,2025-11-20 17:00,2025-06-13 08:00,2025-06-13 08:00,0,40,100
CN.SWA4.1000,WATER PROOF PEDESTALS - SWA4 - GL 7-1 - L4 - L-N - ROOF,Complete,SWA - 4,West Support Building,SUWS-4 - 9-6,L4 - SUP Roof - FAB Roof,,CONSTRUCTION,,Roofing,FIZ DATA CENTER,SOMD / Roofing / Waterproofing,2023-12-08 09:00,2023-12-08 17:00,2023-11-25 09:00,2023-11-26 17:00,2025-11-20 17:00,2025-11-20 17:00,2025-11-25 07:00,2025-11-25 07:00,0,8,100
CN.SWA4.6000,WATER PROOFING & POUR PEDASTALS - SWA4 - GL 7-1 - L4 - L-N - ROOF,Complete,SWA - 4,West Support Building,SUWS-4 - 9-6,L4 - SUP Roof - FAB Roof,,CONSTRUCTION,,Roofing,FIZ DATA CENTER,SOMD / Roofing / Waterproofing,2023-12-09 08:00,2023-12-09 16:00,2023-11-26 08:00,2023-11-27 16:00,2025-11-20 17:00,2025-11-20 17:00,2025-11-25 07:00,2025-11-25 07:00,0,8,100
CN.SWA4.6010,FINISH WATER PROOFING & POUR PEDASTALS - SWA4 - GL 7-1 - L4 - L-N - ROOF,Complete,SWA - 4,West Support Building,SUWS-4 - 9-6,L4 - SUP Roof - FAB Roof,,CONSTRUCTION,,Roofing,FIZ DATA CENTER,SOMD / Roofing / Waterproofing,2023-12-10 08:00,2023-12-10 16:00,2023-11-27 08:00,2023-11-28 16:00,2025-11-20 17:00,2025-11-20 17:00,2025-11-25 07:00,2025-11-25 07:00,0,8,100
CN.SWA4.6020,STRIP PEDSTALS & WORK ON SCRUBBER PAD - SWA4 - GL 7-1 - L4 - L-N - ROOF,Complete,SWA - 4,West Support Building,SUWS-4 - 9-6,L4 - SUP Roof - FAB Roof,,CONSTRUCTION,,Roofing,FIZ DATA CENTER,SOMD / Roofing / Waterproofing,2023-12-11 07:00,2023-12-11 15:00,2023-11-29 07:00,2023-11-30 15:00,2025-11-20 17:00,2025-11-20 17:00,2025-11-25 07:00,2025-11-25 07:00,0,8,100
CN.SWA4.6030,FINISH FORM & INSPECT - SWA4 - GL 7-1 - L4 - L-N - ROOF,Complete,SWA - 4,West Support Building,SUWS-4 - 9-6,L4 - SUP Roof - FAB Roof,,CONSTRUCTION,,Roofing,FIZ DATA CENTER,SOMD / Roofing / Waterproofing,2023-12-11 15:00,2023-12-12 13:00,2023-12-01 15:00,2023-12-02 13:00,2025-11-20 17:00,2025-11-20 17:00,2025-11-25 07:00,2025-11-25 07:00,0,8,100
CN.SWA4.6040,PLACE SCRUBBER PAD - SWA4 - GL 7-1 - L4 - L-N - ROOF,Complete,SWA - 4,West Support Building,SUWS-4 - 9-6,L4 - SUP Roof - FAB Roof,,CONSTRUCTION,,Roofing,FIZ DATA CENTER,SOMD / Roofing / Waterproofing,2023-12-12 13:00,2023-12-14 11:00,2023-12-02 13:00,2023-12-03 11:00,2025-11-20 17:00,2025-11-20 17:00,2025-11-25 07:00,2025-11-25 07:00,0,8,100
CN.SWA4.6050,STRIP FORMS - SWA4 - GL 7-1 - L4 - L-N - ROOF,Complete,SWA - 4,West Support Building,SUWS-4 - 9-6,L4 - SUP Roof - FAB Roof,,CONSTRUCTION,,Roofing,FIZ DATA CENTER,SOMD / Roofing / Waterproofing,2023-12-11 07:00,2023-12-11 15:00,2023-12-03 15:00,2023-12-04 17:00,2025-11-20 17:00,2025-11-20 17:00,2025-11-25 07:00,2025-11-25 07:00,0,8,100
CN.SWA4.6060,STRIP FORMS & SHORT PATCHING - SWA4 - GL 7-1 - L4 - L-N - ROOF,Complete,SWA - 4,West Support Building,SUWS-4 - 9-6,L4 - SUP Roof - FAB Roof,,CONSTRUCTION,,Roofing,FIZ DATA CENTER,SOMD / Roofing / Waterproofing,2023-12-11 15:00,2023-12-12 13:00,2023-12-05 09:46,2023-12-05 17:00,2025-11-20 17:00,2025-11-20 17:00,2025-11-25 07:00,2025-11-25 07:00,0,8,100
CN.SWA4.6070,CONTINUE PATCHING & INSPECT - SWA4 - GL 7-1 - L4 - L-N - ROOF,Complete,SWA - 4,West Support Building,SUWS-4 - 9-6,L4 - SUP Roof - FAB Roof,,CONSTRUCTION,,Roofing,FIZ DATA CENTER,SOMD / Roofing / Waterproofing,2023-12-12 13:00,2023-12-14 11:00,2023-12-07 07:00,2023-12-07 17:00,2025-11-20 17:00,2025-11-20 17:00,2025-11-25 07:00,2025-11-25 07:00,0,8,100
CN.SWA4.6080,PRIMER INSTALL - SWA4 - GL 9-6 - L4 - L-N - ROOF,Complete,SWA - 4,West Support Building,SUWS-4 - 9-6,L4 - SUP Roof - FAB Roof,,CONSTRUCTION,,TOPPING,FIZ DATA CENTER,SOMD / Roofing / Waterproofing,2024-02-22 07:00,2024-02-22 15:00,2024-02-22 07:00,2024-02-22 15:00,2025-11-20 17:00,2025-11-20 17:00,2025-11-25 07:00,2025-11-25 07:00,0,8,100
CN.SWA4.6100,"BASE COAT, INSPECT BASE COAT, & INSPECT P TO CONTINUE BASE COAT - GL 9-6 - SWA-4-ROOF",Complete,SWA - 4,West Support Building,SUWS-4 - 9-6,L4 - SUP Roof - FAB Roof,,CONSTRUCTION,,TOPPING,FIZ DATA CENTER,SOMD / Roofing / Waterproofing,2024-02-23 14:00,2024-02-27 10:00,2024-02-23 14:00,2024-02-24 13:00,2025-11-20 17:00,2025-11-20 17:00,2025-11-25 07:00,2025-11-25 07:00,0,16,100
CN.SWA4.6120,TOP COAT - SWA4 - GL 9-6 - L4 - L-N - ROOF,Complete,SWA - 4,West Support Building,SUWS-4 - 9-6,L4 - SUP Roof - FAB Roof,,CONSTRUCTION,,TOPPING,FIZ DATA CENTER,SOMD / Roofing / Waterproofing,2024-02-27 13:00,2024-03-01 09:00,2024-02-27 13:00,2024-03-01 09:00,2025-11-20 17:00,2025-11-20 17:00,2025-11-25 07:00,2025-11-25 07:00,0,16,100
CN.SWA4.6140,CRICKET INSTALL - SWA4 - GL 9-6 - L4 - L-N - ROOF,Complete,SWA - 4,West Support Building,SUWS-4 - 9-6,L4 - SUP Roof - FAB Roof,,CONSTRUCTION,,TOPPING,FIZ DATA CENTER,SOMD / Roofing / Waterproofing,2024-03-01 09:00,2024-03-03 13:00,2024-03-01 09:00,2024-03-03 16:00,2025-11-20 17:00,2025-11-20 17:00,2025-11-25 07:00,2025-11-25 07:00,0,24,100
CN.SWA4.6150,PRIME CRICKET - SWA4 - GL 9-6 - L4 - L-N - ROOF,Complete,SWA - 4,West Support Building,SUWS-4 - 9-6,L4 - SUP Roof - FAB Roof,,CONSTRUCTION,,TOPPING,FIZ DATA CENTER,SOMD / Roofing / Waterproofing,2024-03-12 07:00,2024-03-12 15:00,2024-03-04 07:00,2024-03-05 15:00,2025-11-20 17:00,2025-11-20 17:00,2025-11-25 07:00,2025-11-25 07:00,0,8,100
CN.SWA4.6160,BASE COAT CRICKET - SWA4 - GL 9-6 - L4 - L-N - ROOF,Complete,SWA - 4,West Support Building,SUWS-4 - 9-6,L4 - SUP Roof - FAB Roof,,CONSTRUCTION,,TOPPING,FIZ DATA CENTER,SOMD / Roofing / Waterproofing,2024-03-12 07:00,2024-03-12 15:00,2024-03-06 15:00,2024-03-07 13:00,2025-11-20 17:00,2025-11-20 17:00,2025-11-25 07:00,2025-11-25 07:00,0,8,100
CN.SWA4.6200,FRP TOPPING SLAB - SWA4 - GL 9-6 - L-N - L4 ROOF,Complete,SWA - 4,West Support Building,SUWS-4 - 9-6,L4 - SUP Roof - FAB Roof,,CONSTRUCTION,BAKER,TOPPING,FIZ DATA CENTER,SOMD / Roofing / Waterproofing,2024-05-24 07:00,2024-05-31 17:00,2024-05-16 07:00,2024-05-20 17:00,2025-11-20 17:00,2025-11-20 17:00,2025-11-25 07:00,2025-11-25 07:00,0,40,100
CN.SWA4.1232,IMPACT [CL 48-67] - LEVEL 1 DRAIN BODIES - EXCAVATION & INSTALL - SWA-4 - L1 - GL 7-9,Complete,SWA - 4,West Support Building,SUWS-4 - 9-6,L1 - Fndn Slab,,CONSTRUCTION,,TBD Architectural Finishes,JAMES LIVELY,INTERIORS,2023-10-17 13:00,2023-10-24 11:00,2023-10-10 07:00,2023-10-26 17:00,2025-11-20 17:00,2025-11-20 17:00,2025-09-04 07:00,2025-09-04 07:00,0,58,100
CN.SWA4.6230,GROUT & PATCH - SWA4 - GL 9-3 - L3 - L-N,Complete,SWA - 4,West Support Building,SUWS-4 - 9-6,L3 / Waffle Slab Level,FA LAB,CONSTRUCTION,,TBD Architectural Finishes,FIZ DATA CENTER,INTERIORS,2024-02-09 08:00,2024-02-12 14:00,2024-02-09 08:00,2024-02-10 15:00,2025-11-20 17:00,2025-11-20 17:00,2025-12-01 07:00,2025-12-01 07:00,0,16,100
CN.SWA4.6240,"PRIME, PATCH & TOPCOAT PRECAST BEAMS - FA LAB NORTH - SWA4 - GL 9-3 - L-N - L3",Complete,SWA - 4,West Support Building,SUWS-4 - 9-6,L3 / Waffle Slab Level,FA LAB,CONSTRUCTION,CHERRY COATING,TBD Architectural Finishes,FIZ DATA CENTER,INTERIORS,2024-05-30 07:00,2024-06-10 17:00,2024-05-30 07:00,2024-06-15 17:00,2025-11-20 17:00,2025-11-20 17:00,2025-12-01 07:00,2025-12-01 07:00,0,70,100
CN.SWA4.1570,PH1- DS/AD GRATING - DS/AD SWA-4 L3,Complete,SWA - 4,,SUWS-4 - 9-6,DS/AD,,CONSTRUCTION,,SOMD,,,2023-10-30 07:00,2023-11-04 17:00,2023-09-22 11:30,2023-09-26 17:00,2025-11-20 17:00,2025-11-20 17:00,2025-06-13 08:00,2025-06-13 08:00,0,40,100
CN.SWA4.6250,L6 DS FRP SLAB - DS/AD - SWA4 - GL 9-6 - L-J,Complete,SWA - 4,West Support Building,SUWS-4 - 9-6,DS/AD,,CONSTRUCTION,,SOMD,CONCRETE,,2024-01-22 15:00,2024-01-25 09:00,2024-01-09 15:00,2024-01-11 15:00,2025-11-20 17:00,2025-11-20 17:00,2025-06-13 08:00,2025-06-13 08:00,0,24,100
CN.SWA4.1590,L6 DS/AD CURE FRP SLAB - DS/AD - SWA4 - GL 9-6 - L-J L6,Complete,SWA - 4,,SUWS-4 - 9-6,DS/AD,,CONSTRUCTION,,SOMD,,,2024-01-11 09:00,2024-01-17 09:00,2024-01-11 07:00,2024-01-14 12:00,2025-11-20 17:00,2025-11-20 17:00,2025-06-13 08:00,2025-06-13 08:00,0,32,100
CN.SWA4.1210,DETAIL & INSPECT CLADDING STEEL - SWA4 - GL 9-6 - N LINE (SUP EXTERIOR WALL),Complete,SWA - 4,,SUWS-4 - 9-6,EXTERIOR SKIN,,CONSTRUCTION,,INSULATED METAL PANELS,,,2024-01-30 11:00,2024-02-01 15:00,2024-01-24 11:00,2024-02-01 15:00,2025-11-20 17:00,2025-11-20 17:00,2025-12-05 07:00,2025-12-05 07:00,0,24,100
CN.SWA4.1340,INSTALL INSULATED METAL PANEL MODULES - GL 9-6 - K LINE (AD AREA),Complete,SWA - 4,,SUWS-4 - 9-6,EXTERIOR SKIN,,CONSTRUCTION,KOVACH,INSULATED METAL PANELS,,,2024-06-27 07:00,2024-07-01 17:00,2024-06-17 07:00,2024-06-19 17:00,2025-11-20 17:00,2025-11-20 17:00,2025-11-25 07:00,2025-11-25 07:00,0,50,100
CN.SWA4.6260,IMPACT [S.TIA-113] - POST INSTALL EQUIP PADS (MEP MATERIALS OBSTRUCTION) - SUW4 - GL N/9 - N-M,Complete,SWA - 4,West Support Building,SUWS-4 - 9-6,L1 - Fndn Slab,GAS PURIFIER RM,CONSTRUCTION,,Pour Concrete,JAMES LEE,SOMD / Roofing / Waterproofing,2023-11-20 07:00,2023-11-27 17:00,2023-11-16 07:00,2023-12-01 11:00,2025-11-20 17:00,2025-11-20 17:00,2025-12-01 07:00,2025-12-01 07:00,0,40,100
CN.SWA4.6270,IMPACT [S.TIA-114] - NCR AT GL 9 EXPANSION JOINT - SUW4 - GL N/9 - N-L,Complete,SWA - 4,West Support Building,SUWS-4 - 9-6,L1 - Fndn Slab,GAS PURIFIER RM,CONSTRUCTION,,Pour Concrete,JAMES LEE,SOMD / Roofing / Waterproofing,2023-11-20 07:00,2023-11-27 17:00,2023-11-16 07:00,2023-12-05 15:00,2025-11-20 17:00,2025-11-20 17:00,2025-12-01 07:00,2025-12-01 07:00,0,40,100
CN.SWA4.1580,KNEE WALL -SWA 4 - GL 9-6 - L4 - J-K -DS/AD,Complete,SWA - 4,,SUWS-4 - 9-6,DS/AD,,CONSTRUCTION,,Cast-in Place Concrete - Baker Concrete,,,2024-02-13 11:00,2024-02-16 13:00,2024-02-13 11:00,2024-02-15 13:00,2025-11-20 17:00,2025-11-20 17:00,2025-11-25 07:00,2025-11-25 07:00,0,32,100
CN.SWA4.6280,K-LINE STEEL SPRAY FIREPROOFING SFRM2 - SWA4 - L3-CEILING - GL 6-9,Complete,SWA - 4,West Support Building,SUWS-4 - 9-6,L4 - SUP Roof - FAB Roof,DS/AD INTERIORS,CONSTRUCTION,ROLLING PLAINS,Fireproofing,HOON WOO,,2024-04-19 07:00,2024-04-25 17:00,2024-04-19 07:00,2024-04-23 17:00,2025-11-20 17:00,2025-11-20 17:00,2025-06-13 08:00,2025-06-13 08:00,0,50,100
CN.SWA4.6290,AD STEEL PAINT FIREPROOFING IFRM - SWA4 - GL 6-10 - L-J - L2-CEILING,Complete,SWA - 4,,SUWS-4 - 9-6,DS/AD,,CONSTRUCTION,ROLLING PLAINS,Roofing,,,2024-06-21 07:00,2024-07-01 17:00,2024-06-21 07:00,2024-06-25 17:00,2025-11-20 17:00,2025-11-20 17:00,2025-11-24 07:00,2025-11-24 07:00,0,60,100
CN.AB.AR.6740,TRENCH ANGLE INSTALL & POUR - SLURRY ROOM - A4 - GL 9-6 - L2,Complete,SWA - 4,West Support Building,A4 - Area 3 (Gridlines 9-6),L2 - SubFab Level,,CONSTRUCTION,BAKER,TBD Architectural Finishes,JAMES LEE,INTERIORS,2025-03-28 07:00,2025-04-03 17:00,2025-03-10 10:42,2025-03-19 17:00,2025-11-20 17:00,2025-11-20 17:00,2025-12-05 17:00,2025-12-05 17:00,0,50,100
CN.SWA4.6300,PH1-ROOF LAYER PARAPET(FRAMING & SHEATING RIP) - SWB4 - GL 9-6 - L4 - N,Complete,SWA - 4,West Support Building,SUWS-4 - 9-6,L4 - SUP Roof - FAB Roof,,CONSTRUCTION,,TOPPING,FIZ DATA CENTER,SOMD / Roofing / Waterproofing,2024-02-26 07:00,2024-03-01 17:00,2024-02-26 07:00,2024-03-01 17:00,2025-11-20 17:00,2025-11-20 17:00,2025-12-05 17:00,2025-12-05 17:00,0,40,100
CN.SWA4.6310,ROOFTOP DRY PARAPET - SWB-1 GL 9-6 N L LINE (DS AREA),Complete,SWA - 4,West Support Building,SUWS-4 - 9-6,EXTERIOR SKIN,,CONSTRUCTION,,INSULATED METAL PANELS,JAMES LIVELY,,2024-02-19 08:00,2024-02-24 14:00,2024-02-19 08:00,2024-02-24 15:00,2025-11-20 17:00,2025-11-20 17:00,2025-12-05 17:00,2025-12-05 17:00,0,46,100
CN.SWA4.6320,INSTALL INSULATED METAL PANEL MODULES - GL 9-6 - J LINE (AD AREA),Complete,SWA - 4,West Support Building,SUWS-4 - 9-6,DS/AD,,CONSTRUCTION,KOVACH,Waterproofing - Preferred,JAMES LIVELY,,2024-07-02 07:00,2024-07-05 17:00,2024-06-25 07:00,2024-06-25 17:00,2025-11-20 17:00,2025-11-20 17:00,2025-12-05 17:00,2025-12-05 17:00,0,20,100
CN.SWA4.6330,INSTALL TPO ROOFING - SWA4 - GL 3-6 - K-L - L6,Complete,SWA - 4,West Support Building,SUWS-4 - 9-6,L6 - PENTHOUSE / DS ROOF,,CONSTRUCTION,BRAZOS,TOPPING,JAMES LIVELY,,2024-10-01 07:00,2024-10-04 17:00,2024-10-01 07:00,2024-10-04 17:00,2025-11-20 17:00,2025-11-20 17:00,2025-12-05 17:00,2025-12-05 17:00,0,30,100
CN.SWA4.6340,DCC BEAM (STEEL STRUCTURE) - SWA4 - GL 9-6 - L3 - K LINE,Complete,SWA - 4,West Support Building,SUWS-4 - 9-6,L3 / Waffle Slab Level,DS/AD INTERIORS,CONSTRUCTION,,TBD Architectural Finishes,FIZ DATA CENTER,INTERIORS,2024-02-08 07:00,2024-02-15 09:00,2024-02-08 07:00,2024-02-09 13:00,2025-11-20 17:00,2025-11-20 17:00,2025-06-13 08:00,2025-06-13 08:00,0,72,100
CN.SWA4.6350,TEMPORARY SCAFFOLD PLATFORM - SWA4 - GL 9-6 - L3 K LINE,Complete,SWA - 4,West Support Building,SUWS-4 - 9-6,L3 / Waffle Slab Level,DS/AD INTERIORS,CONSTRUCTION,,TBD Architectural Finishes,FIZ DATA CENTER,INTERIORS,2024-02-10 08:00,2024-02-14 16:00,2024-02-10 08:00,2024-02-15 09:00,2025-11-20 17:00,2025-11-20 17:00,2025-06-13 08:00,2025-06-13 08:00,0,48,100
CN.SWA4.6360,SECAI MEP IN WALL ROUGH INS - SWA4 - GL 9-6 - K LINE - L3,Complete,SWA - 4,West Support Building,SUWS-4 - 9-6,L3 / Waffle Slab Level,DS/AD INTERIORS,CONSTRUCTION,SECAI,TBD Architectural Finishes,FIZ DATA CENTER,INTERIORS,2024-05-06 07:00,2024-05-06 17:00,2024-05-06 07:00,2024-05-09 17:00,2025-11-20 17:00,2025-11-20 17:00,2025-06-13 08:00,2025-06-13 08:00,0,10,100
CN.SWA4.6370,Drywall Clips & AMTS Installs Support Beams - SWA4 - GL 9-6 - K LINE - L4,Complete,SWA - 4,West Support Building,SUWS-4 - 9-6,L4 - SUP Roof - FAB Roof,DS/AD INTERIORS,CONSTRUCTION,,Fireproofing,HOON WOO,,2024-03-23 08:00,2024-03-30 10:00,2024-02-26 00:00,2024-03-12 00:00,2025-11-20 17:00,2025-11-20 17:00,2025-06-13 08:00,2025-06-13 08:00,0,72,100
CN.SWA4.6390,ADD FLANGE EXTENSIONS/ CUT GRATING - SWA4 - GL 9-6 - K LINE - L4,Complete,SWA - 4,West Support Building,SUWS-4 - 9-6,L4 - SUP Roof - FAB Roof,DS/AD INTERIORS,CONSTRUCTION,PERRY & PERRY,Fireproofing,HOON WOO,,2024-02-20 07:00,2024-02-22 17:00,2024-02-20 07:00,2024-02-22 17:00,2025-11-20 17:00,2025-11-20 17:00,2025-06-13 08:00,2025-06-13 08:00,0,30,100
CN.SWA4.6400,AD STEEL APPLY INTUMESCENT - SWA4 - GL 6-9 - J-K - L3 CEILING,Complete,SWA - 4,West Support Building,SUWS-4 - 9-6,L4 - SUP Roof - FAB Roof,DS/AD INTERIORS,CONSTRUCTION,ROLLING PLAINS,Fireproofing,HOON WOO,,2024-05-30 07:00,2024-06-03 17:00,2024-05-30 07:00,2024-06-03 17:00,2025-11-20 17:00,2025-11-20 17:00,2025-06-13 08:00,2025-06-13 08:00,0,30,100
CN.SWA4.6410,CURE AD INTUMESCENT PAINT - SWA4 - GL 9-6 - K-J - L4,Complete,SWA - 4,West Support Building,SUWS-4 - 9-6,L4 - SUP Roof - FAB Roof,DS/AD INTERIORS,CONSTRUCTION,ROLLING PLAINS,Fireproofing,HOON WOO,,2024-06-04 07:00,2024-06-27 17:00,2024-06-04 07:00,2024-07-02 17:00,2025-11-20 17:00,2025-11-20 17:00,2025-12-05 17:00,2025-12-05 17:00,0,140,100
CN.SWA4.6420,SECAI - AMTS INSTALL UPPER CEILING  - SWA4 - GL 9-6 - K LINE - L4,Complete,SWA - 4,West Support Building,SUWS-4 - 9-6,L4 - SUP Roof - FAB Roof,DS/AD INTERIORS,CONSTRUCTION,SECAI,Fireproofing,HOON WOO,,2024-10-21 07:00,2024-10-25 17:00,2024-07-10 07:00,2024-07-16 17:00,2025-11-20 17:00,2025-11-20 17:00,2025-12-05 17:00,2025-12-05 17:00,0,40,100
CN.SWA4.6460,INSTALL PRIMER - GL 5-6 - L-N - L4 ROOF,Complete,SWA - 4,West Support Building,FIZ 2 / SUWS 5  (GL6-1) - GL J - N - DATA CENTER 1,L4 - SUP Roof - FAB Roof,,CONSTRUCTION,BRAZOS,TOPPING,FIZ DATA CENTER,SOMD / Roofing / Waterproofing,2025-02-05 07:00,2025-02-05 17:00,2025-02-05 07:00,2025-02-05 17:00,2025-11-20 17:00,2025-11-20 17:00,2025-12-05 17:00,2025-12-05 17:00,0,10,100
CN.SWA4.6470,INSPECT PRIMER - GL 5-6 - L-N - L4 ROOF,Complete,SWA - 4,West Support Building,FIZ 2 / SUWS 5  (GL6-1) - GL J - N - DATA CENTER 1,L4 - SUP Roof - FAB Roof,,CONSTRUCTION,BRAZOS,TOPPING,FIZ DATA CENTER,SOMD / Roofing / Waterproofing,2025-02-06 07:00,2025-02-06 17:00,2025-02-06 07:00,2025-02-06 17:00,2025-11-20 17:00,2025-11-20 17:00,2025-12-05 17:00,2025-12-05 17:00,0,10,100
CN.SWA4.6480,INSTALL BASE COAT - GL 5-6 - L-N - L4 ROOF,Complete,SWA - 4,West Support Building,FIZ 2 / SUWS 5  (GL6-1) - GL J - N - DATA CENTER 1,L4 - SUP Roof - FAB Roof,,CONSTRUCTION,BRAZOS,TOPPING,FIZ DATA CENTER,SOMD / Roofing / Waterproofing,2025-02-06 07:00,2025-02-06 17:00,2025-02-06 07:00,2025-02-06 17:00,2025-11-20 17:00,2025-11-20 17:00,2025-12-05 17:00,2025-12-05 17:00,0,10,100
CN.SWA4.6490,INSPECT BASE COAT - GL 5-6 - L-N - L4 ROOF,Complete,SWA - 4,West Support Building,FIZ 2 / SUWS 5  (GL6-1) - GL J - N - DATA CENTER 1,L4 - SUP Roof - FAB Roof,,CONSTRUCTION,BRAZOS,TOPPING,FIZ DATA CENTER,SOMD / Roofing / Waterproofing,2025-02-07 07:00,2025-02-07 17:00,2025-02-07 07:00,2025-02-07 17:00,2025-11-20 17:00,2025-11-20 17:00,2025-12-05 17:00,2025-12-05 17:00,0,10,100
CN.SWA4.6500,INSTALL TOP COAT - GL 5-6 - L-N - L4 ROOF,Complete,SWA - 4,West Support Building,FIZ 2 / SUWS 5  (GL6-1) - GL J - N - DATA CENTER 1,L4 - SUP Roof - FAB Roof,,CONSTRUCTION,BRAZOS,TOPPING,FIZ DATA CENTER,SOMD / Roofing / Waterproofing,2025-02-07 07:00,2025-02-07 17:00,2025-02-07 07:00,2025-02-07 17:00,2025-11-20 17:00,2025-11-20 17:00,2025-12-05 17:00,2025-12-05 17:00,0,10,100
CN.SWA4.6510,INSPECT TOP COAT - GL 5-6 - L-N - L4 ROOF,Complete,SWA - 4,West Support Building,FIZ 2 / SUWS 5  (GL6-1) - GL J - N - DATA CENTER 1,L4 - SUP Roof - FAB Roof,,CONSTRUCTION,BRAZOS,TOPPING,FIZ DATA CENTER,SOMD / Roofing / Waterproofing,2025-02-10 07:00,2025-02-10 17:00,2025-02-08 07:00,2025-02-08 17:00,2025-11-20 17:00,2025-11-20 17:00,2025-12-05 17:00,2025-12-05 17:00,0,10,100
CN.SWA4.6520,INSPECT TOP COAT CRICKET - GL 5-6 - L-N - L4 ROOF,Complete,SWA - 4,West Support Building,FIZ 2 / SUWS 5  (GL6-1) - GL J - N - DATA CENTER 1,L4 - SUP Roof - FAB Roof,,CONSTRUCTION,BRAZOS,TOPPING,FIZ DATA CENTER,SOMD / Roofing / Waterproofing,2025-02-14 07:00,2025-02-14 17:00,2025-02-17 07:00,2025-02-17 17:00,2025-11-20 17:00,2025-11-20 17:00,2025-12-05 17:00,2025-12-05 17:00,0,10,100
CN.SWA4.6530,FRP TOPPING SLAB - GL 5-6 - L-N - L4 ROOF,Complete,SWA - 4,West Support Building,FIZ 2 / SUWS 5  (GL6-1) - GL J - N - DATA CENTER 1,L4 - SUP Roof - FAB Roof,,CONSTRUCTION,BAKER,TOPPING,FIZ DATA CENTER,SOMD / Roofing / Waterproofing,2025-02-17 07:00,2025-02-19 17:00,2025-02-18 07:00,2025-02-18 17:00,2025-11-20 17:00,2025-11-20 17:00,2025-12-05 17:00,2025-12-05 17:00,0,30,100
CN.SWA4.6570,"PRIME, PATCH & TOPCOAT PRECAST COLUMNS - FA LAB NORTH - SWA4 - GL 9-3 - L-N - L3",Complete,SWA - 4,West Support Building,SUWS-4 - 9-6,L3 / Waffle Slab Level,FA LAB,CONSTRUCTION,CHERRY COATING,TBD Architectural Finishes,FIZ DATA CENTER,INTERIORS,2024-05-30 07:00,2024-06-10 17:00,2024-05-30 07:00,2024-06-15 17:00,2025-11-20 17:00,2025-11-20 17:00,2025-12-05 17:00,2025-12-05 17:00,0,70,100
CN.SWA4.6590,INSTALL BASE COAT CRICKET - GL 5-6 - L-N - L4 ROOF,Complete,SWA - 4,West Support Building,FIZ 2 / SUWS 5  (GL6-1) - GL J - N - DATA CENTER 1,L4 - SUP Roof - FAB Roof,,CONSTRUCTION,BRAZOS,TOPPING,FIZ DATA CENTER,SOMD / Roofing / Waterproofing,2025-02-10 07:00,2025-02-10 17:00,2025-02-15 07:00,2025-02-15 17:00,2025-11-20 17:00,2025-11-20 17:00,2025-12-05 17:00,2025-12-05 17:00,0,10,100
CN.SWA4.6600,INSPECT BASE COAT CRICKET - GL 5-6 - L-N - L4 ROOF,Complete,SWA - 4,West Support Building,FIZ 2 / SUWS 5  (GL6-1) - GL J - N - DATA CENTER 1,L4 - SUP Roof - FAB Roof,,CONSTRUCTION,BRAZOS,TOPPING,FIZ DATA CENTER,SOMD / Roofing / Waterproofing,2025-02-11 07:00,2025-02-11 17:00,2025-02-15 07:00,2025-02-15 17:00,2025-11-20 17:00,2025-11-20 17:00,2025-12-05 17:00,2025-12-05 17:00,0,10,100
CN.SWA4.6610,INSTALL TOP COAT CRICKET - GL 5-6 - L-N - L4 ROOF,Complete,SWA - 4,West Support Building,FIZ 2 / SUWS 5  (GL6-1) - GL J - N - DATA CENTER 1,L4 - SUP Roof - FAB Roof,,CONSTRUCTION,BRAZOS,TOPPING,FIZ DATA CENTER,SOMD / Roofing / Waterproofing,2025-02-12 07:00,2025-02-12 17:00,2025-02-17 07:00,2025-02-17 17:00,2025-11-20 17:00,2025-11-20 17:00,2025-12-05 17:00,2025-12-05 17:00,0,10,100
CN.SWA4.6620,INSTALL CRICKET - GL 5-6 - L-N - L4 ROOF,Complete,SWA - 4,West Support Building,FIZ 2 / SUWS 5  (GL6-1) - GL J - N - DATA CENTER 1,L4 - SUP Roof - FAB Roof,,CONSTRUCTION,BRAZOS,TOPPING,FIZ DATA CENTER,SOMD / Roofing / Waterproofing,2025-02-10 07:00,2025-02-12 17:00,2025-02-10 07:00,2025-02-11 17:00,2025-11-20 17:00,2025-11-20 17:00,2025-12-05 17:00,2025-12-05 17:00,0,30,100
CN.SWA4.6630,INSPECT CRICKET - GL 5-6 - L-N - L4 ROOF,Complete,SWA - 4,West Support Building,FIZ 2 / SUWS 5  (GL6-1) - GL J - N - DATA CENTER 1,L4 - SUP Roof - FAB Roof,,CONSTRUCTION,BRAZOS,TOPPING,FIZ DATA CENTER,SOMD / Roofing / Waterproofing,2025-02-12 07:00,2025-02-12 17:00,2025-02-12 07:00,2025-02-12 17:00,2025-11-20 17:00,2025-11-20 17:00,2025-12-05 17:00,2025-12-05 17:00,0,10,100
CN.SWA4.6640,INSTALL PRIMER CRICKET - GL 5-6 - L-N - L4 ROOF,Complete,SWA - 4,West Support Building,FIZ 2 / SUWS 5  (GL6-1) - GL J - N - DATA CENTER 1,L4 - SUP Roof - FAB Roof,,CONSTRUCTION,BRAZOS,TOPPING,FIZ DATA CENTER,SOMD / Roofing / Waterproofing,2025-02-07 07:00,2025-02-07 17:00,2025-02-13 07:00,2025-02-13 17:00,2025-11-20 17:00,2025-11-20 17:00,2025-12-05 17:00,2025-12-05 17:00,0,10,100
CN.SWA4.6650,INSPECT PRIMER CRICKET - GL 5-6 - L-N - L4 ROOF,Complete,SWA - 4,West Support Building,FIZ 2 / SUWS 5  (GL6-1) - GL J - N - DATA CENTER 1,L4 - SUP Roof - FAB Roof,,CONSTRUCTION,BRAZOS,TOPPING,FIZ DATA CENTER,SOMD / Roofing / Waterproofing,2025-02-10 07:00,2025-02-10 17:00,2025-02-14 07:00,2025-02-14 17:00,2025-11-20 17:00,2025-11-20 17:00,2025-12-05 17:00,2025-12-05 17:00,0,10,100
CN.SWA4.6660,IMPACT [S.TIA-143] - INTERMEDIATE WALL DESIGN/PLACEMENT & CRICKET/WP REMEDIATION - SWA4 - GL 10-6 - L-N - L4 ROOF,Complete,SWA - 4,West Support Building,SUWS-4 - 9-6,L4 - SUP Roof - FAB Roof,,CONSTRUCTION,BRAZOS,TOPPING,FIZ DATA CENTER,SOMD / Roofing / Waterproofing,2024-03-26 13:00,2024-04-25 13:00,2024-03-08 07:00,2024-05-15 17:00,2025-11-20 17:00,2025-11-20 17:00,2025-11-25 07:00,2025-11-25 07:00,0,200,100
CN.SWA4.6680,IMPACT - K-LINE STEEL SPRAY FIREPROOFING SFRM2- SWA4 - GL 9-6 - SWA4 - L3-CEILING - GL 6-9,Complete,SWA - 4,West Support Building,SUWS-4 - 9-6,L4 - SUP Roof - FAB Roof,DS/AD INTERIORS,CONSTRUCTION,ROLLING PLAINS,Fireproofing,HOON WOO,,2024-04-19 07:00,2024-04-23 17:00,2024-04-16 07:00,2024-04-19 17:00,2025-11-20 17:00,2025-11-20 17:00,2025-06-13 08:00,2025-06-13 08:00,0,30,100
CN.SWA4.6690,IMPACT - AD STEEL APPLY INTUMESCENT - SWA4 - L3 CEILING - GL 6-9/J-K - INSPECT - SURFACE PREP ADDITIONAL STEELS,Complete,SWA - 4,West Support Building,SUWS-4 - 9-6,L4 - SUP Roof - FAB Roof,DS/AD INTERIORS,CONSTRUCTION,ROLLING PLAINS,Fireproofing,HOON WOO,,2024-05-14 07:00,2024-05-21 17:00,2024-05-14 07:00,2024-05-20 17:00,2025-11-20 17:00,2025-11-20 17:00,2025-06-13 08:00,2025-06-13 08:00,0,50,100
CN.SWA4.6750,INSTALL FRAMING FOR IMP - GL 9-6 - J LINE (AD AREA),Complete,SWA - 4,West Support Building,SUWS-4 - 9-6,DS/AD,,CONSTRUCTION,BERG,Waterproofing - Preferred,JAMES LIVELY,,2024-06-10 07:00,2024-06-11 17:00,2024-05-01 07:00,2024-05-14 17:00,2025-11-20 17:00,2025-11-20 17:00,2025-12-05 17:00,2025-12-05 17:00,0,20,100
CN.SWA4.6810,"PRIME, PATCH & TOPCOAT PRECAST BEAMS - FA LAB NORTH - FIZ - FIZ1 - GL 1-3 - J-H - L3",Complete,SWA - 4,West Support Building,FIZ1 (West Inner) GL J-G - DATA CENTER 2,L3 / Waffle Slab Level,FA LAB,CONSTRUCTION,CHERRY COATING,TBD Architectural Finishes,FIZ DATA CENTER,INTERIORS,2024-06-13 07:00,2024-06-24 17:00,2024-06-13 07:00,2024-06-21 17:00,2025-11-20 17:00,2025-11-20 17:00,2025-12-05 17:00,2025-12-05 17:00,0,70,100
CN.SWA4.6820,"PRIME, PATCH & TOPCOAT PRECAST COLUMNS - FA LAB NORTH - FIZ - FIZ1 - GL 1-3 - J-H - L3",Complete,SWA - 4,West Support Building,FIZ1 (West Inner) GL J-G - DATA CENTER 2,L3 / Waffle Slab Level,FA LAB,CONSTRUCTION,CHERRY COATING,TBD Architectural Finishes,FIZ DATA CENTER,INTERIORS,2024-06-13 07:00,2024-06-24 17:00,2024-06-13 07:00,2024-06-21 17:00,2025-11-20 17:00,2025-11-20 17:00,2025-12-05 17:00,2025-12-05 17:00,0,70,100
CN.SWA4.6850,"PRIME, PATCH & TOPCOAT PRECAST BEAMS - FA LAB NORTH - FIZ1 - GL 1-3 - G-F - L3",Complete,SWA - 4,West Support Building,FIZ3 (East Inner) GL G-E,L3 / Waffle Slab Level,FA LAB,CONSTRUCTION,CHERRY COATING,TBD Architectural Finishes,FIZ DATA CENTER,INTERIORS,2024-06-17 07:00,2024-06-27 17:00,2024-06-17 07:00,2024-07-05 17:00,2025-11-20 17:00,2025-11-20 17:00,2025-12-05 17:00,2025-12-05 17:00,0,70,100
CN.SWA4.6860,"PRIME, PATCH & TOPCOAT PRECAST COLUMNS - FA LAB NORTH - FIZ1 - GL 1-3 - G-F - L3",Complete,SWA - 4,West Support Building,FIZ3 (East Inner) GL G-E,L3 / Waffle Slab Level,FA LAB,CONSTRUCTION,CHERRY COATING,TBD Architectural Finishes,FIZ DATA CENTER,INTERIORS,2024-06-17 07:00,2024-06-27 17:00,2024-06-17 07:00,2024-07-05 17:00,2025-11-20 17:00,2025-11-20 17:00,2025-12-05 17:00,2025-12-05 17:00,0,70,100
CN.SWA4.6900,FRAMING & DRYWALL - STAIR 3 - SWA4 - GL 18-21 - L1- L-N(added new detailed activities in stairs),Complete,SWA - 4,West Support Building,SUWN-1 - 18-21,L1 - Fndn Slab,H2 PURIFIER RM,CONSTRUCTION,BERG,INSULATED METAL PANELS,JAMES LIVELY,INTERIORS,2024-05-28 07:00,2024-06-17 17:00,2024-05-28 07:00,2024-05-28 17:00,2025-11-20 17:00,2025-11-20 17:00,2025-12-05 07:00,2025-12-05 07:00,0,120,100
CN.SWA4.6935,IMPACT - STOP WORK BY SECAI - ALL STAIRS - L1-L3 - L-N,Complete,SWA - 4,West Support Building,SUWN-2 - 21-24,L1 - Fndn Slab,,CONSTRUCTION,SECAI,INSULATED METAL PANELS,JAMES LIVELY,INTERIORS,2024-05-09 07:00,2024-05-30 17:00,2024-05-09 07:00,2024-06-29 17:00,2025-11-20 17:00,2025-11-20 17:00,2025-11-24 07:00,2025-11-24 07:00,0,120,100
CN.SWA4.6950,REMEDY - DEMO DRYWALL  (INT) - SWA4 - GL 9-6 - L2 - K LINE,Complete,SWA - 4,West Support Building,SUWS-4 - 9-6,L2 - SubFab Level,DS/AD INTERIORS,CONSTRUCTION,BERG,DRYWALL,FIZ DATA CENTER,INTERIORS,2024-07-08 07:00,2024-07-15 15:00,2024-07-08 07:00,2024-07-13 15:00,2025-11-20 17:00,2025-11-20 17:00,2025-11-24 07:00,2025-11-24 07:00,0,48,100
CN.SWA4.6960,CURE - AD STEEL PAINT FIREPROOFING IFRM - SWA4 - GL 6-10 - L-J - L2-CEILING,Complete,SWA - 4,,SUWS-4 - 9-6,DS/AD,,CONSTRUCTION,ROLLING PLAINS,Roofing,,,2024-07-12 07:00,2024-07-31 17:00,2024-06-25 07:00,2024-07-12 17:00,2025-11-20 17:00,2025-11-20 17:00,2025-12-05 17:00,2025-12-05 17:00,0,180,100
CN.SWA4.7030,IMPACT - REMEDY - SECAI OVERHEAD WORK BLOCKING THE AREA - SWA4 - GL 9-6 - K LINE - L2,Complete,SWA - 4,West Support Building,SUWS-4 - 9-6,L2 - SubFab Level,DS/AD INTERIORS,CONSTRUCTION,BERG,DRYWALL,FIZ DATA CENTER,INTERIORS,2024-07-16 07:00,2024-08-05 17:00,2024-07-22 07:00,2024-07-29 17:00,2025-11-20 17:00,2025-11-20 17:00,2025-12-05 17:00,2025-12-05 17:00,0,150,100
CN.SWA4.7040,DS ROOF PARAPET DRY IN - SWA4 - GL 9-5 - K-L - L6,Complete,SWA - 4,West Support Building,SUWS-4 - 9-6,DS/AD,,CONSTRUCTION,BRAZOS,TOPPING,JAMES LIVELY,,2024-08-02 07:00,2024-08-09 17:00,2024-07-31 07:00,2024-09-06 17:00,2025-11-20 17:00,2025-11-20 17:00,2025-11-25 07:00,2025-11-25 07:00,0,50,100
CN.SWA4.7050,IMPACT - SEAC/STARCON PIPERACK WORK IN AREA / YATES AWAIT AREA TURNOVER - GL 5-6 - L-N - L4 ROOF,Complete,SWA - 4,West Support Building,FIZ 2 / SUWS 5  (GL6-1) - GL J - N - DATA CENTER 1,L4 - SUP Roof - FAB Roof,,CONSTRUCTION,BRAZOS,TOPPING,FIZ DATA CENTER,SOMD / Roofing / Waterproofing,2024-09-24 07:00,2024-12-03 17:00,2024-07-29 07:00,2024-08-29 17:00,2025-11-20 17:00,2025-11-20 17:00,2025-12-05 17:00,2025-12-05 17:00,0,400,100
CN.AB.AR.7370,REMAINING DRYWALL & FINISHES  - SWA4 - GL 9-3 - L-N - L3 - (Impacted Opening by SECAI),Complete,SWA - 4,West Support Building,SUWS-4 - 9-6,L3 / Waffle Slab Level,FA LAB,CONSTRUCTION,BERG,DRYWALL,AMBER CARO,INTERIORS,2024-05-17 07:00,2024-05-24 17:00,2024-04-15 07:00,2024-09-20 17:00,2025-11-20 17:00,2025-11-20 17:00,2025-12-01 07:00,2025-12-01 07:00,0,50,100
CN.SWA4.7090,IMPACT - AWAIT SECAI DIRECTION TO PROCEED WITH WATERPROOFING - GL 5-6 - L-N - L4 ROOF,Complete,SWA - 4,West Support Building,FIZ 2 / SUWS 5  (GL6-1) - GL J - N - DATA CENTER 1,L4 - SUP Roof - FAB Roof,,CONSTRUCTION,BRAZOS,TOPPING,FIZ DATA CENTER,SOMD / Roofing / Waterproofing,2024-10-07 07:00,2024-10-22 17:00,2024-09-16 07:00,2025-02-04 17:00,2025-11-20 17:00,2025-11-20 17:00,2025-12-05 17:00,2025-12-05 17:00,0,100,100
CN.AB.AR.7870,IMPACT - OPENING AS PER SECAI & MEP BLOCKAGE - SWA4 - GL 9-3 - L-N - L3 - (Impacted Opening by SECAI),Complete,SWA - 4,West Support Building,SUWS-4 - 9-6,L3 / Waffle Slab Level,FA LAB,CONSTRUCTION,BERG,DRYWALL,AMBER CARO,INTERIORS,2024-05-17 07:00,2024-05-24 17:00,2024-04-15 07:00,2024-09-06 17:00,2025-11-20 17:00,2025-11-20 17:00,2025-12-01 07:00,2025-12-01 07:00,0,50,100
CN.AB.AR.7900,REMAINING FRAMING & DRYWALL -  SWA4 - GL 9-12  - L-N - L1,Not Started,SWA - 4,West Support Building,SUWS-3 - 12-9,L1 - Fndn Slab,,CONSTRUCTION,ALK,TBD Architectural Finishes,AMBER CARO,INTERIORS,2025-11-21 07:00,2025-12-02 07:00,,,2025-11-21 07:00,2025-12-02 07:00,2025-12-01 07:00,2025-12-05 17:00,50,50,0
CN.AB.AR.1040,METAL STUD FRAMING (2hr) - SWA-5 - L2 - Temp opening in North Wall GL 1-6- DATA CENTER 2 & ELECTRICAL ROOM 1,Complete,SWA - 5,West Support Building,FIZ 2 / SUWS 5  (GL6-1) - GL J - N - DATA CENTER 1,L2 - SubFab Level,ELECTRIC RM 1,CONSTRUCTION,BERG,TBD Architectural Finishes,FIZ DATA CENTER,INTERIORS,2023-10-03 13:00,2023-10-08 11:00,2023-10-03 13:00,2023-10-06 17:00,2025-11-20 17:00,2025-11-20 17:00,2025-12-05 17:00,2025-12-05 17:00,0,48,100
CN.A1.UG.1070,PH1- UNDERGROUND PLUMBING SWA5,Complete,SWA - 5,West Support Building,FIZ 2 / SUWS 5  (GL6-1) - GL J - N - DATA CENTER 1,L1 - Fndn Slab,,CONSTRUCTION,,Underground Plumbing - Cobb,FIZ DATA CENTER,,2022-10-17 15:00,2022-10-21 09:00,2022-10-17 15:00,2022-10-21 09:00,2025-11-20 17:00,2025-11-20 17:00,2025-06-13 08:00,2025-06-13 08:00,0,24,100
CN.A1.UG.1080,PH1- UNDERGROUND ELECTRICAL SWA5,Complete,SWA - 5,West Support Building,FIZ 2 / SUWS 5  (GL6-1) - GL J - N - DATA CENTER 1,L1 - Fndn Slab,,CONSTRUCTION,,Underground Electrical - (By Owner),FIZ DATA CENTER,,2022-10-17 15:00,2022-10-21 09:00,2022-10-17 15:00,2022-10-20 10:00,2025-11-20 17:00,2025-11-20 17:00,2025-06-13 08:00,2025-06-13 08:00,0,24,100
CN.SWA5.1010,PH1- SUP - EXCAVATE PIER CAPS - SWA5,Complete,SWA - 5,West Support Building,FIZ 2 / SUWS 5  (GL6-1) - GL J - N - DATA CENTER 1,L1 - Fndn Slab,,CONSTRUCTION,,Excavate CIP,FIZ DATA CENTER,,2022-10-17 07:00,2022-10-17 15:00,2022-10-17 07:00,2022-10-17 15:00,2025-11-20 17:00,2025-11-20 17:00,2025-06-13 08:00,2025-06-13 08:00,0,8,100
CN.SWA5.1020,PH1-FRP GRADE BEAM - SWA5,Complete,SWA - 5,West Support Building,FIZ 2 / SUWS 5  (GL6-1) - GL J - N - DATA CENTER 1,L1 - Fndn Slab,,CONSTRUCTION,,Pour Concrete,FIZ DATA CENTER,,2022-10-27 08:00,2022-10-29 12:00,2022-10-27 08:00,2022-10-29 13:00,2025-11-20 17:00,2025-11-20 17:00,2025-06-13 08:00,2025-06-13 08:00,0,24,100
CN.SWA5.1030,PH1-BLACK BASE (NOW RAT SLAB) - SWA5,Complete,SWA - 5,West Support Building,FIZ 2 / SUWS 5  (GL6-1) - GL J - N - DATA CENTER 1,L1 - Fndn Slab,,CONSTRUCTION,,RAT SLAB,FIZ DATA CENTER,,2023-02-04 10:00,2023-02-06 14:00,2022-10-20 10:00,2022-10-27 15:00,2025-11-20 17:00,2025-11-20 17:00,2025-06-13 08:00,2025-06-13 08:00,0,24,100
CN.SWA5.1060,L2 - FRP SLAB - SWA-5-L2 - GL1 -3,Complete,SWA - 5,West Support Building,FIZ 2 / SUWS 5  (GL6-1) - GL J - N - DATA CENTER 1,L2 - SubFab Level,,CONSTRUCTION,,SOMD,CONCRETE,,2023-08-11 09:00,2023-08-13 13:00,2023-08-11 09:00,2023-08-14 15:00,2025-11-20 17:00,2025-11-20 17:00,2025-11-20 07:00,2025-11-20 07:00,0,24,100
CN.SWA5.1080,L3 - FRP SLAB - SWA-5-L3 - GL 1- 3 - FA LAB SOUTH,Complete,SWA - 5,West Support Building,FIZ 2 / SUWS 5  (GL6-1) - GL J - N - DATA CENTER 1,L3 / Waffle Slab Level,,CONSTRUCTION,,SOMD,CONCRETE,,2023-08-04 09:00,2023-08-06 13:00,2023-08-04 09:00,2023-08-07 15:00,2025-11-20 17:00,2025-11-20 17:00,2025-06-13 08:00,2025-06-13 08:00,0,24,100
CN.SWA5.1110,PH1- FRP SLAB - SWA5 - GL 6-1 - L4 - L-N - ROOF,Complete,SWA - 5,West Support Building,FIZ 2 / SUWS 5  (GL6-1) - GL J - N - DATA CENTER 1,L4 - SUP Roof - FAB Roof,,CONSTRUCTION,,Pour Concrete,CONCRETE,SOMD / Roofing / Waterproofing,2024-01-27 14:00,2024-01-29 12:30,2023-12-29 14:00,2023-12-30 14:00,2025-11-20 17:00,2025-11-20 17:00,2025-09-04 07:00,2025-09-04 07:00,0,18.5,100
CN.SWA5.1100,PH1- CURE SOMD - SWA-5-L3 - FA LAB SOUTH,Complete,SWA - 5,West Support Building,FIZ 2 / SUWS 5  (GL6-1) - GL J - N - DATA CENTER 1,L3 / Waffle Slab Level,,CONSTRUCTION,,Concrete Cure,FIZ DATA CENTER,,2023-08-07 15:00,2023-08-11 09:00,2023-08-07 15:00,2023-08-08 15:00,2025-11-20 17:00,2025-11-20 17:00,2025-06-13 08:00,2025-06-13 08:00,0,24,100
CN.SWA5.1130,PH1- CURE SOMD - SWA5 - GL 6-1 - L3 - L-N - ROOF,Complete,SWA - 5,West Support Building,FIZ 2 / SUWS 5  (GL6-1) - GL J - N - DATA CENTER 1,L4 - SUP Roof - FAB Roof,,CONSTRUCTION,,Concrete Cure,FIZ DATA CENTER,SOMD / Roofing / Waterproofing,2024-01-29 12:30,2024-01-31 16:30,2024-01-05 13:00,2024-01-12 17:00,2025-11-20 17:00,2025-11-20 17:00,2025-11-25 07:00,2025-11-25 07:00,0,24,100
CN.SWA5.1090,PH1- 1st FLOOR SLAB - SWA-5-L1,Complete,SWA - 5,West Support Building,FIZ 2 / SUWS 5  (GL6-1) - GL J - N - DATA CENTER 1,L1 - Fndn Slab,,CONSTRUCTION,,Pour Concrete,FIZ DATA CENTER,,2023-02-07 07:00,2023-02-10 17:00,2023-01-30 07:00,2023-02-04 17:00,2025-11-20 17:00,2025-11-20 17:00,2025-06-13 08:00,2025-06-13 08:00,0,40,100
CN.SWA5.1050,TIER 1 ERECT PRECAST COLUMNS & BEAMS - SWA5,Complete,SWA - 5,West Support Building,FIZ 2 / SUWS 5  (GL6-1) - GL J - N - DATA CENTER 1,L2 - SubFab Level,,CONSTRUCTION,,"SUP WEST N,M",FIZ DATA CENTER,,2023-06-16 09:00,2023-06-26 15:00,2023-06-13 09:00,2023-07-03 17:00,2025-11-20 17:00,2025-11-20 17:00,2025-06-13 08:00,2025-06-13 08:00,0,96,100
CN.SWA5.1140,PH1-ROOF LAYER PARAPET - SWA5 - GL 6-1 - L3 - L-N,Complete,SWA - 5,West Support Building,FIZ 2 / SUWS 5  (GL6-1) - GL J - N - DATA CENTER 1,L4 - SUP Roof - FAB Roof,,CONSTRUCTION,,FAB Subfab and Parapets,FIZ DATA CENTER,SOMD / Roofing / Waterproofing,2024-01-12 09:00,2024-01-14 08:00,2024-01-12 09:00,2024-01-14 11:00,2025-11-20 17:00,2025-11-20 17:00,2025-12-05 17:00,2025-12-05 17:00,0,16,100
CN.SWA5.1160,INSTALL WATERPROOFING & CRICKETS - GL 1-2 - L-N - L4/A ROOF,Complete,SWA - 5,West Support Building,FIZ 2 / SUWS 5  (GL6-1) - GL J - N - DATA CENTER 1,L4 - SUP Roof - FAB Roof,,CONSTRUCTION,BRAZOS,TOPPING,FIZ DATA CENTER,SOMD / Roofing / Waterproofing,2024-05-07 07:00,2024-05-24 17:00,2024-03-28 07:00,2024-04-18 17:00,2025-11-20 17:00,2025-11-20 17:00,2025-12-05 17:00,2025-12-05 17:00,0,110,100
CN.SWA5.1210,FRP TOPPING SLAB - GL 1-2 - L-N - L4/A ROOF,Complete,SWA - 5,West Support Building,FIZ 2 / SUWS 5  (GL6-1) - GL J - N - DATA CENTER 1,L4 - SUP Roof - FAB Roof,,CONSTRUCTION,,TOPPING,FIZ DATA CENTER,,2024-05-13 07:00,2024-05-24 17:00,2024-04-22 07:00,2024-04-25 17:00,2025-11-20 17:00,2025-11-20 17:00,2025-12-05 17:00,2025-12-05 17:00,0,80,100
CN.SWA5.1180,PH1 - CLADDING STEEL INTERIOR GL 6-3 - K LINE (AD AREA),Complete,SWA - 5,West Support Building,FIZ 2 / SUWS 5  (GL6-1) - GL J - N - DATA CENTER 1,EXTERIOR SKIN,,CONSTRUCTION,,INSULATED METAL PANELS,,,2024-04-08 07:00,2024-04-16 17:00,2024-04-06 07:00,2024-04-13 17:00,2025-11-20 17:00,2025-11-20 17:00,2025-11-25 07:00,2025-11-25 07:00,0,50,100
CN.SWA5.1200,PH1 - INSTALL INSULATED METAL PANEL MODULES - GL 6-5 - L LINE (DS AREA),Complete,SWA - 5,West Support Building,FIZ 2 / SUWS 5  (GL6-1) - GL J - N - DATA CENTER 1,EXTERIOR SKIN,,CONSTRUCTION,KOVACH,INSULATED METAL PANELS,,,2024-08-04 07:00,2024-08-08 17:00,2024-07-22 07:00,2024-07-30 17:00,2025-11-20 17:00,2025-11-20 17:00,2025-11-25 07:00,2025-11-25 07:00,0,40,100
CN.SWA5.1150,PH1 - CLADDING STEEL  - SWA5 - GL 6-4 -  N LINE [SUP EXTERIOR WALL],Complete,SWA - 5,West Support Building,FIZ 2 / SUWS 5  (GL6-1) - GL J - N - DATA CENTER 1,EXTERIOR SKIN,,CONSTRUCTION,,INSULATED METAL PANELS,,,2024-01-29 07:00,2024-02-02 15:00,2024-01-04 07:00,2024-01-10 15:00,2025-11-20 17:00,2025-11-20 17:00,2025-09-04 07:00,2025-09-04 07:00,0,48,100
CN.SWA5.1170,INSTALL INSULATED METAL PANEL MODULES - GL 6-4 - N LINE [SUP EXTERIOR WALL],Complete,SWA - 5,West Support Building,FIZ 2 / SUWS 5  (GL6-1) - GL J - N - DATA CENTER 1,EXTERIOR SKIN,,CONSTRUCTION,KOVACH,INSULATED METAL PANELS,,,2024-04-08 07:00,2024-04-11 17:00,2024-04-11 07:00,2024-04-18 17:00,2025-11-20 17:00,2025-11-20 17:00,2025-12-04 07:00,2025-12-04 07:00,0,20,100
CN.SWA5.1120,PH1- AD STEEL FRAME INSTALL - SWA-5 fab side,Complete,SWA - 5,West Support Building,FIZ 2 / SUWS 5  (GL6-1) - GL J - N - DATA CENTER 1,DS/AD,,CONSTRUCTION,,Steel Erection,FIZ DATA CENTER,,2023-06-12 07:00,2023-06-18 13:00,2023-06-12 07:00,2023-06-19 15:00,2025-11-20 17:00,2025-11-20 17:00,2025-06-13 08:00,2025-06-13 08:00,0,56,100
CN.AB.AR.1440,INSTALL ELEVATOR HSS STEEL DOOR OPENINGS - ELEVATOR 01,Complete,SWA - 5,West Support Building,FIZ 2 / SUWS 5  (GL6-1) - GL J - N - DATA CENTER 1,,ELEVATOR,CONSTRUCTION,W&W,TBD Architectural Finishes,,INTERIORS,2025-08-25 07:00,2025-09-22 17:00,2025-07-17 07:00,2025-07-24 17:00,2025-11-20 17:00,2025-11-20 17:00,2025-12-01 07:00,2025-12-01 07:00,0,200,100
CN.AB.AR.3100,MEP ROUGH IN & INSPECTION (by SECAI) - SWA5 - GL 6-1 - L2 - L-N - DATA CENTER 2 & ELECTRICAL ROOM 1,Complete,SWA - 5,West Support Building,FIZ 2 / SUWS 5  (GL6-1) - GL J - N - DATA CENTER 1,L2 - SubFab Level,ELECTRIC RM 1,CONSTRUCTION,,Owner & Design Team,FIZ DATA CENTER,INTERIORS,2023-12-12 07:00,2023-12-16 17:00,2023-12-12 07:00,2023-12-29 10:00,2025-11-20 17:00,2025-11-20 17:00,2025-12-05 17:00,2025-12-05 17:00,0,40,100
CN.AB.AR.3110,TAPE & FINISH DRYWALL - SWA5 - GL 6-1 - L2 - L-N DATA CENTER 2 & ELECTRICAL ROOM 1,Complete,SWA - 5,West Support Building,FIZ 2 / SUWS 5  (GL6-1) - GL J - N - DATA CENTER 1,L2 - SubFab Level,ELECTRIC RM 1,CONSTRUCTION,,DRYWALL,FIZ DATA CENTER,INTERIORS,2024-01-29 07:00,2024-02-01 17:00,2024-01-25 07:00,2024-02-01 09:00,2025-11-20 17:00,2025-11-20 17:00,2025-12-05 17:00,2025-12-05 17:00,0,40,100
CN.AB.AR.3130,CRC (SECAI) - SWA-5 - L2 GL 1-6- DATA CENTER 1 & ELECTRICAL ROOM 1,Complete,SWA - 5,West Support Building,FIZ 2 / SUWS 5  (GL6-1) - GL J - N - DATA CENTER 1,L2 - SubFab Level,ELECTRIC RM 1,CONSTRUCTION,,TBD Architectural Finishes,FIZ DATA CENTER,INTERIORS,2023-10-09 07:00,2023-10-12 17:00,2023-09-05 07:00,2023-09-06 17:00,2025-11-20 17:00,2025-11-20 17:00,2025-12-05 17:00,2025-12-05 17:00,0,40,100
CN.AB.AR.3120,FINISH PAINT - DATA CENTER 2 & ELECTRICAL ROOM 1 - SWA5 - GL 6-1 - L-N - L2,Not Started,SWA - 5,West Support Building,FIZ 2 / SUWS 5  (GL6-1) - GL J - N - DATA CENTER 1,L2 - SubFab Level,ELECTRIC RM 1,CONSTRUCTION,FINISH PAINT,TBD Architectural Finishes,FIZ DATA CENTER,INTERIORS,2025-11-21 07:00,2025-11-21 07:00,,,2025-11-21 07:00,2025-11-21 07:00,2025-12-05 17:00,2025-12-05 17:00,0,0,0
CN.SWA5.1240,DS STEEL SPRAY FIREPROOFING SFRM - SWA5 - L4 & L5 CEILING - GL 6-3 - J-L,Complete,SWA - 5,West Support Building,FIZ 2 / SUWS 5  (GL6-1) - GL J - N - DATA CENTER 1,L4 - SUP Roof - FAB Roof,DS/AD INTERIORS,CONSTRUCTION,ROLLING PLAINS,Fireproofing,,,2024-11-01 07:00,2024-11-14 17:00,2024-10-12 07:00,2024-10-16 17:00,2025-11-20 17:00,2025-11-20 17:00,2025-12-05 17:00,2025-12-05 17:00,0,80,100
CN.SWA5.1250,PH1- DECKING - SWA5 - GL 6-1 - L4 - L-N - ROOF,Complete,SWA - 5,West Support Building,FIZ 2 / SUWS 5  (GL6-1) - GL J - N - DATA CENTER 1,L4 - SUP Roof - FAB Roof,,CONSTRUCTION,,Decking & Detail,FIZ DATA CENTER,SOMD / Roofing / Waterproofing,2024-01-26 07:00,2024-01-27 13:00,2023-12-18 00:00,2023-12-21 17:00,2025-11-20 17:00,2025-11-20 17:00,2025-09-04 07:00,2025-09-04 07:00,0,16,100
CN.SWA5.1260,L3 - DECKING & END PLATE GL 6 - 3 - SWA-5-L3 - suw-fiz,Complete,SWA - 5,West Support Building,FIZ 2 / SUWS 5  (GL6-1) - GL J - N - DATA CENTER 1,L3 / Waffle Slab Level,,CONSTRUCTION,,Decking & Detail,FIZ DATA CENTER,,2023-08-01 15:00,2023-08-04 09:00,2023-08-01 15:00,2023-08-04 09:00,2025-11-20 17:00,2025-11-20 17:00,2025-06-13 08:00,2025-06-13 08:00,0,24,100
CN.SWA5.1270,LOWER STEEL POST & ANCHORS INSTALL GL 3 - 4 - SWA-5-L2,Complete,SWA - 5,West Support Building,FIZ 2 / SUWS 5  (GL6-1) - GL J - N - DATA CENTER 1,L2 - SubFab Level,,CONSTRUCTION,,Decking & Detail,FIZ DATA CENTER,,2023-07-31 07:00,2023-08-02 11:00,2023-07-31 07:00,2023-08-02 11:00,2025-11-20 17:00,2025-11-20 17:00,2025-06-13 08:00,2025-06-13 08:00,0,24,100
CN.SEA3.1380,PH1- KNEE WALL (DS) - SWA5 - GL 6-1 - L3 - L-J,Complete,SWA - 5,West Support Building,FIZ 2 / SUWS 5  (GL6-1) - GL J - N - DATA CENTER 1,L4 - SUP Roof - FAB Roof,,CONSTRUCTION,,Cast-in Place Concrete - Baker Concrete,CONCRETE,SOMD / Roofing / Waterproofing,2024-02-15 07:00,2024-02-18 09:00,2024-02-15 07:00,2024-02-18 12:00,2025-11-20 17:00,2025-11-20 17:00,2025-11-25 07:00,2025-11-25 07:00,0,32,100
CN.SWA5.1350,PH1- DS/AD FRP SLAB - DS/AD - SWA5 - GL 6-3 - L-J - L4 & L4/E,Complete,SWA - 5,West Support Building,FIZ 2 / SUWS 5  (GL6-1) - GL J - N - DATA CENTER 1,DS/AD,,CONSTRUCTION,,SOMD,CONCRETE,,2024-02-06 09:00,2024-02-09 13:00,2024-02-06 09:00,2024-02-09 13:00,2025-11-20 17:00,2025-11-20 17:00,2025-06-13 08:00,2025-06-13 08:00,0,24,100
CN.SWA5.1370,AD TOPPING SLAB - SWA5 - GL 6-3 - J-K - L4/E,Complete,SWA - 5,West Support Building,FIZ 2 / SUWS 5  (GL6-1) - GL J - N - DATA CENTER 1,DS/AD,,CONSTRUCTION,BAKER,Roofing,CONCRETE,,2024-10-10 07:00,2024-10-11 17:00,2024-09-16 07:00,2024-09-18 17:00,2025-11-20 17:00,2025-11-20 17:00,2025-12-05 17:00,2025-12-05 17:00,0,20,100
TIER 25.1061,IMPACT - TIER 2 GROUT PRECAST COLUMNS & BEAMS - SWA5 - tindal fixes L4 corbel misalignment delay,Complete,SWA - 5,West Support Building,FIZ 2 / SUWS 5  (GL6-1) - GL J - N - DATA CENTER 1,L4 - SUP Roof - FAB Roof,,CONSTRUCTION,,"SUP WEST N,M",FIZ DATA CENTER,,2023-07-24 07:00,2023-07-30 11:00,2023-07-24 07:00,2023-09-06 17:00,2025-11-20 17:00,2025-11-20 17:00,2025-09-04 07:00,2025-09-04 07:00,0,64,100
CN.SWA5.1380,L2 - DECKING & END PLATE - GL 1 - 3 - SWA-5-L2 - suw-fiz,Complete,SWA - 5,West Support Building,FIZ 2 / SUWS 5  (GL6-1) - GL J - N - DATA CENTER 1,L2 - SubFab Level,,CONSTRUCTION,,Decking & Detail,FIZ DATA CENTER,,2023-08-01 13:00,2023-08-05 13:00,2023-08-01 13:00,2023-08-05 14:00,2025-11-20 17:00,2025-11-20 17:00,2025-11-20 07:00,2025-11-20 07:00,0,40,100
CN.SWA5.1390,L2 - FRP SLAB - SWA-5-L2 - GL 6 - 3,Complete,SWA - 5,West Support Building,FIZ 2 / SUWS 5  (GL6-1) - GL J - N - DATA CENTER 1,L2 - SubFab Level,,CONSTRUCTION,,SOMD,FIZ DATA CENTER,,2023-08-07 15:00,2023-08-11 09:00,2023-08-07 15:00,2023-08-11 09:00,2025-11-20 17:00,2025-11-20 17:00,2025-11-20 07:00,2025-11-20 07:00,0,24,100
CN.SWA5.1400,L3 - DECKING & END PLATE - GL 1 - 3 - SWA-5-L3 - suw-fiz,Complete,SWA - 5,West Support Building,FIZ 2 / SUWS 5  (GL6-1) - GL J - N - DATA CENTER 1,L3 / Waffle Slab Level,,CONSTRUCTION,,Decking & Detail,FIZ DATA CENTER,,2023-08-02 11:00,2023-08-06 11:00,2023-08-02 11:00,2023-08-03 17:00,2025-11-20 17:00,2025-11-20 17:00,2025-06-13 08:00,2025-06-13 08:00,0,40,100
CN.SWA5.1410,L3 - FRP SLAB - SWA-5-L3 - GL 6 - 3 - FA LAB SOUTH,Complete,SWA - 5,West Support Building,FIZ 2 / SUWS 5  (GL6-1) - GL J - N - DATA CENTER 1,L3 / Waffle Slab Level,,CONSTRUCTION,,SOMD,FIZ DATA CENTER,,2023-08-04 09:00,2023-08-06 13:00,2023-08-04 09:00,2023-08-07 15:00,2025-11-20 17:00,2025-11-20 17:00,2025-06-13 08:00,2025-06-13 08:00,0,24,100
CN.SWA5.1420,PH1- DECKING GL 3 - 1 L-M - SWA-5-ROOF,Complete,SWA - 5,West Support Building,FIZ 2 / SUWS 5  (GL6-1) - GL J - N - DATA CENTER 1,L4 - SUP Roof - FAB Roof,,CONSTRUCTION,,Decking & Detail,FIZ DATA CENTER,SOMD / Roofing / Waterproofing,2023-10-17 13:00,2023-10-18 12:00,2023-09-22 13:00,2023-09-26 11:00,2025-11-20 17:00,2025-11-20 17:00,2025-09-04 07:00,2025-09-04 07:00,0,8,100
CN.SWA5.1430,PH1- DECKING GL 6 - 3 M-N - SWA-5-ROOF,Complete,SWA - 5,West Support Building,FIZ 2 / SUWS 5  (GL6-1) - GL J - N - DATA CENTER 1,L4 - SUP Roof - FAB Roof,,CONSTRUCTION,,Decking & Detail,FIZ DATA CENTER,SOMD / Roofing / Waterproofing,2023-09-21 07:00,2023-09-21 15:00,2023-09-21 07:00,2023-09-25 15:00,2025-11-20 17:00,2025-11-20 17:00,2025-09-04 07:00,2025-09-04 07:00,0,8,100
CN.SWA5.1440,L6- DS/AD DECKING & DETAILING DS/AD - SWA5 - GL 6-1 - L-J - L6,Complete,SWA - 5,West Support Building,FIZ 2 / SUWS 5  (GL6-1) - GL J - N - DATA CENTER 1,DS/AD,,CONSTRUCTION,,Decking & Detail,FIZ DATA CENTER,,2024-01-17 07:00,2024-01-20 17:00,2024-01-15 07:00,2024-01-19 17:00,2025-11-20 17:00,2025-11-20 17:00,2025-06-13 08:00,2025-06-13 08:00,0,40,100
CN.AB.AR.4520,DRYWALL 2 SIDE - SWA5 - GL 6-1 - L2 - L-N DATA CENTER 2 & ELECTRICAL ROOM 1,Complete,SWA - 5,West Support Building,FIZ 2 / SUWS 5  (GL6-1) - GL J - N - DATA CENTER 1,L2 - SubFab Level,ELECTRIC RM 1,CONSTRUCTION,,DRYWALL,FIZ DATA CENTER,INTERIORS,2024-01-04 07:00,2024-01-09 11:00,2024-01-04 07:00,2024-01-08 11:00,2025-11-20 17:00,2025-11-20 17:00,2025-12-05 17:00,2025-12-05 17:00,0,40,100
CN.AB.AR.4530,DRYWALL & INSULATION (1 side) (INT) - SWA-5 - L2 GL 1-6- DATA CENTER 2 & ELECTRICAL ROOM 1,Complete,SWA - 5,West Support Building,FIZ 2 / SUWS 5  (GL6-1) - GL J - N - DATA CENTER 1,L2 - SubFab Level,ELECTRIC RM 1,CONSTRUCTION,,DRYWALL,FIZ DATA CENTER,INTERIORS,2023-10-07 13:00,2023-10-12 11:00,2023-10-07 13:00,2023-10-14 13:00,2025-11-20 17:00,2025-11-20 17:00,2025-12-05 17:00,2025-12-05 17:00,0,48,100
CN.SWB5.1500,PH1- ERECT STEEL - SW PENTHOUSE,Complete,SWA - 5,West Support Building,SOUTH WEST PENTHOUSE,L4 - SUP Roof - FAB Roof,,CONSTRUCTION,,Steel Erection,SEAN MONK,,2024-01-11 09:00,2024-01-21 09:00,2024-01-11 09:00,2024-01-24 11:00,2025-11-20 17:00,2025-11-20 17:00,2025-11-17 07:00,2025-11-17 07:00,0,72,100
CN.SWB5.1910,PH1- INSTALL DECKING & STUDS - SW PENTHOUSE,Complete,SWA - 5,West Support Building,SOUTH WEST PENTHOUSE,L5 - SUP L5,,CONSTRUCTION,,Decking & Detail,SEAN MONK,,2024-01-23 15:00,2024-02-02 11:00,2024-01-23 15:00,2024-02-01 16:00,2025-11-20 17:00,2025-11-20 17:00,2025-12-05 17:00,2025-12-05 17:00,0,96,100
CN.SWB5.1920,PH1- FRP SLAB ON DECK - SW PENTHOUSE ROOF,Complete,SWA - 5,East Support Building,SOUTH WEST PENTHOUSE,L5 - SUP L5,,CONSTRUCTION,,SOMD,CONCRETE,,2024-02-01 09:00,2024-02-03 13:00,2024-02-01 09:00,2024-02-02 14:00,2025-11-20 17:00,2025-11-20 17:00,2025-12-05 17:00,2025-12-05 17:00,0,24,100
CN.SWB5.1930,INSTALL EDGE OF SLAB - SW PENTHOUSE ROOF- L4,Complete,SWA - 5,East Support Building,SOUTH WEST PENTHOUSE,L4 - SUP Roof - FAB Roof,,CONSTRUCTION,BERG,TBD Architectural Finishes,SEAN MONK,,2024-12-02 07:00,2024-12-09 17:00,2024-11-18 07:00,2024-11-26 17:00,2025-11-20 17:00,2025-11-20 17:00,2025-12-05 17:00,2025-12-05 17:00,0,50,100
CN.SWB5.1970,PH1- INSTALL HSS CLADDING STEEL - SW PENTHOUSE,Complete,SWA - 5,East Support Building,SOUTH WEST PENTHOUSE,EXTERIOR SKIN,,CONSTRUCTION,,INSULATED METAL PANELS,SEAN MONK,,2024-02-22 07:00,2024-03-08 17:00,2024-02-22 07:00,2024-03-17 13:00,2025-11-20 17:00,2025-11-20 17:00,2025-11-17 07:00,2025-11-17 07:00,0,120,100
CN.SWB5.1980,PH1- INSTALL EXTERIOR DOOR / LOUVERS FRAMES - SW PENTHOUSE,Not Started,SWA - 5,East Support Building,SOUTH WEST PENTHOUSE,L4 - SUP Roof - FAB Roof,,CONSTRUCTION,DOORS AND HARDWARE,TBD Architectural Finishes,SEAN MONK,,2025-11-21 07:00,2025-11-21 17:00,,,2025-11-21 07:00,2025-11-21 17:00,2025-12-03 07:00,2025-12-03 17:00,10,10,0
CN.SWB5.1990,PH1- INSTALL INSULATED METAL PANELS - SW PENTHOUSE - SOUTH WALL,Complete,SWA - 5,East Support Building,SOUTH WEST PENTHOUSE,EXTERIOR SKIN,,CONSTRUCTION,KOVACH,INSULATED METAL PANELS,SEAN MONK,,2024-09-19 07:00,2024-09-28 17:00,2024-10-07 07:00,2024-10-25 17:00,2025-11-20 17:00,2025-11-20 17:00,2025-12-05 17:00,2025-12-05 17:00,0,100,100
CN.SWB5.2010,PH1- INSTALL EXTERIOR STEEL ACCESS STAIRS / RAMPS - SW PENTHOUSE - STAIR 60/61/62/63/R1/R8/R16,Not Started,SWA - 5,East Support Building,SOUTH WEST PENTHOUSE,L4 - SUP Roof - FAB Roof,,CONSTRUCTION,PATRIOT,TBD Architectural Finishes,SEAN MONK,,2025-11-21 07:00,2025-11-21 17:00,,,2025-11-21 07:00,2025-11-21 17:00,2025-12-03 07:00,2025-12-03 17:00,10,10,0
CN.SWB5.2020,PH1- INSTALL INTERIOR METAL STUD FRAMING (2hr) - SW PENTHOUSE,Complete,SWA - 5,East Support Building,SOUTH WEST PENTHOUSE,L4 - SUP Roof - FAB Roof,,CONSTRUCTION,BERG,TBD Architectural Finishes,SEAN MONK,,2024-05-30 07:00,2024-06-04 17:00,2024-05-30 07:00,2024-06-04 17:00,2025-11-20 17:00,2025-11-20 17:00,2025-12-04 07:00,2025-12-04 07:00,0,40,100
CN.SWB5.2030,PH1- INSTALL INTERIOR DRYWALL - SW PENTHOUSE,Complete,SWA - 5,East Support Building,SOUTH WEST PENTHOUSE,L4 - SUP Roof - FAB Roof,,CONSTRUCTION,BERG,TBD Architectural Finishes,SEAN MONK,,2024-06-06 07:00,2024-06-10 17:00,2024-06-06 07:00,2024-08-01 17:00,2025-11-20 17:00,2025-11-20 17:00,2025-12-04 07:00,2025-12-04 07:00,0,30,100
CN.SWB5.2070,PH1- INSTALL DECKING - SW PENTHOUSE,Complete,SWA - 5,East Support Building,SOUTH WEST PENTHOUSE,L4 - SUP Roof - FAB Roof,,CONSTRUCTION,,Decking & Detail,SEAN MONK,,2024-01-26 15:00,2024-01-28 11:00,2024-01-26 15:00,2024-02-01 16:00,2025-11-20 17:00,2025-11-20 17:00,2025-11-17 07:00,2025-11-17 07:00,0,16,100
CN.AB1.ST.1550,PH1- FIRE PROOFING - SFRM STEEL - SWA - 5 L2 GL 1-6- DATA CENTER 2 & ELECTRICAL ROOM 1,Complete,SWA - 5,South Areas (Team A - Gridlines 3-17),FIZ 2 / SUWS 5  (GL6-1) - GL J - N - DATA CENTER 1,L2 - SubFab Level,ELECTRIC RM 1,CONSTRUCTION,,FAB Waffle Slabs,FIZ DATA CENTER,,2023-10-16 07:00,2023-10-20 15:00,2023-08-31 07:00,2023-09-10 07:00,2025-11-20 17:00,2025-11-20 17:00,2025-12-05 17:00,2025-12-05 17:00,0,48,100
CN.SWB5.2080,PH1- INSTALL GRATING - SW PENTHOUSE,Not Started,SWA - 5,East Support Building,SOUTH WEST PENTHOUSE,L4 - SUP Roof - FAB Roof,,CONSTRUCTION,W&W,TBD Architectural Finishes,SEAN MONK,,2025-11-24 07:00,2025-11-25 17:00,,,2025-11-24 07:00,2025-11-25 17:00,2025-12-04 07:00,2025-12-05 17:00,20,20,0
CN.SWB5.2090,IMPACT [C35] - FRP STRUCTURAL SLAB SOMD - 4C (LOWER MEZZ) - SW PENTHOUSE,Complete,SWA - 5,East Support Building,SOUTH WEST PENTHOUSE,L4 - SUP Roof - FAB Roof,,CONSTRUCTION,BAKER,SOMD,CONCRETE,,2024-05-06 07:00,2024-05-07 17:00,2024-04-30 07:00,2024-05-02 17:00,2025-11-20 17:00,2025-11-20 17:00,2025-12-04 07:00,2025-12-04 07:00,0,20,100
CN.SWA5.1460,PH1- DS STEEL FRAME INSTALL - SWA-5,Complete,SWA - 5,West Support Building,FIZ 2 / SUWS 5  (GL6-1) - GL J - N - DATA CENTER 1,DS/AD,,CONSTRUCTION,,Steel Erection,,,2023-10-14 08:00,2023-10-15 14:00,2023-10-14 08:00,2023-10-15 16:00,2025-11-20 17:00,2025-11-20 17:00,2025-06-13 08:00,2025-06-13 08:00,0,16,100
CN.SWA5.1470,PH1- EXTERIOR CURBS - SWA-5-L1 GL 1-6,Complete,SWA - 5,West Support Building,FIZ 2 / SUWS 5  (GL6-1) - GL J - N - DATA CENTER 1,L1 - Fndn Slab,,CONSTRUCTION,,Pour Concrete,FIZ DATA CENTER,SOMD / Roofing / Waterproofing,2023-09-05 07:00,2023-09-08 17:00,2023-08-29 07:00,2023-08-29 07:00,2025-11-20 17:00,2025-11-20 17:00,2025-09-04 07:00,2025-09-04 07:00,0,40,100
CN.AB.AR.4660,INSTALL WALL PROTECTION - F/A ROOM 1 - GL 3-4 - K-L - L2,Not Started,SWA - 5,West Support Building,FIZ 2 / SUWS 5  (GL6-1) - GL J - N - DATA CENTER 1,L2 - SubFab Level,DS/AD INTERIORS,CONSTRUCTION,BERNCO,TBD Architectural Finishes,JAMES LEE,INTERIORS,2025-11-21 07:00,2025-11-25 17:00,,,2025-11-21 07:00,2025-11-25 17:00,2025-12-03 07:00,2025-12-05 17:00,30,30,0
CN.SWA5.L3.120,METAL STUD FRAMING (2hr) - SWA5 - GL 6-1 - L3 - K LINE - FA LAB SOUTH,Complete,SWA - 5,West Support Building,FIZ 2 / SUWS 5  (GL6-1) - GL J - N - DATA CENTER 1,L3 / Waffle Slab Level,DS/AD INTERIORS,CONSTRUCTION,BERG,TBD Architectural Finishes,FIZ DATA CENTER,INTERIORS,2024-04-02 07:00,2024-04-05 17:00,2024-04-02 07:00,2024-04-07 10:00,2025-11-20 17:00,2025-11-20 17:00,2025-06-13 08:00,2025-06-13 08:00,0,40,100
CN.SWA5.R.1000,METAL STUD FRAMING (2hr) - SWA-1 - L1 GL 1-6,Complete,SWA - 5,West Support Building,FIZ 2 / SUWS 5  (GL6-1) - GL J - N - DATA CENTER 1,L1 - Fndn Slab,FA/TEM LAB,CONSTRUCTION,BERG,TBD Architectural Finishes,AMBER CARO,INTERIORS,2023-10-09 07:00,2023-10-12 17:00,2023-10-09 07:00,2023-10-13 17:00,2025-11-20 17:00,2025-11-20 17:00,2025-11-20 07:00,2025-11-20 07:00,0,40,100
CN.SWA5.R.1100,"IMPACT - MEP ROUGH IN, INSPECTION, DUCTING & CABLE TRAYS (by SECAI) - SWA5 - GL 6-1 - L1 - L-N",Complete,SWA - 5,West Support Building,FIZ 2 / SUWS 5  (GL6-1) - GL J - N - DATA CENTER 1,L1 - Fndn Slab,FA/TEM LAB,CONSTRUCTION,,Owner & Design Team,AMBER CARO,,2023-11-13 07:00,2023-11-17 17:00,2023-11-02 07:00,2023-12-01 11:00,2025-11-20 17:00,2025-11-20 17:00,2025-11-20 07:00,2025-11-20 07:00,0,40,100
CN.SWA5.R.1110,TAPE & FINISH DRYWALL - SWA5 - GL 6-1 - L1 - L-N,Complete,SWA - 5,West Support Building,FIZ 2 / SUWS 5  (GL6-1) - GL J - N - DATA CENTER 1,L1 - Fndn Slab,FA/TEM LAB,CONSTRUCTION,,DRYWALL,AMBER CARO,INTERIORS,2023-12-22 07:00,2024-01-03 12:00,2023-12-22 07:00,2024-01-02 17:00,2025-11-20 17:00,2025-11-20 17:00,2025-11-20 07:00,2025-11-20 07:00,0,40,100
CN.SWA5.R.1150,FLOOR STRIPING PAINT - SWA5 - GL 6-1 - L-N - L1,Not Started,SWA - 5,West Support Building,FIZ 2 / SUWS 5  (GL6-1) - GL J - N - DATA CENTER 1,L1 - Fndn Slab,,CONSTRUCTION,FLOOR STRIPING PAINT,TBD Architectural Finishes,AMBER CARO,INTERIORS,2026-01-02 15:00,2026-01-05 15:00,,,2026-01-02 15:00,2026-01-05 15:00,2025-12-05 07:00,2025-12-05 17:00,10,10,0
CN.SWA5.R.1160,INSTALL WALL PROTECTION - STAIR 1 - GL 5-6 - K-L - L1,Not Started,SWA - 5,West Support Building,FIZ 2 / SUWS 5  (GL6-1) - GL J - N - DATA CENTER 1,L1 - Fndn Slab,DS/AD INTERIORS,CONSTRUCTION,BERNCO,TBD Architectural Finishes,JAMES LEE,INTERIORS,2025-12-29 15:00,2026-01-02 15:00,,,2025-12-29 15:00,2026-01-02 15:00,2025-12-02 07:00,2025-12-04 17:00,30,30,0
CN.SWA5.R.1170,FINISH PAINT - SWA5 - GL 6-1 - L-N - L1,Not Started,SWA - 5,West Support Building,FIZ 2 / SUWS 5  (GL6-1) - GL J - N - DATA CENTER 1,L1 - Fndn Slab,FA/TEM LAB,CONSTRUCTION,FINISH PAINT,TBD Architectural Finishes,JAMES LEE,INTERIORS,2025-11-21 07:00,2025-11-21 07:00,,,2025-11-21 07:00,2025-11-21 07:00,2025-12-05 17:00,2025-12-05 17:00,0,0,0
CN.SWA5.R.4440,DRYWALL 2 SIDE - SWA5 - GL 6-1 - L1 - L-N,Complete,SWA - 5,West Support Building,FIZ 2 / SUWS 5  (GL6-1) - GL J - N - DATA CENTER 1,L1 - Fndn Slab,FA/TEM LAB,CONSTRUCTION,,DRYWALL,AMBER CARO,INTERIORS,2023-12-18 07:00,2023-12-21 17:00,2023-12-18 07:00,2023-12-21 17:00,2025-11-20 17:00,2025-11-20 17:00,2025-11-20 07:00,2025-11-20 07:00,0,40,100
CN.SWA5.R.4450,DRYWALL & INSULATION (1 side) (INT) - SWA-5 - L1 GL 1-6,Complete,SWA - 5,West Support Building,FIZ 2 / SUWS 5  (GL6-1) - GL J - N - DATA CENTER 1,L1 - Fndn Slab,FA/TEM LAB,CONSTRUCTION,,DRYWALL,AMBER CARO,INTERIORS,2023-10-16 07:00,2023-10-19 17:00,2023-10-10 07:00,2023-10-14 17:00,2025-11-20 17:00,2025-11-20 17:00,2025-11-20 07:00,2025-11-20 07:00,0,40,100
CN.SWA5..1521,PH1- INSTALL ELEVATOR STEEL - ELEVATOR 01A,Complete,SWA - 5,West Support Building,FIZ 2 / SUWS 5  (GL6-1) - GL J - N - DATA CENTER 1,,ELEVATOR,CONSTRUCTION,W&W,TBD Architectural Finishes,JAMES LIVELY,INTERIORS,2024-06-06 07:00,2024-07-05 17:00,2024-05-30 07:00,2024-07-10 17:00,2025-11-20 17:00,2025-11-20 17:00,2025-12-01 07:00,2025-12-01 07:00,0,170,100
CN.SWA5..1610,PH1- INSTALL METAL STAIR - STAIR #1 - 5/L - ALL LEVELS,Complete,SWA - 5,West Support Building,FIZ 2 / SUWS 5  (GL6-1) - GL J - N - DATA CENTER 1,INTERIOR STAIR TOWER - STAIR #1 - DE-SCOPED,,CONSTRUCTION,,INSULATED METAL PANELS,JAMES LIVELY,INTERIORS,2023-12-05 13:00,2023-12-15 13:00,2023-12-05 13:00,2024-02-19 13:00,2025-11-20 17:00,2025-11-20 17:00,2025-12-05 17:00,2025-12-05 17:00,0,80,100
CN.SWA5.R.4700,INSTALL ROLL UP DOORS - SWA5 - GL 6-1 - L1 - L-N - (MEP ROUGH IN NOT INCLUDED),Not Started,SWA - 5,West Support Building,FIZ 2 / SUWS 5  (GL6-1) - GL J - N - DATA CENTER 1,EXTERIOR SKIN,,CONSTRUCTION,PATRIOT,TBD Architectural Finishes,AMBER CARO,INTERIORS,2025-11-26 07:00,2025-12-01 17:00,,,2025-11-26 07:00,2025-12-01 17:00,2025-12-04 07:00,2025-12-05 17:00,20,20,0
CN.SWA5.1500,L2 - DECKING & END PLATE - GL 3 - 6 - SWA-5-L2 - suw-fiz,Complete,SWA - 5,West Support Building,FIZ 2 / SUWS 5  (GL6-1) - GL J - N - DATA CENTER 1,L2 - SubFab Level,,CONSTRUCTION,,Decking & Detail,FIZ DATA CENTER,,2023-08-04 09:00,2023-08-06 13:00,2023-08-04 09:00,2023-08-07 15:00,2025-11-20 17:00,2025-11-20 17:00,2025-11-20 07:00,2025-11-20 07:00,0,24,100
CN.SWA5.1360,IMPACT - DRB-01 ADDITIONAL BEAMS BETWEEN FAB AND AD GL 6-1 ROOF,Complete,SWA - 5,,FIZ 2 / SUWS 5  (GL6-1) - GL J - N - DATA CENTER 1,DS/AD,,CONSTRUCTION,,Roofing,,,2023-12-04 07:00,2023-12-05 13:00,2023-11-27 07:00,2023-12-05 13:00,2025-11-20 17:00,2025-11-20 17:00,2025-06-13 08:00,2025-06-13 08:00,0,16,100
TIER 25.1071,IMPACT - ERECT L-M STEEL - L4 corbel misalignment delay,Complete,SWA - 5,West Support Building,FIZ 2 / SUWS 5  (GL6-1) - GL J - N - DATA CENTER 1,L4 - SUP Roof - FAB Roof,,CONSTRUCTION,,"SUP WEST N,M",FIZ DATA CENTER,,2023-10-16 07:00,2023-10-16 15:00,2023-10-09 07:00,2023-10-10 15:00,2025-11-20 17:00,2025-11-20 17:00,2025-09-04 07:00,2025-09-04 07:00,0,8,100
TIER 25.1081,IMPACT - ERECT M-N STEEL - L4 corbel misalignment delay,Complete,SWA - 5,West Support Building,FIZ 2 / SUWS 5  (GL6-1) - GL J - N - DATA CENTER 1,L4 - SUP Roof - FAB Roof,,CONSTRUCTION,,"SUP WEST N,M",FIZ DATA CENTER,,2023-10-16 15:00,2023-10-17 13:00,2023-10-09 07:00,2023-10-10 15:00,2025-11-20 17:00,2025-11-20 17:00,2025-09-04 07:00,2025-09-04 07:00,0,8,100
TIER 25.1091,DETAIL L-M STEEL - L4 corbel misalignment delay,Complete,SWA - 5,West Support Building,FIZ 2 / SUWS 5  (GL6-1) - GL J - N - DATA CENTER 1,L4 - SUP Roof - FAB Roof,,CONSTRUCTION,,"SUP WEST N,M",FIZ DATA CENTER,,2023-10-16 15:00,2023-10-17 13:00,2023-10-09 07:00,2023-10-10 15:00,2025-11-20 17:00,2025-11-20 17:00,2025-09-04 07:00,2025-09-04 07:00,0,8,100
TIER 25.1101,DETAIL M-N STEEL - L4 corbel misalignment delay,Complete,SWA - 5,West Support Building,FIZ 2 / SUWS 5  (GL6-1) - GL J - N - DATA CENTER 1,L4 - SUP Roof - FAB Roof,,CONSTRUCTION,,"SUP WEST N,M",FIZ DATA CENTER,,2023-10-17 13:00,2023-10-19 17:00,2023-10-09 07:00,2023-10-10 15:00,2025-11-20 17:00,2025-11-20 17:00,2025-09-04 07:00,2025-09-04 07:00,0,24,100
TIER 25.1111,IMPACT - GL 3 CRANE PAD INSTALL & CRANE BREAKDOWN - SWA5 - N/2 AB Fix - corbel misalignment delay,Complete,SWA - 5,West Support Building,FIZ 2 / SUWS 5  (GL6-1) - GL J - N - DATA CENTER 1,L4 - SUP Roof - FAB Roof,,CONSTRUCTION,,"SUP WEST N,M",FIZ DATA CENTER,,2023-10-02 07:00,2023-10-02 15:00,2023-09-15 07:00,2023-09-18 07:00,2025-11-20 17:00,2025-11-20 17:00,2025-09-04 07:00,2025-09-04 07:00,0,8,100
CN.SWA5.1630,PH1 - CLADDING STEEL EXTERIOR - SWA5 - GL 6-3 - L LINE (DS AREA)(Including Detailing),Complete,SWA - 5,West Support Building,FIZ 2 / SUWS 5  (GL6-1) - GL J - N - DATA CENTER 1,EXTERIOR SKIN,,CONSTRUCTION,,INSULATED METAL PANELS,,,2024-02-23 07:00,2024-03-03 14:00,2024-02-23 07:00,2024-03-04 12:00,2025-11-20 17:00,2025-11-20 17:00,2025-11-25 07:00,2025-11-25 07:00,0,87,100
EMB1017,IMPACT - Missing Precast Embed - L4 - GL 5 and 3 (#17),Complete,SWA - 5,West Support Building,FIZ 2 / SUWS 5  (GL6-1) - GL J - N - DATA CENTER 1,L4 - SUP Roof - FAB Roof,,CONSTRUCTION,,Steel Erection,FIZ DATA CENTER,,2023-10-09 07:00,2023-10-10 13:00,2023-09-18 07:00,2023-10-10 13:00,2025-11-20 17:00,2025-11-20 17:00,2025-06-13 08:00,2025-06-13 08:00,0,16,100
EMB4000,IMPACT [CL 44] - Missing Precast Embed GL L3 and L4 Level 4 (#4000),Complete,SWA - 5,West Support Building,FIZ 2 / SUWS 5  (GL6-1) - GL J - N - DATA CENTER 1,L4 - SUP Roof - FAB Roof,,CONSTRUCTION,,Steel Erection,FIZ DATA CENTER,,2023-10-02 07:00,2023-10-03 13:00,2023-08-14 07:00,2023-09-20 07:00,2025-11-20 17:00,2025-11-20 17:00,2025-06-13 08:00,2025-06-13 08:00,0,16,100
ANC3000,IMPACT - Missing Anchor Rods (3) Between GL2 L and N (#3000),Complete,SWA - 5,West Support Building,FIZ 2 / SUWS 5  (GL6-1) - GL J - N - DATA CENTER 1,DS/AD,,CONSTRUCTION,,Steel Erection,FIZ DATA CENTER,,2023-10-10 13:00,2023-10-12 09:00,2023-09-19 13:00,2023-10-13 09:00,2025-11-20 17:00,2025-11-20 17:00,2025-06-13 08:00,2025-06-13 08:00,0,16,100
CN.SWA5.1640,PH1- DS/AD DECKING & DETAILING DS/AD SWA-5 GL 3-6 L2-L3,Complete,SWA - 5,West Support Building,FIZ 2 / SUWS 5  (GL6-1) - GL J - N - DATA CENTER 1,DS/AD,,CONSTRUCTION,,Decking & Detail,FIZ DATA CENTER,,2023-09-28 11:00,2023-10-01 13:00,2023-09-17 11:00,2023-09-20 16:00,2025-11-20 17:00,2025-11-20 17:00,2025-06-13 08:00,2025-06-13 08:00,0,32,100
CN.SWA5.1650,PH1- DS/AD FRP SLAB - SWA-5 GL 1-6 L2-L3,Complete,SWA - 5,West Support Building,FIZ 2 / SUWS 5  (GL6-1) - GL J - N - DATA CENTER 1,DS/AD,,CONSTRUCTION,,SOMD,CONCRETE,,2023-10-06 09:00,2023-10-09 11:00,2023-09-21 09:00,2023-09-24 15:00,2025-11-20 17:00,2025-11-20 17:00,2025-06-13 08:00,2025-06-13 08:00,0,32,100
CN.SWA5.1660,DS/AD STEEL SPRAY FIREPROOFING SFRM- SWA-5 GL 1-6 L1 CEILING,Complete,SWA - 5,West Support Building,FIZ 2 / SUWS 5  (GL6-1) - GL J - N - DATA CENTER 1,DS/AD,,CONSTRUCTION,,Fireproofing,,,2023-10-16 07:00,2023-10-17 13:00,2023-10-16 07:00,2023-10-17 13:00,2025-11-20 17:00,2025-11-20 17:00,2025-06-13 08:00,2025-06-13 08:00,0,16,100
CN.SWA5.DS.1300,METAL STUD FRAMING (2hr) - SWA5 - GL 6-1 - L2 - K LINE,Complete,SWA - 5,West Support Building,FIZ 2 / SUWS 5  (GL6-1) - GL J - N - DATA CENTER 1,L2 - SubFab Level,DS/AD INTERIORS,CONSTRUCTION,BERG,TBD Architectural Finishes,FIZ DATA CENTER,INTERIORS,2023-12-19 07:00,2023-12-28 15:00,2023-12-19 07:00,2023-12-21 15:00,2025-11-20 17:00,2025-11-20 17:00,2025-11-24 07:00,2025-11-24 07:00,0,48,100
CN.SWA5.DS.2990,REMEDY - TAPE & FINISH DRYWALL - SWA5 - GL 6-1 - K LINE - L2,Complete,SWA - 5,West Support Building,FIZ 2 / SUWS 5  (GL6-1) - GL J - N - DATA CENTER 1,L2 - SubFab Level,DS/AD INTERIORS,CONSTRUCTION,CHERRY COATING,DRYWALL,FIZ DATA CENTER,INTERIORS,2024-08-23 07:00,2024-08-27 17:00,2024-08-08 07:00,2024-08-10 17:00,2025-11-20 17:00,2025-11-20 17:00,2025-11-24 07:00,2025-11-24 07:00,0,30,100
CN.SWA5.DS.3000,FINISH PAINT - SWA5 - GL 6-1 - K LINE - L2,Not Started,SWA - 5,West Support Building,FIZ 2 / SUWS 5  (GL6-1) - GL J - N - DATA CENTER 1,L2 - SubFab Level,DS/AD INTERIORS,CONSTRUCTION,FINISH PAINT,TBD Architectural Finishes,FIZ DATA CENTER,INTERIORS,2025-11-21 07:00,2025-11-21 07:00,,,2025-11-21 07:00,2025-11-21 07:00,2025-12-05 17:00,2025-12-05 17:00,0,0,0
CN.SWA5.DS.2970,DRYWALL & INSULATION (1 side) (INT) - SWA5 - GL 6-1 - L2 - K LINE,Complete,SWA - 5,West Support Building,FIZ 2 / SUWS 5  (GL6-1) - GL J - N - DATA CENTER 1,L2 - SubFab Level,DS/AD INTERIORS,CONSTRUCTION,,DRYWALL,FIZ DATA CENTER,INTERIORS,2023-12-22 09:00,2024-01-04 12:00,2023-12-22 09:00,2024-01-04 17:00,2025-11-20 17:00,2025-11-20 17:00,2025-11-24 07:00,2025-11-24 07:00,0,48,100
CN.SWA5.1670,PH1 -WELD CLIPS - CLADDING STEEL - SWA5 - GL 6-3 - L LINE (DS AREA),Complete,SWA - 5,West Support Building,FIZ 2 / SUWS 5  (GL6-1) - GL J - N - DATA CENTER 1,EXTERIOR SKIN,,CONSTRUCTION,,INSULATED METAL PANELS,,,2024-02-20 07:00,2024-02-22 09:00,2024-02-20 07:00,2024-02-22 09:00,2025-11-20 17:00,2025-11-20 17:00,2025-11-25 07:00,2025-11-25 07:00,0,12,100
CN.SWA5.LD.3000,LOADING DOCK - LOADING DOCK RETAINING WALLS EXCAVTION & FRP - SWA5 - GL 3-8 N- LINE,Complete,SWA - 5,East Support Building,FIZ 2 / SUWS 5  (GL6-1) - GL J - N - DATA CENTER 1,L1 - Fndn Slab,,CONSTRUCTION,BAKER,TBD Architectural Finishes,AMBER CARO,INTERIORS,2025-02-21 07:00,2025-03-10 17:00,2025-01-25 07:00,2025-01-30 17:00,2025-11-20 17:00,2025-11-20 17:00,2025-12-04 07:00,2025-12-04 07:00,0,120,100
CN.SWA5.1450,IMPACT - DS STEEL BEAM STIFFNER CONNECTION FIXES - SWA5 - GL 6-1 - L-J - L6,Complete,SWA - 5,,FIZ 2 / SUWS 5  (GL6-1) - GL J - N - DATA CENTER 1,DS/AD,,CONSTRUCTION,,Steel Erection,,,2024-01-27 14:00,2024-02-08 16:00,2024-01-15 14:00,2024-01-21 09:00,2025-11-20 17:00,2025-11-20 17:00,2025-06-13 08:00,2025-06-13 08:00,0,112,100
CN.SWA5..1620,"INSTALL FRAMING, DRYWALL & FIRE CAULKING AT FIREPROOFING LEAVEOUTS - INTERIOR SHAFT - ELEVATOR 01",Complete,SWA - 5,West Support Building,FIZ 2 / SUWS 5  (GL6-1) - GL J - N - DATA CENTER 1,,ELEVATOR,CONSTRUCTION,BERG,DRYWALL,JAMES LIVELY,INTERIORS,2024-10-21 07:00,2024-11-01 17:00,2024-09-30 07:00,2025-02-10 07:00,2025-11-20 17:00,2025-11-20 17:00,2025-12-01 07:00,2025-12-01 07:00,0,80,100
CN.AB.AR.6150,"INSTALL FRAMING, DRYWALL & FIRE CAULKING - INTERIOR SHAFT - ELEVATOR 01A",Complete,SWA - 5,West Support Building,FIZ 2 / SUWS 5  (GL6-1) - GL J - N - DATA CENTER 1,,ELEVATOR,CONSTRUCTION,BERG,DRYWALL,,INTERIORS,2024-09-30 07:00,2024-10-25 17:00,2024-09-06 07:00,2025-03-11 17:00,2025-11-20 17:00,2025-11-20 17:00,2025-12-01 07:00,2025-12-01 07:00,0,160,100
BEARING PLATE,IMPACT - BEARING PLATE INSTALL - GL 3 - ROOF FIZ - SUW DSAD,Complete,SWA - 5,West Support Building,FIZ 2 / SUWS 5  (GL6-1) - GL J - N - DATA CENTER 1,L4 - SUP Roof - FAB Roof,,CONSTRUCTION,,Steel Erection,FIZ DATA CENTER,,2023-10-16 07:00,2023-10-17 13:00,2023-10-09 07:00,2023-10-22 16:00,2025-11-20 17:00,2025-11-20 17:00,2025-09-04 07:00,2025-09-04 07:00,0,16,100
CN.SWA5.1510,PH1- DS/AD DECKING - SWA5 - GL 6-1 - L-J - L4 & L4/E,Complete,SWA - 5,,FIZ 2 / SUWS 5  (GL6-1) - GL J - N - DATA CENTER 1,DS/AD,,CONSTRUCTION,,Decking & Detail,,,2024-02-23 15:00,2024-02-26 17:00,2024-01-24 09:00,2024-01-27 12:00,2025-11-20 17:00,2025-11-20 17:00,2025-06-13 08:00,2025-06-13 08:00,0,32,100
CN.SWA5..1630,GROUT & PATCH - SWA5 - GL 6-1 - L-N - L1,Complete,SWA - 5,West Support Building,FIZ 2 / SUWS 5  (GL6-1) - GL J - N - DATA CENTER 1,L1 - Fndn Slab,,CONSTRUCTION,BAKER,TBD Architectural Finishes,JAMES LIVELY,INTERIORS,2024-03-04 07:00,2024-03-05 17:00,2024-03-04 07:00,2024-03-05 17:00,2025-11-20 17:00,2025-11-20 17:00,2025-12-04 17:00,2025-12-04 17:00,0,20,100
CN.SWA5.1190,PH1- FRP SLAB - SWA-5-ROOF GL 3-6,Complete,SWA - 5,,FIZ 2 / SUWS 5  (GL6-1) - GL J - N - DATA CENTER 1,L4 - SUP Roof - FAB Roof,,CONSTRUCTION,,SOMD,,,2023-09-26 08:00,2023-10-01 08:00,2023-09-26 08:00,2023-09-30 16:00,2025-11-20 17:00,2025-11-20 17:00,2025-09-04 07:00,2025-09-04 07:00,0,40,100
EMB1250,IMPACT - SUW ELEVATOR 01 STEEL EMBEDS OFF - SWA5 - L4 - GL 6-1,Complete,SWA - 5,West Support Building,FIZ 2 / SUWS 5  (GL6-1) - GL J - N - DATA CENTER 1,L4 - SUP Roof - FAB Roof,,CONSTRUCTION,,"SUP WEST N,M",FIZ DATA CENTER,,2023-10-16 15:00,2023-10-17 13:00,2023-08-16 07:00,2023-09-20 15:00,2025-11-20 17:00,2025-11-20 17:00,2025-09-04 07:00,2025-09-04 07:00,0,8,100
CN.SWA5.1520,DS/AD FRP SLAB - DS/AD - SWA5 - GL 6-1 - L-J - L6,Complete,SWA - 5,,FIZ 2 / SUWS 5  (GL6-1) - GL J - N - DATA CENTER 1,DS/AD,,CONSTRUCTION,,SOMD,,,2024-01-22 08:00,2024-01-23 14:00,2024-01-22 08:00,2024-01-23 14:00,2025-11-20 17:00,2025-11-20 17:00,2025-06-13 08:00,2025-06-13 08:00,0,16,100
CN.SWA5.1530,DS/AD CURE FRP SLAB - SWA5 - GL 6-1 - L-J - L6,Complete,SWA - 5,,FIZ 2 / SUWS 5  (GL6-1) - GL J - N - DATA CENTER 1,DS/AD,,CONSTRUCTION,,SOMD,,,2024-01-24 07:00,2024-01-26 11:00,2024-01-24 07:00,2024-01-26 11:00,2025-11-20 17:00,2025-11-20 17:00,2025-12-05 17:00,2025-12-05 17:00,0,24,100
CN.SWA5.1230,DETAIL & INSPECT CLADDING STEEL - GL 1-4 - N LINE [SUP EXTERIOR WALL] (LEAVEOUT FOR LOADING DECK),Complete,SWA - 5,,FIZ 2 / SUWS 5  (GL6-1) - GL J - N - DATA CENTER 1,EXTERIOR SKIN,,CONSTRUCTION,PATRIOT,INSULATED METAL PANELS,,,2024-06-21 07:00,2024-06-25 17:00,2024-06-18 07:00,2024-06-24 17:00,2025-11-20 17:00,2025-11-20 17:00,2025-09-04 07:00,2025-09-04 07:00,0,30,100
CN.SWA5.L3.150,DRYWALL & INSULATION (1 side) (INT) - SWA5 - GL 6-1 - L3 - K LINE,Complete,SWA - 5,,FIZ 2 / SUWS 5  (GL6-1) - GL J - N - DATA CENTER 1,L3 / Waffle Slab Level,DS/AD INTERIORS,CONSTRUCTION,,TBD Architectural Finishes,,,2024-04-02 07:00,2024-04-05 17:00,2024-04-02 07:00,2024-04-06 17:00,2025-11-20 17:00,2025-11-20 17:00,2025-06-13 08:00,2025-06-13 08:00,0,40,100
CN.SWA5.L3.160,MEP ROUGH IN & INSPECTION (BY SECAI) - SWA5 - GL 6-1 - K LINE - L3,Complete,SWA - 5,,FIZ 2 / SUWS 5  (GL6-1) - GL J - N - DATA CENTER 1,L3 / Waffle Slab Level,DS/AD INTERIORS,CONSTRUCTION,SECAI,TBD Architectural Finishes,,,2024-04-08 07:00,2024-04-11 17:00,2024-04-08 00:00,2024-05-01 17:00,2025-11-20 17:00,2025-11-20 17:00,2025-06-13 08:00,2025-06-13 08:00,0,20,100
CN.SWA5.L3.170,DRYWALL 2 SIDE - SWA5 - GL 6-3 - K LINE - L3,Complete,SWA - 5,,FIZ 2 / SUWS 5  (GL6-1) - GL J - N - DATA CENTER 1,L3 / Waffle Slab Level,DS/AD INTERIORS,CONSTRUCTION,BERG,TBD Architectural Finishes,,,2024-05-28 07:00,2024-06-03 17:00,2024-05-28 07:00,2024-06-07 17:00,2025-11-20 17:00,2025-11-20 17:00,2025-06-13 08:00,2025-06-13 08:00,0,40,100
CN.SWA5.L3.180,TAPE & FINISH DRYWALL - SWA5 - GL 6-1 - K LINE - L3,Complete,SWA - 5,,FIZ 2 / SUWS 5  (GL6-1) - GL J - N - DATA CENTER 1,L3 / Waffle Slab Level,DS/AD INTERIORS,CONSTRUCTION,CHERRY COATING,TBD Architectural Finishes,,,2024-06-10 07:00,2024-06-14 17:00,2024-06-10 07:00,2024-06-14 17:00,2025-11-20 17:00,2025-11-20 17:00,2025-06-13 08:00,2025-06-13 08:00,0,40,100
CN.SWA5.L3.190,D/S SGP Wall Turnover - SWA5 - GL 6-1 - K LINE - L3,Complete,SWA - 5,,FIZ 2 / SUWS 5  (GL6-1) - GL J - N - DATA CENTER 1,L3 / Waffle Slab Level,DS/AD INTERIORS,CONSTRUCTION,SECAI,TBD Architectural Finishes,,,2024-06-14 07:00,2024-06-14 17:00,2024-06-14 07:00,2024-06-14 17:00,2025-11-20 17:00,2025-11-20 17:00,2025-06-13 08:00,2025-06-13 08:00,0,10,100
CN.SWA5.1280,INSTALL INSULATED METAL PANEL MODULES - GL 6-3 - K LINE (AD AREA) [LAST COLUMN OF IMP AT 3 LINE PENDING RFI RESPONSE],Complete,SWA - 5,,FIZ 2 / SUWS 5  (GL6-1) - GL J - N - DATA CENTER 1,EXTERIOR SKIN,,CONSTRUCTION,KOVACH,INSULATED METAL PANELS,,,2024-07-02 07:00,2024-07-08 17:00,2024-06-20 07:00,2024-06-24 17:00,2025-11-20 17:00,2025-11-20 17:00,2025-11-25 07:00,2025-11-25 07:00,0,50,100
ANC3010,IMPACT - Missing Anchor Rods N2 2P - TR075 - TF1-SMT-SH-2214,Complete,SWA - 5,West Support Building,FIZ 2 / SUWS 5  (GL6-1) - GL J - N - DATA CENTER 1,DS/AD,,CONSTRUCTION,,Steel Erection,FIZ DATA CENTER,,2024-01-22 07:00,2024-01-23 13:00,2024-01-02 07:00,2024-01-15 13:00,2025-11-20 17:00,2025-11-20 17:00,2025-06-13 08:00,2025-06-13 08:00,0,16,100
EMB6090,IMPACT [S.TIA-116] - MISSING OPENING (W&W INSTALL) MISSING TINDALL Embed - L4 - GL 3 N-M,Complete,SWA - 5,West Support Building,FIZ 2 / SUWS 5  (GL6-1) - GL J - N - DATA CENTER 1,L4 - SUP Roof - FAB Roof,,CONSTRUCTION,,Pour Concrete,FIZ DATA CENTER,,2023-10-09 07:00,2023-10-12 17:00,2023-11-03 07:00,2023-12-16 16:00,2025-11-20 17:00,2025-11-20 17:00,2025-09-04 07:00,2025-09-04 07:00,0,40,100
CN.SWA5.1550,KNEE WALL -SWA 5 - GL 6-1 - L4 - J-K -DS/AD,Complete,SWA - 5,,FIZ 2 / SUWS 5  (GL6-1) - GL J - N - DATA CENTER 1,DS/AD,,CONSTRUCTION,,Cast-in Place Concrete - Baker Concrete,,,2024-03-12 10:00,2024-03-20 10:00,2024-02-15 10:00,2024-02-19 13:00,2025-11-20 17:00,2025-11-20 17:00,2025-11-25 07:00,2025-11-25 07:00,0,40,100
CN.SWA5.1560,AD WATERPROOFING - SWA5 - GL 6-3 - J-K - L4/E,Complete,SWA - 5,,FIZ 2 / SUWS 5  (GL6-1) - GL J - N - DATA CENTER 1,DS/AD,,CONSTRUCTION,BRAZOS,TOPPING,,,2024-09-23 07:00,2024-10-11 17:00,2024-09-03 07:00,2024-09-14 17:00,2025-11-20 17:00,2025-11-20 17:00,2025-12-05 17:00,2025-12-05 17:00,0,120,100
CN.SWA5.1690,K-LINE STEEL SPRAY FIREPROOFING SFRM2 - SWA5 - L3-CEILING - GL 6-3,Complete,SWA - 5,West Support Building,FIZ 2 / SUWS 5  (GL6-1) - GL J - N - DATA CENTER 1,L4 - SUP Roof - FAB Roof,DS/AD INTERIORS,CONSTRUCTION,ROLLING PLAINS,Fireproofing,,,2024-04-29 07:00,2024-05-03 17:00,2024-04-20 07:00,2024-04-25 17:00,2025-11-20 17:00,2025-11-20 17:00,2025-06-13 08:00,2025-06-13 08:00,0,40,100
CN.SWA5.1700,AD STEEL PAINT FIREPROOFING IFRM - SWA5 - GL 3-6 - L-J - L2-CEILING,Complete,SWA - 5,West Support Building,FIZ 2 / SUWS 5  (GL6-1) - GL J - N - DATA CENTER 1,DS/AD,,CONSTRUCTION,ROLLING PLAINS,Fireproofing,,,2024-07-12 07:00,2024-07-18 17:00,2024-06-21 07:00,2024-06-24 17:00,2025-11-20 17:00,2025-11-20 17:00,2025-12-05 17:00,2025-12-05 17:00,0,50,100
CN.SWA5.1720,ROOFTOP DRY PARAPET - SWB-1 (DS AREA) GL 6-1 N (DS AREA),Complete,SWA - 5,West Support Building,FIZ 2 / SUWS 5  (GL6-1) - GL J - N - DATA CENTER 1,EXTERIOR SKIN,,CONSTRUCTION,,INSULATED METAL PANELS,,,2024-02-19 07:00,2024-02-23 17:00,2024-02-19 07:00,2024-02-23 17:00,2025-11-20 17:00,2025-11-20 17:00,2025-12-05 17:00,2025-12-05 17:00,0,40,100
CN.SWA5.1730,INSTALL INSULATED METAL PANEL MODULES - GL 6-3 - J LINE (AD AREA),Complete,SWA - 5,West Support Building,FIZ 2 / SUWS 5  (GL6-1) - GL J - N - DATA CENTER 1,DS/AD,,CONSTRUCTION,KOVACH,Fireproofing,,,2024-07-18 07:00,2024-07-19 17:00,2024-06-26 07:00,2024-06-26 17:00,2025-11-20 17:00,2025-11-20 17:00,2025-12-05 17:00,2025-12-05 17:00,0,20,100
CN.SWA5.1740,INSTALL TPO ROOFING - SWA5 - GL 6-3 - K-L - L6 - SOUTHWEST PENTHOUSE,Complete,SWA - 5,,SOUTH WEST PENTHOUSE,L6 - PENTHOUSE / DS ROOF,,CONSTRUCTION,BRAZOS,TOPPING,,,2024-12-06 07:00,2024-12-12 17:00,2024-12-06 07:00,2024-12-10 17:00,2025-11-20 17:00,2025-11-20 17:00,2025-12-05 17:00,2025-12-05 17:00,0,40,100
CN.SWA5.L3.200,DCC BEAM (STEEL STRUCTURE)- SWA5 - GL 6-1 - L3 K LINE,Complete,SWA - 5,,FIZ 2 / SUWS 5  (GL6-1) - GL J - N - DATA CENTER 1,L3 / Waffle Slab Level,DS/AD INTERIORS,CONSTRUCTION,,TBD Architectural Finishes,,,2024-02-26 08:00,2024-03-05 10:00,2024-02-26 08:00,2024-03-05 14:00,2025-11-20 17:00,2025-11-20 17:00,2025-06-13 08:00,2025-06-13 08:00,0,72,100
CN.SWA5.L3.210,TEMPORARY SCAFFOLD PLATFORM - SWA5 - GL 6-1 - L3 K LINE,Complete,SWA - 5,,FIZ 2 / SUWS 5  (GL6-1) - GL J - N - DATA CENTER 1,L3 / Waffle Slab Level,DS/AD INTERIORS,CONSTRUCTION,,TBD Architectural Finishes,,,2024-03-12 07:00,2024-03-20 15:00,2024-03-12 07:00,2024-03-19 09:00,2025-11-20 17:00,2025-11-20 17:00,2025-06-13 08:00,2025-06-13 08:00,0,48,100
CN.SWA5.1750,Drywall Clips & AMTS Installs Support Beams - SWA5 - GL 6-1 - K LINE - L4,Complete,SWA - 5,West Support Building,FIZ 2 / SUWS 5  (GL6-1) - GL J - N - DATA CENTER 1,L4 - SUP Roof - FAB Roof,DS/AD INTERIORS,CONSTRUCTION,SECAI,Fireproofing,,,2024-03-18 07:00,2024-03-28 17:00,2024-03-18 07:00,2024-03-28 17:00,2025-11-20 17:00,2025-11-20 17:00,2025-06-13 08:00,2025-06-13 08:00,0,80,100
CN.SWA5.1760,DS STEEL SPRAY SFRM - SWA5 - GL 6-3 - K-L - L3 CEILING,Complete,SWA - 5,West Support Building,FIZ 2 / SUWS 5  (GL6-1) - GL J - N - DATA CENTER 1,L4 - SUP Roof - FAB Roof,DS/AD INTERIORS,CONSTRUCTION,ROLLING PLAINS,Fireproofing,,,2024-05-24 07:00,2024-05-31 17:00,2024-05-24 07:00,2024-05-30 17:00,2025-11-20 17:00,2025-11-20 17:00,2025-12-05 17:00,2025-12-05 17:00,0,40,100
CN.SWA5.1770,ADD FLANGE EXTENSIONS/ CUT GRATING - SWA5 - GL 6-1 - K LINE - L4,Complete,SWA - 5,West Support Building,FIZ 2 / SUWS 5  (GL6-1) - GL J - N - DATA CENTER 1,L3 / Waffle Slab Level,DS/AD INTERIORS,CONSTRUCTION,,Fireproofing,,,2024-03-12 07:00,2024-03-19 08:00,2024-03-12 07:00,2024-03-15 08:00,2025-11-20 17:00,2025-11-20 17:00,2025-06-13 08:00,2025-06-13 08:00,0,21,100
CN.SWA5.1780,AD STEEL APPLY INTUMESCENT - SWA5 - GL 6-3 - J-K - L3 CEILING,Complete,SWA - 5,West Support Building,FIZ 2 / SUWS 5  (GL6-1) - GL J - N - DATA CENTER 1,L4 - SUP Roof - FAB Roof,DS/AD INTERIORS,CONSTRUCTION,ROLLING PLAINS,Fireproofing,,,2024-05-30 07:00,2024-06-04 17:00,2024-05-30 07:00,2024-06-03 17:00,2025-11-20 17:00,2025-11-20 17:00,2025-06-13 08:00,2025-06-13 08:00,0,40,100
CN.SWA5.1790,CURE AD INTUMESCENT PAINT - SWA5 - GL 6-3 - J-K - L4,Complete,SWA - 5,West Support Building,FIZ 2 / SUWS 5  (GL6-1) - GL J - N - DATA CENTER 1,L4 - SUP Roof - FAB Roof,DS/AD INTERIORS,CONSTRUCTION,ROLLING PLAINS,Fireproofing,,,2024-06-03 07:00,2024-06-21 17:00,2024-06-03 07:00,2024-07-02 15:00,2025-11-20 17:00,2025-11-20 17:00,2025-12-05 17:00,2025-12-05 17:00,0,120,100
CN.SWA5.1800,SECAI - AMTS Installs UPPER CEILING  - SWA5 - GL 6-1 - K LINE - L4,Complete,SWA - 5,West Support Building,FIZ 2 / SUWS 5  (GL6-1) - GL J - N - DATA CENTER 1,L4 - SUP Roof - FAB Roof,DS/AD INTERIORS,CONSTRUCTION,SECAI,Fireproofing,,,2024-09-27 07:00,2024-10-01 17:00,2024-07-01 07:00,2024-07-04 17:00,2025-11-20 17:00,2025-11-20 17:00,2025-12-05 17:00,2025-12-05 17:00,0,30,100
CN.SWA5.1830,IMPACT [C3] - BATHROOM PIT HATCH OPENING - SWA-5 - L1 - GL 3 (Waiting on Hatch framing),Complete,SWA - 5,West Support Building,FIZ 2 / SUWS 5  (GL6-1) - GL J - N - DATA CENTER 1,L1 - Fndn Slab,BATHROOM,CONSTRUCTION,,Pour Concrete,FIZ DATA CENTER,,2023-02-07 07:00,2023-02-10 17:00,2024-01-03 07:00,2024-03-29 17:00,2025-11-20 17:00,2025-11-20 17:00,2025-11-20 07:00,2025-11-20 07:00,0,40,100
CN.SWA5.1840,IMPACT - STARCON COLUMNS & WELDING BASE PLATE - SWA5 - GL 6-1 - L4 - L-N - ROOF,Complete,SWA - 5,West Support Building,FIZ 2 / SUWS 5  (GL6-1) - GL J - N - DATA CENTER 1,L4 - SUP Roof - FAB Roof,,CONSTRUCTION,,OAC/ MECH PADS,FIZ DATA CENTER,SOMD / Roofing / Waterproofing,2024-01-29 07:00,2024-01-31 11:00,2024-01-23 07:00,2024-03-08 17:00,2025-11-20 17:00,2025-11-20 17:00,2025-12-05 17:00,2025-12-05 17:00,0,24,100
CN.SWA5.1870,IMPACT [C22] - SECAI / TINDALL TO FIX MISSING FORMSAVERS / TURNOVER TO YATES - SWA5 - GL 5.3 - L-N - L4 ROOF,Complete,SWA - 5,West Support Building,FIZ 2 / SUWS 5  (GL6-1) - GL J - N - DATA CENTER 1,L4 - SUP Roof - FAB Roof,,CONSTRUCTION,SECAI,SOMD,CONCRETE,,2024-02-09 09:00,2024-02-15 09:00,2024-01-11 09:00,2024-05-28 17:00,2025-11-20 17:00,2025-11-20 17:00,2025-12-05 17:00,2025-12-05 17:00,0,40,100
CN.SWA5.1880,PH1 - CLADDING STEEL  - SWA5 - GL 6-3 -  N LINE [SUP EXTERIOR WALL],Complete,SWA - 5,West Support Building,FIZ 2 / SUWS 5  (GL6-1) - GL J - N - DATA CENTER 1,EXTERIOR SKIN,,CONSTRUCTION,,INSULATED METAL PANELS,,,2024-02-08 07:00,2024-02-19 09:00,2024-02-08 07:00,2024-02-20 12:00,2025-11-20 17:00,2025-11-20 17:00,2025-09-04 07:00,2025-09-04 07:00,0,112,100
CN.SWA5.LD.3010,INSTALL CERAMIC TILE (WALLS & FLOOR) - BATHROOM - GL 3 - M-N - L1,Complete,SWA - 5,East Support Building,FIZ 2 / SUWS 5  (GL6-1) - GL J - N - DATA CENTER 1,L1 - Fndn Slab,BATHROOM,CONSTRUCTION,SPECTRA,TBD Architectural Finishes,AMBER CARO,INTERIORS,2025-07-31 07:00,2025-08-06 17:00,2025-07-31 07:00,2025-09-26 07:00,2025-11-20 17:00,2025-11-20 17:00,2025-11-20 07:00,2025-11-20 07:00,0,50,100
CN.SWA5.LD.3020,INSTALL MIRRORS - BATHROOM - GL 3 - M-N - L1,Active,SWA - 5,East Support Building,FIZ 2 / SUWS 5  (GL6-1) - GL J - N - DATA CENTER 1,L1 - Fndn Slab,BATHROOM,CONSTRUCTION,,TBD Architectural Finishes,AMBER CARO,INTERIORS,2025-10-16 07:00,2025-10-22 17:00,2025-10-16 07:00,,2025-11-21 07:00,2025-12-01 17:00,2025-11-20 07:00,2025-11-26 17:00,50,50,0
CN.AB.AR.6800,"IMPACT [S.TIA-19] - ELEVATOR 01, 01A & 01B HSS SPLICE CONNECTION - SWA-5",Complete,SWA - 5,West Support Building,ELEVATORS,L1 - Fndn Slab,ELEVATOR,PRE - CON / BUYOUT / IMPACTS,,TBD Architectural Finishes,,INTERIORS,2024-03-18 07:00,2024-03-29 13:00,2024-03-14 07:00,2024-03-29 12:00,2025-11-20 17:00,2025-11-20 17:00,2025-12-01 07:00,2025-12-01 07:00,0,86,100
CN.AB.AR.6810,INSTALL ELEVATOR HSS STEEL DOOR OPENINGS - ELEVATOR 01A,Complete,SWA - 5,West Support Building,FIZ 2 / SUWS 5  (GL6-1) - GL J - N - DATA CENTER 1,,ELEVATOR,CONSTRUCTION,W&W,DRYWALL,,INTERIORS,2025-03-03 07:00,2025-03-21 17:00,2025-03-03 07:00,2025-03-11 17:00,2025-11-20 17:00,2025-11-20 17:00,2025-12-01 07:00,2025-12-01 07:00,0,150,100
CN.SWA5.L3.230,"PRIME, PATCH & TOPCOAT PRECAST BEAMS - FIZ & FA LAB - SWA5 - GL 6-1 - L-N - L1",Not Started,SWA - 5,West Support Building,FIZ 2 / SUWS 5  (GL6-1) - GL J - N - DATA CENTER 1,L1 - Fndn Slab,FA/TEM LAB,CONSTRUCTION,CHERRY COATING,TBD Architectural Finishes,FIZ DATA CENTER,INTERIORS,2025-11-24 07:00,2025-11-25 17:00,,,2025-11-24 07:00,2025-11-25 17:00,2025-11-24 07:00,2025-11-25 17:00,20,20,0
CN.SWA5.L3.240,"PRIME, PATCH & TOPCOAT PRECAST COLUMNS - FIZ & FA LAB - SWA5 - GL 6-1 - L-N - L1",Not Started,SWA - 5,West Support Building,FIZ 2 / SUWS 5  (GL6-1) - GL J - N - DATA CENTER 1,L1 - Fndn Slab,FA/TEM LAB,CONSTRUCTION,CHERRY COATING,TBD Architectural Finishes,FIZ DATA CENTER,INTERIORS,2025-11-24 07:00,2025-11-25 17:00,,,2025-11-24 07:00,2025-11-25 17:00,2025-12-04 07:00,2025-12-05 17:00,20,20,0
CN.AB.AR.6820,INSTALL FRAMING/SHAFT LINER - ELEVATOR 01B - ALL LEVELS,Complete,SWA - 5,West Support Building,FIZ 2 / SUWS 5  (GL6-1) - GL J - N - DATA CENTER 1,,ELEVATOR,CONSTRUCTION,BERG,DRYWALL,,INTERIORS,2025-01-27 07:00,2025-02-19 17:00,2025-01-27 07:00,2025-04-25 17:00,2025-11-20 17:00,2025-11-20 17:00,2025-12-01 07:00,2025-12-01 07:00,0,180,100
CN.AB.AR.6830,INSTALL ELEVATOR HSS STEEL DOOR OPENINGS - ELEVATOR 01B,Complete,SWA - 5,West Support Building,FIZ 2 / SUWS 5  (GL6-1) - GL J - N - DATA CENTER 1,,ELEVATOR,CONSTRUCTION,W&W,TBD Architectural Finishes,,INTERIORS,2025-03-12 07:00,2025-04-01 17:00,2025-03-12 07:00,2025-04-23 17:00,2025-11-20 17:00,2025-11-20 17:00,2025-12-05 17:00,2025-12-05 17:00,0,150,100
CN.SWA5.1930,IMPACT - K-LINE STEEL SPRAY FIREPROOFING SFRM2 - SWA5 - SWA5 - L3-CEILING - GL 6-3,Complete,SWA - 5,West Support Building,FIZ 2 / SUWS 5  (GL6-1) - GL J - N - DATA CENTER 1,L4 - SUP Roof - FAB Roof,DS/AD INTERIORS,CONSTRUCTION,ROLLING PLAINS,Fireproofing,,,2024-04-17 07:00,2024-04-19 17:00,2024-04-17 07:00,2024-04-19 17:00,2025-11-20 17:00,2025-11-20 17:00,2025-06-13 08:00,2025-06-13 08:00,0,30,100
CN.SWA5.8050,IMPACT - AD STEEL APPLY INTUMESCENT - SWA5 -L3 CEILING - GL 6-3/J-K - INSPECT - SURFACE PREP ADDITIONAL STEELS,Complete,SWA - 5,West Support Building,FIZ 2 / SUWS 5  (GL6-1) - GL J - N - DATA CENTER 1,L4 - SUP Roof - FAB Roof,DS/AD INTERIORS,CONSTRUCTION,ROLLING PLAINS,Fireproofing,,,2024-05-14 07:00,2024-05-20 17:00,2024-05-14 07:00,2024-05-20 17:00,2025-11-20 17:00,2025-11-20 17:00,2025-06-13 08:00,2025-06-13 08:00,0,40,100
CN.SWA5.8060,IMPACT [C22] - SECAI / TINDALL TO LINE MISSING FORMSAVER / TURNOVER TO YATES - SWA5 - GL 5.3 - M LINE - L4 ROOF,Complete,SWA - 5,West Support Building,FIZ 2 / SUWS 5  (GL6-1) - GL J - N - DATA CENTER 1,L4 - SUP Roof - FAB Roof,,CONSTRUCTION,,SOMD,CONCRETE,,2024-02-09 09:00,2024-02-13 09:00,2024-01-11 09:00,2024-02-01 16:00,2025-11-20 17:00,2025-11-20 17:00,2025-06-13 08:00,2025-06-13 08:00,0,40,100
CN.SWA5.8090,INSTALL FRAMING FOR IMP - GL 6-1 - J LINE (AD AREA),Complete,SWA - 5,West Support Building,FIZ 2 / SUWS 5  (GL6-1) - GL J - N - DATA CENTER 1,DS/AD,,CONSTRUCTION,BERG,Fireproofing,,,2024-06-13 07:00,2024-06-14 17:00,2024-05-01 07:00,2024-05-14 17:00,2025-11-20 17:00,2025-11-20 17:00,2025-12-05 17:00,2025-12-05 17:00,0,20,100
CN.SWA5.8100,IMPACT ENVIROMENTAL CONTROLS FOR INTUMSCENT - SWA5 - GL 6-3 - J-K - L3 CEILING,Complete,SWA - 5,West Support Building,FIZ 2 / SUWS 5  (GL6-1) - GL J - N - DATA CENTER 1,L4 - SUP Roof - FAB Roof,DS/AD INTERIORS,CONSTRUCTION,ROLLING PLAINS,Fireproofing,,,2024-05-13 07:00,2024-05-17 17:00,2024-05-13 07:00,2024-05-25 17:00,2025-11-20 17:00,2025-11-20 17:00,2025-06-13 08:00,2025-06-13 08:00,0,40,100
CN.SWA5..1640,IMPACT [S.TIA-147] - NCR 372 - ALPHA PAINT ALL BOLTS - ELEVATOR 01A - L1-L4,Complete,SWA - 5,West Support Building,FIZ 2 / SUWS 5  (GL6-1) - GL J - N - DATA CENTER 1,,ELEVATOR,CONSTRUCTION,W&W,TBD Architectural Finishes,JAMES LIVELY,INTERIORS,2024-07-26 07:00,2024-08-06 17:00,2024-07-22 07:00,2024-08-26 17:00,2025-11-20 17:00,2025-11-20 17:00,2025-12-01 07:00,2025-12-01 07:00,0,80,100
CN.SWA5..1650,IMPACT [S.TIA-147] - NCR 372 - ALPHA PAINT ALL BOLTS - ELEVATOR 01 - L1-L4 - L4 NEEDS SPIDER CRANE,Complete,SWA - 5,West Support Building,FIZ 2 / SUWS 5  (GL6-1) - GL J - N - DATA CENTER 1,,ELEVATOR,CONSTRUCTION,W&W,TBD Architectural Finishes,JAMES LIVELY,INTERIORS,2024-08-02 07:00,2024-08-15 17:00,2024-07-31 07:00,2024-08-26 17:00,2025-11-20 17:00,2025-11-20 17:00,2025-12-01 07:00,2025-12-01 07:00,0,80,100
CN.SWA5.9290,CURE - AD STEEL PAINT FIREPROOFING IFRM - SWA5 - GL 3-6 - L-J - L2-CEILING,Complete,SWA - 5,West Support Building,FIZ 2 / SUWS 5  (GL6-1) - GL J - N - DATA CENTER 1,DS/AD,,CONSTRUCTION,ROLLING PLAINS,Fireproofing,,,2024-07-19 07:00,2024-08-06 17:00,2024-06-25 07:00,2024-07-14 17:00,2025-11-20 17:00,2025-11-20 17:00,2025-12-05 17:00,2025-12-05 17:00,0,180,100
CN.SWA5.9300,PRIME & TOUCH UP AD STEEL - SWA5 - GL 3-6 - L-J - L2-CEILING,Complete,SWA - 5,West Support Building,FIZ 2 / SUWS 5  (GL6-1) - GL J - N - DATA CENTER 1,DS/AD,,CONSTRUCTION,ROLLING PLAINS,Fireproofing,,,2024-06-17 07:00,2024-06-20 17:00,2024-06-15 07:00,2024-06-20 17:00,2025-11-20 17:00,2025-11-20 17:00,2025-11-24 07:00,2025-11-24 07:00,0,30,100
CN.SWA5.9312,IMPACT - SECAI INSTALLING HANGER AND PIPE RACKS IN THE AREA - SWA5 - GL 3-6 - L-J - L2-CEILING,Complete,SWA - 5,West Support Building,FIZ 2 / SUWS 5  (GL6-1) - GL J - N - DATA CENTER 1,DS/AD,,CONSTRUCTION,ROLLING PLAINS,Fireproofing,,,2024-06-18 07:00,2024-06-25 17:00,2024-06-04 07:00,2024-06-19 17:00,2025-11-20 17:00,2025-11-20 17:00,2025-11-24 07:00,2025-11-24 07:00,0,50,100
CN.SWA5.R.4710,INSTALL WALL PROTECTION - STAIR 1 - GL 5-6 - K-L - L2,Not Started,SWA - 5,West Support Building,FIZ 2 / SUWS 5  (GL6-1) - GL J - N - DATA CENTER 1,L2 - SubFab Level,DS/AD INTERIORS,CONSTRUCTION,BERNCO,TBD Architectural Finishes,JAMES LEE,INTERIORS,2025-12-29 15:00,2026-01-02 15:00,,,2025-12-29 15:00,2026-01-02 15:00,2025-12-03 07:00,2025-12-05 17:00,30,30,0
CN.SWA5.R.4720,INSTALL WALL PROTECTION - STAIR 1 - GL 5-6 - K-L - L3,Not Started,SWA - 5,West Support Building,FIZ 2 / SUWS 5  (GL6-1) - GL J - N - DATA CENTER 1,L3 / Waffle Slab Level,DS/AD INTERIORS,CONSTRUCTION,BERNCO,TBD Architectural Finishes,JAMES LEE,INTERIORS,2025-12-29 15:00,2026-01-02 15:00,,,2025-12-29 15:00,2026-01-02 15:00,2025-12-03 07:00,2025-12-05 17:00,30,30,0
CN.SWA5.9400,IMPACT - Y_RFI 1413 - PREP/SUBMIT RFI FOR WELD CONNECTION FIX AT OUTSIDE CORNERS,Complete,SWA - 5,,FIZ 2 / SUWS 5  (GL6-1) - GL J - N - DATA CENTER 1,EXTERIOR SKIN,,CONSTRUCTION,KOVACH,INSULATED METAL PANELS,,,2024-06-28 07:00,2024-07-02 17:00,2024-06-26 07:00,2024-07-02 17:00,2025-11-20 17:00,2025-11-20 17:00,2025-12-02 07:00,2025-12-02 07:00,0,50,100
CN.SWA5.9410,IMPACT - Y_RFI 1413 - SECAI REVIEW & PROVIDE DIRECTION FOR WELD CONNECTION FIX AT OUTSIDE CORNERS,Complete,SWA - 5,,FIZ 2 / SUWS 5  (GL6-1) - GL J - N - DATA CENTER 1,EXTERIOR SKIN,,CONSTRUCTION,KOVACH,INSULATED METAL PANELS,,,2024-07-09 07:00,2024-07-19 17:00,2024-07-03 07:00,2024-08-05 17:00,2025-11-20 17:00,2025-11-20 17:00,2025-12-02 07:00,2025-12-02 07:00,0,100,100
CN.SWA5.9420,IMPACT - PATRIOT COMPLETE WELD CONNECTION FIX AT OUTSIDE CORNERS - GL 3 - K LINE (AD AREA),Complete,SWA - 5,,FIZ 2 / SUWS 5  (GL6-1) - GL J - N - DATA CENTER 1,EXTERIOR SKIN,,CONSTRUCTION,KOVACH,INSULATED METAL PANELS,,,2024-08-29 07:00,2024-08-31 17:00,2024-08-06 07:00,2024-08-15 17:00,2025-11-20 17:00,2025-11-20 17:00,2025-12-02 07:00,2025-12-02 07:00,0,30,100
CN.SWA5.9430,IMPACT - REMAINING INSTALL INSULATED METAL PANEL MODULES - GL 3 - K LINE (AD AREA),Complete,SWA - 5,,FIZ 2 / SUWS 5  (GL6-1) - GL J - N - DATA CENTER 1,EXTERIOR SKIN,,CONSTRUCTION,KOVACH,INSULATED METAL PANELS,,,2024-09-13 07:00,2024-09-14 17:00,2024-09-03 07:00,2024-09-04 17:00,2025-11-20 17:00,2025-11-20 17:00,2025-12-05 17:00,2025-12-05 17:00,0,20,100
CN.SWA5.9440,IMPACT - ALPHA PAINT AT WELD CONNECTION FIX - GL 3 - K LINE (AD AREA),Complete,SWA - 5,,FIZ 2 / SUWS 5  (GL6-1) - GL J - N - DATA CENTER 1,EXTERIOR SKIN,,CONSTRUCTION,KOVACH,INSULATED METAL PANELS,,,2024-08-19 07:00,2024-08-20 17:00,2024-08-19 07:00,2024-08-20 17:00,2025-11-20 17:00,2025-11-20 17:00,2025-12-05 17:00,2025-12-05 17:00,0,20,100
CN.SWA5..1790,IMPACT [S.TIA-147] - NCR 372 - ALPHA PAINT ALL BOLTS - ELEVATOR 01A - LU1/L1,Complete,SWA - 5,West Support Building,FIZ 2 / SUWS 5  (GL6-1) - GL J - N - DATA CENTER 1,,ELEVATOR,CONSTRUCTION,W&W,TBD Architectural Finishes,JAMES LIVELY,INTERIORS,2024-07-19 07:00,2024-07-22 17:00,2024-07-11 07:00,2024-07-13 17:00,2025-11-20 17:00,2025-11-20 17:00,2025-12-01 07:00,2025-12-01 07:00,0,20,100
CN.SWA5..1780,IMPACT [S.TIA-147] - NCR 372 - ALPHA PAINT ALL BOLTS - ELEVATOR 01 - LU1/L1,Complete,SWA - 5,West Support Building,FIZ 2 / SUWS 5  (GL6-1) - GL J - N - DATA CENTER 1,,ELEVATOR,CONSTRUCTION,W&W,TBD Architectural Finishes,JAMES LIVELY,INTERIORS,2024-07-17 07:00,2024-07-18 17:00,2024-07-08 07:00,2024-07-12 17:00,2025-11-20 17:00,2025-11-20 17:00,2025-12-01 07:00,2025-12-01 07:00,0,20,100
CN.SWA5.9480,IMPACT - STARCON PIPERACK ERECTION BLOCKING WATERPROOFING & TOPPING SLAB - GL 3-10 - J-K - L4/E,Complete,SWA - 5,,FIZ 2 / SUWS 5  (GL6-1) - GL J - N - DATA CENTER 1,DS/AD,,CONSTRUCTION,BRAZOS,TOPPING,,,2024-07-26 07:00,2024-08-16 17:00,2024-07-15 07:00,2024-08-28 17:00,2025-11-20 17:00,2025-11-20 17:00,2025-12-05 17:00,2025-12-05 17:00,0,140,100
CN.SWA5.L3.270,DEMO DRYWALL - INSTALL GOAL POSTS - ELEVATOR 1 HALLWAY - SWA5 - GL 6-1 - K LINE - L3,Complete,SWA - 5,,FIZ 2 / SUWS 5  (GL6-1) - GL J - N - DATA CENTER 1,L3 / Waffle Slab Level,,CONSTRUCTION,CHERRY COATING,TBD Architectural Finishes,,,2024-07-31 07:00,2024-08-09 17:00,2024-07-09 07:00,2024-07-19 17:00,2025-11-20 17:00,2025-11-20 17:00,2025-12-02 07:00,2025-12-02 07:00,0,70,100
CN.SWA5..1810,INSPECT - FIREPROOFING - STAIR #1 - 5/L - ALL LEVELS,Complete,SWA - 5,West Support Building,FIZ 2 / SUWS 5  (GL6-1) - GL J - N - DATA CENTER 1,INTERIOR STAIR TOWER - STAIR #1 - DE-SCOPED,,CONSTRUCTION,,INSULATED METAL PANELS,JAMES LIVELY,INTERIORS,2025-07-28 07:00,2025-07-28 17:00,2025-06-11 07:00,2025-06-11 17:00,2025-11-20 17:00,2025-11-20 17:00,2025-11-01 07:00,2025-11-01 07:00,0,10,100
CN.SWA5..1900,FINAL COAT & INSPECTION -STAIR #1 - 5/L - ALL LEVELS,Not Started,SWA - 5,West Support Building,FIZ 2 / SUWS 5  (GL6-1) - GL J - N - DATA CENTER 1,INTERIOR STAIR TOWER - STAIR #1 - DE-SCOPED,,CONSTRUCTION,,INSULATED METAL PANELS,JAMES LIVELY,INTERIORS,2025-12-15 15:00,2025-12-20 15:00,,,2025-12-15 15:00,2025-12-20 15:00,2025-11-18 07:00,2025-11-22 17:00,50,50,0
CN.SWA5..1950,ERECT SCAFFOLDING - STAIR #2 - 11/L - ALL LEVELS,Complete,SWA - 5,West Support Building,SUWS-3 - 12-9,INTERIOR STAIR TOWER - STAIR #2 (CLEAN ROOM),,CONSTRUCTION,,INSULATED METAL PANELS,JAMES LIVELY,INTERIORS,2024-08-09 07:00,2024-08-13 17:00,2024-08-08 07:00,2024-08-13 17:00,2025-11-20 17:00,2025-11-20 17:00,2025-11-12 07:00,2025-11-12 07:00,0,50,100
CN.SWA5..1970,SPRAY FIREPROOFING / CURE / INSPECT - STAIR #2 - 11/L - ALL LEVELS,Complete,SWA - 5,West Support Building,SUWS-3 - 12-9,INTERIOR STAIR TOWER - STAIR #2 (CLEAN ROOM),,CONSTRUCTION,,INSULATED METAL PANELS,JAMES LIVELY,INTERIORS,2024-08-23 07:00,2024-08-30 17:00,2024-08-16 07:00,2024-08-22 17:00,2025-11-20 17:00,2025-11-20 17:00,2025-11-12 07:00,2025-11-12 07:00,0,80,100
CN.SWA5..1940,COATING 1ST PASS - TOP COAT - EXTERIOR/UNDERSIDE STRINGERS - STAIR #2 - 11/L - ALL LEVELS(2 SHIFTS),Complete,SWA - 5,West Support Building,SUWS-3 - 12-9,INTERIOR STAIR TOWER - STAIR #2 (CLEAN ROOM),,CONSTRUCTION,,INSULATED METAL PANELS,JAMES LIVELY,INTERIORS,2024-10-15 07:00,2024-10-16 17:00,2024-10-15 07:00,2024-10-18 17:00,2025-11-20 17:00,2025-11-20 17:00,2025-11-12 07:00,2025-11-12 07:00,0,20,100
CN.SWA5..2000,IMPACT - SECAI - IN-WALL MEP ROUGH-IN & SPRINKLER LINE - STAIR #2 - 11/L - ALL LEVELS,Complete,SWA - 5,West Support Building,SUWS-3 - 12-9,INTERIOR STAIR TOWER - STAIR #2 (CLEAN ROOM),,CONSTRUCTION,,INSULATED METAL PANELS,JAMES LIVELY,INTERIORS,2024-10-28 07:00,2024-11-09 17:00,2024-10-28 07:00,2024-11-20 17:00,2025-11-20 17:00,2025-11-20 17:00,2025-11-12 07:00,2025-11-12 07:00,0,120,100
CN.SWA5..2010,HANG INTERIOR SIDE DRYWALL 1ST LAYER install & inspect - STAIR #2 - 11/L - ALL LEVELS,Complete,SWA - 5,West Support Building,SUWS-3 - 12-9,INTERIOR STAIR TOWER - STAIR #2 (CLEAN ROOM),,CONSTRUCTION,,INSULATED METAL PANELS,JAMES LIVELY,INTERIORS,2024-12-11 07:00,2024-12-16 17:00,2024-12-12 07:00,2025-08-18 17:00,2025-11-20 17:00,2025-11-20 17:00,2025-11-12 07:00,2025-11-12 07:00,0,50,100
CN.SWA5..2020,SECAI - TAPE & FLOAT DRYWALL & CEILING remaining - STAIR #2 - 11/L - ALL LEVELS,Complete,SWA - 5,West Support Building,SUWS-3 - 12-9,INTERIOR STAIR TOWER - STAIR #2 (CLEAN ROOM),,CONSTRUCTION,,INSULATED METAL PANELS,JAMES LIVELY,INTERIORS,2025-08-19 07:00,2025-08-29 17:00,2025-08-19 07:00,2025-08-29 17:00,2025-11-20 17:00,2025-11-20 17:00,2025-11-12 07:00,2025-11-12 07:00,0,100,100
CN.SWA5..2050,IMPACT - SECAI SGP / HANDRAIL INSTALL/FLOOR COATING/LIGHT INSTALL - STAIR #2 - 11/L - ALL LEVELS,Active,SWA - 5,West Support Building,SUWS-3 - 12-9,INTERIOR STAIR TOWER - STAIR #2 (CLEAN ROOM),,CONSTRUCTION,,INSULATED METAL PANELS,JAMES LIVELY,INTERIORS,2025-11-03 07:00,2025-11-24 17:00,2025-11-03 07:00,,2025-11-21 07:00,2025-12-03 17:00,2025-11-12 07:00,2025-11-21 17:00,90,190,0
CN.SWA5..2040,DISMANTLE SCAFFOLDING - STAIR #2 - 11/L - 3F,Complete,SWA - 5,West Support Building,SUWS-3 - 12-9,INTERIOR STAIR TOWER - STAIR #2 (CLEAN ROOM),,CONSTRUCTION,,INSULATED METAL PANELS,JAMES LIVELY,INTERIORS,2025-09-08 07:00,2025-09-08 17:00,2025-09-08 07:00,2025-09-08 17:00,2025-11-20 17:00,2025-11-20 17:00,2025-11-12 07:00,2025-11-12 07:00,0,10,100
CN.SWA5..2090,ERECT SCAFFOLDING - STAIR #3 - 18/L - ALL LEVELS,Complete,SWA - 5,West Support Building,SUWN-1 - 18-21,INTERIOR STAIR TOWER - STAIR #3,,CONSTRUCTION,,INSULATED METAL PANELS,JAMES LIVELY,INTERIORS,2024-08-16 07:00,2024-08-20 17:00,2024-08-08 07:00,2024-08-14 17:00,2025-11-20 17:00,2025-11-20 17:00,2025-11-03 07:00,2025-11-03 07:00,0,50,100
CN.SWA5..2110,SPRAY FIREPROOFING / CURE / INSPECT - STAIR #3 - 18/L - ALL LEVELS,Complete,SWA - 5,West Support Building,SUWN-1 - 18-21,INTERIOR STAIR TOWER - STAIR #3,,CONSTRUCTION,,INSULATED METAL PANELS,JAMES LIVELY,INTERIORS,2024-08-28 07:00,2024-09-06 17:00,2024-08-19 07:00,2024-08-22 17:00,2025-11-20 17:00,2025-11-20 17:00,2025-11-03 07:00,2025-11-03 07:00,0,80,100
CN.SWA5..2080,COATING 1ST PASS -TOP COAT - EXTERIOR/UNDERSIDE STRINGERS - STAIR #3 - 18/L - ALL LEVELS(2 shifts ),Complete,SWA - 5,West Support Building,SUWN-1 - 18-21,INTERIOR STAIR TOWER - STAIR #3,,CONSTRUCTION,,INSULATED METAL PANELS,JAMES LIVELY,INTERIORS,2024-10-31 07:00,2024-11-02 17:00,2024-10-31 07:00,2024-11-07 17:00,2025-11-20 17:00,2025-11-20 17:00,2025-11-03 07:00,2025-11-03 07:00,0,30,100
CN.SWA5..2140,IMPACT - SECAI - IN-WALL MEP ROUGH-IN AND SPRINKLER INSTALL - STAIR #3 - 18/L - ALL LEVELS,Complete,SWA - 5,West Support Building,SUWN-1 - 18-21,INTERIOR STAIR TOWER - STAIR #3,,CONSTRUCTION,,INSULATED METAL PANELS,JAMES LIVELY,INTERIORS,2024-11-12 07:00,2024-11-25 17:00,2024-11-12 07:00,2025-02-17 00:00,2025-11-20 17:00,2025-11-20 17:00,2025-11-03 07:00,2025-11-03 07:00,0,120,100
CN.SWA5..2150,HANG INTERIOR SIDE 1ST LAYER DRYWALL & INSPECT - STAIR #3 - 18/L - ALL LEVELS,Complete,SWA - 5,West Support Building,SUWN-1 - 18-21,INTERIOR STAIR TOWER - STAIR #3,,CONSTRUCTION,,INSULATED METAL PANELS,JAMES LIVELY,INTERIORS,2024-11-26 07:00,2024-12-03 17:00,2024-11-26 07:00,2025-10-09 07:00,2025-11-20 17:00,2025-11-20 17:00,2025-11-08 07:00,2025-11-08 07:00,0,50,100
CN.SWA5..2160,TAPE & FLOAT DRYWALL & CEILING - STAIR #3 - 18/L - ALL LEVELS,Complete,SWA - 5,West Support Building,SUWN-1 - 18-21,INTERIOR STAIR TOWER - STAIR #3,,CONSTRUCTION,,INSULATED METAL PANELS,JAMES LIVELY,INTERIORS,2025-10-13 07:00,2025-10-23 17:00,2025-10-13 07:00,2025-11-11 17:00,2025-11-26 17:00,2025-11-26 17:00,2025-11-08 07:00,2025-11-08 07:00,0,100,100
CN.SWA5..2170,INSTALL - DOOR FRAMES  - STAIR #3 - 18/L - ALL LEVELS,Complete,SWA - 5,West Support Building,SUWN-1 - 18-21,INTERIOR STAIR TOWER - STAIR #3,,CONSTRUCTION,,INSULATED METAL PANELS,JAMES LIVELY,INTERIORS,2025-10-16 07:00,2025-10-18 17:00,2025-02-18 07:00,2025-09-29 17:00,2025-11-20 17:00,2025-11-20 17:00,2025-11-29 07:00,2025-11-29 07:00,0,30,100
CN.SWA5..2190,INSTALL WALL MOUNTED HAND RAILS & CANE RAIL - STAIR #3 - 18/L - ALL LEVELS,Complete,SWA - 5,West Support Building,SUWN-1 - 18-21,INTERIOR STAIR TOWER - STAIR #3,,CONSTRUCTION,,INSULATED METAL PANELS,JAMES LIVELY,INTERIORS,2025-12-09 07:00,2025-12-11 17:00,2025-09-10 07:00,2025-09-10 17:00,2025-11-20 17:00,2025-11-20 17:00,2025-11-03 07:00,2025-11-03 07:00,0,30,100
CN.SWA5..2180,DISMANTLE SCAFFOLDING- STAIR #3 - 18/L - ALL LEVELS,Not Started,SWA - 5,West Support Building,SUWN-1 - 18-21,INTERIOR STAIR TOWER - STAIR #3,,CONSTRUCTION,,INSULATED METAL PANELS,JAMES LIVELY,INTERIORS,2025-11-29 07:00,2025-12-04 17:00,,,2025-11-29 07:00,2025-12-04 17:00,2025-11-08 07:00,2025-11-13 17:00,50,50,0
CN.SWA5..2230,ERECT SCAFFOLDING - STAIR #4 - 23/L - ALL LEVELS (2- SHIFTS),Complete,SWA - 5,West Support Building,SUWN-2 - 21-24,INTERIOR STAIR TOWER - STAIR #4 (CLEAN ROOM),,CONSTRUCTION,,INSULATED METAL PANELS,JAMES LIVELY,INTERIORS,2025-03-26 07:00,2025-03-29 17:00,2025-02-27 07:00,2025-03-05 17:00,2025-11-20 17:00,2025-11-20 17:00,2025-12-01 07:00,2025-12-01 07:00,0,40,100
CN.SWA5..2250,INSPECT - FIREPROOFING  - STAIR #4 - 23/L - ALL LEVELS,Complete,SWA - 5,West Support Building,SUWN-2 - 21-24,INTERIOR STAIR TOWER - STAIR #4 (CLEAN ROOM),,CONSTRUCTION,,INSULATED METAL PANELS,JAMES LIVELY,INTERIORS,2025-03-28 07:00,2025-03-28 17:00,2025-03-27 07:00,2025-04-01 07:00,2025-11-20 17:00,2025-11-20 17:00,2025-12-01 07:00,2025-12-01 07:00,0,10,100
CN.SWA5..2220,COATING 1ST PASS - PRIMER & TOP COAT - EXTERIOR/UNDERSIDE STRINGERS - STAIR #4 - 23/L - ALL LEVELS,Complete,SWA - 5,West Support Building,SUWN-2 - 21-24,INTERIOR STAIR TOWER - STAIR #4 (CLEAN ROOM),,CONSTRUCTION,,INSULATED METAL PANELS,JAMES LIVELY,INTERIORS,2025-10-02 07:00,2025-10-04 17:00,2025-09-26 12:00,2025-09-29 17:00,2025-11-20 17:00,2025-11-20 17:00,2025-12-01 07:00,2025-12-01 07:00,0,30,100
CN.SWA5..2280,SECAI - IN-WALL MEP ROUGH-IN - STAIR #4 - 23/L - ALL LEVELS,Complete,SWA - 5,West Support Building,SUWN-2 - 21-24,INTERIOR STAIR TOWER - STAIR #4 (CLEAN ROOM),,CONSTRUCTION,,INSULATED METAL PANELS,JAMES LIVELY,INTERIORS,2025-07-02 07:00,2025-07-16 17:00,2025-05-06 07:00,2025-05-19 17:00,2025-11-20 17:00,2025-11-20 17:00,2025-11-17 07:00,2025-11-17 07:00,0,120,100
CN.SWA5..2290,INSTALL INTERIOR SIDE 1ST LAYER DRYWALL & INSPECT - STAIR #4 - 23/L - ALL LEVELS [/DAY],Complete,SWA - 5,West Support Building,SUWN-2 - 21-24,INTERIOR STAIR TOWER - STAIR #4 (CLEAN ROOM),,CONSTRUCTION,,INSULATED METAL PANELS,JAMES LIVELY,INTERIORS,2025-07-09 07:00,2025-07-22 17:00,2025-06-02 07:00,2025-08-23 17:00,2025-11-20 17:00,2025-11-20 17:00,2025-11-17 07:00,2025-11-17 07:00,0,120,100
CN.SWA5..2300,TAPE & FLOAT DRYWALL & CEILING - STAIR #4 - 23/L - ALL LEVELS (),Complete,SWA - 5,West Support Building,SUWN-2 - 21-24,INTERIOR STAIR TOWER - STAIR #4 (CLEAN ROOM),,CONSTRUCTION,,INSULATED METAL PANELS,JAMES LIVELY,INTERIORS,2025-09-27 07:00,2025-10-02 17:00,2025-09-23 12:00,2025-09-29 17:00,2025-11-20 17:00,2025-11-20 17:00,2025-12-03 07:00,2025-12-03 07:00,0,50,100
CN.SWA5..2330,SECAI SGP / HANDRAIL INSTALL - STAIR #4 - 23/L - ALL LEVELS - SECAI REFUSE TO SIGN TRANSMITTAL,Complete,SWA - 5,West Support Building,SUWN-2 - 21-24,INTERIOR STAIR TOWER - STAIR #4 (CLEAN ROOM),,CONSTRUCTION,,INSULATED METAL PANELS,JAMES LIVELY,INTERIORS,2025-10-28 07:00,2025-10-30 17:00,2025-10-28 07:00,2025-11-11 17:00,2025-12-04 17:00,2025-12-04 17:00,2025-12-05 17:00,2025-12-05 17:00,0,30,100
CN.SWA5..2340,FINAL COATING & INSPECTION - STAIR #4 - 23/L - ALL LEVELS,Active,SWA - 5,West Support Building,SUWN-2 - 21-24,INTERIOR STAIR TOWER - STAIR #4 (CLEAN ROOM),,CONSTRUCTION,,INSULATED METAL PANELS,JAMES LIVELY,INTERIORS,2025-11-12 07:00,2025-11-17 17:00,2025-11-12 07:00,,2025-11-29 07:00,2025-12-04 17:00,2025-12-01 07:00,2025-12-05 17:00,50,50,0
CN.SWA5..2320,DISMANTLE SCAFFOLDING & TOUCH-UP PAINT - STAIR #4 - 23/L - ALL LEVELS(),Complete,SWA - 5,West Support Building,SUWN-2 - 21-24,INTERIOR STAIR TOWER - STAIR #4 (CLEAN ROOM),,CONSTRUCTION,,INSULATED METAL PANELS,JAMES LIVELY,INTERIORS,2025-11-03 07:00,2025-11-05 17:00,2025-11-03 07:00,2025-11-10 17:00,2025-11-20 17:00,2025-11-20 17:00,2025-12-05 17:00,2025-12-05 17:00,0,30,100
CN.SWA5..2360,ERECT SCAFFOLDING - STAIR #19 - 26/D - ALL LEVELS(),Complete,SWA - 5,West Support Building,SUEN-3 - 25-28,INTERIOR STAIR TOWER - STAIR #19 (CLEAN ROOM) - DE-SCOPED,,CONSTRUCTION,,INSULATED METAL PANELS,JAMES LIVELY,INTERIORS,2025-03-28 07:00,2025-04-01 17:00,2025-03-19 07:00,2025-03-31 07:00,2025-11-20 17:00,2025-11-20 17:00,2025-11-21 07:00,2025-11-21 07:00,0,40,100
CN.SWA5..2380,INSPECT FIREPROOFING - STAIR #19 - 26/D - ALL LEVELS (DESCOPE),Complete,SWA - 5,West Support Building,SUEN-3 - 25-28,INTERIOR STAIR TOWER - STAIR #19 (CLEAN ROOM) - DE-SCOPED,,CONSTRUCTION,,INSULATED METAL PANELS,JAMES LIVELY,INTERIORS,2025-07-05 07:00,2025-07-05 17:00,2025-06-26 07:00,2025-06-27 17:00,2025-11-20 17:00,2025-11-20 17:00,2025-11-21 07:00,2025-11-21 07:00,0,10,100
CN.SWA5..2390,COATING 1ST PASS - PRIMER & TOP COAT - EXTERIOR/UNDERSIDE STRINGERS - STAIR #19 - 26/D - ALL LEVELS(),Complete,SWA - 5,West Support Building,SUEN-3 - 25-28,INTERIOR STAIR TOWER - STAIR #19 (CLEAN ROOM) - DE-SCOPED,,CONSTRUCTION,,INSULATED METAL PANELS,JAMES LIVELY,INTERIORS,2025-09-16 07:00,2025-09-26 17:00,2025-09-16 07:00,2025-09-26 17:00,2025-11-20 17:00,2025-11-20 17:00,2025-12-03 07:00,2025-12-03 07:00,0,100,100
CN.SWA5..2420,SECAI - IN-WALL MEP ROUGH-IN - STAIR #19 - 26/D - ALL LEVELS,Complete,SWA - 5,West Support Building,SUEN-3 - 25-28,INTERIOR STAIR TOWER - STAIR #19 (CLEAN ROOM) - DE-SCOPED,,CONSTRUCTION,,INSULATED METAL PANELS,JAMES LIVELY,INTERIORS,2025-09-03 07:00,2025-09-08 16:00,2025-06-27 07:00,2025-06-27 17:00,2025-11-20 17:00,2025-11-20 17:00,2025-12-05 17:00,2025-12-05 17:00,0,49,100
CN.SWA5..2470,IMPACT - SECAI SGP / HANDRAIL INSTALL/FLOOR COATING/LIGHT INSTALL - STAIR #19 - 26/D - ALL LEVELS,Active,SWA - 5,West Support Building,SUEN-3 - 25-28,INTERIOR STAIR TOWER - STAIR #19 (CLEAN ROOM) - DE-SCOPED,,CONSTRUCTION,,INSULATED METAL PANELS,JAMES LIVELY,INTERIORS,2025-11-11 07:00,2025-11-13 17:00,2025-11-11 07:00,,2025-11-21 07:00,2025-12-05 17:00,2025-11-21 07:00,2025-12-05 17:00,110,30,0
CN.SWA5..2500,ERECT SCAFFOLDING - STAIR #20 - 19/D - ALL LEVELS,Complete,SWA - 5,West Support Building,SUES-1 - 19-16,INTERIOR STAIR TOWER - STAIR #20,,CONSTRUCTION,,INSULATED METAL PANELS,JAMES LIVELY,INTERIORS,2024-08-13 07:00,2024-08-20 17:00,2024-08-13 07:00,2024-08-16 17:00,2025-11-20 17:00,2025-11-20 17:00,2025-11-12 07:00,2025-11-12 07:00,0,70,100
CN.SWA5..2520,SPRAY FIREPROOFING / CURE / INSPECT - STAIR #20 - 19/D - ALL LEVELS,Complete,SWA - 5,West Support Building,SUES-1 - 19-16,INTERIOR STAIR TOWER - STAIR #20,,CONSTRUCTION,,INSULATED METAL PANELS,JAMES LIVELY,INTERIORS,2024-08-29 07:00,2024-09-10 17:00,2024-08-20 07:00,2024-10-03 17:00,2025-11-20 17:00,2025-11-20 17:00,2025-11-12 07:00,2025-11-12 07:00,0,80,100
CN.SWA5..2530,COATING - TOP COAT - EXTERIOR/UNDERSIDE STRINGERS - STAIR #20 - 19/D(2 shifts),Complete,SWA - 5,West Support Building,SUES-1 - 19-16,INTERIOR STAIR TOWER - STAIR #20,,CONSTRUCTION,,INSULATED METAL PANELS,JAMES LIVELY,INTERIORS,2024-11-01 07:00,2024-11-04 17:00,2024-11-01 07:00,2024-11-02 17:00,2025-11-20 17:00,2025-11-20 17:00,2025-11-12 07:00,2025-11-12 07:00,0,30,100
CN.SWA5..2560,SECAI - IN-WALL MEP ROUGH-IN & SPRINKLER LINE INSTALL - STAIR #20 - 19/D - ALL LEVELS,Complete,SWA - 5,West Support Building,SUES-1 - 19-16,INTERIOR STAIR TOWER - STAIR #20,,CONSTRUCTION,,INSULATED METAL PANELS,JAMES LIVELY,INTERIORS,2024-11-05 07:00,2024-11-18 17:00,2024-11-05 07:00,2024-11-16 17:00,2025-11-20 17:00,2025-11-20 17:00,2025-11-24 07:00,2025-11-24 07:00,0,120,100
CN.SWA5..2570,HANG INTERIOR SIDE 1ST LAYER DRYWALL & inspect - STAIR #20 - 19/D - ALL LEVELS,Complete,SWA - 5,West Support Building,SUES-1 - 19-16,INTERIOR STAIR TOWER - STAIR #20,,CONSTRUCTION,,INSULATED METAL PANELS,JAMES LIVELY,INTERIORS,2025-02-18 07:00,2025-02-22 17:00,2025-02-18 07:00,2025-10-09 17:00,2025-11-20 17:00,2025-11-20 17:00,2025-11-24 07:00,2025-11-24 07:00,0,50,100
CN.SWA5..2580,TAPE & FLOAT AND SANDING DRYWALL & CEILING - STAIR #20 - 19/D - ALL LEVELS,Complete,SWA - 5,West Support Building,SUES-1 - 19-16,INTERIOR STAIR TOWER - STAIR #20,,CONSTRUCTION,,INSULATED METAL PANELS,JAMES LIVELY,INTERIORS,2025-10-08 07:00,2025-10-21 17:00,2025-10-08 07:00,2025-11-11 17:00,2025-11-20 17:00,2025-11-20 17:00,2025-12-03 07:00,2025-12-03 07:00,0,120,100
CN.SWA5..2610,INSTALL WALL MOUNTED HAND RAILS & CANE RAILS - STAIR #20 - 19/D - ALL LEVELS,Complete,SWA - 5,West Support Building,SUES-1 - 19-16,INTERIOR STAIR TOWER - STAIR #20,,CONSTRUCTION,,INSULATED METAL PANELS,JAMES LIVELY,INTERIORS,2025-11-18 07:00,2025-11-20 17:00,2025-09-10 07:00,2025-09-10 17:00,2025-11-20 17:00,2025-11-20 17:00,2025-12-05 07:00,2025-12-05 07:00,0,30,100
CN.SWA5..2620,FINAL COATING & INSPECT - STAIR #20 - 19/D - ALL LEVELS - SECAI SCOPE,Complete,SWA - 5,West Support Building,SUES-1 - 19-16,INTERIOR STAIR TOWER - STAIR #20,,CONSTRUCTION,,INSULATED METAL PANELS,JAMES LIVELY,INTERIORS,2025-11-12 07:00,2025-11-22 17:00,2025-11-12 07:00,2025-11-19 17:00,2025-11-20 17:00,2025-11-20 17:00,2025-12-05 07:00,2025-12-05 07:00,0,100,100
CN.SWA5..2600,DISMANTLE SCAFFOLDING - STAIR #20 - 19/D - ALL LEVELS,Complete,SWA - 5,West Support Building,SUES-1 - 19-16,INTERIOR STAIR TOWER - STAIR #20,,CONSTRUCTION,,INSULATED METAL PANELS,JAMES LIVELY,INTERIORS,2025-11-05 07:00,2025-11-10 17:00,2025-11-05 07:00,2025-11-08 17:00,2025-11-20 17:00,2025-11-20 17:00,2025-12-03 07:00,2025-12-03 07:00,0,50,100
CN.SWA5..2640,ERECT SCAFFOLDING - STAIR #21 - 13/D - ALL LEVELS,Complete,SWA - 5,West Support Building,SUES-3 - 13-9,INTERIOR STAIR TOWER - STAIR #21 (CLEAN ROOM),,CONSTRUCTION,,INSULATED METAL PANELS,JAMES LIVELY,INTERIORS,2024-08-16 07:00,2024-08-20 17:00,2024-08-08 07:00,2024-08-14 17:00,2025-11-20 17:00,2025-11-20 17:00,2025-11-12 07:00,2025-11-12 07:00,0,50,100
CN.SWA5..2660,SPRAY FIREPROOFING / CURE / INSPECT - STAIR #21 - 13/D - ALL LEVELS,Complete,SWA - 5,West Support Building,SUES-3 - 13-9,INTERIOR STAIR TOWER - STAIR #21 (CLEAN ROOM),,CONSTRUCTION,,INSULATED METAL PANELS,JAMES LIVELY,INTERIORS,2024-08-23 07:00,2024-08-30 17:00,2024-08-19 07:00,2024-08-22 17:00,2025-11-20 17:00,2025-11-20 17:00,2025-11-12 07:00,2025-11-12 07:00,0,80,100
CN.SWA5..2670,COATING 1ST PASS - TOP COAT - EXTERIOR/UNDERSIDE STRINGERS - STAIR #21 - 13/D - ALL LEVELS(2SHIFTS),Complete,SWA - 5,West Support Building,SUES-3 - 13-9,INTERIOR STAIR TOWER - STAIR #21 (CLEAN ROOM),,CONSTRUCTION,,INSULATED METAL PANELS,JAMES LIVELY,INTERIORS,2024-11-05 07:00,2024-11-07 17:00,2024-11-05 07:00,2024-11-07 17:00,2025-11-20 17:00,2025-11-20 17:00,2025-11-12 07:00,2025-11-12 07:00,0,30,100
CN.SWA5..2700,SECAI - IN-WALL MEP ROUGH-IN & SPRINKLER INSTALL - STAIR #21 - 13/D - ALL LEVELS,Complete,SWA - 5,West Support Building,SUES-3 - 13-9,INTERIOR STAIR TOWER - STAIR #21 (CLEAN ROOM),,CONSTRUCTION,,INSULATED METAL PANELS,JAMES LIVELY,INTERIORS,2024-11-12 07:00,2024-11-25 17:00,2024-11-12 07:00,2024-11-21 17:00,2025-11-20 17:00,2025-11-20 17:00,2025-11-12 07:00,2025-11-12 07:00,0,120,100
CN.SWA5..2710,HANG INTERIOR SIDE 1ST LAYER Install & Inspect - STAIR #21 - 13/D - ALL LEVELS,Complete,SWA - 5,West Support Building,SUES-3 - 13-9,INTERIOR STAIR TOWER - STAIR #21 (CLEAN ROOM),,CONSTRUCTION,,INSULATED METAL PANELS,JAMES LIVELY,INTERIORS,2025-02-18 07:00,2025-02-22 17:00,2025-02-18 07:00,2025-09-05 17:00,2025-11-20 17:00,2025-11-20 17:00,2025-11-12 07:00,2025-11-12 07:00,0,50,100
CN.SWA5..2720,"TAPE & FLOAT DRYWALL & CEILING (N, S & W WALLS COMPLETE)- STAIR #21 - 13/D - ALL LEVELS",Complete,SWA - 5,West Support Building,SUES-3 - 13-9,INTERIOR STAIR TOWER - STAIR #21 (CLEAN ROOM),,CONSTRUCTION,,INSULATED METAL PANELS,JAMES LIVELY,INTERIORS,2025-08-04 07:00,2025-08-20 17:00,2025-06-09 07:00,2025-06-27 17:00,2025-11-20 17:00,2025-11-20 17:00,2025-11-12 07:00,2025-11-12 07:00,0,150,100
CN.SWA5..2750,IMPACT - SECAI SGP / HANDRAIL INSTALL/FLOOR COATING/LIGHT INSTALL - STAIR #21 - 13/D - ALL LEVELS,Active,SWA - 5,West Support Building,SUES-3 - 13-9,INTERIOR STAIR TOWER - STAIR #21 (CLEAN ROOM),,CONSTRUCTION,,INSULATED METAL PANELS,JAMES LIVELY,INTERIORS,2025-11-03 07:00,2025-11-24 17:00,2025-11-03 07:00,,2025-11-21 07:00,2025-12-03 17:00,2025-11-12 07:00,2025-11-21 17:00,90,190,0
CN.SWA5..2740,DISMANTLE SCAFFOLDING & PAINITING TOUCH-UP - STAIR #21 - 13/D - ALL LEVELS,Complete,SWA - 5,West Support Building,SUES-3 - 13-9,INTERIOR STAIR TOWER - STAIR #21 (CLEAN ROOM),,CONSTRUCTION,,INSULATED METAL PANELS,JAMES LIVELY,INTERIORS,2025-09-02 07:00,2025-09-02 17:00,2025-09-02 07:00,2025-09-02 17:00,2025-11-20 17:00,2025-11-20 17:00,2025-11-12 07:00,2025-11-12 07:00,0,10,100
CN.SWA5..2780,ERECT SCAFFOLDING - STAIR #22 - 6/D - ALL LEVELS (DESCOPED),Complete,SWA - 5,West Support Building,SUES-5 - 6-1 - FIZ - GL A -E,INTERIOR STAIR TOWER - STAIR #22 - DE-SCOPED,,CONSTRUCTION,,INSULATED METAL PANELS,JAMES LIVELY,INTERIORS,2025-06-24 07:00,2025-06-27 17:00,2025-05-29 07:00,2025-05-30 17:00,2025-11-20 17:00,2025-11-20 17:00,2025-10-27 09:00,2025-10-27 09:00,0,40,100
CN.SWA5..2800,INSPECT -  FIREPROOFING  - STAIR #22 - 6/D - ALL LEVELS,Complete,SWA - 5,West Support Building,SUES-5 - 6-1 - FIZ - GL A -E,INTERIOR STAIR TOWER - STAIR #22 - DE-SCOPED,,CONSTRUCTION,,INSULATED METAL PANELS,JAMES LIVELY,INTERIORS,2025-07-09 07:00,2025-07-09 17:00,2025-06-07 12:00,2025-06-07 13:00,2025-11-20 17:00,2025-11-20 17:00,2025-10-27 09:00,2025-10-27 09:00,0,10,100
CN.SWA5..2840,SECAI - IN-WALL MEP ROUGH-IN - STAIR #22 - 6/D - ALL LEVELS,Complete,SWA - 5,West Support Building,SUES-5 - 6-1 - FIZ - GL A -E,INTERIOR STAIR TOWER - STAIR #22 - DE-SCOPED,,CONSTRUCTION,,INSULATED METAL PANELS,JAMES LIVELY,INTERIORS,2025-07-03 07:00,2025-07-03 17:00,2025-06-27 07:00,2025-08-15 17:00,2025-11-20 17:00,2025-11-20 17:00,2025-10-27 09:00,2025-10-27 09:00,0,10,100
CN.SWA5..2900,"FINAL COAT & INSPECTION - SURFACE PREP, PRIMER & TOP COAT - STAIR #22 - 6/D - ALL LEVELS ()",Not Started,SWA - 5,West Support Building,SUES-5 - 6-1 - FIZ - GL A -E,INTERIOR STAIR TOWER - STAIR #22 - DE-SCOPED,,CONSTRUCTION,,INSULATED METAL PANELS,JAMES LIVELY,INTERIORS,2025-12-12 15:00,2025-12-18 15:00,,,2025-12-12 15:00,2025-12-18 15:00,2025-11-15 07:00,2025-11-20 17:00,50,50,0
CN.SWA5..2980,SECAI - IN-WALL MEP ROUGH-IN - STAIR #50 - 29/L - ALL LEVELS,Complete,SWA - 5,West Support Building,SUWN-4 - 27-30,INTERIOR STAIR TOWER - STAIR #50 - DE-SCOPED,,CONSTRUCTION,,INSULATED METAL PANELS,JAMES LIVELY,INTERIORS,2025-08-20 07:00,2025-09-03 17:00,2025-06-27 07:00,2025-06-27 13:00,2025-11-20 17:00,2025-11-20 17:00,2025-12-05 07:00,2025-12-05 07:00,0,120,100
CN.SWA5.DS.3050,INSTALL GOAL POSTS - 3C ELEV HALL 1 & AIRLOCK RM - SWA5 - GL 3-6 - K LINE - L2,Complete,SWA - 5,West Support Building,FIZ 2 / SUWS 5  (GL6-1) - GL J - N - DATA CENTER 1,L2 - SubFab Level,DS/AD INTERIORS,CONSTRUCTION,CHERRY COATING,DRYWALL,FIZ DATA CENTER,INTERIORS,2024-08-12 07:00,2024-08-27 17:00,2024-08-12 07:00,2024-09-09 17:00,2025-11-20 17:00,2025-11-20 17:00,2025-11-24 07:00,2025-11-24 07:00,0,100,100
CN.SWA5.9550,DS ROOF PARAPET DRY IN - SWA5 - GL 3-5 - K-L - L6 - SOUTH WEST PENTHOUSE,Complete,SWA - 5,,SOUTH WEST PENTHOUSE,L5 - SUP L5,,CONSTRUCTION,BRAZOS,TOPPING,,,2024-10-25 07:00,2024-11-18 17:00,2024-10-25 07:00,2024-11-27 17:00,2025-11-20 17:00,2025-11-20 17:00,2025-12-05 17:00,2025-12-05 17:00,0,140,100
CN.SWA5..3620,DEMO DRYWALL FOR SANDBLASTING - STAIR #3 - 18/L - ALL LEVELS,Complete,SWA - 5,West Support Building,SUWN-1 - 18-21,INTERIOR STAIR TOWER - STAIR #3,,CONSTRUCTION,,INSULATED METAL PANELS,JAMES LIVELY,INTERIORS,2024-09-06 07:00,2024-09-06 17:00,2024-08-31 07:00,2024-09-03 17:00,2025-11-20 17:00,2025-11-20 17:00,2025-11-03 07:00,2025-11-03 07:00,0,10,100
CN.SWA5..3690,INSTALL CANE RAILS - STAIR #21 - 13/D - LEVEL 1,Complete,SWA - 5,West Support Building,SUES-3 - 13-9,INTERIOR STAIR TOWER - STAIR #21 (CLEAN ROOM),,CONSTRUCTION,,INSULATED METAL PANELS,JAMES LIVELY,INTERIORS,2025-11-18 07:00,2025-11-18 17:00,2025-08-28 07:00,2025-08-28 17:00,2025-11-20 17:00,2025-11-20 17:00,2025-12-05 17:00,2025-12-05 17:00,0,10,100
CN.SWA5..3730,INSTALL CANE RAILS - STAIR #2 - 11/L -LEVEL 1,Complete,SWA - 5,West Support Building,SUWS-3 - 12-9,INTERIOR STAIR TOWER - STAIR #2 (CLEAN ROOM),,CONSTRUCTION,,INSULATED METAL PANELS,JAMES LIVELY,INTERIORS,2025-11-21 07:00,2025-11-21 17:00,2025-08-28 07:00,2025-08-28 17:00,2025-11-20 17:00,2025-11-20 17:00,2025-12-05 17:00,2025-12-05 17:00,0,10,100
CN.SWA5..3770,IMPACT [S.TIA-147] - NCR 372 - ALPHA PAINT ALL BOLTS - ELEVATOR 01B,Complete,SWA - 5,West Support Building,FIZ 2 / SUWS 5  (GL6-1) - GL J - N - DATA CENTER 1,,ELEVATOR,CONSTRUCTION,W&W,TBD Architectural Finishes,JAMES LIVELY,INTERIORS,2024-12-02 07:00,2024-12-17 17:00,2024-12-02 07:00,2025-01-13 17:00,2025-11-20 17:00,2025-11-20 17:00,2025-12-01 07:00,2025-12-01 07:00,0,100,100
CN.AB.AR.7420,INSTALL FRAMING/DRYWALL/TAPE+FLOAT - MECHANICAL ROOM - ELEVATOR 01B,Complete,SWA - 5,West Support Building,FIZ 2 / SUWS 5  (GL6-1) - GL J - N - DATA CENTER 1,,ELEVATOR,CONSTRUCTION,BERG,DRYWALL,,INTERIORS,2025-02-03 07:00,2025-02-18 17:00,2025-02-03 07:00,2025-04-25 17:00,2025-11-20 17:00,2025-11-20 17:00,2025-12-01 07:00,2025-12-01 07:00,0,120,100
CN.SWA5.9590,IMPACT - SECAI PROCURE & INSTALL EXTENSIONS TO ALLOW VAPOR BARRIER/TPO START - K-L - L6 ROOF,Complete,SWA - 5,,SOUTH WEST PENTHOUSE,L5 - SUP L5,,CONSTRUCTION,BRAZOS,TOPPING,,,2024-09-10 07:00,2024-09-16 17:00,2024-08-23 07:00,2024-09-14 17:00,2025-11-20 17:00,2025-11-20 17:00,2025-12-05 17:00,2025-12-05 17:00,0,40,100
CN.SWA5.DS.3060,IMPACT PENDING RFI TO SHIFT WALL - 3C ELEV HALL 1 & AIRLOCK RM - SWA5 - GL 3-6 - K LINE - L2,Complete,SWA - 5,West Support Building,FIZ 2 / SUWS 5  (GL6-1) - GL J - N - DATA CENTER 1,L2 - SubFab Level,DS/AD INTERIORS,CONSTRUCTION,CHERRY COATING,DRYWALL,FIZ DATA CENTER,INTERIORS,2024-08-12 07:00,2024-08-27 17:00,2024-08-12 07:00,2024-09-04 17:00,2025-11-20 17:00,2025-11-20 17:00,2025-11-24 07:00,2025-11-24 07:00,0,100,100
CN.AB.AR.7470,"FIRST TURNOVER - SHAFT, MECHANICAL ROOM - ELEVATOR 01B",Not Started,SWA - 5,West Support Building,FIZ 2 / SUWS 5  (GL6-1) - GL J - N - DATA CENTER 1,,ELEVATOR,CONSTRUCTION,BERG,DRYWALL,,INTERIORS,2025-11-21 07:00,2025-11-21 07:00,,,2025-11-21 07:00,2025-11-21 07:00,2025-12-05 17:00,2025-12-05 17:00,0,0,0
CN.AB.AR.7480,IMPACT - SECAI - INSTALL ELEVATOR DOOR JAMBS - ELEVATOR 01B - WAITING FOR SCHEDULE & RFI ANSWER FOR WALL THICKNESS,Complete,SWA - 5,West Support Building,FIZ 2 / SUWS 5  (GL6-1) - GL J - N - DATA CENTER 1,,ELEVATOR,CONSTRUCTION,W&W,TBD Architectural Finishes,,INTERIORS,2025-06-09 07:00,2025-06-20 17:00,2025-05-19 07:00,2025-06-06 17:00,2025-11-20 17:00,2025-11-20 17:00,2025-12-05 17:00,2025-12-05 17:00,0,100,100
CN.AB.AR.7500,INSTALL PERMANENT DOOR & FRAME - MECHANICAL ROOM - FAB140110A - ELEVATOR 01B,Not Started,SWA - 5,West Support Building,FIZ 2 / SUWS 5  (GL6-1) - GL J - N - DATA CENTER 1,,ELEVATOR,CONSTRUCTION,W&W,TBD Architectural Finishes,,INTERIORS,2025-11-21 07:00,2025-11-21 07:00,,,2025-11-21 07:00,2025-11-21 07:00,2025-12-05 17:00,2025-12-05 17:00,0,0,0
CN.AB.AR.7510,"FINAL TURNOVER - DOOR FRONTS, MECHANICAL ROOM (WITH PERM DOOR) - ELEVATOR 01B",Not Started,SWA - 5,West Support Building,FIZ 2 / SUWS 5  (GL6-1) - GL J - N - DATA CENTER 1,,ELEVATOR,CONSTRUCTION,BERG,DRYWALL,,INTERIORS,2025-11-21 07:00,2025-11-21 07:00,,,2025-11-21 07:00,2025-11-21 07:00,2025-12-05 17:00,2025-12-05 17:00,0,0,0
CN.AB.AR.7530,TAPE & FLOAT - SHAFT & DOOR FRONTS - ELEVATOR 01B,Complete,SWA - 5,West Support Building,FIZ 2 / SUWS 5  (GL6-1) - GL J - N - DATA CENTER 1,,ELEVATOR,CONSTRUCTION,W&W,TBD Architectural Finishes,,INTERIORS,2025-08-13 13:00,2025-08-18 13:00,2025-08-13 13:00,2025-08-18 13:00,2025-11-20 17:00,2025-11-20 17:00,2025-12-05 17:00,2025-12-05 17:00,0,30,100
CN.SWA5..3780,SECAI TOOK OVER - TAPE & FLOAT - INTERIOR SHAFT & DOOR FRONTS- ELEVATOR 01,Active,SWA - 5,West Support Building,FIZ 2 / SUWS 5  (GL6-1) - GL J - N - DATA CENTER 1,,ELEVATOR,CONSTRUCTION,BERG,DRYWALL,JAMES LIVELY,INTERIORS,2025-11-10 07:00,2025-11-19 17:00,2025-11-10 07:00,,2025-11-21 07:00,2025-11-21 07:00,2025-12-05 17:00,2025-12-05 17:00,0,80,100
CN.AB.AR.7560,"SECAI TOOK OVER 9/17 ONLY L1 - INSTALL REMAINING FRAMING, DRYWALL & FIRE CAULKING - SHAFT & DOOR FRONTS - ELEVATOR 01",Complete,SWA - 5,West Support Building,FIZ 2 / SUWS 5  (GL6-1) - GL J - N - DATA CENTER 1,,ELEVATOR,CONSTRUCTION,W&W,TBD Architectural Finishes,,INTERIORS,2024-07-08 07:00,2024-07-17 17:00,2024-07-08 07:00,2025-09-19 17:00,2025-11-20 17:00,2025-11-20 17:00,2025-12-05 17:00,2025-12-05 17:00,0,70,100
CN.AB.AR.7570,INSTALL PERMANENT DOOR & FRAME - MECHANICAL ROOM - FAB110115A - ELEVATOR 01,Not Started,SWA - 5,West Support Building,FIZ 2 / SUWS 5  (GL6-1) - GL J - N - DATA CENTER 1,,ELEVATOR,CONSTRUCTION,W&W,TBD Architectural Finishes,,INTERIORS,2025-11-21 07:00,2025-12-01 17:00,,,2025-11-21 07:00,2025-12-01 17:00,2025-12-01 07:00,2025-12-05 17:00,50,50,0
CN.AB.AR.7590,"FINAL TURNOVER - DOOR FRONTS, MECHANICAL ROOM (WITH PERM DOOR) - ELEVATOR 01",Not Started,SWA - 5,West Support Building,FIZ 2 / SUWS 5  (GL6-1) - GL J - N - DATA CENTER 1,,ELEVATOR,CONSTRUCTION,W&W,TBD Architectural Finishes,,INTERIORS,2025-12-01 17:00,2025-12-01 17:00,,,2025-12-01 17:00,2025-12-01 17:00,2025-12-05 17:00,2025-12-05 17:00,0,0,0
CN.AB.AR.7630,"INSTALL FRAMING, DRYWALL & FIRE CAULKING AT FIREPROOFING LEAVEOUTS - INTERIOR SHAFT - ELEVATOR 01A",Complete,SWA - 5,West Support Building,FIZ 2 / SUWS 5  (GL6-1) - GL J - N - DATA CENTER 1,,ELEVATOR,CONSTRUCTION,BERG,DRYWALL,,INTERIORS,2025-02-17 07:00,2025-02-26 17:00,2025-02-15 07:00,2025-02-15 17:00,2025-11-20 17:00,2025-11-20 17:00,2025-12-01 07:00,2025-12-01 07:00,0,80,100
CN.AB.AR.7650,"FIRST TURNOVER - SHAFT, MECHANICAL ROOM - ELEVATOR 01A",Complete,SWA - 5,West Support Building,FIZ 2 / SUWS 5  (GL6-1) - GL J - N - DATA CENTER 1,,ELEVATOR,CONSTRUCTION,BERG,DRYWALL,,INTERIORS,2025-02-24 17:00,2025-02-24 17:00,2025-02-17 17:00,2025-02-17 17:00,2025-11-20 17:00,2025-11-20 17:00,2025-12-01 07:00,2025-12-01 07:00,0,0,100
CN.AB.AR.7660,IMPACT - SECAI - INSTALL ELEVATOR DOOR JAMBS- ELEVATOR 01A -A WAITING FOR SCHEDULE,Complete,SWA - 5,West Support Building,FIZ 2 / SUWS 5  (GL6-1) - GL J - N - DATA CENTER 1,,ELEVATOR,CONSTRUCTION,W&W,DRYWALL,,INTERIORS,2025-06-09 07:00,2025-06-20 17:00,2025-05-12 07:00,2025-06-05 07:00,2025-11-20 17:00,2025-11-20 17:00,2025-12-01 07:00,2025-12-01 07:00,0,100,100
CN.AB.AR.7670,"IMPACT - INSTALL REMAINING FRAMING, DRYWALL & FIRE CAULKING - SHAFT & DOOR FRONTS - ELEVATOR 01A",Complete,SWA - 5,West Support Building,FIZ 2 / SUWS 5  (GL6-1) - GL J - N - DATA CENTER 1,,ELEVATOR,CONSTRUCTION,W&W,DRYWALL,,INTERIORS,2025-06-06 07:00,2025-07-07 17:00,2025-06-06 07:00,2025-07-30 17:00,2025-11-20 17:00,2025-11-20 17:00,2025-12-01 07:00,2025-12-01 07:00,0,210,100
CN.AB.AR.7680,IMPACT - TAPE & FLOAT FUR OUTS - SHAFT & DOOR FRONTS - ELEVATOR 01A - Lvl 2 and 3 Cable tray in the way (SECAI to remov,Not Started,SWA - 5,West Support Building,FIZ 2 / SUWS 5  (GL6-1) - GL J - N - DATA CENTER 1,,ELEVATOR,CONSTRUCTION,W&W,DRYWALL,,INTERIORS,2025-11-21 07:00,2025-12-01 17:00,,,2025-11-21 07:00,2025-12-01 17:00,2025-12-01 07:00,2025-12-05 17:00,50,50,0
CN.AB.AR.7700,"FINAL TURNOVER - DOOR FRONTS, MECHANICAL ROOM (WITH PERM DOOR) - ELEVATOR 01A",Not Started,SWA - 5,West Support Building,FIZ 2 / SUWS 5  (GL6-1) - GL J - N - DATA CENTER 1,,ELEVATOR,CONSTRUCTION,W&W,DRYWALL,,INTERIORS,2025-12-01 17:00,2025-12-01 17:00,,,2025-12-01 17:00,2025-12-01 17:00,2025-12-05 17:00,2025-12-05 17:00,0,0,0
CN.SWB5.10160,IMPACT - AWAIT RFI RESPONSE & SOUTH WALL KNEE WALL FIX - SW PENTHOUSE - SOUTH WALL,Complete,SWA - 5,East Support Building,SOUTH WEST PENTHOUSE,EXTERIOR SKIN,,CONSTRUCTION,KOVACH,INSULATED METAL PANELS,SEAN MONK,,2024-09-14 07:00,2024-09-24 17:00,2024-09-09 07:00,2024-10-02 17:00,2025-11-20 17:00,2025-11-20 17:00,2025-12-05 17:00,2025-12-05 17:00,0,100,100
CN.SWA5..3830,ERECT REMAINING SCAFFOLDING - STAIR #20 - 19/D - LEVEL-3,Complete,SWA - 5,West Support Building,SUES-1 - 19-16,INTERIOR STAIR TOWER - STAIR #20,,CONSTRUCTION,,INSULATED METAL PANELS,JAMES LIVELY,INTERIORS,2024-09-23 07:00,2024-09-26 17:00,2024-09-21 07:00,2024-09-25 17:00,2025-11-20 17:00,2025-11-20 17:00,2025-11-12 07:00,2025-11-12 07:00,0,30,100
CN.SWA5.LD.3050,LOADING DOCK - BACK FILL & FINE GRADE - SWA5 - GL 3-8 N- LINE,Complete,SWA - 5,East Support Building,FIZ 2 / SUWS 5  (GL6-1) - GL J - N - DATA CENTER 1,L1 - Fndn Slab,,CONSTRUCTION,BAKER,TBD Architectural Finishes,AMBER CARO,INTERIORS,2025-03-07 07:00,2025-03-11 17:00,2025-01-28 07:00,2025-01-31 17:00,2025-11-20 17:00,2025-11-20 17:00,2025-09-04 07:00,2025-09-04 07:00,0,30,100
CN.SWA5..3920,ON HOLD UNTIL COMPLETION OF STAIR 18 - STAIR #20 - 19/D - LEVEL-3,Complete,SWA - 5,West Support Building,SUES-1 - 19-16,INTERIOR STAIR TOWER - STAIR #20,,CONSTRUCTION,,INSULATED METAL PANELS,JAMES LIVELY,INTERIORS,2024-09-20 07:00,2024-09-24 17:00,2024-08-12 07:00,2024-09-18 17:00,2025-11-20 17:00,2025-11-20 17:00,2025-11-12 07:00,2025-11-12 07:00,0,30,100
CN.AB.AR.7750,INSTALL PERMANENT DOOR & FRAME - MAN DOOR - FAB120401G - ELEVATOR 01B,Not Started,SWA - 5,West Support Building,FIZ 2 / SUWS 5  (GL6-1) - GL J - N - DATA CENTER 1,,ELEVATOR,CONSTRUCTION,W&W,TBD Architectural Finishes,,INTERIORS,2025-11-21 07:00,2025-11-21 07:00,,,2025-11-21 07:00,2025-11-21 07:00,2025-12-05 17:00,2025-12-05 17:00,0,0,0
CN.SWA5.9600,IMPACT - DESIGN CHANGE AT N-E CORNOR APPROVAL & INSTALL - SWA5 - GL 3-5 - K-N - L6 - SOUTH WEST PENTHOUSE,Complete,SWA - 5,,SOUTH WEST PENTHOUSE,L5 - SUP L5,,CONSTRUCTION,BRAZOS,TOPPING,,,2024-10-21 07:00,2024-10-31 17:00,2024-10-01 07:00,2024-11-12 17:00,2025-11-20 17:00,2025-11-20 17:00,2025-12-05 17:00,2025-12-05 17:00,0,70,100
CN.SWA5..4050,IMPACT - INSPECT PRIMER COAT - STAIR #2 - 11/L - ALL LEVELS - (3rd party Insp refused to sign off),Complete,SWA - 5,West Support Building,SUWS-3 - 12-9,INTERIOR STAIR TOWER - STAIR #2 (CLEAN ROOM),,CONSTRUCTION,,INSULATED METAL PANELS,JAMES LIVELY,INTERIORS,2024-10-12 07:00,2024-10-22 17:00,2024-10-08 07:00,2024-10-14 17:00,2025-11-20 17:00,2025-11-20 17:00,2025-11-12 07:00,2025-11-12 07:00,0,90,100
CN.SWA5..4060,IMPACT - INSPECT - PREP - EXTERIOR/UNDERSIDE STRINGERS - STAIR #20 - 19/D,Complete,SWA - 5,West Support Building,SUES-1 - 19-16,INTERIOR STAIR TOWER - STAIR #20,,CONSTRUCTION,,INSULATED METAL PANELS,JAMES LIVELY,INTERIORS,2024-10-25 07:00,2024-10-25 17:00,2024-10-25 07:00,2024-10-28 17:00,2025-11-20 17:00,2025-11-20 17:00,2025-11-12 07:00,2025-11-12 07:00,0,10,100
CN.SWA5..4160,INSTALL - INTERIOR SIDE 2ND LAYED  DRYWALL install & inspect - STAIR #2 - 11/L - ALL LEVELS,Complete,SWA - 5,West Support Building,SUWS-3 - 12-9,INTERIOR STAIR TOWER - STAIR #2 (CLEAN ROOM),,CONSTRUCTION,,INSULATED METAL PANELS,JAMES LIVELY,INTERIORS,2025-06-09 07:00,2025-06-21 17:00,2025-05-06 07:00,2025-08-18 17:00,2025-11-20 17:00,2025-11-20 17:00,2025-11-12 07:00,2025-11-12 07:00,0,120,100
CN.SWA5..4180,INSTALL - DOOR FRAMES - STAIR #2 - 11/L - ALL LEVELS,Complete,SWA - 5,West Support Building,SUWS-3 - 12-9,INTERIOR STAIR TOWER - STAIR #2 (CLEAN ROOM),,CONSTRUCTION,,INSULATED METAL PANELS,JAMES LIVELY,INTERIORS,2025-10-10 07:00,2025-10-10 17:00,2025-05-06 07:00,2025-08-06 17:00,2025-11-20 17:00,2025-11-20 17:00,2025-11-17 07:00,2025-11-17 07:00,0,10,100
CN.SWA5..4190,INSTALL - DOOR & HARDWARE - STAIR #2 - 11/L - ALL LEVELS,Active,SWA - 5,West Support Building,SUWS-3 - 12-9,INTERIOR STAIR TOWER - STAIR #2 (CLEAN ROOM),,CONSTRUCTION,,INSULATED METAL PANELS,JAMES LIVELY,INTERIORS,2025-09-16 07:00,2025-09-20 17:00,2025-09-16 07:00,,2025-11-21 07:00,2025-11-26 17:00,2025-11-17 07:00,2025-11-21 17:00,50,50,0
CN.SWA5..4200,FINAL COAT & INSPECT - STAIR #2 - 11/L - ALL LEVELS,Not Started,SWA - 5,West Support Building,SUWS-3 - 12-9,INTERIOR STAIR TOWER - STAIR #2 (CLEAN ROOM),,CONSTRUCTION,,INSULATED METAL PANELS,JAMES LIVELY,INTERIORS,2025-12-04 07:00,2025-12-15 17:00,,,2025-12-04 07:00,2025-12-15 17:00,2025-11-22 07:00,2025-12-05 17:00,100,100,0
CN.SWA5..4280,HANG INTERIOR SIDE 2ND LAYER Install & Inspect - STAIR #21 - 13/D - ALL LEVELS,Complete,SWA - 5,West Support Building,SUES-3 - 13-9,INTERIOR STAIR TOWER - STAIR #21 (CLEAN ROOM),,CONSTRUCTION,,INSULATED METAL PANELS,JAMES LIVELY,INTERIORS,2025-07-21 07:00,2025-08-02 17:00,2025-05-26 07:00,2025-09-30 07:00,2025-11-20 17:00,2025-11-20 17:00,2025-12-05 17:00,2025-12-05 17:00,0,120,100
CN.SWA5..4290,BERG INSTALL SCAFFOLD FOR CEILING - STAIR #21 - 13/D,Complete,SWA - 5,West Support Building,SUES-3 - 13-9,INTERIOR STAIR TOWER - STAIR #21 (CLEAN ROOM),,CONSTRUCTION,,INSULATED METAL PANELS,JAMES LIVELY,INTERIORS,2025-07-07 07:00,2025-07-10 17:00,2025-06-02 07:00,2025-06-06 17:00,2025-11-20 17:00,2025-11-20 17:00,2025-11-12 07:00,2025-11-12 07:00,0,40,100
CN.SWA5..4300,INSTALL DOOR FRAMES - STAIR #21 - 13/D - ALL LEVELS,Complete,SWA - 5,West Support Building,SUES-3 - 13-9,INTERIOR STAIR TOWER - STAIR #21 (CLEAN ROOM),,CONSTRUCTION,,INSULATED METAL PANELS,JAMES LIVELY,INTERIORS,2025-10-11 07:00,2025-10-11 17:00,2025-02-13 07:00,2025-11-07 07:00,2025-11-20 17:00,2025-11-20 17:00,2025-12-01 07:00,2025-12-01 07:00,0,10,100
CN.SWA5..4310,INSTALL - DOOR & HARDWARE - STAIR #21 - 13/D - ALL LEVELS,Active,SWA - 5,West Support Building,SUES-3 - 13-9,INTERIOR STAIR TOWER - STAIR #21 (CLEAN ROOM),,CONSTRUCTION,,INSULATED METAL PANELS,JAMES LIVELY,INTERIORS,2025-11-07 07:00,2025-11-12 17:00,2025-11-07 07:00,,2025-11-21 07:00,2025-11-26 17:00,2025-12-01 07:00,2025-12-05 17:00,50,50,0
CN.SWA5..4320,FINAL COAT & INSPECT - STAIR #21 - 13/D - ALL LEVELS,Not Started,SWA - 5,West Support Building,SUES-3 - 13-9,INTERIOR STAIR TOWER - STAIR #21 (CLEAN ROOM),,CONSTRUCTION,,INSULATED METAL PANELS,JAMES LIVELY,INTERIORS,2025-12-04 07:00,2025-12-15 17:00,,,2025-12-04 07:00,2025-12-15 17:00,2025-11-22 07:00,2025-12-05 17:00,100,100,0
CN.SWA5..4330,"CONTAINMET, SCAFFOLD WRAPPING AND FLOOR COVERING - STAIR #20 - 19/D(2 shifts)",Complete,SWA - 5,West Support Building,SUES-1 - 19-16,INTERIOR STAIR TOWER - STAIR #20,,CONSTRUCTION,,INSULATED METAL PANELS,JAMES LIVELY,INTERIORS,2024-10-28 07:00,2024-10-30 17:00,2024-10-28 07:00,2024-10-28 17:00,2025-11-20 17:00,2025-11-20 17:00,2025-11-12 07:00,2025-11-12 07:00,0,30,100
CN.SWA5..4380,INSTALL - 1ST LAYER DRYWALL CEILING & INSPECT - STAIR #20 - 19/D - ALL LEVELS,Complete,SWA - 5,West Support Building,SUES-1 - 19-16,INTERIOR STAIR TOWER - STAIR #20,,CONSTRUCTION,,INSULATED METAL PANELS,JAMES LIVELY,INTERIORS,2025-10-04 07:00,2025-10-11 17:00,2025-09-03 12:00,2025-09-08 14:00,2025-11-20 17:00,2025-11-20 17:00,2025-11-29 07:00,2025-11-29 07:00,0,70,100
CN.SWA5..4390,HANG INTERIOR SIDE 2ND LAYER DRYWALL & INSPECT - STAIR #20 - 19/D - ALL LEVELS,Complete,SWA - 5,West Support Building,SUES-1 - 19-16,INTERIOR STAIR TOWER - STAIR #20,,CONSTRUCTION,,INSULATED METAL PANELS,JAMES LIVELY,INTERIORS,2025-04-09 07:00,2025-04-22 17:00,2025-04-03 07:00,2025-10-07 07:00,2025-11-20 17:00,2025-11-20 17:00,2025-11-24 07:00,2025-11-24 07:00,0,120,100
CN.SWA5..4400,INSTALL - 2ND  LAYER  DRYWALL CEILING & INSPECT - STAIR #20 - 19/D - ALL LEVELS,Complete,SWA - 5,West Support Building,SUES-1 - 19-16,INTERIOR STAIR TOWER - STAIR #20,,CONSTRUCTION,,INSULATED METAL PANELS,JAMES LIVELY,INTERIORS,2025-10-13 07:00,2025-10-20 17:00,2025-09-09 09:30,2025-09-15 14:00,2025-11-20 17:00,2025-11-20 17:00,2025-12-03 07:00,2025-12-03 07:00,0,70,100
CN.SWA5..4410,INSTALL - DOOR FRAMES  - STAIR #20 - 19/D - ALL LEVELS,Active,SWA - 5,West Support Building,SUES-1 - 19-16,INTERIOR STAIR TOWER - STAIR #20,,CONSTRUCTION,,INSULATED METAL PANELS,JAMES LIVELY,INTERIORS,2025-10-15 07:00,2025-10-17 17:00,2025-09-10 07:00,,2025-11-21 07:00,2025-11-24 17:00,2025-11-24 07:00,2025-11-26 17:00,30,30,0
CN.SWA5..4420,INSTALL - DOOR & HARDWARE  - STAIR #20 - 19/D - ALL LEVELS,Active,SWA - 5,West Support Building,SUES-1 - 19-16,INTERIOR STAIR TOWER - STAIR #20,,CONSTRUCTION,,INSULATED METAL PANELS,JAMES LIVELY,INTERIORS,2025-10-28 07:00,2025-11-01 17:00,2025-10-28 07:00,,2025-11-25 07:00,2025-12-02 17:00,2025-11-29 07:00,2025-12-04 17:00,50,50,0
CN.SWA5..4530,INSTALL 2ND LAYER  DRYWALL CEILING & INSPECT  - STAIR #3 - 18/L - ALL LEVELS,Complete,SWA - 5,West Support Building,SUWN-1 - 18-21,INTERIOR STAIR TOWER - STAIR #3,,CONSTRUCTION,,INSULATED METAL PANELS,JAMES LIVELY,INTERIORS,2025-10-02 07:00,2025-10-03 17:00,2025-10-02 07:00,2025-10-03 17:00,2025-11-20 17:00,2025-11-20 17:00,2025-11-08 07:00,2025-11-08 07:00,0,20,100
CN.SWA5..4540,IMPACT - SECAI DRYWALL PATCH & FINISH - STAIR #3 - 18/L - ALL LEVELS,Complete,SWA - 5,West Support Building,SUWN-1 - 18-21,INTERIOR STAIR TOWER - STAIR #3,,CONSTRUCTION,,INSULATED METAL PANELS,JAMES LIVELY,INTERIORS,2025-10-10 07:00,2025-10-15 17:00,2025-10-10 07:00,2025-11-03 17:00,2025-11-20 17:00,2025-11-20 17:00,2025-11-08 07:00,2025-11-08 07:00,0,50,100
CN.SWA5..4550,FRAME & 1ST LAYER DRYWALL CEILINGS - INSTALL & INSPECT - STAIR #3 - 18/L - ALL LEVELS,Complete,SWA - 5,West Support Building,SUWN-1 - 18-21,INTERIOR STAIR TOWER - STAIR #3,,CONSTRUCTION,,INSULATED METAL PANELS,JAMES LIVELY,INTERIORS,2025-09-30 07:00,2025-10-02 17:00,2025-09-30 07:00,2025-10-02 17:00,2025-11-20 17:00,2025-11-20 17:00,2025-11-08 07:00,2025-11-08 07:00,0,30,100
CN.SWA5..4560,INSTALL - DOOR & HARDWARE  - STAIR #3 - 18/L - ALL LEVELS,Active,SWA - 5,West Support Building,SUWN-1 - 18-21,INTERIOR STAIR TOWER - STAIR #3,,CONSTRUCTION,,INSULATED METAL PANELS,JAMES LIVELY,INTERIORS,2025-10-13 07:00,2025-10-17 17:00,2025-10-13 07:00,,2025-11-29 07:00,2025-12-04 17:00,2025-11-29 07:00,2025-12-04 17:00,50,50,0
CN.SWA5..4690,INSTALL - INTERIOR SIDE 2ND LAYER DRYWALL & INSPECT - STAIR #4 - 23/L - ALL LEVELS,Complete,SWA - 5,West Support Building,SUWN-2 - 21-24,INTERIOR STAIR TOWER - STAIR #4 (CLEAN ROOM),,CONSTRUCTION,,INSULATED METAL PANELS,JAMES LIVELY,INTERIORS,2025-09-06 07:00,2025-09-08 17:00,2025-08-22 07:00,2025-09-22 17:00,2025-11-20 17:00,2025-11-20 17:00,2025-11-17 07:00,2025-11-17 07:00,0,20,100
CN.SWA5..4700,INSTALL- DRYWALL 1ST LAYER CEILING & INSPECT - STAIR #4 - 23/L - ALL LEVELS [/DAY],Complete,SWA - 5,West Support Building,SUWN-2 - 21-24,INTERIOR STAIR TOWER - STAIR #4 (CLEAN ROOM),,CONSTRUCTION,,INSULATED METAL PANELS,JAMES LIVELY,INTERIORS,2025-09-09 07:00,2025-09-16 17:00,2025-08-29 07:00,2025-09-15 07:00,2025-11-20 17:00,2025-11-20 17:00,2025-12-01 07:00,2025-12-01 07:00,0,70,100
CN.SWA5..4710,INSTALL- DRYWALL 2ND LAYER CEILING & INSPECT - STAIR #4 - 23/L - ALL LEVELS,Complete,SWA - 5,West Support Building,SUWN-2 - 21-24,INTERIOR STAIR TOWER - STAIR #4 (CLEAN ROOM),,CONSTRUCTION,,INSULATED METAL PANELS,JAMES LIVELY,INTERIORS,2025-09-19 07:00,2025-09-26 17:00,2025-09-02 07:00,2025-09-15 16:00,2025-11-20 17:00,2025-11-20 17:00,2025-12-01 07:00,2025-12-01 07:00,0,70,100
CN.SWA5..4720,INSTALL DOOR FRAMES - STAIR #4 - 23/L - ALL LEVELS (),Complete,SWA - 5,West Support Building,SUWN-2 - 21-24,INTERIOR STAIR TOWER - STAIR #4 (CLEAN ROOM),,CONSTRUCTION,,INSULATED METAL PANELS,JAMES LIVELY,INTERIORS,2025-10-10 07:00,2025-10-13 17:00,2025-05-27 07:00,2025-09-29 17:00,2025-11-20 17:00,2025-11-20 17:00,2025-11-17 07:00,2025-11-17 07:00,0,30,100
CN.SWA5..4730,INSTALL - DOOR & HARDWARE  - STAIR #4 - 23/L - ALL LEVELS,Active,SWA - 5,West Support Building,SUWN-2 - 21-24,INTERIOR STAIR TOWER - STAIR #4 (CLEAN ROOM),,CONSTRUCTION,,INSULATED METAL PANELS,JAMES LIVELY,INTERIORS,2025-09-29 07:00,2025-10-15 17:00,2025-09-29 07:00,,2025-11-21 07:00,2025-12-10 17:00,2025-11-17 07:00,2025-12-05 17:00,150,150,0
CN.SWA5..4910,FINAL COAT INSPECTION - STAIR #19 - 26/D - ALL LEVELS,Active,SWA - 5,West Support Building,SUEN-3 - 25-28,INTERIOR STAIR TOWER - STAIR #19 (CLEAN ROOM) - DE-SCOPED,,CONSTRUCTION,,INSULATED METAL PANELS,JAMES LIVELY,INTERIORS,2025-09-29 07:00,2025-10-09 17:00,2025-09-29 07:00,,2025-12-06 07:00,2025-12-06 07:00,2025-12-05 17:00,2025-12-05 17:00,0,100,100
CN.SWA5..5190,STAIR PREP FOR COATING - STAIR #1 - 5/L - ALL LEVELS,Not Started,SWA - 5,West Support Building,FIZ 2 / SUWS 5  (GL6-1) - GL J - N - DATA CENTER 1,INTERIOR STAIR TOWER - STAIR #1 - DE-SCOPED,,CONSTRUCTION,,INSULATED METAL PANELS,JAMES LIVELY,INTERIORS,2025-11-26 15:00,2025-12-04 15:00,,,2025-11-26 15:00,2025-12-04 15:00,2025-11-01 07:00,2025-11-06 17:00,50,50,0
CN.SWA5..5200,INSPECT - STAIR PREP FOR COATING - STAIR #1 - 5/L - ALL LEVELS,Not Started,SWA - 5,West Support Building,FIZ 2 / SUWS 5  (GL6-1) - GL J - N - DATA CENTER 1,INTERIOR STAIR TOWER - STAIR #1 - DE-SCOPED,,CONSTRUCTION,,INSULATED METAL PANELS,JAMES LIVELY,INTERIORS,2025-12-04 15:00,2025-12-05 15:00,,,2025-12-04 15:00,2025-12-05 15:00,2025-11-07 07:00,2025-11-07 17:00,10,10,0
CN.AB.AR.7770,IMPACT - CABLE TRAY IN THE WAY - LVL 1 - EAST WALL - EXTERIOR SHAFT SHAFT - ELEVATOR 01A - (SCAFFOLD NEEDED),Complete,SWA - 5,West Support Building,FIZ 2 / SUWS 5  (GL6-1) - GL J - N - DATA CENTER 1,,ELEVATOR,CONSTRUCTION,BERG,DRYWALL,,INTERIORS,2024-10-15 07:00,2024-10-28 17:00,2024-10-15 07:00,2025-03-11 12:00,2025-11-20 17:00,2025-11-20 17:00,2025-12-01 07:00,2025-12-01 07:00,0,80,100
CN.SWA5..5440,ALPHA PREP - STAIR #50 - 29/L - ALL LEVELS (),Complete,SWA - 5,West Support Building,SUWN-4 - 27-30,INTERIOR STAIR TOWER - STAIR #50 - DE-SCOPED,,CONSTRUCTION,,INSULATED METAL PANELS,JAMES LIVELY,INTERIORS,2024-11-21 07:00,2024-11-21 17:00,2024-11-21 07:00,2025-06-27 13:00,2025-11-20 17:00,2025-11-20 17:00,2025-12-05 07:00,2025-12-05 07:00,0,10,100
CN.SWA5..5500,STAIR PREP & INSPECT COATING  - STAIR #50 - 29/L - ALL LEVELS(),Complete,SWA - 5,West Support Building,SUWN-4 - 27-30,INTERIOR STAIR TOWER - STAIR #50 - DE-SCOPED,,CONSTRUCTION,,INSULATED METAL PANELS,JAMES LIVELY,INTERIORS,2025-11-18 07:00,2025-11-21 17:00,2025-10-27 07:00,2025-10-27 17:00,2025-11-20 17:00,2025-11-20 17:00,2025-12-05 17:00,2025-12-05 17:00,0,40,100
CN.SWA5..5510,FINAL COAT & INSPECT - STAIR #50 - 29/L - ALL LEVELS,Complete,SWA - 5,West Support Building,SUWN-4 - 27-30,INTERIOR STAIR TOWER - STAIR #50 - DE-SCOPED,,CONSTRUCTION,,INSULATED METAL PANELS,JAMES LIVELY,INTERIORS,2025-11-22 07:00,2025-11-22 17:00,2025-10-27 07:00,2025-10-31 17:00,2025-11-20 17:00,2025-11-20 17:00,2025-12-05 17:00,2025-12-05 17:00,0,10,100
CN.SWA5..5520,SECAI - FRAMING & 1ST LAYER INTERIOR DRYWALL - STAIR #50 - 29/L - ALL LEVELS,Complete,SWA - 5,West Support Building,SUWN-4 - 27-30,INTERIOR STAIR TOWER - STAIR #50 - DE-SCOPED,,CONSTRUCTION,,INSULATED METAL PANELS,JAMES LIVELY,INTERIORS,2025-08-19 07:00,2025-08-19 17:00,2025-06-27 07:00,2025-06-27 13:00,2025-11-20 17:00,2025-11-20 17:00,2025-12-05 07:00,2025-12-05 07:00,0,10,100
CN.SWA5..5530,INSTALL- 2ND LAYER DRYWALL EXTERIOR - STAIR #50 - 29/L - ALL LEVELS [/DAY],Complete,SWA - 5,West Support Building,SUWN-4 - 27-30,INTERIOR STAIR TOWER - STAIR #50 - DE-SCOPED,,CONSTRUCTION,,INSULATED METAL PANELS,JAMES LIVELY,INTERIORS,2025-09-04 07:00,2025-09-08 17:00,2025-06-27 07:00,2025-06-27 13:00,2025-11-20 17:00,2025-11-20 17:00,2025-12-05 07:00,2025-12-05 07:00,0,40,100
CN.SWA5..5540,INSPECT - 2ND  LAYER DRYWALL EXTERIOR  - STAIR #50 - 29/L - ALL LEVELS,Complete,SWA - 5,West Support Building,SUWN-4 - 27-30,INTERIOR STAIR TOWER - STAIR #50 - DE-SCOPED,,CONSTRUCTION,,INSULATED METAL PANELS,JAMES LIVELY,INTERIORS,2025-09-09 07:00,2025-09-09 17:00,2025-06-27 07:00,2025-06-27 13:00,2025-11-20 17:00,2025-11-20 17:00,2025-12-05 07:00,2025-12-05 07:00,0,10,100
CN.SWB5.10470,PH1- INSTALL EXPANSION BOARDS - SW PENTHOUSE - SOUTH,Complete,SWA - 5,East Support Building,SOUTH WEST PENTHOUSE,EXTERIOR SKIN,,CONSTRUCTION,KOVACH,INSULATED METAL PANELS,SEAN MONK,,2024-09-19 07:00,2024-09-19 17:00,2024-10-14 07:00,2024-10-19 07:00,2025-11-20 17:00,2025-11-20 17:00,2025-12-05 17:00,2025-12-05 17:00,0,10,100
CN.SWB5.10490,IMPACT - CURB DESIGN ISSUE - SW PENTHOUSE - SOUTH WALL,Complete,SWA - 5,East Support Building,SOUTH WEST PENTHOUSE,EXTERIOR SKIN,,CONSTRUCTION,KOVACH,INSULATED METAL PANELS,SEAN MONK,,2024-09-14 07:00,2024-09-24 17:00,2024-10-10 07:00,2024-10-25 17:00,2025-11-20 17:00,2025-11-20 17:00,2025-12-05 17:00,2025-12-05 17:00,0,100,100
CN.SWA5..5590,PENDING CCD SCAFOLD MODIFICATION -DUE TO SPRINKLER INSTALL - STAIR #20 - 19/D - ALL LEVELS,Complete,SWA - 5,West Support Building,SUES-1 - 19-16,INTERIOR STAIR TOWER - STAIR #20,,CONSTRUCTION,,INSULATED METAL PANELS,JAMES LIVELY,INTERIORS,2024-11-16 07:00,2024-11-20 17:00,2024-11-15 07:00,2024-11-20 17:00,2025-11-20 17:00,2025-11-20 17:00,2025-11-24 07:00,2025-11-24 07:00,0,40,100
CN.SWA5..5630,IMPACT - SCAFFOLDING MODIFCATION FOR SECAI SPRINKLER PIPE INSTALL - STAIR #3 - 18/L - ALL LEVELS,Complete,SWA - 5,West Support Building,SUWN-1 - 18-21,INTERIOR STAIR TOWER - STAIR #3,,CONSTRUCTION,,INSULATED METAL PANELS,JAMES LIVELY,INTERIORS,2024-11-08 07:00,2024-11-12 17:00,2024-11-20 07:00,2024-12-16 17:00,2025-11-20 17:00,2025-11-20 17:00,2025-11-03 07:00,2025-11-03 07:00,0,40,100
CN.SWA5..5640,IMPACT - PENDING CCD SCAFFOLD MODIFICATION DUE TO SPRINKLER MODIFICATION - STAIR #2 - 11/L - ALL LEVELS,Complete,SWA - 5,West Support Building,SUWS-3 - 12-9,INTERIOR STAIR TOWER - STAIR #2 (CLEAN ROOM),,CONSTRUCTION,,INSULATED METAL PANELS,JAMES LIVELY,INTERIORS,2024-11-15 07:00,2024-11-20 17:00,2024-11-15 07:00,2024-11-19 17:00,2025-11-20 17:00,2025-11-20 17:00,2025-11-12 07:00,2025-11-12 07:00,0,50,100
CN.SWA5..5650,IMPACT - PENDING CCD SCAFFOLD MODIFICATION - DUE TO SPRINKLER MODIFICATION - STAIR #21 - 13/D - ALL LEVELS,Complete,SWA - 5,West Support Building,SUES-3 - 13-9,INTERIOR STAIR TOWER - STAIR #21 (CLEAN ROOM),,CONSTRUCTION,,INSULATED METAL PANELS,JAMES LIVELY,INTERIORS,2024-11-19 07:00,2024-11-22 17:00,2024-11-15 07:00,2024-11-20 17:00,2025-11-20 17:00,2025-11-20 17:00,2025-11-12 07:00,2025-11-12 07:00,0,40,100
CN.SWA5..5670,PENDING CCD FOR SCAFFOLD MODIFICATION - STAIR #3 - 18/L - ALL LEVELS(2 SHIFTS),Complete,SWA - 5,West Support Building,SUWN-1 - 18-21,INTERIOR STAIR TOWER - STAIR #3,,CONSTRUCTION,,INSULATED METAL PANELS,JAMES LIVELY,INTERIORS,2024-11-19 07:00,2024-11-22 17:00,2024-11-15 07:00,2024-11-19 17:00,2025-11-20 17:00,2025-11-20 17:00,2025-11-03 07:00,2025-11-03 07:00,0,40,100
CN.SWA5..5690,IMPACT - MEP ROUGH-IN NOT COMPLETE & CITY INSPECTION / STOP WORK (1/20) - STAIR #2 - 11/L - ALL LEVELS,Complete,SWA - 5,West Support Building,SUWS-3 - 12-9,INTERIOR STAIR TOWER - STAIR #2 (CLEAN ROOM),,CONSTRUCTION,,INSULATED METAL PANELS,JAMES LIVELY,INTERIORS,2024-11-26 07:00,2024-12-03 17:00,2024-11-26 07:00,2025-02-24 17:00,2025-11-20 17:00,2025-11-20 17:00,2025-11-12 07:00,2025-11-12 07:00,0,50,100
CN.SWA5..5740,IMPACT - MEP ROUGH IN MODIFICATION & CITY INSPECTION - STAIR #21 - 13/D - ALL LEVELS,Complete,SWA - 5,West Support Building,SUES-3 - 13-9,INTERIOR STAIR TOWER - STAIR #21 (CLEAN ROOM),,CONSTRUCTION,,INSULATED METAL PANELS,JAMES LIVELY,INTERIORS,2024-11-12 07:00,2024-11-25 17:00,2024-11-22 07:00,2025-02-17 17:00,2025-11-20 17:00,2025-11-20 17:00,2025-11-12 07:00,2025-11-12 07:00,0,120,100
CN.SWA5..5750,IMPACT - SECAI MEP ROUGH-IN MODIFICATION & CITY INSPECTION - STAIR #20 - 19/D - ALL LEVELS,Complete,SWA - 5,West Support Building,SUES-1 - 19-16,INTERIOR STAIR TOWER - STAIR #20,,CONSTRUCTION,,INSULATED METAL PANELS,JAMES LIVELY,INTERIORS,2024-11-05 07:00,2024-11-18 17:00,2024-11-26 07:00,2025-03-31 17:00,2025-11-20 17:00,2025-11-20 17:00,2025-11-12 07:00,2025-11-12 07:00,0,120,100
CN.AB.AR.8680,ALPHA PRIMER AND TOUCH-UP GOAL POST - ELEVATOR 01,Complete,SWA - 5,West Support Building,FIZ 2 / SUWS 5  (GL6-1) - GL J - N - DATA CENTER 1,,ELEVATOR,CONSTRUCTION,W&W,TBD Architectural Finishes,,INTERIORS,2025-09-02 07:00,2025-09-16 17:00,2025-09-01 07:00,2025-09-12 07:00,2025-11-20 17:00,2025-11-20 17:00,2025-12-05 17:00,2025-12-05 17:00,0,110,100
CN.SWA5..5770,FRAMING CEILING & INSPECT - STAIR #2 - 11/L - ALL LEVELS,Complete,SWA - 5,West Support Building,SUWS-3 - 12-9,INTERIOR STAIR TOWER - STAIR #2 (CLEAN ROOM),,CONSTRUCTION,,INSULATED METAL PANELS,JAMES LIVELY,INTERIORS,2025-06-26 07:00,2025-07-05 17:00,2025-06-09 07:00,2025-06-17 17:00,2025-11-20 17:00,2025-11-20 17:00,2025-11-12 07:00,2025-11-12 07:00,0,80,100
CN.SWA5..5780,INSTALL 1ST LAYER CEILING & INSPECT - STAIR #2 - 11/L - ALL LEVELS,Complete,SWA - 5,West Support Building,SUWS-3 - 12-9,INTERIOR STAIR TOWER - STAIR #2 (CLEAN ROOM),,CONSTRUCTION,,INSULATED METAL PANELS,JAMES LIVELY,INTERIORS,2025-07-07 07:00,2025-07-19 17:00,2025-06-18 07:00,2025-08-18 07:00,2025-11-20 17:00,2025-11-20 17:00,2025-11-12 07:00,2025-11-12 07:00,0,120,100
CN.SWA5..5790,INSTALL 2ND LAYER CEILING & INSPECT - STAIR #2 - 11/L - ALL LEVELS,Complete,SWA - 5,West Support Building,SUWS-3 - 12-9,INTERIOR STAIR TOWER - STAIR #2 (CLEAN ROOM),,CONSTRUCTION,,INSULATED METAL PANELS,JAMES LIVELY,INTERIORS,2025-08-11 07:00,2025-08-15 17:00,2025-08-11 07:00,2025-08-15 17:00,2025-11-20 17:00,2025-11-20 17:00,2025-11-12 07:00,2025-11-12 07:00,0,50,100
CN.SWA5..5800,BERG INSTALL SCAFFOLDS FOR CEILING - STAIR #2 - 11/L,Complete,SWA - 5,West Support Building,SUWS-3 - 12-9,INTERIOR STAIR TOWER - STAIR #2 (CLEAN ROOM),,CONSTRUCTION,,INSULATED METAL PANELS,JAMES LIVELY,INTERIORS,2025-06-21 07:00,2025-06-25 17:00,2025-06-03 07:00,2025-06-07 17:00,2025-11-20 17:00,2025-11-20 17:00,2025-11-12 07:00,2025-11-12 07:00,0,40,100
CN.SWA5..5810,FRAMING CEILING & INSPECT - STAIR #21 - 13/D - ALL LEVELS,Complete,SWA - 5,West Support Building,SUES-3 - 13-9,INTERIOR STAIR TOWER - STAIR #21 (CLEAN ROOM),,CONSTRUCTION,,INSULATED METAL PANELS,JAMES LIVELY,INTERIORS,2025-07-07 07:00,2025-07-15 17:00,2025-06-09 07:00,2025-06-17 17:00,2025-11-20 17:00,2025-11-20 17:00,2025-11-12 07:00,2025-11-12 07:00,0,80,100
CN.SWA5..5820,INSTALL 1ST LAYER CEILING & INSPECT - STAIR #21 - 13/D - ALL LEVELS,Complete,SWA - 5,West Support Building,SUES-3 - 13-9,INTERIOR STAIR TOWER - STAIR #21 (CLEAN ROOM),,CONSTRUCTION,,INSULATED METAL PANELS,JAMES LIVELY,INTERIORS,2025-07-16 07:00,2025-07-29 17:00,2025-06-18 07:00,2025-06-23 17:00,2025-11-20 17:00,2025-11-20 17:00,2025-11-12 07:00,2025-11-12 07:00,0,120,100
CN.SWA5..5830,INSTALL 2ND LAYER CEILING & INSPECT - STAIR #21 - 13/D - ALL LEVELS,Complete,SWA - 5,West Support Building,SUES-3 - 13-9,INTERIOR STAIR TOWER - STAIR #21 (CLEAN ROOM),,CONSTRUCTION,,INSULATED METAL PANELS,JAMES LIVELY,INTERIORS,2025-08-08 07:00,2025-08-12 17:00,2025-06-30 07:00,2025-08-18 17:00,2025-11-20 17:00,2025-11-20 17:00,2025-11-12 07:00,2025-11-12 07:00,0,40,100
CN.SWA5..5850,BERG INSTALL SCAFFOLD FOR CEILING - STAIR #20 - 19/D - ALL LEVELS,Complete,SWA - 5,West Support Building,SUES-1 - 19-16,INTERIOR STAIR TOWER - STAIR #20,,CONSTRUCTION,,INSULATED METAL PANELS,JAMES LIVELY,INTERIORS,2025-10-02 07:00,2025-10-03 17:00,2025-08-28 07:00,2025-08-30 17:00,2025-11-20 17:00,2025-11-20 17:00,2025-11-29 07:00,2025-11-29 07:00,0,20,100
CN.SWA5.9660,INSTALL COPING CAP - SWA5 - GL 5-31 - K-L - L6 - SOUTHWEST PENTHOUSE,Complete,SWA - 5,,SOUTH WEST PENTHOUSE,L6 - PENTHOUSE / DS ROOF,,CONSTRUCTION,BRAZOS,TOPPING,,,2025-10-31 07:00,2025-10-31 07:00,2025-10-01 07:00,2025-10-01 07:00,2025-11-20 17:00,2025-11-20 17:00,2025-12-05 17:00,2025-12-05 17:00,0,0,100
CN.SWA5.9670,DELIVER & INSTALL COPING CAP - SWB5 - GL 33-31 - L6 - NORTHWEST PENTHOUSE,Active,SWA - 5,,NORTH WEST PENTHOUSE,L6 - PENTHOUSE / DS ROOF,,CONSTRUCTION,BRAZOS,TOPPING,,,2025-10-31 07:00,2025-11-10 17:00,2025-10-31 07:00,,2025-11-21 07:00,2025-12-03 17:00,2025-11-25 07:00,2025-12-05 17:00,70,70,0
CN.AB.AR.8700,SECAI TOOK OVER 10/1/25 - PRIMER AND TOUCH-UP C CHANNEL EDGE ARMOUR - ELEVATOR 01,Complete,SWA - 5,West Support Building,FIZ 2 / SUWS 5  (GL6-1) - GL J - N - DATA CENTER 1,,ELEVATOR,CONSTRUCTION,W&W,TBD Architectural Finishes,,INTERIORS,2025-09-11 07:00,2025-09-18 17:00,2025-09-11 07:00,2025-09-11 17:00,2025-11-20 17:00,2025-11-20 17:00,2025-12-05 17:00,2025-12-05 17:00,0,60,100
CN.AB.AR.8710,ALPHA PRIMER AND TOUCH-UP GOAL POST - ELEVATOR 19,Complete,SWA - 5,West Support Building,FIZ 2 / SUWS 5  (GL6-1) - GL J - N - DATA CENTER 1,,ELEVATOR,CONSTRUCTION,W&W,TBD Architectural Finishes,,INTERIORS,2025-06-16 07:00,2025-06-19 17:00,2025-06-16 07:00,2025-06-19 17:00,2025-11-20 17:00,2025-11-20 17:00,2025-12-03 07:00,2025-12-03 07:00,0,40,100
CN.AB.AR.8720,ALPHA PRIMER AND TOUCH-UP HSS - ELEVATOR 02,Complete,SWA - 5,West Support Building,FIZ 2 / SUWS 5  (GL6-1) - GL J - N - DATA CENTER 1,,ELEVATOR,CONSTRUCTION,W&W,TBD Architectural Finishes,,INTERIORS,2025-06-23 07:00,2025-07-02 17:00,2025-06-23 07:00,2025-07-07 17:00,2025-11-20 17:00,2025-11-20 17:00,2025-12-05 07:00,2025-12-05 07:00,0,80,100
CN.AB.AR.8730,ALPHA PRIMER AND TOUCH-UP EDGE ARMOUR - ELEVATOR 1B - SECAI TOOK OVER,Complete,SWA - 5,West Support Building,FIZ 2 / SUWS 5  (GL6-1) - GL J - N - DATA CENTER 1,,ELEVATOR,CONSTRUCTION,W&W,TBD Architectural Finishes,,INTERIORS,2025-08-12 07:00,2025-08-20 17:00,2025-08-12 07:00,2025-08-12 17:00,2025-11-20 17:00,2025-11-20 17:00,2025-12-05 17:00,2025-12-05 17:00,0,70,100
CN.AB.AR.8740,ALPHA PRIMER AND TOUCH-UP EDGE ARMOUR - ELEVATOR 19 - SECAI TOOK OVER,Complete,SWA - 5,West Support Building,FIZ 2 / SUWS 5  (GL6-1) - GL J - N - DATA CENTER 1,,ELEVATOR,CONSTRUCTION,W&W,TBD Architectural Finishes,,INTERIORS,2025-09-02 07:00,2025-09-03 17:00,2025-09-02 07:00,2025-09-02 17:00,2025-11-20 17:00,2025-11-20 17:00,2025-12-05 17:00,2025-12-05 17:00,0,20,100
CN.SWA5..5880,IMPACT - FIRE SPRINKLER TO BE RELOCATED RFI (FRAMING CEILING),Complete,SWA - 5,West Support Building,SUES-3 - 13-9,INTERIOR STAIR TOWER - STAIR #21 (CLEAN ROOM),,CONSTRUCTION,,INSULATED METAL PANELS,JAMES LIVELY,INTERIORS,2025-06-21 07:00,2025-07-02 17:00,2025-06-21 07:00,2025-06-30 17:00,2025-11-20 17:00,2025-11-20 17:00,2025-11-12 07:00,2025-11-12 07:00,0,100,100
CN.SWA5..5890,IMPACT - SECAI STOP WORK 6/27 FOR MEP FIRE SPRINKLER- 1ST LAYER CEILING & INSPECT - STAIR #2 - 11/L - ALL LEVELS,Complete,SWA - 5,West Support Building,SUWS-3 - 12-9,INTERIOR STAIR TOWER - STAIR #2 (CLEAN ROOM),,CONSTRUCTION,,INSULATED METAL PANELS,JAMES LIVELY,INTERIORS,2025-07-07 07:00,2025-07-19 17:00,2025-06-23 07:00,2025-07-15 17:00,2025-11-20 17:00,2025-11-20 17:00,2025-11-12 07:00,2025-11-12 07:00,0,120,100
CN.SWA5..5900,IMPACT - NCR #268 DRYWALL CJ AND CAULK - STAIR #2 - 11/L - ALL LEVELS,Complete,SWA - 5,West Support Building,SUWS-3 - 12-9,INTERIOR STAIR TOWER - STAIR #2 (CLEAN ROOM),,CONSTRUCTION,,INSULATED METAL PANELS,JAMES LIVELY,INTERIORS,2024-11-26 07:00,2024-12-03 17:00,2025-04-02 07:00,2025-06-18 07:00,2025-11-20 17:00,2025-11-20 17:00,2025-11-12 07:00,2025-11-12 07:00,0,50,100
CN.SWA5..5910,IMPACT - EJ FIRESTOP WORK INSIDE CHASE WALL - STAIR #2 - 11/L - ALL LEVELS,Complete,SWA - 5,West Support Building,SUWS-3 - 12-9,INTERIOR STAIR TOWER - STAIR #2 (CLEAN ROOM),,CONSTRUCTION,,INSULATED METAL PANELS,JAMES LIVELY,INTERIORS,2024-11-26 07:00,2024-12-03 17:00,2025-06-19 07:00,2025-08-18 07:00,2025-11-20 17:00,2025-11-20 17:00,2025-11-12 07:00,2025-11-12 07:00,0,50,100
CN.SWA5..5920,IMPACT - ADDED SCOPE FOR EXP JOINT CLOSURE - CHASE WALL - STAIR #2 - 11/L - ALL LEVELS,Complete,SWA - 5,West Support Building,SUWS-3 - 12-9,INTERIOR STAIR TOWER - STAIR #2 (CLEAN ROOM),,CONSTRUCTION,,INSULATED METAL PANELS,JAMES LIVELY,INTERIORS,2025-08-09 07:00,2025-08-20 17:00,2025-07-18 07:00,2025-08-18 17:00,2025-11-20 17:00,2025-11-20 17:00,2025-11-12 07:00,2025-11-12 07:00,0,100,100
CN.SWA5..5940,BERG - SCAFFOLD INSTALL FOR EJ/ EXP JOINT WORK - CHASE WALL - STAIR #2 - 11/L - ALL LEVELS,Complete,SWA - 5,West Support Building,SUWS-3 - 12-9,INTERIOR STAIR TOWER - STAIR #2 (CLEAN ROOM),,CONSTRUCTION,,INSULATED METAL PANELS,JAMES LIVELY,INTERIORS,2025-08-09 07:00,2025-08-22 17:00,2025-07-18 07:00,2025-08-18 17:00,2025-11-20 17:00,2025-11-20 17:00,2025-11-12 07:00,2025-11-12 07:00,0,120,100
CN.SWA5..5950,IMPACT - SCAFFOLD MODIFICATION DUE TO SECAI FIRE SPRINKLER REWORK- STAIR #2 - 11/L - ALL LEVELS,Complete,SWA - 5,West Support Building,SUWS-3 - 12-9,INTERIOR STAIR TOWER - STAIR #2 (CLEAN ROOM),,CONSTRUCTION,,INSULATED METAL PANELS,JAMES LIVELY,INTERIORS,2024-11-15 07:00,2024-11-20 17:00,2024-11-20 07:00,2024-12-16 17:00,2025-11-20 17:00,2025-11-20 17:00,2025-11-12 07:00,2025-11-12 07:00,0,50,100
CN.SWA5..6000,IMPACT - MEP ROUGH IN MODIFICATION & CITY INSPECTION - STAIR #3 - 18/L - ALL LEVELS,Complete,SWA - 5,West Support Building,SUWN-1 - 18-21,INTERIOR STAIR TOWER - STAIR #3,,CONSTRUCTION,,INSULATED METAL PANELS,JAMES LIVELY,INTERIORS,2024-11-12 07:00,2024-11-25 17:00,2024-11-26 07:00,2025-02-24 00:00,2025-11-20 17:00,2025-11-20 17:00,2025-11-08 07:00,2025-11-08 07:00,0,120,100
CN.SWA5..6050,IMPACT - SCAFFOLD MODIFICATION - DUE TO SPRINKLER MODIFICATION - STAIR #21 - 13/D - ALL LEVELS,Complete,SWA - 5,West Support Building,SUES-3 - 13-9,INTERIOR STAIR TOWER - STAIR #21 (CLEAN ROOM),,CONSTRUCTION,,INSULATED METAL PANELS,JAMES LIVELY,INTERIORS,2024-11-19 07:00,2024-11-22 17:00,2024-11-20 07:00,2024-12-16 17:00,2025-11-20 17:00,2025-11-20 17:00,2025-11-12 07:00,2025-11-12 07:00,0,40,100
CN.SWA5..6060,IMPACT - NCR #267 DRYWALL CJ and CAULK - STAIR #21 - 13/D - ALL LEVELS,Complete,SWA - 5,West Support Building,SUES-3 - 13-9,INTERIOR STAIR TOWER - STAIR #21 (CLEAN ROOM),,CONSTRUCTION,,INSULATED METAL PANELS,JAMES LIVELY,INTERIORS,2024-11-12 07:00,2024-11-25 17:00,2025-04-02 07:00,2025-06-18 17:00,2025-11-20 17:00,2025-11-20 17:00,2025-11-12 07:00,2025-11-12 07:00,0,120,100
CN.SWA5..6070,IMPACT - EJ FIRESTOP WORK INSIDE CHASE WALL - STAIR #21 - 13/D - ALL LEVELS,Complete,SWA - 5,West Support Building,SUES-3 - 13-9,INTERIOR STAIR TOWER - STAIR #21 (CLEAN ROOM),,CONSTRUCTION,,INSULATED METAL PANELS,JAMES LIVELY,INTERIORS,2024-11-12 07:00,2024-11-25 17:00,2025-06-19 07:00,2025-08-08 07:00,2025-11-20 17:00,2025-11-20 17:00,2025-11-12 07:00,2025-11-12 07:00,0,120,100
CN.SWA5..6080,IMPACT - SECAI STOP WORK 6/27 FOR MEP SPRINKLER - STAIR #21 - 13/D - ALL LEVELS,Complete,SWA - 5,West Support Building,SUES-3 - 13-9,INTERIOR STAIR TOWER - STAIR #21 (CLEAN ROOM),,CONSTRUCTION,,INSULATED METAL PANELS,JAMES LIVELY,INTERIORS,2024-11-12 07:00,2024-11-25 17:00,2025-06-23 07:00,2025-08-18 17:00,2025-11-20 17:00,2025-11-20 17:00,2025-11-12 07:00,2025-11-12 07:00,0,120,100
CN.SWA5..6090,IMPACT - ADDED SCOPE FOR EXP JOINT CLOSURE - CHASE WALL - STAIR #21 - 13/D - ALL LEVELS,Complete,SWA - 5,West Support Building,SUES-3 - 13-9,INTERIOR STAIR TOWER - STAIR #21 (CLEAN ROOM),,CONSTRUCTION,,INSULATED METAL PANELS,JAMES LIVELY,INTERIORS,2025-08-11 07:00,2025-08-21 17:00,2025-07-18 07:00,2025-08-18 17:00,2025-11-20 17:00,2025-11-20 17:00,2025-11-12 07:00,2025-11-12 07:00,0,100,100
CN.SWA5..6100,BERG - SCAFFOLD INSTALL FOR EJ / EXP JOINT - CHASE WALL - STAIR #21 - 13/D - ALL LEVELS,Complete,SWA - 5,West Support Building,SUES-3 - 13-9,INTERIOR STAIR TOWER - STAIR #21 (CLEAN ROOM),,CONSTRUCTION,,INSULATED METAL PANELS,JAMES LIVELY,INTERIORS,2025-08-14 07:00,2025-08-15 17:00,2025-08-14 07:00,2025-08-15 17:00,2025-11-20 17:00,2025-11-20 17:00,2025-11-12 07:00,2025-11-12 07:00,0,20,100
CN.SWA5..6110,IMPACT - SECAI STOP WORK 6/11 FOR EGRESS - STAIR #20 - 19/D - ALL LEVELS,Complete,SWA - 5,West Support Building,SUES-1 - 19-16,INTERIOR STAIR TOWER - STAIR #20,,CONSTRUCTION,,INSULATED METAL PANELS,JAMES LIVELY,INTERIORS,2024-11-05 07:00,2024-11-18 17:00,2025-06-11 07:00,2025-09-16 07:00,2025-11-20 17:00,2025-11-20 17:00,2025-11-12 07:00,2025-11-12 07:00,0,120,100
CN.SWA5..6130,SECAI -TAPE & FLOAT DRYWALL & CEILING - REMAINING - STAIR #21 - 13/D - ALL LEVELS,Complete,SWA - 5,West Support Building,SUES-3 - 13-9,INTERIOR STAIR TOWER - STAIR #21 (CLEAN ROOM),,CONSTRUCTION,,INSULATED METAL PANELS,JAMES LIVELY,INTERIORS,2025-08-19 07:00,2025-08-23 17:00,2025-08-19 07:00,2025-08-23 17:00,2025-11-20 17:00,2025-11-20 17:00,2025-11-12 07:00,2025-11-12 07:00,0,50,100
CN.SWA5..6140,EJ FIRESTOP WORK INSIDE CHASE WALL - STAIR #4 - 23/L - ALL LEVELS [/DAY],Complete,SWA - 5,West Support Building,SUWN-2 - 21-24,INTERIOR STAIR TOWER - STAIR #4 (CLEAN ROOM),,CONSTRUCTION,,INSULATED METAL PANELS,JAMES LIVELY,INTERIORS,2025-07-09 07:00,2025-07-22 17:00,2025-06-19 07:00,2025-09-11 07:00,2025-11-20 17:00,2025-11-20 17:00,2025-11-17 07:00,2025-11-17 07:00,0,120,100
CN.SWA5..6150,ADDED SCOPE FOR EXP JOINT CLOSURE - STAIR #4 - 23/L - ALL LEVELS [/DAY],Complete,SWA - 5,West Support Building,SUWN-2 - 21-24,INTERIOR STAIR TOWER - STAIR #4 (CLEAN ROOM),,CONSTRUCTION,,INSULATED METAL PANELS,JAMES LIVELY,INTERIORS,2025-07-09 07:00,2025-07-22 17:00,2025-06-19 07:00,2025-08-16 17:00,2025-11-20 17:00,2025-11-20 17:00,2025-11-17 07:00,2025-11-17 07:00,0,120,100
CN.AB.AR.8750,IMPACT - WAITING ON EJ FROM WALL TO COLUMN - SHAFT & DOOR FRONTS - ELEVATOR 01A,Complete,SWA - 5,West Support Building,FIZ 2 / SUWS 5  (GL6-1) - GL J - N - DATA CENTER 1,,ELEVATOR,CONSTRUCTION,W&W,DRYWALL,,INTERIORS,2025-06-30 11:00,2025-07-15 11:00,2025-06-30 11:00,2025-07-28 07:00,2025-11-20 17:00,2025-11-20 17:00,2025-12-01 07:00,2025-12-01 07:00,0,100,100
CN.A1.UG.1320,PH1- UNDERGROUND PLUMBING SWB1,Complete,SWB - 1,West Support Building,SUWN-1 - 18-21,L1 - Fndn Slab,,CONSTRUCTION,,Underground Plumbing - Cobb,ANDREA SOLIS,,2022-10-03 08:00,2022-10-07 08:00,2022-10-03 08:00,2022-10-07 08:00,2025-11-20 17:00,2025-11-20 17:00,2025-06-13 08:00,2025-06-13 08:00,0,40,100
CN.A1.UG.1310,PH1- UNDERGROUND ELECTRICAL SWB1,Complete,SWB - 1,West Support Building,SUWN-1 - 18-21,L1 - Fndn Slab,,CONSTRUCTION,,Underground Electrical - (By Owner),ANDREA SOLIS,,2022-09-27 08:00,2022-10-01 08:00,2022-09-19 09:51,2022-09-26 16:00,2025-11-20 17:00,2025-11-20 17:00,2025-06-13 08:00,2025-06-13 08:00,0,40,100
CN.A2.UG.1100,PH1- UNDERSLAB WATERPROOFING SWB1,Complete,SWB - 1,West Support Building,SUWN-1 - 18-21,L1 - Fndn Slab,,CONSTRUCTION,,Waterproofing - Preferred,ANDREA SOLIS,,2022-10-03 07:00,2022-10-06 09:00,2022-10-03 07:00,2022-10-06 09:00,2025-11-20 17:00,2025-11-20 17:00,2025-06-13 08:00,2025-06-13 08:00,0,32,100
CN.A2.UG.1110,PH1- WATERPROOF WALL SWB1,Complete,SWB - 1,West Support Building,SUWN-1 - 18-21,L1 - Fndn Slab,,CONSTRUCTION,,Waterproofing - Preferred,ANDREA SOLIS,,2022-10-13 12:00,2022-10-17 12:00,2022-10-13 12:00,2022-10-18 14:00,2025-11-20 17:00,2025-11-20 17:00,2025-06-13 08:00,2025-06-13 08:00,0,40,100
CN.A2.UG.1120,PH1- FRENCH DRAIN SWB1,Complete,SWB - 1,West Support Building,SUWN-1 - 18-21,L1 - Fndn Slab,,CONSTRUCTION,,Waterproofing - Preferred,ANDREA SOLIS,,2022-10-13 12:00,2022-10-17 12:00,2022-10-13 12:00,2022-10-18 14:00,2025-11-20 17:00,2025-11-20 17:00,2025-06-13 08:00,2025-06-13 08:00,0,40,100
CN.SWB1.1000,PH1- SUP - EXCAVATE PITS - SWB1,Complete,SWB - 1,West Support Building,SUWN-1 - 18-21,L1 - Fndn Slab,,CONSTRUCTION,,Excavate CIP,ANDREA SOLIS,,2022-08-10 08:00,2022-08-12 12:00,2022-08-10 08:00,2022-09-07 16:00,2025-11-20 17:00,2025-11-20 17:00,2025-06-13 08:00,2025-06-13 08:00,0,24,100
CN.SWB1.1010,PH1-FRP GRADE BEAM - SWB1,Complete,SWB - 1,West Support Building,SUWN-1 - 18-21,L1 - Fndn Slab,,CONSTRUCTION,,Pour Concrete,ANDREA SOLIS,,2022-09-27 07:00,2022-09-29 11:00,2022-09-27 07:00,2022-09-29 11:00,2025-11-20 17:00,2025-11-20 17:00,2025-06-13 08:00,2025-06-13 08:00,0,24,100
CN.SWB1.1070,PH1- FRP SLAB - SWB-1-L2 - ELECTRICAL ROOM 2(Waiting for Expansion Joint),Complete,SWB - 1,West Support Building,SUWN-1 - 18-21,L2 - SubFab Level,,CONSTRUCTION,,SOMD,CONCRETE,,2023-10-19 07:00,2023-10-21 11:00,2023-10-17 07:00,2023-10-19 12:00,2025-11-20 17:00,2025-11-20 17:00,2025-11-03 07:00,2025-11-03 07:00,0,24,100
CN.SWB1.1100,PH1- FRP SLAB - SWB-1-L3( Waiting on Expansion Joint),Complete,SWB - 1,West Support Building,SUWN-1 - 18-21,L3 / Waffle Slab Level,,CONSTRUCTION,,SOMD,CONCRETE,,2023-10-09 07:00,2023-10-11 11:00,2023-10-09 07:00,2023-10-12 11:00,2025-11-20 17:00,2025-11-20 17:00,2025-11-03 07:00,2025-11-03 07:00,0,24,100
CN.SWB1.1130,PH1- FRP SLAB - SWB-1-ROOF,Complete,SWB - 1,West Support Building,SUWN-1 - 18-21,L4 - SUP Roof - FAB Roof,,CONSTRUCTION,,SOMD,CONCRETE,SOMD / Roofing / Waterproofing,2023-08-16 07:00,2023-08-17 13:00,2023-08-16 07:00,2023-08-17 13:00,2025-11-20 17:00,2025-11-20 17:00,2025-08-26 07:00,2025-08-26 07:00,0,16,100
CN.SWB1.1030,PH1-BLACK BASE (NOW RAT SLAB) - SWB1,Complete,SWB - 1,West Support Building,SUWN-1 - 18-21,L1 - Fndn Slab,,CONSTRUCTION,,RAT SLAB,ANDREA SOLIS,,2022-10-01 08:00,2022-10-02 14:00,2022-10-01 08:00,2022-10-03 15:00,2025-11-20 17:00,2025-11-20 17:00,2025-06-13 08:00,2025-06-13 08:00,0,16,100
CN.SWB1.1020,PH1-CURE PIER CAPS - SWB1,Complete,SWB - 1,West Support Building,SUWN-1 - 18-21,L1 - Fndn Slab,,CONSTRUCTION,,Concrete Cure,ANDREA SOLIS,,2022-09-29 11:00,2022-09-29 11:00,2022-09-29 11:00,2022-09-29 11:00,2025-11-20 17:00,2025-11-20 17:00,2025-06-13 08:00,2025-06-13 08:00,0,0,100
CN.SWB1.1090,PH1- CURE SOMD - SWB-1-L2 - ELECTRICAL ROOM 2,Complete,SWB - 1,West Support Building,SUWN-1 - 18-21,L2 - SubFab Level,,CONSTRUCTION,,Concrete Cure,JAMES LEE,,2023-10-19 07:00,2023-10-21 11:00,2023-10-19 07:00,2023-10-21 12:00,2025-11-20 17:00,2025-11-20 17:00,2025-11-03 07:00,2025-11-03 07:00,0,24,100
CN.SWB1.1120,PH1- CURE SOMD - SWB-1-L3,Complete,SWB - 1,West Support Building,SUWN-1 - 18-21,L3 / Waffle Slab Level,,CONSTRUCTION,,Concrete Cure,JAMES LEE,,2023-10-13 07:00,2023-10-15 11:00,2023-10-12 20:44,2023-10-13 20:44,2025-11-20 17:00,2025-11-20 17:00,2025-11-03 07:00,2025-11-03 07:00,0,24,100
CN.SWB1.1150,PH1- CURE SOMD - SWB-1-ROOF,Complete,SWB - 1,West Support Building,SUWN-1 - 18-21,L4 - SUP Roof - FAB Roof,,CONSTRUCTION,,Concrete Cure,JAMES LEE,SOMD / Roofing / Waterproofing,2023-08-18 07:00,2023-08-20 11:00,2023-08-17 20:44,2023-08-18 20:44,2025-11-20 17:00,2025-11-20 17:00,2025-11-21 07:00,2025-11-21 07:00,0,24,100
CN.SWB1.1110,PH1- 1st FLOOR SLAB - SWB-1-L1,Complete,SWB - 1,West Support Building,SUWN-1 - 18-21,L1 - Fndn Slab,,CONSTRUCTION,,Pour Concrete,ANDREA SOLIS,,2022-10-06 09:00,2022-10-07 15:00,2022-10-06 09:00,2022-10-07 15:00,2025-11-20 17:00,2025-11-20 17:00,2025-06-13 08:00,2025-06-13 08:00,0,16,100
CN.SWB1.1220,FRP TOPPING SLAB - SWB1- GL 18-21 - L-N - L4 ROOF,Complete,SWB - 1,West Support Building,SUWN-1 - 18-21,L4 - SUP Roof - FAB Roof,,CONSTRUCTION,BAKER,TOPPING,CONCRETE,SOMD / Roofing / Waterproofing,2024-05-07 07:00,2024-05-13 17:00,2024-04-15 07:00,2024-04-18 17:00,2025-11-20 17:00,2025-11-20 17:00,2025-11-21 07:00,2025-11-21 07:00,0,40,100
CN.SWB1.1240,LAYOUT & INSTALL DOWELS - SWB-1-ROOF GL 18-21 K-N,Complete,SWB - 1,West Support Building,SUWN-1 - 18-21,L4 - SUP Roof - FAB Roof,,CONSTRUCTION,,TOPPING,JAMES LEE,SOMD / Roofing / Waterproofing,2023-11-13 07:00,2023-11-13 15:00,2023-11-13 07:00,2023-11-13 15:00,2025-11-20 17:00,2025-11-20 17:00,2025-11-21 07:00,2025-11-21 07:00,0,8,100
CN.SWB1.1040,PH1-FRP PIT WALLS - SWB1,Complete,SWB - 1,West Support Building,SUWN-1 - 18-21,L1 - Fndn Slab,,CONSTRUCTION,,Pour Concrete,ANDREA SOLIS,,2022-10-07 15:00,2022-10-14 11:00,2022-10-07 15:00,2022-10-15 14:00,2025-11-20 17:00,2025-11-20 17:00,2025-06-13 08:00,2025-06-13 08:00,0,56,100
CN.SWB1.1080,PH1-BACKFILL PIT WALLS - SWB1,Complete,SWB - 1,West Support Building,SUWN-1 - 18-21,L1 - Fndn Slab,,CONSTRUCTION,,BACKFILL,ANDREA SOLIS,,2022-10-20 09:00,2022-10-21 15:00,2022-10-20 09:00,2022-10-21 15:00,2025-11-20 17:00,2025-11-20 17:00,2025-06-13 08:00,2025-06-13 08:00,0,16,100
CN.SWB1.1060,TIER 1 ERECT PRECAST COLUMNS & BEAMS - SWB1,Complete,SWB - 1,West Support Building,SUWN-1 - 18-21,L3 / Waffle Slab Level,,CONSTRUCTION,,"SUP WEST N,M",SEAN MONK,,2023-05-01 13:00,2023-05-08 09:00,2023-05-01 13:00,2023-05-27 16:00,2025-11-20 17:00,2025-11-20 17:00,2025-06-13 08:00,2025-06-13 08:00,0,56,100
CN.SWB1.1160,PH1-ROOF LAYER PARAPET - SWB1 GL 18-21 K-N,Complete,SWB - 1,West Support Building,SUWN-1 - 18-21,L4 - SUP Roof - FAB Roof,,CONSTRUCTION,,TOPPING,JAMES LIVELY,SOMD / Roofing / Waterproofing,2023-11-14 07:00,2023-11-14 15:00,2023-11-14 07:00,2023-11-14 15:00,2025-11-20 17:00,2025-11-20 17:00,2025-12-05 17:00,2025-12-05 17:00,0,8,100
CN.SWB1.1180,PH1-FLUID APPLIED MEMBRANE ROOFING - SWB1 GL 18-21 K-N,Complete,SWB - 1,West Support Building,SUWN-1 - 18-21,L4 - SUP Roof - FAB Roof,,CONSTRUCTION,,Roofing,JAMES LIVELY,SOMD / Roofing / Waterproofing,2023-11-17 15:00,2023-11-18 13:00,2023-11-17 15:00,2023-11-18 14:00,2025-11-20 17:00,2025-11-20 17:00,2025-11-21 07:00,2025-11-21 07:00,0,8,100
CN.SWB1.1190,PH1 - CLADDING STEEL INTERIOR GL 18-21 - K LINE (AD AREA),Complete,SWB - 1,West Support Building,SUWN-1 - 18-21,EXTERIOR SKIN,,CONSTRUCTION,,INSULATED METAL PANELS,JAMES LIVELY,,2024-03-04 15:00,2024-03-11 09:00,2024-03-04 07:00,2024-03-20 17:00,2025-11-20 17:00,2025-11-20 17:00,2025-11-21 07:00,2025-11-21 07:00,0,44,100
CN.SWB1.1210,PH1 - INSTALL INSULATED METAL PANEL MODULES - GL 19.5-21 - L LINE (DS AREA),Complete,SWB - 1,West Support Building,SUWN-1 - 18-21,EXTERIOR SKIN,,CONSTRUCTION,KOVACH,INSULATED METAL PANELS,JAMES LIVELY,,2024-06-22 07:00,2024-07-01 17:00,2024-06-19 07:00,2024-06-27 17:00,2025-11-20 17:00,2025-11-20 17:00,2025-11-21 07:00,2025-11-21 07:00,0,90,100
CN.SWB1.1170,PH1 - CLADDING STEEL  - SWB-1 N Line [SUP EXTERIOR WALL],Complete,SWB - 1,West Support Building,SUWN-1 - 18-21,EXTERIOR SKIN,,CONSTRUCTION,,INSULATED METAL PANELS,JAMES LIVELY,,2023-10-20 09:00,2023-10-27 15:00,2023-10-20 09:00,2023-11-02 09:00,2025-11-20 17:00,2025-11-20 17:00,2025-11-21 07:00,2025-11-21 07:00,0,56,100
CN.SWB1.1200,INSTALL INSULATED METAL PANEL MODULES(LOADING PLATFORM ) - GL 18-19.5 -N LINE [SUP EXTERIOR WALL],Complete,SWB - 1,West Support Building,SUWN-1 - 18-21,EXTERIOR SKIN,,CONSTRUCTION,KOVACH,INSULATED METAL PANELS,JAMES LIVELY,,2024-11-14 07:00,2024-11-22 17:00,2024-12-05 07:00,2025-03-28 16:00,2025-11-20 17:00,2025-11-20 17:00,2025-11-21 07:00,2025-11-21 07:00,0,60,100
CN.SWB1.1140,PH1- AD STEEL FRAME INSTALL - SWB-1 fab side,Complete,SWB - 1,West Support Building,SUWN-1 - 18-21,DS/AD,,CONSTRUCTION,,Steel Erection,SEAN MONK,,2023-08-28 07:00,2023-09-02 15:00,2023-08-24 07:00,2023-09-08 09:00,2025-11-20 17:00,2025-11-20 17:00,2025-06-13 08:00,2025-06-13 08:00,0,48,100
CN.AB.AR.1050,METAL STUD FRAMING (2hr) - SWB-1- L1- H2 PURIFER ROOM ( Mezzanine concrete to be poured),Complete,SWB - 1,West Support Building,SUWN-1 - 18-21,L1 - Fndn Slab,H2 PURIFIER RM,CONSTRUCTION,BERG,TBD Architectural Finishes,AMBER CARO,INTERIORS,2023-08-31 07:00,2023-09-05 15:00,2023-08-31 07:00,2023-09-06 16:00,2025-11-20 17:00,2025-11-20 17:00,2025-11-03 07:00,2025-11-03 07:00,0,48,100
CN.AB.AR.1520,SET/ FIX ANCHOR BOLTS - SWB-1 - L1,Complete,SWB - 1,West Support Building,SUWN-1 - 18-21,L1 - Fndn Slab,,CONSTRUCTION,,TBD Architectural Finishes,JAMES LEE,INTERIORS,2023-10-16 07:00,2023-10-17 13:00,2023-09-28 09:00,2023-10-05 13:00,2025-11-20 17:00,2025-11-20 17:00,2025-08-26 07:00,2025-08-26 07:00,0,16,100
CN.AB.AR.3170,MEP ROUGH IN & INSPECTION (by SECAI) - SWB-1- MCC RM & I/O RM GL 18-21 K-N,Complete,SWB - 1,West Support Building,SUWN-1 - 18-21,L1 - Fndn Slab,H2 PURIFIER RM,CONSTRUCTION,,Owner & Design Team,AMBER CARO,,2023-11-30 07:00,2023-12-03 17:00,2023-11-30 07:00,2023-11-30 11:00,2025-11-20 17:00,2025-11-20 17:00,2025-11-03 07:00,2025-11-03 07:00,0,40,100
CN.AB.AR.3180,TAPE & FINISH DRYWALL- H2 PURIFER ROOM GL 18-21 K-N,Complete,SWB - 1,West Support Building,SUWN-1 - 18-21,L1 - Fndn Slab,H2 PURIFIER RM,CONSTRUCTION,CHERRY COATING,DRYWALL,AMBER CARO,INTERIORS,2024-03-20 07:00,2024-03-27 17:00,2024-03-20 07:00,2024-03-26 17:00,2025-11-20 17:00,2025-11-20 17:00,2025-12-04 17:00,2025-12-04 17:00,0,50,100
CN.AB.AR.3200,CRC (SECAI) - SWB-1-L1- GL 18-21 H2 PURIFIER RM,Complete,SWB - 1,West Support Building,SUWN-1 - 18-21,L1 - Fndn Slab,H2 PURIFIER RM,CONSTRUCTION,,TBD Architectural Finishes,JAMES LEE,INTERIORS,2023-10-09 07:00,2023-10-12 17:00,2023-09-29 07:00,2023-10-13 09:00,2025-11-20 17:00,2025-11-20 17:00,2025-12-04 17:00,2025-12-04 17:00,0,40,100
CN.AB.AR.3220,FLOOR STRIPING PAINT - SWB-1- MCC RM & I/O RM,Not Started,SWB - 1,West Support Building,SUWN-1 - 18-21,L1 - Fndn Slab,H2 PURIFIER RM,CONSTRUCTION,FLOOR STRIPING PAINT,TBD Architectural Finishes,AMBER CARO,INTERIORS,2025-11-21 07:00,2025-11-21 17:00,,,2025-11-21 07:00,2025-11-21 17:00,2025-12-05 07:00,2025-12-05 17:00,10,10,0
CN.AB.AR.3190,FINISH PAINT - SWB-1- H2 PURIFER ROOM GL 18-21 K-N,Not Started,SWB - 1,West Support Building,SUWN-1 - 18-21,L1 - Fndn Slab,H2 PURIFIER RM,CONSTRUCTION,FINISH PAINT,TBD Architectural Finishes,JAMES LEE,INTERIORS,2025-11-21 07:00,2025-11-21 07:00,,,2025-11-21 07:00,2025-11-21 07:00,2025-12-04 17:00,2025-12-04 17:00,0,0,0
CN.SWB1.1250,INSTALL METAL STAIRS - STAIR #3 - 18/L - ALL LEVELS,Complete,SWB - 1,West Support Building,SUWN-1 - 18-21,INTERIOR STAIR TOWER - STAIR #3,,CONSTRUCTION,PATRIOT,INSULATED METAL PANELS,JAMES LIVELY,INTERIORS,2024-02-05 07:00,2024-02-20 17:00,2024-01-28 07:00,2024-04-30 17:00,2025-11-20 17:00,2025-11-20 17:00,2025-11-03 07:00,2025-11-03 07:00,0,120,100
CN.SWB1.1260,DS STEEL SPRAY FIREPROOFING SFRM - SWB-1 - L4&L5 CEILING GL 18-21/J-L,Complete,SWB - 1,West Support Building,SUWN-1 - 18-21,L4 - SUP Roof - FAB Roof,DS/AD INTERIORS,CONSTRUCTION,ROLLING PLAINS,Fireproofing,HOON WOO,,2024-08-27 07:00,2024-09-10 17:00,2024-08-27 07:00,2024-09-07 17:00,2025-11-20 17:00,2025-11-20 17:00,2025-12-05 17:00,2025-12-05 17:00,0,100,100
CN.SWB1.1270,PH1- MEP EQPT PADS - PLACE/ STRIP PATCH - SWB-1-ROOF GL 18-21 K-N,Complete,SWB - 1,West Support Building,SUWN-1 - 18-21,L4 - SUP Roof - FAB Roof,,CONSTRUCTION,,OAC/ MECH PADS,JAMES LIVELY,SOMD / Roofing / Waterproofing,2024-02-05 07:00,2024-02-05 15:00,2023-12-22 13:51,2023-12-23 00:00,2025-11-20 17:00,2025-11-20 17:00,2025-11-21 07:00,2025-11-21 07:00,0,8,100
CN.SWB1.1280,PH1- DECKING GL 18 - 19 - SWB-1-ROOF,Complete,SWB - 1,West Support Building,SUWN-1 - 18-21,L4 - SUP Roof - FAB Roof,,CONSTRUCTION,,Decking & Detail,SEAN MONK,SOMD / Roofing / Waterproofing,2023-08-10 07:00,2023-08-11 13:00,2023-08-10 07:00,2023-08-11 13:00,2025-11-20 17:00,2025-11-20 17:00,2025-06-13 08:00,2025-06-13 08:00,0,16,100
CN.SWB1.1290,PH1- DECKING GL 18 - 19- SWB-1-L3,Complete,SWB - 1,West Support Building,SUWN-1 - 18-21,L3 / Waffle Slab Level,,CONSTRUCTION,,Decking & Detail,SEAN MONK,,2023-08-16 07:00,2023-08-17 13:00,2023-08-16 07:00,2023-08-17 13:00,2025-11-20 17:00,2025-11-20 17:00,2025-11-03 07:00,2025-11-03 07:00,0,16,100
CN.SWB1.1300,PH1- DECKING GL 18 - 19 - SWB-1-L2 -,Complete,SWB - 1,West Support Building,SUWN-1 - 18-21,L2 - SubFab Level,,CONSTRUCTION,,Decking & Detail,SEAN MONK,,2023-08-14 11:00,2023-08-15 17:00,2023-08-14 11:00,2023-08-15 17:00,2025-11-20 17:00,2025-11-20 17:00,2025-11-03 07:00,2025-11-03 07:00,0,16,100
CN.SEA1.2600,PH1- MEP EQPT PADS (FORM REBAR - BLOCK)- SWB-1-ROOF GL 18-21 K-N,Complete,SWB - 1,West Support Building,SUWN-1 - 18-21,L4 - SUP Roof - FAB Roof,,CONSTRUCTION,,OAC/ MECH PADS,CONCRETE,SOMD / Roofing / Waterproofing,2023-11-19 13:00,2023-11-20 11:00,2023-11-19 13:00,2023-11-20 12:00,2025-11-20 17:00,2025-11-20 17:00,2025-11-21 07:00,2025-11-21 07:00,0,8,100
CN.SEA3.1390,PH1-CIP WALL (DS)- SWB-1 GL 18-21 K-N,Complete,SWB - 1,West Support Building,SUWN-1 - 18-21,L4 - SUP Roof - FAB Roof,,CONSTRUCTION,,CIP WALL,CONCRETE,SOMD / Roofing / Waterproofing,2023-11-16 07:00,2023-11-16 15:00,2023-11-16 07:00,2023-11-16 15:00,2025-11-20 17:00,2025-11-20 17:00,2025-11-21 07:00,2025-11-21 07:00,0,8,100
CN.SWB1.1320,PH1- WATERPROOFING - SWB-1-L2 - ELECTRICAL ROOM 2 GL 18-21 K-N,Complete,SWB - 1,West Support Building,SUWN-1 - 18-21,L2 - SubFab Level,,CONSTRUCTION,,Waterproofing - Preferred,JAMES LIVELY,SOMD / Roofing / Waterproofing,2024-01-09 10:00,2024-01-11 12:00,2024-01-09 07:00,2024-01-10 13:00,2025-11-20 17:00,2025-11-20 17:00,2025-12-05 17:00,2025-12-05 17:00,0,16,100
CN.SWB1.1360,PH1- TOPPING SLAB w TRENCH & ANGLE EMBEDS- SWB-1-L1 GL 18-21 K-N,Complete,SWB - 1,West Support Building,SUWN-1 - 18-21,L1 - Fndn Slab,H2 PURIFIER RM,CONSTRUCTION,,TOPPING,CONCRETE,SOMD / Roofing / Waterproofing,2024-02-03 14:00,2024-02-06 08:00,2024-01-21 08:00,2024-01-25 11:00,2025-11-20 17:00,2025-11-20 17:00,2025-12-05 07:00,2025-12-05 07:00,0,24,100
CN.SWB1.1370,PH1- DS/AD DECKING & DETAILING GL 18 - 21 J-K - DS/ AD SWB-1 L6,Complete,SWB - 1,West Support Building,SUWN-1 - 18-21,DS/AD,,CONSTRUCTION,,Decking & Detail,SEAN MONK,,2023-12-11 07:00,2023-12-15 17:00,2023-12-11 07:00,2023-12-12 17:00,2025-11-20 17:00,2025-11-20 17:00,2025-06-13 08:00,2025-06-13 08:00,0,40,100
CN.SWB1.1380,PH1- DS/AD FRP SLAB - DS/ AD SWB-1 - L4/E  GL 18 - 21 J-K,Complete,SWB - 1,West Support Building,SUWN-1 - 18-21,DS/AD,,CONSTRUCTION,,SOMD,CONCRETE,,2024-01-22 07:00,2024-01-24 11:00,2024-01-21 07:00,2024-01-23 15:00,2025-11-20 17:00,2025-11-20 17:00,2025-06-13 08:00,2025-06-13 08:00,0,24,100
CN.SWB1.1390,AD WATERPROOFING - SWB1 - GL 18-21 - J-K - L4/E,Complete,SWB - 1,West Support Building,SUWN-1 - 18-21,DS/AD,,CONSTRUCTION,BRAZOS,Waterproofing - Preferred,JAMES LIVELY,,2024-06-28 07:00,2024-07-17 17:00,2024-06-26 07:00,2024-07-01 17:00,2025-11-20 17:00,2025-11-20 17:00,2025-11-25 07:00,2025-11-25 07:00,0,110,100
CN.SWB1.1400,AD TOPPING SLAB - SWB1 - GL 18-21 - J-K - L4/E,Complete,SWB - 1,West Support Building,SUWN-1 - 18-21,DS/AD,,CONSTRUCTION,BAKER,Roofing,CONCRETE,,2024-07-26 07:00,2024-07-31 17:00,2024-07-01 07:00,2024-07-02 17:00,2025-11-20 17:00,2025-11-20 17:00,2025-12-05 17:00,2025-12-05 17:00,0,40,100
TIER 21.1060,TIER 2 GROUT PRECAST COLUMNS & BEAMS - SWB1,Complete,SWB - 1,West Support Building,SUWN-1 - 18-21,L4 - SUP Roof - FAB Roof,,CONSTRUCTION,,"SUP WEST N,M",SEAN MONK,,2023-07-24 07:00,2023-07-31 12:00,2023-07-10 07:00,2023-08-03 12:00,2025-11-20 17:00,2025-11-20 17:00,2025-06-13 08:00,2025-06-13 08:00,0,75,100
CN.SWB1.1410,PH1- DECKING GL 19 - 20 - SWB-1-L2 -,Complete,SWB - 1,West Support Building,SUWN-1 - 18-21,L2 - SubFab Level,,CONSTRUCTION,,Decking & Detail,SEAN MONK,,2023-10-13 07:00,2023-10-14 13:00,2023-10-13 07:00,2023-10-16 10:00,2025-11-20 17:00,2025-11-20 17:00,2025-11-03 07:00,2025-11-03 07:00,0,16,100
CN.SWB1.1430,PH1- DECKING GL 19 - 20- SWB-1-L3,Complete,SWB - 1,West Support Building,SUWN-1 - 18-21,L3 / Waffle Slab Level,,CONSTRUCTION,,Decking & Detail,SEAN MONK,,2023-08-17 13:00,2023-08-19 09:00,2023-08-17 13:00,2023-08-19 10:00,2025-11-20 17:00,2025-11-20 17:00,2025-11-03 07:00,2025-11-03 07:00,0,16,100
CN.SWB1.1450,PH1- DECKING GL 19 - 20 - SWB-1-ROOF,Complete,SWB - 1,West Support Building,SUWN-1 - 18-21,L4 - SUP Roof - FAB Roof,,CONSTRUCTION,,Decking & Detail,SEAN MONK,SOMD / Roofing / Waterproofing,2023-08-11 13:00,2023-08-13 09:00,2023-08-11 13:00,2023-08-14 11:00,2025-11-20 17:00,2025-11-20 17:00,2025-08-26 07:00,2025-08-26 07:00,0,16,100
CN.SWB1.1460,PH1- DECKING GL 20 - 21 - SWB-1-ROOF,Complete,SWB - 1,West Support Building,SUWN-1 - 18-21,L4 - SUP Roof - FAB Roof,,CONSTRUCTION,,Decking & Detail,SEAN MONK,SOMD / Roofing / Waterproofing,2023-08-15 07:00,2023-08-16 13:00,2023-08-15 07:00,2023-08-16 13:00,2025-11-20 17:00,2025-11-20 17:00,2025-08-26 07:00,2025-08-26 07:00,0,16,100
CN.SWB1.1470,PH1- DS/AD DECKING & DECKING GL 18 - 21 J-K DS/ AD SWB-1  L4&L4/E,Complete,SWB - 1,West Support Building,SUWN-1 - 18-21,DS/AD,,CONSTRUCTION,,Decking & Detail,SEAN MONK,,2024-01-17 07:00,2024-01-21 15:00,2024-01-16 07:00,2024-01-20 09:00,2025-11-20 17:00,2025-11-20 17:00,2025-06-13 08:00,2025-06-13 08:00,0,48,100
CN.AB.AR.4540,DRYWALL 2 SIDE - SWB-1- H2 PURIFER ROOM GL 18-21 K-N,Complete,SWB - 1,West Support Building,SUWN-1 - 18-21,L1 - Fndn Slab,H2 PURIFIER RM,CONSTRUCTION,BERG,DRYWALL,AMBER CARO,INTERIORS,2024-03-11 07:00,2024-03-19 17:00,2024-03-03 07:00,2024-03-14 17:00,2025-11-20 17:00,2025-11-20 17:00,2025-12-04 17:00,2025-12-04 17:00,0,40,100
CN.AB.AR.4550,DRYWALL & INSULATION (1 side) (INT) - SWB-1 - L1 - H2 PURIFER ROOM,Complete,SWB - 1,West Support Building,SUWN-1 - 18-21,L1 - Fndn Slab,H2 PURIFIER RM,CONSTRUCTION,,DRYWALL,AMBER CARO,INTERIORS,2023-10-16 07:00,2023-10-19 17:00,2023-10-16 07:00,2023-10-20 17:00,2025-11-20 17:00,2025-11-20 17:00,2025-11-03 07:00,2025-11-03 07:00,0,40,100
CN.SWB1.1490,PH1- DS STEEL FRAME INSTALL - SWB-1 Comeback Sup Side,Complete,SWB - 1,West Support Building,SUWN-1 - 18-21,DS/AD,,CONSTRUCTION,,Steel Erection,SEAN MONK,,2023-09-18 07:00,2023-09-22 09:00,2023-09-15 07:00,2023-09-19 09:00,2025-11-20 17:00,2025-11-20 17:00,2025-06-13 08:00,2025-06-13 08:00,0,32,100
CN.SWB1.1500,SECAI / ABR CIVIL/ ROAD WORK - SWB1,Complete,SWB - 1,West Support Building,SUWN-1 - 18-21,L3 / Waffle Slab Level,,CONSTRUCTION,,"SUP WEST N,M",SEAN MONK,,2023-03-13 09:00,2023-03-24 13:00,2023-03-13 09:00,2023-03-25 16:00,2025-11-20 17:00,2025-11-20 17:00,2025-06-13 08:00,2025-06-13 08:00,0,104,100
CN.SWB1.1510,PH1- EXTERIOR CURBS - SWB-1-L1,Complete,SWB - 1,West Support Building,SUWN-1 - 18-21,L1 - Fndn Slab,H2 PURIFIER RM,CONSTRUCTION,,Pour Concrete,JAMES LEE,SOMD / Roofing / Waterproofing,2023-10-24 07:00,2023-10-28 09:00,2023-10-24 07:00,2023-10-28 10:00,2025-11-20 17:00,2025-11-20 17:00,2025-08-26 07:00,2025-08-26 07:00,0,32,100
CN.SWB1.1520,PH1- MEP PADS - SWB-1-L1- MCC RM & I/O RM GL 18-21 K-N,Complete,SWB - 1,West Support Building,SUWN-1 - 18-21,L1 - Fndn Slab,H2 PURIFIER RM,CONSTRUCTION,,Pour Concrete,JAMES LEE,SOMD / Roofing / Waterproofing,2024-06-07 07:00,2024-06-13 17:00,2024-02-13 07:00,2024-02-23 17:00,2025-11-20 17:00,2025-11-20 17:00,2025-12-05 07:00,2025-12-05 07:00,0,40,100
CN.SWB1.1530,PH1- INSTALL EQUIPMENT PLATFORM - SWB-1- MCC RM & I/O RM GL 18-21 K-N,Complete,SWB - 1,West Support Building,SUWN-1 - 18-21,L1 - Fndn Slab,H2 PURIFIER RM,CONSTRUCTION,BRAZOS,TBD Architectural Finishes,JAMES LIVELY,INTERIORS,2024-11-04 07:00,2024-11-11 17:00,2024-11-02 07:00,2024-11-08 17:00,2025-11-20 17:00,2025-11-20 17:00,2025-12-05 07:00,2025-12-05 07:00,0,50,100
CN.SWB1.1050,METAL STUD FRAMING (2hr) - SWB-1-L2 - ELECTRICAL ROOM 2 GL 18-21 K-N,Complete,SWB - 1,West Support Building,SUWN-1 - 18-21,L2 - SubFab Level,ELECTRIC RM 2,CONSTRUCTION,BERG,TBD Architectural Finishes,AMBER CARO,INTERIORS,2024-01-02 09:00,2024-01-04 16:00,2024-01-02 07:00,2024-01-05 11:00,2025-11-20 17:00,2025-11-20 17:00,2025-11-24 07:00,2025-11-24 07:00,0,24,100
CN.SWB1.3170,MEP ROUGH IN & INSPECTION (by SECAI) - SWB-1-L2 - ELECTRICAL ROOM 2 GL 18-21 K-N,Complete,SWB - 1,West Support Building,SUWN-1 - 18-21,L2 - SubFab Level,ELECTRIC RM 2,CONSTRUCTION,,TBD Architectural Finishes,AMBER CARO,,2024-01-05 11:00,2024-01-10 16:00,2024-01-05 11:00,2024-01-09 15:00,2025-11-20 17:00,2025-11-20 17:00,2025-11-24 07:00,2025-11-24 07:00,0,40,100
CN.SWB1.3180,TAPE & FINISH DRYWALL - SWB-1-L2 - ELECTRICAL ROOM 2 GL 18-21 K-N,Complete,SWB - 1,West Support Building,SUWN-1 - 18-21,L2 - SubFab Level,ELECTRIC RM 2,CONSTRUCTION,CHERRY COATING,DRYWALL,AMBER CARO,INTERIORS,2024-04-15 07:00,2024-04-19 17:00,2024-04-09 07:00,2024-05-04 17:00,2025-11-20 17:00,2025-11-20 17:00,2025-11-24 07:00,2025-11-24 07:00,0,50,100
CN.SWB1.3230,INSTALL WALL PROTECTION - IT/SECURITY ROOM 3 & F/A ROOM 3 - GL 18-19 - L-M - L2,Not Started,SWB - 1,West Support Building,SUWN-1 - 18-21,L2 - SubFab Level,ELECTRIC RM 2,CONSTRUCTION,BERNCO,TBD Architectural Finishes,JAMES LEE,INTERIORS,2025-11-21 07:00,2025-11-25 17:00,,,2025-11-21 07:00,2025-11-25 17:00,2025-12-03 07:00,2025-12-05 17:00,30,30,0
CN.SWB1.3190,FINISH PAINT - SWB-1-L2 - ELECTRICAL ROOM 2 GL 18-21 K-N,Not Started,SWB - 1,West Support Building,SUWN-1 - 18-21,L2 - SubFab Level,ELECTRIC RM 2,CONSTRUCTION,FINISH PAINT,TBD Architectural Finishes,JAMES LEE,INTERIORS,2025-11-21 07:00,2025-11-21 17:00,,,2025-11-21 07:00,2025-11-21 17:00,2025-12-05 07:00,2025-12-05 17:00,10,10,0
CN.SWB1.4540,DRYWALL 2 SIDE - SWB-1-L2 - ELECTRICAL ROOM 2 GL 18-21 K-N,Complete,SWB - 1,West Support Building,SUWN-1 - 18-21,L2 - SubFab Level,ELECTRIC RM 2,CONSTRUCTION,,DRYWALL,AMBER CARO,INTERIORS,2024-03-18 07:00,2024-03-22 17:00,2024-03-18 07:00,2024-03-26 17:00,2025-11-20 17:00,2025-11-20 17:00,2025-11-24 07:00,2025-11-24 07:00,0,40,100
CN.SWB1.4550,DRYWALL & INSULATION (1 side) (INT) - SWB-1 - L2 - ELECTRICAL ROOM 2 GL 18-21 K-N,Complete,SWB - 1,West Support Building,SUWN-1 - 18-21,L2 - SubFab Level,ELECTRIC RM 2,CONSTRUCTION,,DRYWALL,AMBER CARO,INTERIORS,2024-01-10 07:00,2024-01-14 09:00,2024-01-09 15:00,2024-01-12 17:00,2025-11-20 17:00,2025-11-20 17:00,2025-11-24 07:00,2025-11-24 07:00,0,32,100
CN.SWB1..1050,METAL STUD FRAMING (2hr) - SWB-1 - ELECTRICAL ROOM 1 SOUTH GL 18-21 K-N,Complete,SWB - 1,West Support Building,SUWN-1 - 18-21,L3 / Waffle Slab Level,ELECTRIC RM 1,CONSTRUCTION,BERG,TBD Architectural Finishes,AMBER CARO,INTERIORS,2024-03-23 07:00,2024-03-27 15:00,2024-03-07 00:00,2024-03-14 00:00,2025-11-21 07:00,2025-11-21 07:00,2025-11-13 07:00,2025-11-13 07:00,0,48,100
CN.SWB1..3170,MEP ROUGH IN & INSPECTION (by SECAI) - SWB-1 - ELECTRICAL ROOM 1 SOUTH GL 18-21 K-N,Complete,SWB - 1,West Support Building,SUWN-1 - 18-21,L3 / Waffle Slab Level,ELECTRIC RM 1,CONSTRUCTION,SECAI,Owner & Design Team,AMBER CARO,,2024-03-01 07:00,2024-03-07 17:00,2024-03-01 07:00,2024-03-14 17:00,2025-11-21 07:00,2025-11-21 07:00,2025-11-13 07:00,2025-11-13 07:00,0,50,100
CN.SWB1..3180,TAPE & FINISH DRYWALL - SWB-1 - ELECTRICAL ROOM 1 SOUTH GL 18-21 K-N,Not Started,SWB - 1,West Support Building,SUWN-1 - 18-21,L3 / Waffle Slab Level,ELECTRIC RM 1,CONSTRUCTION,CHERRY COATING,DRYWALL,AMBER CARO,INTERIORS,2025-12-03 07:00,2025-12-09 17:00,,,2025-12-03 07:00,2025-12-09 17:00,2025-11-20 07:00,2025-11-26 17:00,50,50,0
CN.SWB1..3190,FINISH PAINT - SWB-1 - ELECTRICAL ROOM 1 SOUTH GL 18-21 K-N,Not Started,SWB - 1,West Support Building,SUWN-1 - 18-21,L3 / Waffle Slab Level,ELECTRIC RM 1,CONSTRUCTION,FINISH PAINT,TBD Architectural Finishes,JAMES LEE,INTERIORS,2025-12-10 07:00,2025-12-16 17:00,,,2025-12-10 07:00,2025-12-16 17:00,2025-12-01 07:00,2025-12-05 17:00,50,50,0
CN.SWB1..4540,DRYWALL 2 SIDE - SWB-1 - ELECTRICAL ROOM 1 SOUTH GL 18-21 K-N,Not Started,SWB - 1,West Support Building,SUWN-1 - 18-21,L3 / Waffle Slab Level,ELECTRIC RM 1,CONSTRUCTION,BERG,DRYWALL,AMBER CARO,INTERIORS,2025-11-24 07:00,2025-12-02 17:00,,,2025-11-24 07:00,2025-12-02 17:00,2025-11-13 07:00,2025-11-19 17:00,50,50,0
CN.SWB1..4550,DRYWALL & INSULATION (1 side) (INT) - SWB-1 - L3 - ELECTRICAL ROOM 1 SOUTH GL 18-21 K-N,Complete,SWB - 1,West Support Building,SUWN-1 - 18-21,L3 / Waffle Slab Level,ELECTRIC RM 1,CONSTRUCTION,BERG,DRYWALL,AMBER CARO,INTERIORS,2024-04-01 13:00,2024-04-05 13:00,2024-03-15 07:00,2024-07-02 17:00,2025-11-21 07:00,2025-11-21 07:00,2025-11-13 07:00,2025-11-13 07:00,0,40,100
SUWPIT12-20-1,PIT DECKING - SWB-1 - L1 - GL 12-20 GL 12 L-N,Complete,SWB - 1,West Support Building,SUWS-1 - 18-15,L1 - Fndn Slab,,CONSTRUCTION,,Decking & Detail,SEAN MONK,,2024-04-01 15:00,2024-04-04 17:00,2024-02-09 15:00,2024-02-11 15:00,2025-11-20 17:00,2025-11-20 17:00,2025-12-04 17:00,2025-12-04 17:00,0,32,100
SUWPIT18-19,ADDED SOUTH PIT PLATFORM / RAMP STEEL DETAIL & INSTALL - SWB-1 - L1 - GL 17-15 L-N,Complete,SWB - 1,West Support Building,SUWS-1 - 18-15,L1 - Fndn Slab,,CONSTRUCTION,,Decking & Detail,SEAN MONK,,2024-01-23 13:00,2024-02-01 13:00,2024-01-23 13:00,2024-02-08 17:00,2025-11-20 17:00,2025-11-20 17:00,2025-12-04 17:00,2025-12-04 17:00,0,70,100
SUWPIT12-20-2,FRP SLAB - SWB-1-L1 - PIT - GL 12-20 L-N,Complete,SWB - 1,West Support Building,SUWS-1 - 18-15,L1 - Fndn Slab,,CONSTRUCTION,,SOMD,CONCRETE,SOMD / Roofing / Waterproofing,2024-04-08 07:00,2024-04-15 08:00,2024-02-12 08:00,2024-02-13 09:00,2025-11-20 17:00,2025-11-20 17:00,2025-12-04 17:00,2025-12-04 17:00,0,31,100
CN.SWB1.1550,IMPACT - DRB-01 ADDITIONAL BEAMS BETWEEN FAB AND AD GL 18 - 21 ROOF,Complete,SWB - 1,,SUWN-1 - 18-21,DS/AD,,CONSTRUCTION,,Decking & Detail,,,2023-10-30 07:00,2023-11-02 13:00,2023-11-08 07:00,2023-11-09 13:00,2025-11-20 17:00,2025-11-20 17:00,2025-06-13 08:00,2025-06-13 08:00,0,16,100
SEC.AR.4530,SECAI - MEP PIPE RACK INSTALL AREA B DS SIDE - SWB-1 - L4 GL 18-21 K-N,Complete,SWB - 1,East Support Building,SUWN-1 - 18-21,L4 - SUP Roof - FAB Roof,,CONSTRUCTION,SECAI,Roofing,,INTERIORS,2023-12-28 07:00,2023-12-28 17:00,2023-12-28 07:00,2023-12-28 17:00,2025-11-20 17:00,2025-11-20 17:00,2025-12-05 17:00,2025-12-05 17:00,0,10,100
CN.SWB1.4560,PH1 - CLADDING STEEL  EXTERIOR  - SWB-1 L LINE (DS AREA) GL 18-21,Complete,SWB - 1,West Support Building,SUWN-1 - 18-21,EXTERIOR SKIN,,CONSTRUCTION,,INSULATED METAL PANELS,JAMES LIVELY,,2024-02-05 07:00,2024-02-15 13:00,2024-02-01 07:00,2024-02-09 16:00,2025-11-20 17:00,2025-11-20 17:00,2025-11-21 07:00,2025-11-21 07:00,0,96,100
EMB1021,"IMPACT - Missing Precast Embeds (2) L19 and L20 Level 2, 3, & 4 (#21)",Complete,SWB - 1,West Support Building,SUWN-1 - 18-21,DS/AD,,CONSTRUCTION,,Steel Erection,SEAN MONK,,2023-09-16 08:00,2023-09-17 14:00,2023-09-09 08:00,2023-09-10 08:00,2025-11-20 17:00,2025-11-20 17:00,2025-06-13 08:00,2025-06-13 08:00,0,16,100
EMB1002,IMPACT - Missing Precast Embed Between GL19 L18 and L19 Level 4 (#02),Complete,SWB - 1,West Support Building,SUWN-1 - 18-21,DS/AD,,CONSTRUCTION,,Steel Erection,SEAN MONK,,2023-09-16 08:00,2023-09-17 14:00,2023-09-11 08:00,2023-09-12 16:00,2025-11-20 17:00,2025-11-20 17:00,2025-06-13 08:00,2025-06-13 08:00,0,16,100
ANC2000,IMPACT - Missing Anchor Rods GL L18 (#2000),Complete,SWB - 1,West Support Building,SUWN-1 - 18-21,DS/AD,,CONSTRUCTION,,Steel Erection,SEAN MONK,,2023-09-16 08:00,2023-09-17 14:00,2023-09-13 08:00,2023-09-14 16:00,2025-11-20 17:00,2025-11-20 17:00,2025-06-13 08:00,2025-06-13 08:00,0,16,100
CN.SWB1.4570,PH1- DS/AD DECKING & DETAILING GL 18 - 21 - DS/ AD SWB-1 L2,Complete,SWB - 1,West Support Building,SUWN-1 - 18-21,DS/AD,,CONSTRUCTION,,Decking & Detail,SEAN MONK,,2023-09-16 08:00,2023-09-21 16:00,2023-09-20 08:00,2023-09-25 17:00,2025-11-20 17:00,2025-11-20 17:00,2025-11-21 07:00,2025-11-21 07:00,0,48,100
CN.SWB1.4580,PH1- DS/AD FRP SLAB - SWB-1  L3  GL 18 - 21 J-K,Complete,SWB - 1,West Support Building,SUWN-1 - 18-21,DS/AD,,CONSTRUCTION,,SOMD,CONCRETE,,2023-12-07 07:00,2023-12-14 11:00,2023-12-07 07:00,2023-12-08 15:00,2025-11-20 17:00,2025-11-20 17:00,2025-12-05 17:00,2025-12-05 17:00,0,64,100
CN.SWB1.4590,AD STEEL PAINT FIREPROOFING IFRM - SWB-1 - GL 18-21 - J-K - L2-CEILING,Complete,SWB - 1,West Support Building,SUWN-1 - 18-21,DS/AD,,CONSTRUCTION,ROLLING PLAINS,Fireproofing,HOON WOO,,2024-07-18 07:00,2024-07-25 17:00,2024-07-08 07:00,2024-07-15 17:00,2025-11-20 17:00,2025-11-20 17:00,2025-12-05 17:00,2025-12-05 17:00,0,60,100
CN.SWB1.1222,METAL STUD FRAMING (2hr)- SWB1- GL 18-21 - K LINE - L1,Complete,SWB - 1,West Support Building,SUWN-1 - 18-21,L1 - Fndn Slab,DS/AD INTERIORS,CONSTRUCTION,BERG,TBD Architectural Finishes,FIZ DATA CENTER,INTERIORS,2023-11-27 15:00,2023-12-03 13:00,2023-12-04 15:00,2023-12-06 16:00,2025-11-20 17:00,2025-11-20 17:00,2025-11-21 07:00,2025-11-21 07:00,0,48,100
CN.SWB1.1302,TAPE & FINISH DRYWALL- SWB1- GL 18-21  - K LINE -  L1,Complete,SWB - 1,West Support Building,SUWN-1 - 18-21,L1 - Fndn Slab,DS/AD INTERIORS,CONSTRUCTION,CHERRY COATING,DRYWALL,FIZ DATA CENTER,INTERIORS,2024-09-20 07:00,2024-09-27 17:00,2024-08-22 07:00,2024-08-26 17:00,2025-11-20 17:00,2025-11-20 17:00,2025-12-05 17:00,2025-12-05 17:00,0,50,100
CN.SWB1.1322,PRIMER & PAINT DRYWALL -  GL 18-21 -  K LINE - L1,Complete,SWB - 1,West Support Building,SUWN-1 - 18-21,L1 - Fndn Slab,DS/AD INTERIORS,CONSTRUCTION,FINISH PAINT,TBD Architectural Finishes,FIZ DATA CENTER,INTERIORS,2024-10-21 07:00,2024-10-24 17:00,2024-10-19 07:00,2024-10-22 17:00,2025-11-20 17:00,2025-11-20 17:00,2025-12-05 17:00,2025-12-05 17:00,0,30,100
CN.SWB1.1282,DRYWALL 2 SIDE - SWB1- GL 18-21 - K LINE - L1,Complete,SWB - 1,West Support Building,SUWN-1 - 18-21,L1 - Fndn Slab,DS/AD INTERIORS,CONSTRUCTION,,DRYWALL,FIZ DATA CENTER,INTERIORS,2024-03-09 08:00,2024-03-17 08:00,2024-03-01 00:00,2024-03-18 00:00,2025-11-20 17:00,2025-11-20 17:00,2025-12-05 17:00,2025-12-05 17:00,0,40,100
CN.SWB1.1252,DRYWALL & INSULATION (1 side) (INT) - SWB1- GL 18-21 - K LINE - L1,Complete,SWB - 1,West Support Building,SUWN-1 - 18-21,L1 - Fndn Slab,DS/AD INTERIORS,CONSTRUCTION,,DRYWALL,FIZ DATA CENTER,INTERIORS,2023-12-04 07:00,2023-12-09 15:00,2023-12-06 07:00,2023-12-09 16:00,2025-11-20 17:00,2025-11-20 17:00,2025-12-05 17:00,2025-12-05 17:00,0,48,100
CN.SWB1.1232,METAL STUD FRAMING (2hr)- SWB1- GL 18-21 K LINE - L2,Complete,SWB - 1,West Support Building,SUWN-1 - 18-21,L2 - SubFab Level,DS/AD INTERIORS,CONSTRUCTION,BERG,TBD Architectural Finishes,FIZ DATA CENTER,INTERIORS,2024-01-10 07:00,2024-01-17 15:00,2024-01-10 07:00,2024-01-16 11:00,2025-11-20 17:00,2025-11-20 17:00,2025-11-24 07:00,2025-11-24 07:00,0,48,100
CN.SWB1.1312,REMEDY - TAPE & FINISH DRYWALL- SWB1- GL 18-21 K LINE - L2,Complete,SWB - 1,West Support Building,SUWN-1 - 18-21,L2 - SubFab Level,DS/AD INTERIORS,CONSTRUCTION,CHERRY COATING,DRYWALL,FIZ DATA CENTER,INTERIORS,2024-08-12 07:00,2024-08-15 17:00,2024-08-10 07:00,2024-08-13 17:00,2025-11-20 17:00,2025-11-20 17:00,2025-12-05 07:00,2025-12-05 07:00,0,30,100
CN.SWB1.1332,FINISH PAINT - SWB1- GL 18-21 K LINE - L2,Not Started,SWB - 1,West Support Building,SUWN-1 - 18-21,L2 - SubFab Level,DS/AD INTERIORS,CONSTRUCTION,FINISH PAINT,TBD Architectural Finishes,FIZ DATA CENTER,INTERIORS,2025-11-21 07:00,2025-11-21 17:00,,,2025-11-21 07:00,2025-11-21 17:00,2025-12-05 07:00,2025-12-05 17:00,10,10,0
CN.SWB1.1292,REMEDY - FRAME & DRYWALL - SWB1- GL 18-21 K LINE -  L2,Complete,SWB - 1,West Support Building,SUWN-1 - 18-21,L2 - SubFab Level,DS/AD INTERIORS,CONSTRUCTION,BERG,DRYWALL,FIZ DATA CENTER,INTERIORS,2024-06-24 07:00,2024-07-05 17:00,2024-06-22 07:00,2024-08-03 17:00,2025-11-20 17:00,2025-11-20 17:00,2025-12-05 07:00,2025-12-05 07:00,0,70,100
CN.SWB1.1272,DRYWALL & INSULATION (1 side) (INT) - SWB1- GL 18-21 K LINE - L2,Complete,SWB - 1,West Support Building,SUWN-1 - 18-21,L2 - SubFab Level,DS/AD INTERIORS,CONSTRUCTION,BERG,DRYWALL,FIZ DATA CENTER,INTERIORS,2024-04-15 07:00,2024-04-22 17:00,2024-04-09 07:00,2024-05-07 17:00,2025-11-20 17:00,2025-11-20 17:00,2025-11-24 07:00,2025-11-24 07:00,0,60,100
CN.SWB1.1212,TEMP WALLS Framing and Drywall- SWB1- GL 18-21 K-N - L2,Complete,SWB - 1,,SUWN-1 - 18-21,L2 - SubFab Level,ELECTRIC RM 2,CONSTRUCTION,,DRYWALL,,,2024-03-09 08:00,2024-03-17 08:00,2024-02-02 00:00,2024-02-09 00:00,2025-11-20 17:00,2025-11-20 17:00,2025-11-24 07:00,2025-11-24 07:00,0,40,100
CN.SWB1.4600,PH1 -WELD CLIPS - CLADDING STEEL - SWB-1 L LINE (DS AREA) GL 18-21,Complete,SWB - 1,West Support Building,SUWN-1 - 18-21,EXTERIOR SKIN,,CONSTRUCTION,,INSULATED METAL PANELS,JAMES LIVELY,,2023-12-18 15:00,2023-12-19 17:00,2023-12-13 15:00,2023-12-15 17:00,2025-11-20 17:00,2025-11-20 17:00,2025-11-21 07:00,2025-11-21 07:00,0,12,100
CN.SWB1.1480,IMPACT - DS STEEL BEAM STIFFNER CONNECTION FIXES L4 GL 18-21 GL 18 - 21 J-K,Complete,SWB - 1,,SUWN-1 - 18-21,DS/AD,,CONSTRUCTION,,Steel Erection,,,2024-01-22 07:00,2024-02-02 08:00,2024-01-02 07:00,2024-01-15 17:00,2025-11-20 17:00,2025-11-20 17:00,2025-06-13 08:00,2025-06-13 08:00,0,111,100
CN.SWB1.1342,METAL STUD FRAMING (2hr) - SWB1- GL 18-21 K Line - L3,Complete,SWB - 1,West Support Building,SUWN-1 - 18-21,L3 / Waffle Slab Level,DS/AD INTERIORS,CONSTRUCTION,BERG,TBD Architectural Finishes,FIZ DATA CENTER,INTERIORS,2024-05-16 13:00,2024-05-18 09:00,2024-03-10 00:00,2024-03-14 00:00,2025-11-20 17:00,2025-11-20 17:00,2025-06-13 08:00,2025-06-13 08:00,0,16,100
CN.SWB1.1382,TAPE & FINISH DRYWALL  - SWB1- GL 18-21 K LINE -  L3,Complete,SWB - 1,West Support Building,SUWN-1 - 18-21,L3 / Waffle Slab Level,DS/AD INTERIORS,CONSTRUCTION,CHERRY COATING,DRYWALL,FIZ DATA CENTER,INTERIORS,2024-07-15 07:00,2024-07-18 17:00,2024-07-15 07:00,2024-07-18 17:00,2025-11-20 17:00,2025-11-20 17:00,2025-06-13 08:00,2025-06-13 08:00,0,40,100
CN.SWB1.1392,D/S SGP Wall Turnover - SWB1- GL 18-21 K LINE - L3,Complete,SWB - 1,West Support Building,SUWN-1 - 18-21,L3 / Waffle Slab Level,DS/AD INTERIORS,CONSTRUCTION,SECAI,TBD Architectural Finishes,FIZ DATA CENTER,INTERIORS,2024-06-17 07:00,2024-06-17 17:00,2024-06-17 07:00,2024-06-17 17:00,2025-11-20 17:00,2025-11-20 17:00,2025-06-13 08:00,2025-06-13 08:00,0,10,100
CN.SWB1.1372,DRYWALL 2 SIDE - SWB1- GL 18-21 K LINE - L3,Complete,SWB - 1,West Support Building,SUWN-1 - 18-21,L3 / Waffle Slab Level,DS/AD INTERIORS,CONSTRUCTION,BERG,DRYWALL,FIZ DATA CENTER,INTERIORS,2024-05-28 07:00,2024-06-03 17:00,2024-05-28 07:00,2024-06-26 17:00,2025-11-20 17:00,2025-11-20 17:00,2025-06-13 08:00,2025-06-13 08:00,0,40,100
CN.SWB1.1362,DRYWALL & INSULATION (1 side) (INT) - SWB1- GL 18-21 K LINE - L3,Complete,SWB - 1,West Support Building,SUWN-1 - 18-21,L3 / Waffle Slab Level,DS/AD INTERIORS,CONSTRUCTION,,DRYWALL,FIZ DATA CENTER,INTERIORS,2024-05-18 10:00,2024-05-20 14:00,2024-03-10 00:00,2024-03-14 00:00,2025-11-20 17:00,2025-11-20 17:00,2025-06-13 08:00,2025-06-13 08:00,0,24,100
CN.SWA3.1222,IMPACT [CL 48-67] - LEVEL 1 DRAIN BODIES - EXCAVATION & INSTALL -SWA-3 - L1 - GL19-20 - K LINE,Complete,SWB - 1,,SUWN-1 - 18-21,L1 - Fndn Slab,DS/AD INTERIORS,CONSTRUCTION,,,,,2023-10-16 08:00,2023-10-22 12:00,2023-10-16 08:00,2023-10-23 16:00,2025-11-20 17:00,2025-11-20 17:00,2025-09-04 07:00,2025-09-04 07:00,0,64,100
CN.SWB1.4610,PH1- DS/AD FRP SLAB - SWB-1 L2,Complete,SWB - 1,,SUWN-1 - 18-21,DS/AD,,CONSTRUCTION,,SOMD,,,2023-10-03 08:00,2023-10-07 08:00,2023-10-03 08:00,2023-10-07 16:00,2025-11-20 17:00,2025-11-20 17:00,2025-11-21 07:00,2025-11-21 07:00,0,40,100
CN.SWB1.4700,DSAD PENETRATION SUPPORT STEEL FRAMING - SWB-1- GL 18-21 - L4,Complete,SWB - 1,West Support Building,SUWN-1 - 18-21,DS/AD,,CONSTRUCTION,PERRY & PERRY,Fireproofing,HOON WOO,,2024-05-10 07:00,2024-05-14 17:00,2024-04-29 07:00,2024-06-27 17:00,2025-11-20 17:00,2025-11-20 17:00,2025-12-05 17:00,2025-12-05 17:00,0,30,100
CN.SWB1.1560,PH1- DS/AD FRP SLAB - DS/ AD SWB-1 L6 GL 18 - 21 J-K,Complete,SWB - 1,,SUWN-1 - 18-21,DS/AD,,CONSTRUCTION,,SOMD,,,2023-12-12 08:00,2023-12-15 12:00,2023-12-12 08:00,2023-12-14 12:00,2025-11-20 17:00,2025-11-20 17:00,2025-06-13 08:00,2025-06-13 08:00,0,24,100
CN.SWB1.4650,PH1- DS/AD CURE FRP SLAB - DS/ AD SWB-1 L6  GL 18 - 21 J-K,Complete,SWB - 1,,SUWN-1 - 18-21,DS/AD,,CONSTRUCTION,,SOMD,,,2023-12-14 15:00,2023-12-17 09:00,2023-12-14 15:00,2023-12-17 12:00,2025-11-20 17:00,2025-11-20 17:00,2025-06-13 08:00,2025-06-13 08:00,0,24,100
CN.SWB1.1570,PH1- DS/AD DECKING  GL 18-21 J-K -  DS/ AD SWB-1  L3,Complete,SWB - 1,,SUWN-1 - 18-21,DS/AD,,CONSTRUCTION,,Decking & Detail,,,2023-12-01 07:00,2023-12-08 11:00,2023-12-01 07:00,2023-12-05 15:00,2025-11-20 17:00,2025-11-20 17:00,2025-12-05 17:00,2025-12-05 17:00,0,64,100
CN.SWB1.1230,"REMAINING INSTALL, DETAIL & INSPECTION CLADDING STEEL GL 17-18 - N LINE [SUP EXTERIOR WALL] (BUCK HOIST )",Complete,SWB - 1,,SUWN-1 - 18-21,EXTERIOR SKIN,,CONSTRUCTION,PATRIOT,INSULATED METAL PANELS,,,2025-01-20 07:00,2025-02-04 17:00,2025-01-20 07:00,2025-02-01 17:00,2025-11-20 17:00,2025-11-20 17:00,2025-12-05 17:00,2025-12-05 17:00,0,120,100
CN.SWB1.1310,INSTALL INSULATED METAL PANEL MODULES - GL 19.5-21 - K LINE (AD AREA),Complete,SWB - 1,,SUWN-1 - 18-21,EXTERIOR SKIN,,CONSTRUCTION,KOVACH,INSULATED METAL PANELS,,,2024-06-18 07:00,2024-06-23 17:00,2024-06-01 07:00,2024-06-05 17:00,2025-11-20 17:00,2025-11-20 17:00,2025-11-21 07:00,2025-11-21 07:00,0,50,100
CN.SWB1.4710,IMPACT - SECAI/STARCON MEP PIPE RACK CRANE - SWB-1 GL 16 - 19,Complete,SWB - 1,,SUWN-1 - 18-21,EXTERIOR SKIN,,CONSTRUCTION,,INSULATED METAL PANELS,,,2023-12-04 07:00,2023-12-11 11:00,2023-11-27 07:00,2024-01-24 11:00,2025-11-20 17:00,2025-11-20 17:00,2025-11-21 07:00,2025-11-21 07:00,0,64,100
CN.SWB1.4720,IMPACT - MEP STEEL STAGED ON CRANE MAT - SWB-1 GL 17 - 21,Complete,SWB - 1,,SUWN-1 - 18-21,EXTERIOR SKIN,,CONSTRUCTION,,INSULATED METAL PANELS,,,2023-12-04 07:00,2023-12-11 11:00,2023-11-28 07:00,2024-01-16 11:00,2025-11-20 17:00,2025-11-20 17:00,2025-11-21 07:00,2025-11-21 07:00,0,64,100
CN.SWB1.1590,KNEE WALL -SWB 1 - GL 18 - 21 - L4 - J-K -DS/AD,Complete,SWB - 1,,SUWN-1 - 18-21,DS/AD,,CONSTRUCTION,,Cast-in Place Concrete - Baker Concrete,,,2024-02-02 07:00,2024-02-05 17:00,2024-02-02 07:00,2024-02-04 11:00,2025-11-20 17:00,2025-11-20 17:00,2025-11-21 07:00,2025-11-21 07:00,0,40,100
CN.SWB1.4730,DS/AD STEEL SPRAY FIREPROOFING SFRM- SWB-1 - GL 18 - 21 J-K - L1 CEILING,Complete,SWB - 1,West Support Building,SUWN-1 - 18-21,DS/AD,,CONSTRUCTION,,Fireproofing,HOON WOO,,2023-12-04 07:00,2023-12-09 15:00,2023-11-30 07:00,2023-12-03 09:00,2025-11-20 17:00,2025-11-20 17:00,2025-11-21 07:00,2025-11-21 07:00,0,48,100
CN.SWB1.4740,K-LINE STEEL SPRAY FIREPROOFING SFRM2 - SWB1 - L3-CEILING - GL 18-21,Complete,SWB - 1,West Support Building,SUWN-1 - 18-21,L4 - SUP Roof - FAB Roof,DS/AD INTERIORS,CONSTRUCTION,ROLLING PLAINS,Fireproofing,HOON WOO,,2024-04-25 07:00,2024-05-02 17:00,2024-04-25 07:00,2024-04-29 17:00,2025-11-20 17:00,2025-11-20 17:00,2025-06-13 08:00,2025-06-13 08:00,0,50,100
CN.AB.AR.6750,IMPACT - SWB-1- H2 PURIFER ROOM MECH PAD - GL 18-21 K-N,Complete,SWB - 1,West Support Building,SUWN-1 - 18-21,L1 - Fndn Slab,H2 PURIFIER RM,CONSTRUCTION,,DRYWALL,AMBER CARO,INTERIORS,2024-01-02 09:00,2024-01-07 08:00,2023-12-28 07:00,2024-01-27 16:00,2025-11-20 17:00,2025-11-20 17:00,2025-12-04 17:00,2025-12-04 17:00,0,40,100
CN.SWB1..4560,IMPACT [S.TIA-2] - NaOH ROOM TRENCH DETAILS (SECAI-SUW-S-5358) - GL 18-19 L-N,Active,SWB - 1,West Support Building,SUWN-1 - 18-21,L3 / Waffle Slab Level,ELECTRIC RM 1,CONSTRUCTION,SECAI,TBD Architectural Finishes,AMBER CARO,INTERIORS,2024-01-02 07:00,2024-01-08 15:00,2023-11-17 07:00,,2025-11-21 07:00,2025-11-21 17:00,2025-11-13 07:00,2025-11-13 17:00,10,48,0
CN.SWB1.4860,ROOFTOP DRY PARAPET - SWB-1 (DS AREA) GL 18-21 N (DS AREA),Complete,SWB - 1,West Support Building,SUWN-1 - 18-21,EXTERIOR SKIN,,CONSTRUCTION,,INSULATED METAL PANELS,JAMES LIVELY,,2024-02-26 07:00,2024-03-01 17:00,2024-02-26 07:00,2024-02-28 17:00,2025-11-20 17:00,2025-11-20 17:00,2025-12-05 17:00,2025-12-05 17:00,0,40,100
CN.SWB1.4870,INSTALL INSULATED METAL PANEL MODULES - GL 18-21 - J LINE (AD AREA),Complete,SWB - 1,West Support Building,SUWN-1 - 18-21,DS/AD,,CONSTRUCTION,KOVACH,Roofing,CONCRETE,,2024-06-27 07:00,2024-06-28 17:00,2024-06-19 07:00,2024-06-19 17:00,2025-11-20 17:00,2025-11-20 17:00,2025-12-05 17:00,2025-12-05 17:00,0,20,100
CN.SWB1.4880,INSTALL TPO ROOFING - SWB1 - GL 19-22 - K-L - L6,Complete,SWB - 1,West Support Building,SUWN-1 - 18-21,L6 - PENTHOUSE / DS ROOF,,CONSTRUCTION,BRAZOS,Waterproofing - Preferred,JAMES LIVELY,,2024-10-14 07:00,2024-10-18 17:00,2024-10-14 07:00,2024-10-18 17:00,2025-11-20 17:00,2025-11-20 17:00,2025-12-05 17:00,2025-12-05 17:00,0,40,100
CN.SWB1.4890,DCC BEAM (STEEL STRUCTURE) - SWB1- GL 18-21 - L3 K LINE,Complete,SWB - 1,West Support Building,SUWN-1 - 18-21,L3 / Waffle Slab Level,DS/AD INTERIORS,CONSTRUCTION,,TBD Architectural Finishes,FIZ DATA CENTER,INTERIORS,2024-01-17 07:00,2024-01-24 09:00,2024-01-15 16:00,2024-01-24 12:00,2025-11-20 17:00,2025-11-20 17:00,2025-06-13 08:00,2025-06-13 08:00,0,72,100
CN.SWB1.4900,TEMPORARY SCAFFOLD PLATFORM - SWB1- GL 18-21 - L3 K LINE,Complete,SWB - 1,West Support Building,SUWN-1 - 18-21,L3 / Waffle Slab Level,DS/AD INTERIORS,CONSTRUCTION,,TBD Architectural Finishes,FIZ DATA CENTER,INTERIORS,2024-01-29 07:00,2024-02-02 15:00,2024-01-29 07:00,2024-02-03 16:00,2025-11-20 17:00,2025-11-20 17:00,2025-06-13 08:00,2025-06-13 08:00,0,48,100
CN.SWB1.4910,MEP IN WALL ROUGH INS - SWB1- GL 18-21 K LINE - L3,Complete,SWB - 1,West Support Building,SUWN-1 - 18-21,L3 / Waffle Slab Level,DS/AD INTERIORS,CONSTRUCTION,SECAI,TBD Architectural Finishes,FIZ DATA CENTER,INTERIORS,2024-05-02 07:00,2024-05-03 17:00,2024-05-02 07:00,2024-05-02 17:00,2025-11-20 17:00,2025-11-20 17:00,2025-06-13 08:00,2025-06-13 08:00,0,20,100
CN.SWB1.4920,Drywall Clips & AMTS Installs Support Beams - SWB-1 L4 GL 18 - 21 K LINE,Complete,SWB - 1,West Support Building,SUWN-1 - 18-21,L4 - SUP Roof - FAB Roof,DS/AD INTERIORS,CONSTRUCTION,SECAI,Fireproofing,HOON WOO,,2024-03-27 07:00,2024-03-29 17:00,2024-03-27 07:00,2024-03-29 17:00,2025-11-20 17:00,2025-11-20 17:00,2025-06-13 08:00,2025-06-13 08:00,0,30,100
CN.SWB1.4930,DS STEEL SPRAY SFRM - SWB2 - L3 CEILING GL18-21/K-L,Complete,SWB - 1,West Support Building,SUWN-1 - 18-21,L4 - SUP Roof - FAB Roof,DS/AD INTERIORS,CONSTRUCTION,ROLLING PLAINS,Fireproofing,HOON WOO,,2024-05-14 12:23,2024-05-23 12:23,2024-05-14 12:23,2024-05-21 12:23,2025-11-20 17:00,2025-11-20 17:00,2025-12-05 17:00,2025-12-05 17:00,0,50,100
CN.SWB1.4940,ADD FLANGE EXTENSIONS/ CUT GRATING - SWB-1 L4 GL 18 - 21 K LINE,Complete,SWB - 1,West Support Building,SUWN-1 - 18-21,L4 - SUP Roof - FAB Roof,DS/AD INTERIORS,CONSTRUCTION,,Fireproofing,HOON WOO,,2024-03-07 07:00,2024-03-11 11:00,2024-03-07 07:00,2024-03-09 11:00,2025-11-20 17:00,2025-11-20 17:00,2025-06-13 08:00,2025-06-13 08:00,0,24,100
CN.SWB1.4950,AD STEEL APPLY INTUMESCENT - SWB2 - L3 CEILING - GL 18-21/J-K,Complete,SWB - 1,West Support Building,SUWN-1 - 18-21,L4 - SUP Roof - FAB Roof,DS/AD INTERIORS,CONSTRUCTION,ROLLING PLAINS,Fireproofing,HOON WOO,,2024-06-14 07:00,2024-06-21 17:00,2024-06-14 07:00,2024-06-17 17:00,2025-11-20 17:00,2025-11-20 17:00,2025-06-13 08:00,2025-06-13 08:00,0,50,100
CN.SWB1.4960,SECAI - AMTS Installs UPPER CEILING - SWB-1  L4  GL 18 - 21 K LINE,Complete,SWB - 1,West Support Building,SUWN-1 - 18-21,L4 - SUP Roof - FAB Roof,DS/AD INTERIORS,CONSTRUCTION,SECAI,Fireproofing,HOON WOO,,2024-08-01 07:00,2024-08-06 17:00,2024-08-01 07:00,2024-08-05 17:00,2025-11-20 17:00,2025-11-20 17:00,2025-12-05 17:00,2025-12-05 17:00,0,40,100
CN.SWB1.4970,CURE INTUMESCENT PAINT AD side - SWB2,Complete,SWB - 1,West Support Building,SUWN-1 - 18-21,L4 - SUP Roof - FAB Roof,DS/AD INTERIORS,CONSTRUCTION,ROLLING PLAINS,Fireproofing,HOON WOO,,2024-07-16 07:00,2024-08-02 17:00,2024-06-18 07:00,2024-07-04 07:00,2025-11-20 17:00,2025-11-20 17:00,2025-12-05 17:00,2025-12-05 17:00,0,140,100
CN.SWB1.5000,IMPACT - WAITING ON MEP LAYOUTS - SWB-1- GL 18-21 - L4 / INCOMPLETE - CLOSED FOR CCD 310 LAYOUT,Complete,SWB - 1,West Support Building,SUWN-1 - 18-21,DS/AD,,CONSTRUCTION,SECAI,Steel Erection,HOON WOO,,2024-01-22 07:00,2024-01-25 17:00,2024-01-10 07:00,2024-05-30 17:00,2025-11-20 17:00,2025-11-20 17:00,2025-12-05 17:00,2025-12-05 17:00,0,40,100
CN.SWB1.5010,INSTALL RAISED ACCESS FLOORING- I/O FAB110313 - SUW - L1 - GL M/18,Complete,SWB - 1,West Support Building,SUWN-1 - 18-21,L1 - Fndn Slab,,CONSTRUCTION,SELECT PREFAB,TBD Architectural Finishes,ANDREA SOLIS,,2025-03-03 07:00,2025-03-11 17:00,2025-03-03 07:00,2025-03-05 17:00,2025-11-20 17:00,2025-11-20 17:00,2025-11-21 07:00,2025-11-21 07:00,0,70,100
CN.SWB1.5030,IMPACT [C25] - ROOF DRAIN IN THE WAY - SWB-1-L1- GL 18-19 M-N,Complete,SWB - 1,West Support Building,SUWN-1 - 18-21,L1 - Fndn Slab,H2 PURIFIER RM,CONSTRUCTION,SECAI,Pour Concrete,JAMES LEE,SOMD / Roofing / Waterproofing,2024-01-29 07:00,2024-02-01 17:00,2024-01-23 07:00,2024-02-01 17:00,2025-11-20 17:00,2025-11-20 17:00,2025-12-05 07:00,2025-12-05 07:00,0,40,100
CN.SWB1.5040,IMPACT [C23] - EXPANSION JOINT DETAIL (C23) - SWB-1 L4 & L4/E GL 19 J-K,Complete,SWB - 1,West Support Building,SUWN-1 - 18-21,DS/AD,,CONSTRUCTION,SECAI,SOMD,CONCRETE,,2024-01-22 07:00,2024-01-24 11:00,2024-01-21 07:00,2024-07-31 17:00,2025-11-20 17:00,2025-11-20 17:00,2025-12-05 17:00,2025-12-05 17:00,0,24,100
CN.SWB1.5050,IMPACT [ST2] - AREA BLOCK OFF - SWB-1- MCC RM & I/O RM GL 18-21 K-N,Complete,SWB - 1,West Support Building,SUWN-1 - 18-21,L1 - Fndn Slab,H2 PURIFIER RM,CONSTRUCTION,SECAI,INSULATED METAL PANELS,JAMES LIVELY,INTERIORS,2024-01-29 07:00,2024-02-13 17:00,2024-01-14 07:00,2024-04-20 17:00,2025-11-20 17:00,2025-11-20 17:00,2025-11-03 07:00,2025-11-03 07:00,0,120,100
CN.SWB1.5060,WWSE SOMD PENETRATIONS - SWB1 - GL 3-33 - L-N - L4E,Complete,SWB - 1,West Support Building,SUWN-1 - 18-21,DS/AD,,CONSTRUCTION,,Roofing,CONCRETE,,2024-04-15 11:00,2024-05-13 15:00,2024-03-15 11:00,2024-03-30 15:00,2025-11-20 17:00,2025-11-20 17:00,2025-08-26 07:00,2025-08-26 07:00,0,184,100
CN.SWB1.5070,LATCON / VELTRI SOMD ROOF DRAIN PENETRATION SUPPORT STEEL - SUW - GL 3-33 - L-J - L6,Complete,SWB - 1,West Support Building,SUWN-1 - 18-21,DS/AD,,CONSTRUCTION,LATCON,Steel Erector - W&W,CONCRETE,,2024-09-06 07:00,2024-10-04 17:00,2024-07-22 07:00,2024-10-31 17:00,2025-11-20 17:00,2025-11-20 17:00,2025-12-05 17:00,2025-12-05 17:00,0,170,100
CN.SWB1.5120,IMPACT [S.TIA-45] - STARCON EQUIPMENT & MATERIALS IMPACTING TOPPING SLAB - GL 18-23,Complete,SWB - 1,West Support Building,SUWN-1 - 18-21,L4 - SUP Roof - FAB Roof,,CONSTRUCTION,,TOPPING,CONCRETE,SOMD / Roofing / Waterproofing,2024-03-04 07:00,2024-03-11 17:00,2024-02-01 07:00,2024-03-02 15:00,2025-11-20 17:00,2025-11-20 17:00,2025-11-21 07:00,2025-11-21 07:00,0,80,100
CN.SWB1.5210,IMPACT - K-LINE STEEL SPRAY FIREPROOFING SFRM2 - SWB1 - L3-CEILING - GL 18-21,Complete,SWB - 1,West Support Building,SUWN-1 - 18-21,L4 - SUP Roof - FAB Roof,DS/AD INTERIORS,CONSTRUCTION,ROLLING PLAINS,Fireproofing,HOON WOO,,2024-04-22 07:00,2024-04-26 17:00,2024-04-22 07:00,2024-04-25 17:00,2025-11-20 17:00,2025-11-20 17:00,2025-06-13 08:00,2025-06-13 08:00,0,50,100
CN.SWB1.5220,IMPACT - INSPECT & SURFACE PREP ADDITIONAL AD STEEL FOR INTUMESCENT - SWB1 - GL 18-21 - J-K - L3 CEILING,Complete,SWB - 1,West Support Building,SUWN-1 - 18-21,L4 - SUP Roof - FAB Roof,DS/AD INTERIORS,CONSTRUCTION,ROLLING PLAINS,Fireproofing,HOON WOO,,2024-06-04 07:00,2024-06-11 17:00,2024-06-04 07:00,2024-06-13 17:00,2025-11-20 17:00,2025-11-20 17:00,2025-06-13 08:00,2025-06-13 08:00,0,50,100
CN.SWB1.5250,INSTALL FRAMING FOR IMP - GL 18-21 - J LINE (AD AREA),Complete,SWB - 1,West Support Building,SUWN-1 - 18-21,DS/AD,,CONSTRUCTION,BERG,Roofing,CONCRETE,,2024-05-30 07:00,2024-05-31 17:00,2024-05-01 07:00,2024-05-14 17:00,2025-11-20 17:00,2025-11-20 17:00,2025-12-05 17:00,2025-12-05 17:00,0,20,100
CN.SWB1.5260,REMEDY - DEMO DRYWALL (INT) - SWB1- GL 18-21 K LINE -  L2,Complete,SWB - 1,West Support Building,SUWN-1 - 18-21,L2 - SubFab Level,DS/AD INTERIORS,CONSTRUCTION,BERG,DRYWALL,FIZ DATA CENTER,INTERIORS,2024-06-10 07:00,2024-06-18 17:00,2024-06-10 07:00,2024-06-17 17:00,2025-11-20 17:00,2025-11-20 17:00,2025-11-24 07:00,2025-11-24 07:00,0,60,100
CN.SWB1.5270,IMPACT - MEP PIPE CUT THE WALL - SWB1- GL 18 K LINE - L3,Complete,SWB - 1,West Support Building,SUWN-1 - 18-21,L3 / Waffle Slab Level,DS/AD INTERIORS,CONSTRUCTION,BERG,DRYWALL,FIZ DATA CENTER,INTERIORS,2024-05-28 07:00,2024-06-03 17:00,2024-05-29 07:00,2024-06-07 17:00,2025-11-20 17:00,2025-11-20 17:00,2025-06-13 08:00,2025-06-13 08:00,0,40,100
CN.SWB1.5280,IMPACT - REMAINING INSTALL INSULATED METAL PANEL MODULES - GL 19.5-18.5 - K LINE (AD AREA),Complete,SWB - 1,,SUWN-1 - 18-21,EXTERIOR SKIN,,CONSTRUCTION,KOVACH,INSULATED METAL PANELS,,,2024-09-13 07:00,2024-09-15 17:00,2024-09-07 07:00,2024-09-12 17:00,2025-11-20 17:00,2025-11-20 17:00,2025-12-05 17:00,2025-12-05 17:00,0,30,100
CN.SWB1.5290,REMAINING INSTALL INSULATED METAL PANEL MODULES - GL 19.5-18.5 - L LINE (DS AREA),Complete,SWB - 1,West Support Building,SUWN-1 - 18-21,EXTERIOR SKIN,,CONSTRUCTION,KOVACH,INSULATED METAL PANELS,JAMES LIVELY,,2024-11-18 07:00,2024-11-22 17:00,2024-11-18 07:00,2024-11-27 17:00,2025-11-20 17:00,2025-11-20 17:00,2025-12-05 07:00,2025-12-05 07:00,0,40,100
CN.SWB1.5300,CURE - AD STEEL PAINT FIREPROOFING IFRM - SWB-1 - GL 18-21 - J-K - L2-CEILING,Complete,SWB - 1,West Support Building,SUWN-1 - 18-21,DS/AD,,CONSTRUCTION,ROLLING PLAINS,Fireproofing,HOON WOO,,2024-07-16 07:00,2024-08-04 17:00,2024-07-16 07:00,2024-08-01 17:00,2025-11-20 17:00,2025-11-20 17:00,2025-12-05 17:00,2025-12-05 17:00,0,180,100
CN.SWB1..4580,INSTALL GOAL POSTS - H2SO4 TO IT/SECURITY TRANSFER - SWB-1 - 18-19 M-N,Complete,SWB - 1,West Support Building,SUWN-1 - 18-21,L3 / Waffle Slab Level,H2O4 & NAOH ,CONSTRUCTION,BERG,DRYWALL,AMBER CARO,INTERIORS,2024-08-19 07:00,2024-08-28 17:00,2024-07-26 07:00,2024-08-10 17:00,2025-11-21 07:00,2025-11-21 07:00,2025-12-01 07:00,2025-12-01 07:00,0,70,100
CN.SWB1..4590,REMAINING DRYWALL & FINISHES  - SWB-1 - IT/SECURITY 3  GL 17-21 K- N - L3,Complete,SWB - 1,West Support Building,SUWN-1 - 18-21,L3 / Waffle Slab Level,IT/SECURITY,CONSTRUCTION,BERG,DRYWALL,AMBER CARO,INTERIORS,2025-07-21 07:00,2025-07-25 17:00,2025-07-21 07:00,2025-07-25 17:00,2025-11-20 17:00,2025-11-20 17:00,2025-11-20 07:00,2025-11-20 07:00,0,50,100
CN.SWB1.5310,INSTALL GOAL POSTS - ELECTRICAL RM - GL 18-19 - M-N - L2,Complete,SWB - 1,West Support Building,SUWN-1 - 18-21,L2 - SubFab Level,ELECTRIC RM 2,CONSTRUCTION,BERNCO,TBD Architectural Finishes,JAMES LEE,INTERIORS,2024-08-23 07:00,2024-08-29 17:00,2024-08-16 07:00,2024-08-21 17:00,2025-11-20 17:00,2025-11-20 17:00,2025-11-24 07:00,2025-11-24 07:00,0,50,100
CN.SWB1.5320,DS ROOF PARAPET DRY IN - SWB1 - GL 18-21 - K-L - L6,Complete,SWB - 1,West Support Building,SUWN-1 - 18-21,DS/AD,,CONSTRUCTION,BRAZOS,Waterproofing - Preferred,JAMES LIVELY,,2024-09-13 07:00,2024-10-01 17:00,2024-08-26 07:00,2024-09-12 17:00,2025-11-20 17:00,2025-11-20 17:00,2025-11-25 07:00,2025-11-25 07:00,0,110,100
CN.SWB1.5330,IMPACT - EXPANSION JOINT PARAPET DETAIL - SWB1 - GL 19-22 - K-L - L6,Complete,SWB - 1,West Support Building,SUWN-1 - 18-21,DS/AD,,CONSTRUCTION,BRAZOS,Waterproofing - Preferred,JAMES LIVELY,,2024-10-21 07:00,2024-11-07 17:00,2024-09-09 07:00,2024-10-12 17:00,2025-11-20 17:00,2025-11-20 17:00,2025-12-05 07:00,2025-12-05 07:00,0,110,100
CN.SWB1.5400,IMPACT - EXPANSION JOIN CORRECTION (LOADING PLATFORM ) - GL 18-19.5 -N LINE [SUP EXTERIOR WALL],Complete,SWB - 1,West Support Building,SUWN-1 - 18-21,EXTERIOR SKIN,,CONSTRUCTION,KOVACH,INSULATED METAL PANELS,JAMES LIVELY,,2024-11-14 07:00,2024-11-21 17:00,2024-12-05 07:00,2025-02-25 17:00,2025-11-20 17:00,2025-11-20 17:00,2025-11-21 07:00,2025-11-21 07:00,0,50,100
CN.SWB1.5410,IMPACT - AWAINING LOUVER DESINGN & IOCC APPROVAL (LOADING PLATFORM ) - GL 18-19.5 -N LINE [SUP EXTERIOR WALL],Complete,SWB - 1,West Support Building,SUWN-1 - 18-21,EXTERIOR SKIN,,CONSTRUCTION,KOVACH,INSULATED METAL PANELS,JAMES LIVELY,,2024-11-14 07:00,2024-11-21 17:00,2024-12-05 07:00,2025-02-25 17:00,2025-11-20 17:00,2025-11-20 17:00,2025-12-05 17:00,2025-12-05 17:00,0,50,100
CN.SWB1.5440,IMPACT-TARPS IN THE WAY FOR WEATHER (LOADING PLATFORM ) - GL 18-19.5 -N LINE [SUP EXTERIOR WALL],Complete,SWB - 1,West Support Building,SUWN-1 - 18-21,EXTERIOR SKIN,,CONSTRUCTION,KOVACH,INSULATED METAL PANELS,JAMES LIVELY,,2024-11-14 07:00,2024-11-21 17:00,2025-01-13 07:00,2025-01-23 17:00,2025-11-20 17:00,2025-11-20 17:00,2025-11-21 07:00,2025-11-21 07:00,0,50,100
CN.SWB1.5450,IMPACT-PAINT BOLTS (LOADING PLATFORM ) - GL 18-19.5 -N LINE [SUP EXTERIOR WALL],Complete,SWB - 1,West Support Building,SUWN-1 - 18-21,EXTERIOR SKIN,,CONSTRUCTION,KOVACH,INSULATED METAL PANELS,JAMES LIVELY,,2025-02-26 07:00,2025-02-28 17:00,2025-02-26 07:00,2025-02-28 17:00,2025-11-20 17:00,2025-11-20 17:00,2025-11-21 07:00,2025-11-21 07:00,0,30,100
CN.SWB1.5460,IMPACT - AWAINING LOUVER INFILL STEEL & IMP (LOADING PLATFORM ) - GL 18-19.5 -N LINE [SUP EXTERIOR WALL],Complete,SWB - 1,West Support Building,SUWN-1 - 18-21,EXTERIOR SKIN,,CONSTRUCTION,KOVACH,INSULATED METAL PANELS,JAMES LIVELY,,2025-05-12 07:00,2025-05-12 17:00,2025-04-15 07:00,2025-04-16 07:00,2025-11-20 17:00,2025-11-20 17:00,2025-12-05 17:00,2025-12-05 17:00,0,10,100
CN.A1.UG.1340,PH1- UNDERGROUND PLUMBING SWB2,Complete,SWB - 2,West Support Building,SUWN-2 - 21-24,L1 - Fndn Slab,,CONSTRUCTION,,Underground Plumbing - Cobb,ANDREA SOLIS,,2022-09-07 08:00,2022-09-11 08:00,2022-09-07 08:00,2022-09-12 10:00,2025-11-20 17:00,2025-11-20 17:00,2025-06-13 08:00,2025-06-13 08:00,0,40,100
CN.A1.UG.1330,PH1- UNDERGROUND ELECTRICAL SWB2,Complete,SWB - 2,West Support Building,SUWN-2 - 21-24,L1 - Fndn Slab,,CONSTRUCTION,,Underground Electrical - (By Owner),ANDREA SOLIS,,2022-09-27 09:24,2022-10-01 09:24,2022-09-27 09:24,2022-10-01 10:24,2025-11-20 17:00,2025-11-20 17:00,2025-06-13 08:00,2025-06-13 08:00,0,40,100
CN.A2.UG.1130,PH1- UNDERSLAB WATERPROOFING SWB2,Complete,SWB - 2,West Support Building,SUWN-2 - 21-24,L1 - Fndn Slab,,CONSTRUCTION,,Waterproofing - Preferred,ANDREA SOLIS,,2022-10-14 09:00,2022-10-18 09:00,2022-10-14 09:00,2022-10-20 11:00,2025-11-20 17:00,2025-11-20 17:00,2025-06-13 08:00,2025-06-13 08:00,0,40,100
CN.A2.UG.1140,PH1- WATERPROOF WALL SWB2,Complete,SWB - 2,West Support Building,SUWN-2 - 21-24,L1 - Fndn Slab,,CONSTRUCTION,,Waterproofing - Preferred,ANDREA SOLIS,,2022-11-10 11:00,2022-11-20 17:00,2022-11-10 11:00,2022-11-23 11:00,2025-11-20 17:00,2025-11-20 17:00,2025-06-13 08:00,2025-06-13 08:00,0,96,100
CN.A2.UG.1150,PH1- FRENCH DRAIN SWB2,Complete,SWB - 2,West Support Building,SUWN-2 - 21-24,L1 - Fndn Slab,,CONSTRUCTION,,Waterproofing - Preferred,ANDREA SOLIS,,2022-11-21 07:00,2022-11-27 17:00,2022-11-21 07:00,2022-11-28 17:00,2025-11-20 17:00,2025-11-20 17:00,2025-06-13 08:00,2025-06-13 08:00,0,40,100
CN.SWB2.1010,PH1-FRP GRADE BEAM - SWB2,Complete,SWB - 2,West Support Building,SUWN-2 - 21-24,L1 - Fndn Slab,,CONSTRUCTION,,Pour Concrete,ANDREA SOLIS,,2022-10-06 11:24,2022-10-08 15:24,2022-10-06 11:24,2022-10-10 07:24,2025-11-20 17:00,2025-11-20 17:00,2025-06-13 08:00,2025-06-13 08:00,0,24,100
CN.SWB2.1020,PH1-BLACK BASE (NOW RAT SLAB) - SWB2,Complete,SWB - 2,West Support Building,SUWN-2 - 21-24,L1 - Fndn Slab,,CONSTRUCTION,,RAT SLAB,ANDREA SOLIS,,2022-10-10 07:24,2022-10-15 07:24,2022-10-10 07:24,2022-10-15 08:24,2025-11-20 17:00,2025-11-20 17:00,2025-06-13 08:00,2025-06-13 08:00,0,40,100
CN.SWB2.1030,PH1-CURE PIER CAPS - SWB2,Complete,SWB - 2,West Support Building,SUWN-2 - 21-24,L1 - Fndn Slab,,CONSTRUCTION,,Concrete Cure,ANDREA SOLIS,,2022-10-10 07:24,2022-10-10 07:24,2022-10-10 07:24,2022-10-10 07:24,2025-11-20 17:00,2025-11-20 17:00,2025-06-13 08:00,2025-06-13 08:00,0,0,100
CN.SWB2.1060,PH1- FRP SLAB - SWB-2-L2 -,Complete,SWB - 2,West Support Building,SUWN-2 - 21-24,L2 - SubFab Level,,CONSTRUCTION,,SOMD,CONCRETE,,2023-07-24 07:00,2023-07-26 11:00,2023-07-19 07:00,2023-07-21 11:00,2025-11-20 17:00,2025-11-20 17:00,2025-06-13 08:00,2025-06-13 08:00,0,24,100
CN.SWB2.1090,PH1- FRP SLAB - SWB-2-L3,Complete,SWB - 2,West Support Building,SUWN-2 - 21-24,L3 / Waffle Slab Level,,CONSTRUCTION,,SOMD,CONCRETE,,2023-08-28 07:00,2023-08-31 11:00,2023-08-28 07:00,2023-08-31 11:00,2025-11-20 17:00,2025-11-20 17:00,2025-11-21 07:00,2025-11-21 07:00,0,24,100
CN.SWB2.1120,PH1- FRP SLAB - SWB-2-ROOF,Complete,SWB - 2,West Support Building,SUWN-2 - 21-24,L4 - SUP Roof - FAB Roof,,CONSTRUCTION,,SOMD,CONCRETE,SOMD / Roofing / Waterproofing,2023-08-28 07:00,2023-08-31 11:00,2023-08-28 07:00,2023-08-31 07:00,2025-11-20 17:00,2025-11-20 17:00,2025-11-19 07:00,2025-11-19 07:00,0,24,100
CN.SWB2.1080,PH1- CURE SOMD - SWB-2-L2 -,Complete,SWB - 2,West Support Building,SUWN-2 - 21-24,L2 - SubFab Level,,CONSTRUCTION,,Concrete Cure,JAMES LEE,,2023-07-24 07:00,2023-07-26 11:00,2023-07-23 20:44,2023-07-24 20:44,2025-11-20 17:00,2025-11-20 17:00,2025-06-13 08:00,2025-06-13 08:00,0,24,100
CN.SWB2.1110,PH1- CURE SOMD - SWB-2-L3,Complete,SWB - 2,West Support Building,SUWN-2 - 21-24,L3 / Waffle Slab Level,,CONSTRUCTION,,Concrete Cure,JAMES LEE,,2023-09-01 07:00,2023-09-03 11:00,2023-08-31 20:44,2023-09-01 20:44,2025-11-20 17:00,2025-11-20 17:00,2025-11-21 07:00,2025-11-21 07:00,0,24,100
CN.SWB2.1140,PH1- CURE SOMD - SWB-2-ROOF,Complete,SWB - 2,West Support Building,SUWN-2 - 21-24,L4 - SUP Roof - FAB Roof,,CONSTRUCTION,,Concrete Cure,JAMES LEE,SOMD / Roofing / Waterproofing,2023-09-01 07:00,2023-09-03 11:00,2023-08-31 20:44,2023-09-01 20:44,2025-11-20 17:00,2025-11-20 17:00,2025-12-05 17:00,2025-12-05 17:00,0,24,100
CN.SWB2.1100,PH1- 1st FLOOR SLAB - SWB-2-L1,Complete,SWB - 2,West Support Building,SUWN-2 - 21-24,L1 - Fndn Slab,,CONSTRUCTION,,Pour Concrete,ANDREA SOLIS,,2022-10-20 11:00,2022-10-30 17:00,2022-10-20 11:00,2022-11-03 11:00,2025-11-20 17:00,2025-11-20 17:00,2025-06-13 08:00,2025-06-13 08:00,0,96,100
CN.SWB2.1230,MEP EQPT PADS (LAYOUT & INSTALL DOWELS)- SWB-2-ROOF,Complete,SWB - 2,West Support Building,SUWN-2 - 21-24,L4 - SUP Roof - FAB Roof,,CONSTRUCTION,,OAC/ MECH PADS,JAMES LEE,SOMD / Roofing / Waterproofing,2023-09-28 07:00,2023-09-30 11:00,2023-09-28 07:00,2023-09-30 12:00,2025-11-20 17:00,2025-11-20 17:00,2025-12-05 17:00,2025-12-05 17:00,0,24,100
CN.SWB2.1040,PH1-FRP PIT WALLS - SWB2,Complete,SWB - 2,West Support Building,SUWN-2 - 21-24,L1 - Fndn Slab,,CONSTRUCTION,,Pour Concrete,ANDREA SOLIS,,2022-10-31 15:00,2022-11-07 11:00,2022-10-31 15:00,2022-11-08 13:00,2025-11-20 17:00,2025-11-20 17:00,2025-06-13 08:00,2025-06-13 08:00,0,56,100
CN.SWB2.1070,PH1-BACKFILL PIT WALLS - SWB2,Complete,SWB - 2,West Support Building,SUWN-2 - 21-24,L1 - Fndn Slab,,CONSTRUCTION,,BACKFILL,ANDREA SOLIS,,2022-11-29 07:00,2022-12-03 17:00,2022-11-02 14:10,2022-11-03 09:00,2025-11-20 17:00,2025-11-20 17:00,2025-06-13 08:00,2025-06-13 08:00,0,50,100
CN.SWB2.1050,TIER 1 ERECT PRECAST COLUMNS & BEAMS - SWB2,Complete,SWB - 2,West Support Building,SUWN-2 - 21-24,L3 / Waffle Slab Level,,CONSTRUCTION,,"SUP WEST N,M",SEAN MONK,,2023-05-09 11:00,2023-05-15 17:00,2023-05-01 11:00,2023-05-30 17:00,2025-11-20 17:00,2025-11-20 17:00,2025-06-13 08:00,2025-06-13 08:00,0,56,100
CN.SWB2.1150,PH1-ROOF LAYER PARAPET - SWB2,Complete,SWB - 2,West Support Building,SUWN-2 - 21-24,L4 - SUP Roof - FAB Roof,,CONSTRUCTION,,TOPPING,JAMES LIVELY,SOMD / Roofing / Waterproofing,2024-01-23 08:00,2024-01-24 14:00,2024-01-23 08:00,2024-01-24 14:00,2025-11-20 17:00,2025-11-20 17:00,2025-12-05 17:00,2025-12-05 17:00,0,16,100
CN.SWB2.1170,PH1-FLUID APPLIED MEMBRANE ROOFING - SWB2,Complete,SWB - 2,West Support Building,SUWN-2 - 21-24,L4 - SUP Roof - FAB Roof,,CONSTRUCTION,,Roofing,JAMES LIVELY,SOMD / Roofing / Waterproofing,2023-10-05 11:00,2023-10-08 13:00,2023-10-05 11:00,2023-10-08 16:00,2025-11-20 17:00,2025-11-20 17:00,2025-12-05 17:00,2025-12-05 17:00,0,32,100
CN.SWB2.1180,PH1 - CLADDING STEEL  INTERIOR GL 21-24 - K LINE (AD AREA),Complete,SWB - 2,West Support Building,SUWN-2 - 21-24,EXTERIOR SKIN,,CONSTRUCTION,,INSULATED METAL PANELS,JAMES LIVELY,,2024-03-04 08:00,2024-03-09 14:00,2024-03-04 08:00,2024-03-27 13:00,2025-11-20 17:00,2025-11-20 17:00,2025-11-21 07:00,2025-11-21 07:00,0,56,100
CN.SWB2.1210,PH1 - INSTALL INSULATED METAL PANEL MODULES - GL 21-24 - L LINE (DS AREA),Complete,SWB - 2,West Support Building,SUWN-2 - 21-24,EXTERIOR SKIN,,CONSTRUCTION,KOVACH,INSULATED METAL PANELS,JAMES LIVELY,,2024-05-25 07:00,2024-06-03 17:00,2024-05-25 07:00,2024-06-18 17:00,2025-11-20 17:00,2025-11-20 17:00,2025-11-25 07:00,2025-11-25 07:00,0,90,100
CN.SWB2.1160,PH1 - CLADDING STEEL  - SWB-2 N Line [SUP EXTERIOR WALL],Complete,SWB - 2,West Support Building,SUWN-2 - 21-24,EXTERIOR SKIN,,CONSTRUCTION,,INSULATED METAL PANELS,JAMES LIVELY,,2023-11-06 09:00,2023-11-13 11:00,2023-11-06 09:00,2023-11-10 15:00,2025-11-20 17:00,2025-11-20 17:00,2025-08-26 07:00,2025-08-26 07:00,0,72,100
CN.SWB2.1190,INSTALL INSULATED METAL PANEL MODULES - GL 21-24 - N LINE [SUP EXTERIOR WALL],Complete,SWB - 2,West Support Building,SUWN-2 - 21-24,EXTERIOR SKIN,,CONSTRUCTION,KOVACH,INSULATED METAL PANELS,JAMES LIVELY,,2024-05-04 07:00,2024-05-14 17:00,2024-04-30 07:00,2024-05-22 17:00,2025-11-20 17:00,2025-11-20 17:00,2025-08-26 07:00,2025-08-26 07:00,0,90,100
CN.SWB2.1130,PH1- AD STEEL FRAME INSTALL - SWB-2 fab side,Complete,SWB - 2,West Support Building,SUWN-2 - 21-24,DS/AD,,CONSTRUCTION,,Steel Erection,SEAN MONK,,2023-09-16 08:00,2023-09-18 12:00,2023-09-16 08:00,2023-09-18 15:00,2025-11-20 17:00,2025-11-20 17:00,2025-06-13 08:00,2025-06-13 08:00,0,24,100
CN.AB.AR.1060,METAL STUD FRAMING (2hr) - SWB-2-L2 - ELECTRICAL ROOMGL 21-24 K-N,Complete,SWB - 2,West Support Building,SUWN-2 - 21-24,L2 - SubFab Level,ELECTRIC RM 2,CONSTRUCTION,BERG,TBD Architectural Finishes,AMBER CARO,INTERIORS,2024-01-02 09:00,2024-01-06 10:00,2024-01-02 07:00,2024-01-06 10:00,2025-11-20 17:00,2025-11-20 17:00,2025-12-05 07:00,2025-12-05 07:00,0,32,100
CN.AB.AR.3240,MEP ROUGH IN & INSPECTION (by SECAI) - SWB-2-L2 - ELECTRICAL ROOM 2 GL 21-24 K-N,Complete,SWB - 2,West Support Building,SUWN-2 - 21-24,L2 - SubFab Level,ELECTRIC RM 2,CONSTRUCTION,,Owner & Design Team,AMBER CARO,,2024-01-06 10:00,2024-01-10 14:00,2024-01-06 10:00,2024-01-09 15:00,2025-11-20 17:00,2025-11-20 17:00,2025-12-05 07:00,2025-12-05 07:00,0,32,100
CN.AB.AR.3250,TAPE & FINISH DRYWALL - SWB-2-L2 - ELECTRICAL ROOM 2 GL 21-24 K-N,Complete,SWB - 2,West Support Building,SUWN-2 - 21-24,L2 - SubFab Level,ELECTRIC RM 2,CONSTRUCTION,,DRYWALL,AMBER CARO,INTERIORS,2024-03-09 08:00,2024-03-12 10:00,2024-03-01 00:00,2024-03-05 00:00,2025-11-20 17:00,2025-11-20 17:00,2025-12-05 07:00,2025-12-05 07:00,0,32,100
CN.AB.AR.3260,FINISH PAINT - SWB-2-L2 - ELECTRICAL ROOM 2 GL 21-24 K-N,Not Started,SWB - 2,West Support Building,SUWN-2 - 21-24,L2 - SubFab Level,ELECTRIC RM 2,CONSTRUCTION,FINISH PAINT,TBD Architectural Finishes,JAMES LEE,INTERIORS,2025-11-21 07:00,2025-11-21 17:00,,,2025-11-21 07:00,2025-11-21 17:00,2025-12-05 07:00,2025-12-05 17:00,10,10,0
CN.SWB2.1250,DS STEEL SPRAY FIREPROOFING SFRM - SWB-2 - L4&L5 CEILING GL 21-24/J-L,Complete,SWB - 2,West Support Building,SUWN-2 - 21-24,L4 - SUP Roof - FAB Roof,DS/AD INTERIORS,CONSTRUCTION,ROLLING PLAINS,Fireproofing,HOON WOO,,2024-09-06 07:00,2024-09-23 17:00,2024-08-24 07:00,2024-08-28 17:00,2025-11-20 17:00,2025-11-20 17:00,2025-12-05 17:00,2025-12-05 17:00,0,100,100
CN.SWB2.1260,PH1- DECKING GL 21 - 22 - SWB-2-ROOF,Complete,SWB - 2,West Support Building,SUWN-2 - 21-24,L4 - SUP Roof - FAB Roof,,CONSTRUCTION,,Decking & Detail,SEAN MONK,SOMD / Roofing / Waterproofing,2023-08-24 14:00,2023-08-26 10:00,2023-08-12 13:15,2023-08-13 17:00,2025-11-20 17:00,2025-11-20 17:00,2025-06-13 08:00,2025-06-13 08:00,0,16,100
CN.SWB2.1270,PH1- DECKING GL 21 - 22 - SWB-2-L3,Complete,SWB - 2,West Support Building,SUWN-2 - 21-24,L3 / Waffle Slab Level,,CONSTRUCTION,,Decking & Detail,SEAN MONK,,2023-08-11 13:00,2023-08-13 09:00,2023-08-11 13:00,2023-08-14 11:00,2025-11-20 17:00,2025-11-20 17:00,2025-11-21 07:00,2025-11-21 07:00,0,16,100
CN.SWB2.1280,PH1- DECKING GL 21 - 22 - SWB-2-L2 -,Complete,SWB - 2,West Support Building,SUWN-2 - 21-24,L2 - SubFab Level,,CONSTRUCTION,,Decking & Detail,SEAN MONK,,2023-07-27 09:00,2023-07-28 15:00,2023-07-17 09:00,2023-07-19 15:00,2025-11-20 17:00,2025-11-20 17:00,2025-06-13 08:00,2025-06-13 08:00,0,16,100
CN.SEA1.2670,PH1- MEP EQPT PADS (REBAR)- SWB-2 ROOF,Complete,SWB - 2,West Support Building,SUWN-2 - 21-24,L4 - SUP Roof - FAB Roof,,CONSTRUCTION,,OAC/ MECH PADS,CONCRETE,SOMD / Roofing / Waterproofing,2023-10-12 13:00,2023-10-14 09:00,2023-10-12 13:00,2023-10-14 10:00,2025-11-20 17:00,2025-11-20 17:00,2025-12-05 17:00,2025-12-05 17:00,0,16,100
CN.SEA1.2680,PH1- MEP EQPT PADS (PLACE CONCRETE - BLOCK)- SWB-2-ROOF,Complete,SWB - 2,West Support Building,SUWN-2 - 21-24,L4 - SUP Roof - FAB Roof,,CONSTRUCTION,,OAC/ MECH PADS,CONCRETE,SOMD / Roofing / Waterproofing,2023-10-24 07:00,2023-10-24 15:00,2023-10-24 07:00,2023-10-24 15:00,2025-11-20 17:00,2025-11-20 17:00,2025-12-05 17:00,2025-12-05 17:00,0,8,100
CN.SEA1.2690,PH1- MEP EQPT PADS (STRIP / PATCH - BLOCK)- SWB-2-ROOF,Complete,SWB - 2,West Support Building,SUWN-2 - 21-24,L4 - SUP Roof - FAB Roof,,CONSTRUCTION,,OAC/ MECH PADS,CONCRETE,SOMD / Roofing / Waterproofing,2023-10-27 07:00,2023-10-27 15:00,2023-10-27 07:00,2023-10-27 15:00,2025-11-20 17:00,2025-11-20 17:00,2025-12-05 17:00,2025-12-05 17:00,0,8,100
CN.SEA3.1400,PH1-CIP WALL (DS)- SWB-2,Complete,SWB - 2,West Support Building,SUWN-2 - 21-24,L4 - SUP Roof - FAB Roof,,CONSTRUCTION,,CIP WALL,CONCRETE,SOMD / Roofing / Waterproofing,2023-10-01 08:00,2023-10-03 12:00,2023-10-01 08:00,2023-10-03 13:00,2025-11-20 17:00,2025-11-20 17:00,2025-12-05 17:00,2025-12-05 17:00,0,24,100
CN.SEA1.2700,PH1- MEP EQPT PADS (INSTALL DRAIN MATS)- SWB-2-ROOF,Complete,SWB - 2,West Support Building,SUWN-2 - 21-24,L4 - SUP Roof - FAB Roof,,CONSTRUCTION,,OAC/ MECH PADS,JAMES LIVELY,SOMD / Roofing / Waterproofing,2023-10-09 07:00,2023-10-10 13:00,2023-10-09 07:00,2023-10-10 13:00,2025-11-20 17:00,2025-11-20 17:00,2025-12-05 17:00,2025-12-05 17:00,0,16,100
CN.SWB2.1340,PH1- TOPPING SLAB w TRENCH & ANGLE EMBEDS- SWB-2-L1,Complete,SWB - 2,West Support Building,SUWN-2 - 21-24,L1 - Fndn Slab,,CONSTRUCTION,,TOPPING,CONCRETE,SOMD / Roofing / Waterproofing,2023-10-30 07:00,2023-11-03 11:00,2023-10-30 07:00,2023-11-03 11:00,2025-11-20 17:00,2025-11-20 17:00,2025-12-05 17:00,2025-12-05 17:00,0,24,100
CN.SWB2.1350,PH1- DS/AD DECKING & DETAILING GL 21 - 24  DS/AD SWB-2  L6 GL 21-24 J-K,Complete,SWB - 2,West Support Building,SUWN-2 - 21-24,DS/AD,,CONSTRUCTION,,Decking & Detail,SEAN MONK,,2023-12-04 07:00,2023-12-08 17:00,2023-11-27 07:00,2023-11-29 17:00,2025-11-20 17:00,2025-11-20 17:00,2025-06-13 08:00,2025-06-13 08:00,0,40,100
CN.SWB2.1360,PH1- DS/AD FRP SLAB - DS/AD SWB-2 - L4/E GL 21-24 J-K,Complete,SWB - 2,West Support Building,SUWN-2 - 21-24,DS/AD,,CONSTRUCTION,,SOMD,CONCRETE,,2024-01-22 07:00,2024-01-24 11:00,2024-01-21 07:00,2024-01-23 15:00,2025-11-20 17:00,2025-11-20 17:00,2025-06-13 08:00,2025-06-13 08:00,0,24,100
CN.SWB2.1370,AD WATERPROOFING - SWB2 - GL 21-24 - J-K - L4/E,Complete,SWB - 2,West Support Building,SUWN-2 - 21-24,DS/AD,,CONSTRUCTION,BRAZOS,Waterproofing - Preferred,JAMES LIVELY,,2024-06-28 07:00,2024-07-17 17:00,2024-06-26 07:00,2024-07-01 17:00,2025-11-20 17:00,2025-11-20 17:00,2025-11-25 07:00,2025-11-25 07:00,0,110,100
CN.SWB2.1380,AD TOPPING SLAB - SWB2 - GL 21-24 - J-K - L4/E,Complete,SWB - 2,West Support Building,SUWN-2 - 21-24,DS/AD,,CONSTRUCTION,BAKER,Roofing,CONCRETE,,2024-07-26 07:00,2024-07-31 17:00,2024-07-01 07:00,2024-07-02 17:00,2025-11-20 17:00,2025-11-20 17:00,2025-12-05 17:00,2025-12-05 17:00,0,40,100
TIER 22.1054,TIER 2 GROUT PRECAST COLUMNS & BEAMS - SWB2,Complete,SWB - 2,West Support Building,SUWN-2 - 21-24,L4 - SUP Roof - FAB Roof,,CONSTRUCTION,,"SUP WEST N,M",SEAN MONK,,2023-08-19 11:00,2023-08-22 13:00,2023-08-04 11:00,2023-08-10 14:00,2025-11-20 17:00,2025-11-20 17:00,2025-06-13 08:00,2025-06-13 08:00,0,32,100
CN.SWB1.1420,PH1- DECKING GL 20 - 21 - SWB-1-L2 -,Complete,SWB - 2,West Support Building,SUWN-2 - 21-24,L2 - SubFab Level,,CONSTRUCTION,,Decking & Detail,SEAN MONK,,2023-07-24 07:00,2023-07-25 13:00,2023-07-14 07:00,2023-07-16 13:00,2025-11-20 17:00,2025-11-20 17:00,2025-06-13 08:00,2025-06-13 08:00,0,16,100
CN.SWB1.1440,PH1- DECKING GL 20 - 21- SWB-1-L3,Complete,SWB - 2,West Support Building,SUWN-2 - 21-24,L3 / Waffle Slab Level,,CONSTRUCTION,,Decking & Detail,SEAN MONK,,2023-08-10 07:00,2023-08-11 13:00,2023-08-10 07:00,2023-08-11 13:00,2025-11-20 17:00,2025-11-20 17:00,2025-11-03 07:00,2025-11-03 07:00,0,16,100
CN.SWB2.1390,PH1- DECKING GL 22 - 23 - SWB-2-L2 -,Complete,SWB - 2,West Support Building,SUWN-2 - 21-24,L2 - SubFab Level,,CONSTRUCTION,,Decking & Detail,SEAN MONK,,2023-08-11 13:00,2023-08-13 09:00,2023-08-11 13:00,2023-08-14 11:00,2025-11-20 17:00,2025-11-20 17:00,2025-06-13 08:00,2025-06-13 08:00,0,16,100
CN.SWB2.1400,PH1- DECKING GL 23 - 24 - SWB-2-L2 -,Complete,SWB - 2,West Support Building,SUWN-2 - 21-24,L2 - SubFab Level,,CONSTRUCTION,,Decking & Detail,SEAN MONK,,2023-08-14 11:00,2023-08-15 17:00,2023-08-14 11:00,2023-08-15 17:00,2025-11-20 17:00,2025-11-20 17:00,2025-06-13 08:00,2025-06-13 08:00,0,16,100
CN.SWB2.1410,PH1- DECKING GL 22 - 23 - SWB-2-L3,Complete,SWB - 2,West Support Building,SUWN-2 - 21-24,L3 / Waffle Slab Level,,CONSTRUCTION,,Decking & Detail,SEAN MONK,,2023-08-14 11:00,2023-08-15 17:00,2023-08-14 11:00,2023-08-15 17:00,2025-11-20 17:00,2025-11-20 17:00,2025-11-21 07:00,2025-11-21 07:00,0,16,100
CN.SWB2.1430,PH1- DECKING GL 22 - 23 - SWB-2-ROOF,Complete,SWB - 2,West Support Building,SUWN-2 - 21-24,L4 - SUP Roof - FAB Roof,,CONSTRUCTION,,Decking & Detail,SEAN MONK,SOMD / Roofing / Waterproofing,2023-08-26 11:00,2023-08-27 17:00,2023-08-14 09:00,2023-08-15 16:00,2025-11-20 17:00,2025-11-20 17:00,2025-06-13 08:00,2025-06-13 08:00,0,16,100
CN.SWB2.1440,PH1- DECKING GL 23 - 24 - SWB-2-ROOF,Complete,SWB - 2,West Support Building,SUWN-2 - 21-24,L4 - SUP Roof - FAB Roof,,CONSTRUCTION,,Decking & Detail,SEAN MONK,SOMD / Roofing / Waterproofing,2023-08-29 08:00,2023-08-31 14:00,2023-08-16 08:00,2023-08-17 16:00,2025-11-20 17:00,2025-11-20 17:00,2025-06-13 08:00,2025-06-13 08:00,0,16,100
CN.SWB2.1450,PH1- DS/AD DECKING & DETAILING GL 21 - 24  DS/AD SWB-2  L4 & L4/E GL 21-24 J-K,Complete,SWB - 2,West Support Building,SUWN-2 - 21-24,DS/AD,,CONSTRUCTION,,Decking & Detail,SEAN MONK,,2024-01-18 07:00,2024-01-21 09:00,2024-01-18 07:00,2024-01-20 13:00,2025-11-20 17:00,2025-11-20 17:00,2025-06-13 08:00,2025-06-13 08:00,0,32,100
CN.AB.AR.4560,DRYWALL 2 SIDE - SWB-2-L2 - ELECTRICAL ROOM 2 GL 21-24 K-N,Complete,SWB - 2,West Support Building,SUWN-2 - 21-24,L2 - SubFab Level,ELECTRIC RM 2,CONSTRUCTION,,DRYWALL,AMBER CARO,INTERIORS,2024-01-29 07:00,2024-02-01 09:00,2024-01-26 07:00,2024-02-02 11:00,2025-11-20 17:00,2025-11-20 17:00,2025-12-05 07:00,2025-12-05 07:00,0,32,100
CN.AB.AR.4570,DRYWALL & INSULATION (1 side) (INT) - SWB-2-L2 - ELECTRICAL ROOM 2 GL 21-24 K-N,Complete,SWB - 2,West Support Building,SUWN-2 - 21-24,L2 - SubFab Level,ELECTRIC RM 2,CONSTRUCTION,,DRYWALL,AMBER CARO,INTERIORS,2024-01-10 07:00,2024-01-14 09:00,2024-01-09 15:00,2024-01-12 17:00,2025-11-20 17:00,2025-11-20 17:00,2025-12-05 07:00,2025-12-05 07:00,0,32,100
CN.SWB2.1470,PH1- DS STEEL FRAME INSTALL - SWB-2 Comeback Sup Side,Complete,SWB - 2,West Support Building,SUWN-2 - 21-24,DS/AD,,CONSTRUCTION,,Steel Erection,SEAN MONK,,2023-09-21 11:00,2023-09-23 15:00,2023-09-21 11:00,2023-09-23 16:00,2025-11-20 17:00,2025-11-20 17:00,2025-06-13 08:00,2025-06-13 08:00,0,24,100
CN.SWB2.1480,PH1- EXTERIOR CURBS - SWB-2-L1,Complete,SWB - 2,West Support Building,SUWN-2 - 21-24,L1 - Fndn Slab,,CONSTRUCTION,,Pour Concrete,JAMES LEE,SOMD / Roofing / Waterproofing,2023-10-30 07:00,2023-11-05 15:00,2023-10-30 07:00,2023-11-02 09:00,2025-11-20 17:00,2025-11-20 17:00,2025-08-26 07:00,2025-08-26 07:00,0,48,100
CN.SWB2.1490,PH1- MEP PADS - SWB-2-L1,Complete,SWB - 2,West Support Building,SUWN-2 - 21-24,L1 - Fndn Slab,,CONSTRUCTION,,Pour Concrete,JAMES LEE,SOMD / Roofing / Waterproofing,2023-11-03 11:00,2023-11-08 09:00,2023-11-03 11:00,2023-11-08 13:00,2025-11-20 17:00,2025-11-20 17:00,2025-12-05 17:00,2025-12-05 17:00,0,48,100
CN.SWB2.2410,METAL STUD FRAMING (2hr) - SWB2 - L1- GCS TRAINING,Complete,SWB - 2,East Support Building,SUWN-2 - 21-24,L1 - Fndn Slab,GCS TRAINING,CONSTRUCTION,BERG,TBD Architectural Finishes,AMBER CARO,INTERIORS,2023-10-10 13:00,2023-10-14 13:00,2023-09-11 13:00,2023-09-18 15:00,2025-11-20 17:00,2025-11-20 17:00,2025-11-21 07:00,2025-11-21 07:00,0,40,100
CN.SWB2.3870,MEP ROUGH IN & INSPECTION (by SECAI) - SWB2 - L1- GCS TRAINING GL 21-24 J-K,Complete,SWB - 2,East Support Building,SUWN-2 - 21-24,L1 - Fndn Slab,GCS TRAINING,CONSTRUCTION,,Owner & Design Team,AMBER CARO,,2024-01-17 07:00,2024-01-20 17:00,2024-01-16 07:00,2024-01-21 10:00,2025-11-20 17:00,2025-11-20 17:00,2025-11-26 07:00,2025-11-26 07:00,0,40,100
CN.SWB2.3880,TAPE & FINISH DRYWALL - GCS TRAINING - GL 21-24 - L-M - L1,Complete,SWB - 2,East Support Building,SUWN-2 - 21-24,L1 - Fndn Slab,GCS TRAINING,CONSTRUCTION,CHERRY COATING,DRYWALL,AMBER CARO,INTERIORS,2025-08-14 07:00,2025-08-14 07:00,2025-08-14 07:00,2025-08-14 07:00,2025-11-20 17:00,2025-11-20 17:00,2025-11-26 07:00,2025-11-26 07:00,0,0,100
CN.SWB2.3930,INSTALL WALL PROTECTION - GCS TRAINING - GL 22-23 - L-M - L1,Not Started,SWB - 2,East Support Building,SUWN-2 - 21-24,L1 - Fndn Slab,GCS TRAINING,CONSTRUCTION,BERNCO,TBD Architectural Finishes,JAMES LEE,INTERIORS,2025-11-21 07:00,2025-11-25 17:00,,,2025-11-21 07:00,2025-11-25 17:00,2025-11-26 07:00,2025-12-02 17:00,30,30,0
CN.SWB2.3890,FINISH PAINT - SWB2 - L1- GCS TRAINING GL 21-24 J-K,Not Started,SWB - 2,East Support Building,SUWN-2 - 21-24,L1 - Fndn Slab,GCS TRAINING,CONSTRUCTION,FINISH PAINT,TBD Architectural Finishes,JAMES LEE,INTERIORS,2025-11-21 07:00,2025-12-01 17:00,,,2025-11-21 07:00,2025-12-01 17:00,2025-12-01 07:00,2025-12-05 17:00,50,50,0
CN.SWB21240,PH1- INSTALL METAL STAIR & SUPPORT STEEL - SWB2 - L1 GL 21-24 J-K - STAIR 4 - GL 23-24 - K-L,Complete,SWB - 2,East Support Building,SUWN-2 - 21-24,L1 - Fndn Slab,,CONSTRUCTION,PATRIOT,INSULATED METAL PANELS,JAMES LIVELY,INTERIORS,2024-03-05 07:00,2024-03-08 17:00,2024-03-05 07:00,2024-03-27 17:00,2025-11-20 17:00,2025-11-20 17:00,2025-12-05 17:00,2025-12-05 17:00,0,40,100
CN.SWB2.4340,DRYWALL 2 SIDE - GCS TRAINING - GL 21-24 - L-M - L1,Complete,SWB - 2,East Support Building,SUWN-2 - 21-24,L1 - Fndn Slab,GCS TRAINING,CONSTRUCTION,BERG,DRYWALL,AMBER CARO,INTERIORS,2024-03-11 07:00,2024-03-19 17:00,2024-03-01 07:00,2025-08-13 17:00,2025-11-20 17:00,2025-11-20 17:00,2025-11-26 07:00,2025-11-26 07:00,0,40,100
CN.SWB2.4350,DRYWALL & INSULATION (1 side) (INT) - SWB2 - L1- GCS TRAINING,Complete,SWB - 2,East Support Building,SUWN-2 - 21-24,L1 - Fndn Slab,GCS TRAINING,CONSTRUCTION,,DRYWALL,AMBER CARO,INTERIORS,2023-09-26 07:00,2023-09-30 17:00,2023-09-26 07:00,2023-09-30 09:00,2025-11-20 17:00,2025-11-20 17:00,2025-11-26 07:00,2025-11-26 07:00,0,40,100
CN.SWB2.4680,FLOOR STRIPING PAINT - SWB2 - L1- GCS TRAINING GL 21-24 J-K,Not Started,SWB - 2,East Support Building,SUWN-2 - 21-24,L1 - Fndn Slab,GCS TRAINING,CONSTRUCTION,FLOOR STRIPING PAINT,TBD Architectural Finishes,JAMES LEE,INTERIORS,2025-11-26 07:00,2025-12-02 17:00,,,2025-11-26 07:00,2025-12-02 17:00,2025-12-03 07:00,2025-12-05 17:00,30,30,0
CN.SWB22410,METAL STUD FRAMING (2hr) - SWB2 - L3 - ELECTRICAL ROOM 1 CENTRAL GL 21-24 K-N,Complete,SWB - 2,East Support Building,SUWN-2 - 21-24,L3 / Waffle Slab Level,ELECTRIC RM 1,CONSTRUCTION,BERG,TBD Architectural Finishes,AMBER CARO,INTERIORS,2024-02-19 07:00,2024-02-23 09:00,2024-02-19 07:00,2024-02-23 09:00,2025-11-20 17:00,2025-11-20 17:00,2025-11-26 07:00,2025-11-26 07:00,0,32,100
CN.SWB23870,MEP ROUGH IN & INSPECTION (by SECAI) - SWB2 - L1 - ELECTRICAL ROOM 1 CENTRAL GL 21-24 K-N,Complete,SWB - 2,East Support Building,SUWN-2 - 21-24,L3 / Waffle Slab Level,ELECTRIC RM 1,CONSTRUCTION,SECAI,Owner & Design Team,AMBER CARO,,2024-10-14 07:00,2024-10-18 17:00,2024-08-08 07:00,2024-08-13 17:00,2025-11-20 17:00,2025-11-20 17:00,2025-12-05 07:00,2025-12-05 07:00,0,40,100
CN.SWB23880,TAPE & FINISH DRYWALL - SWB2 - L1 - ELECTRICAL ROOM 1 CENTRAL GL 21-24 K-N,Complete,SWB - 2,East Support Building,SUWN-2 - 21-24,L3 / Waffle Slab Level,ELECTRIC RM 1,CONSTRUCTION,CHERRY COATING,DRYWALL,AMBER CARO,INTERIORS,2024-09-03 07:00,2024-09-06 17:00,2024-09-03 07:00,2024-09-06 17:00,2025-11-20 17:00,2025-11-20 17:00,2025-12-05 07:00,2025-12-05 07:00,0,40,100
CN.SWB23890,FINISH PAINT - SWB2 - L1 - ELECTRICAL ROOM 1 CENTRAL GL 21-24 K-N,Not Started,SWB - 2,East Support Building,SUWN-2 - 21-24,L3 / Waffle Slab Level,ELECTRIC RM 1,CONSTRUCTION,FINISH PAINT,TBD Architectural Finishes,JAMES LEE,INTERIORS,2025-11-21 07:00,2025-11-21 17:00,,,2025-11-21 07:00,2025-11-21 17:00,2025-12-05 07:00,2025-12-05 17:00,10,10,0
CN.SWB24340,DRYWALL 2 SIDE - SWB2 - L1 - ELECTRICAL ROOM 1 CENTRAL GL 21-24 K-N,Complete,SWB - 2,East Support Building,SUWN-2 - 21-24,L3 / Waffle Slab Level,ELECTRIC RM 1,CONSTRUCTION,BERG,DRYWALL,AMBER CARO,INTERIORS,2024-08-15 07:00,2024-08-20 17:00,2024-08-15 07:00,2024-08-19 17:00,2025-11-20 17:00,2025-11-20 17:00,2025-12-05 07:00,2025-12-05 07:00,0,40,100
CN.SWB24350,DRYWALL & INSULATION (1 side) (INT) - SWB2 - L3 - ELECTRICAL ROOM 1 CENTRAL GL 21-24 K-N,Complete,SWB - 2,East Support Building,SUWN-2 - 21-24,L3 / Waffle Slab Level,ELECTRIC RM 1,CONSTRUCTION,BERG,DRYWALL,AMBER CARO,INTERIORS,2024-03-22 07:00,2024-03-27 09:00,2024-03-04 07:00,2024-08-08 17:00,2025-11-20 17:00,2025-11-20 17:00,2025-12-05 07:00,2025-12-05 07:00,0,32,100
CN.SWB2240,PH1- INSTALL METAL STAIR & SUPPORT STEEL - SWB2 - L1 GL 21-24 K-N - STAIR 4 - GL 23-24 - K-L,Complete,SWB - 2,East Support Building,SUWN-2 - 21-24,L3 / Waffle Slab Level,ELECTRIC RM 1,CONSTRUCTION,PATRIOT,INSULATED METAL PANELS,JAMES LIVELY,INTERIORS,2024-09-05 07:00,2024-09-10 17:00,2024-03-05 07:00,2024-03-27 17:00,2025-11-20 17:00,2025-11-20 17:00,2025-11-24 07:00,2025-11-24 07:00,0,40,100
CN.SWB2.1500,IMPACT - DRB-01 ADDITIONAL BEAMS BETWEEN FAB AND AD GL 21 - 24 ROOF,Complete,SWB - 2,,SUWN-2 - 21-24,DS/AD,,CONSTRUCTION,,Roofing,,,2023-11-27 07:00,2023-12-01 17:00,2023-11-13 07:00,2023-11-22 17:00,2025-11-20 17:00,2025-11-20 17:00,2025-06-13 08:00,2025-06-13 08:00,0,40,100
EMB1020,IMPACT - Missing 3 Precast Embeds - N23 and M23 1A (36),Complete,SWB - 2,West Support Building,SUWN-2 - 21-24,DS/AD,,CONSTRUCTION,,Steel Erection,SEAN MONK,,2023-11-27 07:00,2023-11-28 13:00,2023-09-19 07:00,2023-12-02 13:00,2025-11-20 17:00,2025-11-20 17:00,2025-12-05 17:00,2025-12-05 17:00,0,16,100
ANC1008,IMPACT [CL 23] - Missing EMBED IN COLUMN FOR DS/AD STEEL - GL L23 Level 3A (33),Complete,SWB - 2,West Support Building,SUWN-2 - 21-24,DS/AD,,CONSTRUCTION,,Steel Erection,SEAN MONK,,2023-10-30 07:00,2023-11-04 17:00,2023-08-02 07:00,2023-10-18 10:00,2025-11-20 17:00,2025-11-20 17:00,2025-11-21 07:00,2025-11-21 07:00,0,40,100
CN.SWB2.4700,PH1- DS/AD DECKING & DETAILING GL 21 - 24 DS/AD SWB-2 L2,Complete,SWB - 2,West Support Building,SUWN-2 - 21-24,DS/AD,,CONSTRUCTION,,Decking & Detail,SEAN MONK,,2023-09-29 07:00,2023-10-03 15:00,2023-09-29 07:00,2023-10-03 17:00,2025-11-20 17:00,2025-11-20 17:00,2025-08-26 07:00,2025-08-26 07:00,0,48,100
CN.SWB2.4710,PH1- DS/AD FRP SLAB - SWB-2 L2,Complete,SWB - 2,West Support Building,SUWN-2 - 21-24,DS/AD,,CONSTRUCTION,,SOMD,CONCRETE,,2023-11-07 10:00,2023-11-12 08:00,2023-11-07 10:00,2023-11-09 11:00,2025-11-20 17:00,2025-11-20 17:00,2025-11-21 07:00,2025-11-21 07:00,0,48,100
CN.SWB2.4720,AD STEEL PAINT FIREPROOFING IFRM- SWB-2 - GL 19-23 - J-K - L2-CEILING,Complete,SWB - 2,West Support Building,SUWN-2 - 21-24,DS/AD,,CONSTRUCTION,ROLLING PLAINS,Fireproofing,HOON WOO,,2024-07-15 07:00,2024-07-22 17:00,2024-07-15 07:00,2024-07-22 17:00,2025-11-20 17:00,2025-11-20 17:00,2025-12-05 17:00,2025-12-05 17:00,0,60,100
CN.SWB2.1222,METAL STUD FRAMING (2hr)  - SWB2- GL 21-24  - K LINE -  L1,Complete,SWB - 2,West Support Building,SUWN-2 - 21-24,L1 - Fndn Slab,DS/AD INTERIORS,CONSTRUCTION,BERG,TBD Architectural Finishes,FIZ DATA CENTER,INTERIORS,2023-11-27 07:00,2023-12-02 15:00,2023-11-27 07:00,2023-12-02 16:00,2025-11-20 17:00,2025-11-20 17:00,2025-11-21 07:00,2025-11-21 07:00,0,48,100
CN.SWB2.1302,TAPE & FINISH DRYWALL- SWB2- GL 21-24  - K LINE -  L1,Complete,SWB - 2,West Support Building,SUWN-2 - 21-24,L1 - Fndn Slab,DS/AD INTERIORS,CONSTRUCTION,,DRYWALL,FIZ DATA CENTER,INTERIORS,2024-03-23 08:00,2024-03-27 08:00,2024-03-07 00:00,2024-03-13 00:00,2025-11-20 17:00,2025-11-20 17:00,2025-12-05 17:00,2025-12-05 17:00,0,40,100
CN.SWB2.1322,PRIMER & PAINT DRYWALL -  GL 21-24  - K LINE -  L1,Complete,SWB - 2,West Support Building,SUWN-2 - 21-24,L1 - Fndn Slab,DS/AD INTERIORS,CONSTRUCTION,FINISH PAINT,TBD Architectural Finishes,FIZ DATA CENTER,INTERIORS,2024-10-22 07:00,2024-10-25 17:00,2024-10-22 07:00,2024-10-25 17:00,2025-11-20 17:00,2025-11-20 17:00,2025-12-05 17:00,2025-12-05 17:00,0,30,100
CN.SWB2.1282,DRYWALL 2 SIDE - SWB2- GL 21-24 - K LINE - L1,Complete,SWB - 2,West Support Building,SUWN-2 - 21-24,L1 - Fndn Slab,DS/AD INTERIORS,CONSTRUCTION,,DRYWALL,FIZ DATA CENTER,INTERIORS,2024-03-09 08:00,2024-03-17 08:00,2024-03-01 00:00,2024-03-06 00:00,2025-11-20 17:00,2025-11-20 17:00,2025-12-05 17:00,2025-12-05 17:00,0,40,100
CN.SWB2.1262,DRYWALL & INSULATION (1 side) (INT)- SWB2- GL 21-24 - K LINE - L1,Complete,SWB - 2,West Support Building,SUWN-2 - 21-24,L1 - Fndn Slab,DS/AD INTERIORS,CONSTRUCTION,,DRYWALL,FIZ DATA CENTER,INTERIORS,2023-12-04 15:00,2023-12-10 13:00,2023-12-04 15:00,2023-12-08 16:00,2025-11-20 17:00,2025-11-20 17:00,2025-12-05 17:00,2025-12-05 17:00,0,48,100
CN.SWB2.1232,METAL STUD FRAMING (2hr)- SWB2- GL 21-24 K LINE - L2,Complete,SWB - 2,West Support Building,SUWN-2 - 21-24,L2 - SubFab Level,DS/AD INTERIORS,CONSTRUCTION,BERG,TBD Architectural Finishes,FIZ DATA CENTER,INTERIORS,2024-02-06 11:00,2024-02-12 09:00,2024-02-06 11:00,2024-02-12 13:00,2025-11-20 17:00,2025-11-20 17:00,2025-11-14 17:00,2025-11-14 17:00,0,48,100
CN.SWB2.1312,REMEDY - TAPE & FINISH DRYWALL - SWB2- GL 21-24 K LINE - L2,Complete,SWB - 2,West Support Building,SUWN-2 - 21-24,L2 - SubFab Level,DS/AD INTERIORS,CONSTRUCTION,CHERRY COATING,DRYWALL,FIZ DATA CENTER,INTERIORS,2024-08-12 07:00,2024-08-15 17:00,2024-08-08 07:00,2024-08-12 17:00,2025-11-20 17:00,2025-11-20 17:00,2025-11-14 17:00,2025-11-14 17:00,0,30,100
CN.SWB2.1332,FINISH PAINT - SWB2- GL 21-24 K LINE - L2,Not Started,SWB - 2,West Support Building,SUWN-2 - 21-24,L2 - SubFab Level,DS/AD INTERIORS,CONSTRUCTION,FINISH PAINT,TBD Architectural Finishes,FIZ DATA CENTER,INTERIORS,2025-11-21 07:00,2025-11-21 17:00,,,2025-11-21 07:00,2025-11-21 17:00,2025-12-05 07:00,2025-12-05 17:00,10,10,0
CN.SWB2.1292,REMEDY - FRAME & DRYWALL - SWB2- GL 21-24 K LINE -  L2,Complete,SWB - 2,West Support Building,SUWN-2 - 21-24,L2 - SubFab Level,DS/AD INTERIORS,CONSTRUCTION,BERG,DRYWALL,FIZ DATA CENTER,INTERIORS,2024-06-18 07:00,2024-06-28 17:00,2024-06-18 07:00,2024-08-01 17:00,2025-11-20 17:00,2025-11-20 17:00,2025-11-14 17:00,2025-11-14 17:00,0,70,100
CN.SWB2.1272,DRYWALL & INSULATION (1 side) (INT)- SWB2- GL 21-24 K LINE - L2,Complete,SWB - 2,West Support Building,SUWN-2 - 21-24,L2 - SubFab Level,DS/AD INTERIORS,CONSTRUCTION,,DRYWALL,FIZ DATA CENTER,INTERIORS,2024-03-09 08:00,2024-03-17 16:00,2024-03-01 00:00,2024-03-12 00:00,2025-11-20 17:00,2025-11-20 17:00,2025-11-14 17:00,2025-11-14 17:00,0,48,100
CN.SWB2.1212,TEMP WALLS Framing and Drywall- SWB2- GL 21-24 K-N - L2,Complete,SWB - 2,,SUWN-2 - 21-24,L2 - SubFab Level,ELECTRIC RM 2,CONSTRUCTION,,DRYWALL,,,2024-03-09 08:00,2024-03-17 08:00,2024-02-02 00:00,2024-02-09 00:00,2025-11-20 17:00,2025-11-20 17:00,2025-12-05 17:00,2025-12-05 17:00,0,40,100
CN.SWB2.4730,PH1 -WELD CLIPS - CLADDING STEEL - SWB-2 L LINE (DS AREA),Complete,SWB - 2,West Support Building,SUWN-2 - 21-24,EXTERIOR SKIN,,CONSTRUCTION,,INSULATED METAL PANELS,JAMES LIVELY,,2023-12-11 07:00,2023-12-12 09:00,2023-12-11 07:00,2023-12-12 09:00,2025-11-20 17:00,2025-11-20 17:00,2025-11-21 07:00,2025-11-21 07:00,0,12,100
CN.SWB2.1460,IMPACT - DS STEEL BEAM STIFFNER CONNECTION FIXES L4 GL 21-24 J-K,Complete,SWB - 2,,SUWN-2 - 21-24,DS/AD,,CONSTRUCTION,,Steel Erection,,,2024-01-02 09:00,2024-01-09 11:00,2024-01-02 07:00,2024-01-15 14:00,2025-11-20 17:00,2025-11-20 17:00,2025-06-13 08:00,2025-06-13 08:00,0,55,100
CN.SWB2.1342,METAL STUD FRAMING (2hr) - SWB2- GL 21-24 K Line - L3,Complete,SWB - 2,West Support Building,SUWN-2 - 21-24,L3 / Waffle Slab Level,DS/AD INTERIORS,CONSTRUCTION,BERG,TBD Architectural Finishes,FIZ DATA CENTER,INTERIORS,2024-04-12 13:00,2024-04-16 09:00,2024-03-11 07:00,2024-03-26 17:00,2025-11-20 17:00,2025-11-20 17:00,2025-06-13 08:00,2025-06-13 08:00,0,16,100
CN.SWB2.1382,TAPE & FINISH DRYWALL - SWB2- GL 21-24 K LINE -  L3,Complete,SWB - 2,West Support Building,SUWN-2 - 21-24,L3 / Waffle Slab Level,DS/AD INTERIORS,CONSTRUCTION,CHERRY COATING,DRYWALL,FIZ DATA CENTER,INTERIORS,2024-09-23 07:00,2024-09-27 17:00,2024-09-23 07:00,2024-09-27 17:00,2025-11-20 17:00,2025-11-20 17:00,2025-06-13 08:00,2025-06-13 08:00,0,40,100
CN.SWB2.1392,D/S SGP Wall Turnover - SWB2- GL 21-24 K LINE - L3,Complete,SWB - 2,West Support Building,SUWN-2 - 21-24,L3 / Waffle Slab Level,DS/AD INTERIORS,CONSTRUCTION,SECAI,TBD Architectural Finishes,FIZ DATA CENTER,INTERIORS,2024-09-27 07:00,2024-09-27 17:00,2024-09-27 07:00,2024-09-27 17:00,2025-11-20 17:00,2025-11-20 17:00,2025-06-13 08:00,2025-06-13 08:00,0,10,100
CN.SWB2.1372,DRYWALL 2 SIDE- SWB2- GL 21-24 K LINE - L3,Complete,SWB - 2,West Support Building,SUWN-2 - 21-24,L3 / Waffle Slab Level,DS/AD INTERIORS,CONSTRUCTION,BERG,DRYWALL,FIZ DATA CENTER,INTERIORS,2024-05-13 07:00,2024-05-17 17:00,2024-05-13 07:00,2024-09-24 17:00,2025-11-20 17:00,2025-11-20 17:00,2025-06-13 08:00,2025-06-13 08:00,0,40,100
CN.SWB2.1362,DRYWALL & INSULATION (1 side) (INT) - SWB2- GL 21-24 K LINE - L3,Complete,SWB - 2,West Support Building,SUWN-2 - 21-24,L3 / Waffle Slab Level,DS/AD INTERIORS,CONSTRUCTION,,DRYWALL,FIZ DATA CENTER,INTERIORS,2024-04-15 07:00,2024-04-18 17:00,2024-03-11 07:00,2024-03-26 17:00,2025-11-20 17:00,2025-11-20 17:00,2025-06-13 08:00,2025-06-13 08:00,0,40,100
CN.SWB2.6000,WATER PROOF PEDASTALS - GL 19-25 - SWB-2-ROOF,Complete,SWB - 2,West Support Building,SUWN-2 - 21-24,L4 - SUP Roof - FAB Roof,,CONSTRUCTION,,TOPPING,FIZ DATA CENTER,SOMD / Roofing / Waterproofing,2024-01-23 08:00,2024-01-23 16:00,2024-01-23 08:00,2024-01-26 15:00,2025-11-20 17:00,2025-11-20 17:00,2025-11-25 07:00,2025-11-25 07:00,0,8,100
CN.SWB2.6010,WATER PROOFING & POUR PEDASTALS - GL 19-25 - SWB-2-ROOF,Complete,SWB - 2,West Support Building,SUWN-2 - 21-24,L4 - SUP Roof - FAB Roof,,CONSTRUCTION,,Roofing,FIZ DATA CENTER,SOMD / Roofing / Waterproofing,2024-01-24 08:00,2024-01-24 16:00,2024-01-24 08:00,2024-01-24 16:00,2025-11-20 17:00,2025-11-20 17:00,2025-11-25 07:00,2025-11-25 07:00,0,8,100
CN.SWB2.6020,FINISH WATER PROOFING & POUR PEDASTALS - GL 19-25 - SWB-2-ROOF,Complete,SWB - 2,West Support Building,SUWN-2 - 21-24,L4 - SUP Roof - FAB Roof,,CONSTRUCTION,,Roofing,FIZ DATA CENTER,SOMD / Roofing / Waterproofing,2024-01-25 07:00,2024-01-25 15:00,2024-01-25 07:00,2024-01-25 15:00,2025-11-20 17:00,2025-11-20 17:00,2025-11-25 07:00,2025-11-25 07:00,0,8,100
CN.SWB2.6030,STRIP PEDSTALS & WORK ON SCRUBBER PAD - GL 19-25 - SWB-2-ROOF,Complete,SWB - 2,West Support Building,SUWN-2 - 21-24,L4 - SUP Roof - FAB Roof,,CONSTRUCTION,,Roofing,FIZ DATA CENTER,SOMD / Roofing / Waterproofing,2024-01-26 15:00,2024-01-27 13:00,2024-01-26 15:00,2024-01-27 14:00,2025-11-20 17:00,2025-11-20 17:00,2025-11-25 07:00,2025-11-25 07:00,0,8,100
CN.SWB2.6040,FINISH FORM & INSPECT - GL 19-25 - SWB-2-ROOF,Complete,SWB - 2,West Support Building,SUWN-2 - 21-24,L4 - SUP Roof - FAB Roof,,CONSTRUCTION,,Roofing,FIZ DATA CENTER,SOMD / Roofing / Waterproofing,2024-01-27 13:00,2024-01-28 11:00,2024-01-27 13:00,2024-01-28 13:00,2025-11-20 17:00,2025-11-20 17:00,2025-11-25 07:00,2025-11-25 07:00,0,8,100
CN.SWB2.6050,PLACE SCRUBBER PAD - GL 19-25 - SWB-2-ROOF,Complete,SWB - 2,West Support Building,SUWN-2 - 21-24,L4 - SUP Roof - FAB Roof,,CONSTRUCTION,,Roofing,FIZ DATA CENTER,SOMD / Roofing / Waterproofing,2024-01-29 11:00,2024-01-30 09:00,2024-01-29 11:00,2024-01-30 09:00,2025-11-20 17:00,2025-11-20 17:00,2025-11-25 07:00,2025-11-25 07:00,0,8,100
CN.SWB2.6060,STRIP FORMS - GL 19-25 - SWB-2-ROOF,Complete,SWB - 2,West Support Building,SUWN-2 - 21-24,L4 - SUP Roof - FAB Roof,,CONSTRUCTION,,Roofing,FIZ DATA CENTER,SOMD / Roofing / Waterproofing,2024-02-01 07:00,2024-02-01 15:00,2024-02-01 07:00,2024-02-01 15:00,2025-11-20 17:00,2025-11-20 17:00,2025-11-25 07:00,2025-11-25 07:00,0,8,100
CN.SWB2.6070,STRIP FORMS & SHORT PATCHING - GL 19-25 - SWB-2-ROOF,Complete,SWB - 2,West Support Building,SUWN-2 - 21-24,L4 - SUP Roof - FAB Roof,,CONSTRUCTION,,Roofing,FIZ DATA CENTER,SOMD / Roofing / Waterproofing,2024-02-02 09:00,2024-02-02 17:00,2024-02-02 09:00,2024-02-02 17:00,2025-11-20 17:00,2025-11-20 17:00,2025-11-25 07:00,2025-11-25 07:00,0,8,100
CN.SWB2.6080,CONTINUE PATCHING & INSPECT - GL 19-25 - SWB-2-ROOF,Complete,SWB - 2,West Support Building,SUWN-2 - 21-24,L4 - SUP Roof - FAB Roof,,CONSTRUCTION,,Roofing,FIZ DATA CENTER,SOMD / Roofing / Waterproofing,2024-02-02 07:00,2024-02-02 15:00,2024-02-02 07:00,2024-02-02 15:00,2025-11-20 17:00,2025-11-20 17:00,2025-11-25 07:00,2025-11-25 07:00,0,8,100
CN.SWB2.6090,INSTALL PRIMER - GL 21-24 - L4 - L-M - ROOF,Complete,SWB - 2,West Support Building,SUWN-2 - 21-24,L4 - SUP Roof - FAB Roof,,CONSTRUCTION,BRAZOS,TOPPING,FIZ DATA CENTER,SOMD / Roofing / Waterproofing,2024-05-03 07:00,2024-05-03 17:00,2024-04-24 07:00,2024-04-24 17:00,2025-11-20 17:00,2025-11-20 17:00,2025-11-25 07:00,2025-11-25 07:00,0,10,100
CN.SWB2.6120,INSTALL BASE COAT - GL 21-24 - L4 - L-M - ROOF,Complete,SWB - 2,West Support Building,SUWN-2 - 21-24,L4 - SUP Roof - FAB Roof,,CONSTRUCTION,BRAZOS,TOPPING,FIZ DATA CENTER,SOMD / Roofing / Waterproofing,2024-04-29 07:00,2024-04-30 17:00,2024-04-26 07:00,2024-04-26 17:00,2025-11-20 17:00,2025-11-20 17:00,2025-11-25 07:00,2025-11-25 07:00,0,20,100
CN.SWB2.6140,INSTALL TOP COAT - GL 21-24 - L4 - L-M - ROOF,Complete,SWB - 2,West Support Building,SUWN-2 - 21-24,L4 - SUP Roof - FAB Roof,,CONSTRUCTION,BRAZOS,TOPPING,FIZ DATA CENTER,SOMD / Roofing / Waterproofing,2024-04-30 07:00,2024-05-02 17:00,2024-04-28 07:00,2024-04-28 17:00,2025-11-20 17:00,2025-11-20 17:00,2025-11-25 07:00,2025-11-25 07:00,0,20,100
CN.SWB2.6150,INSTALL BASE COAT CRICKET - GL 21-24 - L4 - L-M - ROOF,Complete,SWB - 2,West Support Building,SUWN-2 - 21-24,L4 - SUP Roof - FAB Roof,,CONSTRUCTION,BRAZOS,TOPPING,FIZ DATA CENTER,SOMD / Roofing / Waterproofing,2024-05-13 07:00,2024-05-13 17:00,2024-05-06 07:00,2024-05-06 17:00,2025-11-20 17:00,2025-11-20 17:00,2025-11-25 07:00,2025-11-25 07:00,0,10,100
CN.SWB2.6160,INSTALL TOP COAT CRICKET - GL 21-24 - L4 - L-M - ROOF,Complete,SWB - 2,West Support Building,SUWN-2 - 21-24,L4 - SUP Roof - FAB Roof,,CONSTRUCTION,BRAZOS,TOPPING,FIZ DATA CENTER,SOMD / Roofing / Waterproofing,2024-05-13 07:00,2024-05-13 17:00,2024-05-08 07:00,2024-05-08 17:00,2025-11-20 17:00,2025-11-20 17:00,2025-11-25 07:00,2025-11-25 07:00,0,10,100
CN.SWB2.6210,FRP TOPPING SLAB - SWB2 - GL 21-24 - L-M - ROOF,Complete,SWB - 2,West Support Building,SUWN-2 - 21-24,L4 - SUP Roof - FAB Roof,,CONSTRUCTION,BAKER,TOPPING,FIZ DATA CENTER,SOMD / Roofing / Waterproofing,2024-05-17 07:00,2024-05-21 17:00,2024-05-10 07:00,2024-05-13 17:00,2025-11-20 17:00,2025-11-20 17:00,2025-11-25 07:00,2025-11-25 07:00,0,30,100
CN.SWB2.6300,IMPACT - Missing 2 Precast Embeds - SWB2 - GL L/23 - L3A,Complete,SWB - 2,West Support Building,SUWN-2 - 21-24,L3 / Waffle Slab Level,DS/AD INTERIORS,CONSTRUCTION,,TBD Architectural Finishes,FIZ DATA CENTER,INTERIORS,2023-11-02 13:00,2023-11-04 09:00,2023-11-02 13:00,2023-11-04 10:00,2025-11-20 17:00,2025-11-20 17:00,2025-11-21 07:00,2025-11-21 07:00,0,16,100
CN.SWB2.6310,DSAD PENETRATION SUPPORT STEEL FRAMING - SWB-2 - GL 21-24 J-K - L3,Complete,SWB - 2,West Support Building,SUWN-2 - 21-24,DS/AD,,CONSTRUCTION,,Steel Erector - W&W,HOON WOO,,2024-02-09 11:00,2024-02-15 11:00,2024-02-09 11:00,2024-02-15 11:00,2025-11-20 17:00,2025-11-20 17:00,2025-12-05 17:00,2025-12-05 17:00,0,40,100
CN.SWB2.6320,DSAD PENETRATION SUPPORT STEEL FRAMING - SWB-2 - GL 21-24 J-K - L4,Complete,SWB - 2,West Support Building,SUWN-2 - 21-24,DS/AD,,CONSTRUCTION,PERRY & PERRY,Steel Erection,HOON WOO,,2024-05-10 07:00,2024-05-17 17:00,2024-04-29 07:00,2024-06-27 17:00,2025-11-20 17:00,2025-11-20 17:00,2025-12-05 17:00,2025-12-05 17:00,0,50,100
CN.SWB2.1510,PH1- DS/AD FRP SLAB - DS/AD SWB-2  L6 GL 21-24 J-K,Complete,SWB - 2,,SUWN-2 - 21-24,DS/AD,,CONSTRUCTION,,SOMD,,,2023-11-30 08:00,2023-12-02 12:00,2023-11-30 08:00,2023-12-03 13:00,2025-11-20 17:00,2025-11-20 17:00,2025-06-13 08:00,2025-06-13 08:00,0,24,100
CN.SWB2.1520,PH1- DS/AD CURE FRP SLAB - DS/AD SWB-2  L6 GL 21-24 J-K,Complete,SWB - 2,,SUWN-2 - 21-24,DS/AD,,CONSTRUCTION,,SOMD,,,2023-12-04 07:00,2023-12-07 11:00,2023-12-04 07:00,2023-12-07 11:00,2025-11-20 17:00,2025-11-20 17:00,2025-06-13 08:00,2025-06-13 08:00,0,24,100
CN.SWB2.4770,PH1- DS/AD DECKING  GL 21 - 24  DS/AD SWB-2  L3GL 21-24 J-K,Complete,SWB - 2,,SUWN-2 - 21-24,DS/AD,,CONSTRUCTION,,Decking & Detail,,,2023-12-03 13:00,2023-12-05 17:00,2023-12-03 13:00,2023-12-05 08:00,2025-11-20 17:00,2025-11-20 17:00,2025-12-05 17:00,2025-12-05 17:00,0,24,100
CN.SWB2.4780,PH1- DS/AD FRP SLAB - SWB-2 GL 21-24 J-K L2,Complete,SWB - 2,,SUWN-2 - 21-24,DS/AD,,CONSTRUCTION,,SOMD,,,2023-11-02 07:00,2023-11-03 13:00,2023-11-02 07:00,2023-11-03 13:00,2025-11-20 17:00,2025-11-20 17:00,2025-12-05 17:00,2025-12-05 17:00,0,16,100
CN.SWB2.1220,PH1 DETAILING AND INSPECTION CLADDING STEEL - SWB-2 N Line [SUP EXTERIOR WALL] - LEAVOUT,Complete,SWB - 2,,SUWN-2 - 21-24,EXTERIOR SKIN,,CONSTRUCTION,,INSULATED METAL PANELS,,,2024-02-01 08:00,2024-02-11 14:00,2024-02-06 08:00,2024-02-29 15:00,2025-11-20 17:00,2025-11-20 17:00,2025-08-26 07:00,2025-08-26 07:00,0,96,100
CN.SWB2.1240,INSTALL INSULATED METAL PANEL MODULES - GL 21-24 - K LINE (AD AREA),Complete,SWB - 2,,SUWN-2 - 21-24,EXTERIOR SKIN,,CONSTRUCTION,KOVACH,INSULATED METAL PANELS,,,2024-06-13 07:00,2024-06-17 17:00,2024-05-29 07:00,2024-06-01 17:00,2025-11-20 17:00,2025-11-20 17:00,2025-11-21 07:00,2025-11-21 07:00,0,50,100
CN.SWB2.6350,IMPACT - SECAI MEP CRANE - SWB-2 L LINE (DS AREA),Complete,SWB - 2,West Support Building,SUWN-2 - 21-24,EXTERIOR SKIN,,CONSTRUCTION,,INSULATED METAL PANELS,JAMES LIVELY,,2023-11-20 07:00,2023-11-27 17:00,2023-11-13 07:00,2023-11-18 07:00,2025-11-20 17:00,2025-11-20 17:00,2025-11-21 07:00,2025-11-21 07:00,0,40,100
CN.SWB2.6380,IMPACT [S.TIA-112] - ELECTRICAL CONDUIT OBSTRUCTION - L 2-4 GL 21-24 J-K,Complete,SWB - 2,,SUWN-2 - 21-24,DS/AD,,CONSTRUCTION,,Steel Erection,,,2023-11-20 07:00,2023-12-02 17:00,2023-11-13 07:00,2023-12-02 11:00,2025-11-20 17:00,2025-11-20 17:00,2025-12-05 17:00,2025-12-05 17:00,0,80,100
CN.SWB2.6325,KNEE WALL -SWB 2 - GL 21-24 - L4 - J-K -DS/AD,Complete,SWB - 2,,SUWN-2 - 21-24,DS/AD,,CONSTRUCTION,,Cast-in Place Concrete - Baker Concrete,,,2024-01-29 15:00,2024-02-02 15:00,2024-01-29 15:00,2024-02-01 16:00,2025-11-20 17:00,2025-11-20 17:00,2025-11-21 07:00,2025-11-21 07:00,0,40,100
CN.SWB2.6400,PH1- DS/AD DECKING & DETAILING GL 21 - 24  DS/AD SWB-2  L3,Complete,SWB - 2,West Support Building,SUWN-2 - 21-24,DS/AD,,CONSTRUCTION,,Decking & Detail,SEAN MONK,,2023-11-30 07:00,2023-12-04 15:00,2023-11-30 07:00,2023-12-03 09:00,2025-11-20 17:00,2025-11-20 17:00,2025-12-05 17:00,2025-12-05 17:00,0,48,100
CN.SWB2.6410,PH1- DS/AD FRP SLAB - SWB-2  L3,Complete,SWB - 2,West Support Building,SUWN-2 - 21-24,DS/AD,,CONSTRUCTION,,SOMD,CONCRETE,,2023-12-03 08:00,2023-12-05 12:00,2023-12-05 08:00,2023-12-06 13:00,2025-11-20 17:00,2025-11-20 17:00,2025-12-05 17:00,2025-12-05 17:00,0,24,100
CN.SWB2.1290,PH1 - CLADDING STEEL  EXTERIOR  - SWB-2 L LINE (DS AREA) GL 21-24,Complete,SWB - 2,,SUWN-2 - 21-24,EXTERIOR SKIN,,CONSTRUCTION,,INSULATED METAL PANELS,,,2024-01-22 07:00,2024-01-31 13:00,2024-01-11 07:00,2024-01-22 17:00,2025-11-20 17:00,2025-11-20 17:00,2025-11-21 07:00,2025-11-21 07:00,0,96,100
CN.SWB2.6450,DS/AD STEEL SPRAY FIREPROOFING SFRM- SWB-2 L1 CEILING GL 19-23 J-K,Complete,SWB - 2,West Support Building,SUWN-2 - 21-24,DS/AD,,CONSTRUCTION,,Fireproofing,HOON WOO,,2023-12-04 07:00,2023-12-07 11:00,2023-11-30 07:00,2023-12-03 11:00,2025-11-20 17:00,2025-11-20 17:00,2025-11-21 07:00,2025-11-21 07:00,0,24,100
CN.SWB2.6460,K-LINE STEEL SPRAY FIREPROOFING SFRM2 -SWB-2 L3-CEILING GL 21-24,Complete,SWB - 2,West Support Building,SUWN-2 - 21-24,L4 - SUP Roof - FAB Roof,DS/AD INTERIORS,CONSTRUCTION,ROLLING PLAINS,Fireproofing,HOON WOO,,2024-04-25 07:00,2024-05-02 17:00,2024-04-25 07:00,2024-04-30 17:00,2025-11-20 17:00,2025-11-20 17:00,2025-06-13 08:00,2025-06-13 08:00,0,50,100
CN.SWB2.6500,ROOFTOP DRY PARAPET - SWB-1 (DS AREA) GL 21-24 N (DS AREA),Complete,SWB - 2,West Support Building,SUWN-2 - 21-24,EXTERIOR SKIN,,CONSTRUCTION,,INSULATED METAL PANELS,JAMES LIVELY,,2024-02-26 07:00,2024-03-03 15:00,2024-02-26 07:00,2024-03-02 16:00,2025-11-20 17:00,2025-11-20 17:00,2025-12-05 17:00,2025-12-05 17:00,0,58,100
CN.SWB2.6520,INSTALL INSULATED METAL PANEL MODULES - GL 21-24 - J LINE (AD AREA),Complete,SWB - 2,West Support Building,SUWN-2 - 21-24,DS/AD,,CONSTRUCTION,KOVACH,Waterproofing - Preferred,JAMES LIVELY,,2024-06-24 07:00,2024-06-25 17:00,2024-06-18 07:00,2024-06-18 17:00,2025-11-20 17:00,2025-11-20 17:00,2025-12-05 17:00,2025-12-05 17:00,0,20,100
CN.SWB2.6530,INSTALL TPO ROOFING - SWB2 - GL 22-26 - K-L - L6,Complete,SWB - 2,West Support Building,SUWN-2 - 21-24,L6 - PENTHOUSE / DS ROOF,,CONSTRUCTION,BRAZOS,Waterproofing - Preferred,JAMES LIVELY,,2024-10-08 07:00,2024-10-11 17:00,2024-10-08 07:00,2024-10-12 17:00,2025-11-20 17:00,2025-11-20 17:00,2025-12-05 17:00,2025-12-05 17:00,0,30,100
CN.SWB2.6540,DCC BEAM (STEEL STRUCTURE) - SWB2- GL 21-24 - L3 K LINE,Complete,SWB - 2,West Support Building,SUWN-2 - 21-24,L3 / Waffle Slab Level,DS/AD INTERIORS,CONSTRUCTION,,TBD Architectural Finishes,FIZ DATA CENTER,INTERIORS,2024-03-04 08:00,2024-03-11 10:00,2024-03-04 08:00,2024-03-08 14:00,2025-11-20 17:00,2025-11-20 17:00,2025-06-13 08:00,2025-06-13 08:00,0,72,100
CN.SWB2.6550,TEMPORARY SCAFFOLD PLATFORM - SWB2- GL 21-24 - L3,Complete,SWB - 2,West Support Building,SUWN-2 - 21-24,L3 / Waffle Slab Level,DS/AD INTERIORS,CONSTRUCTION,,TBD Architectural Finishes,FIZ DATA CENTER,INTERIORS,2024-03-09 08:00,2024-03-17 16:00,2024-03-09 08:00,2024-03-16 12:00,2025-11-20 17:00,2025-11-20 17:00,2025-06-13 08:00,2025-06-13 08:00,0,48,100
CN.SWB2.6560,MEP IN WALL ROUGH INS - SWB2- GL 21-24 K LINE - L3,Complete,SWB - 2,West Support Building,SUWN-2 - 21-24,L3 / Waffle Slab Level,DS/AD INTERIORS,CONSTRUCTION,SECAI,TBD Architectural Finishes,FIZ DATA CENTER,INTERIORS,2024-05-02 07:00,2024-05-03 17:00,2024-05-02 07:00,2024-05-11 17:00,2025-11-20 17:00,2025-11-20 17:00,2025-06-13 08:00,2025-06-13 08:00,0,20,100
CN.SWB2.6580,Drywall Clips & AMTS Installs Support Beams - SWB-2 L4 GL 21-24 K LINE,Complete,SWB - 2,West Support Building,SUWN-2 - 21-24,L4 - SUP Roof - FAB Roof,DS/AD INTERIORS,CONSTRUCTION,SECAI,Fireproofing,HOON WOO,,2024-03-28 07:00,2024-04-11 17:00,2024-03-28 07:00,2024-04-06 17:00,2025-11-20 17:00,2025-11-20 17:00,2025-06-13 08:00,2025-06-13 08:00,0,90,100
CN.SWB2.6590,DS STEEL SPRAY FIREPROOFING SFRM- SWB-2 L3 CEILING GL 21-24 K-L,Complete,SWB - 2,West Support Building,SUWN-2 - 21-24,L4 - SUP Roof - FAB Roof,DS/AD INTERIORS,CONSTRUCTION,ROLLING PLAINS,Fireproofing,HOON WOO,,2024-05-14 11:37,2024-05-23 11:37,2024-05-14 11:37,2024-05-21 11:37,2025-11-20 17:00,2025-11-20 17:00,2025-12-05 17:00,2025-12-05 17:00,0,50,100
CN.SWB2.6600,ADD FLANGE EXTENSIONS/ CUT GRATING - SWB-2 L4 GL 21-24 K LINE,Complete,SWB - 2,West Support Building,SUWN-2 - 21-24,L4 - SUP Roof - FAB Roof,DS/AD INTERIORS,CONSTRUCTION,,Fireproofing,HOON WOO,,2024-03-18 07:00,2024-03-20 11:00,2024-03-15 07:00,2024-03-18 11:00,2025-11-20 17:00,2025-11-20 17:00,2025-06-13 08:00,2025-06-13 08:00,0,24,100
CN.SWB2.6610,CURE AD STEEL INTUMESCENT - SWB-2 L3 CEILING GL 21-24 K-J LINE,Complete,SWB - 2,West Support Building,SUWN-2 - 21-24,L4 - SUP Roof - FAB Roof,DS/AD INTERIORS,CONSTRUCTION,ROLLING PLAINS,Fireproofing,HOON WOO,,2024-06-18 07:00,2024-07-12 17:00,2024-06-18 07:00,2024-06-27 07:00,2025-11-20 17:00,2025-11-20 17:00,2025-12-05 17:00,2025-12-05 17:00,0,140,100
CN.SWB2.6620,SECAI - AMTS Install UPPER CEILING - SWB-2 L4 GL 21-24 K LINE,Complete,SWB - 2,West Support Building,SUWN-2 - 21-24,L4 - SUP Roof - FAB Roof,DS/AD INTERIORS,CONSTRUCTION,SECAI,Fireproofing,HOON WOO,,2024-08-05 07:00,2024-08-09 17:00,2024-08-05 07:00,2024-08-09 17:00,2025-11-20 17:00,2025-11-20 17:00,2025-12-05 17:00,2025-12-05 17:00,0,40,100
CN.SWB2.6640,AD STEEL INTUMESCENT PAINT APPLY - SWB-2 L3 CEILING GL 21-24 K-J LINE,Complete,SWB - 2,West Support Building,SUWN-2 - 21-24,L4 - SUP Roof - FAB Roof,DS/AD INTERIORS,CONSTRUCTION,ROLLING PLAINS,Fireproofing,HOON WOO,,2024-06-14 07:00,2024-06-21 17:00,2024-06-14 07:00,2024-06-17 17:00,2025-11-20 17:00,2025-11-20 17:00,2025-06-13 08:00,2025-06-13 08:00,0,50,100
CN.SWB2.6760,IMPACT - WAITING ON MEP LAYOUTS - SWB-2 - GL 21-24 J-K - L4 / INCOMPLETE - CLOSED FOR CCD 310 LAYOUT,Complete,SWB - 2,West Support Building,SUWN-2 - 21-24,DS/AD,,CONSTRUCTION,SECAI,Steel Erection,HOON WOO,,2024-01-22 07:00,2024-01-25 17:00,2024-01-10 07:00,2024-05-30 17:00,2025-11-20 17:00,2025-11-20 17:00,2025-12-05 17:00,2025-12-05 17:00,0,40,100
CN.SWB2.6790,INSPECT PRIMER - GL 21-24 - L4 - L-M - ROOF,Complete,SWB - 2,West Support Building,SUWN-2 - 21-24,L4 - SUP Roof - FAB Roof,,CONSTRUCTION,BRAZOS,TOPPING,FIZ DATA CENTER,SOMD / Roofing / Waterproofing,2024-05-06 07:00,2024-05-06 17:00,2024-04-25 07:00,2024-04-25 17:00,2025-11-20 17:00,2025-11-20 17:00,2025-11-25 07:00,2025-11-25 07:00,0,10,100
CN.SWB2.6800,INSPECT BASE COAT - GL 21-24 - L4 - L-M - ROOF,Complete,SWB - 2,West Support Building,SUWN-2 - 21-24,L4 - SUP Roof - FAB Roof,,CONSTRUCTION,BRAZOS,TOPPING,FIZ DATA CENTER,SOMD / Roofing / Waterproofing,2024-04-29 07:00,2024-04-29 17:00,2024-04-27 07:00,2024-04-27 17:00,2025-11-20 17:00,2025-11-20 17:00,2025-11-25 07:00,2025-11-25 07:00,0,10,100
CN.SWB2.6810,INSPECT TOP COAT - GL 21-24 - L4 - L-M - ROOF,Complete,SWB - 2,West Support Building,SUWN-2 - 21-24,L4 - SUP Roof - FAB Roof,,CONSTRUCTION,BRAZOS,TOPPING,FIZ DATA CENTER,SOMD / Roofing / Waterproofing,2024-05-03 07:00,2024-05-03 17:00,2024-04-29 07:00,2024-04-29 17:00,2025-11-20 17:00,2025-11-20 17:00,2025-11-25 07:00,2025-11-25 07:00,0,10,100
CN.SWB2.6820,INSPECT BASE COAT CRICKET - GL 21-24 - L4 - L-M - ROOF,Complete,SWB - 2,West Support Building,SUWN-2 - 21-24,L4 - SUP Roof - FAB Roof,,CONSTRUCTION,BRAZOS,TOPPING,FIZ DATA CENTER,SOMD / Roofing / Waterproofing,2024-05-13 07:00,2024-05-13 17:00,2024-05-07 07:00,2024-05-07 17:00,2025-11-20 17:00,2025-11-20 17:00,2025-11-25 07:00,2025-11-25 07:00,0,10,100
CN.SWB2.6830,INSPECT TOP COAT CRICKET - GL 21-24 - L4 - L-M - ROOF,Complete,SWB - 2,West Support Building,SUWN-2 - 21-24,L4 - SUP Roof - FAB Roof,,CONSTRUCTION,BRAZOS,TOPPING,FIZ DATA CENTER,SOMD / Roofing / Waterproofing,2024-05-14 07:00,2024-05-14 17:00,2024-05-09 07:00,2024-05-09 17:00,2025-11-20 17:00,2025-11-20 17:00,2025-11-25 07:00,2025-11-25 07:00,0,10,100
CN.SWB2.6840,INSTALL CRICKET - GL 21-24 - L4 - L-M - ROOF,Complete,SWB - 2,West Support Building,SUWN-2 - 21-24,L4 - SUP Roof - FAB Roof,,CONSTRUCTION,BRAZOS,TOPPING,FIZ DATA CENTER,SOMD / Roofing / Waterproofing,2024-05-03 07:00,2024-05-10 17:00,2024-04-29 07:00,2024-04-30 17:00,2025-11-20 17:00,2025-11-20 17:00,2025-11-25 07:00,2025-11-25 07:00,0,50,100
CN.SWB2.6850,INSPECT CRICKET - GL 21-24 - L4 - L-M - ROOF,Complete,SWB - 2,West Support Building,SUWN-2 - 21-24,L4 - SUP Roof - FAB Roof,,CONSTRUCTION,BRAZOS,TOPPING,FIZ DATA CENTER,SOMD / Roofing / Waterproofing,2024-05-06 07:00,2024-05-06 17:00,2024-05-01 07:00,2024-05-01 17:00,2025-11-20 17:00,2025-11-20 17:00,2025-11-25 07:00,2025-11-25 07:00,0,10,100
CN.SWB2.6860,INSTALL PRIMER CRICKET - GL 21-24 - L4 - L-M - ROOF,Complete,SWB - 2,West Support Building,SUWN-2 - 21-24,L4 - SUP Roof - FAB Roof,,CONSTRUCTION,BRAZOS,TOPPING,FIZ DATA CENTER,SOMD / Roofing / Waterproofing,2024-05-06 07:00,2024-05-06 17:00,2024-05-02 07:00,2024-05-03 17:00,2025-11-20 17:00,2025-11-20 17:00,2025-11-25 07:00,2025-11-25 07:00,0,10,100
CN.SWB2.6870,INSPECT PRIMER CRICKET - GL 21-24 - L4 - L-M - ROOF,Complete,SWB - 2,West Support Building,SUWN-2 - 21-24,L4 - SUP Roof - FAB Roof,,CONSTRUCTION,BRAZOS,TOPPING,FIZ DATA CENTER,SOMD / Roofing / Waterproofing,2024-05-10 07:00,2024-05-10 17:00,2024-05-04 07:00,2024-05-04 17:00,2025-11-20 17:00,2025-11-20 17:00,2025-11-25 07:00,2025-11-25 07:00,0,10,100
CN.SWB2.6880,IMPACT - K-LINE STEEL SPRAY FIREPROOFING SFRM2 -SWB-2 L3-CEILING GL 21-24,Complete,SWB - 2,West Support Building,SUWN-2 - 21-24,L4 - SUP Roof - FAB Roof,DS/AD INTERIORS,CONSTRUCTION,ROLLING PLAINS,Fireproofing,HOON WOO,,2024-05-23 07:00,2024-05-28 17:00,2024-04-22 07:00,2024-04-25 17:00,2025-11-20 17:00,2025-11-20 17:00,2025-06-13 08:00,2025-06-13 08:00,0,30,100
CN.SWB2.6900,IMPACT - INSPECT & SURFACE PREP ADDITIONAL AD STEEL FOR INTUMESCENT - SWB2 - GL 21-24 - K-J - L3 CEILING,Complete,SWB - 2,West Support Building,SUWN-2 - 21-24,L4 - SUP Roof - FAB Roof,DS/AD INTERIORS,CONSTRUCTION,ROLLING PLAINS,Fireproofing,HOON WOO,,2024-06-04 07:00,2024-06-11 17:00,2024-06-04 07:00,2024-06-13 17:00,2025-11-20 17:00,2025-11-20 17:00,2025-06-13 08:00,2025-06-13 08:00,0,50,100
CN.SWB2.6910,INSTALL FRAMING FOR IMP - GL 21-24 - J LINE (AD AREA),Complete,SWB - 2,West Support Building,SUWN-2 - 21-24,DS/AD,,CONSTRUCTION,BERG,Waterproofing - Preferred,JAMES LIVELY,,2024-05-28 07:00,2024-05-28 17:00,2024-05-01 07:00,2024-05-14 17:00,2025-11-20 17:00,2025-11-20 17:00,2025-12-05 17:00,2025-12-05 17:00,0,10,100
CN.SWB2.6930,IMPACT - PIPERACK IN THE WAY - SWB2- GL 21-24 K LINE - L3,Complete,SWB - 2,West Support Building,SUWN-2 - 21-24,L3 / Waffle Slab Level,DS/AD INTERIORS,CONSTRUCTION,BERG,DRYWALL,FIZ DATA CENTER,INTERIORS,2024-05-13 07:00,2024-05-17 17:00,2024-05-13 07:00,2024-09-20 17:00,2025-11-20 17:00,2025-11-20 17:00,2025-06-13 08:00,2025-06-13 08:00,0,40,100
CN.SWB2.6940,REMEDY - DEMO DRYWALL (INT) - SWB2- GL 21-24 K LINE -  L2,Complete,SWB - 2,West Support Building,SUWN-2 - 21-24,L2 - SubFab Level,DS/AD INTERIORS,CONSTRUCTION,,DRYWALL,FIZ DATA CENTER,INTERIORS,2024-05-31 07:00,2024-06-07 15:00,2024-05-23 07:00,2024-05-28 17:00,2025-11-20 17:00,2025-11-20 17:00,2025-11-14 17:00,2025-11-14 17:00,0,48,100
CN.SWB2.6950,CURE - AD STEEL PAINT FIREPROOFING IFRM- SWB-2 - GL 19-23 - J-K - L2-CEILING,Complete,SWB - 2,West Support Building,SUWN-2 - 21-24,DS/AD,,CONSTRUCTION,ROLLING PLAINS,Fireproofing,HOON WOO,,2024-08-23 07:00,2024-09-08 17:00,2024-07-23 07:00,2024-08-13 17:00,2025-11-20 17:00,2025-11-20 17:00,2025-12-05 17:00,2025-12-05 17:00,0,150,100
CN.SWB2.6990,INSTALL WALL PROTECTION - STAIR 4 - GL 23-24 - K-L - L1,Not Started,SWB - 2,East Support Building,SUWN-2 - 21-24,L1 - Fndn Slab,DS/AD INTERIORS,CONSTRUCTION,BERNCO,TBD Architectural Finishes,JAMES LEE,INTERIORS,2025-11-21 07:00,2025-11-25 17:00,,,2025-11-21 07:00,2025-11-25 17:00,2025-12-03 07:00,2025-12-05 17:00,30,30,0
CN.SWB2.7000,DS ROOF PARAPET DRY IN - SWB2 - GL 21-24 - K-L - L6,Complete,SWB - 2,West Support Building,SUWN-2 - 21-24,DS/AD,,CONSTRUCTION,BRAZOS,Waterproofing - Preferred,JAMES LIVELY,,2024-09-16 07:00,2024-10-03 17:00,2024-08-26 07:00,2024-09-12 17:00,2025-11-20 17:00,2025-11-20 17:00,2025-11-25 07:00,2025-11-25 07:00,0,110,100
CN.A1.UG.1360,PH1- UNDERGROUND PLUMBING SWB3,Complete,SWB - 3,West Support Building,SUWN-3 - 24-27,L1 - Fndn Slab,,CONSTRUCTION,,Underground Plumbing - Cobb,ANDREA SOLIS,,2022-10-01 08:00,2022-10-03 12:00,2022-10-01 08:00,2022-10-04 13:00,2025-11-20 17:00,2025-11-20 17:00,2025-06-13 08:00,2025-06-13 08:00,0,24,100
CN.A1.UG.1350,PH1- UNDERGROUND ELECTRICAL SWB3,Complete,SWB - 3,West Support Building,SUWN-3 - 24-27,L1 - Fndn Slab,,CONSTRUCTION,,Underground Electrical - (By Owner),ANDREA SOLIS,,2022-09-29 11:00,2022-10-03 11:00,2022-09-29 11:00,2022-10-04 13:00,2025-11-20 17:00,2025-11-20 17:00,2025-06-13 08:00,2025-06-13 08:00,0,40,100
CN.A2.UG.1160,PH1- UNDERSLAB WATERPROOFING SWB3,Complete,SWB - 3,West Support Building,SUWN-3 - 24-27,L1 - Fndn Slab,,CONSTRUCTION,,Waterproofing - Preferred,ANDREA SOLIS,,2022-10-07 15:00,2022-10-09 11:00,2022-10-07 15:00,2022-10-10 13:00,2025-11-20 17:00,2025-11-20 17:00,2025-06-13 08:00,2025-06-13 08:00,0,16,100
CN.A2.UG.1170,PH1- WATERPROOF WALL SWB3,Complete,SWB - 3,West Support Building,SUWN-3 - 24-27,L1 - Fndn Slab,,CONSTRUCTION,,Waterproofing - Preferred,ANDREA SOLIS,,2022-10-21 09:00,2022-10-25 09:00,2022-10-21 09:00,2022-10-27 11:00,2025-11-20 17:00,2025-11-20 17:00,2025-06-13 08:00,2025-06-13 08:00,0,40,100
CN.A2.UG.1180,PH1- FRENCH DRAIN SWB3,Complete,SWB - 3,West Support Building,SUWN-3 - 24-27,L1 - Fndn Slab,,CONSTRUCTION,,Waterproofing - Preferred,ANDREA SOLIS,,2022-10-24 07:00,2022-10-28 17:00,2022-10-24 07:00,2022-10-28 17:00,2025-11-20 17:00,2025-11-20 17:00,2025-06-13 08:00,2025-06-13 08:00,0,40,100
CN.SWB3.1000,PH1- SUP - EXCAVATE PITS - SWB3,Complete,SWB - 3,West Support Building,SUWN-3 - 24-27,L1 - Fndn Slab,,CONSTRUCTION,,Excavate CIP,ANDREA SOLIS,,2022-09-27 07:00,2022-09-29 11:00,2022-09-27 07:00,2022-09-29 11:00,2025-11-20 17:00,2025-11-20 17:00,2025-06-13 08:00,2025-06-13 08:00,0,24,100
CN.SWB3.1010,PH1-FRP GRADE BEAM - SWB3,Complete,SWB - 3,West Support Building,SUWN-3 - 24-27,L1 - Fndn Slab,,CONSTRUCTION,,Pour Concrete,ANDREA SOLIS,,2022-10-04 13:00,2022-10-06 17:00,2022-10-04 13:00,2022-10-06 17:00,2025-11-20 17:00,2025-11-20 17:00,2025-06-13 08:00,2025-06-13 08:00,0,24,100
CN.SWB3.1020,PH1-BLACK BASE (NOW RAT SLAB) - SWB3,Complete,SWB - 3,West Support Building,SUWN-3 - 24-27,L1 - Fndn Slab,,CONSTRUCTION,,RAT SLAB,ANDREA SOLIS,,2022-10-07 07:00,2022-10-07 15:00,2022-10-07 07:00,2022-10-07 15:00,2025-11-20 17:00,2025-11-20 17:00,2025-06-13 08:00,2025-06-13 08:00,0,8,100
CN.SWB3.1030,PH1-CURE PIER CAPS - SWB3,Complete,SWB - 3,West Support Building,SUWN-3 - 24-27,L1 - Fndn Slab,,CONSTRUCTION,,Concrete Cure,ANDREA SOLIS,,2022-10-07 07:00,2022-10-07 07:00,2022-10-07 07:00,2022-10-07 07:00,2025-11-20 17:00,2025-11-20 17:00,2025-06-13 08:00,2025-06-13 08:00,0,0,100
CN.SWB3.1060,PH1- FRP SLAB - SWB-3-L2,Complete,SWB - 3,West Support Building,SUWN-3 - 24-27,L2 - SubFab Level,,CONSTRUCTION,,SOMD,CONCRETE,,2023-08-29 13:00,2023-09-01 09:00,2023-08-29 13:00,2023-08-30 07:00,2025-11-20 17:00,2025-11-20 17:00,2025-11-21 07:00,2025-11-21 07:00,0,16,100
CN.SWB3.1090,PH1- FRP SLAB - SWB-3-L3,Complete,SWB - 3,West Support Building,SUWN-3 - 24-27,L3 / Waffle Slab Level,,CONSTRUCTION,,SOMD,CONCRETE,,2023-09-01 09:00,2023-09-03 13:00,2023-09-01 09:00,2023-09-02 17:00,2025-11-20 17:00,2025-11-20 17:00,2025-11-26 07:00,2025-11-26 07:00,0,24,100
CN.SWB3.1120,PH1- FRP SLAB - SWB-3-ROOF,Complete,SWB - 3,West Support Building,SUWN-3 - 24-27,L4 - SUP Roof - FAB Roof,,CONSTRUCTION,,SOMD,CONCRETE,SOMD / Roofing / Waterproofing,2023-09-08 09:00,2023-09-10 13:00,2023-09-08 09:00,2023-09-09 16:00,2025-11-20 17:00,2025-11-20 17:00,2025-11-19 07:00,2025-11-19 07:00,0,24,100
CN.SWB3.1080,PH1- CURE SOMD - SWB-3-L2,Complete,SWB - 3,West Support Building,SUWN-3 - 24-27,L2 - SubFab Level,,CONSTRUCTION,,Concrete Cure,JAMES LEE,,2023-08-31 07:00,2023-09-02 11:00,2023-08-30 20:44,2023-08-31 20:44,2025-11-20 17:00,2025-11-20 17:00,2025-12-03 07:00,2025-12-03 07:00,0,24,100
CN.SWB3.1110,PH1- CURE SOMD - SWB-3-L3,Complete,SWB - 3,West Support Building,SUWN-3 - 24-27,L3 / Waffle Slab Level,,CONSTRUCTION,,Concrete Cure,JAMES LEE,,2023-09-05 07:00,2023-09-10 13:00,2023-09-03 20:44,2023-09-06 04:44,2025-11-20 17:00,2025-11-20 17:00,2025-11-26 07:00,2025-11-26 07:00,0,56,100
CN.SWB3.1130,PH1- CURE SOMD - SWB-3-ROOF,Complete,SWB - 3,West Support Building,SUWN-3 - 24-27,L4 - SUP Roof - FAB Roof,,CONSTRUCTION,,Concrete Cure,JAMES LEE,SOMD / Roofing / Waterproofing,2023-09-09 08:00,2023-09-11 12:00,2023-09-08 20:44,2023-09-09 20:44,2025-11-20 17:00,2025-11-20 17:00,2025-11-21 07:00,2025-11-21 07:00,0,24,100
CN.SWB3.1100,PH1- 1st FLOOR SLAB - SWB-3-L1,Complete,SWB - 3,West Support Building,SUWN-3 - 24-27,L1 - Fndn Slab,,CONSTRUCTION,,Pour Concrete,ANDREA SOLIS,,2022-10-10 13:00,2022-10-13 11:00,2022-10-10 13:00,2022-10-13 11:00,2025-11-20 17:00,2025-11-20 17:00,2025-06-13 08:00,2025-06-13 08:00,0,18,100
CN.SWB3.1200,FRP TOPPING SLAB - SWB3 - GL 24-26 - L-N - L4 ROOF,Complete,SWB - 3,West Support Building,SUWN-3 - 24-27,L4 - SUP Roof - FAB Roof,,CONSTRUCTION,BAKER,TOPPING,CONCRETE,SOMD / Roofing / Waterproofing,2024-06-24 07:00,2024-06-28 17:00,2024-06-05 07:00,2024-06-06 17:00,2025-11-20 17:00,2025-11-20 17:00,2025-12-05 17:00,2025-12-05 17:00,0,40,100
CN.SWB3.1230,MEP EQPT PADS (LAYOUT & INSTALL DOWELS)- SWB-3-ROOF,Complete,SWB - 3,West Support Building,SUWN-3 - 24-27,L4 - SUP Roof - FAB Roof,,CONSTRUCTION,,OAC/ MECH PADS,JAMES LEE,SOMD / Roofing / Waterproofing,2023-10-30 07:00,2023-11-03 11:00,2023-10-30 07:00,2023-11-03 11:00,2025-11-20 17:00,2025-11-20 17:00,2025-12-05 17:00,2025-12-05 17:00,0,24,100
CN.SWB3.1040,PH1-FRP PIT WALLS - SWB3 (None),Complete,SWB - 3,West Support Building,SUWN-3 - 24-27,L1 - Fndn Slab,,CONSTRUCTION,,Pour Concrete,ANDREA SOLIS,,2022-10-15 08:00,2022-10-20 08:00,2022-10-15 08:00,2022-10-21 09:00,2025-11-20 17:00,2025-11-20 17:00,2025-06-13 08:00,2025-06-13 08:00,0,40,100
CN.SWB3.1070,PH1-BACKFILL PIT WALLS - SWB3,Complete,SWB - 3,West Support Building,SUWN-3 - 24-27,L1 - Fndn Slab,,CONSTRUCTION,,BACKFILL,ANDREA SOLIS,,2022-10-29 08:00,2022-11-07 08:00,2022-10-29 08:00,2022-11-10 11:00,2025-11-20 17:00,2025-11-20 17:00,2025-06-13 08:00,2025-06-13 08:00,0,80,100
CN.SWB3.1050,TIER 1 ERECT PRECAST COLUMNS & BEAMS - SWB3,Complete,SWB - 3,West Support Building,SUWN-3 - 24-27,L3 / Waffle Slab Level,,CONSTRUCTION,,"SUP WEST N,M",SEAN MONK,,2023-05-26 11:00,2023-06-03 17:00,2023-05-24 11:00,2023-07-29 16:00,2025-11-20 17:00,2025-11-20 17:00,2025-06-13 08:00,2025-06-13 08:00,0,56,100
CN.SWB3.1170,PH1-FLUID APPLIED MEMBRANE ROOFING - SWB3,Complete,SWB - 3,West Support Building,SUWN-3 - 24-27,L4 - SUP Roof - FAB Roof,,CONSTRUCTION,,TOPPING,JAMES LIVELY,SOMD / Roofing / Waterproofing,2024-01-22 07:00,2024-01-25 09:00,2024-01-22 07:00,2024-01-25 09:00,2025-11-20 17:00,2025-11-20 17:00,2025-12-05 17:00,2025-12-05 17:00,0,32,100
CN.SWB3.1190,PH1 - CLADDING STEEL INTERIOR GL 24-27 - K LINE (AD AREA),Complete,SWB - 3,West Support Building,SUWN-3 - 24-27,EXTERIOR SKIN,,CONSTRUCTION,,INSULATED METAL PANELS,JAMES LIVELY,,2024-03-18 15:00,2024-03-26 11:00,2024-02-20 07:00,2024-02-27 11:00,2025-11-20 17:00,2025-11-20 17:00,2025-11-21 07:00,2025-11-21 07:00,0,56,100
CN.SWB3.1220,PH1 - INSTALL INSULATED METAL PANEL MODULES - GL 24-27 - L LINE (DS AREA),Complete,SWB - 3,West Support Building,SUWN-3 - 24-27,EXTERIOR SKIN,,CONSTRUCTION,KOVACH,INSULATED METAL PANELS,JAMES LIVELY,,2024-05-04 07:00,2024-05-14 17:00,2024-05-08 07:00,2024-05-20 17:00,2025-11-20 17:00,2025-11-20 17:00,2025-11-25 07:00,2025-11-25 07:00,0,90,100
CN.SWB3.1160,PH1 - CLADDING STEEL  - SWB-3 N Line [SUP EXTERIOR WALL] GL 24-27,Complete,SWB - 3,West Support Building,SUWN-3 - 24-27,EXTERIOR SKIN,,CONSTRUCTION,,INSULATED METAL PANELS,JAMES LIVELY,,2023-11-11 09:00,2023-11-19 11:00,2023-11-11 09:00,2023-11-17 09:00,2025-11-20 17:00,2025-11-20 17:00,2025-08-26 07:00,2025-08-26 07:00,0,72,100
CN.SWB3.1180,INSTALL INSULATED METAL PANEL MODULES - GL 24-26 - N LINE [SUP EXTERIOR WALL],Complete,SWB - 3,West Support Building,SUWN-3 - 24-27,EXTERIOR SKIN,,CONSTRUCTION,KOVACH,INSULATED METAL PANELS,JAMES LIVELY,,2024-09-17 07:00,2024-09-26 17:00,2024-08-01 07:00,2024-08-09 17:00,2025-11-20 17:00,2025-11-20 17:00,2025-08-26 07:00,2025-08-26 07:00,0,90,100
CN.SWB3.1140,PH1- AD STEEL FRAME INSTALL - SWB-3 fab side,Complete,SWB - 3,West Support Building,SUWN-3 - 24-27,DS/AD,,CONSTRUCTION,,Steel Erection,SEAN MONK,,2023-09-29 07:00,2023-10-02 09:00,2023-09-29 07:00,2023-10-02 15:00,2025-11-20 17:00,2025-11-20 17:00,2025-06-13 08:00,2025-06-13 08:00,0,32,100
CN.SEA1.1270,PH1- U/G - R/I - SPRINKLER & PLUMBING - SWB3,Complete,SWB - 3,West Support Building,SUWN-3 - 24-27,L1 - Fndn Slab,,CONSTRUCTION,,U/G FIRE & PLUMBING,ANDREA SOLIS,,2022-09-29 07:00,2022-10-03 11:00,2022-09-29 07:00,2022-10-04 13:00,2025-11-20 17:00,2025-11-20 17:00,2025-06-13 08:00,2025-06-13 08:00,0,44,100
CN.AB.AR.1070,METAL STUD FRAMING (2hr) - SWB-3 - L1- WASTE LIQUOR RMGL 24-27 K-N,Complete,SWB - 3,West Support Building,SUWN-3 - 24-27,L1 - Fndn Slab,WASTE LIQUOR RM,CONSTRUCTION,BERG,TBD Architectural Finishes,AMBER CARO,INTERIORS,2024-01-02 09:00,2024-01-07 08:00,2024-01-12 07:00,2024-01-17 13:00,2025-11-20 17:00,2025-11-20 17:00,2025-11-21 07:00,2025-11-21 07:00,0,40,100
CN.AB.AR.3310,MEP ROUGH IN & INSPECTION (by SECAI) - SWB-3- WASTE LIQUOR RMGL 24-27 K-N - SECAI TOOK OVER FOR ACCELERATION,Complete,SWB - 3,West Support Building,SUWN-3 - 24-27,L1 - Fndn Slab,WASTE LIQUOR RM,CONSTRUCTION,SECAI,Owner & Design Team,AMBER CARO,,2024-03-18 07:00,2024-03-22 17:00,2024-03-18 07:00,2025-06-10 07:00,2025-11-20 17:00,2025-11-20 17:00,2025-12-01 07:00,2025-12-01 07:00,0,40,100
CN.AB.AR.3320,TAPE & FINISH DRYWALL - SWB-3- WASTE LIQUOR RMGL 24-27 K-N - SECAI TOOK OVER FOR ACCELERATION,Complete,SWB - 3,West Support Building,SUWN-3 - 24-27,L1 - Fndn Slab,WASTE LIQUOR RM,CONSTRUCTION,CHERRY COATING,DRYWALL,AMBER CARO,INTERIORS,2025-11-10 07:00,2025-11-14 17:00,2025-06-10 07:00,2025-06-10 17:00,2025-11-20 17:00,2025-11-20 17:00,2025-12-01 07:00,2025-12-01 07:00,0,50,100
CN.AB.AR.3340,FLOOR STRIPING PAINT - SWB-3 - WASTE LIQUOR RM GL 24-27 K-N,Not Started,SWB - 3,West Support Building,SUWN-3 - 24-27,L1 - Fndn Slab,WASTE LIQUOR RM,CONSTRUCTION,FLOOR STRIPING PAINT,TBD Architectural Finishes,JAMES LEE,INTERIORS,2025-11-21 07:00,2025-11-21 17:00,,,2025-11-21 07:00,2025-11-21 17:00,2025-12-05 07:00,2025-12-05 17:00,10,10,0
CN.AB.AR.3330,FINISH PAINT - SWB-3- WASTE LIQUOR RM GL 24-27 K-N,Not Started,SWB - 3,West Support Building,SUWN-3 - 24-27,L1 - Fndn Slab,WASTE LIQUOR RM,CONSTRUCTION,FINISH PAINT,TBD Architectural Finishes,JAMES LEE,INTERIORS,2025-11-21 07:00,2025-12-01 17:00,,,2025-11-21 07:00,2025-12-01 17:00,2025-12-01 07:00,2025-12-05 17:00,50,50,0
CN.SWB3.1240,INSTALL METAL STAIRS - STAIR #4 - 23/L - ALL LEVELS,Complete,SWB - 3,West Support Building,SUWN-2 - 21-24,INTERIOR STAIR TOWER - STAIR #4 (CLEAN ROOM),,CONSTRUCTION,PATRIOT,INSULATED METAL PANELS,JAMES LIVELY,INTERIORS,2024-07-31 07:00,2024-08-23 17:00,2024-03-11 07:00,2024-04-12 17:00,2025-11-20 17:00,2025-11-20 17:00,2025-11-17 07:00,2025-11-17 07:00,0,150,100
CN.A1.UG.1390,DS STEEL SPRAY FIREPROOFING SFRM - SWB-3 - L4&L5 CEILING GL 24-27/J-L,Complete,SWB - 3,West Support Building,SUWN-3 - 24-27,L4 - SUP Roof - FAB Roof,DS/AD INTERIORS,CONSTRUCTION,ROLLING PLAINS,Fireproofing,HOON WOO,,2024-09-06 07:00,2024-09-23 17:00,2024-08-23 07:00,2024-08-28 17:00,2025-11-20 17:00,2025-11-20 17:00,2025-12-05 17:00,2025-12-05 17:00,0,100,100
CN.SWB3.1260,PH1- DECKING GL 24 - 25 - SWB-3-ROOF,Complete,SWB - 3,West Support Building,SUWN-3 - 24-27,L4 - SUP Roof - FAB Roof,,CONSTRUCTION,,Decking & Detail,SEAN MONK,SOMD / Roofing / Waterproofing,2023-09-05 07:00,2023-09-08 09:00,2023-09-05 07:00,2023-09-06 09:00,2025-11-20 17:00,2025-11-20 17:00,2025-06-13 08:00,2025-06-13 08:00,0,32,100
CN.SWB3.1270,PH1- DECKING GL 24 - 25 - SWB-3-L3,Complete,SWB - 3,West Support Building,SUWN-3 - 24-27,L3 / Waffle Slab Level,,CONSTRUCTION,,Decking & Detail,SEAN MONK,,2023-08-28 07:00,2023-08-29 13:00,2023-08-28 07:00,2023-08-29 13:00,2025-11-20 17:00,2025-11-20 17:00,2025-11-26 07:00,2025-11-26 07:00,0,16,100
CN.SWB3.1280,PH1- DECKING GL 24 - 25 - SWB-3-L2,Complete,SWB - 3,West Support Building,SUWN-3 - 24-27,L2 - SubFab Level,,CONSTRUCTION,,Decking & Detail,SEAN MONK,,2023-08-25 07:00,2023-08-26 13:00,2023-08-25 07:00,2023-08-26 14:00,2025-11-20 17:00,2025-11-20 17:00,2025-06-13 08:00,2025-06-13 08:00,0,16,100
CN.SEA1.2750,PH1- MEP EQPT PADS (REBAR)- SWB-3 ROOF,Complete,SWB - 3,West Support Building,SUWN-3 - 24-27,L4 - SUP Roof - FAB Roof,,CONSTRUCTION,,OAC/ MECH PADS,CONCRETE,SOMD / Roofing / Waterproofing,2023-11-08 13:00,2023-11-10 09:00,2023-11-08 13:00,2023-11-10 09:00,2025-11-20 17:00,2025-11-20 17:00,2025-12-05 17:00,2025-12-05 17:00,0,16,100
CN.SEA1.2760,PH1- MEP EQPT PADS (PLACE CONCRETE - BLOCK)- SWB-3-ROOF,Complete,SWB - 3,West Support Building,SUWN-3 - 24-27,L4 - SUP Roof - FAB Roof,,CONSTRUCTION,,OAC/ MECH PADS,CONCRETE,SOMD / Roofing / Waterproofing,2023-11-10 09:00,2023-11-10 17:00,2023-11-10 09:00,2023-11-10 17:00,2025-11-20 17:00,2025-11-20 17:00,2025-12-05 17:00,2025-12-05 17:00,0,8,100
CN.SEA1.2770,PH1- MEP EQPT PADS (STRIP / PATCH - BLOCK)- SWB-3-ROOF,Complete,SWB - 3,West Support Building,SUWN-3 - 24-27,L4 - SUP Roof - FAB Roof,,CONSTRUCTION,,OAC/ MECH PADS,CONCRETE,SOMD / Roofing / Waterproofing,2023-11-10 09:00,2023-11-10 17:00,2023-11-10 09:00,2023-11-10 17:00,2025-11-20 17:00,2025-11-20 17:00,2025-12-05 17:00,2025-12-05 17:00,0,8,100
CN.SEA3.1410,PH1-CIP WALL (DS)- SWB-3,Complete,SWB - 3,West Support Building,SUWN-3 - 24-27,L4 - SUP Roof - FAB Roof,,CONSTRUCTION,,CIP WALL,CONCRETE,SOMD / Roofing / Waterproofing,2023-10-30 07:00,2023-11-03 11:00,2023-10-30 07:00,2023-11-03 11:00,2025-11-20 17:00,2025-11-20 17:00,2025-11-21 07:00,2025-11-21 07:00,0,24,100
CN.SEA1.2780,PH1- MEP EQPT PADS (INSTALL DRAIN MATS)- SWB-3-ROOF,Complete,SWB - 3,West Support Building,SUWN-3 - 24-27,L4 - SUP Roof - FAB Roof,,CONSTRUCTION,,OAC/ MECH PADS,,SOMD / Roofing / Waterproofing,2023-11-07 07:00,2023-11-08 13:00,2023-11-07 07:00,2023-11-08 13:00,2025-11-20 17:00,2025-11-20 17:00,2025-12-05 17:00,2025-12-05 17:00,0,16,100
CN.SWB3.1310,PH1- INSTALL/ FIX ANCHOR BOLTS - SWB-3-L1,Complete,SWB - 3,West Support Building,SUWN-3 - 24-27,L1 - Fndn Slab,,CONSTRUCTION,W&W,Waterproofing - Preferred,JAMES LIVELY,SOMD / Roofing / Waterproofing,2024-02-26 07:00,2024-03-01 15:00,2024-02-21 07:00,2024-03-11 17:00,2025-11-20 17:00,2025-11-20 17:00,2025-11-17 07:00,2025-11-17 07:00,0,48,100
CN.SWB3.1340,PH1- TOPPING SLAB w TRENCH & ANGLE EMBEDS- SWB-3-L1,Complete,SWB - 3,West Support Building,SUWN-3 - 24-27,L1 - Fndn Slab,,CONSTRUCTION,,TOPPING,CONCRETE,SOMD / Roofing / Waterproofing,2023-11-05 10:00,2023-11-07 14:00,2023-11-05 10:00,2023-11-07 15:00,2025-11-20 17:00,2025-11-20 17:00,2025-11-21 07:00,2025-11-21 07:00,0,24,100
CN.SWB3.1350,PH1- DS/AD DECKING & DETAILING DS/AD SWB-3 -L6 GL 24-27 J-K,Complete,SWB - 3,West Support Building,SUWN-3 - 24-27,DS/AD,,CONSTRUCTION,,Decking & Detail,SEAN MONK,,2023-11-20 07:00,2023-11-27 17:00,2023-11-18 07:00,2023-11-28 07:00,2025-11-20 17:00,2025-11-20 17:00,2025-06-13 08:00,2025-06-13 08:00,0,40,100
CN.SWB3.1360,PH1- DS/AD FRP SLAB - DS/AD SWB-3 - L4/E GL 24-27 J-K,Complete,SWB - 3,West Support Building,SUWN-3 - 24-27,DS/AD,,CONSTRUCTION,,SOMD,CONCRETE,,2024-01-22 07:00,2024-01-24 11:00,2024-01-19 07:00,2024-01-22 15:00,2025-11-20 17:00,2025-11-20 17:00,2025-06-13 08:00,2025-06-13 08:00,0,24,100
CN.SWB3.1370,AD WATERPROOFING - SWB3 - GL 24-27 - J-K - L4/E,Complete,SWB - 3,West Support Building,SUWN-3 - 24-27,DS/AD,,CONSTRUCTION,BRAZOS,Waterproofing - Preferred,JAMES LIVELY,,2024-06-27 07:00,2024-07-16 17:00,2024-06-26 07:00,2024-07-01 17:00,2025-11-20 17:00,2025-11-20 17:00,2025-11-25 07:00,2025-11-25 07:00,0,110,100
CN.SWB3.1380,AD TOPPING SLAB - SWB3 - GL 24-27 - J-K - L4/E,Complete,SWB - 3,West Support Building,SUWN-3 - 24-27,DS/AD,,CONSTRUCTION,BAKER,SOMD,CONCRETE,,2024-07-26 07:00,2024-07-31 17:00,2024-07-01 07:00,2024-07-02 17:00,2025-11-20 17:00,2025-11-20 17:00,2025-12-05 17:00,2025-12-05 17:00,0,40,100
TIER 23.105W,TIER 2 GROUT PRECAST COLUMNS & BEAMS - SWB3,Complete,SWB - 3,West Support Building,SUWN-3 - 24-27,L4 - SUP Roof - FAB Roof,,CONSTRUCTION,,"SUP WEST N,M",SEAN MONK,,2023-08-24 14:00,2023-08-27 16:00,2023-08-11 14:00,2023-08-13 08:00,2025-11-20 17:00,2025-11-20 17:00,2025-06-13 08:00,2025-06-13 08:00,0,32,100
CN.SWB2.1420,PH1- DECKING GL 23 - 24 - SWB-2-L3,Complete,SWB - 3,West Support Building,SUWN-3 - 24-27,L3 / Waffle Slab Level,,CONSTRUCTION,,Decking & Detail,SEAN MONK,,2023-08-24 07:00,2023-08-25 13:00,2023-08-24 07:00,2023-08-25 13:00,2025-11-20 17:00,2025-11-20 17:00,2025-11-26 07:00,2025-11-26 07:00,0,16,100
CN.SWB3.1390,PH1- DECKING GL 25 - 26 - SWB-3-L2,Complete,SWB - 3,West Support Building,SUWN-3 - 24-27,L2 - SubFab Level,,CONSTRUCTION,,Decking & Detail,SEAN MONK,,2023-08-28 07:00,2023-08-29 13:00,2023-08-28 07:00,2023-08-29 13:00,2025-11-20 17:00,2025-11-20 17:00,2025-06-13 08:00,2025-06-13 08:00,0,16,100
CN.SWB3.1400,PH1- DECKING GL 26 - 27 - SWB-3-L2,Complete,SWB - 3,West Support Building,SUWN-3 - 24-27,L2 - SubFab Level,,CONSTRUCTION,,Decking & Detail,SEAN MONK,,2023-08-28 13:00,2023-08-31 09:00,2023-08-28 13:00,2023-08-29 13:00,2025-11-20 17:00,2025-11-20 17:00,2025-06-13 08:00,2025-06-13 08:00,0,16,100
CN.SWB3.1410,PH1- DECKING GL 25 - 26 - SWB-3-L3,Complete,SWB - 3,West Support Building,SUWN-3 - 24-27,L3 / Waffle Slab Level,,CONSTRUCTION,,Decking & Detail,SEAN MONK,,2023-08-31 07:00,2023-09-01 13:00,2023-08-31 07:00,2023-09-01 13:00,2025-11-20 17:00,2025-11-20 17:00,2025-11-26 07:00,2025-11-26 07:00,0,16,100
CN.SWB3.1420,PH1- DECKING GL 26 - 27 - SWB-3-L3,Complete,SWB - 3,West Support Building,SUWN-3 - 24-27,L3 / Waffle Slab Level,,CONSTRUCTION,,Decking & Detail,SEAN MONK,,2023-08-31 13:00,2023-09-02 09:00,2023-08-31 13:00,2023-09-01 10:00,2025-11-20 17:00,2025-11-20 17:00,2025-11-26 07:00,2025-11-26 07:00,0,16,100
CN.SWB3.1430,PH1- DECKING GL 25 - 26 - SWB-3-ROOF,Complete,SWB - 3,West Support Building,SUWN-3 - 24-27,L4 - SUP Roof - FAB Roof,,CONSTRUCTION,,Decking & Detail,SEAN MONK,SOMD / Roofing / Waterproofing,2023-09-05 07:00,2023-09-08 09:00,2023-09-05 07:00,2023-09-07 09:00,2025-11-20 17:00,2025-11-20 17:00,2025-06-13 08:00,2025-06-13 08:00,0,32,100
CN.SWB3.1440,PH1- DECKING GL 26 - 27 - SWB-3-ROOF,Complete,SWB - 3,West Support Building,SUWN-3 - 24-27,L4 - SUP Roof - FAB Roof,,CONSTRUCTION,,Decking & Detail,SEAN MONK,SOMD / Roofing / Waterproofing,2023-09-05 07:00,2023-09-08 09:00,2023-09-05 07:00,2023-09-07 09:00,2025-11-20 17:00,2025-11-20 17:00,2025-06-13 08:00,2025-06-13 08:00,0,32,100
CN.AB.AR.4580,DRYWALL 2 SIDE - SWB-3 - L1- WASTE LIQUOR RMGL 24-27 K-N - SECAI TOOK OVER FOR ACCELERATION,Complete,SWB - 3,West Support Building,SUWN-3 - 24-27,L1 - Fndn Slab,WASTE LIQUOR RM,CONSTRUCTION,BERG,DRYWALL,AMBER CARO,INTERIORS,2025-11-03 07:00,2025-11-07 17:00,2025-06-10 07:00,2025-06-10 17:00,2025-11-20 17:00,2025-11-20 17:00,2025-12-01 07:00,2025-12-01 07:00,0,50,100
CN.AB.AR.4590,DRYWALL & INSULATION (1 side) (INT) - SWB-3 - L1- WASTE LIQUOR RMGL 24-27 K-N - SECAI TOOK OVER FOR ACCELERATION,Complete,SWB - 3,West Support Building,SUWN-3 - 24-27,L1 - Fndn Slab,WASTE LIQUOR RM,CONSTRUCTION,BERG,DRYWALL,AMBER CARO,INTERIORS,2024-03-22 07:00,2024-03-29 13:00,2024-03-09 19:00,2025-06-10 07:00,2025-11-20 17:00,2025-11-20 17:00,2025-12-01 07:00,2025-12-01 07:00,0,56,100
CN.SWB3.1450,PH1- DS STEEL FRAME INSTALL - SWB-3 Comeback Sup Side,Complete,SWB - 3,West Support Building,SUWN-3 - 24-27,DS/AD,,CONSTRUCTION,,Steel Erection,SEAN MONK,,2023-10-02 15:00,2023-10-05 17:00,2023-10-02 15:00,2023-10-06 17:00,2025-11-20 17:00,2025-11-20 17:00,2025-06-13 08:00,2025-06-13 08:00,0,32,100
CN.SWB3.1460,PH1- EXTERIOR CURBS - SWB-3-L1,Complete,SWB - 3,West Support Building,SUWN-3 - 24-27,L1 - Fndn Slab,,CONSTRUCTION,,Pour Concrete,JAMES LEE,SOMD / Roofing / Waterproofing,2023-10-30 07:00,2023-11-04 17:00,2023-10-30 07:00,2023-11-05 10:00,2025-11-20 17:00,2025-11-20 17:00,2025-08-26 07:00,2025-08-26 07:00,0,40,100
CN.SWB3.1480,INSTALL SUPPORT STEEL - SWB-3 - L1GL 24-27 K-N,Complete,SWB - 3,West Support Building,SUWN-3 - 24-27,L1 - Fndn Slab,WASTE LIQUOR RM,CONSTRUCTION,,TBD Architectural Finishes,JAMES LIVELY,INTERIORS,2024-04-08 08:00,2024-04-16 08:00,2023-10-06 07:00,2023-10-26 16:00,2025-11-20 17:00,2025-11-20 17:00,2025-12-01 07:00,2025-12-01 07:00,0,40,100
CN.SWB3.1071,METAL STUD FRAMING (2hr) - SWB-3 - ELECTRICAL ROOM 2 GL 24-27 K-N,Complete,SWB - 3,West Support Building,SUWN-3 - 24-27,L2 - SubFab Level,ELECTRIC RM 2,CONSTRUCTION,BERG,TBD Architectural Finishes,AMBER CARO,INTERIORS,2024-01-02 09:00,2024-01-06 10:00,2024-01-02 07:00,2024-01-06 10:00,2025-11-20 17:00,2025-11-20 17:00,2025-12-03 07:00,2025-12-03 07:00,0,32,100
CN.SWB3.3310,MEP ROUGH IN & INSPECTION (by SECAI) - SWB-3 - ELECTRICAL ROOM 2 GL 24-27 K-N,Complete,SWB - 3,West Support Building,SUWN-3 - 24-27,L2 - SubFab Level,ELECTRIC RM 2,CONSTRUCTION,,TBD Architectural Finishes,AMBER CARO,,2024-01-06 10:00,2024-01-10 14:00,2024-01-06 10:00,2024-01-09 15:00,2025-11-20 17:00,2025-11-20 17:00,2025-12-05 07:00,2025-12-05 07:00,0,32,100
CN.SWB3.3320,TAPE & FINISH DRYWALL - SWB-3 - ELECTRICAL ROOM 2 GL 24-27 K-N,Complete,SWB - 3,West Support Building,SUWN-3 - 24-27,L2 - SubFab Level,ELECTRIC RM 2,CONSTRUCTION,,DRYWALL,AMBER CARO,INTERIORS,2024-03-09 08:00,2024-03-12 10:00,2024-02-29 00:00,2024-03-03 00:00,2025-11-20 17:00,2025-11-20 17:00,2025-12-05 07:00,2025-12-05 07:00,0,32,100
CN.SWB3.3330,FINISH PAINT - SWB-3 - ELECTRICAL ROOM 2 GL 24-27 K-N,Not Started,SWB - 3,West Support Building,SUWN-3 - 24-27,L2 - SubFab Level,ELECTRIC RM 2,CONSTRUCTION,FINISH PAINT,TBD Architectural Finishes,JAMES LEE,INTERIORS,2025-11-21 07:00,2025-11-21 17:00,,,2025-11-21 07:00,2025-11-21 17:00,2025-12-05 07:00,2025-12-05 17:00,10,10,0
CN.SWB3.4580,DRYWALL 2 SIDE - SWB-3 - ELECTRICAL ROOM 2 GL 24-27 K-N,Complete,SWB - 3,West Support Building,SUWN-3 - 24-27,L2 - SubFab Level,ELECTRIC RM 2,CONSTRUCTION,,DRYWALL,AMBER CARO,INTERIORS,2024-01-29 07:00,2024-02-01 09:00,2024-01-26 07:00,2024-01-31 11:00,2025-11-20 17:00,2025-11-20 17:00,2025-12-05 07:00,2025-12-05 07:00,0,32,100
CN.SWB3.4590,DRYWALL & INSULATION (1 side) (INT) - SWB-3 - ELECTRICAL ROOM 2 GL 24-27 K-N,Complete,SWB - 3,West Support Building,SUWN-3 - 24-27,L2 - SubFab Level,ELECTRIC RM 2,CONSTRUCTION,,DRYWALL,AMBER CARO,INTERIORS,2024-01-10 07:00,2024-01-14 09:00,2024-01-09 15:00,2024-01-12 17:00,2025-11-20 17:00,2025-11-20 17:00,2025-12-05 07:00,2025-12-05 07:00,0,32,100
CN.SWB31071,METAL STUD FRAMING (2hr) - SWB-3 - L3- ELECTRICAL ROOM 1 North & BATTERY ROOM 3 GL 24-27 K-N,Complete,SWB - 3,West Support Building,SUWN-3 - 24-27,L3 / Waffle Slab Level,ELECTRIC RM 1,CONSTRUCTION,BERG,TBD Architectural Finishes,AMBER CARO,INTERIORS,2024-01-29 07:00,2024-02-01 09:00,2024-01-02 07:00,2024-01-06 09:00,2025-11-20 17:00,2025-11-20 17:00,2025-11-26 07:00,2025-11-26 07:00,0,32,100
CN.SWB33310,MEP ROUGH IN & INSPECTION (by SECAI) - SWB-3- ELECTRICAL ROOM 1 North & BATTERY ROOM 3 GL 24-27 K-N,Complete,SWB - 3,West Support Building,SUWN-3 - 24-27,L3 / Waffle Slab Level,ELECTRIC RM 1,CONSTRUCTION,,TBD Architectural Finishes,AMBER CARO,,2024-02-02 09:00,2024-02-05 11:00,2024-01-06 09:00,2024-01-10 15:00,2025-11-20 17:00,2025-11-20 17:00,2025-12-05 07:00,2025-12-05 07:00,0,32,100
CN.SWB33320,TAPE & FINISH DRYWALL - SWB-3- ELECTRICAL ROOM 1 North & BATTERY ROOM 3 GL 24-27 K-N,Complete,SWB - 3,West Support Building,SUWN-3 - 24-27,L3 / Waffle Slab Level,ELECTRIC RM 1,CONSTRUCTION,CHERRY COATING,DRYWALL,AMBER CARO,INTERIORS,2024-08-12 07:00,2024-08-16 17:00,2024-08-12 07:00,2024-08-16 17:00,2025-11-20 17:00,2025-11-20 17:00,2025-12-05 07:00,2025-12-05 07:00,0,40,100
CN.SWB33330,FINISH PAINT - SWB-3- ELECTRICAL ROOM 1 North & BATTERY ROOM GL 24-27 K-N,Not Started,SWB - 3,West Support Building,SUWN-3 - 24-27,L3 / Waffle Slab Level,ELECTRIC RM 1,CONSTRUCTION,FINISH PAINT,TBD Architectural Finishes,JAMES LEE,INTERIORS,2025-11-21 07:00,2025-11-21 17:00,,,2025-11-21 07:00,2025-11-21 17:00,2025-12-05 07:00,2025-12-05 17:00,10,10,0
CN.SWB34580,DRYWALL 2 SIDE - SWB-3- ELECTRICAL ROOM 1 North & BATTERY ROOM 3 GL 24-27 K-N,Complete,SWB - 3,West Support Building,SUWN-3 - 24-27,L3 / Waffle Slab Level,ELECTRIC RM 1,CONSTRUCTION,BERG,DRYWALL,AMBER CARO,INTERIORS,2024-08-02 07:00,2024-08-08 17:00,2024-08-02 07:00,2024-08-06 17:00,2025-11-20 17:00,2025-11-20 17:00,2025-12-05 07:00,2025-12-05 07:00,0,40,100
CN.SWB34590,DRYWALL & INSULATION (1 side) (INT) - SWB-3- ELECTRICAL ROOM 1 North & BATTERY ROOM 3 GL 24-27 K-N,Complete,SWB - 3,West Support Building,SUWN-3 - 24-27,L3 / Waffle Slab Level,ELECTRIC RM 1,CONSTRUCTION,,DRYWALL,AMBER CARO,INTERIORS,2024-02-05 15:00,2024-02-09 17:00,2024-01-11 15:00,2024-01-15 17:00,2025-11-20 17:00,2025-11-20 17:00,2025-12-05 07:00,2025-12-05 07:00,0,32,100
CN.SWB3.1470,PH1- DS/AD DECKING  & DETAILING DS/AD L4 & L4/E GL 24-27 J-K,Complete,SWB - 3,,SUWN-3 - 24-27,DS/AD,,CONSTRUCTION,,Decking & Detail,,,2024-01-17 07:00,2024-01-22 14:00,2024-01-16 07:00,2024-01-18 14:00,2025-11-20 17:00,2025-11-20 17:00,2025-06-13 08:00,2025-06-13 08:00,0,57,100
CN.SWB3.1500,IMPACT - DRB-01 ADDITIONAL BEAMS BETWEEN FAB AND AD GL 24-27 J-K,Complete,SWB - 3,,SUWN-3 - 24-27,DS/AD,,CONSTRUCTION,,Steel Erection,,,2024-01-22 07:00,2024-01-24 11:00,2024-01-02 07:00,2024-01-13 16:00,2025-11-20 17:00,2025-11-20 17:00,2025-06-13 08:00,2025-06-13 08:00,0,24,100
SEC.AR.4550,SECAI - MEP PIPE RACK INSTALL AREA B DS SIDE - SWB-3 - L4,Complete,SWB - 3,East Support Building,SUWN-3 - 24-27,L4 - SUP Roof - FAB Roof,,CONSTRUCTION,SECAI,TOPPING,,INTERIORS,2024-09-16 07:00,2024-09-16 17:00,2024-09-16 07:00,2024-09-16 17:00,2025-11-20 17:00,2025-11-20 17:00,2025-12-05 17:00,2025-12-05 17:00,0,10,100
CN.SWB3.4600,PH1 - CLADDING STEEL  EXTERIOR - SWB-3 L LINE (DS AREA)GL 24-27,Complete,SWB - 3,West Support Building,SUWN-3 - 24-27,EXTERIOR SKIN,,CONSTRUCTION,,INSULATED METAL PANELS,JAMES LIVELY,,2024-01-22 07:00,2024-01-31 13:00,2023-12-29 07:00,2024-01-29 11:00,2025-11-20 17:00,2025-11-20 17:00,2025-11-25 07:00,2025-11-25 07:00,0,96,100
CN.SWB3.1212,METAL STUD FRAMING (2hr)SWB2- GL 24-27 - K LINE - L1,Complete,SWB - 3,West Support Building,SUWN-3 - 24-27,L1 - Fndn Slab,DS/AD INTERIORS,CONSTRUCTION,BERG,TBD Architectural Finishes,FIZ DATA CENTER,INTERIORS,2023-11-13 10:00,2023-11-19 08:00,2023-11-13 10:00,2023-11-20 11:00,2025-11-20 17:00,2025-11-20 17:00,2025-11-21 07:00,2025-11-21 07:00,0,48,100
CN.SWB3.1292,TAPE & FINISH DRYWALL - SWB2- GL 24-27  - K LINE  -  L1,Complete,SWB - 3,West Support Building,SUWN-3 - 24-27,L1 - Fndn Slab,DS/AD INTERIORS,CONSTRUCTION,,DRYWALL,FIZ DATA CENTER,INTERIORS,2024-03-09 08:00,2024-03-17 08:00,2024-03-01 00:00,2024-03-11 00:00,2025-11-20 17:00,2025-11-20 17:00,2025-12-05 17:00,2025-12-05 17:00,0,40,100
CN.SWB3.1322,PRIMER & PAINT DRYWALL - GL 24-27 - K LINE - L1,Complete,SWB - 3,West Support Building,SUWN-3 - 24-27,L1 - Fndn Slab,DS/AD INTERIORS,CONSTRUCTION,FINISH PAINT,TBD Architectural Finishes,FIZ DATA CENTER,INTERIORS,2024-10-22 07:00,2024-10-25 17:00,2024-10-22 07:00,2024-10-25 17:00,2025-11-20 17:00,2025-11-20 17:00,2025-12-05 17:00,2025-12-05 17:00,0,30,100
CN.SWB3.1272,DRYWALL 2 SIDE - SWB2-GL 24-27 - K LINE - L1,Complete,SWB - 3,West Support Building,SUWN-3 - 24-27,L1 - Fndn Slab,DS/AD INTERIORS,CONSTRUCTION,,DRYWALL,FIZ DATA CENTER,INTERIORS,2024-02-02 07:00,2024-02-05 17:00,2024-02-02 07:00,2024-02-06 11:00,2025-11-20 17:00,2025-11-20 17:00,2025-12-05 17:00,2025-12-05 17:00,0,40,100
CN.SWB3.1252,DRYWALL & INSULATION (1 side) (INT)SWB2- GL 24-27 - K LINE - L1,Complete,SWB - 3,West Support Building,SUWN-3 - 24-27,L1 - Fndn Slab,DS/AD INTERIORS,CONSTRUCTION,,DRYWALL,FIZ DATA CENTER,INTERIORS,2023-12-04 07:00,2023-12-09 15:00,2023-12-04 07:00,2023-12-08 16:00,2025-11-20 17:00,2025-11-20 17:00,2025-12-05 17:00,2025-12-05 17:00,0,48,100
CN.SWB3.1222,METAL STUD FRAMING (2hr) -SWB2- GL 24-27 K LINE - L2 [AWAITING SECAI TO RELEASE WORK],Complete,SWB - 3,West Support Building,SUWN-3 - 24-27,L2 - SubFab Level,DS/AD INTERIORS,CONSTRUCTION,BERG,TBD Architectural Finishes,FIZ DATA CENTER,INTERIORS,2024-03-12 07:00,2024-03-22 15:00,2024-03-12 07:00,2024-03-18 15:00,2025-11-20 17:00,2025-11-20 17:00,2025-11-14 17:00,2025-11-14 17:00,0,48,100
CN.SWB3.1302,REMEDY - TAPE & FINISH DRYWALL -SWB2- GL 22-28 K LINE - L2,Complete,SWB - 3,West Support Building,SUWN-3 - 24-27,L2 - SubFab Level,DS/AD INTERIORS,CONSTRUCTION,CHERRY COATING,DRYWALL,FIZ DATA CENTER,INTERIORS,2024-08-12 07:00,2024-08-15 17:00,2024-08-08 07:00,2024-08-12 17:00,2025-11-20 17:00,2025-11-20 17:00,2025-12-05 07:00,2025-12-05 07:00,0,30,100
CN.SWB3.1332,FINISH PAINT -SWB2- GL 24-27 K LINE - L2,Not Started,SWB - 3,West Support Building,SUWN-3 - 24-27,L2 - SubFab Level,DS/AD INTERIORS,CONSTRUCTION,FINISH PAINT,TBD Architectural Finishes,FIZ DATA CENTER,INTERIORS,2025-11-21 07:00,2025-11-21 17:00,,,2025-11-21 07:00,2025-11-21 17:00,2025-12-05 07:00,2025-12-05 17:00,10,10,0
CN.SWB3.1282,REMEDY - FRAME & DRYWALL -SWB2-  GL 22-28 K LINE -  L2,Complete,SWB - 3,West Support Building,SUWN-3 - 24-27,L2 - SubFab Level,DS/AD INTERIORS,CONSTRUCTION,BERG,DRYWALL,FIZ DATA CENTER,INTERIORS,2024-06-18 07:00,2024-06-28 17:00,2024-06-18 07:00,2024-07-29 17:00,2025-11-20 17:00,2025-11-20 17:00,2025-12-05 07:00,2025-12-05 07:00,0,70,100
CN.SWB3.1262,REMEDIATION - DRYWALL & INSULATION (1 side) (INT) -SWB2- GL 24-27 K LINE 7 - L2,Complete,SWB - 3,West Support Building,SUWN-3 - 24-27,L2 - SubFab Level,DS/AD INTERIORS,CONSTRUCTION,,DRYWALL,FIZ DATA CENTER,INTERIORS,2024-03-12 15:00,2024-03-25 13:00,2024-03-12 15:00,2024-03-18 13:00,2025-11-20 17:00,2025-11-20 17:00,2025-11-14 17:00,2025-11-14 17:00,0,48,100
CN.SWB3.1081,TEMP WALLS Framing and Drywall-SWB2- GL 24-27 K-N - L2,Complete,SWB - 3,,SUWN-3 - 24-27,L2 - SubFab Level,ELECTRIC RM 2,CONSTRUCTION,,DRYWALL,,,2024-03-12 13:00,2024-03-20 13:00,2024-02-02 00:00,2024-02-12 00:00,2025-11-20 17:00,2025-11-20 17:00,2025-12-05 17:00,2025-12-05 17:00,0,40,100
CN.SWB3.4610,PH1 -WELD CLIPS - CLADDING STEEL - SWB-3 L LINE (DS AREA)GL 24-27,Complete,SWB - 3,West Support Building,SUWN-3 - 24-27,EXTERIOR SKIN,,CONSTRUCTION,,INSULATED METAL PANELS,JAMES LIVELY,,2023-12-15 09:00,2023-12-16 11:00,2023-12-15 09:00,2023-12-16 12:00,2025-11-20 17:00,2025-11-20 17:00,2025-11-25 07:00,2025-11-25 07:00,0,12,100
CN.SWB3.1490,IMPACT - DS STEEL BEAM STIFFNER CONNECTION FIXES L4 GL 24-27 J-K,Complete,SWB - 3,,SUWN-3 - 24-27,DS/AD,,CONSTRUCTION,,Steel Erection,,,2024-01-22 07:00,2024-01-25 17:00,2024-01-02 07:00,2024-01-15 17:00,2025-11-20 17:00,2025-11-20 17:00,2025-06-13 08:00,2025-06-13 08:00,0,40,100
CN.SWB3.1312,METAL STUD FRAMING (2hr)-SWB2- GL 24-27 K Line - L3,Complete,SWB - 3,West Support Building,SUWN-3 - 24-27,L3 / Waffle Slab Level,DS/AD INTERIORS,CONSTRUCTION,BERG,TBD Architectural Finishes,FIZ DATA CENTER,INTERIORS,2024-04-01 11:00,2024-04-05 11:00,2024-04-01 11:00,2024-04-04 17:00,2025-11-20 17:00,2025-11-20 17:00,2025-06-13 08:00,2025-06-13 08:00,0,40,100
CN.SWB3.1372,TAPE & FINISH DRYWALL -SWB2-  GL 24-27 K LINE -  L3,Complete,SWB - 3,West Support Building,SUWN-3 - 24-27,L3 / Waffle Slab Level,DS/AD INTERIORS,CONSTRUCTION,CHERRY COATING,DRYWALL,FIZ DATA CENTER,INTERIORS,2024-05-02 07:00,2024-05-07 17:00,2024-06-01 07:00,2024-06-04 17:00,2025-11-20 17:00,2025-11-20 17:00,2025-06-13 08:00,2025-06-13 08:00,0,40,100
CN.SWB3.1382,D/S SGP Wall Turnover - GL 24-27 K LINE - L3,Complete,SWB - 3,West Support Building,SUWN-3 - 24-27,L3 / Waffle Slab Level,DS/AD INTERIORS,CONSTRUCTION,,TBD Architectural Finishes,FIZ DATA CENTER,INTERIORS,2024-06-06 07:00,2024-06-06 17:00,2024-06-06 07:00,2024-06-06 17:00,2025-11-20 17:00,2025-11-20 17:00,2025-06-13 08:00,2025-06-13 08:00,0,10,100
CN.SWB3.1362,DRYWALL 2 SIDE -SWB2- GL 24-27 K LINE - L3,Complete,SWB - 3,West Support Building,SUWN-3 - 24-27,L3 / Waffle Slab Level,DS/AD INTERIORS,CONSTRUCTION,BERG,DRYWALL,FIZ DATA CENTER,INTERIORS,2024-05-13 07:00,2024-05-17 17:00,2024-05-13 07:00,2024-05-28 17:00,2025-11-20 17:00,2025-11-20 17:00,2025-06-13 08:00,2025-06-13 08:00,0,40,100
CN.SWB3.1352,DRYWALL & INSULATION (1 side) (INT)-SWB2- GL 24-27 K LINE - L3,Complete,SWB - 3,West Support Building,SUWN-3 - 24-27,L3 / Waffle Slab Level,DS/AD INTERIORS,CONSTRUCTION,,DRYWALL,FIZ DATA CENTER,INTERIORS,2024-04-01 11:00,2024-04-05 11:00,2024-04-01 11:00,2024-04-04 11:00,2025-11-20 17:00,2025-11-20 17:00,2025-06-13 08:00,2025-06-13 08:00,0,40,100
CN.SWB2.4740,PH1- DS/AD DECKING GL 21 - 24 DS/AD SWB-3 L2,Complete,SWB - 3,West Support Building,SUWN-3 - 24-27,DS/AD,,CONSTRUCTION,,Decking & Detail,SEAN MONK,,2023-10-20 07:00,2023-11-04 08:00,2023-10-20 07:00,2023-10-27 17:00,2025-11-20 17:00,2025-11-20 17:00,2025-08-26 07:00,2025-08-26 07:00,0,111,100
CN.SWB2.4750,PH1- DS/AD FRP SLAB - SWB-3 L2,Complete,SWB - 3,West Support Building,SUWN-3 - 24-27,DS/AD,,CONSTRUCTION,,SOMD,CONCRETE,,2023-11-18 08:00,2023-11-21 10:00,2023-10-28 08:00,2023-11-01 13:00,2025-11-20 17:00,2025-11-20 17:00,2025-11-14 17:00,2025-11-14 17:00,0,32,100
CN.SWB2.4760,DS/AD STEEL SPRAY FIREPROOFING SFRM- SWB-3 - L1 CEILING - GL 27-25 J-K,Complete,SWB - 3,West Support Building,SUWN-3 - 24-27,DS/AD,,CONSTRUCTION,,Fireproofing,HOON WOO,,2023-12-14 07:00,2023-12-18 15:00,2023-11-08 07:00,2023-11-12 09:00,2025-11-20 17:00,2025-11-20 17:00,2025-11-14 17:00,2025-11-14 17:00,0,48,100
SUWPIT 22-30,NORTH PIT STEEL INSTALL - SWB-1 - L1 - GL 12-20,Complete,SWB - 3,West Support Building,SUWN-3 - 24-27,L1 - Fndn Slab,WASTE LIQUOR RM,CONSTRUCTION,,Decking & Detail,SEAN MONK,,2023-10-17 13:00,2023-10-29 13:00,2023-10-04 08:00,2023-10-26 17:00,2025-11-20 17:00,2025-11-20 17:00,2025-12-01 07:00,2025-12-01 07:00,0,100,100
CN.SWB3.1510,PH1- DS/AD DETAILING GL 21 - 24  DS/AD SWB-3  L2-L3,Complete,SWB - 3,,SUWN-3 - 24-27,DS/AD,,CONSTRUCTION,,,,,2023-10-08 08:00,2023-10-12 08:00,2023-10-08 08:00,2023-10-12 16:00,2025-11-20 17:00,2025-11-20 17:00,2025-08-26 07:00,2025-08-26 07:00,0,40,100
CN.SWB2.6330,DSAD PENETRATION SUPPORT STEEL FRAMING - SWB-3- GL 24-27 J-K L3,Complete,SWB - 3,West Support Building,SUWN-3 - 24-27,DS/AD,,CONSTRUCTION,,Steel Erector - W&W,HOON WOO,,2024-02-15 11:00,2024-02-21 11:00,2024-02-15 11:00,2024-04-15 17:00,2025-11-20 17:00,2025-11-20 17:00,2025-12-05 17:00,2025-12-05 17:00,0,40,100
CN.SWB2.6340,DSAD PENETRATION SUPPORT STEEL FRAMING - SWB-3- L4 GL 24-27 J-K L4,Complete,SWB - 3,West Support Building,SUWN-3 - 24-27,DS/AD,,CONSTRUCTION,PERRY & PERRY,Steel Erection,HOON WOO,,2024-07-29 07:00,2024-08-06 17:00,2024-07-27 07:00,2024-08-03 17:00,2025-11-20 17:00,2025-11-20 17:00,2025-12-05 17:00,2025-12-05 17:00,0,70,100
CN.SWB3.1520,PH1- DS/AD FRP SLAB - SWB-3  L6 GL 24-27 J-K,Complete,SWB - 3,,SUWN-3 - 24-27,DS/AD,,CONSTRUCTION,,SOMD,,,2023-11-30 07:00,2023-12-02 11:00,2023-11-30 07:00,2023-12-03 12:00,2025-11-20 17:00,2025-11-20 17:00,2025-06-13 08:00,2025-06-13 08:00,0,24,100
CN.SWB3.1530,PH1- DS/AD CURE FRP SLAB - SWB-3  L6 GL 24-27 J-K,Complete,SWB - 3,,SUWN-3 - 24-27,DS/AD,,CONSTRUCTION,,SOMD,,,2023-12-04 07:00,2023-12-07 11:00,2023-12-04 07:00,2023-12-07 11:00,2025-11-20 17:00,2025-11-20 17:00,2025-06-13 08:00,2025-06-13 08:00,0,24,100
CN.SWB2.4790,PH1- DS/AD DECKING GL 21 - 24  DS/AD SWB-3  L2 GL 24-27 J-K,Complete,SWB - 3,,SUWN-3 - 24-27,DS/AD,,CONSTRUCTION,,Decking & Detail,,,2023-10-30 13:00,2023-11-04 15:00,2023-10-30 13:00,2023-11-04 16:00,2025-11-20 17:00,2025-11-20 17:00,2025-11-14 17:00,2025-11-14 17:00,0,32,100
CN.SWB2.4800,PH1- DS/AD FRP SLAB - SWB-3  L2 GL 24-27 J-K,Complete,SWB - 3,,SUWN-3 - 24-27,DS/AD,,CONSTRUCTION,,SOMD,,,2023-11-04 08:00,2023-11-05 14:00,2023-11-04 08:00,2023-11-05 16:00,2025-11-20 17:00,2025-11-20 17:00,2025-11-14 17:00,2025-11-14 17:00,0,16,100
CN.SWB3.1210,PH1 DETAILING AND INSPECTION CLADDING STEEL - SWB-3 N Line [SUP EXTERIOR WALL]GL 24-27,Complete,SWB - 3,,SUWN-3 - 24-27,EXTERIOR SKIN,,CONSTRUCTION,,INSULATED METAL PANELS,,,2024-02-05 07:00,2024-02-11 12:00,2024-02-05 07:00,2024-02-12 14:00,2025-11-20 17:00,2025-11-20 17:00,2025-08-26 07:00,2025-08-26 07:00,0,55,100
CN.SWB3.1540,IMPACT [CL 75] - TOPPING SLAB AND CURB DESIGN CHANGE RFI 4611,Complete,SWB - 3,,SUWN-3 - 24-27,L1 - Fndn Slab,,CONSTRUCTION,,TOPPING,,,2023-10-30 07:00,2023-11-04 17:00,2023-09-23 07:00,2023-11-05 10:00,2025-11-20 17:00,2025-11-20 17:00,2025-11-21 07:00,2025-11-21 07:00,0,40,100
CN.SWB3.1250,INSTALL INSULATED METAL PANEL MODULES - GL 24-27 - K LINE (AD AREA),Complete,SWB - 3,,SUWN-3 - 24-27,EXTERIOR SKIN,,CONSTRUCTION,KOVACH,INSULATED METAL PANELS,,,2024-06-07 07:00,2024-06-11 17:00,2024-05-27 07:00,2024-06-01 17:00,2025-11-20 17:00,2025-11-20 17:00,2025-11-21 07:00,2025-11-21 07:00,0,50,100
CN.SWB3.4710,IMPACT - SECAI MEP CRANE - SWB-3 L LINE (DS AREA)GL 24-27,Complete,SWB - 3,West Support Building,SUWN-3 - 24-27,EXTERIOR SKIN,,CONSTRUCTION,,INSULATED METAL PANELS,JAMES LIVELY,,2023-11-13 07:00,2023-11-17 17:00,2023-11-17 07:00,2024-01-31 17:00,2025-11-20 17:00,2025-11-20 17:00,2025-08-26 07:00,2025-08-26 07:00,0,40,100
CN.SWB3.4720,REMAINING INSTALL INSULATED METAL PANEL MODULES - GL 26-27 - N LINE [SUP EXTERIOR WALL],Complete,SWB - 3,West Support Building,SUWN-3 - 24-27,EXTERIOR SKIN,,CONSTRUCTION,KOVACH,INSULATED METAL PANELS,JAMES LIVELY,,2024-09-29 07:00,2024-10-05 17:00,2024-09-23 07:00,2024-09-26 17:00,2025-11-20 17:00,2025-11-20 17:00,2025-09-29 07:00,2025-09-29 07:00,0,60,100
CN.SWB2.4810,K-LINE STEEL SPRAY FIREPROOFING SFRM2 - SWB3 - L3-CEILING - GL 24-27,Complete,SWB - 3,,SUWN-3 - 24-27,L4 - SUP Roof - FAB Roof,DS/AD INTERIORS,CONSTRUCTION,ROLLING PLAINS,TBD Architectural Finishes,,,2024-04-24 07:00,2024-04-30 17:00,2024-04-24 07:00,2024-04-29 17:00,2025-11-20 17:00,2025-11-20 17:00,2025-06-13 08:00,2025-06-13 08:00,0,50,100
CN.SWB2.4820,KNEE WALL -SWB 1 - GL 24-27 - L4 - J-K -DS/AD,Complete,SWB - 3,,SUWN-3 - 24-27,DS/AD,,CONSTRUCTION,,Cast-in Place Concrete - Baker Concrete,,,2024-01-26 15:00,2024-01-29 17:00,2024-01-26 15:00,2024-01-28 11:00,2025-11-20 17:00,2025-11-20 17:00,2025-11-21 07:00,2025-11-21 07:00,0,32,100
CN.SWB2.6420,PH1- DS/AD FRP SLAB - SWB-3  L3,Complete,SWB - 3,West Support Building,SUWN-3 - 24-27,DS/AD,,CONSTRUCTION,,SOMD,CONCRETE,,2023-12-03 15:00,2023-12-07 09:00,2023-12-03 15:00,2023-12-05 10:00,2025-11-20 17:00,2025-11-20 17:00,2025-12-05 17:00,2025-12-05 17:00,0,24,100
CN.SWB2.6430,PH1- DS/AD DECKING 21 - 24 DS/AD SWB-3 L3,Complete,SWB - 3,West Support Building,SUWN-3 - 24-27,DS/AD,,CONSTRUCTION,,Decking & Detail,SEAN MONK,,2023-11-30 07:00,2023-12-04 14:00,2023-11-30 07:00,2023-12-02 16:00,2025-11-20 17:00,2025-11-20 17:00,2025-12-05 17:00,2025-12-05 17:00,0,47,100
CN.SWB2.6440,AD STEEL PAINT FIREPROOFING IFRM - SWB-3 - GL 25-27 - J-K - L2-CEILING,Complete,SWB - 3,West Support Building,SUWN-3 - 24-27,DS/AD,,CONSTRUCTION,ROLLING PLAINS,Fireproofing,HOON WOO,,2024-07-15 07:00,2024-07-22 17:00,2024-07-15 07:00,2024-07-23 17:00,2025-11-20 17:00,2025-11-20 17:00,2025-12-05 17:00,2025-12-05 17:00,0,60,100
CN.SWB3.4810,ROOFTOP DRY PARAPET - SWB-1 (DS AREA) GL 27-24 N (DS AREA),Complete,SWB - 3,West Support Building,SUWN-3 - 24-27,EXTERIOR SKIN,,CONSTRUCTION,,INSULATED METAL PANELS,JAMES LIVELY,,2024-02-27 07:00,2024-03-02 17:00,2024-02-27 07:00,2024-03-01 17:00,2025-11-20 17:00,2025-11-20 17:00,2025-12-05 17:00,2025-12-05 17:00,0,40,100
CN.SWB2.6510,INSTALL INSULATED METAL PANEL MODULES - GL 24-26 - J LINE (AD AREA),Complete,SWB - 3,West Support Building,SUWN-3 - 24-27,DS/AD,,CONSTRUCTION,KOVACH,Fireproofing,HOON WOO,,2024-06-22 07:00,2024-06-23 17:00,2024-06-17 07:00,2024-06-18 17:00,2025-11-20 17:00,2025-11-20 17:00,2025-12-05 17:00,2025-12-05 17:00,0,20,100
CN.SWB3.4820,INSTALL TPO ROOFING - SWB3 - GL 26-29 - K-L - L6,Complete,SWB - 3,West Support Building,SUWN-3 - 24-27,L6 - PENTHOUSE / DS ROOF,,CONSTRUCTION,BRAZOS,Waterproofing - Preferred,JAMES LIVELY,,2024-10-08 07:00,2024-10-11 17:00,2024-10-08 07:00,2024-10-12 17:00,2025-11-20 17:00,2025-11-20 17:00,2025-12-05 17:00,2025-12-05 17:00,0,30,100
CN.SWB3.4830,DCC BEAM (STEEL STRUCTURE) - GL 24-27 - L3 K LINE,Complete,SWB - 3,West Support Building,SUWN-3 - 24-27,L3 / Waffle Slab Level,DS/AD INTERIORS,CONSTRUCTION,,TBD Architectural Finishes,FIZ DATA CENTER,INTERIORS,2024-01-24 15:00,2024-01-31 17:00,2024-01-24 15:00,2024-02-02 11:00,2025-11-20 17:00,2025-11-20 17:00,2025-06-13 08:00,2025-06-13 08:00,0,72,100
CN.SWB3.4840,TEMPORARY SCAFFOLD PLATFORM - GL 24-27 - L3  K LINE,Complete,SWB - 3,West Support Building,SUWN-3 - 24-27,L3 / Waffle Slab Level,DS/AD INTERIORS,CONSTRUCTION,,TBD Architectural Finishes,FIZ DATA CENTER,INTERIORS,2024-02-05 13:00,2024-02-11 11:00,2024-02-05 13:00,2024-02-11 14:00,2025-11-20 17:00,2025-11-20 17:00,2025-06-13 08:00,2025-06-13 08:00,0,48,100
CN.SWB3.4850,AD STEEL APPLY INTUMESCENT - SWB3 - L3 CEILING - GL 24-27/J-K,Complete,SWB - 3,West Support Building,SUWN-3 - 24-27,L4 - SUP Roof - FAB Roof,DS/AD INTERIORS,CONSTRUCTION,ROLLING PLAINS,TBD Architectural Finishes,FIZ DATA CENTER,INTERIORS,2024-04-29 07:00,2024-05-06 17:00,2024-05-28 07:00,2024-06-03 17:00,2025-11-20 17:00,2025-11-20 17:00,2025-06-13 08:00,2025-06-13 08:00,0,50,100
CN.SWB3.4860,Drywall Clips & AMTS Installs Support Beams - GL 24-27 K LINE - L4,Complete,SWB - 3,West Support Building,SUWN-3 - 24-27,L4 - SUP Roof - FAB Roof,DS/AD INTERIORS,CONSTRUCTION,SECAI,TBD Architectural Finishes,FIZ DATA CENTER,INTERIORS,2024-03-26 07:00,2024-04-05 17:00,2024-03-26 07:00,2024-04-04 17:00,2025-11-20 17:00,2025-11-20 17:00,2025-06-13 08:00,2025-06-13 08:00,0,90,100
CN.SWB3.4870,ADD FLANGE EXTENSIONS/ CUT GRATING - GL 24-27 K LINE - L3,Complete,SWB - 3,West Support Building,SUWN-3 - 24-27,L3 / Waffle Slab Level,DS/AD INTERIORS,CONSTRUCTION,,TBD Architectural Finishes,FIZ DATA CENTER,INTERIORS,2024-03-26 07:00,2024-03-28 11:00,2024-03-26 07:00,2024-03-29 11:00,2025-11-20 17:00,2025-11-20 17:00,2025-06-13 08:00,2025-06-13 08:00,0,24,100
CN.SWB3.4880,DS STEEL SPRAY SFRM- SWB3 - L3 CEILING GL24-27/K-L,Complete,SWB - 3,West Support Building,SUWN-3 - 24-27,L4 - SUP Roof - FAB Roof,DS/AD INTERIORS,CONSTRUCTION,ROLLING PLAINS,TBD Architectural Finishes,FIZ DATA CENTER,INTERIORS,2024-05-09 07:00,2024-05-17 17:00,2024-05-09 07:00,2024-05-16 17:00,2025-11-20 17:00,2025-11-20 17:00,2025-12-05 17:00,2025-12-05 17:00,0,60,100
CN.SWB3.4890,MEP IN WALL ROUGH INS - GL 24-27 K LINE -  L3,Complete,SWB - 3,West Support Building,SUWN-3 - 24-27,L3 / Waffle Slab Level,DS/AD INTERIORS,CONSTRUCTION,SECAI,TBD Architectural Finishes,FIZ DATA CENTER,INTERIORS,2024-05-02 07:00,2024-05-03 17:00,2024-05-02 07:00,2024-05-02 17:00,2025-11-20 17:00,2025-11-20 17:00,2025-06-13 08:00,2025-06-13 08:00,0,20,100
CN.SWB3.4900,CURE INTUMESCENT PAINT AD side - GL 24-27 K-J LINE - L3 CEILING,Complete,SWB - 3,West Support Building,SUWN-3 - 24-27,L4 - SUP Roof - FAB Roof,DS/AD INTERIORS,CONSTRUCTION,ROLLING PLAINS,TBD Architectural Finishes,FIZ DATA CENTER,INTERIORS,2024-06-03 07:00,2024-06-25 17:00,2024-06-03 07:00,2024-06-13 17:00,2025-11-20 17:00,2025-11-20 17:00,2025-12-05 17:00,2025-12-05 17:00,0,140,100
CN.SWB3.4910,SECAI - AMTS Installs UPPER CEILING - GL 24-27 AD  -  L4,Complete,SWB - 3,West Support Building,SUWN-3 - 24-27,L4 - SUP Roof - FAB Roof,DS/AD INTERIORS,CONSTRUCTION,SECAI,TBD Architectural Finishes,FIZ DATA CENTER,INTERIORS,2024-08-05 07:00,2024-08-09 17:00,2024-08-05 07:00,2024-08-09 17:00,2025-11-20 17:00,2025-11-20 17:00,2025-12-05 17:00,2025-12-05 17:00,0,40,100
CN.SWB3.4930,IMPACT - BUCK HOIST OPENING/ LEAVE OUTS - SWB-3 N LINE [SUP EXTERIOR WALL] GL 17-18,Complete,SWB - 3,West Support Building,SUWS-1 - 18-15,EXTERIOR SKIN,,CONSTRUCTION,,INSULATED METAL PANELS,JAMES LIVELY,,2024-01-22 07:00,2024-02-12 13:00,2024-01-02 07:00,2024-01-15 11:00,2025-11-20 17:00,2025-11-20 17:00,2025-08-26 07:00,2025-08-26 07:00,0,206,100
SUWPIT 22-40,REMAINING - NORTH PIT STEEL INSTALL - SWB-1 - L1 - GL 12-20,Complete,SWB - 3,West Support Building,SUWN-3 - 24-27,L1 - Fndn Slab,WASTE LIQUOR RM,CONSTRUCTION,,Decking & Detail,SEAN MONK,,2024-04-15 08:00,2024-04-19 16:00,2024-01-09 08:00,2024-01-19 16:00,2025-11-20 17:00,2025-11-20 17:00,2025-12-01 07:00,2025-12-01 07:00,0,48,100
SUWPIT 22-50,IMPACT [C2] - MEP MATERIAL/EQUIPMENT OBSTRUCTION (C2) - SWB-1 - L1 - GL 26-31,Complete,SWB - 3,West Support Building,SUWN-3 - 24-27,L1 - Fndn Slab,WASTE LIQUOR RM,CONSTRUCTION,SECAI,Decking & Detail,SEAN MONK,,2024-01-08 07:00,2024-01-11 17:00,2023-12-30 07:00,2024-01-08 17:00,2025-11-20 17:00,2025-11-20 17:00,2025-12-01 07:00,2025-12-01 07:00,0,40,100
CN.SWB2.6750,IMPACT [S8] - WAITING ON MEP LAYOUTS - SWB-3- L4 GL 24-27 J-K L4 / INCOMPLETE - CLOSED FOR CCD 310 LAYOUT,Complete,SWB - 3,West Support Building,SUWN-3 - 24-27,DS/AD,,CONSTRUCTION,SECAI,Steel Erection,HOON WOO,,2024-01-22 07:00,2024-01-25 17:00,2024-01-10 07:00,2024-05-30 17:00,2025-11-20 17:00,2025-11-20 17:00,2025-12-05 17:00,2025-12-05 17:00,0,40,100
CN.SWB3.4950,IMPACT [ES 25] - RE-INSTALL CLADDING STEELGL 26-27 - N LINE [SUP EXTERIOR WALL],Complete,SWB - 3,West Support Building,SUWN-3 - 24-27,EXTERIOR SKIN,,CONSTRUCTION,PATRIOT,INSULATED METAL PANELS,JAMES LIVELY,,2024-09-20 07:00,2024-09-27 17:00,2024-09-10 07:00,2024-09-17 17:00,2025-11-20 17:00,2025-11-20 17:00,2025-09-29 07:00,2025-09-29 07:00,0,50,100
CN.SWB2.6890,IMPACT - K-LINE STEEL SPRAY FIREPROOFING SFRM2 - SWB3 - L3-CEILING - GL 24-27,Complete,SWB - 3,,SUWN-3 - 24-27,L4 - SUP Roof - FAB Roof,DS/AD INTERIORS,CONSTRUCTION,ROLLING PLAINS,TBD Architectural Finishes,,,2024-04-25 07:00,2024-04-29 17:00,2024-04-25 07:00,2024-04-27 17:00,2025-11-20 17:00,2025-11-20 17:00,2025-06-13 08:00,2025-06-13 08:00,0,30,100
CN.SWB3.5100,IMPACT - INSPECT & SURFACE PREP ADDITIONAL AD STEEL FOR INTUMESCENT - SWB3 - GL 24-27 - J-K - L3 CEILING,Complete,SWB - 3,West Support Building,SUWN-3 - 24-27,L4 - SUP Roof - FAB Roof,DS/AD INTERIORS,CONSTRUCTION,ROLLING PLAINS,TBD Architectural Finishes,FIZ DATA CENTER,INTERIORS,2024-05-13 12:00,2024-05-21 12:00,2024-05-13 12:00,2024-05-22 12:00,2025-11-20 17:00,2025-11-20 17:00,2025-06-13 08:00,2025-06-13 08:00,0,50,100
CN.SWB2.6920,INSTALL FRAMING FOR IMP - GL 24-27 - J LINE (AD AREA),Complete,SWB - 3,West Support Building,SUWN-3 - 24-27,DS/AD,,CONSTRUCTION,BERG,Fireproofing,HOON WOO,,2024-05-23 07:00,2024-05-24 17:00,2024-05-01 07:00,2024-05-14 17:00,2025-11-20 17:00,2025-11-20 17:00,2025-12-05 17:00,2025-12-05 17:00,0,20,100
CN.SWB3.5140,FRP TOPPING SLAB - SWB3 - GL 26-27 - L-N - L4 ROOF,Complete,SWB - 3,West Support Building,SUWN-3 - 24-27,L4 - SUP Roof - FAB Roof,,CONSTRUCTION,BAKER,TOPPING,CONCRETE,SOMD / Roofing / Waterproofing,2024-09-26 11:00,2024-09-30 11:00,2024-09-13 11:00,2024-09-16 11:00,2025-11-20 17:00,2025-11-20 17:00,2025-12-05 17:00,2025-12-05 17:00,0,20,100
CN.SWB3.5150,IMPACT - DEMO DRYWALL -SWB2- GL 22-28 K LINE - L2,Complete,SWB - 3,West Support Building,SUWN-3 - 24-27,L2 - SubFab Level,DS/AD INTERIORS,CONSTRUCTION,BERG,DRYWALL,FIZ DATA CENTER,INTERIORS,2024-05-31 07:00,2024-06-07 17:00,2024-05-23 07:00,2024-05-28 17:00,2025-11-20 17:00,2025-11-20 17:00,2025-11-14 17:00,2025-11-14 17:00,0,50,100
CN.SWB2.6960,CURE - AD STEEL PAINT FIREPROOFING IFRM - SWB-3 - GL 25-27 - J-K - L2-CEILING,Complete,SWB - 3,West Support Building,SUWN-3 - 24-27,DS/AD,,CONSTRUCTION,ROLLING PLAINS,Fireproofing,HOON WOO,,2024-09-27 07:00,2024-10-17 17:00,2024-07-24 07:00,2024-08-10 17:00,2025-11-20 17:00,2025-11-20 17:00,2025-12-05 17:00,2025-12-05 17:00,0,180,100
CN.SWB2.6970,FRAMING CORRECTIONS & INSPECTIONS - GL 3-26 - J LINE (AD AREA),Complete,SWB - 3,West Support Building,SUWN-3 - 24-27,DS/AD,,CONSTRUCTION,BERG,Fireproofing,HOON WOO,,2024-05-23 07:00,2024-05-31 17:00,2024-06-07 07:00,2024-06-14 17:00,2025-11-20 17:00,2025-11-20 17:00,2025-12-05 17:00,2025-12-05 17:00,0,50,100
CN.SWB2.6980,PRIME & TOUCH UP AD STEEL - SWB-3 - GL 24-33 - J-K - L2-CEILING,Complete,SWB - 3,West Support Building,SUWN-3 - 24-27,DS/AD,,CONSTRUCTION,ROLLING PLAINS,Fireproofing,HOON WOO,,2024-07-01 07:00,2024-07-08 17:00,2024-07-01 07:00,2024-07-06 17:00,2025-11-20 17:00,2025-11-20 17:00,2025-12-05 17:00,2025-12-05 17:00,0,40,100
CN.AB.AR.7180,INSTALL GOAL POSTS - 7D WASTE LIQUOR RM - SWB-3 - GL 24-27 K-N,Complete,SWB - 3,West Support Building,SUWN-3 - 24-27,L1 - Fndn Slab,WASTE LIQUOR RM,CONSTRUCTION,CHERRY COATING,DRYWALL,AMBER CARO,INTERIORS,2025-06-03 07:00,2025-06-10 17:00,2025-06-03 07:00,2025-06-10 17:00,2025-11-20 17:00,2025-11-20 17:00,2025-12-01 07:00,2025-12-01 07:00,0,60,100
CN.SWB3.5220,DS ROOF PARAPET DRY IN - SWB3 - GL 24-27 - K-L - L6,Complete,SWB - 3,West Support Building,SUWN-3 - 24-27,DS/AD,,CONSTRUCTION,BRAZOS,Waterproofing - Preferred,JAMES LIVELY,,2024-09-16 07:00,2024-10-04 17:00,2024-08-26 07:00,2024-09-12 17:00,2025-11-20 17:00,2025-11-20 17:00,2025-11-25 07:00,2025-11-25 07:00,0,120,100
CN.A1.UG.1380,PH1- UNDERGROUND PLUMBING SWB4,Complete,SWB - 4,West Support Building,SUWN-4 - 27-30,L1 - Fndn Slab,,CONSTRUCTION,,Underground Plumbing - Cobb,ANDREA SOLIS,,2022-09-29 11:00,2022-10-03 11:00,2022-09-29 11:00,2022-10-04 13:00,2025-11-20 17:00,2025-11-20 17:00,2025-06-13 08:00,2025-06-13 08:00,0,40,100
CN.A1.UG.1370,PH1- UNDERGROUND ELECTRICAL SWB4,Complete,SWB - 4,West Support Building,SUWN-4 - 27-30,L1 - Fndn Slab,,CONSTRUCTION,,Underground Electrical - (By Owner),ANDREA SOLIS,,2022-09-29 11:00,2022-10-03 11:00,2022-09-29 11:00,2022-10-04 13:00,2025-11-20 17:00,2025-11-20 17:00,2025-06-13 08:00,2025-06-13 08:00,0,40,100
CN.A2.UG.1190,PH1- UNDERSLAB WATERPROOFING SWB4,Complete,SWB - 4,West Support Building,SUWN-4 - 27-30,L1 - Fndn Slab,,CONSTRUCTION,,Waterproofing - Preferred,ANDREA SOLIS,,2022-10-13 09:00,2022-10-17 09:00,2022-10-13 09:00,2022-10-18 11:00,2025-11-20 17:00,2025-11-20 17:00,2025-06-13 08:00,2025-06-13 08:00,0,40,100
CN.A2.UG.1200,PH1- WATERPROOF WALL SWB4,Complete,SWB - 4,West Support Building,SUWN-4 - 27-30,L1 - Fndn Slab,,CONSTRUCTION,,Waterproofing - Preferred,ANDREA SOLIS,,2022-10-27 09:00,2022-10-31 09:00,2022-10-27 09:00,2022-11-01 11:00,2025-11-20 17:00,2025-11-20 17:00,2025-06-13 08:00,2025-06-13 08:00,0,40,100
CN.A2.UG.1210,PH1- FRENCH DRAIN SWB4,Complete,SWB - 4,West Support Building,SUWN-4 - 27-30,L1 - Fndn Slab,,CONSTRUCTION,,Waterproofing - Preferred,ANDREA SOLIS,,2022-10-28 15:00,2022-10-31 09:00,2022-10-28 15:00,2022-11-01 11:00,2025-11-20 17:00,2025-11-20 17:00,2025-06-13 08:00,2025-06-13 08:00,0,24,100
CN.SWB2.1000,PH1- SUP - EXCAVATE PITS - SWB2,Complete,SWB - 4,West Support Building,SUWN-2 - 21-24,L1 - Fndn Slab,,CONSTRUCTION,,Excavate CIP,ANDREA SOLIS,,2022-08-30 08:00,2022-09-01 12:00,2022-08-30 08:00,2022-09-27 09:24,2025-11-20 17:00,2025-11-20 17:00,2025-06-13 08:00,2025-06-13 08:00,0,24,100
CN.SWB4.1000,PH1- SUP - EXCAVATE PITS - SWB4,Complete,SWB - 4,West Support Building,SUWN-4 - 27-30,L1 - Fndn Slab,,CONSTRUCTION,,Excavate CIP,ANDREA SOLIS,,2022-09-27 07:00,2022-09-29 11:00,2022-09-27 07:00,2022-09-29 11:00,2025-11-20 17:00,2025-11-20 17:00,2025-06-13 08:00,2025-06-13 08:00,0,24,100
CN.SWB4.1010,PH1-FRP GRADE BEAM - SWB4,Complete,SWB - 4,West Support Building,SUWN-4 - 27-30,L1 - Fndn Slab,,CONSTRUCTION,,Pour Concrete,ANDREA SOLIS,,2022-10-04 13:00,2022-10-06 17:00,2022-10-04 13:00,2022-10-06 17:00,2025-11-20 17:00,2025-11-20 17:00,2025-06-13 08:00,2025-06-13 08:00,0,24,100
CN.SWB4.1020,PH1-BLACK BASE (NOW RAT SLAB) - SWB4,Complete,SWB - 4,West Support Building,SUWN-4 - 27-30,L1 - Fndn Slab,,CONSTRUCTION,,RAT SLAB,ANDREA SOLIS,,2022-10-07 07:00,2022-10-09 11:00,2022-10-07 07:00,2022-10-10 13:00,2025-11-20 17:00,2025-11-20 17:00,2025-06-13 08:00,2025-06-13 08:00,0,24,100
CN.SWB4.1030,PH1-CURE PIER CAPS - SWB4,Complete,SWB - 4,West Support Building,SUWN-4 - 27-30,L1 - Fndn Slab,,CONSTRUCTION,,Concrete Cure,ANDREA SOLIS,,2022-10-07 07:00,2022-10-07 07:00,2022-10-07 07:00,2022-10-07 07:00,2025-11-20 17:00,2025-11-20 17:00,2025-06-13 08:00,2025-06-13 08:00,0,0,100
CN.SWB4.1060,PH1- FRP SLAB - SWB-4-L2,Complete,SWB - 4,West Support Building,SUWN-4 - 27-30,L2 - SubFab Level,,CONSTRUCTION,,SOMD,CONCRETE,,2023-09-06 13:00,2023-09-08 09:00,2023-09-06 13:00,2023-09-08 09:00,2025-11-20 17:00,2025-11-20 17:00,2025-11-21 07:00,2025-11-21 07:00,0,16,100
CN.SWB4.1090,PH1- FRP SLAB - SWB-4-L3,Complete,SWB - 4,West Support Building,SUWN-4 - 27-30,L3 / Waffle Slab Level,,CONSTRUCTION,,SOMD,CONCRETE,,2023-08-31 07:00,2023-09-02 11:00,2023-08-31 07:00,2023-09-01 12:00,2025-11-20 17:00,2025-11-20 17:00,2025-06-13 08:00,2025-06-13 08:00,0,24,100
CN.SWB4.1120,PH1- FRP SLAB - SWB-4-ROOF,Complete,SWB - 4,West Support Building,SUWN-4 - 27-30,L4 - SUP Roof - FAB Roof,,CONSTRUCTION,,SOMD,CONCRETE,SOMD / Roofing / Waterproofing,2023-09-11 15:00,2023-09-15 09:00,2023-09-11 15:00,2023-09-12 09:00,2025-11-20 17:00,2025-11-20 17:00,2025-11-19 07:00,2025-11-19 07:00,0,24,100
CN.SWB4.1080,PH1- CURE SOMD - SWB-4-L2 -,Complete,SWB - 4,West Support Building,SUWN-4 - 27-30,L2 - SubFab Level,,CONSTRUCTION,,Concrete Cure,JAMES LEE,,2023-09-10 08:00,2023-09-16 14:00,2023-09-09 20:44,2023-09-12 04:44,2025-11-20 17:00,2025-11-20 17:00,2025-11-24 07:00,2025-11-24 07:00,0,56,100
CN.SWB4.1110,PH1- CURE SOMD - SWB-4-L3,Complete,SWB - 4,West Support Building,SUWN-4 - 27-30,L3 / Waffle Slab Level,,CONSTRUCTION,,Concrete Cure,JAMES LEE,,2023-09-02 08:00,2023-09-08 14:00,2023-09-01 20:44,2023-09-04 04:44,2025-11-20 17:00,2025-11-20 17:00,2025-06-13 08:00,2025-06-13 08:00,0,56,100
CN.SWB4.1140,PH1- CURE SOMD - SWB-4-ROOF,Complete,SWB - 4,West Support Building,SUWN-4 - 27-30,L4 - SUP Roof - FAB Roof,,CONSTRUCTION,,Concrete Cure,JAMES LEE,SOMD / Roofing / Waterproofing,2023-09-14 07:00,2023-09-16 11:00,2023-09-12 20:44,2023-09-13 20:44,2025-11-20 17:00,2025-11-20 17:00,2025-11-21 07:00,2025-11-21 07:00,0,24,100
CN.SWB4.1100,PH1- 1st FLOOR SLAB - SWB-4-L1,Complete,SWB - 4,West Support Building,SUWN-4 - 27-30,L1 - Fndn Slab,,CONSTRUCTION,,Pour Concrete,ANDREA SOLIS,,2022-10-13 07:00,2022-10-22 09:00,2022-10-13 07:00,2022-10-24 13:00,2025-11-20 17:00,2025-11-20 17:00,2025-06-13 08:00,2025-06-13 08:00,0,82,100
CN.SWB4.1200,FRP TOPPING SLAB - SWB4 - GL 27-29 - L-N - L4 ROOF,Complete,SWB - 4,West Support Building,SUWN-4 - 27-30,L4 - SUP Roof - FAB Roof,,CONSTRUCTION,BAKER,TOPPING,CONCRETE,SOMD / Roofing / Waterproofing,2024-10-04 07:00,2024-10-07 17:00,2024-09-13 07:00,2024-09-16 17:00,2025-11-20 17:00,2025-11-20 17:00,2025-12-05 17:00,2025-12-05 17:00,0,20,100
CN.SWB4.1230,MEP EQPT PADS (LAYOUT & INSTALL DOWELS)- SWB-4-ROOF,Complete,SWB - 4,West Support Building,SUWN-4 - 27-30,L4 - SUP Roof - FAB Roof,,CONSTRUCTION,,OAC/ MECH PADS,JAMES LEE,SOMD / Roofing / Waterproofing,2023-10-27 07:00,2023-10-29 11:00,2023-10-27 07:00,2023-10-29 14:00,2025-11-20 17:00,2025-11-20 17:00,2025-12-05 17:00,2025-12-05 17:00,0,24,100
CN.SWB4.1040,PH1-FRP PIT WALLS - SWB4 (None),Complete,SWB - 4,West Support Building,SUWN-4 - 27-30,L1 - Fndn Slab,,CONSTRUCTION,,Pour Concrete,ANDREA SOLIS,,2022-10-21 15:00,2022-10-28 11:00,2022-10-21 15:00,2022-10-29 14:00,2025-11-20 17:00,2025-11-20 17:00,2025-06-13 08:00,2025-06-13 08:00,0,56,100
CN.SWB4.1070,PH1-BACKFILL PIT WALLS - SWB4,Complete,SWB - 4,West Support Building,SUWN-4 - 27-30,L1 - Fndn Slab,,CONSTRUCTION,,BACKFILL,ANDREA SOLIS,,2022-10-31 13:00,2022-11-06 11:00,2022-10-31 13:00,2022-11-05 12:00,2025-11-20 17:00,2025-11-20 17:00,2025-06-13 08:00,2025-06-13 08:00,0,48,100
CN.SWB4.1050,TIER 1 ERECT PRECAST COLUMNS & BEAMS - SWB4,Complete,SWB - 4,West Support Building,SUWN-4 - 27-30,L3 / Waffle Slab Level,,CONSTRUCTION,,"SUP WEST N,M",SEAN MONK,,2023-05-26 11:00,2023-06-03 17:00,2023-05-26 11:00,2023-07-10 09:00,2025-11-20 17:00,2025-11-20 17:00,2025-06-13 08:00,2025-06-13 08:00,0,56,100
CN.SWB4.1150,PH1-ROOF LAYER PARAPET - SWB4,Complete,SWB - 4,West Support Building,SUWN-4 - 27-30,L4 - SUP Roof - FAB Roof,,CONSTRUCTION,,Roofing,JAMES LIVELY,SOMD / Roofing / Waterproofing,2024-01-20 13:00,2024-01-22 09:00,2024-01-20 13:00,2024-01-22 12:00,2025-11-20 17:00,2025-11-20 17:00,2025-12-05 17:00,2025-12-05 17:00,0,16,100
CN.SWB4.1170,PH1-FLUID APPLIED MEMBRANE ROOFING - SWB4,Complete,SWB - 4,West Support Building,SUWN-4 - 27-30,L4 - SUP Roof - FAB Roof,,CONSTRUCTION,,Roofing,JAMES LIVELY,SOMD / Roofing / Waterproofing,2024-01-19 08:00,2024-01-22 10:00,2024-01-19 08:00,2024-01-22 14:00,2025-11-20 17:00,2025-11-20 17:00,2025-12-05 17:00,2025-12-05 17:00,0,32,100
CN.SWB4.1180,PH1 - CLADDING STEEL INTERIOR GL 27-30 - K LINE (AD AREA),Complete,SWB - 4,West Support Building,SUWN-4 - 27-30,EXTERIOR SKIN,,CONSTRUCTION,,INSULATED METAL PANELS,JAMES LIVELY,,2024-02-12 07:00,2024-02-17 13:00,2024-02-12 07:00,2024-03-01 11:00,2025-11-20 17:00,2025-11-20 17:00,2025-11-21 07:00,2025-11-21 07:00,0,56,100
CN.SWB4.1210,PH1 - INSTALL INSULATED METAL PANEL MODULES - GL 27-31 - L LINE (DS AREA),Complete,SWB - 4,West Support Building,SUWN-4 - 27-30,EXTERIOR SKIN,,CONSTRUCTION,KOVACH,INSULATED METAL PANELS,JAMES LIVELY,,2024-05-24 07:00,2024-06-02 17:00,2024-05-17 07:00,2024-05-24 17:00,2025-11-20 17:00,2025-11-20 17:00,2025-11-25 07:00,2025-11-25 07:00,0,90,100
CN.SWB4.1160,PH1 - CLADDING STEEL - GL 27-29 - SWB-4 N Line [SUP EXTERIOR WALL],Complete,SWB - 4,West Support Building,SUWN-4 - 27-30,EXTERIOR SKIN,,CONSTRUCTION,,INSULATED METAL PANELS,JAMES LIVELY,,2023-11-08 07:00,2023-11-11 09:00,2023-11-08 07:00,2023-11-10 07:00,2025-11-20 17:00,2025-11-20 17:00,2025-08-26 07:00,2025-08-26 07:00,0,32,100
CN.SWB4.1190,INSTALL INSULATED METAL PANEL MODULES - GL 27-30 - N LINE [SUP EXTERIOR WALL],Complete,SWB - 4,West Support Building,SUWN-4 - 27-30,EXTERIOR SKIN,,CONSTRUCTION,KOVACH,INSULATED METAL PANELS,JAMES LIVELY,,2024-10-12 07:00,2024-10-17 17:00,2024-10-12 07:00,2024-10-17 17:00,2025-11-20 17:00,2025-11-20 17:00,2025-08-26 07:00,2025-08-26 07:00,0,50,100
CN.SWB4.1130,PH1- AD STEEL FRAME INSTALL - SWB-4 fab side,Complete,SWB - 4,West Support Building,SUWN-4 - 27-30,DS/AD,,CONSTRUCTION,,Steel Erection,SEAN MONK,,2023-10-07 08:00,2023-10-09 12:00,2023-10-07 08:00,2023-10-11 17:00,2025-11-20 17:00,2025-11-20 17:00,2025-06-13 08:00,2025-06-13 08:00,0,24,100
CN.AB.AR.1080,METAL STUD FRAMING (2hr) - SWB-4 -L3 - CTR LAB GL 27-30 K-N,Complete,SWB - 4,West Support Building,SUWN-4 - 27-30,L3 / Waffle Slab Level,BATT RM 3,CONSTRUCTION,BERG,TBD Architectural Finishes,AMBER CARO,INTERIORS,2023-12-04 07:00,2023-12-08 17:00,2023-12-04 07:00,2023-12-08 17:00,2025-11-20 17:00,2025-11-20 17:00,2025-11-19 07:00,2025-11-19 07:00,0,40,100
CN.AB.AR.3380,IMPACT MEP ROUGH IN & INSPECTION (by SECAI) - SWB-4-L3 GL 27-30 K-N,Complete,SWB - 4,West Support Building,SUWN-4 - 27-30,L3 / Waffle Slab Level,BATT RM 3,CONSTRUCTION,,Owner & Design Team,AMBER CARO,,2024-01-22 07:00,2024-01-25 17:00,2024-01-02 07:00,2024-02-06 17:00,2025-11-20 17:00,2025-11-20 17:00,2025-11-19 07:00,2025-11-19 07:00,0,40,100
CN.AB.AR.3390,TAPE & FINISH DRYWALL - SWB-4-L3 - CTR LAB GL 27-30  K-N,Complete,SWB - 4,West Support Building,SUWN-4 - 27-30,L3 / Waffle Slab Level,BATT RM 3,CONSTRUCTION,CHERRY COATING,DRYWALL,AMBER CARO,INTERIORS,2024-05-02 07:00,2024-05-09 17:00,2024-04-23 07:00,2024-04-27 17:00,2025-11-20 17:00,2025-11-20 17:00,2025-12-01 07:00,2025-12-01 07:00,0,50,100
CN.AB.AR.3400,FINISH PAINT - SWB-4-L3 - CTR LAB GL 27-30 K-N,Not Started,SWB - 4,West Support Building,SUWN-4 - 27-30,L3 / Waffle Slab Level,BATT RM 3,CONSTRUCTION,FINISH PAINT,TBD Architectural Finishes,JAMES LEE,INTERIORS,2025-12-03 07:00,2025-12-09 17:00,,,2025-12-03 07:00,2025-12-09 17:00,2025-12-01 07:00,2025-12-05 17:00,50,50,0
CN.SWB4.1250,DS STEEL SPRAY FIREPROOFING SFRM - SWB-4 - L4&L5 CEILING GL 27-30/J-L,Complete,SWB - 4,West Support Building,SUWN-4 - 27-30,L4 - SUP Roof - FAB Roof,DS/AD INTERIORS,CONSTRUCTION,ROLLING PLAINS,Fireproofing,HOON WOO,,2024-09-06 07:00,2024-09-19 17:00,2024-08-23 07:00,2024-08-28 17:00,2025-11-20 17:00,2025-11-20 17:00,2025-12-05 17:00,2025-12-05 17:00,0,80,100
CN.SWB4.1260,PH1- DECKING GL 27 - 28 - SWB-4-ROOF,Complete,SWB - 4,West Support Building,SUWN-4 - 27-30,L4 - SUP Roof - FAB Roof,,CONSTRUCTION,,Decking & Detail,SEAN MONK,SOMD / Roofing / Waterproofing,2023-09-05 07:00,2023-09-06 13:00,2023-09-05 07:00,2023-09-06 13:00,2025-11-20 17:00,2025-11-20 17:00,2025-06-13 08:00,2025-06-13 08:00,0,16,100
CN.SWB4.1270,PH1- DECKING GL 27 - 28 - SWB-4-L3,Complete,SWB - 4,West Support Building,SUWN-4 - 27-30,L3 / Waffle Slab Level,,CONSTRUCTION,,Decking & Detail,SEAN MONK,,2023-08-28 07:00,2023-08-29 13:00,2023-08-28 07:00,2023-08-29 13:00,2025-11-20 17:00,2025-11-20 17:00,2025-06-13 08:00,2025-06-13 08:00,0,16,100
CN.SWB4.1280,PH1- DECKING GL 27 - 28 - SWB-4-L2,Complete,SWB - 4,West Support Building,SUWN-4 - 27-30,L2 - SubFab Level,,CONSTRUCTION,,Decking & Detail,SEAN MONK,,2023-08-28 07:00,2023-08-29 13:00,2023-08-28 07:00,2023-08-29 13:00,2025-11-20 17:00,2025-11-20 17:00,2025-06-13 08:00,2025-06-13 08:00,0,16,100
CN.SEA1.2830,PH1- MEP EQPT PADS (REBAR)- SWB-4 ROOF,Complete,SWB - 4,West Support Building,SUWN-4 - 27-30,L4 - SUP Roof - FAB Roof,,CONSTRUCTION,,OAC/ MECH PADS,CONCRETE,SOMD / Roofing / Waterproofing,2023-11-05 13:00,2023-11-07 09:00,2023-11-05 13:00,2023-11-06 10:00,2025-11-20 17:00,2025-11-20 17:00,2025-12-05 17:00,2025-12-05 17:00,0,16,100
CN.SEA1.2840,PH1- MEP EQPT PADS (PLACE CONCRETE - BLOCK)- SWB-4-ROOF,Complete,SWB - 4,West Support Building,SUWN-4 - 27-30,L4 - SUP Roof - FAB Roof,,CONSTRUCTION,,OAC/ MECH PADS,CONCRETE,SOMD / Roofing / Waterproofing,2023-11-07 09:00,2023-11-07 17:00,2023-11-07 09:00,2023-11-07 17:00,2025-11-20 17:00,2025-11-20 17:00,2025-12-05 17:00,2025-12-05 17:00,0,8,100
CN.SEA1.2850,PH1- MEP EQPT PADS (STRIP / PATCH - BLOCK)- SWB-4-ROOF,Complete,SWB - 4,West Support Building,SUWN-4 - 27-30,L4 - SUP Roof - FAB Roof,,CONSTRUCTION,,OAC/ MECH PADS,CONCRETE,SOMD / Roofing / Waterproofing,2023-11-08 08:00,2023-11-08 16:00,2023-11-08 08:00,2023-11-08 16:00,2025-11-20 17:00,2025-11-20 17:00,2025-12-05 17:00,2025-12-05 17:00,0,8,100
CN.SEA3.1420,PH1-CIP WALL (DS)- SWB-4,Complete,SWB - 4,West Support Building,SUWN-4 - 27-30,L4 - SUP Roof - FAB Roof,,CONSTRUCTION,,CIP WALL,CONCRETE,SOMD / Roofing / Waterproofing,2023-10-30 07:00,2023-11-03 11:00,2023-10-30 07:00,2023-11-03 11:00,2025-11-20 17:00,2025-11-20 17:00,2025-11-21 07:00,2025-11-21 07:00,0,24,100
CN.SEA1.2860,PH1- MEP EQPT PADS (INSTALL DRAIN MATS)- SWB-4-ROOF,Complete,SWB - 4,West Support Building,SUWN-4 - 27-30,L4 - SUP Roof - FAB Roof,,CONSTRUCTION,,OAC/ MECH PADS,JAMES LIVELY,SOMD / Roofing / Waterproofing,2023-11-02 07:00,2023-11-03 13:00,2023-11-02 07:00,2023-11-03 13:00,2025-11-20 17:00,2025-11-20 17:00,2025-12-05 17:00,2025-12-05 17:00,0,16,100
CN.SWB4.1310,SET/ FIX ANCHOR BOLTS - SWB-4-L1,Complete,SWB - 4,West Support Building,SUWN-4 - 27-30,L1 - Fndn Slab,,CONSTRUCTION,,Waterproofing - Preferred,JAMES LIVELY,SOMD / Roofing / Waterproofing,2023-10-24 07:00,2023-10-29 15:00,2023-10-23 07:00,2023-10-24 17:00,2025-11-20 17:00,2025-11-20 17:00,2025-08-26 07:00,2025-08-26 07:00,0,48,100
CN.SWB4.1340,PH1- TOPPING SLAB w TRENCH & ANGLE EMBEDS- SWB-4-L1- WASTE LIQUOR RM,Complete,SWB - 4,West Support Building,SUWN-4 - 27-30,L1 - Fndn Slab,,CONSTRUCTION,,TOPPING,CONCRETE,SOMD / Roofing / Waterproofing,2023-11-09 07:00,2023-11-11 11:00,2023-11-09 07:00,2023-11-11 12:00,2025-11-20 17:00,2025-11-20 17:00,2025-11-21 07:00,2025-11-21 07:00,0,24,100
CN.SWB4.1350,PH1- DS/AD DECKING & DETAILING - DS/AD SWB-4  L6 GL 27-30  K-L,Complete,SWB - 4,West Support Building,SUWN-4 - 27-30,DS/AD,,CONSTRUCTION,,Decking & Detail,SEAN MONK,,2023-11-18 08:00,2023-11-22 08:00,2023-11-13 08:00,2023-11-18 11:00,2025-11-20 17:00,2025-11-20 17:00,2025-06-13 08:00,2025-06-13 08:00,0,40,100
CN.SWB4.1360,PH1- DS/AD FRP SLAB - DS/AD SWB-4 - L4/E GL 27-30  K-L,Complete,SWB - 4,West Support Building,SUWN-4 - 27-30,DS/AD,,CONSTRUCTION,,SOMD,CONCRETE,,2024-01-18 07:00,2024-01-21 09:00,2024-01-15 07:00,2024-01-16 17:00,2025-11-20 17:00,2025-11-20 17:00,2025-06-13 08:00,2025-06-13 08:00,0,32,100
CN.SWB4.1370,AD WATERPROOFING - SWB4 - GL 27-30 - J-K - L4/E,Complete,SWB - 4,West Support Building,SUWN-4 - 27-30,DS/AD,,CONSTRUCTION,BRAZOS,Waterproofing - Preferred,JAMES LIVELY,,2024-06-21 07:00,2024-07-11 17:00,2024-06-07 07:00,2024-06-19 17:00,2025-11-20 17:00,2025-11-20 17:00,2025-11-25 07:00,2025-11-25 07:00,0,110,100
CN.SWB4.1380,AD TOPPING SLAB - SWB4 - GL 27-30 - J-K - L4/E,Complete,SWB - 4,West Support Building,SUWN-4 - 27-30,DS/AD,,CONSTRUCTION,BAKER,Roofing,CONCRETE,,2024-07-12 07:00,2024-07-17 17:00,2024-06-20 07:00,2024-06-25 17:00,2025-11-20 17:00,2025-11-20 17:00,2025-12-05 17:00,2025-12-05 17:00,0,40,100
TIER 24.105W,TIER 2 GROUT PRECAST COLUMNS & BEAMS - SWB4,Complete,SWB - 4,West Support Building,SUWN-4 - 27-30,L4 - SUP Roof - FAB Roof,,CONSTRUCTION,,"SUP WEST N,M",SEAN MONK,,2023-08-21 07:00,2023-08-25 09:00,2023-08-14 07:00,2023-08-17 07:00,2025-11-20 17:00,2025-11-20 17:00,2025-06-13 08:00,2025-06-13 08:00,0,32,100
CN.SWB4.1390,PH1- DECKING GL 28 - 29 - SWB-4-L2,Complete,SWB - 4,West Support Building,SUWN-4 - 27-30,L2 - SubFab Level,,CONSTRUCTION,,Decking & Detail,SEAN MONK,,2023-08-29 13:00,2023-09-01 09:00,2023-08-29 13:00,2023-09-02 13:00,2025-11-20 17:00,2025-11-20 17:00,2025-11-21 07:00,2025-11-21 07:00,0,16,100
CN.SWB4.1400,PH1- DECKING GL 29 - 30 - SWB-4-L2,Complete,SWB - 4,West Support Building,SUWN-4 - 27-30,L2 - SubFab Level,,CONSTRUCTION,,Decking & Detail,SEAN MONK,,2023-09-05 07:00,2023-09-06 13:00,2023-09-05 07:00,2023-09-06 13:00,2025-11-20 17:00,2025-11-20 17:00,2025-11-21 07:00,2025-11-21 07:00,0,16,100
CN.SWB4.1410,PH1- DECKING GL 28 - 29 - SWB-4-L3,Complete,SWB - 4,West Support Building,SUWN-4 - 27-30,L3 / Waffle Slab Level,,CONSTRUCTION,,Decking & Detail,SEAN MONK,,2023-08-24 07:00,2023-08-25 13:00,2023-08-24 07:00,2023-08-25 13:00,2025-11-20 17:00,2025-11-20 17:00,2025-06-13 08:00,2025-06-13 08:00,0,16,100
CN.SWB4.1420,PH1- DECKING GL 29 - 30 - SWB-4-L3,Complete,SWB - 4,West Support Building,SUWN-4 - 27-30,L3 / Waffle Slab Level,,CONSTRUCTION,,Decking & Detail,SEAN MONK,,2023-09-26 13:00,2023-09-29 09:00,2023-08-26 13:00,2023-08-28 09:00,2025-11-20 17:00,2025-11-20 17:00,2025-06-13 08:00,2025-06-13 08:00,0,16,100
CN.SWB4.1430,PH1- DECKING GL 28 - 29 - SWB-4-ROOF,Complete,SWB - 4,West Support Building,SUWN-4 - 27-30,L4 - SUP Roof - FAB Roof,,CONSTRUCTION,,Decking & Detail,SEAN MONK,SOMD / Roofing / Waterproofing,2023-09-08 09:00,2023-09-09 15:00,2023-09-08 09:00,2023-09-09 16:00,2025-11-20 17:00,2025-11-20 17:00,2025-06-13 08:00,2025-06-13 08:00,0,16,100
CN.SWB4.1440,PH1- DECKING GL 29 - 30 - SWB-4-ROOF,Complete,SWB - 4,West Support Building,SUWN-4 - 27-30,L4 - SUP Roof - FAB Roof,,CONSTRUCTION,,Decking & Detail,SEAN MONK,SOMD / Roofing / Waterproofing,2023-09-10 08:00,2023-09-11 14:00,2023-09-10 08:00,2023-09-11 15:00,2025-11-20 17:00,2025-11-20 17:00,2025-06-13 08:00,2025-06-13 08:00,0,16,100
CN.SWB4.1450,PH1- DS/AD DECKING & DETAILING ROOF DS/AD SWB-4 L4 & L4/E GL 27-30 K-L,Complete,SWB - 4,West Support Building,SUWN-4 - 27-30,DS/AD,,CONSTRUCTION,,Roofing,SEAN MONK,,2024-01-17 07:00,2024-01-20 17:00,2024-01-12 13:00,2024-01-15 17:00,2025-11-20 17:00,2025-11-20 17:00,2025-06-13 08:00,2025-06-13 08:00,0,40,100
CN.AB.AR.4600,DRYWALL 2 SIDE - SWB-4-L3 - CTR LAB GL 27-30 K-N,Complete,SWB - 4,West Support Building,SUWN-4 - 27-30,L3 / Waffle Slab Level,BATT RM 3,CONSTRUCTION,BERG,DRYWALL,AMBER CARO,INTERIORS,2024-04-16 07:00,2024-04-22 17:00,2024-04-16 07:00,2024-04-20 17:00,2025-11-20 17:00,2025-11-20 17:00,2025-12-01 07:00,2025-12-01 07:00,0,50,100
CN.AB.AR.4610,DRYWALL & INSULATION (1 side) (INT) - SWB-4-L3 - CTR LAB GL 27-30 K-N,Complete,SWB - 4,West Support Building,SUWN-4 - 27-30,L3 / Waffle Slab Level,BATT RM 3,CONSTRUCTION,,DRYWALL,AMBER CARO,INTERIORS,2024-03-09 08:00,2024-03-17 08:00,2024-02-29 00:00,2024-03-19 00:00,2025-11-20 17:00,2025-11-20 17:00,2025-11-19 07:00,2025-11-19 07:00,0,40,100
CN.SWB4.1470,PH1- DS STEEL FRAME INSTALL - SWB-4 Comeback Sup Side,Complete,SWB - 4,West Support Building,SUWN-4 - 27-30,DS/AD,,CONSTRUCTION,,Steel Erection,SEAN MONK,,2023-10-12 07:00,2023-10-14 11:00,2023-10-12 07:00,2023-10-14 12:00,2025-11-20 17:00,2025-11-20 17:00,2025-06-13 08:00,2025-06-13 08:00,0,24,100
CN.SWB4.1480,PH1- EXTERIOR CURBS - SWB-4-L1- WASTE LIQUOR RM,Complete,SWB - 4,West Support Building,SUWN-4 - 27-30,L1 - Fndn Slab,,CONSTRUCTION,,Pour Concrete,JAMES LEE,SOMD / Roofing / Waterproofing,2023-10-27 07:00,2023-10-30 17:00,2023-10-26 07:00,2023-10-27 09:00,2025-11-20 17:00,2025-11-20 17:00,2025-08-26 07:00,2025-08-26 07:00,0,40,100
CN.SWB4R.1050,METAL STUD FRAMING (2hr) - SWB-4 -L1- WASTE LIQUOR RM GL 27-30 K-N,Complete,SWB - 4,West Support Building,SUWN-4 - 27-30,L1 - Fndn Slab,WASTE LIQUOR RM,CONSTRUCTION,BERG,TBD Architectural Finishes,AMBER CARO,INTERIORS,2024-03-18 07:00,2024-03-27 09:00,2024-03-02 00:00,2024-03-06 00:00,2025-11-20 17:00,2025-11-20 17:00,2025-11-21 07:00,2025-11-21 07:00,0,72,100
CN.SWB4R.3170,MEP ROUGH IN & INSPECTION (by SECAI) - SWB-1- WASTE LIQUOR RM GL 27-30 K-N,Complete,SWB - 4,West Support Building,SUWN-4 - 27-30,L1 - Fndn Slab,WASTE LIQUOR RM,CONSTRUCTION,SECAI,Owner & Design Team,AMBER CARO,,2024-03-25 13:00,2024-04-01 11:00,2024-03-06 07:00,2024-03-13 17:00,2025-11-20 17:00,2025-11-20 17:00,2025-12-05 07:00,2025-12-05 07:00,0,48,100
CN.SWB4R.3180,TAPE & FINISH DRYWALL - SWB-1- WASTE LIQUOR RM GL 27-30  K-N,Complete,SWB - 4,West Support Building,SUWN-4 - 27-30,L1 - Fndn Slab,WASTE LIQUOR RM,CONSTRUCTION,CHERRY COATING,DRYWALL,AMBER CARO,INTERIORS,2025-09-15 07:00,2025-09-19 17:00,2025-09-15 07:00,2025-09-19 17:00,2025-11-20 17:00,2025-11-20 17:00,2025-12-05 07:00,2025-12-05 07:00,0,50,100
CN.SWB4R.3220,FLOOR STRIPING PAINT - SWB-1- WASTE LIQUOR RM GL 27-30 K-N,Not Started,SWB - 4,West Support Building,SUWN-4 - 27-30,L1 - Fndn Slab,WASTE LIQUOR RM,CONSTRUCTION,FLOOR STRIPING PAINT,TBD Architectural Finishes,AMBER CARO,INTERIORS,2025-12-01 07:00,2025-12-01 17:00,,,2025-12-01 07:00,2025-12-01 17:00,2025-12-05 07:00,2025-12-05 17:00,10,10,0
CN.SWB4R.3230,INSTALL WALL PROTECTION - DUCT SHAFT - GL 27-28 - K-L - L1,Not Started,SWB - 4,West Support Building,SUWN-4 - 27-30,L1 - Fndn Slab,DS/AD INTERIORS,CONSTRUCTION,BERNCO,TBD Architectural Finishes,JAMES LEE,INTERIORS,2025-11-24 07:00,2025-11-26 17:00,,,2025-11-24 07:00,2025-11-26 17:00,2025-12-02 07:00,2025-12-04 17:00,30,30,0
CN.SWB4R.3190,FINISH PAINT - SWB-1- WASTE LIQUOR RM GL 27-30 K-N - NO PAINT,Not Started,SWB - 4,West Support Building,SUWN-4 - 27-30,L1 - Fndn Slab,WASTE LIQUOR RM,CONSTRUCTION,FINISH PAINT,TBD Architectural Finishes,JAMES LEE,INTERIORS,2025-11-21 07:00,2025-11-21 17:00,,,2025-11-21 07:00,2025-11-21 17:00,2025-12-05 07:00,2025-12-05 17:00,10,10,0
CN.SWB4.1251,INSTALL METAL STAIRS & SUPPORT STEEL - SWB-1- WASTE LIQUOR RM GL 27-30 K-N - STAIR 39/40,Not Started,SWB - 4,West Support Building,SUWN-4 - 27-30,L1 - Fndn Slab,WASTE LIQUOR RM,CONSTRUCTION,PATRIOT,INSULATED METAL PANELS,JAMES LIVELY,INTERIORS,2025-11-21 07:00,2025-11-21 17:00,,,2025-11-21 07:00,2025-11-21 17:00,2025-12-01 07:00,2025-12-01 17:00,10,10,0
CN.SWB4R.4540,DRYWALL 2 SIDE - SWB-1- WASTE LIQUOR RM GL 27-30 K-N,Complete,SWB - 4,West Support Building,SUWN-4 - 27-30,L1 - Fndn Slab,WASTE LIQUOR RM,CONSTRUCTION,BERG,DRYWALL,AMBER CARO,INTERIORS,2025-09-08 07:00,2025-09-12 17:00,2025-09-08 07:00,2025-09-12 17:00,2025-11-20 17:00,2025-11-20 17:00,2025-12-05 07:00,2025-12-05 07:00,0,50,100
CN.SWB4R.4550,DRYWALL & INSULATION (1 side) (INT) - SWB-1- WASTE LIQUOR RM GL 27-30 K-N - SECAI TOOK OVER FOR ACCELERATION,Complete,SWB - 4,West Support Building,SUWN-4 - 27-30,L1 - Fndn Slab,WASTE LIQUOR RM,CONSTRUCTION,BERG,DRYWALL,AMBER CARO,INTERIORS,2024-04-01 07:00,2024-04-08 13:00,2024-03-14 07:00,2025-06-27 07:00,2025-11-20 17:00,2025-11-20 17:00,2025-12-05 07:00,2025-12-05 07:00,0,56,100
CN.SWB4.1051,METAL STUD FRAMING (2hr) - SWB-1-L2 - ELECTRICAL ROOM 2,Complete,SWB - 4,West Support Building,SUWN-4 - 27-30,L2 - SubFab Level,BATT RM 3,CONSTRUCTION,BERG,TBD Architectural Finishes,AMBER CARO,INTERIORS,2023-11-13 07:00,2023-11-17 09:00,2023-11-09 07:00,2023-11-13 09:00,2025-11-20 17:00,2025-11-20 17:00,2025-11-24 07:00,2025-11-24 07:00,0,32,100
CN.SWB4.3170,MEP ROUGH IN & INSPECTION (by SECAI) - SWB-1-L2 - ELECTRICAL ROOM 2,Complete,SWB - 4,West Support Building,SUWN-4 - 27-30,L2 - SubFab Level,BATT RM 3,CONSTRUCTION,,Owner & Design Team,AMBER CARO,,2023-11-14 09:00,2023-11-18 11:00,2023-11-14 09:00,2023-11-14 17:00,2025-11-20 17:00,2025-11-20 17:00,2025-11-24 07:00,2025-11-24 07:00,0,32,100
CN.SWB4.3180,REMAINING DRYWALL & FINISHES  - SWB-1-L2 - ELECTRICAL ROOM 2 GL 27-30  K-N,Complete,SWB - 4,West Support Building,SUWN-4 - 27-30,L2 - SubFab Level,BATT RM 3,CONSTRUCTION,CHERRY COATING,DRYWALL,AMBER CARO,INTERIORS,2024-11-04 07:00,2024-11-08 17:00,2024-10-09 07:00,2024-10-18 07:00,2025-11-20 17:00,2025-11-20 17:00,2025-11-24 07:00,2025-11-24 07:00,0,40,100
CN.SWB4.3230,INSTALL WALL PROTECTION - BATTERY ROOM 3 - GL 27-28 - M-N - L2,Not Started,SWB - 4,West Support Building,SUWN-4 - 27-30,L2 - SubFab Level,BATT RM 3,CONSTRUCTION,BERNCO,TBD Architectural Finishes,JAMES LEE,INTERIORS,2025-11-21 07:00,2025-11-25 17:00,,,2025-11-21 07:00,2025-11-25 17:00,2025-12-03 07:00,2025-12-05 17:00,30,30,0
CN.SWB4.3190,FINISH PAINT - SWB-1-L2 - ELECTRICAL ROOM 2 GL 27-30 K-N,Not Started,SWB - 4,West Support Building,SUWN-4 - 27-30,L2 - SubFab Level,BATT RM 3,CONSTRUCTION,FINISH PAINT,TBD Architectural Finishes,JAMES LEE,INTERIORS,2025-11-21 07:00,2025-11-21 17:00,,,2025-11-21 07:00,2025-11-21 17:00,2025-12-05 07:00,2025-12-05 17:00,10,10,0
CN.SWB4.4540,DRYWALL 2 SIDE - SWB-1-L2 - ELECTRICAL ROOM 2 GL 27-30 K-N,Complete,SWB - 4,West Support Building,SUWN-4 - 27-30,L2 - SubFab Level,BATT RM 3,CONSTRUCTION,,DRYWALL,AMBER CARO,INTERIORS,2024-01-29 07:00,2024-02-01 09:00,2024-01-29 07:00,2024-02-02 09:00,2025-11-20 17:00,2025-11-20 17:00,2025-11-24 07:00,2025-11-24 07:00,0,32,100
CN.SWB4.4550,DRYWALL & INSULATION (1 side) (INT) - SWB-4-L2 - ELECTRICAL ROOM 2,Complete,SWB - 4,West Support Building,SUWN-4 - 27-30,L2 - SubFab Level,BATT RM 3,CONSTRUCTION,,DRYWALL,AMBER CARO,INTERIORS,2023-11-16 07:00,2023-11-19 09:00,2023-11-16 07:00,2023-11-19 12:00,2025-11-20 17:00,2025-11-20 17:00,2025-11-24 07:00,2025-11-24 07:00,0,32,100
SEC.AR.4410,SECAI - MEP PIPE RACK INSTALL AREA A OAC SIDE - SWB-4 - L4,Complete,SWB - 4,East Support Building,SUWN-4 - 27-30,L4 - SUP Roof - FAB Roof,,CONSTRUCTION,SECAI,TOPPING,,INTERIORS,2024-01-29 07:00,2024-01-29 17:00,2024-01-29 07:00,2024-01-29 17:00,2025-11-20 17:00,2025-11-20 17:00,2025-12-05 17:00,2025-12-05 17:00,0,10,100
CN.SWB4.1490,IMPACT - DRB-01 ADDITIONAL BEAMS BETWEEN FAB AND AD ROOF GL 27-30 K-L,Complete,SWB - 4,,SUWN-4 - 27-30,DS/AD,,CONSTRUCTION,,Roofing,,,2023-11-13 07:00,2023-11-17 17:00,2023-11-13 07:00,2024-02-13 15:00,2025-11-20 17:00,2025-11-20 17:00,2025-06-13 08:00,2025-06-13 08:00,0,40,100
CN.SWB4.4560,PH1 - CLADDING STEEL  EXTERIOR  - SWB-4 L LINE (DS AREA) GL 27-30,Complete,SWB - 4,West Support Building,SUWN-4 - 27-30,EXTERIOR SKIN,,CONSTRUCTION,,INSULATED METAL PANELS,JAMES LIVELY,,2024-02-22 07:00,2024-03-03 13:00,2024-02-22 07:00,2024-02-29 17:00,2025-11-20 17:00,2025-11-20 17:00,2025-11-25 07:00,2025-11-25 07:00,0,96,100
EMB1010,IMPACT [S.TIA-16] - Incorrect Precast Embeds GL L29 and L30 3A (30) - TR074 - TF1-SMT-SH-2168 GL 27-30 K-L SEQ. 4901,Complete,SWB - 4,West Support Building,SUWN-4 - 27-30,DS/AD,,CONSTRUCTION,SECAI,Steel Erection,SEAN MONK,,2023-11-27 07:00,2023-11-28 13:00,2023-08-14 07:00,2024-04-30 17:00,2025-11-20 17:00,2025-11-20 17:00,2025-12-04 07:00,2025-12-04 07:00,0,16,100
CN.SWB4.4590,DS/AD STEEL SPRAY FIREPROOFING SFRM- SWB-4 L1 CEILING - GL 27-30 K-L,Complete,SWB - 4,West Support Building,SUWN-4 - 27-30,DS/AD,,CONSTRUCTION,,Fireproofing,HOON WOO,,2023-12-09 08:00,2023-12-14 16:00,2023-11-28 08:00,2023-12-03 13:00,2025-11-20 17:00,2025-11-20 17:00,2025-11-26 07:00,2025-11-26 07:00,0,48,100
CN.SWB4.4570,PH1- DS/AD DECKING  GL 27 - 30 - DS/AD SWB-4  L2,Complete,SWB - 4,West Support Building,SUWN-4 - 27-30,DS/AD,,CONSTRUCTION,,Decking & Detail,SEAN MONK,,2023-10-30 07:00,2023-11-10 13:00,2023-10-25 07:00,2023-10-27 17:00,2025-11-20 17:00,2025-11-20 17:00,2025-11-21 07:00,2025-11-21 07:00,0,96,100
CN.SWB4.4580,PH1- DS/AD FRP SLAB - DS/AD SWB-4 L2 GL 27-30 K-L,Complete,SWB - 4,West Support Building,SUWN-4 - 27-30,DS/AD,,CONSTRUCTION,,SOMD,CONCRETE,,2023-12-05 13:00,2023-12-08 17:00,2023-12-19 13:00,2023-12-21 13:00,2025-11-20 17:00,2025-11-20 17:00,2025-11-21 07:00,2025-11-21 07:00,0,24,100
CN.SWB4.1212,METAL STUD FRAMING (2hr)-SWB2 - L1 GL 27-30 - K LINE,Complete,SWB - 4,West Support Building,SUWN-4 - 27-30,L1 - Fndn Slab,DS/AD INTERIORS,CONSTRUCTION,BERG,TBD Architectural Finishes,FIZ DATA CENTER,INTERIORS,2023-12-04 11:00,2023-12-10 09:00,2023-12-04 11:00,2023-12-08 12:00,2025-11-20 17:00,2025-11-20 17:00,2025-11-21 07:00,2025-11-21 07:00,0,48,100
CN.SWB4.1302,TAPE & FINISH DRYWALL -SWB2 -  L1 GL 27-30 - K LINE,Complete,SWB - 4,West Support Building,SUWN-4 - 27-30,L1 - Fndn Slab,DS/AD INTERIORS,CONSTRUCTION,,DRYWALL,FIZ DATA CENTER,INTERIORS,2024-03-09 08:00,2024-03-17 08:00,2024-02-29 00:00,2024-03-07 00:00,2025-11-20 17:00,2025-11-20 17:00,2025-12-05 17:00,2025-12-05 17:00,0,40,100
CN.SWB4.1332,PRIMER & PAINT DRYWALL - GL 27-30 - K LINE - L1,Complete,SWB - 4,West Support Building,SUWN-4 - 27-30,L1 - Fndn Slab,DS/AD INTERIORS,CONSTRUCTION,FINISH PAINT,TBD Architectural Finishes,FIZ DATA CENTER,INTERIORS,2024-10-22 07:00,2024-10-25 17:00,2024-10-22 07:00,2024-10-28 17:00,2025-11-20 17:00,2025-11-20 17:00,2025-12-05 17:00,2025-12-05 17:00,0,30,100
CN.SWB4.1272,DRYWALL 2 SIDE -SWB2 - L1 GL 27-30 - K LINE,Complete,SWB - 4,West Support Building,SUWN-4 - 27-30,L1 - Fndn Slab,DS/AD INTERIORS,CONSTRUCTION,,DRYWALL,FIZ DATA CENTER,INTERIORS,2024-02-02 07:00,2024-02-05 17:00,2024-02-02 07:00,2024-02-06 11:00,2025-11-20 17:00,2025-11-20 17:00,2025-12-05 17:00,2025-12-05 17:00,0,40,100
CN.SWB4.1252,DRYWALL & INSULATION (1 side) (INT)-SWB2 - L1 GL 27-30 - K LINE,Complete,SWB - 4,West Support Building,SUWN-4 - 27-30,L1 - Fndn Slab,DS/AD INTERIORS,CONSTRUCTION,,DRYWALL,FIZ DATA CENTER,INTERIORS,2023-12-11 07:00,2023-12-16 15:00,2023-12-11 07:00,2023-12-16 16:00,2025-11-20 17:00,2025-11-20 17:00,2025-12-05 17:00,2025-12-05 17:00,0,48,100
CN.SWB4.1222,METAL STUD FRAMING (2hr)-SWB2 - L2 GL 27-30 K LINE [AWAITING SECAI TO RELEASE WORK],Complete,SWB - 4,West Support Building,SUWN-4 - 27-30,L2 - SubFab Level,DS/AD INTERIORS,CONSTRUCTION,BERG,TBD Architectural Finishes,FIZ DATA CENTER,INTERIORS,2024-03-11 07:00,2024-03-20 15:00,2024-02-28 07:00,2024-04-26 17:00,2025-11-20 17:00,2025-11-20 17:00,2025-11-26 07:00,2025-11-26 07:00,0,48,100
CN.SWB4.1312,REMEDY - TAPE & FINISH DRYWALL SWB2 L2 GL 27-30 K LINE,Complete,SWB - 4,West Support Building,SUWN-4 - 27-30,L2 - SubFab Level,DS/AD INTERIORS,CONSTRUCTION,CHERRY COATING,DRYWALL,FIZ DATA CENTER,INTERIORS,2024-09-13 07:00,2024-09-17 17:00,2024-08-27 07:00,2024-08-30 17:00,2025-11-20 17:00,2025-11-20 17:00,2025-12-05 07:00,2025-12-05 07:00,0,30,100
CN.SWB4.1342,FINISH PAINT SWB2 L2 GL 27-30 K LINE,Not Started,SWB - 4,West Support Building,SUWN-4 - 27-30,L2 - SubFab Level,DS/AD INTERIORS,CONSTRUCTION,FINISH PAINT,TBD Architectural Finishes,FIZ DATA CENTER,INTERIORS,2025-11-21 07:00,2025-11-21 17:00,,,2025-11-21 07:00,2025-11-21 17:00,2025-12-05 07:00,2025-12-05 17:00,10,10,0
CN.SWB4.1282,REMEDY - FRAME & DRYWALL  SIDE -SWB2  L2 GL 27-30  K LINE,Complete,SWB - 4,West Support Building,SUWN-4 - 27-30,L2 - SubFab Level,DS/AD INTERIORS,CONSTRUCTION,BERG,DRYWALL,FIZ DATA CENTER,INTERIORS,2024-07-23 07:00,2024-07-26 17:00,2024-07-19 07:00,2024-08-26 17:00,2025-11-20 17:00,2025-11-20 17:00,2025-12-05 07:00,2025-12-05 07:00,0,40,100
CN.SWB4.1262,REMEDY - DEMO DRYWALL & INSULATION (1 side) (INT) SWB2 - L2 GL 28 - 33 K LINE,Complete,SWB - 4,West Support Building,SUWN-4 - 27-30,L2 - SubFab Level,DS/AD INTERIORS,CONSTRUCTION,BERG,DRYWALL,FIZ DATA CENTER,INTERIORS,2024-03-18 07:00,2024-03-25 15:00,2024-04-29 07:00,2024-05-09 17:00,2025-11-20 17:00,2025-11-20 17:00,2025-11-26 07:00,2025-11-26 07:00,0,48,100
CN.SWB4.4600,PH1 -WELD CLIPS - CLADDING STEEL - SWB-4 L LINE (DS AREA),Complete,SWB - 4,West Support Building,SUWN-4 - 27-30,EXTERIOR SKIN,,CONSTRUCTION,,INSULATED METAL PANELS,JAMES LIVELY,,2023-12-07 07:00,2023-12-08 09:00,2024-01-24 07:00,2024-01-30 13:00,2025-11-20 17:00,2025-11-20 17:00,2025-11-21 07:00,2025-11-21 07:00,0,12,100
CN.SWB4.1460,IMPACT - DS STEEL BEAM STIFFNER CONNECTION FIXES L4 GL 27-30 K-L,Complete,SWB - 4,,SUWN-4 - 27-30,DS/AD,,CONSTRUCTION,,Steel Erection,,,2024-01-22 07:00,2024-01-25 17:00,2024-01-03 07:00,2024-01-15 13:00,2025-11-20 17:00,2025-11-20 17:00,2025-06-13 08:00,2025-06-13 08:00,0,40,100
CN.SWB4.1292,METAL STUD FRAMING (2hr) -SWB2- L3 GL 27-30 K Line,Complete,SWB - 4,West Support Building,SUWN-4 - 27-30,L3 / Waffle Slab Level,DS/AD INTERIORS,CONSTRUCTION,BERG,TBD Architectural Finishes,FIZ DATA CENTER,INTERIORS,2024-04-05 11:00,2024-04-15 11:00,2024-04-05 11:00,2024-04-09 17:00,2025-11-20 17:00,2025-11-20 17:00,2025-06-13 08:00,2025-06-13 08:00,0,40,100
CN.SWB4.1372,TAPE & FINISH DRYWALL-SWB2  L3 GL 27-30  K LINE,Complete,SWB - 4,West Support Building,SUWN-4 - 27-30,L3 / Waffle Slab Level,DS/AD INTERIORS,CONSTRUCTION,CHERRY COATING,DRYWALL,FIZ DATA CENTER,INTERIORS,2024-06-10 07:00,2024-06-14 17:00,2024-06-10 07:00,2024-06-14 17:00,2025-11-20 17:00,2025-11-20 17:00,2025-06-13 08:00,2025-06-13 08:00,0,40,100
CN.SWB4.1382,D/S SGP Wall Turnover L3 GL 27-30 K LINE,Complete,SWB - 4,West Support Building,SUWN-4 - 27-30,L3 / Waffle Slab Level,DS/AD INTERIORS,CONSTRUCTION,SECAI,TBD Architectural Finishes,FIZ DATA CENTER,INTERIORS,2024-10-04 07:00,2024-10-04 17:00,2024-06-14 07:00,2024-06-14 17:00,2025-11-20 17:00,2025-11-20 17:00,2025-06-13 08:00,2025-06-13 08:00,0,10,100
CN.SWB4.1362,DRYWALL 2 SIDE -SWB2 L3 GL 27-30 K LINE,Complete,SWB - 4,West Support Building,SUWN-4 - 27-30,L3 / Waffle Slab Level,DS/AD INTERIORS,CONSTRUCTION,BERG,DRYWALL,FIZ DATA CENTER,INTERIORS,2024-05-16 07:00,2024-05-21 17:00,2024-05-16 07:00,2024-06-01 17:00,2025-11-20 17:00,2025-11-20 17:00,2025-06-13 08:00,2025-06-13 08:00,0,40,100
CN.SWB4.1352,DRYWALL & INSULATION (1 side) (INT)-SWB2 L3 GL 27-30 K LINE,Complete,SWB - 4,West Support Building,SUWN-4 - 27-30,L3 / Waffle Slab Level,DS/AD INTERIORS,CONSTRUCTION,,DRYWALL,FIZ DATA CENTER,INTERIORS,2024-04-05 11:00,2024-04-15 11:00,2024-04-05 11:00,2024-04-09 11:00,2025-11-20 17:00,2025-11-20 17:00,2025-06-13 08:00,2025-06-13 08:00,0,40,100
CN.SWB4.6000,WATER PROOF PEDESTALS - GL 25-30 - SWB-4-ROOF,Complete,SWB - 4,West Support Building,SUWN-4 - 27-30,L4 - SUP Roof - FAB Roof,,CONSTRUCTION,,Roofing,FIZ DATA CENTER,SOMD / Roofing / Waterproofing,2023-12-20 08:00,2023-12-20 16:00,2023-12-20 08:00,2023-12-20 16:00,2025-11-20 17:00,2025-11-20 17:00,2025-12-05 17:00,2025-12-05 17:00,0,8,100
CN.SWB4.6010,WATER PROOFING & POUR PEDESTALS - GL 25-30 - SWB-4-ROOF,Complete,SWB - 4,West Support Building,SUWN-4 - 27-30,L4 - SUP Roof - FAB Roof,,CONSTRUCTION,,Roofing,FIZ DATA CENTER,SOMD / Roofing / Waterproofing,2023-12-21 08:00,2023-12-21 16:00,2023-12-21 08:00,2023-12-21 16:00,2025-11-20 17:00,2025-11-20 17:00,2025-12-05 17:00,2025-12-05 17:00,0,8,100
CN.SWB4.6020,FINISH WATER PROOFING & POUR PEDESTALS - SWB-4-ROOF,Complete,SWB - 4,West Support Building,SUWN-4 - 27-30,L4 - SUP Roof - FAB Roof,,CONSTRUCTION,,Roofing,FIZ DATA CENTER,SOMD / Roofing / Waterproofing,2023-12-28 07:00,2023-12-28 15:00,2023-12-28 07:00,2023-12-28 15:00,2025-11-20 17:00,2025-11-20 17:00,2025-12-05 17:00,2025-12-05 17:00,0,8,100
CN.SWB4.6030,STRIP PEDSTALS & WORK ON SCRUBBER PAD - GL 25-30 - SWB-4-ROOF,Complete,SWB - 4,West Support Building,SUWN-4 - 27-30,L4 - SUP Roof - FAB Roof,,CONSTRUCTION,,Roofing,FIZ DATA CENTER,SOMD / Roofing / Waterproofing,2024-01-29 15:00,2024-01-30 13:00,2024-01-05 15:00,2024-01-08 13:00,2025-11-20 17:00,2025-11-20 17:00,2025-12-05 17:00,2025-12-05 17:00,0,8,100
CN.SWB4.6040,FINISH FORM & INSPECT - GL 25-30 - SWB-4-ROOF,Complete,SWB - 4,West Support Building,SUWN-4 - 27-30,L4 - SUP Roof - FAB Roof,,CONSTRUCTION,,Roofing,FIZ DATA CENTER,SOMD / Roofing / Waterproofing,2024-01-02 13:00,2024-01-03 14:00,2024-01-02 13:00,2024-01-04 11:00,2025-11-20 17:00,2025-11-20 17:00,2025-12-05 17:00,2025-12-05 17:00,0,8,100
CN.SWB4.6050,PLACE SCRUBBER PAD - GL 25-30 - SWB-4-ROOF,Complete,SWB - 4,West Support Building,SUWN-4 - 27-30,L4 - SUP Roof - FAB Roof,,CONSTRUCTION,,Roofing,FIZ DATA CENTER,SOMD / Roofing / Waterproofing,2024-01-09 11:00,2024-01-10 13:00,2024-01-09 11:00,2024-01-10 09:00,2025-11-20 17:00,2025-11-20 17:00,2025-12-05 17:00,2025-12-05 17:00,0,8,100
CN.SWB4.6060,STRIP FORMS - GL 25-30 - SWB-4-ROOF,Complete,SWB - 4,West Support Building,SUWN-4 - 27-30,L4 - SUP Roof - FAB Roof,,CONSTRUCTION,,Roofing,FIZ DATA CENTER,SOMD / Roofing / Waterproofing,2024-01-11 09:00,2024-01-12 12:00,2024-01-11 09:00,2024-01-11 17:00,2025-11-20 17:00,2025-11-20 17:00,2025-12-05 17:00,2025-12-05 17:00,0,8,100
CN.SWB4.6070,STRIP FORMS & SHORT PATCHING - GL 25-30 - SWB-4-ROOF,Complete,SWB - 4,West Support Building,SUWN-4 - 27-30,L4 - SUP Roof - FAB Roof,,CONSTRUCTION,,Roofing,FIZ DATA CENTER,SOMD / Roofing / Waterproofing,2024-01-13 08:00,2024-01-13 16:00,2024-01-13 08:00,2024-01-13 16:00,2025-11-20 17:00,2025-11-20 17:00,2025-12-05 17:00,2025-12-05 17:00,0,8,100
CN.SWB4.6080,CONTINUE PATCHING & INSPECT - GL 25-30 - SWB-4-ROOF,Complete,SWB - 4,West Support Building,SUWN-4 - 27-30,L4 - SUP Roof - FAB Roof,,CONSTRUCTION,,Roofing,FIZ DATA CENTER,SOMD / Roofing / Waterproofing,2024-01-17 07:00,2024-01-17 15:00,2024-01-16 15:00,2024-01-18 13:00,2025-11-20 17:00,2025-11-20 17:00,2025-12-05 17:00,2025-12-05 17:00,0,8,100
CN.SWB4.6090,INSTALL PRIMER - GL 27-29 - L4 - L-N - ROOF,Complete,SWB - 4,West Support Building,SUWN-4 - 27-30,L4 - SUP Roof - FAB Roof,,CONSTRUCTION,BRAZOS,TOPPING,FIZ DATA CENTER,SOMD / Roofing / Waterproofing,2024-08-30 07:00,2024-08-30 17:00,2024-08-27 07:00,2024-08-27 17:00,2025-11-20 17:00,2025-11-20 17:00,2025-12-05 17:00,2025-12-05 17:00,0,10,100
CN.SWB4.6110,INSTALL BASE COAT - GL 27-29 - L4 - L-N - ROOF,Complete,SWB - 4,West Support Building,SUWN-4 - 27-30,L4 - SUP Roof - FAB Roof,,CONSTRUCTION,BRAZOS,TOPPING,FIZ DATA CENTER,SOMD / Roofing / Waterproofing,2024-09-03 07:00,2024-09-04 17:00,2024-08-28 07:00,2024-08-28 17:00,2025-11-20 17:00,2025-11-20 17:00,2025-12-05 17:00,2025-12-05 17:00,0,20,100
CN.SWB4.6130,INSTALL TOP COAT - GL 27-29 - L4 - L-N - ROOF,Complete,SWB - 4,West Support Building,SUWN-4 - 27-30,L4 - SUP Roof - FAB Roof,,CONSTRUCTION,BRAZOS,TOPPING,FIZ DATA CENTER,SOMD / Roofing / Waterproofing,2024-09-23 07:00,2024-09-24 17:00,2024-09-04 07:00,2024-09-04 17:00,2025-11-20 17:00,2025-11-20 17:00,2025-12-05 17:00,2025-12-05 17:00,0,20,100
CN.SWB4.6150,INSTALL BASE COAT CRICKET - GL 27-29 - L4 - L-N - ROOF,Complete,SWB - 4,West Support Building,SUWN-4 - 27-30,L4 - SUP Roof - FAB Roof,,CONSTRUCTION,BRAZOS,TOPPING,FIZ DATA CENTER,SOMD / Roofing / Waterproofing,2024-09-30 07:00,2024-09-30 17:00,2024-09-10 07:00,2024-09-10 17:00,2025-11-20 17:00,2025-11-20 17:00,2025-12-05 17:00,2025-12-05 17:00,0,10,100
CN.SWB4.6180,INSTALL TOP COAT CRICKET - GL 27-29 - L4 - L-N - ROOF,Complete,SWB - 4,West Support Building,SUWN-4 - 27-30,L4 - SUP Roof - FAB Roof,,CONSTRUCTION,BRAZOS,TOPPING,FIZ DATA CENTER,SOMD / Roofing / Waterproofing,2024-10-01 07:00,2024-10-01 17:00,2024-09-11 07:00,2024-09-11 17:00,2025-11-20 17:00,2025-11-20 17:00,2025-12-05 17:00,2025-12-05 17:00,0,10,100
CN.SWB4.1500,PH1- DS/AD DETAILING GL 27 - 30 - DS/AD SWB-4 L2-L3,Complete,SWB - 4,,SUWN-4 - 27-30,DS/AD,,CONSTRUCTION,,,,,2023-10-16 08:00,2023-10-20 08:00,2023-10-15 20:44,2023-10-20 16:00,2025-11-20 17:00,2025-11-20 17:00,2025-11-21 07:00,2025-11-21 07:00,0,40,100
CN.SWB4.6300,DSAD PENETRATION SUPPORT STEEL FRAMING - SWB-4 GL 27-30 K-L L3,Complete,SWB - 4,West Support Building,SUWN-4 - 27-30,DS/AD,,CONSTRUCTION,,Steel Erector - W&W,HOON WOO,,2024-02-20 11:00,2024-02-23 17:00,2024-02-20 11:00,2024-02-26 11:00,2025-11-20 17:00,2025-11-20 17:00,2025-12-05 17:00,2025-12-05 17:00,0,36,100
CN.SWB4.6310,DSAD & PENETRATION SUPPORT STEEL FRAMING - SWB-4 GL 27-30 K-L L4,Complete,SWB - 4,West Support Building,SUWN-4 - 27-30,DS/AD,,CONSTRUCTION,PERRY & PERRY,Fireproofing,HOON WOO,,2024-07-29 07:00,2024-08-02 17:00,2024-07-27 07:00,2024-08-03 17:00,2025-11-20 17:00,2025-11-20 17:00,2025-12-05 17:00,2025-12-05 17:00,0,50,100
CN.SWB4.1510,PH1- DS/AD FRP SLAB - DS/AD SWB-4  L6 GL 27-30  K-L,Complete,SWB - 4,,SUWN-4 - 27-30,DS/AD,,CONSTRUCTION,,SOMD,,,2023-11-20 11:00,2023-11-22 15:00,2023-11-20 11:00,2023-11-21 15:00,2025-11-20 17:00,2025-11-20 17:00,2025-06-13 08:00,2025-06-13 08:00,0,24,100
CN.SWB4.1520,PH1- DS/AD CURE FRP SLAB - DS/AD SWB-4  L6 GL 27-30  K-L,Complete,SWB - 4,,SUWN-4 - 27-30,DS/AD,,CONSTRUCTION,,SOMD,,,2023-11-22 15:00,2023-11-30 09:00,2023-11-22 15:00,2023-11-26 09:00,2025-11-20 17:00,2025-11-20 17:00,2025-06-13 08:00,2025-06-13 08:00,0,24,100
CN.SWB4.4640,PH1- DS/AD DECKING  - DS/AD SWB-4  L3 GL 27-30  K-L,Complete,SWB - 4,,SUWN-4 - 27-30,DS/AD,,CONSTRUCTION,W&W,Decking & Detail,,,2024-07-29 07:00,2024-07-31 17:00,2024-06-19 07:00,2024-06-21 17:00,2025-11-20 17:00,2025-11-20 17:00,2025-12-04 07:00,2025-12-04 07:00,0,30,100
CN.SWB4.4650,PH1- DS/AD FRP SLAB - DS/AD SWB-4  L3 GL 27-30  K-L,Complete,SWB - 4,,SUWN-4 - 27-30,DS/AD,,CONSTRUCTION,BAKER,SOMD,,,2024-08-01 07:00,2024-08-02 17:00,2024-06-24 07:00,2024-06-28 17:00,2025-11-20 17:00,2025-11-20 17:00,2025-12-04 07:00,2025-12-04 07:00,0,20,100
CN.SWB4.1220,PH1 DETAILING AND INSPECTION CLADDING STEEL GL 28-30 - N LINE [SUP EXTERIOR WALL],Complete,SWB - 4,,SUWN-4 - 27-30,EXTERIOR SKIN,,CONSTRUCTION,PATRIOT,INSULATED METAL PANELS,,,2024-09-27 07:00,2024-10-11 17:00,2024-09-17 07:00,2024-09-19 07:00,2025-11-20 17:00,2025-11-20 17:00,2025-08-26 07:00,2025-08-26 07:00,0,90,100
CN.SWB4.1240,INSTALL INSULATED METAL PANEL MODULES - GL 27-30 - K LINE (AD AREA),Complete,SWB - 4,,SUWN-4 - 27-30,EXTERIOR SKIN,,CONSTRUCTION,KOVACH,INSULATED METAL PANELS,,,2024-05-29 07:00,2024-06-03 17:00,2024-05-17 07:00,2024-05-30 17:00,2025-11-20 17:00,2025-11-20 17:00,2025-11-21 07:00,2025-11-21 07:00,0,60,100
EMB6050,IMPACT - Incorrect Precast Embeds GL L29 and L30 3F (10) GL 27-30 K-L,Complete,SWB - 4,West Support Building,SUWN-4 - 27-30,DS/AD,,CONSTRUCTION,,Steel Erection,SEAN MONK,,2023-11-27 07:00,2023-11-28 13:00,2023-11-20 07:00,2023-11-27 13:00,2025-11-20 17:00,2025-11-20 17:00,2025-11-21 07:00,2025-11-21 07:00,0,16,100
CN.SWB4.6320,PH1 - REMAINING CLADDING STEEL - GL 29-32 - SWB-4 N Line [SUP EXTERIOR WALL],Complete,SWB - 4,West Support Building,SUWN-4 - 27-30,EXTERIOR SKIN,,CONSTRUCTION,,INSULATED METAL PANELS,JAMES LIVELY,,2024-01-11 11:00,2024-01-21 11:00,2023-12-04 11:00,2023-12-12 16:00,2025-11-20 17:00,2025-11-20 17:00,2025-08-26 07:00,2025-08-26 07:00,0,72,100
CN.SWB4.4680,AD STEEL PAINT FIREPROOFING IFRM - SWB-4 - GL 27-30 - K-L - L2-CEILING,Complete,SWB - 4,,SUWN-4 - 27-30,DS/AD,,CONSTRUCTION,ROLLING PLAINS,TBD Architectural Finishes,,,2024-07-19 07:00,2024-07-26 17:00,2024-07-19 07:00,2024-07-24 17:00,2025-11-20 17:00,2025-11-20 17:00,2025-12-05 17:00,2025-12-05 17:00,0,60,100
CN.SWB4.1290,KNEE WALL -SWB 1 - GL 27-30 - L4 - J-K -DS/AD,Complete,SWB - 4,,SUWN-4 - 27-30,DS/AD,,CONSTRUCTION,,Cast-in Place Concrete - Baker Concrete,,,2024-01-22 09:00,2024-01-25 11:00,2024-01-22 09:00,2024-01-25 11:00,2025-11-20 17:00,2025-11-20 17:00,2025-11-21 07:00,2025-11-21 07:00,0,32,100
CN.SWB4.6340,K-LINE STEEL SPRAY FIREPROOFING SFRM2 - SWB4 - L3-CEILING - GL 27-30,Complete,SWB - 4,West Support Building,SUWN-4 - 27-30,L4 - SUP Roof - FAB Roof,DS/AD INTERIORS,CONSTRUCTION,ROLLING PLAINS,Fireproofing,HOON WOO,,2024-04-24 07:00,2024-04-29 17:00,2024-04-24 07:00,2024-04-29 17:00,2025-11-20 17:00,2025-11-20 17:00,2025-06-13 08:00,2025-06-13 08:00,0,40,100
CN.SWB4.6380,ROOFTOP DRY PARAPET - SWB-1 (DS AREA) GL 27-30 N (DS AREA),Complete,SWB - 4,West Support Building,SUWN-4 - 27-30,EXTERIOR SKIN,,CONSTRUCTION,,INSULATED METAL PANELS,JAMES LIVELY,,2024-02-29 07:00,2024-03-03 08:00,2024-02-28 08:00,2024-03-02 10:00,2025-11-20 17:00,2025-11-20 17:00,2025-12-05 17:00,2025-12-05 17:00,0,31,100
CN.SWB4.6390,INSTALL INSULATED METAL PANEL MODULES - GL 26-30 - J LINE (AD AREA),Complete,SWB - 4,West Support Building,SUWN-4 - 27-30,DS/AD,,CONSTRUCTION,KOVACH,Fireproofing,HOON WOO,,2024-06-30 07:00,2024-07-01 17:00,2024-06-28 07:00,2024-06-29 17:00,2025-11-20 17:00,2025-11-20 17:00,2025-12-05 17:00,2025-12-05 17:00,0,20,100
CN.SWB4.6400,INSTALL TPO ROOFING - SWB4 - GL 30 33 - K-L - L6,Complete,SWB - 4,West Support Building,SUWN-4 - 27-30,L6 - PENTHOUSE / DS ROOF,,CONSTRUCTION,BRAZOS,Waterproofing - Preferred,JAMES LIVELY,,2024-12-23 07:00,2024-12-27 17:00,2024-12-21 07:00,2024-12-27 17:00,2025-11-20 17:00,2025-11-20 17:00,2025-12-05 17:00,2025-12-05 17:00,0,30,100
CN.SWB4.6410,DCC BEAM (STEEL STRUCTURE) - GL 27-30 L3 K LINE,Complete,SWB - 4,West Support Building,SUWN-4 - 27-30,L3 / Waffle Slab Level,DS/AD INTERIORS,CONSTRUCTION,,TBD Architectural Finishes,FIZ DATA CENTER,INTERIORS,2024-03-04 08:00,2024-03-11 10:00,2024-03-04 08:00,2024-03-08 14:00,2025-11-20 17:00,2025-11-20 17:00,2025-06-13 08:00,2025-06-13 08:00,0,72,100
CN.SWB4.6420,TEMPORARY SCAFFOLD PLATFORM - GL 27-30 -L3  K LINE,Complete,SWB - 4,West Support Building,SUWN-4 - 27-30,L3 / Waffle Slab Level,DS/AD INTERIORS,CONSTRUCTION,,TBD Architectural Finishes,FIZ DATA CENTER,INTERIORS,2024-03-09 08:00,2024-03-17 16:00,2024-03-09 08:00,2024-03-15 12:00,2025-11-20 17:00,2025-11-20 17:00,2025-06-13 08:00,2025-06-13 08:00,0,48,100
CN.SWB4.6430,DS STEEL SPRAY SFRM- SWB-2 L3 CEILING GL 27-230 K-L,Complete,SWB - 4,West Support Building,SUWN-4 - 27-30,L4 - SUP Roof - FAB Roof,DS/AD INTERIORS,CONSTRUCTION,ROLLING PLAINS,TBD Architectural Finishes,FIZ DATA CENTER,INTERIORS,2024-05-07 12:00,2024-05-16 12:00,2024-05-09 12:00,2024-05-16 12:00,2025-11-20 17:00,2025-11-20 17:00,2025-12-05 17:00,2025-12-05 17:00,0,50,100
CN.SWB4.6440,Drywall Clips & AMTS Installs Support Beams - L4 GL 27-30 K LINE,Complete,SWB - 4,West Support Building,SUWN-4 - 27-30,L4 - SUP Roof - FAB Roof,DS/AD INTERIORS,CONSTRUCTION,,TBD Architectural Finishes,FIZ DATA CENTER,INTERIORS,2024-04-19 07:00,2024-04-25 17:00,2024-03-30 07:00,2024-04-05 11:00,2025-11-20 17:00,2025-11-20 17:00,2025-06-13 08:00,2025-06-13 08:00,0,50,100
CN.SWB4.6450,AD STEEL APPLY INTUMESCENT - SWB4 - L3 CEILING - GL 27-30/J-K,Complete,SWB - 4,West Support Building,SUWN-4 - 27-30,L4 - SUP Roof - FAB Roof,DS/AD INTERIORS,CONSTRUCTION,ROLLING PLAINS,TBD Architectural Finishes,FIZ DATA CENTER,INTERIORS,2024-05-28 07:00,2024-06-04 17:00,2024-05-28 07:00,2024-06-03 17:00,2025-11-20 17:00,2025-11-20 17:00,2025-06-13 08:00,2025-06-13 08:00,0,50,100
CN.SWB4.6460,ADD FLANGE EXTENSIONS/ CUT GRATING - L4 GL 27-30 K LINE,Complete,SWB - 4,West Support Building,SUWN-4 - 27-30,L4 - SUP Roof - FAB Roof,DS/AD INTERIORS,CONSTRUCTION,,TBD Architectural Finishes,FIZ DATA CENTER,INTERIORS,2024-03-25 07:00,2024-03-28 17:00,2024-03-25 07:00,2024-03-29 17:00,2025-11-20 17:00,2025-11-20 17:00,2025-06-13 08:00,2025-06-13 08:00,0,40,100
CN.SWB4.6470,MEP IN WALL ROUGH INS - L3  GL 27-30 K LINE,Complete,SWB - 4,West Support Building,SUWN-4 - 27-30,L3 / Waffle Slab Level,DS/AD INTERIORS,CONSTRUCTION,SECAI,TBD Architectural Finishes,FIZ DATA CENTER,INTERIORS,2024-05-02 07:00,2024-05-03 17:00,2024-05-02 07:00,2024-05-02 17:00,2025-11-20 17:00,2025-11-20 17:00,2025-06-13 08:00,2025-06-13 08:00,0,20,100
CN.SWB4.6480,CURE INTUMESCENT PAINT AD side - L3 CEILING GL 27-30 K-J LINE,Complete,SWB - 4,West Support Building,SUWN-4 - 27-30,L4 - SUP Roof - FAB Roof,DS/AD INTERIORS,CONSTRUCTION,ROLLING PLAINS,TBD Architectural Finishes,FIZ DATA CENTER,INTERIORS,2024-06-18 07:00,2024-07-12 17:00,2024-06-18 07:00,2024-07-02 17:00,2025-11-20 17:00,2025-11-20 17:00,2025-12-05 17:00,2025-12-05 17:00,0,140,100
CN.SWB4.6490,SECAI- AMTS Installs UPPER CEILING - L4 GL 27-30  K LINE,Complete,SWB - 4,West Support Building,SUWN-4 - 27-30,L4 - SUP Roof - FAB Roof,DS/AD INTERIORS,CONSTRUCTION,SECAI,TBD Architectural Finishes,FIZ DATA CENTER,INTERIORS,2024-08-05 07:00,2024-08-09 17:00,2024-08-05 07:00,2024-08-09 17:00,2025-11-20 17:00,2025-11-20 17:00,2025-12-05 17:00,2025-12-05 17:00,0,40,100
CN.SWB4.6520,IMPACT - HEI FIXES - WW PENTHOUSE INSTALL - GL 29-32 - SWB-4 N LINE [SUP EXTERIOR WALL],Complete,SWB - 4,West Support Building,SUWN-4 - 27-30,EXTERIOR SKIN,,CONSTRUCTION,,INSULATED METAL PANELS,JAMES LIVELY,,2024-01-02 09:00,2024-01-18 10:00,2023-12-29 07:00,2024-01-29 14:00,2025-11-20 17:00,2025-11-20 17:00,2025-08-26 07:00,2025-08-26 07:00,0,110,100
CN.SWB4.6530,IMPACT - WAITING ON MEP LAYOUTS - SWB-4 GL 27-30 K-L L4 / INCOMPLETE - CLOSED FOR CCD 310 LAYOUT,Complete,SWB - 4,West Support Building,SUWN-4 - 27-30,DS/AD,,CONSTRUCTION,SECAI,Fireproofing,HOON WOO,,2024-01-22 07:00,2024-01-25 17:00,2024-01-10 07:00,2024-05-30 17:00,2025-11-20 17:00,2025-11-20 17:00,2025-12-05 17:00,2025-12-05 17:00,0,40,100
CN.SWB4.6540,IMPACT - DWG CHANGE RETROFIT STEEL - APPROVAL FABRICATION & INSTALL DRB-001 SEQ#9990 - SWB-4 - L4 - GL 32-33 K-L L2- L4,Complete,SWB - 4,West Support Building,SUWN-5 - 30-33,DS/AD,,CONSTRUCTION,W&W,Steel Erector - W&W,HOON WOO,,2024-02-26 07:00,2024-03-19 17:00,2024-01-16 07:00,2024-06-11 17:00,2025-11-20 17:00,2025-11-20 17:00,2025-11-25 07:00,2025-11-25 07:00,0,140,100
CN.SWB4.6550,REMAINING TOPPING SLAB NORTH PIT - SWB-4-L1- GL 27-28,Complete,SWB - 4,West Support Building,SUWN-4 - 27-30,L1 - Fndn Slab,,CONSTRUCTION,,TOPPING,CONCRETE,SOMD / Roofing / Waterproofing,2023-11-09 07:00,2023-11-10 13:00,2023-11-09 07:00,2023-11-11 12:00,2025-11-20 17:00,2025-11-20 17:00,2025-11-21 07:00,2025-11-21 07:00,0,16,100
CN.SWB4.6560,IMPACT [C33] - STAIR TOWER OBSTRUCTION - SWB-4-L1- GL 27-28,Complete,SWB - 4,West Support Building,SUWN-4 - 27-30,L1 - Fndn Slab,,CONSTRUCTION,,TOPPING,CONCRETE,SOMD / Roofing / Waterproofing,2023-11-09 07:00,2023-11-10 13:00,2023-11-09 07:00,2023-11-11 12:00,2025-11-20 17:00,2025-11-20 17:00,2025-11-21 07:00,2025-11-21 07:00,0,16,100
CN.SWB4.6570,INSPECT PRIMER - GL 27-29 - L4 - L-N - ROOF,Complete,SWB - 4,West Support Building,SUWN-4 - 27-30,L4 - SUP Roof - FAB Roof,,CONSTRUCTION,BRAZOS,TOPPING,FIZ DATA CENTER,SOMD / Roofing / Waterproofing,2024-08-30 07:00,2024-08-30 17:00,2024-08-27 07:00,2024-08-27 17:00,2025-11-20 17:00,2025-11-20 17:00,2025-12-05 17:00,2025-12-05 17:00,0,10,100
CN.SWB4.6580,INSPECT BASE COAT - GL 27-29 - L4 - L-N - ROOF,Complete,SWB - 4,West Support Building,SUWN-4 - 27-30,L4 - SUP Roof - FAB Roof,,CONSTRUCTION,BRAZOS,TOPPING,FIZ DATA CENTER,SOMD / Roofing / Waterproofing,2024-09-03 07:00,2024-09-03 17:00,2024-08-28 07:00,2024-08-28 17:00,2025-11-20 17:00,2025-11-20 17:00,2025-12-05 17:00,2025-12-05 17:00,0,10,100
CN.SWB4.6590,INSPECT TOP COAT - GL 27-29 - L4 - L-N - ROOF,Complete,SWB - 4,West Support Building,SUWN-4 - 27-30,L4 - SUP Roof - FAB Roof,,CONSTRUCTION,BRAZOS,TOPPING,FIZ DATA CENTER,SOMD / Roofing / Waterproofing,2024-09-24 07:00,2024-09-24 17:00,2024-09-05 07:00,2024-09-05 17:00,2025-11-20 17:00,2025-11-20 17:00,2025-12-05 17:00,2025-12-05 17:00,0,10,100
CN.SWB4.6600,INSPECT BASE COAT CRICKET - GL 27-29 - L4 - L-N - ROOF,Complete,SWB - 4,West Support Building,SUWN-4 - 27-30,L4 - SUP Roof - FAB Roof,,CONSTRUCTION,BRAZOS,TOPPING,FIZ DATA CENTER,SOMD / Roofing / Waterproofing,2024-09-30 07:00,2024-09-30 17:00,2024-09-10 07:00,2024-09-10 17:00,2025-11-20 17:00,2025-11-20 17:00,2025-12-05 17:00,2025-12-05 17:00,0,10,100
CN.SWB4.6610,INSPECT TOP COAT CRICKET - GL 27-29 - L4 - L-N - ROOF,Complete,SWB - 4,West Support Building,SUWN-4 - 27-30,L4 - SUP Roof - FAB Roof,,CONSTRUCTION,BRAZOS,TOPPING,FIZ DATA CENTER,SOMD / Roofing / Waterproofing,2024-10-03 07:00,2024-10-03 17:00,2024-09-11 07:00,2024-09-11 17:00,2025-11-20 17:00,2025-11-20 17:00,2025-12-05 17:00,2025-12-05 17:00,0,10,100
CN.SWB4.6620,INSTALL CRICKET - GL 27-29 - L4 - L-N - ROOF,Complete,SWB - 4,West Support Building,SUWN-4 - 27-30,L4 - SUP Roof - FAB Roof,,CONSTRUCTION,BRAZOS,TOPPING,FIZ DATA CENTER,SOMD / Roofing / Waterproofing,2024-09-26 07:00,2024-09-27 17:00,2024-09-06 07:00,2024-09-07 17:00,2025-11-20 17:00,2025-11-20 17:00,2025-12-05 17:00,2025-12-05 17:00,0,20,100
CN.SWB4.6630,INSPECT CRICKET - GL 27-29 - L4 - L-N - ROOF,Complete,SWB - 4,West Support Building,SUWN-4 - 27-30,L4 - SUP Roof - FAB Roof,,CONSTRUCTION,BRAZOS,TOPPING,FIZ DATA CENTER,SOMD / Roofing / Waterproofing,2024-09-27 07:00,2024-09-27 17:00,2024-09-08 07:00,2024-09-08 17:00,2025-11-20 17:00,2025-11-20 17:00,2025-12-05 17:00,2025-12-05 17:00,0,10,100
CN.SWB4.6640,INSTALL PRIMER CRICKET - GL 27-29 - L4 - L-N - ROOF,Complete,SWB - 4,West Support Building,SUWN-4 - 27-30,L4 - SUP Roof - FAB Roof,,CONSTRUCTION,BRAZOS,TOPPING,FIZ DATA CENTER,SOMD / Roofing / Waterproofing,2024-09-30 07:00,2024-09-30 17:00,2024-09-09 07:00,2024-09-09 17:00,2025-11-20 17:00,2025-11-20 17:00,2025-12-05 17:00,2025-12-05 17:00,0,10,100
CN.SWB4.6650,INSPECT PRIMER CRICKET - GL 27-29 - L4 - L-N - ROOF,Complete,SWB - 4,West Support Building,SUWN-4 - 27-30,L4 - SUP Roof - FAB Roof,,CONSTRUCTION,BRAZOS,TOPPING,FIZ DATA CENTER,SOMD / Roofing / Waterproofing,2024-09-30 07:00,2024-09-30 17:00,2024-09-09 07:00,2024-09-09 17:00,2025-11-20 17:00,2025-11-20 17:00,2025-12-05 17:00,2025-12-05 17:00,0,10,100
CN.SWB4.6660,IMPACT - K-LINE STEEL SPRAY FIREPROOFING SFRM2 - SWB4 - L3-CEILING - GL 27-30,Complete,SWB - 4,West Support Building,SUWN-4 - 27-30,L4 - SUP Roof - FAB Roof,DS/AD INTERIORS,CONSTRUCTION,ROLLING PLAINS,Fireproofing,HOON WOO,,2024-04-25 07:00,2024-04-26 17:00,2024-04-25 07:00,2024-04-29 17:00,2025-11-20 17:00,2025-11-20 17:00,2025-06-13 08:00,2025-06-13 08:00,0,20,100
CN.SWB4.6670,IMPACT - INSPECT & SURFACE PREP ADDITIONAL AD STEEL FOR INTUMESCENT - SWB4 - GL 27-30 - J-K - L3 CEILING,Complete,SWB - 4,West Support Building,SUWN-4 - 27-30,L4 - SUP Roof - FAB Roof,DS/AD INTERIORS,CONSTRUCTION,ROLLING PLAINS,TBD Architectural Finishes,FIZ DATA CENTER,INTERIORS,2024-05-13 07:00,2024-05-20 17:00,2024-05-13 07:00,2024-05-21 17:00,2025-11-20 17:00,2025-11-20 17:00,2025-06-13 08:00,2025-06-13 08:00,0,50,100
CN.SWB4.6680,INSTALL FRAMING FOR IMP - GL 27-30 - J LINE (AD AREA),Complete,SWB - 4,West Support Building,SUWN-4 - 27-30,DS/AD,,CONSTRUCTION,BERG,Fireproofing,HOON WOO,,2024-05-20 07:00,2024-05-21 17:00,2024-05-01 07:00,2024-05-14 17:00,2025-11-20 17:00,2025-11-20 17:00,2025-12-05 17:00,2025-12-05 17:00,0,20,100
CN.SWB4.6690,INSTALL REMAINING CLADDING STEEL GL 27-30 - N LINE [SUP EXTERIOR WALL],Complete,SWB - 4,,SUWN-4 - 27-30,EXTERIOR SKIN,,CONSTRUCTION,PATRIOT,INSULATED METAL PANELS,,,2024-05-17 07:00,2024-05-21 17:00,2024-05-09 07:00,2024-09-17 17:00,2025-11-20 17:00,2025-11-20 17:00,2025-08-26 07:00,2025-08-26 07:00,0,30,100
CN.SWB4.6700,IMPACT - STARCON IMPEDING EXTERIOR WORK - GL 26-31 - N LINE [SUP EXTERIOR WALL],Complete,SWB - 4,,SUWN-4 - 27-30,EXTERIOR SKIN,,CONSTRUCTION,PATRIOT,INSULATED METAL PANELS,,,2024-07-16 07:00,2024-09-12 17:00,2024-05-10 07:00,2024-09-20 17:00,2025-11-20 17:00,2025-11-20 17:00,2025-08-26 07:00,2025-08-26 07:00,0,380,100
CN.SWB4.6710,DS STEEL SPRAY SFRM- SWB-2 L3 CEILING GL 30-33 K-L,Complete,SWB - 4,West Support Building,SUWN-5 - 30-33,L4 - SUP Roof - FAB Roof,DS/AD INTERIORS,CONSTRUCTION,ROLLING PLAINS,TBD Architectural Finishes,FIZ DATA CENTER,INTERIORS,2024-05-13 16:05,2024-05-21 16:05,2024-05-13 16:05,2024-05-20 16:05,2025-11-20 17:00,2025-11-20 17:00,2025-12-05 17:00,2025-12-05 17:00,0,50,100
CN.SWB4.6720,CURE - AD STEEL PAINT FIREPROOFING IFRM - SWB-4 - GL 27-30 - K-L - L2-CEILING,Complete,SWB - 4,,SUWN-4 - 27-30,DS/AD,,CONSTRUCTION,ROLLING PLAINS,TBD Architectural Finishes,,,2024-07-25 07:00,2024-08-12 17:00,2024-07-25 07:00,2024-08-10 17:00,2025-11-20 17:00,2025-11-20 17:00,2025-12-05 17:00,2025-12-05 17:00,0,180,100
CN.SWB4.6740,FRP SOMD AT STAIR 50 - L3 GL 27-30 K LINE (HELD BY EMBED FIX FROM TINDALL UNTIL 6/24),Complete,SWB - 4,West Support Building,SUWN-4 - 27-30,L3 / Waffle Slab Level,DS/AD INTERIORS,CONSTRUCTION,BERG,DRYWALL,FIZ DATA CENTER,INTERIORS,2024-05-16 07:00,2024-05-21 17:00,2024-06-25 07:00,2024-07-02 17:00,2025-11-20 17:00,2025-11-20 17:00,2025-12-04 07:00,2025-12-04 07:00,0,40,100
CN.SWB4.6750,IMPACT - REMEDY - UNISTRUT IN THE WAY -SWB2 L2 GL 30 K LINE,Complete,SWB - 4,West Support Building,SUWN-4 - 27-30,L2 - SubFab Level,DS/AD INTERIORS,CONSTRUCTION,BERG,DRYWALL,FIZ DATA CENTER,INTERIORS,2024-07-01 07:00,2024-07-08 17:00,2024-07-01 07:00,2024-08-23 17:00,2025-11-20 17:00,2025-11-20 17:00,2025-12-05 07:00,2025-12-05 07:00,0,40,100
CN.AB.AR.7090,INSTALL GOAL POSTS - SWB-4-L3 - BATTERY RM - GL 27-30 K-N,Active,SWB - 4,West Support Building,SUWN-4 - 27-30,L3 / Waffle Slab Level,BATT RM 3,CONSTRUCTION,BERG,DRYWALL,AMBER CARO,INTERIORS,2024-08-16 07:00,2024-08-27 17:00,2024-07-29 07:00,,2025-11-25 07:00,2025-12-02 17:00,2025-11-21 07:00,2025-11-26 17:00,40,70,0
CN.SWB4R.4630,INSTALL GOAL POSTS - SWB-1- WASTE SOLVENT RM - GL 27-30 K-N,Active,SWB - 4,West Support Building,SUWN-4 - 27-30,L1 - Fndn Slab,WASTE LIQUOR RM,CONSTRUCTION,CHERRY COATING,DRYWALL,AMBER CARO,INTERIORS,2024-09-12 07:00,2024-10-08 17:00,2024-09-12 07:00,,2025-11-21 07:00,2025-11-21 07:00,2025-12-04 17:00,2025-12-04 17:00,0,160,0
CN.SWB4.6760,INSTALL GOAL POSTS - SWB-4-L2 - BATTERY RM - GL 27 M-N,Complete,SWB - 4,West Support Building,SUWN-4 - 27-30,L2 - SubFab Level,BATT RM 3,CONSTRUCTION,CHERRY COATING,DRYWALL,AMBER CARO,INTERIORS,2024-10-25 07:00,2024-10-31 17:00,2024-10-02 07:00,2024-10-05 17:00,2025-11-20 17:00,2025-11-20 17:00,2025-11-24 07:00,2025-11-24 07:00,0,40,100
CN.SWB4.6770,DS ROOF PARAPET DRY IN - SWB4 - GL 27-30 - K-L - L6,Complete,SWB - 4,West Support Building,SUWN-4 - 27-30,DS/AD,,CONSTRUCTION,BRAZOS,Waterproofing - Preferred,JAMES LIVELY,,2024-09-16 07:00,2024-10-04 17:00,2024-08-26 07:00,2024-09-12 17:00,2025-11-20 17:00,2025-11-20 17:00,2025-11-25 07:00,2025-11-25 07:00,0,120,100
CN.AB.AR.7390,IMPACT - RFI 1466 - SWB-4-L3 - BATTERY RM - GL 27-30 K-N,Complete,SWB - 4,West Support Building,SUWN-4 - 27-30,L3 / Waffle Slab Level,BATT RM 3,CONSTRUCTION,BERG,DRYWALL,AMBER CARO,INTERIORS,2024-08-12 07:00,2024-08-22 17:00,2024-08-10 07:00,2024-08-26 17:00,2025-11-20 17:00,2025-11-20 17:00,2025-12-01 07:00,2025-12-01 07:00,0,70,100
CN.AB.AR.7410,IMPACT - SECAI REQUEST TO REMOVE HEADER - SWB-4-L3 - BATTERY RM - GL 27-30 K-N,Active,SWB - 4,West Support Building,SUWN-4 - 27-30,L3 / Waffle Slab Level,BATT RM 3,CONSTRUCTION,BERG,DRYWALL,AMBER CARO,INTERIORS,2024-08-16 07:00,2024-08-27 17:00,2024-08-03 07:00,,2025-11-21 07:00,2025-11-24 17:00,2025-11-19 07:00,2025-11-20 17:00,20,70,0
CN.SWB4.6780,IMPACT - MEP EQPT & MATERIAL STILL IN THE WAY - GL 27-29 - L4 - L-N - ROOF,Complete,SWB - 4,West Support Building,SUWN-4 - 27-30,L4 - SUP Roof - FAB Roof,,CONSTRUCTION,BRAZOS,TOPPING,FIZ DATA CENTER,SOMD / Roofing / Waterproofing,2024-09-03 07:00,2024-09-05 17:00,2024-08-29 07:00,2024-09-03 17:00,2025-11-20 17:00,2025-11-20 17:00,2025-12-05 17:00,2025-12-05 17:00,0,30,100
CN.AB.AR.7760,IMPACT - Threaded rods-unistruts-cable trays need to be removed to install 2nd layer-fire caulk-T&B.-Level 3 - K-M/18-19,Active,SWB - 4,West Support Building,SUWN-1 - 18-21,L3 / Waffle Slab Level,ELECTRIC RM 1,CONSTRUCTION,BERG,DRYWALL,AMBER CARO,INTERIORS,2024-08-16 07:00,2024-08-30 17:00,2024-08-27 07:00,,2025-11-21 07:00,2025-11-21 17:00,2025-11-12 07:00,2025-11-12 17:00,10,100,0
CN.SWB4.6790,IMPACT - PRECAST EMBED PLATE WAITING SECAI - CCD #488 - GL 31 - 32.5 - N LINE [SUP EXTERIOR WALL],Complete,SWB - 4,,SUWN-5 - 30-33,EXTERIOR SKIN,,CONSTRUCTION,PATRIOT,INSULATED METAL PANELS,,,2024-10-14 07:00,2024-10-28 17:00,2024-09-28 07:00,2024-10-25 17:00,2025-11-20 17:00,2025-11-20 17:00,2025-12-05 17:00,2025-12-05 17:00,0,90,100
CN.SWB4.6800,IMPACT - # CCD 488 PROCURE & INSTALL CLADDING STEEL GL 31 - 32.5- N LINE [SUP EXTERIOR WALL & PH],Complete,SWB - 4,,SUWN-5 - 30-33,EXTERIOR SKIN,,CONSTRUCTION,PATRIOT,INSULATED METAL PANELS,,,2024-10-28 07:00,2024-11-21 17:00,2024-10-26 07:00,2024-11-14 17:00,2025-11-20 17:00,2025-11-20 17:00,2025-12-05 17:00,2025-12-05 17:00,0,150,100
CN.SWB4R.4640,IMPACT - DAMAGED DOORS & PRECAST CONNECTION ISSUES - SWB-1- WASTE SOLVENT RM - GL 27-30 K-N,Complete,SWB - 4,West Support Building,SUWN-4 - 27-30,L1 - Fndn Slab,WASTE LIQUOR RM,CONSTRUCTION,CHERRY COATING,DRYWALL,AMBER CARO,INTERIORS,2024-09-12 07:00,2024-10-08 17:00,2024-09-12 07:00,2025-06-27 17:00,2025-11-20 17:00,2025-11-20 17:00,2025-12-04 17:00,2025-12-04 17:00,0,160,100
CN.SWB5.1000,PH1- SUP - EXCAVATE PIER CAPS - SWB5,Complete,SWB - 5,West Support Building,SUWN-5 - 30-33,L1 - Fndn Slab,,CONSTRUCTION,,Excavate CIP,ANDREA SOLIS,,2022-10-24 13:00,2022-10-27 17:00,2022-10-24 13:00,2022-10-27 17:00,2025-11-20 17:00,2025-11-20 17:00,2025-06-13 08:00,2025-06-13 08:00,0,24,100
CN.SWB5.1010,PH1-FRP PIER CAPS - SWB5,Complete,SWB - 5,West Support Building,SUWN-5 - 30-33,L1 - Fndn Slab,,CONSTRUCTION,,Pour Concrete,ANDREA SOLIS,,2022-10-29 14:00,2022-11-01 08:00,2022-10-29 14:00,2022-11-03 09:00,2025-11-20 17:00,2025-11-20 17:00,2025-06-13 08:00,2025-06-13 08:00,0,24,100
CN.SWB5.1020,PH1-BLACK BASE (NOW RAT SLAB) - SWB5,Complete,SWB - 5,West Support Building,SUWN-5 - 30-33,L1 - Fndn Slab,,CONSTRUCTION,,RAT SLAB,ANDREA SOLIS,,2022-11-03 07:00,2022-11-05 11:00,2022-11-02 09:00,2022-11-04 13:00,2025-11-20 17:00,2025-11-20 17:00,2025-06-13 08:00,2025-06-13 08:00,0,24,100
CN.SWB5.1030,PH1-CURE PIER CAPS - SWB5,Complete,SWB - 5,West Support Building,SUWN-5 - 30-33,L1 - Fndn Slab,,CONSTRUCTION,,Concrete Cure,ANDREA SOLIS,,2022-11-03 07:00,2022-11-03 07:00,2022-11-02 09:00,2022-11-02 09:00,2025-11-20 17:00,2025-11-20 17:00,2025-06-13 08:00,2025-06-13 08:00,0,0,100
CN.SWB5.1060,PH1- FRP SLAB - SWB-5-L2,Complete,SWB - 5,West Support Building,SUWN-5 - 30-33,L2 - SubFab Level,,CONSTRUCTION,,SOMD,CONCRETE,,2023-10-16 07:00,2023-10-17 13:00,2023-10-16 07:00,2023-10-17 13:00,2025-11-20 17:00,2025-11-20 17:00,2025-10-16 07:00,2025-10-16 07:00,0,16,100
CN.SWB5.1090,PH1- FRP SLAB - SWB-5-L3,Complete,SWB - 5,West Support Building,SUWN-5 - 30-33,L3 / Waffle Slab Level,,CONSTRUCTION,,SOMD,CONCRETE,,2023-09-11 09:00,2023-09-14 13:00,2023-09-11 09:00,2023-09-13 17:00,2025-11-20 17:00,2025-11-20 17:00,2025-10-16 07:00,2025-10-16 07:00,0,24,100
CN.SWB5.1120,PH1- FRP SLAB - SWB-5-ROOF,Complete,SWB - 5,West Support Building,SUWN-5 - 30-33,L4 - SUP Roof - FAB Roof,,CONSTRUCTION,,SOMD,CONCRETE,SOMD / Roofing / Waterproofing,2023-10-16 07:00,2023-10-18 12:00,2023-10-16 07:00,2023-10-21 11:00,2025-11-20 17:00,2025-11-20 17:00,2025-11-21 07:00,2025-11-21 07:00,0,24,100
CN.SWB5.1080,PH1- CURE SOMD - SWB-5-L2,Complete,SWB - 5,West Support Building,SUWN-5 - 30-33,L2 - SubFab Level,,CONSTRUCTION,,Concrete Cure,JAMES LEE,,2023-10-19 07:00,2023-10-25 13:30,2023-10-18 20:44,2023-10-21 04:44,2025-11-20 17:00,2025-11-20 17:00,2025-11-10 07:00,2025-11-10 07:00,0,56,100
CN.SWB5.1110,PH1- CURE SOMD - SWB-5-L3,Complete,SWB - 5,West Support Building,SUWN-5 - 30-33,L3 / Waffle Slab Level,,CONSTRUCTION,,Concrete Cure,JAMES LEE,,2023-09-15 07:00,2023-09-21 13:00,2023-09-14 20:44,2023-09-17 04:44,2025-11-20 17:00,2025-11-20 17:00,2025-10-16 07:00,2025-10-16 07:00,0,56,100
CN.SWB5.1140,PH1- CURE SOMD - SWB-5-ROOF,Complete,SWB - 5,West Support Building,SUWN-5 - 30-33,L4 - SUP Roof - FAB Roof,,CONSTRUCTION,,Concrete Cure,JAMES LEE,SOMD / Roofing / Waterproofing,2023-10-21 08:00,2023-10-24 12:00,2023-10-21 08:00,2023-10-24 15:00,2025-11-20 17:00,2025-11-20 17:00,2025-11-21 07:00,2025-11-21 07:00,0,24,100
CN.SWB5.1100,PH1- 1st FLOOR SLAB - SWB-5-L1,Complete,SWB - 5,West Support Building,SUWN-5 - 30-33,L1 - Fndn Slab,,CONSTRUCTION,,Pour Concrete,JAMES LEE,,2023-02-20 07:00,2023-02-24 17:00,2023-02-10 07:00,2023-02-15 07:00,2025-11-20 17:00,2025-11-20 17:00,2025-06-13 08:00,2025-06-13 08:00,0,40,100
CN.SWB5.1230,MEP EQPT PADS (LAYOUT & INSTALL DOWELS)- SWB-5-ROOF,Complete,SWB - 5,West Support Building,SUWN-5 - 30-33,L4 - SUP Roof - FAB Roof,,CONSTRUCTION,BAKER,TOPPING,JAMES LEE,SOMD / Roofing / Waterproofing,2024-07-29 07:00,2024-07-30 17:00,2024-07-27 07:00,2024-08-03 17:00,2025-11-20 17:00,2025-11-20 17:00,2025-12-05 17:00,2025-12-05 17:00,0,20,100
CN.SWB5.1070,PH1-BACKFILL PIT WALLS - SWB5,Complete,SWB - 5,West Support Building,SUWN-5 - 30-33,L1 - Fndn Slab,,CONSTRUCTION,,BACKFILL,JAMES LEE,,2023-01-31 07:00,2023-02-08 17:00,2023-01-19 15:00,2023-02-09 08:00,2025-11-20 17:00,2025-11-20 17:00,2025-12-05 17:00,2025-12-05 17:00,0,80,100
CN.SWB5.1050,TIER 1 ERECT PRECAST COLUMNS & BEAMS - SWB5,Complete,SWB - 5,West Support Building,SUWN-5 - 30-33,L4 - SUP Roof - FAB Roof,,CONSTRUCTION,,"SUP WEST N,M",SEAN MONK,,2023-07-10 09:00,2023-07-15 15:00,2023-07-10 09:00,2023-08-04 17:00,2025-11-20 17:00,2025-11-20 17:00,2025-06-13 08:00,2025-06-13 08:00,0,56,100
CN.SWB5.1150,PH1-ROOF LAYER PARAPET - SWB5,Complete,SWB - 5,West Support Building,SUWN-5 - 30-33,L4 - SUP Roof - FAB Roof,,CONSTRUCTION,,TOPPING,JAMES LIVELY,SOMD / Roofing / Waterproofing,2024-02-26 07:00,2024-02-27 13:00,2024-02-26 07:00,2024-02-27 13:00,2025-11-20 17:00,2025-11-20 17:00,2025-12-05 17:00,2025-12-05 17:00,0,16,100
CN.SWB5.1170,PH1-FLUID APPLIED MEMBRANE ROOFING - SWB5,Complete,SWB - 5,West Support Building,SUWN-5 - 30-33,L4 - SUP Roof - FAB Roof,,CONSTRUCTION,,TOPPING,JAMES LIVELY,SOMD / Roofing / Waterproofing,2024-02-26 07:00,2024-03-01 09:00,2024-02-05 07:00,2024-02-07 09:00,2025-11-20 17:00,2025-11-20 17:00,2025-12-05 17:00,2025-12-05 17:00,0,32,100
CN.SWB5.1180,PH1 - CLADDING STEEL INTERIOR GL 30-33 - K LINE (AD AREA),Complete,SWB - 5,West Support Building,SUWN-5 - 30-33,EXTERIOR SKIN,,CONSTRUCTION,,INSULATED METAL PANELS,JAMES LIVELY,,2024-04-04 08:30,2024-04-16 10:30,2024-04-04 07:00,2024-04-06 00:00,2025-11-20 17:00,2025-11-20 17:00,2025-11-21 07:00,2025-11-21 07:00,0,62,100
CN.SWB5.1160,PH1 - CLADDING STEEL  - SWB-5  N LINE [SUP EXTERIOR WALL],Complete,SWB - 5,West Support Building,SUWN-5 - 30-33,EXTERIOR SKIN,,CONSTRUCTION,,INSULATED METAL PANELS,JAMES LIVELY,,2023-11-18 08:00,2023-11-27 14:00,2023-11-16 08:00,2023-12-07 17:00,2025-11-20 17:00,2025-11-20 17:00,2025-08-26 07:00,2025-08-26 07:00,0,56,100
CN.SWB5.1190,INSTALL INSULATED METAL PANEL MODULES - GL 31-33 - N LINE WEST WALL - PENTHOUSE],Complete,SWB - 5,West Support Building,SUWN-5 - 30-33,EXTERIOR SKIN,,CONSTRUCTION,KOVACH,INSULATED METAL PANELS,JAMES LIVELY,,2025-01-16 07:00,2025-01-22 17:00,2025-01-16 07:00,2025-01-22 17:00,2025-11-20 17:00,2025-11-20 17:00,2025-12-05 17:00,2025-12-05 17:00,0,50,100
CN.SWB5.1130,PH1- AD STEEL FRAME INSTALL - SWB-5 fab side,Complete,SWB - 5,West Support Building,SUWN-5 - 30-33,DS/AD,,CONSTRUCTION,,Steel Erection,SEAN MONK,,2023-10-15 15:00,2023-10-18 18:00,2023-10-15 15:00,2023-10-20 09:00,2025-11-20 17:00,2025-11-20 17:00,2025-06-13 08:00,2025-06-13 08:00,0,32,100
CN.AB.AR.1090,METAL STUD FRAMING (2hr) - SWB-5 - L3 GL 30-33 K-N,Complete,SWB - 5,West Support Building,SUWN-5 - 30-33,L3 / Waffle Slab Level,CRT LAB,CONSTRUCTION,BERG,TBD Architectural Finishes,AMBER CARO,INTERIORS,2024-02-12 07:00,2024-02-15 17:00,2024-02-12 07:00,2024-02-15 17:00,2025-11-20 17:00,2025-11-20 17:00,2025-11-24 17:00,2025-11-24 17:00,0,40,100
CN.AB.AR.3450,MEP ROUGH IN & INSPECTION (by SECAI) - SWB-5 - L3 GL 30-33 K-N,Complete,SWB - 5,West Support Building,SUWN-5 - 30-33,L3 / Waffle Slab Level,CRT LAB,CONSTRUCTION,,Owner & Design Team,AMBER CARO,,2024-02-16 07:00,2024-02-21 17:00,2024-02-16 07:00,2024-02-20 11:00,2025-11-20 17:00,2025-11-20 17:00,2025-11-24 17:00,2025-11-24 17:00,0,40,100
CN.AB.AR.3460,TAPE & FINISH DRYWALL - SWB-5 - L3 GL 30-33 K-N,Complete,SWB - 5,West Support Building,SUWN-5 - 30-33,L3 / Waffle Slab Level,CRT LAB,CONSTRUCTION,CHERRY COATING,DRYWALL,AMBER CARO,INTERIORS,2025-08-05 07:00,2025-08-05 17:00,2025-08-05 07:00,2025-08-05 17:00,2025-11-20 17:00,2025-11-20 17:00,2025-12-01 07:00,2025-12-01 07:00,0,10,100
CN.AB.AR.3470,FINISH PAINT - SWB-5 - L3 GL 30-33 K-N,Not Started,SWB - 5,West Support Building,SUWN-5 - 30-33,L3 / Waffle Slab Level,CRT LAB,CONSTRUCTION,FINISH PAINT,TBD Architectural Finishes,JAMES LEE,INTERIORS,2025-11-25 07:00,2025-12-03 17:00,,,2025-11-25 07:00,2025-12-03 17:00,2025-12-01 07:00,2025-12-05 17:00,50,50,0
CN.SWB5.1250,DS STEEL SPRAY FIREPROOFING SFRM - SWB-5 - L4&L5 CEILING GL 30-33/J-L,Complete,SWB - 5,West Support Building,SUWN-5 - 30-33,L4 - SUP Roof - FAB Roof,DS/AD INTERIORS,CONSTRUCTION,ROLLING PLAINS,Fireproofing,HOON WOO,,2024-09-09 07:00,2024-09-20 17:00,2024-08-23 07:00,2024-08-28 17:00,2025-11-20 17:00,2025-11-20 17:00,2025-12-05 17:00,2025-12-05 17:00,0,80,100
CN.SWB5.1270,PH1- DECKING GL 30 - 31 - SWB-5-ROOF,Complete,SWB - 5,West Support Building,SUWN-5 - 30-33,L4 - SUP Roof - FAB Roof,,CONSTRUCTION,,Decking & Detail,SEAN MONK,SOMD / Roofing / Waterproofing,2023-10-02 07:00,2023-10-03 13:00,2023-09-14 09:00,2023-09-17 09:00,2025-11-20 17:00,2025-11-20 17:00,2025-06-13 08:00,2025-06-13 08:00,0,16,100
CN.SWB5.1280,PH1- DECKING GL 30 - 31 - SWB-5-L3,Complete,SWB - 5,West Support Building,SUWN-5 - 30-33,L3 / Waffle Slab Level,,CONSTRUCTION,,Decking & Detail,SEAN MONK,,2023-09-05 07:00,2023-09-08 09:00,2023-09-05 07:00,2023-09-08 09:00,2025-11-20 17:00,2025-11-20 17:00,2025-06-13 08:00,2025-06-13 08:00,0,32,100
CN.SWB5.1290,PH1- DECKING GL 30 - 31- SWB-5-L2,Complete,SWB - 5,West Support Building,SUWN-5 - 30-33,L2 - SubFab Level,,CONSTRUCTION,,Decking & Detail,SEAN MONK,,2023-09-05 07:00,2023-09-06 13:00,2023-09-05 07:00,2023-09-06 13:00,2025-11-20 17:00,2025-11-20 17:00,2025-10-16 07:00,2025-10-16 07:00,0,16,100
CN.SEA3.1430,PH1-CIP WALL (DS)- SWB-5,Complete,SWB - 5,West Support Building,SUWN-5 - 30-33,L4 - SUP Roof - FAB Roof,,CONSTRUCTION,,TOPPING,CONCRETE,SOMD / Roofing / Waterproofing,2024-02-01 09:00,2024-02-03 13:00,2024-02-01 09:00,2024-02-03 14:00,2025-11-20 17:00,2025-11-20 17:00,2025-11-21 07:00,2025-11-21 07:00,0,24,100
CN.SWB5.1320,PH1- SET ANCHOR BOLTS & ANGLES - SWB-5-L1,Complete,SWB - 5,West Support Building,SUWN-5 - 30-33,L1 - Fndn Slab,,CONSTRUCTION,,Waterproofing - Preferred,JAMES LIVELY,SOMD / Roofing / Waterproofing,2023-10-16 07:00,2023-10-18 12:00,2023-09-08 07:30,2023-09-11 17:00,2025-11-20 17:00,2025-11-20 17:00,2025-08-26 07:00,2025-08-26 07:00,0,24,100
CN.SWB5.1350,PH1- TOPPING SLAB w TRENCH & ANGLE EMBEDS- SWB-5-L1,Complete,SWB - 5,West Support Building,SUWN-5 - 30-33,L1 - Fndn Slab,,CONSTRUCTION,,TOPPING,CONCRETE,SOMD / Roofing / Waterproofing,2023-11-09 11:00,2023-11-11 15:00,2023-10-05 11:00,2023-10-07 16:00,2025-11-20 17:00,2025-11-20 17:00,2025-10-16 07:00,2025-10-16 07:00,0,24,100
CN.SWB5.1360,PH1- DS/AD DETAILING GL 30 - 33- DS/AD SWB-5- L4 & L4/E,Complete,SWB - 5,West Support Building,SUWN-5 - 30-33,DS/AD,,CONSTRUCTION,,Decking & Detail,SEAN MONK,,2024-01-02 09:00,2024-01-20 12:00,2024-01-09 07:00,2024-01-12 17:00,2025-11-20 17:00,2025-11-20 17:00,2025-06-13 08:00,2025-06-13 08:00,0,132,100
CN.SWB5.1370,PH1- DS/AD FRP SLAB - DS/AD SWB-5 -  L4/E,Complete,SWB - 5,West Support Building,SUWN-5 - 30-33,DS/AD,,CONSTRUCTION,,SOMD,CONCRETE,,2024-01-18 07:00,2024-01-23 10:00,2024-01-13 07:00,2024-01-14 16:00,2025-11-20 17:00,2025-11-20 17:00,2025-06-13 08:00,2025-06-13 08:00,0,53,100
CN.SWB5.1380,AD WATERPROOFING - SWB5 - GL 30-33 - J-K - L4/E [LEAVEOUT 32.5~33 - PENDING DESIGN],Complete,SWB - 5,West Support Building,SUWN-5 - 30-33,DS/AD,,CONSTRUCTION,BRAZOS,Waterproofing - Preferred,JAMES LIVELY,,2024-06-21 07:00,2024-07-11 17:00,2024-06-07 07:00,2024-06-20 17:00,2025-11-20 17:00,2025-11-20 17:00,2025-11-25 07:00,2025-11-25 07:00,0,110,100
CN.SWB5.1390,AD TOPPING SLAB - SWB5 - GL 30-33 - J-K - L4/E [LEAVEOUT 32.5~33 - PENDING DESIGN],Complete,SWB - 5,West Support Building,SUWN-5 - 30-33,DS/AD,,CONSTRUCTION,BAKER,SOMD,CONCRETE,,2024-07-12 07:00,2024-07-17 17:00,2024-06-20 07:00,2024-06-25 17:00,2025-11-20 17:00,2025-11-20 17:00,2025-12-05 17:00,2025-12-05 17:00,0,40,100
TIER 25.105WN,TIER 2 GROUT PRECAST COLUMNS & BEAMS - SWB5,Complete,SWB - 5,West Support Building,SUWN-5 - 30-33,L4 - SUP Roof - FAB Roof,,CONSTRUCTION,,"SUP WEST N,M",SEAN MONK,,2023-08-21 07:00,2023-08-25 09:00,2023-08-15 07:00,2023-08-18 17:00,2025-11-20 17:00,2025-11-20 17:00,2025-06-13 08:00,2025-06-13 08:00,0,32,100
CN.SWB5.1400,PH1- DECKING GL 31 - 32 - SWB-5-L2,Complete,SWB - 5,West Support Building,SUWN-5 - 30-33,L2 - SubFab Level,,CONSTRUCTION,,Decking & Detail,SEAN MONK,,2023-09-06 13:00,2023-09-08 09:00,2023-09-06 13:00,2023-09-08 09:00,2025-11-20 17:00,2025-11-20 17:00,2025-10-16 07:00,2025-10-16 07:00,0,16,100
CN.SWB5.1410,PH1- DECKING GL 32 - 33 - SWB-5-L2,Complete,SWB - 5,West Support Building,SUWN-5 - 30-33,L2 - SubFab Level,,CONSTRUCTION,,Decking & Detail,SEAN MONK,,2023-09-08 09:00,2023-09-09 15:00,2023-09-08 09:00,2023-09-09 16:00,2025-11-20 17:00,2025-11-20 17:00,2025-10-16 07:00,2025-10-16 07:00,0,16,100
CN.SWB5.1420,PH1- DECKING GL 31 - 32 - SWB-5-L3,Complete,SWB - 5,West Support Building,SUWN-5 - 30-33,L3 / Waffle Slab Level,,CONSTRUCTION,,Decking & Detail,SEAN MONK,,2023-09-05 07:00,2023-09-08 09:00,2023-09-05 07:00,2023-09-08 09:00,2025-11-20 17:00,2025-11-20 17:00,2025-06-13 08:00,2025-06-13 08:00,0,32,100
CN.SWB5.1430,PH1- DECKING GL 32 - 33 - SWB-5-L3,Complete,SWB - 5,West Support Building,SUWN-5 - 30-33,L3 / Waffle Slab Level,,CONSTRUCTION,,Decking & Detail,SEAN MONK,,2023-09-05 07:00,2023-09-08 09:00,2023-09-05 07:00,2023-09-08 09:00,2025-11-20 17:00,2025-11-20 17:00,2025-10-16 07:00,2025-10-16 07:00,0,32,100
CN.SWB5.1440,PH1- DECKING GL 31 - 32 - SWB-5-ROOF,Complete,SWB - 5,West Support Building,SUWN-5 - 30-33,L4 - SUP Roof - FAB Roof,,CONSTRUCTION,,Decking & Detail,SEAN MONK,SOMD / Roofing / Waterproofing,2023-10-03 13:00,2023-10-05 09:00,2023-09-19 09:00,2023-09-21 17:00,2025-11-20 17:00,2025-11-20 17:00,2025-11-21 07:00,2025-11-21 07:00,0,16,100
CN.SWB5.1450,PH1- DECKING GL 32 - 33 - SWB-5-ROOF,Complete,SWB - 5,West Support Building,SUWN-5 - 30-33,L4 - SUP Roof - FAB Roof,,CONSTRUCTION,,Decking & Detail,SEAN MONK,SOMD / Roofing / Waterproofing,2023-10-06 09:00,2023-10-07 15:00,2023-09-22 16:00,2023-09-24 16:00,2025-11-20 17:00,2025-11-20 17:00,2025-11-21 07:00,2025-11-21 07:00,0,16,100
CN.AB.AR.4620,DRYWALL 2 SIDE - SWB-5 - L3- CRT LAB GL 30-33 K-N,Complete,SWB - 5,West Support Building,SUWN-5 - 30-33,L3 / Waffle Slab Level,CRT LAB,CONSTRUCTION,BERG,DRYWALL,AMBER CARO,INTERIORS,2024-02-26 07:00,2024-02-27 13:00,2024-02-24 14:00,2024-05-29 17:00,2025-11-20 17:00,2025-11-20 17:00,2025-12-01 07:00,2025-12-01 07:00,0,16,100
CN.AB.AR.4630,DRYWALL & INSULATION (1 side) (INT) - SWB-5 - L3 GL 30-33 K-N,Complete,SWB - 5,West Support Building,SUWN-5 - 30-33,L3 / Waffle Slab Level,CRT LAB,CONSTRUCTION,,DRYWALL,AMBER CARO,INTERIORS,2024-02-20 11:00,2024-02-26 11:00,2024-02-20 11:00,2024-04-05 17:00,2025-11-20 17:00,2025-11-20 17:00,2025-11-24 17:00,2025-11-24 17:00,0,40,100
CN.SWB5.1490,PH1- ERECT STEEL - NW PENTHOUSE,Complete,SWB - 5,West Support Building,NORTH WEST PENTHOUSE,L4 - SUP Roof - FAB Roof,,CONSTRUCTION,,Steel Erection,SEAN MONK,,2023-12-19 15:00,2024-01-04 16:00,2023-12-05 15:00,2024-02-16 15:00,2025-11-20 17:00,2025-11-20 17:00,2025-11-17 07:00,2025-11-17 07:00,0,76,100
CN.SWB5.1790,PH1 - INSTALL CLADDING STEEL & DETAILING - NW PENTHOUSE,Complete,SWB - 5,East Support Building,NORTH WEST PENTHOUSE,EXTERIOR SKIN,,CONSTRUCTION,PATRIOT,INSULATED METAL PANELS,SEAN MONK,,2024-05-31 07:00,2024-06-24 17:00,2024-04-22 07:00,2024-05-17 17:00,2025-11-20 17:00,2025-11-20 17:00,2025-11-17 07:00,2025-11-17 07:00,0,140,100
CN.SWB5.1800,PH1- INSTALL EXTERIOR DOOR / LOUVERS FRAMES - NW PENTHOUSE,Not Started,SWB - 5,East Support Building,NORTH WEST PENTHOUSE,L4 - SUP Roof - FAB Roof,,CONSTRUCTION,DOORS AND HARDWARE,TBD Architectural Finishes,SEAN MONK,,2025-12-04 07:00,2025-12-08 17:00,,,2025-12-04 07:00,2025-12-08 17:00,2025-11-26 07:00,2025-12-02 17:00,30,30,0
CN.SWB5.1810,PH1- - NW PENTHOUSE BERG FRAMING & SHEATHING - SOUTH WALL & BREEZE WAY,Complete,SWB - 5,East Support Building,NORTH WEST PENTHOUSE,EXTERIOR SKIN,,CONSTRUCTION,KOVACH,INSULATED METAL PANELS,SEAN MONK,,2024-09-30 07:00,2024-10-04 17:00,2024-09-24 07:00,2025-10-06 17:00,2025-11-20 17:00,2025-11-20 17:00,2025-11-17 07:00,2025-11-17 07:00,0,40,100
CN.SWB5.1820,PH1- INSTALL EXTERIOR DOORS / LOUVERS - NW PENTHOUSE,Not Started,SWB - 5,East Support Building,NORTH WEST PENTHOUSE,L4 - SUP Roof - FAB Roof,,CONSTRUCTION,DOORS AND HARDWARE,TBD Architectural Finishes,SEAN MONK,,2025-12-09 07:00,2025-12-11 17:00,,,2025-12-09 07:00,2025-12-11 17:00,2025-12-03 07:00,2025-12-05 17:00,30,30,0
CN.SWB5.1830,PH1- INSTALL EXTERIOR STEEL ACCESS STAIRS / RAMPS - NW PENTHOUSE - STAIR R3/R18/66,Not Started,SWB - 5,East Support Building,NORTH WEST PENTHOUSE,L4 - SUP Roof - FAB Roof,,CONSTRUCTION,PATRIOT,TBD Architectural Finishes,SEAN MONK,,2025-12-01 07:00,2025-12-03 17:00,,,2025-12-01 07:00,2025-12-03 17:00,2025-11-21 07:00,2025-11-25 17:00,30,30,0
CN.SWB5.1840,PH1- INSTALL INTERIOR METAL STUD FRAMING (2hr) FIRE ALARM ROOM & IT/SECURITY ROOM 5 - NW PENTHOUSE,Complete,SWB - 5,East Support Building,NORTH WEST PENTHOUSE,L4 - SUP Roof - FAB Roof,,CONSTRUCTION,BERG,TBD Architectural Finishes,SEAN MONK,,2025-02-24 07:00,2025-02-28 17:00,2025-02-03 07:00,2025-05-30 17:00,2025-11-20 17:00,2025-11-20 17:00,2025-11-18 07:00,2025-11-18 07:00,0,50,100
CN.SWB5.1850,PH1- INSTALL INTERIOR DRYWALL 1ST LAYER - IT SECURITY/ FIRE ALARM ROOM - NW PENTHOUSE,Complete,SWB - 5,East Support Building,NORTH WEST PENTHOUSE,L4 - SUP Roof - FAB Roof,,CONSTRUCTION,BERG,DRYWALL,SEAN MONK,,2025-02-28 07:00,2025-03-05 17:00,2025-02-10 07:00,2025-05-30 17:00,2025-11-20 17:00,2025-11-20 17:00,2025-11-18 07:00,2025-11-18 07:00,0,40,100
CN.SWB5.1860,PH1- INSTALL DECKING & STUDS - NW PENTHOUSE ROOF,Complete,SWB - 5,East Support Building,NORTH WEST PENTHOUSE,L5 - SUP L5,,CONSTRUCTION,,Decking & Detail,SEAN MONK,,2024-02-16 15:00,2024-02-22 13:00,2024-02-16 15:00,2024-02-18 16:00,2025-11-20 17:00,2025-11-20 17:00,2025-11-17 07:00,2025-11-17 07:00,0,48,100
CN.SWB5.1870,PH1- FRP SLAB ON DECK - NW PENTHOUSE ROOF,Complete,SWB - 5,East Support Building,NORTH WEST PENTHOUSE,L5 - SUP L5,,CONSTRUCTION,,Pour Concrete,CONCRETE,,2024-02-26 07:00,2024-02-29 11:00,2024-02-26 07:00,2024-02-29 11:00,2025-11-20 17:00,2025-11-20 17:00,2025-11-17 07:00,2025-11-17 07:00,0,24,100
CN.SWB5.2060,PH1- INSTALL DECKING - NW PENTHOUSE,Complete,SWB - 5,East Support Building,NORTH WEST PENTHOUSE,L4 - SUP Roof - FAB Roof,,CONSTRUCTION,,Decking & Detail,SEAN MONK,,2024-02-16 15:00,2024-02-18 11:00,2024-02-16 15:00,2024-02-19 14:00,2025-11-20 17:00,2025-11-20 17:00,2025-11-17 07:00,2025-11-17 07:00,0,16,100
CN.AB1.ST.1560,PH1- FIRE PROOFING - SFRM INFILL STEEL - SWA - 5 L3,Complete,SWB - 5,South Areas (Team A - Gridlines 3-17),SUWN-5 - 30-33,L3 / Waffle Slab Level,,CONSTRUCTION,,Fireproofing,AMBER CARO,,2024-02-29 13:00,2024-03-04 13:00,2024-02-29 13:00,2024-03-04 17:00,2025-11-20 17:00,2025-11-20 17:00,2025-12-05 17:00,2025-12-05 17:00,0,40,100
CN.SWB5.2120,PH1- FRP STRUCTURAL SLAB SOMD - NW PENTHOUSE,Complete,SWB - 5,East Support Building,NORTH WEST PENTHOUSE,L4 - SUP Roof - FAB Roof,,CONSTRUCTION,BAKER,SOMD,CONCRETE,,2024-06-04 07:00,2024-06-06 17:00,2024-05-22 07:00,2024-05-23 17:00,2025-11-20 17:00,2025-11-20 17:00,2025-11-17 07:00,2025-11-17 07:00,0,20,100
CN.SWB5.2130,PH1- DS STEEL FRAME INSTALL - SWB-5 Comeback Sup Side,Complete,SWB - 5,West Support Building,SUWN-5 - 30-33,DS/AD,,CONSTRUCTION,,Steel Erection,SEAN MONK,,2023-10-21 08:00,2023-10-25 10:30,2023-10-21 08:00,2023-10-25 15:00,2025-11-20 17:00,2025-11-20 17:00,2025-06-13 08:00,2025-06-13 08:00,0,32,100
CN.SWB5.2140,PH1- EXTERIOR CURBS - SWB-5-L1,Complete,SWB - 5,West Support Building,SUWN-5 - 30-33,L1 - Fndn Slab,,CONSTRUCTION,,Pour Concrete,JAMES LEE,SOMD / Roofing / Waterproofing,2023-10-19 11:00,2023-10-24 11:00,2023-09-13 11:00,2023-09-19 17:00,2025-11-20 17:00,2025-11-20 17:00,2025-08-26 07:00,2025-08-26 07:00,0,40,100
CN.SWB5.2150,PH1- MEP PADS/ INTERIOR CURBS - SWB-5-L1 - GCS STORAGE,Complete,SWB - 5,West Support Building,SUWN-5 - 30-33,L1 - Fndn Slab,,CONSTRUCTION,,Pour Concrete,JAMES LEE,SOMD / Roofing / Waterproofing,2023-10-24 07:00,2023-10-25 13:30,2023-10-24 07:00,2023-10-25 13:30,2025-11-20 17:00,2025-11-20 17:00,2025-10-16 07:00,2025-10-16 07:00,0,16,100
CN.SWB5.1941,METAL STUD FRAMING (2hr) w DOOR FRAMES - SWB-5 - L1 only - GCS STORAGE GL 30-33 K-N,Complete,SWB - 5,East Support Building,SUWN-5 - 30-33,L1 - Fndn Slab,,CONSTRUCTION,BERG,TBD Architectural Finishes,AMBER CARO,INTERIORS,2024-01-17 07:00,2024-01-22 13:00,2024-01-16 07:00,2024-01-22 17:00,2025-11-20 17:00,2025-11-20 17:00,2025-12-01 07:00,2025-12-01 07:00,0,56,100
CN.SWB5.3520,MEP ROUGH IN & INSPECTION (by SECAI) - SWB-5 - L1 only - GCS STORAGE GL 30-33 K-N,Complete,SWB - 5,East Support Building,SUWN-5 - 30-33,L1 - Fndn Slab,,CONSTRUCTION,,Owner & Design Team,AMBER CARO,,2024-01-25 07:00,2024-01-28 17:00,2024-01-25 07:00,2024-01-29 11:00,2025-11-20 17:00,2025-11-20 17:00,2025-12-01 07:00,2025-12-01 07:00,0,40,100
CN.SWB5.3580,INSTALL WALL PROTECTION - DUCT SHAFT - GL 30-31 - K-L - L1,Not Started,SWB - 5,East Support Building,SUWN-5 - 30-33,L1 - Fndn Slab,DS/AD INTERIORS,CONSTRUCTION,BERNCO,TBD Architectural Finishes,JAMES LEE,INTERIORS,2025-12-09 07:00,2025-12-11 17:00,,,2025-12-09 07:00,2025-12-11 17:00,2025-11-24 07:00,2025-11-26 17:00,30,30,0
CN.SWB5.3540,FINISH PAINT - SWB-5 - L1 only - GCS STORAGE GL 30-33 K-N,Not Started,SWB - 5,East Support Building,SUWN-5 - 30-33,L1 - Fndn Slab,,CONSTRUCTION,FINISH PAINT,TBD Architectural Finishes,JAMES LEE,INTERIORS,2025-11-21 07:00,2025-12-01 17:00,,,2025-11-21 07:00,2025-12-01 17:00,2025-12-01 07:00,2025-12-05 17:00,50,50,0
CN.SWB5.4250,DRYWALL & INSULATION (1 side) - SWB-5 - L1 only - GCS STORAGE GL 30-33 K-N,Complete,SWB - 5,East Support Building,SUWN-5 - 30-33,L1 - Fndn Slab,,CONSTRUCTION,,DRYWALL,AMBER CARO,INTERIORS,2024-01-30 07:00,2024-02-04 13:00,2024-01-30 07:00,2024-02-05 17:00,2025-11-20 17:00,2025-11-20 17:00,2025-12-01 07:00,2025-12-01 07:00,0,56,100
CN.SWB5.4640,FLOOR STRIPING - SWB-5 - L1 only - GCS STORAGE GL 30-33 K-N,Not Started,SWB - 5,East Support Building,SUWN-5 - 30-33,L1 - Fndn Slab,,CONSTRUCTION,FLOOR STRIPING PAINT,TBD Architectural Finishes,JAMES LEE,INTERIORS,2025-12-12 07:00,2025-12-18 17:00,,,2025-12-12 07:00,2025-12-18 17:00,2025-12-01 07:00,2025-12-05 17:00,50,50,0
CN.SWB54670,INSTALL ELEVATOR STEEL - SWB-5 - ALL LEVELS - GL 31-32 L-M - ELEVATOR-5,Complete,SWB - 5,West Support Building,SUWN-5 - 30-33,,ELEVATOR,CONSTRUCTION,W&W,Steel Erection,,INTERIORS,2024-04-22 07:00,2024-05-24 17:00,2024-04-15 07:00,2024-06-07 17:00,2025-11-20 17:00,2025-11-20 17:00,2025-10-16 07:00,2025-10-16 07:00,0,210,100
CN.SWB54671,H FRAME FOR ROLL UP DOOR - SWB-5 - L1 only - GCS STORAGE GL 30-33 K-N,Not Started,SWB - 5,East Support Building,SUWN-5 - 30-33,L1 - Fndn Slab,,CONSTRUCTION,PATRIOT,TBD Architectural Finishes,AMBER CARO,INTERIORS,2025-11-21 07:00,2025-11-24 17:00,,,2025-11-21 07:00,2025-11-24 17:00,2025-12-04 07:00,2025-12-05 17:00,20,20,0
CN.SWB51051,METAL STUD FRAMING (2hr) - SWB-5-L2 - ELECTRICAL ROOM 2,Complete,SWB - 5,West Support Building,SUWN-5 - 30-33,L2 - SubFab Level,GCS STORAGE,CONSTRUCTION,BERG,TBD Architectural Finishes,AMBER CARO,INTERIORS,2023-11-13 07:00,2023-11-17 09:00,2023-11-13 07:00,2023-11-17 09:00,2025-11-20 17:00,2025-11-20 17:00,2025-11-10 07:00,2025-11-10 07:00,0,32,100
CN.SWB53170,MEP ROUGH IN & INSPECTION (by SECAI) - SWB-1-L2 - ELECTRICAL ROOM 2,Complete,SWB - 5,West Support Building,SUWN-5 - 30-33,L2 - SubFab Level,GCS STORAGE,CONSTRUCTION,,Owner & Design Team,AMBER CARO,,2023-11-17 09:00,2023-11-20 11:00,2023-11-17 09:00,2023-11-18 15:00,2025-11-20 17:00,2025-11-20 17:00,2025-11-10 07:00,2025-11-10 07:00,0,32,100
CN.SWB53180,TAPE & FINISH DRYWALL - SWB-1-L2 - ELECTRICAL ROOM 2 GL 30-33 K-N,Not Started,SWB - 5,West Support Building,SUWN-5 - 30-33,L2 - SubFab Level,GCS STORAGE,CONSTRUCTION,CHERRY COATING,DRYWALL,AMBER CARO,INTERIORS,2025-12-02 07:00,2025-12-08 17:00,,,2025-12-02 07:00,2025-12-08 17:00,2025-11-17 07:00,2025-11-21 17:00,50,50,0
CN.SWB53230,INSTALL WALL PROTECTION - AIR LOCK 5 - GL 32-33 - K-L - L2,Not Started,SWB - 5,West Support Building,SUWN-5 - 30-33,L2 - SubFab Level,DS/AD INTERIORS,CONSTRUCTION,BERNCO,TBD Architectural Finishes,JAMES LEE,INTERIORS,2025-11-24 07:00,2025-11-26 17:00,,,2025-11-24 07:00,2025-11-26 17:00,2025-12-03 07:00,2025-12-05 17:00,30,30,0
CN.SWB53190,FINISH PAINT - SWB-1-L2 - ELECTRICAL ROOM 2 GL 30-33 K-N,Not Started,SWB - 5,West Support Building,SUWN-5 - 30-33,L2 - SubFab Level,GCS STORAGE,CONSTRUCTION,FINISH PAINT,TBD Architectural Finishes,JAMES LEE,INTERIORS,2025-12-09 07:00,2025-12-15 17:00,,,2025-12-09 07:00,2025-12-15 17:00,2025-12-01 07:00,2025-12-05 17:00,50,50,0
CN.SWB54540,DRYWALL 2 SIDE - SWB-1-L2 - ELECTRICAL ROOM 2 GL 30-33 K-N,Not Started,SWB - 5,West Support Building,SUWN-5 - 30-33,L2 - SubFab Level,GCS STORAGE,CONSTRUCTION,BERG,DRYWALL,AMBER CARO,INTERIORS,2025-11-21 07:00,2025-12-01 17:00,,,2025-11-21 07:00,2025-12-01 17:00,2025-11-10 07:00,2025-11-14 17:00,50,50,0
CN.SWB54550,DRYWALL & INSULATION (1 side) (INT) - SWB-5-L2 - ELECTRICAL ROOM 2 GL 30-33 K-N,Complete,SWB - 5,West Support Building,SUWN-5 - 30-33,L2 - SubFab Level,GCS STORAGE,CONSTRUCTION,,DRYWALL,AMBER CARO,INTERIORS,2023-11-27 07:00,2023-12-01 17:00,2023-11-27 07:00,2023-12-01 17:00,2025-11-20 17:00,2025-11-20 17:00,2025-11-10 07:00,2025-11-10 07:00,0,40,100
CN.SWB5.1220,IMPACT - DRB-01 ADDITIONAL BEAMS BETWEEN FAB AND AD GL 30 - 33,Complete,SWB - 5,,SUWN-5 - 30-33,DS/AD,,CONSTRUCTION,,Steel Erection,,,2023-11-27 07:00,2023-12-01 09:00,2023-11-20 07:00,2023-11-30 17:00,2025-11-20 17:00,2025-11-20 17:00,2025-06-13 08:00,2025-06-13 08:00,0,32,100
CN.SWB5.1212,METAL STUD FRAMING (2hr)-SWB5 L1 GL 30-33 - K LINE,Complete,SWB - 5,West Support Building,SUWN-5 - 30-33,L1 - Fndn Slab,DS/AD INTERIORS,CONSTRUCTION,BERG,TBD Architectural Finishes,FIZ DATA CENTER,INTERIORS,2023-12-07 11:00,2023-12-12 09:00,2023-12-04 08:00,2023-12-07 09:00,2025-11-20 17:00,2025-11-20 17:00,2025-12-05 17:00,2025-12-05 17:00,0,48,100
CN.SWB5.1302,TAPE & FINISH DRYWALL -SWB5  L1 GL 30-33  - K LINE,Complete,SWB - 5,West Support Building,SUWN-5 - 30-33,L1 - Fndn Slab,DS/AD INTERIORS,CONSTRUCTION,CHERRY COATING,DRYWALL,FIZ DATA CENTER,INTERIORS,2024-09-20 07:00,2024-09-27 17:00,2024-03-15 07:00,2024-03-20 17:00,2025-11-20 17:00,2025-11-20 17:00,2025-12-05 17:00,2025-12-05 17:00,0,50,100
CN.SWB5.1332,PRIMER & PAINT DRYWALL - GL 30-33 - K LINE - L1,Complete,SWB - 5,West Support Building,SUWN-5 - 30-33,L1 - Fndn Slab,DS/AD INTERIORS,CONSTRUCTION,FINISH PAINT,TBD Architectural Finishes,FIZ DATA CENTER,INTERIORS,2024-10-22 07:00,2024-10-25 17:00,2024-10-22 07:00,2024-10-25 17:00,2025-11-20 17:00,2025-11-20 17:00,2025-12-05 17:00,2025-12-05 17:00,0,30,100
CN.SWB5.1282,DRYWALL 2 SIDE-SWB5 L1 GL 30-33 - K LINE,Complete,SWB - 5,West Support Building,SUWN-5 - 30-33,L1 - Fndn Slab,DS/AD INTERIORS,CONSTRUCTION,,DRYWALL,FIZ DATA CENTER,INTERIORS,2024-03-09 08:00,2024-03-17 08:00,2024-03-01 00:00,2024-03-11 13:00,2025-11-20 17:00,2025-11-20 17:00,2025-12-05 17:00,2025-12-05 17:00,0,40,100
CN.SWB5.1262,DRYWALL & INSULATION (1 side) (INT) - SWB5 L1 GL 30-33 - K LINE,Complete,SWB - 5,West Support Building,SUWN-5 - 30-33,L1 - Fndn Slab,DS/AD INTERIORS,CONSTRUCTION,,DRYWALL,FIZ DATA CENTER,INTERIORS,2024-01-02 09:00,2024-01-07 16:00,2024-01-02 07:00,2024-01-08 09:00,2025-11-20 17:00,2025-11-20 17:00,2025-12-05 17:00,2025-12-05 17:00,0,48,100
CN.SWB5.1222,METAL STUD FRAMING (2hr)-SWB5 L2 GL 30-33 K LINE,Complete,SWB - 5,West Support Building,SUWN-5 - 30-33,L2 - SubFab Level,DS/AD INTERIORS,CONSTRUCTION,BERG,TBD Architectural Finishes,FIZ DATA CENTER,INTERIORS,2024-01-08 11:00,2024-01-17 09:00,2024-01-08 11:00,2024-01-13 10:00,2025-11-20 17:00,2025-11-20 17:00,2025-11-26 07:00,2025-11-26 07:00,0,48,100
CN.SWB5.1292,REMEDY - TAPE & FINISH DRYWALL -SWB5 L2 GL 30-33 K LINE,Not Started,SWB - 5,West Support Building,SUWN-5 - 30-33,L2 - SubFab Level,DS/AD INTERIORS,CONSTRUCTION,CHERRY COATING,DRYWALL,FIZ DATA CENTER,INTERIORS,2025-11-21 07:00,2025-11-21 17:00,,,2025-11-21 07:00,2025-11-21 17:00,2025-11-26 07:00,2025-11-26 17:00,10,10,0
CN.SWB5.1322,FINISH PAINT-SWB5 L2 GL 30-33 K LINE,Not Started,SWB - 5,West Support Building,SUWN-5 - 30-33,L2 - SubFab Level,DS/AD INTERIORS,CONSTRUCTION,FINISH PAINT,TBD Architectural Finishes,FIZ DATA CENTER,INTERIORS,2025-11-24 07:00,2025-12-02 17:00,,,2025-11-24 07:00,2025-12-02 17:00,2025-12-01 07:00,2025-12-05 17:00,50,50,0
CN.SWB5.1272,REMEDY - FRAME & DRYWALL 2 SIDE -SWB5  L2 GL 30-33 K LINE,Complete,SWB - 5,West Support Building,SUWN-5 - 30-33,L2 - SubFab Level,DS/AD INTERIORS,CONSTRUCTION,BERG,DRYWALL,FIZ DATA CENTER,INTERIORS,2024-07-22 07:00,2024-07-25 17:00,2024-07-22 07:00,2024-09-20 17:00,2025-11-20 17:00,2025-11-20 17:00,2025-11-26 07:00,2025-11-26 07:00,0,40,100
CN.SWB5.1252,REMEDY - DEMO DRYWALL - SWB5  L2 GL 28-33 K LINE [AWAITING SECAI TO RELEASE WORK],Complete,SWB - 5,West Support Building,SUWN-5 - 30-33,L2 - SubFab Level,DS/AD INTERIORS,CONSTRUCTION,BERG,DRYWALL,FIZ DATA CENTER,INTERIORS,2024-05-31 07:00,2024-06-10 17:00,2024-05-10 07:00,2024-05-21 11:00,2025-11-20 17:00,2025-11-20 17:00,2025-11-26 07:00,2025-11-26 07:00,0,60,100
CN.SWB5.1312,METAL STUD FRAMING (2hr) .-SWB5 L3 GL 30-33 K LINE,Complete,SWB - 5,West Support Building,SUWN-5 - 30-33,L3 / Waffle Slab Level,DS/AD INTERIORS,CONSTRUCTION,BERG,TBD Architectural Finishes,FIZ DATA CENTER,INTERIORS,2024-04-22 07:00,2024-04-26 17:00,2024-04-22 07:00,2024-04-26 17:00,2025-11-20 17:00,2025-11-20 17:00,2025-06-13 08:00,2025-06-13 08:00,0,50,100
CN.SWB5.1372,TAPE & FINISH DRYWALL -SWB5  L3 GL 30-33 K LINE,Complete,SWB - 5,West Support Building,SUWN-5 - 30-33,L3 / Waffle Slab Level,DS/AD INTERIORS,CONSTRUCTION,CHERRY COATING,DRYWALL,FIZ DATA CENTER,INTERIORS,2024-05-28 07:00,2024-06-03 17:00,2024-05-28 07:00,2024-06-01 17:00,2025-11-20 17:00,2025-11-20 17:00,2025-06-13 08:00,2025-06-13 08:00,0,40,100
CN.SWB5.1382,D/S SGP Wall Turnover - L3 GL 30-33 K LINE,Complete,SWB - 5,West Support Building,SUWN-5 - 30-33,L3 / Waffle Slab Level,DS/AD INTERIORS,CONSTRUCTION,,TBD Architectural Finishes,FIZ DATA CENTER,INTERIORS,2024-06-03 07:00,2024-06-03 17:00,2024-06-03 07:00,2024-06-03 17:00,2025-11-20 17:00,2025-11-20 17:00,2025-06-13 08:00,2025-06-13 08:00,0,10,100
CN.SWB5.1362,DRYWALL 2 SIDE -SWB5 L3 GL 30-33 K LINE,Complete,SWB - 5,West Support Building,SUWN-5 - 30-33,L3 / Waffle Slab Level,DS/AD INTERIORS,CONSTRUCTION,BERG,DRYWALL,FIZ DATA CENTER,INTERIORS,2024-05-21 07:00,2024-05-28 17:00,2024-05-21 07:00,2024-05-27 17:00,2025-11-20 17:00,2025-11-20 17:00,2025-06-13 08:00,2025-06-13 08:00,0,40,100
CN.SWB5.1352,DRYWALL & INSULATION (1 side) (INT) - SWB5 L3 GL 30-33 K LINE,Complete,SWB - 5,West Support Building,SUWN-5 - 30-33,L3 / Waffle Slab Level,DS/AD INTERIORS,CONSTRUCTION,BERG,DRYWALL,FIZ DATA CENTER,INTERIORS,2024-04-24 07:00,2024-04-30 17:00,2024-04-24 07:00,2024-04-29 17:00,2025-11-20 17:00,2025-11-20 17:00,2025-06-13 08:00,2025-06-13 08:00,0,50,100
CN.SWB4.4630,AD STEEL PAINT FIREPROOFING IFRM - SWB-5 - GL 30-33 - K-L - L2-CEILING,Complete,SWB - 5,West Support Building,SUWN-5 - 30-33,DS/AD,,CONSTRUCTION,ROLLING PLAINS,Fireproofing,HOON WOO,,2024-07-16 07:00,2024-07-22 17:00,2024-07-16 07:00,2024-07-22 17:00,2025-11-20 17:00,2025-11-20 17:00,2025-12-05 17:00,2025-12-05 17:00,0,50,100
CN.SWB4.4610,PH1- DS/AD DECKING & DETAILING GL 30- 33 - DS/AD SWB-5 L2,Complete,SWB - 5,West Support Building,SUWN-5 - 30-33,DS/AD,,CONSTRUCTION,,Decking & Detail,SEAN MONK,,2023-10-27 07:00,2023-11-09 09:00,2023-10-27 07:00,2023-10-29 16:00,2025-11-20 17:00,2025-11-20 17:00,2025-06-13 08:00,2025-06-13 08:00,0,112,100
CN.SWB4.4620,PH1- DS/AD FRP SLAB - DS/AD SWB-5 L2,Complete,SWB - 5,West Support Building,SUWN-5 - 30-33,DS/AD,,CONSTRUCTION,,SOMD,CONCRETE,,2023-12-18 07:00,2023-12-20 11:00,2023-12-18 07:00,2023-12-20 11:00,2025-11-20 17:00,2025-11-20 17:00,2025-06-13 08:00,2025-06-13 08:00,0,24,100
CN.SWB5.6000,WATER PROOF PEDASTALS - SWB-5-ROOF,Complete,SWB - 5,West Support Building,SUWN-5 - 30-33,L4 - SUP Roof - FAB Roof,,CONSTRUCTION,,TOPPING,SEAN MONK,SOMD / Roofing / Waterproofing,2024-03-29 15:00,2024-03-30 13:00,2024-03-01 15:00,2024-03-02 14:00,2025-11-20 17:00,2025-11-20 17:00,2025-12-05 17:00,2025-12-05 17:00,0,8,100
CN.SWB5.6010,WATER PROOFING & POUR PEDASTALS - SWB-5-ROOF,Complete,SWB - 5,West Support Building,SUWN-5 - 30-33,L4 - SUP Roof - FAB Roof,,CONSTRUCTION,,TOPPING,SEAN MONK,SOMD / Roofing / Waterproofing,2024-03-29 13:00,2024-03-30 11:00,2024-02-28 13:00,2024-02-29 12:00,2025-11-20 17:00,2025-11-20 17:00,2025-12-05 17:00,2025-12-05 17:00,0,8,100
CN.SWB5.6020,FINISH WATER PROOFING & POUR PEDASTALS - SWB-5-ROOF,Complete,SWB - 5,West Support Building,SUWN-5 - 30-33,L4 - SUP Roof - FAB Roof,,CONSTRUCTION,,TOPPING,SEAN MONK,SOMD / Roofing / Waterproofing,2024-03-30 12:00,2024-03-31 10:00,2024-03-02 12:00,2024-03-03 12:00,2025-11-20 17:00,2025-11-20 17:00,2025-12-05 17:00,2025-12-05 17:00,0,8,100
CN.SWB5.6030,STRIP PEDSTALS - SWB-5-ROOF,Complete,SWB - 5,West Support Building,SUWN-5 - 30-33,L4 - SUP Roof - FAB Roof,,CONSTRUCTION,,TOPPING,SEAN MONK,SOMD / Roofing / Waterproofing,2024-04-26 11:00,2024-04-29 09:00,2024-03-04 11:00,2024-03-05 09:00,2025-11-20 17:00,2025-11-20 17:00,2025-12-05 17:00,2025-12-05 17:00,0,8,100
CN.SWB5.6040,PATCHING & INSPECT - SWB-5-ROOF,Complete,SWB - 5,West Support Building,SUWN-5 - 30-33,L4 - SUP Roof - FAB Roof,,CONSTRUCTION,BAKER,TOPPING,SEAN MONK,SOMD / Roofing / Waterproofing,2024-10-15 07:00,2024-10-15 17:00,2024-10-15 07:00,2024-10-15 17:00,2025-11-20 17:00,2025-11-20 17:00,2025-12-05 17:00,2025-12-05 17:00,0,10,100
CN.SWB5.6050,INSTALL PRIMER - GL 29-31 - L4 - L-N - ROOF,Complete,SWB - 5,West Support Building,SUWN-5 - 30-33,L4 - SUP Roof - FAB Roof,,CONSTRUCTION,BRAZOS,TOPPING,SEAN MONK,SOMD / Roofing / Waterproofing,2024-11-04 07:00,2024-11-04 17:00,2024-10-16 07:00,2024-10-16 17:00,2025-11-20 17:00,2025-11-20 17:00,2025-12-05 17:00,2025-12-05 17:00,0,10,100
CN.SWB5.6060,INSTALL BASE COAT - GL 29-31 - L4 - L-N - ROOF,Complete,SWB - 5,West Support Building,SUWN-5 - 30-33,L4 - SUP Roof - FAB Roof,,CONSTRUCTION,BRAZOS,TOPPING,SEAN MONK,SOMD / Roofing / Waterproofing,2024-10-18 07:00,2024-10-21 17:00,2024-10-18 07:00,2024-10-19 17:00,2025-11-20 17:00,2025-11-20 17:00,2025-12-05 17:00,2025-12-05 17:00,0,20,100
CN.SWB5.6070,INSTALL TOP COAT - GL 29-31 - L4 - L-N - ROOF,Complete,SWB - 5,West Support Building,SUWN-5 - 30-33,L4 - SUP Roof - FAB Roof,,CONSTRUCTION,BRAZOS,TOPPING,SEAN MONK,SOMD / Roofing / Waterproofing,2024-10-22 07:00,2024-10-24 17:00,2024-10-22 07:00,2024-10-24 17:00,2025-11-20 17:00,2025-11-20 17:00,2025-12-05 17:00,2025-12-05 17:00,0,20,100
CN.SWB5.6080,INSTALL CRICKET - GL 29-31 - L4 - L-N - ROOF,Complete,SWB - 5,West Support Building,SUWN-5 - 30-33,L4 - SUP Roof - FAB Roof,,CONSTRUCTION,BRAZOS,TOPPING,SEAN MONK,SOMD / Roofing / Waterproofing,2024-11-01 07:00,2024-11-04 17:00,2024-11-01 07:00,2024-11-08 17:00,2025-11-20 17:00,2025-11-20 17:00,2025-12-05 17:00,2025-12-05 17:00,0,20,100
CN.SWB5.6090,INSTALL PRIMER CRICKET - GL 29-31 - L4 - L-N - ROOF,Complete,SWB - 5,West Support Building,SUWN-5 - 30-33,L4 - SUP Roof - FAB Roof,,CONSTRUCTION,BRAZOS,TOPPING,SEAN MONK,SOMD / Roofing / Waterproofing,2024-11-19 07:00,2024-11-19 17:00,2024-11-04 07:00,2024-11-12 17:00,2025-11-20 17:00,2025-11-20 17:00,2025-12-05 17:00,2025-12-05 17:00,0,10,100
CN.SWB5.6100,INSTALL BASE COAT CRICKET - GL 29-31 - L4 - L-N - ROOF  (Including Pent house Ramp),Complete,SWB - 5,West Support Building,SUWN-5 - 30-33,L4 - SUP Roof - FAB Roof,,CONSTRUCTION,BRAZOS,TOPPING,SEAN MONK,SOMD / Roofing / Waterproofing,2024-11-14 07:00,2024-11-14 17:00,2024-11-14 07:00,2024-11-14 17:00,2025-11-20 17:00,2025-11-20 17:00,2025-12-05 17:00,2025-12-05 17:00,0,10,100
CN.SWB5.6110,FRP TOPPING SLAB - SWB5 - GL 29-31 - L4 - L-N - ROOF - (Including Pent house Ramp),Complete,SWB - 5,West Support Building,SUWN-5 - 30-33,L4 - SUP Roof - FAB Roof,,CONSTRUCTION,BAKER,TOPPING,SEAN MONK,SOMD / Roofing / Waterproofing,2024-12-05 07:00,2024-12-06 17:00,2024-12-05 07:00,2024-12-09 17:00,2025-11-20 17:00,2025-11-20 17:00,2025-12-05 17:00,2025-12-05 17:00,0,20,100
CN.SWB5.1392,INSTALL SHAFT LINER - ELEVATOR 5 (UNOBSTRUCTED AREAS),Complete,SWB - 5,West Support Building,SUWN-5 - 30-33,,ELEVATOR,CONSTRUCTION,BERG,DRYWALL,,INTERIORS,2024-09-06 07:00,2024-09-26 17:00,2024-08-26 07:00,2024-10-07 17:00,2025-11-20 17:00,2025-11-20 17:00,2025-10-16 07:00,2025-10-16 07:00,0,120,100
CN.SWB5.1412,INSTALL ELEVATOR HSS STEEL DOOR OPENINGS - ELEVATOR 5 - TURNOVER TO SECAI,Complete,SWB - 5,West Support Building,SUWN-5 - 30-33,,ELEVATOR,CONSTRUCTION,W&W,DRYWALL,,INTERIORS,2025-08-08 07:00,2025-09-05 17:00,2025-07-17 07:00,2025-07-25 17:00,2025-11-20 17:00,2025-11-20 17:00,2025-11-24 07:00,2025-11-24 07:00,0,200,100
CN.SWB5.2160,IMPACT - DS STEEL BEAM STIFFNER CONNECTION FIXES L4 GL 30-33,Complete,SWB - 5,,SUWN-5 - 30-33,DS/AD,,CONSTRUCTION,,Steel Erection,,,2023-11-30 07:00,2023-12-03 17:00,2023-11-30 07:00,2023-12-04 11:00,2025-11-20 17:00,2025-11-20 17:00,2025-06-13 08:00,2025-06-13 08:00,0,40,100
CN.SWB5.2170,PH1- DS/AD DECKING  - ROOF,Complete,SWB - 5,,SUWN-5 - 30-33,DS/AD,,CONSTRUCTION,,Roofing,,,2024-02-26 07:00,2024-03-02 15:00,2024-02-26 07:00,2024-03-02 16:00,2025-11-20 17:00,2025-11-20 17:00,2025-12-05 17:00,2025-12-05 17:00,0,48,100
CN.SWB5.6190,"PRIME, PATCH & TOPCOAT PRECAST BEAMS - SWB5 - L3 GL 30-33 K-N (CRT LAB)",Complete,SWB - 5,West Support Building,SUWN-5 - 30-33,L3 / Waffle Slab Level,CRT LAB,CONSTRUCTION,CHERRY COATING,TBD Architectural Finishes,FIZ DATA CENTER,INTERIORS,2024-08-09 07:00,2024-08-20 17:00,2024-07-31 07:00,2024-08-31 17:00,2025-11-20 17:00,2025-11-20 17:00,2025-12-01 07:00,2025-12-01 07:00,0,70,100
CN.SWB5.6200,IMPACT - MISSING EMBED ALONG L LINE BETWEEN GL 31-32 - SWB5 - L3A - TR081 - SEQ 4904,Complete,SWB - 5,West Support Building,SUWN-5 - 30-33,DS/AD,,CONSTRUCTION,,Steel Erection,FIZ DATA CENTER,INTERIORS,2023-11-27 07:00,2023-11-28 13:00,2023-11-20 07:00,2024-04-02 17:00,2025-11-20 17:00,2025-11-20 17:00,2025-12-05 17:00,2025-12-05 17:00,0,16,100
CN.SWB5.6210,IMPACT - MISSING EMBED ALONG L LINE BETWEEN GL 31-32 - SWB5 - L4A - TR081 - SEQ 4904,Complete,SWB - 5,West Support Building,SUWN-5 - 30-33,L4 - SUP Roof - FAB Roof,,CONSTRUCTION,SECAI,SOMD,CONCRETE,SOMD / Roofing / Waterproofing,2024-01-22 07:00,2024-01-24 11:00,2023-10-23 07:00,2024-04-01 17:00,2025-11-20 17:00,2025-11-20 17:00,2025-12-05 17:00,2025-12-05 17:00,0,24,100
SITE.SWB5.2140,IMPACT - TRESTLE & PAVING (Patriot relocated) - GL 32-33 - SWB-5-L1,Complete,SWB - 5,West Support Building,SUWN-5 - 30-33,EXTERIOR SKIN,,CONSTRUCTION,,Pour Concrete,JAMES LEE,SOMD / Roofing / Waterproofing,2023-10-19 11:00,2023-10-24 11:00,2023-09-23 08:00,2023-11-16 17:00,2025-11-20 17:00,2025-11-20 17:00,2025-08-26 07:00,2025-08-26 07:00,0,40,100
CN.SWB5.6350,DSAD PENETRATION SUPPORT STEEL FRAMING - SWB5 -GL 30-33 L3,Complete,SWB - 5,,SUWN-5 - 30-33,DS/AD,,CONSTRUCTION,,Steel Erector - W&W,,,2024-03-26 11:00,2024-04-01 11:00,2024-03-26 11:00,2024-03-30 11:00,2025-11-20 17:00,2025-11-20 17:00,2025-12-05 17:00,2025-12-05 17:00,0,40,100
CN.SWB5.6360,DSAD PENETRATION SUPPORT STEEL FRAMING - SWB5 -GL 30-33 L4 - turned over to secai,Complete,SWB - 5,,SUWN-5 - 30-33,DS/AD,,CONSTRUCTION,PERRY & PERRY,Steel Erection,,,2024-11-18 07:00,2024-11-25 17:00,2024-09-04 12:00,2024-09-07 17:00,2025-11-20 17:00,2025-11-20 17:00,2025-12-05 17:00,2025-12-05 17:00,0,50,100
CN.SWB4.4660,PH1- DS/AD FRP SLAB - DS/AD SWB-5  L3,Complete,SWB - 5,,SUWN-5 - 30-33,DS/AD,,CONSTRUCTION,,SOMD,,,2024-01-04 11:00,2024-01-06 13:00,2024-01-04 11:00,2024-01-05 17:00,2025-11-20 17:00,2025-11-20 17:00,2025-12-05 17:00,2025-12-05 17:00,0,16,100
CN.SWB4.4670,PH1- DS/AD DECKING  GL 30- 33 - DS/AD SWB-5  L3,Complete,SWB - 5,,SUWN-5 - 30-33,DS/AD,,CONSTRUCTION,,Decking & Detail,,,2023-12-28 07:00,2024-01-02 13:00,2023-12-28 07:00,2024-01-02 11:00,2025-11-20 17:00,2025-11-20 17:00,2025-12-05 17:00,2025-12-05 17:00,0,24,100
CN.SWB5.2180,PH1- DS/AD DECKING & DETAILING GL 33 - 30 - DS/AD SWB-4 L6,Complete,SWB - 5,,SUWN-5 - 30-33,DS/AD,,CONSTRUCTION,,Decking & Detail,,,2023-11-13 07:00,2023-11-17 17:00,2023-11-14 07:00,2023-11-20 11:00,2025-11-20 17:00,2025-11-20 17:00,2025-06-13 08:00,2025-06-13 08:00,0,40,100
CN.SWB5.2190,PH1- DS/AD FRP SLAB - DS/AD SWB-5  L6,Complete,SWB - 5,,SUWN-5 - 30-33,DS/AD,,CONSTRUCTION,,SOMD,,,2023-11-20 11:00,2023-11-22 15:00,2023-11-20 11:00,2023-11-22 15:00,2025-11-20 17:00,2025-11-20 17:00,2025-06-13 08:00,2025-06-13 08:00,0,24,100
CN.SWB5.2200,PH1- DS/AD CURE FRP SLAB - DS/AD SWB-4  L6,Complete,SWB - 5,,SUWN-5 - 30-33,DS/AD,,CONSTRUCTION,,SOMD,,,2023-11-22 15:00,2023-11-30 09:00,2023-11-22 15:00,2023-11-26 17:00,2025-11-20 17:00,2025-11-20 17:00,2025-06-13 08:00,2025-06-13 08:00,0,24,100
CN.SWB5.1200,REMAINING CLADDING STEEL & INSPECTION FOR INSULATED METAL PANELS GL 31-33 - N LINE [SUP EXTERIOR WALL],Complete,SWB - 5,,SUWN-5 - 30-33,EXTERIOR SKIN,,CONSTRUCTION,PATRIOT,INSULATED METAL PANELS,,,2024-05-10 07:00,2024-05-17 17:00,2024-04-26 07:00,2024-08-14 17:00,2025-11-20 17:00,2025-11-20 17:00,2025-12-05 17:00,2025-12-05 17:00,0,50,100
CN.SWB5.1240,INSTALL INSULATED METAL PANEL MODULES - GL 30-33 - K LINE (AD AREA),Complete,SWB - 5,,SUWN-5 - 30-33,EXTERIOR SKIN,,CONSTRUCTION,KOVACH,INSULATED METAL PANELS,,,2024-05-15 07:00,2024-05-20 17:00,2024-05-15 07:00,2024-05-23 17:00,2025-11-20 17:00,2025-11-20 17:00,2025-11-21 07:00,2025-11-21 07:00,0,60,100
CN.SWB5.6370,IMPACT [S.TIA-16] - Incorrect Precast Embeds GL L31 and L32 4A - TR081B - TF1-SMT-SH-2450 SEQ. 4904,Complete,SWB - 5,,SUWN-5 - 30-33,DS/AD,,CONSTRUCTION,SECAI,Steel Erection,,,2023-11-28 13:00,2023-12-05 13:00,2023-11-20 07:00,2024-01-20 17:00,2025-11-20 17:00,2025-11-20 17:00,2025-12-05 17:00,2025-12-05 17:00,0,40,100
CN.SWB5.6380,IMPACT [S.TIA-16] - Incorrect Precast Embeds GL L31 and L32 2M - TR081A - TF1-SMT-SH-2449 SEQ. 4904,Complete,SWB - 5,,SUWN-5 - 30-33,DS/AD,,CONSTRUCTION,SECAI,Steel Erection,,,2023-12-15 09:00,2023-12-21 09:00,2023-11-20 07:00,2024-01-22 17:00,2025-11-20 17:00,2025-11-20 17:00,2025-12-05 17:00,2025-12-05 17:00,0,40,100
CN.SWB5.6390,IMPACT [C26] - REMAINING DECKING & SLAB - SWB5 - L3 - GL 32-33,Complete,SWB - 5,West Support Building,SUWN-5 - 30-33,L3 / Waffle Slab Level,,CONSTRUCTION,,Decking & Detail,SEAN MONK,,2024-04-18 07:00,2024-04-23 09:00,2024-04-03 07:00,2024-04-12 17:00,2025-11-20 17:00,2025-11-20 17:00,2025-12-05 17:00,2025-12-05 17:00,0,32,100
CN.SWB5.6400,IMPACT [S.TIA-7 / C20] - SECAI / TINDALL TO FIX 5 PEDESTALS FORMSAVER / TURNOVER TO YATES - SWB5 - GL 30-31- N-M - L4,Complete,SWB - 5,,SUWN-5 - 30-33,L4 - SUP Roof - FAB Roof,,CONSTRUCTION,SECAI,Cast-in Place Concrete - Baker Concrete,,,2023-11-22 11:00,2023-12-01 11:00,2023-11-01 07:00,2024-05-15 17:00,2025-11-20 17:00,2025-11-20 17:00,2025-12-05 17:00,2025-12-05 17:00,0,40,100
CN.SWB5.6410,DOOR FRAMES BITUMINOUS COATING (2 Exterior) - NW PENTHOUSE,Not Started,SWB - 5,East Support Building,NORTH WEST PENTHOUSE,L4 - SUP Roof - FAB Roof,,CONSTRUCTION,DOORS AND HARDWARE,TBD Architectural Finishes,SEAN MONK,,2025-11-21 07:00,2025-11-21 17:00,,,2025-11-21 07:00,2025-11-21 17:00,2025-11-25 07:00,2025-11-25 17:00,10,10,0
CN.SWB4.4690,KNEE WALL -SWB 4 - GL 30-33 - L4 - J-K -DS/AD,Complete,SWB - 5,,SUWN-5 - 30-33,DS/AD,,CONSTRUCTION,,Cast-in Place Concrete - Baker Concrete,,,2024-01-18 07:00,2024-01-21 09:00,2024-01-18 07:00,2024-01-21 12:00,2025-11-20 17:00,2025-11-20 17:00,2025-11-21 07:00,2025-11-21 07:00,0,32,100
CN.SWB54741,"IMPACT [S.TIA-103] - ELEVATOR 5 TOPPING SLAB 22"""" - SWB-5 - L1- GL 31-32 L-M - ELEVATOR-5",Complete,SWB - 5,West Support Building,SUWN-5 - 30-33,L1 - Fndn Slab,ELEVATOR,CONSTRUCTION,,TBD Architectural Finishes,,INTERIORS,2023-12-04 07:00,2023-12-15 14:00,2023-10-30 07:00,2023-12-15 09:00,2025-11-20 17:00,2025-11-20 17:00,2025-10-16 07:00,2025-10-16 07:00,0,97,100
CN.SWB4.6350,DS/AD STEEL SPRAY FIREPROOFING SFRM- SWB-5 L1 CEILING - GL 30-33,Complete,SWB - 5,West Support Building,SUWN-5 - 30-33,DS/AD,,CONSTRUCTION,,Fireproofing,HOON WOO,,2024-01-02 09:00,2024-01-07 16:00,2024-01-02 07:00,2024-01-08 09:00,2025-11-20 17:00,2025-11-20 17:00,2025-06-13 08:00,2025-06-13 08:00,0,48,100
CN.SWB5.6420,K-LINE STEEL SPRAY FIREPROOFING SFRM2 - SWB5 - L3-CEILING - GL 30-33,Complete,SWB - 5,West Support Building,SUWN-5 - 30-33,L4 - SUP Roof - FAB Roof,DS/AD INTERIORS,CONSTRUCTION,ROLLING PLAINS,Fireproofing,HOON WOO,,2024-04-24 07:00,2024-04-29 17:00,2024-04-24 07:00,2024-04-29 17:00,2025-11-20 17:00,2025-11-20 17:00,2025-06-13 08:00,2025-06-13 08:00,0,40,100
CN.SWB5.6440,IMPACT - PRECAST COLUMN OUT OF TOLERANCE ABs - ERECT STEEL - NW PENTHOUSE,Complete,SWB - 5,West Support Building,NORTH WEST PENTHOUSE,L4 - SUP Roof - FAB Roof,,CONSTRUCTION,,Steel Erection,SEAN MONK,,2023-12-19 15:00,2024-01-04 16:00,2023-12-30 15:00,2024-01-11 17:00,2025-11-20 17:00,2025-11-20 17:00,2025-11-17 07:00,2025-11-17 07:00,0,76,100
CN.SWB5.6450,IMPACT - PRECAST COLUMN OUT OF TOLERANCE ABs - ERECT STEEL - NE PENTHOUSE,Complete,SWB - 5,West Support Building,NORTH EAST PENTHOUSE,L4 - SUP Roof - FAB Roof,,CONSTRUCTION,,Steel Erection,SEAN MONK,,2023-12-19 15:00,2024-01-04 16:00,2023-12-30 15:00,2024-01-21 11:00,2025-11-20 17:00,2025-11-20 17:00,2025-10-16 07:00,2025-10-16 07:00,0,76,100
CN.SWB5.6470,ROOFTOP DRY PARAPET - SWB-1 (DS AREA) GL 30-33 N (DS AREA),Complete,SWB - 5,West Support Building,SUWN-5 - 30-33,EXTERIOR SKIN,,CONSTRUCTION,,INSULATED METAL PANELS,JAMES LIVELY,,2024-03-04 08:00,2024-03-08 08:00,2024-03-04 08:00,2024-03-06 10:00,2025-11-20 17:00,2025-11-20 17:00,2025-12-05 17:00,2025-12-05 17:00,0,40,100
CN.SWB5.6480,INSTALL INSULATED METAL PANEL MODULES - GL 30-33 - J LINE (AD AREA),Complete,SWB - 5,,SUWN-5 - 30-33,DS/AD,,CONSTRUCTION,KOVACH,Steel Erection,,,2024-07-14 07:00,2024-07-15 17:00,2024-07-01 07:00,2024-07-02 17:00,2025-11-20 17:00,2025-11-20 17:00,2025-12-03 07:00,2025-12-03 07:00,0,20,100
CN.SWB5.6490,INSTALL TPO ROOFING - SWB5 - GL 30-33 - K-L - L6 - NORTHWEST PENTHOUSE,Complete,SWB - 5,West Support Building,NORTH WEST PENTHOUSE,L6 - PENTHOUSE / DS ROOF,,CONSTRUCTION,BRAZOS,Waterproofing - Preferred,JAMES LIVELY,,2025-10-13 07:00,2025-10-16 17:00,2025-10-10 07:00,2025-10-16 17:00,2025-11-20 17:00,2025-11-20 17:00,2025-11-25 07:00,2025-11-25 07:00,0,40,100
CN.SWB5.6500,DCC BEAM (STEEL STRUCTURE) - DSAD - GL 30-33 L3 K LINE,Complete,SWB - 5,West Support Building,SUWN-5 - 30-33,L3 / Waffle Slab Level,DS/AD INTERIORS,CONSTRUCTION,,TBD Architectural Finishes,FIZ DATA CENTER,INTERIORS,2024-03-07 07:00,2024-03-18 09:00,2024-03-07 07:00,2024-03-12 17:00,2025-11-20 17:00,2025-11-20 17:00,2025-06-13 08:00,2025-06-13 08:00,0,72,100
CN.SWB5.6510,TEMPORARY SCAFFOLD PLATFORM - DSAD - GL 30-33 L3  K LINE,Complete,SWB - 5,West Support Building,SUWN-5 - 30-33,L3 / Waffle Slab Level,DS/AD INTERIORS,CONSTRUCTION,,TBD Architectural Finishes,FIZ DATA CENTER,INTERIORS,2024-03-17 07:00,2024-03-23 15:00,2024-03-15 07:00,2024-03-19 09:00,2025-11-20 17:00,2025-11-20 17:00,2025-06-13 08:00,2025-06-13 08:00,0,48,100
CN.SWB5.6520,Drywall Clips & AMTS Installs Support Beams - L4- GL 30-33 L4 K LINE,Complete,SWB - 5,West Support Building,SUWN-5 - 30-33,L4 - SUP Roof - FAB Roof,DS/AD INTERIORS,CONSTRUCTION,SECAI,TBD Architectural Finishes,FIZ DATA CENTER,INTERIORS,2024-04-01 07:00,2024-04-12 09:00,2024-03-25 07:00,2024-04-08 17:00,2025-11-20 17:00,2025-11-20 17:00,2025-06-13 08:00,2025-06-13 08:00,0,72,100
CN.SWB5.6530,AD STEEL APPLY INTUMESCENT - SWB3 - L3 CEILING - GL 30-33/J-K,Complete,SWB - 5,West Support Building,SUWN-5 - 30-33,L4 - SUP Roof - FAB Roof,DS/AD INTERIORS,CONSTRUCTION,ROLLING PLAINS,TBD Architectural Finishes,FIZ DATA CENTER,INTERIORS,2024-05-24 12:00,2024-06-04 12:00,2024-05-24 12:00,2024-06-13 17:00,2025-11-20 17:00,2025-11-20 17:00,2025-06-13 08:00,2025-06-13 08:00,0,50,100
CN.SWB5.6540,ADD FLANGE EXTENSIONS/ CUT GRATING - GL 30-33 L3 K LINE,Complete,SWB - 5,West Support Building,SUWN-5 - 30-33,L3 / Waffle Slab Level,DS/AD INTERIORS,CONSTRUCTION,,TBD Architectural Finishes,FIZ DATA CENTER,INTERIORS,2024-03-25 07:00,2024-03-28 17:00,2024-03-25 07:00,2024-03-29 17:00,2025-11-20 17:00,2025-11-20 17:00,2025-06-13 08:00,2025-06-13 08:00,0,40,100
CN.SWB5.6560,MEP IN WALL ROUGH INS - GL 30-33 L3  K LINE,Complete,SWB - 5,West Support Building,SUWN-5 - 30-33,L3 / Waffle Slab Level,DS/AD INTERIORS,CONSTRUCTION,SECAI,TBD Architectural Finishes,FIZ DATA CENTER,INTERIORS,2024-04-29 07:00,2024-04-30 17:00,2024-04-29 07:00,2024-05-02 17:00,2025-11-20 17:00,2025-11-20 17:00,2025-06-13 08:00,2025-06-13 08:00,0,20,100
CN.SWB5.6570,CURE INTUMESCENT PAINT AD - K-J LINE GL 30-33 L4,Complete,SWB - 5,West Support Building,SUWN-5 - 30-33,L4 - SUP Roof - FAB Roof,DS/AD INTERIORS,CONSTRUCTION,ROLLING PLAINS,TBD Architectural Finishes,FIZ DATA CENTER,INTERIORS,2024-07-12 07:00,2024-07-31 17:00,2024-06-15 07:00,2024-07-06 17:00,2025-11-20 17:00,2025-11-20 17:00,2025-12-05 17:00,2025-12-05 17:00,0,140,100
CN.SWB5.6580,SECAI- AMTS Installs UPPER CEILING - L4- GL 30-33 AD,Complete,SWB - 5,West Support Building,SUWN-5 - 30-33,L4 - SUP Roof - FAB Roof,DS/AD INTERIORS,CONSTRUCTION,SECAI,TBD Architectural Finishes,FIZ DATA CENTER,INTERIORS,2024-08-12 07:00,2024-08-16 17:00,2024-08-12 07:00,2024-08-16 17:00,2025-11-20 17:00,2025-11-20 17:00,2025-12-05 17:00,2025-12-05 17:00,0,40,100
CN.SWB5.6610,IMPACT [ES 8] - DESIGN CHANGE - BRIDGE & TRESTLE WORK GL 30-32 - N LINE [SUP EXTERIOR WALL],Complete,SWB - 5,West Support Building,SUWN-5 - 30-33,EXTERIOR SKIN,,CONSTRUCTION,PATRIOT,INSULATED METAL PANELS,JAMES LIVELY,,2024-01-25 07:00,2024-02-01 15:00,2024-01-04 07:00,2024-04-24 17:00,2025-11-20 17:00,2025-11-20 17:00,2025-08-26 07:00,2025-08-26 07:00,0,58,100
CN.SWB5.6630,IMPACT - WAITING ON MEP LAYOUTS - SWB5 -GL 30-33 L4,Complete,SWB - 5,,SUWN-5 - 30-33,DS/AD,,CONSTRUCTION,,Steel Erection,,,2024-01-22 07:00,2024-01-25 17:00,2024-01-15 07:00,2024-01-31 15:00,2025-11-20 17:00,2025-11-20 17:00,2025-12-05 17:00,2025-12-05 17:00,0,40,100
CN.SWB5.6640,INSTALL RAISED ACCESS FLOORING - I/O FAB140501- SUW-L4 - NW PH,Not Started,SWB - 5,East Support Building,SUWN-5 - 30-33,L4 - SUP Roof - FAB Roof,,CONSTRUCTION,SELECT PREFAB,TOPPING,JAMES LEE,INTERIORS,2025-12-04 07:00,2025-12-08 17:00,,,2025-12-04 07:00,2025-12-08 17:00,2025-12-03 07:00,2025-12-05 17:00,30,30,0
CN.SWB5.6650,INSTALL METAL STAIRS - STAIR #50 - 29/L - ALL LEVELS (EMBEDMENT ISSUES ON L2 -L4),Complete,SWB - 5,West Support Building,SUWN-4 - 27-30,INTERIOR STAIR TOWER - STAIR #50 - DE-SCOPED,,CONSTRUCTION,PATRIOT,INSULATED METAL PANELS,,INTERIORS,2024-08-09 07:00,2024-09-06 17:00,2024-08-07 07:00,2024-10-07 17:00,2025-11-20 17:00,2025-11-20 17:00,2025-12-04 07:00,2025-12-04 07:00,0,240,100
CN.BB51.ST.1375,IMPACT [C5] - GENERATOR / MEP MATERIAL & EQUIPMENT IN THE WAY - FOUNDATION - STAIR 5 - GL 33 - K-L,Complete,SWB - 5,East Support Building,GRIDLINE 33,,STAIR 5 (WEST) - K-L,CONSTRUCTION,,Concrete Cure,JAMES LEE,INTERIORS,2024-05-31 13:00,2024-06-20 15:00,2024-01-05 13:00,2024-03-21 09:00,2025-11-20 17:00,2025-11-20 17:00,2025-11-03 07:00,2025-11-03 07:00,0,112,100
CN.SWB5.6780,IMPACT [C26] - COLUMN FORMSAVER BLOCK OUT / NOTIFICATION TO SECAI & RESPONSE - SWB5 - L3 - GL 32-33,Complete,SWB - 5,West Support Building,SUWN-5 - 30-33,L3 / Waffle Slab Level,,CONSTRUCTION,,Decking & Detail,SEAN MONK,,2024-01-30 13:00,2024-02-05 13:00,2024-01-23 07:00,2024-01-31 17:00,2025-11-20 17:00,2025-11-20 17:00,2025-12-05 17:00,2025-12-05 17:00,0,40,100
CN.SWB54751,IMPACT [S.TIA-19] - ELEVATOR 5 HSS SPLICE CONNECTION - SWB-5,Complete,SWB - 5,West Support Building,ELEVATORS,L1 - Fndn Slab,ELEVATOR,PRE - CON / BUYOUT / IMPACTS,,TBD Architectural Finishes,,INTERIORS,2024-04-08 07:00,2024-04-11 13:00,2024-03-18 07:00,2024-03-22 13:00,2025-11-20 17:00,2025-11-20 17:00,2025-10-16 07:00,2025-10-16 07:00,0,16,100
CN.SWB5.6790,IMPACT [C32] - RFI 5153 / Y_RFI 1217 - TOPPING SLAB REWORK & REPLACEMENT - NORTH PIT - SWB-5-L1 GL 30-31,Complete,SWB - 5,West Support Building,SUWN-5 - 30-33,L1 - Fndn Slab,,CONSTRUCTION,,TOPPING,CONCRETE,SOMD / Roofing / Waterproofing,2024-04-11 07:00,2024-04-15 11:00,2024-03-20 07:00,2024-04-02 17:00,2025-11-20 17:00,2025-11-20 17:00,2025-10-16 07:00,2025-10-16 07:00,0,24,100
CN.SWB5.6800,IMPACT [C32] - SCAFFOLD SHORING MATERIAL IN WAY - NORTH PIT - SWB-5-L1 GL 30-31,Complete,SWB - 5,West Support Building,SUWN-5 - 30-33,L1 - Fndn Slab,,CONSTRUCTION,,TOPPING,CONCRETE,SOMD / Roofing / Waterproofing,2024-03-25 07:00,2024-03-29 17:00,2024-03-18 08:00,2024-03-20 16:00,2025-11-20 17:00,2025-11-20 17:00,2025-10-16 07:00,2025-10-16 07:00,0,50,100
CN.SWB5.6840,"PRIME, PATCH & TOPCOAT PRECAST COLUMNS - SWB5 - L3 GL 30-33 K-N (CRT LAB)",Complete,SWB - 5,West Support Building,SUWN-5 - 30-33,L3 / Waffle Slab Level,CRT LAB,CONSTRUCTION,CHERRY COATING,TBD Architectural Finishes,FIZ DATA CENTER,INTERIORS,2024-08-15 07:00,2024-08-26 17:00,2024-07-31 07:00,2024-08-31 17:00,2025-11-20 17:00,2025-11-20 17:00,2025-12-05 17:00,2025-12-05 17:00,0,70,100
CN.SWB5.6850,INSPECT PRIMER - GL 29-31 - L4 - L-N - ROOF,Complete,SWB - 5,West Support Building,SUWN-5 - 30-33,L4 - SUP Roof - FAB Roof,,CONSTRUCTION,BRAZOS,TOPPING,SEAN MONK,SOMD / Roofing / Waterproofing,2024-10-17 07:00,2024-10-17 17:00,2024-10-17 07:00,2024-10-17 17:00,2025-11-20 17:00,2025-11-20 17:00,2025-12-05 17:00,2025-12-05 17:00,0,10,100
CN.SWB5.6860,INSPECT BASE COAT - GL 29-31 - L4 - L-N - ROOF,Complete,SWB - 5,West Support Building,SUWN-5 - 30-33,L4 - SUP Roof - FAB Roof,,CONSTRUCTION,BRAZOS,TOPPING,SEAN MONK,SOMD / Roofing / Waterproofing,2024-10-21 07:00,2024-10-21 17:00,2024-10-21 07:00,2024-10-21 17:00,2025-11-20 17:00,2025-11-20 17:00,2025-12-05 17:00,2025-12-05 17:00,0,10,100
CN.SWB5.6870,INSPECT TOP COAT - GL 29-31 - L4 - L-N - ROOF,Complete,SWB - 5,West Support Building,SUWN-5 - 30-33,L4 - SUP Roof - FAB Roof,,CONSTRUCTION,BRAZOS,TOPPING,SEAN MONK,SOMD / Roofing / Waterproofing,2024-10-25 07:00,2024-10-25 17:00,2024-10-25 07:00,2024-10-25 17:00,2025-11-20 17:00,2025-11-20 17:00,2025-12-05 17:00,2025-12-05 17:00,0,10,100
CN.SWB5.6880,INSPECT CRICKET - GL 29-31 - L4 - L-N - ROOF,Complete,SWB - 5,West Support Building,SUWN-5 - 30-33,L4 - SUP Roof - FAB Roof,,CONSTRUCTION,BRAZOS,TOPPING,SEAN MONK,SOMD / Roofing / Waterproofing,2024-11-18 07:00,2024-11-18 17:00,2024-11-02 07:00,2024-11-11 17:00,2025-11-20 17:00,2025-11-20 17:00,2025-12-05 17:00,2025-12-05 17:00,0,10,100
CN.SWB5.6890,INSPECT PRIMER CRICKET - GL 29-31 - L4 - L-N - ROOF,Complete,SWB - 5,West Support Building,SUWN-5 - 30-33,L4 - SUP Roof - FAB Roof,,CONSTRUCTION,BRAZOS,TOPPING,SEAN MONK,SOMD / Roofing / Waterproofing,2024-11-12 07:00,2024-11-12 17:00,2024-11-12 07:00,2024-11-12 17:00,2025-11-20 17:00,2025-11-20 17:00,2025-12-05 17:00,2025-12-05 17:00,0,10,100
CN.SWB5.6900,INSPECT BASE COAT CRICKET - GL 29-31 - L4 - L-N - ROOF (Including Pent house Ramp),Complete,SWB - 5,West Support Building,SUWN-5 - 30-33,L4 - SUP Roof - FAB Roof,,CONSTRUCTION,BRAZOS,TOPPING,SEAN MONK,SOMD / Roofing / Waterproofing,2024-11-15 07:00,2024-11-15 17:00,2024-11-15 07:00,2024-11-15 17:00,2025-11-20 17:00,2025-11-20 17:00,2025-12-05 17:00,2025-12-05 17:00,0,10,100
CN.BB51.ST.2220,IMPACT [C5] - GENERATOR / MEP MATERIAL & EQUIPMENT IN THE WAY - FOUNDATION - STAIR 18 - GL 33 - C-D,Complete,SWB - 5,East Support Building,GRIDLINE 33,,STAIR 18 (EAST) - C-D,CONSTRUCTION,,Concrete Cure,JAMES LEE,INTERIORS,2024-05-31 13:00,2024-06-20 15:00,2024-01-05 07:00,2024-04-08 17:00,2025-11-20 17:00,2025-11-20 17:00,2025-11-03 07:00,2025-11-03 07:00,0,112,100
CN.BB51.ST.2250,IMPACT [S.TIA-137] - CCD 316 - NEW PILE/SHEET DESIGN - FOUNDATION - STAIR 18 - GL 33 - C-D,Complete,SWB - 5,East Support Building,GRIDLINE 33,,STAIR 18 (EAST) - C-D,CONSTRUCTION,BAKER,Concrete Cure,JAMES LEE,INTERIORS,2024-05-31 13:00,2024-06-20 15:00,2024-01-05 07:00,2024-04-03 17:00,2025-11-20 17:00,2025-11-20 17:00,2025-11-03 07:00,2025-11-03 07:00,0,112,100
CN.BB51.ST.2260,IMPACT [S.TIA-137] - CCD 316 - FAB/DELIVER SHEETS - GL 33 - STAIR 18 - C-D,Complete,SWB - 5,East Support Building,GRIDLINE 33,,STAIR 18 (EAST) - C-D,CONSTRUCTION,BAKER,Concrete Cure,JAMES LEE,INTERIORS,2024-04-15 07:00,2024-04-26 13:00,2024-04-04 07:00,2024-04-08 17:00,2025-11-20 17:00,2025-11-20 17:00,2025-11-03 07:00,2025-11-03 07:00,0,96,100
CN.BB51.ST.2270,IMPACT [S.TIA-137] - CCD 316 - INSTALL PILES & SHEETS - GL 33 - STAIR 18 - C-D,Complete,SWB - 5,East Support Building,GRIDLINE 33,,STAIR 18 (EAST) - C-D,CONSTRUCTION,BAKER,Concrete Cure,JAMES LEE,INTERIORS,2024-05-13 07:00,2024-05-16 17:00,2024-04-22 07:00,2024-04-29 17:00,2025-11-20 17:00,2025-11-20 17:00,2025-11-03 07:00,2025-11-03 07:00,0,30,100
CN.SWB5.7930,IMPACT - K-LINE STEEL SPRAY FIREPROOFING SFRM2- SWB-5- L3-CEILING 30-33 - SWB5 - L3-CEILING - GL 30-33,Complete,SWB - 5,West Support Building,SUWN-5 - 30-33,L4 - SUP Roof - FAB Roof,DS/AD INTERIORS,CONSTRUCTION,ROLLING PLAINS,Fireproofing,HOON WOO,,2024-04-25 07:00,2024-04-26 17:00,2024-04-25 07:00,2024-04-29 17:00,2025-11-20 17:00,2025-11-20 17:00,2025-06-13 08:00,2025-06-13 08:00,0,20,100
CN.SWB5.8850,IMPACT - INSPECT & SURFACE PREP ADDITIONAL AD STEEL FOR INTUMESCENT - SWB5 - GL 30-33 - J-K - L3 CEILING,Complete,SWB - 5,West Support Building,SUWN-5 - 30-33,L4 - SUP Roof - FAB Roof,DS/AD INTERIORS,CONSTRUCTION,ROLLING PLAINS,TBD Architectural Finishes,FIZ DATA CENTER,INTERIORS,2024-05-14 11:37,2024-05-23 11:37,2024-05-14 11:37,2024-05-21 11:37,2025-11-20 17:00,2025-11-20 17:00,2025-06-13 08:00,2025-06-13 08:00,0,50,100
CN.SWB5.8900,INSTALL FRAMING FOR IMP - GL 30-33 - J LINE (AD AREA),Complete,SWB - 5,,SUWN-5 - 30-33,DS/AD,,CONSTRUCTION,BERG,Steel Erection,,,2024-05-17 07:00,2024-05-20 17:00,2024-05-01 07:00,2024-05-14 17:00,2025-11-20 17:00,2025-11-20 17:00,2025-12-03 07:00,2025-12-03 07:00,0,20,100
CN.SWB5.8930,INSTALL RAISED ACCESS FLOORING - I/O FAB140109 - SUW-L4- SW PH,Not Started,SWB - 5,East Support Building,FIZ 2 / SUWS 5  (GL6-1) - GL J - N - DATA CENTER 1,L4 - SUP Roof - FAB Roof,,CONSTRUCTION,SELECT PREFAB,TOPPING,JAMES LEE,INTERIORS,2025-12-01 07:00,2025-12-03 17:00,,,2025-12-01 07:00,2025-12-03 17:00,2025-11-26 07:00,2025-12-02 17:00,30,30,0
CN.SWB5.9240,IMPACT - SECAI PRIORITY CAHNGE TO GL 28-SOUTH -SWB5 L2 GL 30-33 K LINE,Complete,SWB - 5,West Support Building,SUWN-5 - 30-33,L2 - SubFab Level,DS/AD INTERIORS,CONSTRUCTION,BERG,DRYWALL,FIZ DATA CENTER,INTERIORS,2024-06-10 07:00,2024-06-20 17:00,2024-06-10 07:00,2024-06-20 17:00,2025-11-20 17:00,2025-11-20 17:00,2025-11-26 07:00,2025-11-26 07:00,0,70,100
CN.SWB4.6730,CURE - AD STEEL PAINT FIREPROOFING IFRM - SWB-5 - GL 30-33 - K-L - L2-CEILING,Complete,SWB - 5,West Support Building,SUWN-5 - 30-33,DS/AD,,CONSTRUCTION,ROLLING PLAINS,Fireproofing,HOON WOO,,2024-08-09 07:00,2024-08-28 17:00,2024-07-23 07:00,2024-08-07 17:00,2025-11-20 17:00,2025-11-20 17:00,2025-12-05 17:00,2025-12-05 17:00,0,180,100
CN.SWB5.9250,COMPLETE BENT PLATE FIX FOR FRAMING CORRECTIONS - GL 26-33 - J LINE (AD AREA),Complete,SWB - 5,,SUWN-5 - 30-33,DS/AD,,CONSTRUCTION,BERG,Steel Erection,,,2024-05-17 07:00,2024-05-24 17:00,2024-06-11 07:00,2024-06-14 17:00,2025-11-20 17:00,2025-11-20 17:00,2025-12-03 07:00,2025-12-03 07:00,0,50,100
CN.SWB5.9260,FRAMING CORRECTIONS & INSPECTIONS - GL 29-33 - J LINE (AD AREA),Complete,SWB - 5,,SUWN-5 - 30-33,DS/AD,,CONSTRUCTION,BERG,Steel Erection,,,2024-07-05 07:00,2024-07-08 17:00,2024-06-17 07:00,2024-06-19 17:00,2025-11-20 17:00,2025-11-20 17:00,2025-12-03 07:00,2025-12-03 07:00,0,20,100
CN.SWB54791,INSTALL WALL PROTECTION - ELEVATOR HALL 5 - GL 32-33 - L-M - L2,Not Started,SWB - 5,West Support Building,SUWN-5 - 30-33,L2 - SubFab Level,ELEVATOR,CONSTRUCTION,BERNCO,TBD Architectural Finishes,JAMES LEE,INTERIORS,2025-12-22 07:00,2025-12-26 17:00,,,2025-12-22 07:00,2025-12-26 17:00,2025-12-03 07:00,2025-12-05 17:00,30,30,0
CN.SWB54801,IMPACT - NCR 372 - REPAIR INACCESSIBLE BOLTS - DENSO VOID FILLER - ELEVATOR 05 - UP TO L1(WAITING FOR MATERIAL RESUPPLY),Complete,SWB - 5,West Support Building,SUWN-5 - 30-33,,ELEVATOR,CONSTRUCTION,W&W,Steel Erection,,INTERIORS,2024-10-14 07:00,2024-10-25 17:00,2024-09-20 15:05,2024-10-01 17:00,2025-11-20 17:00,2025-11-20 17:00,2025-10-16 07:00,2025-10-16 07:00,0,80,100
CN.SWB54811,IMPACT - NCR 372 - REMOVE & REPLACE ACCESSIBLE BOLTS - ELEVATOR 05 - UP TO L1,Complete,SWB - 5,West Support Building,SUWN-5 - 30-33,,ELEVATOR,CONSTRUCTION,W&W,Steel Erection,,INTERIORS,2024-07-26 07:00,2024-07-31 17:00,2024-07-10 07:00,2024-07-15 17:00,2025-11-20 17:00,2025-11-20 17:00,2025-11-24 07:00,2025-11-24 07:00,0,40,100
CN.SWB5.9360,IMPACT - BAKER PERFORM REPAIR AT J LINE WALL - GL 30-33 - J LINE (AD AREA),Not Started,SWB - 5,,SUWN-5 - 30-33,DS/AD,,CONSTRUCTION,KOVACH,Steel Erection,,,2025-11-21 07:00,2025-11-21 17:00,,,2025-11-21 07:00,2025-11-21 17:00,2025-12-05 07:00,2025-12-05 17:00,10,10,0
CN.SWB5.9450,IMPACT - AD WATERPROOFING - SWB5 - GL 32.5-33 - J-K - L4/E,Complete,SWB - 5,West Support Building,SUWN-5 - 30-33,DS/AD,,CONSTRUCTION,BRAZOS,Waterproofing - Preferred,JAMES LIVELY,,2025-05-27 07:00,2025-06-13 17:00,2025-03-10 07:00,2025-03-13 07:00,2025-11-20 17:00,2025-11-20 17:00,2025-12-05 17:00,2025-12-05 17:00,0,140,100
CN.SWB5.9460,IMPACT - AD TOPPING SLAB - SWB5 - GL 32.5-33 - J-K - L4/E,Complete,SWB - 5,West Support Building,SUWN-5 - 30-33,DS/AD,,CONSTRUCTION,BAKER,SOMD,CONCRETE,,2025-06-16 07:00,2025-06-18 17:00,2025-03-14 07:00,2025-03-20 17:00,2025-11-20 17:00,2025-11-20 17:00,2025-12-05 17:00,2025-12-05 17:00,0,30,100
CN.SWB5.9490,TAPE & FINISH DRYWALL - SWB-5 - L1 only - GCS STORAGE GL 30-33 K-N - SECAI TOOK OVER FOR ACCELERATION,Complete,SWB - 5,East Support Building,SUWN-5 - 30-33,L1 - Fndn Slab,GCS STORAGE ,CONSTRUCTION,CHERRY COATING,DRYWALL,AMBER CARO,INTERIORS,2025-06-23 07:00,2025-06-27 17:00,2025-06-27 07:00,2025-06-27 17:00,2025-11-20 17:00,2025-11-20 17:00,2025-12-01 07:00,2025-12-01 07:00,0,50,100
CN.SWB5.9480,DRYWALL 2 SIDE - SWB-5 - L1 only - GCS STORAGE GL 30-33 K-N - SECAI TOOK OVER FOR ACCELERATION,Complete,SWB - 5,East Support Building,SUWN-5 - 30-33,L1 - Fndn Slab,GCS STORAGE ,CONSTRUCTION,BERG,DRYWALL,AMBER CARO,INTERIORS,2025-06-27 07:00,2025-06-27 17:00,2025-06-27 07:00,2025-06-27 17:00,2025-11-20 17:00,2025-11-20 17:00,2025-12-01 07:00,2025-12-01 07:00,0,10,100
CN.SWB5.9470,REMAINING DRYWALL & FINISHES - SWB-5 - L1 - FIRE ALARM 5 - GL 30-33 K-N,Complete,SWB - 5,East Support Building,SUWN-5 - 30-33,L1 - Fndn Slab,FIRE ALARM ,CONSTRUCTION,,DRYWALL,AMBER CARO,INTERIORS,2024-11-02 07:00,2024-11-08 17:00,2024-10-08 07:00,2024-10-29 17:00,2025-11-20 17:00,2025-11-20 17:00,2025-12-05 17:00,2025-12-05 17:00,0,60,100
CN.SWB5.9510,REMAINING DRYWALL & FINISHES  - SWB-5 - L2 - FIRE ALARM 22 GL 5-6 A/B,Complete,SWB - 5,East Support Building,SUES-5 - 6-1 - FIZ - GL A -E,L2 - SubFab Level,FIRE ALARM ,CONSTRUCTION,,DRYWALL,AMBER CARO,INTERIORS,2024-11-03 07:00,2024-11-09 17:00,2024-05-27 07:00,2025-10-13 07:00,2025-12-05 17:00,2025-12-05 17:00,2025-12-05 17:00,2025-12-05 17:00,0,60,100
CN.SWB5.9550,REMAINING DRYWALL & FINISHES  - SWB-5 - L2 - FIRE ALARM 20 -  GL 30-33 K-N,Complete,SWB - 5,East Support Building,SUES-1 - 19-16,L2 - SubFab Level,FIRE ALARM ,CONSTRUCTION,CHERRY COATING,DRYWALL,AMBER CARO,INTERIORS,2024-08-28 07:00,2024-09-06 17:00,2024-08-12 07:00,2024-08-19 17:00,2025-11-20 17:00,2025-11-20 17:00,2025-12-05 17:00,2025-12-05 17:00,0,70,100
CN.SWB5.9580,TAPE & FINISH DRYWALL - SEB-5 - L2 - FIRE ALARM 18 GL 32-33  A-B - B/33 FA room,Not Started,SWB - 5,East Support Building,SUEN-5 - 31-33,L2 - SubFab Level,FIRE ALARM ,CONSTRUCTION,CHERRY COATING,DRYWALL,AMBER CARO,INTERIORS,2025-11-21 07:00,2025-12-01 17:00,,,2025-11-21 07:00,2025-12-01 17:00,2025-12-01 07:00,2025-12-05 17:00,50,50,0
CN.SWB5.9570,FRAMING & DRYWALL (1 side) - SEB-5 - L2 - FIRE ALARM 18 GL 32-33 A-B - B/33 FA room,Complete,SWB - 5,East Support Building,SUEN-5 - 31-33,L2 - SubFab Level,FIRE ALARM ,CONSTRUCTION,,DRYWALL,AMBER CARO,INTERIORS,2025-09-02 07:00,2025-09-02 17:00,2025-09-02 07:00,2025-09-02 17:00,2025-11-20 17:00,2025-11-20 17:00,2025-12-01 07:00,2025-12-01 07:00,0,10,100
CN.SWB5.9590,REMAINING DRYWALL & FINISHES  - SWB-5 - L2 - FIRE ALARM 1 GL 4-5  K-L,Complete,SWB - 5,East Support Building,FIZ 2 / SUWS 5  (GL6-1) - GL J - N - DATA CENTER 1,L2 - SubFab Level,FIRE ALARM ,CONSTRUCTION,,DRYWALL,AMBER CARO,INTERIORS,2024-09-10 07:00,2024-09-16 13:00,2024-08-03 07:00,2024-08-07 13:00,2025-11-20 17:00,2025-11-20 17:00,2025-12-05 17:00,2025-12-05 17:00,0,56,100
CN.SWB5.9630,TAPE & FINISH DRYWALL - SWB-5 - L2 - FIRE ALARM 11 GL 30-31  K-L,Complete,SWB - 5,East Support Building,SUWN-5 - 30-33,L2 - SubFab Level,FIRE ALARM ,CONSTRUCTION,CHERRY COATING,DRYWALL,AMBER CARO,INTERIORS,2024-09-03 07:00,2024-09-09 17:00,2024-09-03 07:00,2024-09-07 17:00,2025-11-20 17:00,2025-11-20 17:00,2025-12-05 17:00,2025-12-05 17:00,0,50,100
CN.SWB5.9620,FRAMING & DRYWALL - SWB-5 - L2 - FIRE ALARM 5 GL 30-31 K-L,Complete,SWB - 5,East Support Building,SUWN-5 - 30-33,L2 - SubFab Level,FIRE ALARM ,CONSTRUCTION,,DRYWALL,AMBER CARO,INTERIORS,2024-08-26 07:00,2024-08-31 17:00,2024-08-26 07:00,2024-08-31 17:00,2025-11-20 17:00,2025-11-20 17:00,2025-12-05 17:00,2025-12-05 17:00,0,60,100
CN.AB.AR.7080,INSTALL GOAL POSTS - ELEVATOR 5 HALLWAY - SWB-5 - L3 - GL 30-33 K-N,Not Started,SWB - 5,West Support Building,SUWN-5 - 30-33,L3 / Waffle Slab Level,,CONSTRUCTION,BERG,DRYWALL,AMBER CARO,INTERIORS,2025-11-21 07:00,2025-11-24 17:00,,,2025-11-21 07:00,2025-11-24 17:00,2025-11-25 07:00,2025-11-26 17:00,20,20,0
CN.SWB5.9650,REMAINING DRYWALL & FINISHES  - SWB-5 - L2 - IT/SECURITY  20 -  GL 18-19 K-N,Complete,SWB - 5,East Support Building,SUES-1 - 19-16,L2 - SubFab Level,IT/SECURITY,CONSTRUCTION,CHERRY COATING,DRYWALL,AMBER CARO,INTERIORS,2024-08-23 07:00,2024-08-29 17:00,2024-08-01 07:00,2024-08-08 17:00,2025-11-20 17:00,2025-11-20 17:00,2025-12-05 17:00,2025-12-05 17:00,0,50,100
CN.SWB5.9660,REMAINING DRYWALL & FINISHES  - SWB-5 - L2 - IT/SECURITY 1 GL 4-5  K-L,Complete,SWB - 5,East Support Building,FIZ 2 / SUWS 5  (GL6-1) - GL J - N - DATA CENTER 1,L2 - SubFab Level,IT/SECURITY,CONSTRUCTION,,DRYWALL,AMBER CARO,INTERIORS,2024-08-03 07:00,2024-08-09 13:00,2024-08-03 07:00,2024-08-07 13:00,2025-11-20 17:00,2025-11-20 17:00,2025-12-05 17:00,2025-12-05 17:00,0,56,100
CN.SWB5.9670,IMPACT - REMEDY - SECAI TRADES WORKING ABOVE THE AREA -SWB5 L2 GL 30-33 K LINE,Complete,SWB - 5,West Support Building,SUWN-5 - 30-33,L2 - SubFab Level,DS/AD INTERIORS,CONSTRUCTION,BERG,DRYWALL,FIZ DATA CENTER,INTERIORS,2024-07-22 07:00,2024-07-25 17:00,2024-07-22 07:00,2024-09-19 17:00,2025-11-20 17:00,2025-11-20 17:00,2025-11-26 07:00,2025-11-26 07:00,0,40,100
CN.SWB5.9760,INSTALL GOAL POSTS - 5C ELEVATOR 5 - SWB5 - L2,Complete,SWB - 5,West Support Building,SUWN-5 - 30-33,L2 - SubFab Level,ELEVATOR,CONSTRUCTION,BERG,DRYWALL,,INTERIORS,2024-08-12 07:00,2024-08-27 17:00,2024-08-12 07:00,2024-08-16 17:00,2025-11-20 17:00,2025-11-20 17:00,2025-11-24 07:00,2025-11-24 07:00,0,100,100
CN.SWB5.9790,IMPACT - SECAI CABLE TRAY IN THE WAY - AWAITING NEW PLAN - L2 - FIRE ALARM 1 GL 4-5 K-L,Complete,SWB - 5,East Support Building,FIZ 2 / SUWS 5  (GL6-1) - GL J - N - DATA CENTER 1,L2 - SubFab Level,FIRE ALARM ,CONSTRUCTION,,DRYWALL,AMBER CARO,INTERIORS,2024-04-02 07:00,2024-04-07 13:00,2024-04-02 07:00,2024-08-01 13:00,2025-11-20 17:00,2025-11-20 17:00,2025-12-05 17:00,2025-12-05 17:00,0,56,100
CN.SWB5.9800,REMAINING DRYWALL & FRAMING - SWB-5 - L2 - PR LIFTER RM 18 GL 32-33 A-B,Not Started,SWB - 5,East Support Building,SUEN-5 - 31-33,L2 - SubFab Level,PR RM,CONSTRUCTION,,DRYWALL,AMBER CARO,INTERIORS,2025-11-21 07:00,2025-11-21 17:00,,,2025-11-21 07:00,2025-11-21 17:00,2025-12-05 07:00,2025-12-05 17:00,10,10,0
CN.SWB5.9860,DS ROOF PARAPET DRY IN - SWB5 - GL 30-33 - K-L - L6 - NORTH WEST PENTHOUSE(2 Sides REMAINING),Complete,SWB - 5,West Support Building,NORTH WEST PENTHOUSE,L5 - SUP L5,,CONSTRUCTION,BRAZOS,Waterproofing - Preferred,JAMES LIVELY,,2024-10-21 07:00,2024-11-08 17:00,2024-10-21 07:00,2025-10-21 07:00,2025-11-20 17:00,2025-11-20 17:00,2025-11-25 07:00,2025-11-25 07:00,0,120,100
CN.AB.AR.7400,IMPACT - NEED TO MODIFY SHOP DRAWININGS FOR CONNECTIONS OVER GRATING - ELEVATOR 5 HALLWAY - SWB-5 - L3 - GL 30-33 K-N,Active,SWB - 5,West Support Building,SUWN-5 - 30-33,L3 / Waffle Slab Level,,CONSTRUCTION,BERG,DRYWALL,AMBER CARO,INTERIORS,2024-08-16 07:00,2024-08-27 17:00,2024-07-15 07:00,,2025-11-21 07:00,2025-11-21 07:00,2025-11-24 17:00,2025-11-24 17:00,0,70,0
CN.SWB5.9920,SHAFT LINER SHOPS/EJ/APPROVAL & MATERIAL PROCUREMENT - ELEVATOR SHAFTS,Complete,SWB - 5,West Support Building,SUWN-5 - 30-33,,ELEVATOR,CONSTRUCTION,BERG,DRYWALL,,INTERIORS,2024-08-26 07:00,2024-09-09 17:00,2024-08-22 07:00,2024-08-26 17:00,2025-11-20 17:00,2025-11-20 17:00,2025-10-16 07:00,2025-10-16 07:00,0,100,100
CN.SWB5.9930,COMPLETE FRAMING/DRYWALL/TAPE+FLOAT - MECHANICAL ROOM - ELEVATOR 5 (MK MARLOW),Complete,SWB - 5,West Support Building,SUWN-5 - 30-33,,ELEVATOR,CONSTRUCTION,BERG,DRYWALL,,INTERIORS,2024-09-05 07:00,2024-09-24 17:00,2024-08-12 07:00,2024-11-20 17:00,2025-11-20 17:00,2025-11-20 17:00,2025-10-16 07:00,2025-10-16 07:00,0,120,100
CN.SWB5.9960,"COORDINATE, MOBILIZE & ERECT SCAFFOLD FOR SHAFT LINER - LVL 4 - ELEVATOR 5",Complete,SWB - 5,West Support Building,SUWN-5 - 30-33,,ELEVATOR,CONSTRUCTION,BERG,DRYWALL,,INTERIORS,2024-09-06 07:00,2024-09-10 17:00,2024-09-11 07:00,2024-10-03 17:00,2025-11-20 17:00,2025-11-20 17:00,2025-10-16 07:00,2025-10-16 07:00,0,30,100
CN.SWB5.9970,INSTALL SHAFT LINER - LVL 4 - ELEVATOR 5 (WORK OFF OF SCAFFOLD),Complete,SWB - 5,West Support Building,SUWN-5 - 30-33,,ELEVATOR,CONSTRUCTION,BERG,DRYWALL,,INTERIORS,2024-10-17 07:00,2024-10-25 17:00,2024-10-17 07:00,2024-10-23 17:00,2025-11-20 17:00,2025-11-20 17:00,2025-10-16 07:00,2025-10-16 07:00,0,60,100
CN.SWB5.10360,PAINT BOLTS & INSTALL INSULATED METAL PANEL MODULES - GL 31-33 - N LINE - ABOVE & BELOW TRESTLE,Complete,SWB - 5,West Support Building,SUWN-5 - 30-33,EXTERIOR SKIN,,CONSTRUCTION,KOVACH,INSULATED METAL PANELS,JAMES LIVELY,,2024-12-09 07:00,2024-12-26 17:00,2024-12-09 07:00,2025-02-12 17:00,2025-11-20 17:00,2025-11-20 17:00,2025-12-05 17:00,2025-12-05 17:00,0,100,100
CN.SWB5.10370,CCD 113- PATRIOT DRILL/EPOXY HOLES & ERECT BEAMS GL 31-33 - N LINE [SUP EXTERIOR WALL] - TRESTLE (precast embed clash),Complete,SWB - 5,,SUWN-5 - 30-33,EXTERIOR SKIN,,CONSTRUCTION,PATRIOT,INSULATED METAL PANELS,,,2024-10-21 07:00,2024-10-28 17:00,2024-10-17 07:00,2024-10-23 17:00,2025-11-20 17:00,2025-11-20 17:00,2025-12-05 17:00,2025-12-05 17:00,0,50,100
CN.SWB5.10380,CCD 113 - PATRIOT DETAIL & ERECT REMAINING DS STEEL - GL 31-33 - N LINE [SUP EXTERIOR WALL] - TRESTLE,Complete,SWB - 5,,SUWN-5 - 30-33,EXTERIOR SKIN,,CONSTRUCTION,PATRIOT,INSULATED METAL PANELS,,,2024-11-04 07:00,2024-11-22 17:00,2024-10-24 07:00,2024-12-03 17:00,2025-11-20 17:00,2025-11-20 17:00,2025-12-05 17:00,2025-12-05 17:00,0,120,100
CN.SWB5.10440,TAPE & FINISH I/O ROOM EXTERIOR  (2hr) - NW PENTHOUSE,Not Started,SWB - 5,East Support Building,NORTH WEST PENTHOUSE,L4 - SUP Roof - FAB Roof,,CONSTRUCTION,BERG,TBD Architectural Finishes,SEAN MONK,,2025-11-24 07:00,2025-11-26 17:00,,,2025-11-24 07:00,2025-11-26 17:00,2025-11-18 07:00,2025-11-20 17:00,30,30,0
CN.SWB5.10450,IMPACT - ELECTRICAL OPENING - WALL ON HOLD FOR SECAI MEP ACCESS - I/O ROOM - NW PENTHOUSE,Complete,SWB - 5,East Support Building,NORTH WEST PENTHOUSE,L4 - SUP Roof - FAB Roof,,CONSTRUCTION,BERG,TBD Architectural Finishes,SEAN MONK,,2024-08-12 07:00,2024-08-15 17:00,2024-11-01 07:00,2025-05-30 17:00,2025-11-20 17:00,2025-11-20 17:00,2025-11-20 17:00,2025-11-20 17:00,0,30,100
CN.SWB5.10460,IMPACT - SECAI MEP MATERIAL IN THE WAY (2hr) - FIRE ALARM ROOM & IT/SECURITY ROOM 5 - NW PENTHOUSE,Complete,SWB - 5,East Support Building,NORTH WEST PENTHOUSE,L4 - SUP Roof - FAB Roof,,CONSTRUCTION,BERG,TBD Architectural Finishes,SEAN MONK,,2024-08-12 07:00,2024-08-16 17:00,2024-08-12 07:00,2024-11-25 17:00,2025-11-20 17:00,2025-11-20 17:00,2025-11-18 07:00,2025-11-18 07:00,0,40,100
CN.SWB5.10560,IIMPACT - WEATHER DELAY FOR COATING - GL 29-31 - L4 - L-N - ROOF,Complete,SWB - 5,West Support Building,SUWN-5 - 30-33,L4 - SUP Roof - FAB Roof,,CONSTRUCTION,BRAZOS,TOPPING,SEAN MONK,SOMD / Roofing / Waterproofing,2024-10-28 07:00,2024-11-01 17:00,2024-10-26 07:00,2024-10-31 17:00,2025-11-20 17:00,2025-11-20 17:00,2025-12-05 17:00,2025-12-05 17:00,0,40,100
CN.AB.AR.7780,FINISH DRYWALL & FINISHES - AIRLOCK 5 - SWB-5 - L3 GL 30-33 K-N,Complete,SWB - 5,West Support Building,SUWN-5 - 30-33,L3 / Waffle Slab Level,AIRLOCKS & VESTABLES,CONSTRUCTION,CHERRY COATING,DRYWALL,AMBER CARO,INTERIORS,2025-01-23 07:00,2025-01-30 17:00,2025-01-23 07:00,2025-02-03 17:00,2025-11-20 17:00,2025-11-20 17:00,2025-12-01 07:00,2025-12-01 07:00,0,60,100
CN.AB.AR.7800,IMPACT - MEP MATERIAL & TRADES IN WAY - BUCKHOIST ENTRYJ33 AIRLOCK ROOM - SWB-5 - L3 - GL 30-33 K-N,Complete,SWB - 5,West Support Building,SUWN-5 - 30-33,L3 / Waffle Slab Level,CRT LAB,CONSTRUCTION,BERG,DRYWALL,AMBER CARO,INTERIORS,2024-08-16 07:00,2024-08-27 17:00,2024-10-24 07:00,2025-01-20 17:00,2025-11-20 17:00,2025-11-20 17:00,2025-12-01 07:00,2025-12-01 07:00,0,70,100
CN.SWB5.10590,IMPACT - MISSING CRICKET- WATERPROOFING ON HOLD - GL 29-31 - L4 - L-N - ROOF,Complete,SWB - 5,West Support Building,SUWN-5 - 30-33,L4 - SUP Roof - FAB Roof,,CONSTRUCTION,BRAZOS,TOPPING,SEAN MONK,SOMD / Roofing / Waterproofing,2024-11-01 07:00,2024-11-04 17:00,2024-11-04 07:00,2024-11-08 17:00,2025-11-20 17:00,2025-11-20 17:00,2025-12-05 17:00,2025-12-05 17:00,0,20,100
CN.SWB5.10600,ALPHA PAINT CLADDING STEEL & BOLTS - GL 31-33 - N LINE WEST WALL - PENTHOUSE],Complete,SWB - 5,West Support Building,SUWN-5 - 30-33,EXTERIOR SKIN,,CONSTRUCTION,KOVACH,INSULATED METAL PANELS,JAMES LIVELY,,2024-12-09 07:00,2024-12-13 17:00,2024-12-09 07:00,2024-12-27 17:00,2025-11-20 17:00,2025-11-20 17:00,2025-12-05 17:00,2025-12-05 17:00,0,40,100
CN.SWB5.10740,IMPACT - TEMP POWER CABLES IN THE WAY L/ 32 - NW PENTHOUSE,Complete,SWB - 5,East Support Building,NORTH WEST PENTHOUSE,L4 - SUP Roof - FAB Roof,,CONSTRUCTION,BERG,DRYWALL,SEAN MONK,,2024-11-01 07:00,2024-11-07 17:00,2024-11-01 07:00,2025-05-30 17:00,2025-11-20 17:00,2025-11-20 17:00,2025-11-18 07:00,2025-11-18 07:00,0,40,100
CN.AB.AR.8470,FINISH DRYWALL & FINISHES - VESTIBULE 5 - SWB-5 - L3 GL 30-33 K-N,Complete,SWB - 5,West Support Building,SUWN-5 - 30-33,L3 / Waffle Slab Level,AIRLOCKS & VESTABLES,CONSTRUCTION,CHERRY COATING,DRYWALL,AMBER CARO,INTERIORS,2025-02-05 07:00,2025-02-13 17:00,2025-02-05 07:00,2025-07-25 17:00,2025-11-20 17:00,2025-11-20 17:00,2025-12-05 17:00,2025-12-05 17:00,0,70,100
CN.SWB5.10760,IMPACT RFI 1678 PENETRATIONDETAIL AT DUCT SHAFT STEEL - GL 31-33 - N LINE - ABOVE TRESTLE,Complete,SWB - 5,West Support Building,SUWN-5 - 30-33,EXTERIOR SKIN,,CONSTRUCTION,KOVACH,INSULATED METAL PANELS,JAMES LIVELY,,2024-12-09 07:00,2024-12-26 17:00,2024-12-09 07:00,2025-02-03 17:00,2025-11-20 17:00,2025-11-20 17:00,2025-11-13 07:00,2025-11-13 07:00,0,100,100
CN.SWB5.10780,"IMPACT RFI 1678 PENETRATIONDETAIL AT DUCT SHAFT STEEL IOCC APPROVAL, FAB - GL 31-33 - N LINE - ABOVE TRESTLE",Complete,SWB - 5,West Support Building,SUWN-5 - 30-33,EXTERIOR SKIN,,CONSTRUCTION,KOVACH,INSULATED METAL PANELS,JAMES LIVELY,,2025-02-04 07:00,2025-02-17 17:00,2025-02-04 07:00,2025-02-28 17:00,2025-11-20 17:00,2025-11-20 17:00,2025-11-13 07:00,2025-11-13 07:00,0,100,100
CN.SWB5.10790,IMPACT RFI 1678 INSTALL STEEL & IMP - GL 31-33 - N LINE - ABOVE TRESTLE,Complete,SWB - 5,West Support Building,SUWN-5 - 30-33,EXTERIOR SKIN,,CONSTRUCTION,KOVACH,INSULATED METAL PANELS,JAMES LIVELY,,2025-03-04 07:00,2025-03-19 17:00,2025-03-04 07:00,2025-06-25 17:00,2025-11-20 17:00,2025-11-20 17:00,2025-11-13 07:00,2025-11-13 07:00,0,120,100
CN.AB.AR.8630,FINISH DRYWALL & FINISHES - ELEVATOR 5 HALLWAY - SWB-5 - L3 - GL 30-33 K-N,Complete,SWB - 5,West Support Building,SUWN-5 - 30-33,L3 / Waffle Slab Level,,CONSTRUCTION,BERG,DRYWALL,AMBER CARO,INTERIORS,2025-09-08 07:00,2025-09-19 17:00,2025-09-08 07:00,2025-09-19 17:00,2025-11-20 17:00,2025-11-20 17:00,2025-12-05 17:00,2025-12-05 17:00,0,100,100
CN.AB.AR.8640,IMPACT - MEP MATERIAL IMPENDING THE WORK - ELEVATOR 5 HALLWAY - SWB-5 - L3 - GL 30-33 K-N,Complete,SWB - 5,West Support Building,SUWN-5 - 30-33,L3 / Waffle Slab Level,,CONSTRUCTION,BERG,DRYWALL,AMBER CARO,INTERIORS,2025-01-27 07:00,2025-02-04 17:00,2025-01-25 07:00,2025-09-05 17:00,2025-11-20 17:00,2025-11-20 17:00,2025-12-05 17:00,2025-12-05 17:00,0,70,100
CN.SWB5.10840,FRAMING & DRYWALL COLUMN N33 M33 - NW PENTHOUSE,Complete,SWB - 5,East Support Building,NORTH WEST PENTHOUSE,L4 - SUP Roof - FAB Roof,,CONSTRUCTION,BERG,DRYWALL,SEAN MONK,,2025-07-14 07:00,2025-07-17 17:00,2025-07-14 07:00,2025-07-25 17:00,2025-11-20 17:00,2025-11-20 17:00,2025-11-18 07:00,2025-11-18 07:00,0,40,100
CN.SWB5.10850,PH1- IMPACT - AXIOS DEMO'ED L32 SHAFT WALL - NEED REWORK - FIRE ALARM ROOM & IT/SECURITY ROOM 5 - NW PENTHOUSE,Complete,SWB - 5,East Support Building,NORTH WEST PENTHOUSE,L4 - SUP Roof - FAB Roof,,CONSTRUCTION,BERG,TBD Architectural Finishes,SEAN MONK,,2025-02-27 07:00,2025-03-04 17:00,2025-02-19 07:00,2025-03-01 17:00,2025-11-20 17:00,2025-11-20 17:00,2025-11-18 07:00,2025-11-18 07:00,0,40,100
CN.SWB5.10860,IMPACT - ELECTRICAL OPENING - WALL ON HOLD FOR SECAI MEP ACCESS - I/O ROOM - NE PENTHOUSE,Complete,SWB - 5,East Support Building,NORTH EAST PENTHOUSE,L4 - SUP Roof - FAB Roof,,CONSTRUCTION,BERG,TBD Architectural Finishes,SEAN MONK,,2024-08-12 07:00,2024-08-15 17:00,2024-11-01 07:00,2025-03-01 17:00,2025-11-20 17:00,2025-11-20 17:00,2025-11-24 07:00,2025-11-24 07:00,0,30,100
CN.SWB5.10870,ALPHA PRIMER & PAINT TOUCH-UP GOAL POST - ELEVATOR 5 - EXCEPT L1,Complete,SWB - 5,West Support Building,SUWN-5 - 30-33,,ELEVATOR,CONSTRUCTION,W&W,DRYWALL,,INTERIORS,2025-09-08 07:00,2025-09-26 17:00,2025-07-25 14:30,2025-08-05 17:00,2025-11-20 17:00,2025-11-20 17:00,2025-11-24 07:00,2025-11-24 07:00,0,150,100
CN.SWB5.10930,IMPACT - DESIGN STAIR 5 & 18 INSTALL TPO ROOFING 8 FEET FROM 33 LINE - SWB5 - GL 30-33 - K-L - L6 - NORTHWEST PENTHOUSE,Complete,SWB - 5,West Support Building,NORTH WEST PENTHOUSE,,,CONSTRUCTION,BRAZOS,Waterproofing - Preferred,JAMES LIVELY,,2025-10-10 07:00,2025-10-10 17:00,2025-05-20 07:00,2025-09-12 17:00,2025-11-20 17:00,2025-11-20 17:00,2025-11-25 07:00,2025-11-25 07:00,0,10,100
CN.SWB5.10950,SECAI TAKE OVER 10/1 - ALPHA PRIMER & PAINT TOUCH-UP C CHANNEL EDGE ARMOUR - ELEVATOR 5 - SECAI SCOPE 10/03,Not Started,SWB - 5,West Support Building,SUWN-5 - 30-33,,ELEVATOR,CONSTRUCTION,W&W,DRYWALL,,INTERIORS,2026-01-29 07:00,2026-02-04 17:00,,,2026-01-29 07:00,2026-02-04 17:00,2025-12-01 07:00,2025-12-05 17:00,50,50,0
CN.A1.UG.1090,PH1- UNDERGROUND PLUMBING SEA1,Complete,SEA - 1,East Support Building,SUES-1 - 19-16,L1 - Fndn Slab,,CONSTRUCTION,,Underground Plumbing - Cobb,ANDREA SOLIS,,2022-10-10 15:00,2022-10-15 15:00,2022-10-10 15:00,2022-10-15 16:00,2025-11-20 17:00,2025-11-20 17:00,2025-06-13 08:00,2025-06-13 08:00,0,40,100
CN.A1.UG.1100,PH1- UNDERGROUND ELECTRICAL SEA1,Complete,SEA - 1,East Support Building,SUES-1 - 19-16,L1 - Fndn Slab,,CONSTRUCTION,,Underground Electrical - (By Owner),ANDREA SOLIS,,2022-10-01 08:00,2022-10-05 08:00,2022-10-01 08:00,2022-10-06 09:00,2025-11-20 17:00,2025-11-20 17:00,2025-06-13 08:00,2025-06-13 08:00,0,40,100
CN.SEA1.1000,PH1- SUP - EXCAVATE PIER CAPS - SEA1,Complete,SEA - 1,East Support Building,SUES-1 - 19-16,L1 - Fndn Slab,,CONSTRUCTION,,Excavate CIP,ANDREA SOLIS,,2022-09-27 07:00,2022-09-29 11:00,2022-09-27 07:00,2022-09-29 11:00,2025-11-20 17:00,2025-11-20 17:00,2025-06-13 08:00,2025-06-13 08:00,0,24,100
CN.SEA1.1010,PH1-FRP GRADE BEAM- SEA1,Complete,SEA - 1,East Support Building,SUES-1 - 19-16,L1 - Fndn Slab,,CONSTRUCTION,,Pour Concrete,ANDREA SOLIS,,2022-10-06 09:00,2022-10-10 09:00,2022-10-06 09:00,2022-10-11 11:00,2025-11-20 17:00,2025-11-20 17:00,2025-06-13 08:00,2025-06-13 08:00,0,40,100
CN.SEA1.1080,PH1- FRP SLAB - SEA-1-L3,Complete,SEA - 1,East Support Building,SUES-1 - 19-16,L3 / Waffle Slab Level,,CONSTRUCTION,,SOMD,CONCRETE,,2023-08-03 09:00,2023-08-05 13:00,2023-07-26 09:00,2023-07-28 09:00,2025-11-20 17:00,2025-11-20 17:00,2025-11-10 07:00,2025-11-10 07:00,0,24,100
CN.SEA1.1120,PH1- FRP SLAB - SEA-1-ROOF,Complete,SEA - 1,East Support Building,SUES-1 - 19-16,L4 - SUP Roof - FAB Roof,,CONSTRUCTION,,SOMD,CONCRETE,SOMD / Roofing / Waterproofing,2023-07-03 07:00,2023-07-03 11:00,2023-07-01 07:00,2023-07-02 11:00,2025-11-20 17:00,2025-11-20 17:00,2025-06-13 08:00,2025-06-13 08:00,0,4,100
CN.SEA1.1030,PH1-BLACK BASE (NOW RAT SLAB) - SEA1,Complete,SEA - 1,East Support Building,SUES-1 - 19-16,L1 - Fndn Slab,,CONSTRUCTION,,RAT SLAB,ANDREA SOLIS,,2022-10-10 15:00,2022-10-14 09:00,2022-10-10 15:00,2022-10-14 09:00,2025-11-20 17:00,2025-11-20 17:00,2025-06-13 08:00,2025-06-13 08:00,0,24,100
CN.SEA1.1020,PH1-CURE PIER CAPS - SEA1,Complete,SEA - 1,East Support Building,SUES-1 - 19-16,L1 - Fndn Slab,,CONSTRUCTION,,Concrete Cure,ANDREA SOLIS,,2022-10-10 15:00,2022-10-10 15:00,2022-10-10 15:00,2022-10-10 15:00,2025-11-20 17:00,2025-11-20 17:00,2025-06-13 08:00,2025-06-13 08:00,0,0,100
CN.SEA1.1130,PH1- CURE SOMD - SEA-1-ROOF,Complete,SEA - 1,East Support Building,SUES-1 - 19-16,L4 - SUP Roof - FAB Roof,,CONSTRUCTION,,Concrete Cure,JAMES LEE,SOMD / Roofing / Waterproofing,2023-07-03 11:00,2023-07-07 15:00,2023-07-02 11:00,2023-07-02 11:00,2025-11-20 17:00,2025-11-20 17:00,2025-06-13 08:00,2025-06-13 08:00,0,24,100
CN.SEA1.1090,PH1- 1st FLOOR SLAB - SEA-1-L1,Complete,SEA - 1,East Support Building,SUES-1 - 19-16,L1 - Fndn Slab,,CONSTRUCTION,,Pour Concrete,ANDREA SOLIS,,2022-10-14 09:00,2022-10-22 10:00,2022-10-14 09:00,2022-10-24 14:00,2025-11-20 17:00,2025-11-20 17:00,2025-06-13 08:00,2025-06-13 08:00,0,71,100
CN.SEA1.1200,FRP TOPPING SLAB - SEA1 - GL 20-17 - C-A - L4 ROOF,Complete,SEA - 1,East Support Building,SUES-1 - 19-16,L4 - SUP Roof - FAB Roof,,CONSTRUCTION,BAKER,TOPPING,CONCRETE,SOMD / Roofing / Waterproofing,2024-10-08 07:00,2024-10-14 17:00,2024-10-08 07:00,2024-10-09 17:00,2025-11-20 17:00,2025-11-20 17:00,2025-12-05 17:00,2025-12-05 17:00,0,40,100
CN.SEA1.1260,PH1- U/G - R/I - SPRINKLER & PLUMBING - SEA1,Complete,SEA - 1,East Support Building,SUES-1 - 19-16,L1 - Fndn Slab,,CONSTRUCTION,,U/G FIRE & PLUMBING,ANDREA SOLIS,,2022-09-06 07:00,2022-09-13 17:00,2022-09-05 12:00,2022-10-03 09:00,2025-11-20 17:00,2025-11-20 17:00,2025-06-13 08:00,2025-06-13 08:00,0,80,100
CN.SEA1.1050,TIER 1 ERECT PRECAST COLUMNS & BEAMS - SEA1 (C-Line column delivery delayed),Complete,SEA - 1,East Support Building,SUES-1 - 19-16,L3 / Waffle Slab Level,,CONSTRUCTION,,"SUP EAST A,B",SEAN MONK,,2023-01-31 08:00,2023-02-18 16:00,2023-01-17 07:00,2023-02-25 16:00,2025-11-20 17:00,2025-11-20 17:00,2025-06-13 08:00,2025-06-13 08:00,0,168,100
CN.SEA1.1140,PH1-ROOF LAYER PARAPET (FRAMING AND SHEAT RIP) - SEA1 - GL 19-16 - L4 - C-A,Complete,SEA - 1,East Support Building,SUES-1 - 19-16,L4 - SUP Roof - FAB Roof,,CONSTRUCTION,,FAB Subfab and Parapets,JAMES LIVELY,SOMD / Roofing / Waterproofing,2024-01-10 08:00,2024-01-12 11:00,2024-01-10 08:00,2024-01-11 14:00,2025-11-20 17:00,2025-11-20 17:00,2025-12-05 17:00,2025-12-05 17:00,0,16,100
CN.SEA1.1170,PH1 - CLADDING STEEL INTERIOR - GL 19-16 - D LINE (AD AREA) [Cranes Clashing],Complete,SEA - 1,East Support Building,SUES-1 - 19-16,EXTERIOR SKIN,,CONSTRUCTION,PATRIOT,INSULATED METAL PANELS,JAMES LIVELY,,2024-03-11 07:00,2024-03-20 14:00,2024-03-11 07:00,2024-04-05 17:00,2025-11-20 17:00,2025-11-20 17:00,2025-11-21 07:00,2025-11-21 07:00,0,47,100
CN.SEA1.1190,INSTALL INSULATED METAL PANEL MODULES - GL 19-16 - C LINE (DS AREA) (18~21),Complete,SEA - 1,East Support Building,SUES-1 - 19-16,EXTERIOR SKIN,,CONSTRUCTION,KOVACH,INSULATED METAL PANELS,JAMES LIVELY,,2024-04-19 07:00,2024-05-09 17:00,2024-04-16 07:00,2024-04-26 17:00,2025-11-20 17:00,2025-11-20 17:00,2025-10-29 07:00,2025-10-29 07:00,0,90,100
CN.SEA1.1150,PH1 - CLADDING STEEL - SEA-1 A LINE [SUP EXTERIOR WALL],Complete,SEA - 1,East Support Building,SUES-1 - 19-16,EXTERIOR SKIN,,CONSTRUCTION,,INSULATED METAL PANELS,JAMES LIVELY,,2023-08-26 08:00,2023-09-01 14:00,2023-08-26 08:00,2023-08-26 08:00,2025-11-20 17:00,2025-11-20 17:00,2025-09-04 07:00,2025-09-04 07:00,0,56,100
CN.SEA1.1180,INSTALL INSULATED METAL PANEL MODULES - GL 18-16 - A LINE [SUP EXTERIOR WALL],Complete,SEA - 1,East Support Building,SUES-1 - 19-16,EXTERIOR SKIN,,CONSTRUCTION,KOVACH,INSULATED METAL PANELS,JAMES LIVELY,,2024-08-13 07:00,2024-08-23 17:00,2024-08-07 07:00,2024-08-23 17:00,2025-11-20 17:00,2025-11-20 17:00,2025-09-04 07:00,2025-09-04 07:00,0,90,100
CN.SEA1.1110,PH1- AD STEEL FRAME INSTALL TIER 1 - SEA-1 fab side,Complete,SEA - 1,East Support Building,SUES-1 - 19-16,DS/AD,,CONSTRUCTION,,Steel Erection,SEAN MONK,,2023-06-10 14:00,2023-06-16 12:00,2023-05-09 16:00,2023-05-19 17:00,2025-11-20 17:00,2025-11-20 17:00,2025-06-13 08:00,2025-06-13 08:00,0,48,100
CN.AB.AR.1940,METAL STUD FRAMING (2hr) w DOOR FRAMES - SEA1 - GL 19-16 - L1 - C-A - (Leave Out holding work)- MECHANICAL ROOM 3 SOUTH,Complete,SEA - 1,East Support Building,SUES-1 - 19-16,L1 - Fndn Slab,MECH RM 2,CONSTRUCTION,BERG,TBD Architectural Finishes,AMBER CARO,INTERIORS,2024-01-06 11:00,2024-01-13 11:00,2024-01-06 11:00,2024-01-09 12:00,2025-11-20 17:00,2025-11-20 17:00,2025-11-24 07:00,2025-11-24 07:00,0,48,100
CN.AB.AR.3520,MEP ROUGH IN & INSPECTION (by SECAI) - SEA1 - GL 19-16 - L1 - C-A  -  MECHANICAL ROOM 3 SOUTH,Complete,SEA - 1,East Support Building,SUES-1 - 19-16,L1 - Fndn Slab,MECH RM 2,CONSTRUCTION,,TBD Architectural Finishes,AMBER CARO,,2024-01-10 13:00,2024-01-17 13:00,2024-01-10 13:00,2024-01-11 16:00,2025-11-20 17:00,2025-11-20 17:00,2025-11-24 07:00,2025-11-24 07:00,0,40,100
CN.AB.AR.3530,TAPE & FINISH DRYWALL - MECHANICAL ROOM 3 SOUTH - SEA1 - GL 19-16 - C-A - L1,Complete,SEA - 1,East Support Building,SUES-1 - 19-16,L1 - Fndn Slab,MECH RM 2,CONSTRUCTION,CHERRY COATING,DRYWALL,AMBER CARO,INTERIORS,2025-10-09 07:00,2025-10-15 17:00,2025-10-09 07:00,2025-10-15 17:00,2025-11-20 17:00,2025-11-20 17:00,2025-11-24 07:00,2025-11-24 07:00,0,50,100
CN.AB.AR.3580,INSTALL WALL PROTECTION - ELEVATOR HALL - GL 17-18 - A-C - L1,Not Started,SEA - 1,East Support Building,SUES-1 - 19-16,L1 - Fndn Slab,,CONSTRUCTION,BERNCO,TBD Architectural Finishes,JAMES LEE,INTERIORS,2025-11-21 07:00,2025-11-25 17:00,,,2025-11-21 07:00,2025-11-25 17:00,2025-11-24 07:00,2025-11-26 17:00,30,30,0
CN.AB.AR.3540,FINISH PAINT - MECHANICAL ROOM 3 SOUTH - SEA1 - GL 19-16 - C-A - L1,Not Started,SEA - 1,East Support Building,SUES-1 - 19-16,L1 - Fndn Slab,MECH RM 2,CONSTRUCTION,FINISH PAINT,TBD Architectural Finishes,JAMES LEE,INTERIORS,2025-11-21 07:00,2025-12-01 17:00,,,2025-11-21 07:00,2025-12-01 17:00,2025-12-01 07:00,2025-12-05 17:00,50,50,0
CN.SEA1.1320,PH1- DECKING GL 18 - 17 - SEA-1-ROOF,Complete,SEA - 1,East Support Building,SUES-1 - 19-16,L4 - SUP Roof - FAB Roof,,CONSTRUCTION,,Decking & Detail,SEAN MONK,SOMD / Roofing / Waterproofing,2023-06-26 07:00,2023-06-27 13:00,2023-06-26 07:00,2023-06-27 13:00,2025-11-20 17:00,2025-11-20 17:00,2025-06-13 08:00,2025-06-13 08:00,0,16,100
CN.SEA1.1330,PH1- DECKING L2 GL 18 - 15- SEA-1,Complete,SEA - 1,East Support Building,SUES-1 - 19-16,L3 / Waffle Slab Level,,CONSTRUCTION,,Decking & Detail,SEAN MONK,,2023-07-31 07:00,2023-08-01 13:00,2023-07-11 14:00,2023-07-15 16:00,2025-11-20 17:00,2025-11-20 17:00,2025-06-13 08:00,2025-06-13 08:00,0,16,100
CN.SEA1.1340,PH1- CIP WALL (DS) - SEA1,Complete,SEA - 1,East Support Building,SUES-1 - 19-16,L4 - SUP Roof - FAB Roof,,CONSTRUCTION,,CIP WALL,JAMES LIVELY,SOMD / Roofing / Waterproofing,2023-07-03 07:00,2023-07-07 11:00,2023-07-03 07:00,2023-07-07 11:00,2025-11-20 17:00,2025-11-20 17:00,2025-11-21 07:00,2025-11-21 07:00,0,24,100
CN.SEA1.2970,PH1- SET/ FIX ANCHOR BOLTS - SEA-1-L1,Complete,SEA - 1,East Support Building,SUES-1 - 19-16,L1 - Fndn Slab,,CONSTRUCTION,,Waterproofing - Preferred,JAMES LIVELY,SOMD / Roofing / Waterproofing,2023-04-24 07:00,2023-04-27 11:00,2023-04-24 07:00,2023-04-27 11:00,2025-11-20 17:00,2025-11-20 17:00,2025-06-13 08:00,2025-06-13 08:00,0,24,100
CN.SEA1.2980,PH1- TOPPING SLAB w TRENCH & ANGLE EMBEDS- SEA-1-L1 GL 18 - 20,Complete,SEA - 1,East Support Building,SUES-1 - 19-16,L1 - Fndn Slab,,CONSTRUCTION,,TOPPING,CONCRETE,,2023-10-09 07:00,2023-10-11 11:00,2023-10-09 07:00,2023-10-11 11:00,2025-11-20 17:00,2025-11-20 17:00,2025-11-24 07:00,2025-11-24 07:00,0,24,100
CN.SEA1.2990,PH1- DS/AD DETAILING & DECKING  SEA-1GL C-E GL 18 - 15 - L2,Complete,SEA - 1,East Support Building,SUES-1 - 19-16,DS/AD,,CONSTRUCTION,,Decking & Detail,SEAN MONK,,2023-10-09 07:00,2023-10-13 15:00,2023-10-02 07:00,2023-10-25 17:30,2025-11-20 17:00,2025-11-20 17:00,2025-06-13 08:00,2025-06-13 08:00,0,48,100
CN.SEA1.3000,PH1- DS/AD FRP SLAB - SEA1 - GL 19-16 -L4/E - C-E,Complete,SEA - 1,East Support Building,SUES-1 - 19-16,DS/AD,,CONSTRUCTION,,SOMD,CONCRETE,,2024-01-06 10:00,2024-01-07 16:00,2024-01-06 10:00,2024-01-12 09:00,2025-11-20 17:00,2025-11-20 17:00,2025-06-13 08:00,2025-06-13 08:00,0,16,100
CN.SEA1.3010,AD WATERPROOFING - SEA1 - GL 19-16 - D-E - L4/E,Complete,SEA - 1,East Support Building,SUES-1 - 19-16,DS/AD,,CONSTRUCTION,BRAZOS,INSULATED METAL PANELS,SEAN MONK,,2024-08-20 07:00,2024-09-06 17:00,2024-07-24 07:00,2024-08-11 17:00,2025-11-20 17:00,2025-11-20 17:00,2025-12-05 17:00,2025-12-05 17:00,0,120,100
CN.SEA1.3020,AD TOPPING SLAB - SEA1 - GL 19-16 - D-E - L4/E,Complete,SEA - 1,East Support Building,SUES-1 - 19-16,DS/AD,,CONSTRUCTION,BAKER,INSULATED METAL PANELS,CONCRETE,,2024-08-27 07:00,2024-08-29 17:00,2024-08-12 07:00,2024-08-14 17:00,2025-11-20 17:00,2025-11-20 17:00,2025-12-05 17:00,2025-12-05 17:00,0,30,100
TIER 21.1050,TIER 2 ERECT PRECAST COLUMNS & BEAMS - SEA1 (C-Line column delivery delayed),Complete,SEA - 1,East Support Building,SUES-1 - 19-16,L4 - SUP Roof - FAB Roof,,CONSTRUCTION,,"SUP EAST A,B",SEAN MONK,,2023-06-22 11:00,2023-06-24 15:00,2023-06-22 11:00,2023-06-24 16:00,2025-11-20 17:00,2025-11-20 17:00,2025-06-13 08:00,2025-06-13 08:00,0,24,100
CN.SEA1.5070,PH1- DECKING L3 GL 18 - 15 - SEA-1,Complete,SEA - 1,East Support Building,SUES-1 - 19-16,L3 / Waffle Slab Level,,CONSTRUCTION,,Decking & Detail,SEAN MONK,,2023-08-01 13:00,2023-08-03 09:00,2023-07-22 08:18,2023-07-25 17:00,2025-11-20 17:00,2025-11-20 17:00,2025-11-10 07:00,2025-11-10 07:00,0,16,100
CN.SEA1.5080,PH1- DECKING L3 GL 18 - 15- SEA-1,Complete,SEA - 1,East Support Building,SUES-1 - 19-16,L3 / Waffle Slab Level,,CONSTRUCTION,,Decking & Detail,SEAN MONK,,2023-07-31 07:00,2023-08-01 13:00,2023-07-17 09:00,2023-07-20 17:00,2025-11-20 17:00,2025-11-20 17:00,2025-06-13 08:00,2025-06-13 08:00,0,16,100
CN.SEA1.5090,PH1- DECKING GL 17 - 16 - SEA-1-ROOF,Complete,SEA - 1,East Support Building,SUES-1 - 19-16,L4 - SUP Roof - FAB Roof,,CONSTRUCTION,,Decking & Detail,SEAN MONK,SOMD / Roofing / Waterproofing,2023-06-27 13:00,2023-06-30 09:00,2023-06-27 13:00,2023-06-30 09:00,2025-11-20 17:00,2025-11-20 17:00,2025-06-13 08:00,2025-06-13 08:00,0,16,100
CN.SEA1.5100,PH1- DECKING GL 16 - 15 - SEA-1-ROOF,Complete,SEA - 1,East Support Building,SUES-1 - 19-16,L4 - SUP Roof - FAB Roof,,CONSTRUCTION,,Decking & Detail,SEAN MONK,SOMD / Roofing / Waterproofing,2023-06-30 09:00,2023-07-01 15:00,2023-06-30 09:00,2023-07-01 16:00,2025-11-20 17:00,2025-11-20 17:00,2025-06-13 08:00,2025-06-13 08:00,0,16,100
CN.SEA1.5110,PH1- DS/AD DECKING & DETAILING SEA-1 GL 19 - 16 L4 & L4/E - C-E,Complete,SEA - 1,East Support Building,SUES-1 - 19-16,DS/AD,,CONSTRUCTION,,Decking & Detail,SEAN MONK,,2024-01-04 13:00,2024-01-06 15:00,2024-01-04 13:00,2024-01-06 10:00,2025-11-20 17:00,2025-11-20 17:00,2025-06-13 08:00,2025-06-13 08:00,0,16,100
CN.AB.AR.4240,REMAINING FRAMING & DRYWALL - MECHANICAL ROOM 3 SOUTH - WALK WAY - SEA1 - GL 19-16 - C-A - L1(On Hold until 12/15),Complete,SEA - 1,East Support Building,SUES-1 - 19-16,L1 - Fndn Slab,MECH RM 2,CONSTRUCTION,BERG,DRYWALL,AMBER CARO,INTERIORS,2024-10-17 07:00,2024-10-24 17:00,2024-10-17 07:00,2025-09-08 07:00,2025-11-20 17:00,2025-11-20 17:00,2025-11-24 07:00,2025-11-24 07:00,0,50,100
CN.AB.AR.4250,DRYWALL & INSULATION (1 side) - SEA1 - GL 19-16 - L1 - C-A - MECHANICAL ROOM 3 SOUTH,Complete,SEA - 1,East Support Building,SUES-1 - 19-16,L1 - Fndn Slab,MECH RM 2,CONSTRUCTION,,DRYWALL,AMBER CARO,INTERIORS,2024-01-12 09:00,2024-01-18 12:00,2024-01-12 07:00,2024-01-16 11:00,2025-11-20 17:00,2025-11-20 17:00,2025-11-24 07:00,2025-11-24 07:00,0,40,100
CN.SEA1.5130,PH1- DS STEEL FRAME INSTALL - SEA-1 Comeback Sup Side GL 19-16,Complete,SEA - 1,East Support Building,SUES-1 - 19-16,DS/AD,,CONSTRUCTION,,Steel Erection,SEAN MONK,,2023-09-30 08:00,2023-10-07 10:00,2023-09-26 08:00,2023-09-30 17:00,2025-11-20 17:00,2025-11-20 17:00,2025-06-13 08:00,2025-06-13 08:00,0,72,100
CN.SEA1.5140,PH1- DS/AD STEEL MOCKUP INITIAL INSTALL TIER 1 - SEA-1 (INFILL STEEL),Complete,SEA - 1,East Support Building,SUES-1 - 19-16,DS/AD,,CONSTRUCTION,,Steel Erection,SEAN MONK,,2023-04-14 07:00,2023-04-17 09:00,2023-04-14 07:00,2023-04-18 11:00,2025-11-20 17:00,2025-11-20 17:00,2025-06-13 08:00,2025-06-13 08:00,0,32,100
CN.SEA1.5150,PH1- EXTERIOR CURBS - SEA-1-L1,Complete,SEA - 1,East Support Building,SUES-1 - 19-16,L1 - Fndn Slab,,CONSTRUCTION,,Cast-in Place Concrete - Baker Concrete,JAMES LEE,,2023-04-27 11:00,2023-05-01 11:00,2023-04-27 11:00,2023-05-02 13:00,2025-11-20 17:00,2025-11-20 17:00,2025-09-04 07:00,2025-09-04 07:00,0,40,100
CN.SEA1.5160,PH1- MEP PADS - SEA1 - GL 19-16 - L1 - C-A (SECAI MEP DAMAGING DOWELS),Complete,SEA - 1,East Support Building,SUES-1 - 19-16,L1 - Fndn Slab,,CONSTRUCTION,,Cast-in Place Concrete - Baker Concrete,JAMES LEE,,2024-01-02 09:00,2024-01-04 16:00,2024-01-02 07:00,2024-01-05 11:00,2025-11-20 17:00,2025-11-20 17:00,2025-11-24 07:00,2025-11-24 07:00,0,24,100
CN.AB.AR.4640,FLOOR STRIPING - MECHANICAL ROOM 3 SOUTH - SEA1 - GL 19-16 - C-A - L1,Not Started,SEA - 1,East Support Building,SUES-1 - 19-16,L1 - Fndn Slab,MECH RM 2,CONSTRUCTION,FLOOR STRIPING PAINT,TBD Architectural Finishes,JAMES LEE,INTERIORS,2025-12-01 07:00,2025-12-05 17:00,,,2025-12-01 07:00,2025-12-05 17:00,2025-12-01 07:00,2025-12-05 17:00,50,50,0
CN.SEA1.4670,INSTALL ELEVATOR STEEL - SEA-1 - L1- ELEVATOR-20 - GL 19-16,Complete,SEA - 1,West Support Building,SUES-1 - 19-16,,ELEVATOR,CONSTRUCTION,,TBD Architectural Finishes,,INTERIORS,2023-10-09 08:00,2023-10-12 10:00,2023-10-09 08:00,2023-10-28 16:00,2025-11-20 17:00,2025-11-20 17:00,2025-11-14 17:00,2025-11-14 17:00,0,32,100
CN.SEA1.4671,H FRAME FOR ROLL UP DOOR - MECHANICAL ROOM 3 SOUTH - SEA1 - GL 19-16 - C-A - L1,Complete,SEA - 1,East Support Building,SUES-1 - 19-16,L1 - Fndn Slab,MECH RM 2,CONSTRUCTION,PATRIOT,TBD Architectural Finishes,AMBER CARO,INTERIORS,2024-09-03 07:00,2024-09-04 17:00,2024-09-03 07:00,2024-09-07 17:00,2025-11-20 17:00,2025-11-20 17:00,2025-11-24 07:00,2025-11-24 07:00,0,20,100
CN.AB.AR.4670,INSTALL ROLL UP DOORS (MEP ROUGH IN NOT INCLUDED) - SEA1 - GL 19-16 - C-A - L1,Not Started,SEA - 1,East Support Building,SUES-1 - 19-16,EXTERIOR SKIN,,CONSTRUCTION,PATRIOT,TBD Architectural Finishes,AMBER CARO,INTERIORS,2025-11-26 07:00,2025-11-26 17:00,,,2025-11-26 07:00,2025-11-26 17:00,2025-11-26 07:00,2025-11-26 17:00,10,10,0
CN.AB.AR.4710,METAL STUD FRAMING (2hr) w DOOR FRAMES - SEA1 - GL 19-16 - L3 - C-A - ELECTRICAL ROOM 2,Complete,SEA - 1,East Support Building,SUES-1 - 19-16,L3 / Waffle Slab Level,ELECTRIC RM 2,CONSTRUCTION,BERG,TBD Architectural Finishes,AMBER CARO,INTERIORS,2024-01-04 09:00,2024-01-10 15:00,2023-12-20 09:00,2023-12-30 17:00,2025-11-20 17:00,2025-11-20 17:00,2025-11-10 07:00,2025-11-10 07:00,0,48,100
CN.AB.AR.4720,MEP ROUGH IN & INSPECTION (by SECAI) - SEA1 - GL 19-16 - L3 - C-A - ELECTRICAL ROOM 2,Complete,SEA - 1,East Support Building,SUES-1 - 19-16,L3 / Waffle Slab Level,ELECTRIC RM 2,CONSTRUCTION,,TBD Architectural Finishes,AMBER CARO,,2024-01-04 07:00,2024-01-09 11:00,2024-01-04 07:00,2024-01-08 11:00,2025-11-20 17:00,2025-11-20 17:00,2025-11-14 17:00,2025-11-14 17:00,0,40,100
CN.AB.AR.4750,TAPE & FINISH DRYWALL - ELECTRICAL ROOM 2 - SEA1 - GL 19-16 - C-A - L3,Active,SEA - 1,East Support Building,SUES-1 - 19-16,L3 / Waffle Slab Level,ELECTRIC RM 2,CONSTRUCTION,CHERRY COATING,DRYWALL,AMBER CARO,INTERIORS,2024-04-23 07:00,2024-04-29 17:00,2024-04-23 07:00,,2025-11-21 07:00,2025-11-21 17:00,2025-12-05 07:00,2025-12-05 17:00,10,50,0
CN.AB.AR.4790,INSTALL WALL PROTECTION - ELEVATOR 20 - GL 16-19 - B-C - L3,Not Started,SEA - 1,East Support Building,SUES-1 - 19-16,L3 / Waffle Slab Level,,CONSTRUCTION,BERNCO,TBD Architectural Finishes,JAMES LEE,INTERIORS,2025-11-21 07:00,2025-11-25 17:00,,,2025-11-21 07:00,2025-11-25 17:00,2025-12-03 07:00,2025-12-05 17:00,30,30,0
CN.AB.AR.4770,FINISH PAINT - ELECTRICAL ROOM 2 - SEA1 - GL 19-16 - C-A - L3,Not Started,SEA - 1,East Support Building,SUES-1 - 19-16,L3 / Waffle Slab Level,ELECTRIC RM 2,CONSTRUCTION,FINISH PAINT,TBD Architectural Finishes,JAMES LEE,INTERIORS,2025-11-24 07:00,2025-11-24 07:00,,,2025-11-24 07:00,2025-11-24 07:00,2025-12-05 17:00,2025-12-05 17:00,0,0,0
CN.AB.AR.4740,DRYWALL 2 SIDE - ELECTRICAL ROOM 2 - SEA1 - GL 19-16 - C-A - L3,Complete,SEA - 1,East Support Building,SUES-1 - 19-16,L3 / Waffle Slab Level,ELECTRIC RM 2,CONSTRUCTION,BERG,DRYWALL,AMBER CARO,INTERIORS,2024-04-15 07:00,2024-04-19 17:00,2024-04-10 07:00,2024-10-28 17:00,2025-11-20 17:00,2025-11-20 17:00,2025-11-14 17:00,2025-11-14 17:00,0,50,100
CN.AB.AR.4730,DRYWALL & INSULATION (1 side) - SEA1 - GL 19-16 - L3 - C-A - ELECTRICAL ROOM 2,Complete,SEA - 1,East Support Building,SUES-1 - 19-16,L3 / Waffle Slab Level,ELECTRIC RM 2,CONSTRUCTION,,DRYWALL,AMBER CARO,INTERIORS,2024-01-09 11:00,2024-01-14 15:00,2024-01-09 11:00,2024-01-13 12:00,2025-11-20 17:00,2025-11-20 17:00,2025-11-14 17:00,2025-11-14 17:00,0,40,100
CN.SEA1.5170,INSTALL ELEVATOR STEEL - SEA-1- ELEVATOR 20 - SEA1 - GL 19-16 - L3 - B-C,Complete,SEA - 1,West Support Building,SUES-1 - 19-16,L3 / Waffle Slab Level,,CONSTRUCTION,,TBD Architectural Finishes,,INTERIORS,2024-01-29 07:00,2024-02-02 15:00,2024-01-08 07:00,2024-01-17 16:00,2025-11-20 17:00,2025-11-20 17:00,2025-11-14 17:00,2025-11-14 17:00,0,48,100
CN.AB.AR.4890,FLOOR STRIPING - SEA1 - GL 19-16 - C-A - L2,Not Started,SEA - 1,East Support Building,SUES-1 - 19-16,L2 - SubFab Level,,CONSTRUCTION,FLOOR STRIPING PAINT,TBD Architectural Finishes,JAMES LEE,INTERIORS,2025-12-11 07:00,2025-12-15 17:00,,,2025-12-11 07:00,2025-12-15 17:00,2025-12-03 07:00,2025-12-05 17:00,30,30,0
CN.SEA1.5180,INSTALL ELEVATOR STEEL - SEA-1- ELEVATOR-20 - SEA1 - GL 19-16 - L2 - B-C,Complete,SEA - 1,West Support Building,SUES-1 - 19-16,L2 - SubFab Level,,CONSTRUCTION,,TBD Architectural Finishes,,INTERIORS,2023-10-30 07:00,2023-11-05 15:00,2023-10-29 07:00,2024-01-16 17:00,2025-11-20 17:00,2025-11-20 17:00,2025-11-14 17:00,2025-11-14 17:00,0,48,100
A1220,DRILL/ EPOXY DOWELS,Complete,SEA - 1,East Support Building,SUES-1 - 19-16,L4 - SUP Roof - FAB Roof,,CONSTRUCTION,,CIP WALL,JAMES LIVELY,SOMD / Roofing / Waterproofing,2023-07-03 07:00,2023-07-06 13:00,2023-07-03 07:00,2023-07-04 13:00,2025-11-20 17:00,2025-11-20 17:00,2025-12-05 17:00,2025-12-05 17:00,0,16,100
A1230,PRIMER LIQUID APPLIED MEMBRANE (LAM),Complete,SEA - 1,East Support Building,SUES-1 - 19-16,L4 - SUP Roof - FAB Roof,,CONSTRUCTION,,CIP WALL,JAMES LIVELY,SOMD / Roofing / Waterproofing,2023-07-06 07:00,2023-07-06 15:00,2023-07-04 13:00,2023-07-05 11:00,2025-11-20 17:00,2025-11-20 17:00,2025-12-05 17:00,2025-12-05 17:00,0,8,100
A1240,ROOF MEMBRANE LAM & DOWEL SEAL,Complete,SEA - 1,East Support Building,SUES-1 - 19-16,L4 - SUP Roof - FAB Roof,,CONSTRUCTION,,CIP WALL,JAMES LIVELY,SOMD / Roofing / Waterproofing,2023-07-06 07:00,2023-07-08 11:00,2023-07-05 11:00,2023-07-07 15:00,2025-11-20 17:00,2025-11-20 17:00,2025-12-05 17:00,2025-12-05 17:00,0,24,100
A1250,DRAIN MATS INSTALL,Complete,SEA - 1,East Support Building,SUES-1 - 19-16,L4 - SUP Roof - FAB Roof,,CONSTRUCTION,,CIP WALL,JAMES LIVELY,SOMD / Roofing / Waterproofing,2023-07-07 07:00,2023-07-07 15:00,2023-07-07 07:00,2023-07-07 15:00,2025-11-20 17:00,2025-11-20 17:00,2025-12-05 17:00,2025-12-05 17:00,0,8,100
A1260,WEEP TUBES INSTALL,Complete,SEA - 1,East Support Building,SUES-1 - 19-16,L4 - SUP Roof - FAB Roof,,CONSTRUCTION,,CIP WALL,JAMES LIVELY,SOMD / Roofing / Waterproofing,2023-07-07 07:00,2023-07-07 15:00,2023-07-07 07:00,2023-07-07 15:00,2025-11-20 17:00,2025-11-20 17:00,2025-12-05 17:00,2025-12-05 17:00,0,8,100
A1270,CIP OAC PADS (17-19),Complete,SEA - 1,East Support Building,SUES-1 - 19-16,L4 - SUP Roof - FAB Roof,,CONSTRUCTION,,CIP WALL,JAMES LIVELY,SOMD / Roofing / Waterproofing,2023-07-07 15:00,2023-07-10 09:00,2023-07-07 15:00,2023-07-10 09:00,2025-11-20 17:00,2025-11-20 17:00,2025-12-05 17:00,2025-12-05 17:00,0,24,100
A1320,INSTALL TROUGH INSULATION,Complete,SEA - 1,East Support Building,SUES-1 - 19-16,L4 - SUP Roof - FAB Roof,,CONSTRUCTION,,CIP WALL,JAMES LIVELY,SOMD / Roofing / Waterproofing,2023-07-10 09:00,2023-07-10 17:00,2023-07-10 09:00,2023-07-10 17:00,2025-11-20 17:00,2025-11-20 17:00,2025-12-05 17:00,2025-12-05 17:00,0,8,100
A1330,FRP STRUCTURAL TROUGHS,Complete,SEA - 1,East Support Building,SUES-1 - 19-16,L4 - SUP Roof - FAB Roof,,CONSTRUCTION,,CIP WALL,JAMES LIVELY,SOMD / Roofing / Waterproofing,2023-07-11 07:00,2023-07-12 13:00,2023-07-11 07:00,2023-07-12 13:00,2025-11-20 17:00,2025-11-20 17:00,2025-12-05 17:00,2025-12-05 17:00,0,16,100
A1350,WATERPROOF PRIMER & MEMBRANE @ TROUGHS,Complete,SEA - 1,East Support Building,SUES-1 - 19-16,L4 - SUP Roof - FAB Roof,,CONSTRUCTION,,CIP WALL,JAMES LIVELY,SOMD / Roofing / Waterproofing,2023-07-12 13:00,2023-07-14 09:00,2023-07-12 13:00,2023-07-14 09:00,2025-11-20 17:00,2025-11-20 17:00,2025-12-05 17:00,2025-12-05 17:00,0,16,100
A1300,REPAIR WATERPROOF MEMBRANE,Complete,SEA - 1,East Support Building,SUES-1 - 19-16,L4 - SUP Roof - FAB Roof,,CONSTRUCTION,,CIP WALL,JAMES LIVELY,SOMD / Roofing / Waterproofing,2023-07-08 13:00,2023-07-10 09:00,2023-07-08 13:00,2023-07-10 09:00,2025-11-20 17:00,2025-11-20 17:00,2025-12-05 17:00,2025-12-05 17:00,0,16,100
A1310,DRAIN MATS @ TROUGH,Complete,SEA - 1,East Support Building,SUES-1 - 19-16,L4 - SUP Roof - FAB Roof,,CONSTRUCTION,,CIP WALL,JAMES LIVELY,SOMD / Roofing / Waterproofing,2023-07-09 11:00,2023-07-10 09:00,2023-07-09 11:00,2023-07-10 09:00,2025-11-20 17:00,2025-11-20 17:00,2025-12-05 17:00,2025-12-05 17:00,0,8,100
A1360,PLUMBING INSTALL SLEEVES SECAI TROUGHS - SEA1 - GL 19-16 - L4 - C-A,Complete,SEA - 1,East Support Building,SUES-1 - 19-16,L4 - SUP Roof - FAB Roof,,CONSTRUCTION,,CIP WALL,JAMES LIVELY,SOMD / Roofing / Waterproofing,2023-12-18 07:00,2023-12-19 13:00,2023-12-18 07:00,2023-12-19 13:00,2025-11-20 17:00,2025-11-20 17:00,2025-12-05 17:00,2025-12-05 17:00,0,16,100
CN.SEA1.5200,PH1- CIP WALL DS ANCHOR BOLT FOR CLADDING STEEL - SEA1 - GL 19-16 - C-E,Complete,SEA - 1,East Support Building,SUES-1 - 19-16,EXTERIOR SKIN,,CONSTRUCTION,,INSULATED METAL PANELS,CONCRETE,SOMD / Roofing / Waterproofing,2023-11-06 15:00,2023-11-07 13:00,2023-11-06 15:00,2023-11-07 13:00,2025-11-20 17:00,2025-11-20 17:00,2025-11-21 07:00,2025-11-21 07:00,0,8,100
CN.SEA1.5300,IMPACT - SECAI MEP UG PIPING WORK - SEA-1-L1 GL 19-16,Complete,SEA - 1,East Support Building,SUES-1 - 19-16,L1 - Fndn Slab,,CONSTRUCTION,,TOPPING,CONCRETE,,2023-10-09 07:00,2023-10-11 09:00,2023-09-29 14:00,2023-10-03 15:00,2025-11-20 17:00,2025-11-20 17:00,2025-11-24 07:00,2025-11-24 07:00,0,22,100
CN.SEA1.3030,IMPACT - DRB-01 ADDITIONAL BEAMS BETWEEN FAB AND AD GL 19 - 16 - SEA1 - C-E,Complete,SEA - 1,,SUES-1 - 19-16,DS/AD,,CONSTRUCTION,,Steel Erection,,,2023-12-18 07:00,2023-12-21 17:00,2023-12-18 07:00,2023-12-21 17:00,2025-11-20 17:00,2025-11-20 17:00,2025-06-13 08:00,2025-06-13 08:00,0,40,100
CN.SEA1.5310,PH1 - CLADDING STEEL  EXTERIOR - SEA1 - GL 19-16 - C LINE  (DS AREA),Complete,SEA - 1,East Support Building,SUES-1 - 19-16,EXTERIOR SKIN,,CONSTRUCTION,,INSULATED METAL PANELS,JAMES LIVELY,,2023-11-02 07:00,2023-11-09 09:00,2023-11-02 07:00,2023-11-09 13:00,2025-11-20 17:00,2025-11-20 17:00,2025-09-04 07:00,2025-09-04 07:00,0,72,100
CN.SEA1.DS.1110,METAL STUD FRAMING (2hr) - SEA1 - GL 19-16 - L1 - D LINE - DS/AD,Complete,SEA - 1,West Support Building,SUES-1 - 19-16,L1 - Fndn Slab,DS/AD INTERIORS,CONSTRUCTION,BERG,TBD Architectural Finishes,FIZ DATA CENTER,INTERIORS,2023-12-04 09:00,2023-12-09 17:00,2023-11-01 09:00,2023-11-05 10:00,2025-11-20 17:00,2025-11-20 17:00,2025-12-01 17:00,2025-12-01 17:00,0,48,100
CN.SEA1.DS.2210,TAPE & FINISH DRYWALLSEA1 - GL 19-16 - L1 - D LINE - DS/AD,Complete,SEA - 1,West Support Building,SUES-1 - 19-16,L1 - Fndn Slab,DS/AD INTERIORS,CONSTRUCTION,,DRYWALL,FIZ DATA CENTER,INTERIORS,2024-01-26 07:00,2024-01-29 17:00,2023-12-13 07:00,2024-01-31 17:00,2025-11-20 17:00,2025-11-20 17:00,2025-12-01 17:00,2025-12-01 17:00,0,40,100
CN.SEA1.DS.2220,PRIMER & PAINT DRYWALL -  GL 19-16 - D LINE - L1,Complete,SEA - 1,West Support Building,SUES-1 - 19-16,L1 - Fndn Slab,DS/AD INTERIORS,CONSTRUCTION,FINISH PAINT,TBD Architectural Finishes,FIZ DATA CENTER,INTERIORS,2024-10-25 07:00,2024-10-29 17:00,2024-10-25 07:00,2024-10-28 17:00,2025-11-20 17:00,2025-11-20 17:00,2025-12-01 17:00,2025-12-01 17:00,0,30,100
CN.SEA1.DS.2200,DRYWALL 2 SIDE SEA1 - GL 19-16 - L1 - D LINE - DS/AD,Complete,SEA - 1,West Support Building,SUES-1 - 19-16,L1 - Fndn Slab,DS/AD INTERIORS,CONSTRUCTION,,DRYWALL,FIZ DATA CENTER,INTERIORS,2024-01-22 07:00,2024-01-25 17:00,2023-11-20 07:00,2024-01-31 17:00,2025-11-20 17:00,2025-11-20 17:00,2025-12-01 17:00,2025-12-01 17:00,0,40,100
CN.SEA1.DS.2190,DRYWALL & INSULATION (1 side) (INT) - SEA1 - GL 19-16 - L1 - D LINE - DS/AD,Complete,SEA - 1,West Support Building,SUES-1 - 19-16,L1 - Fndn Slab,DS/AD INTERIORS,CONSTRUCTION,,DRYWALL,FIZ DATA CENTER,INTERIORS,2023-11-13 07:00,2023-11-18 15:00,2023-11-13 07:00,2023-11-18 16:00,2025-11-20 17:00,2025-11-20 17:00,2025-12-01 17:00,2025-12-01 17:00,0,48,100
CN.SEA1.DS.1310,METAL STUD FRAMING (2hr) - SEA1 - GL 19-16 - L2 - D LINE - DS/AD,Complete,SEA - 1,West Support Building,SUES-1 - 19-16,L2 - SubFab Level,DS/AD INTERIORS,CONSTRUCTION,BERG,TBD Architectural Finishes,FIZ DATA CENTER,INTERIORS,2024-01-22 07:00,2024-01-26 15:00,2024-01-07 07:00,2024-02-17 16:00,2025-11-20 17:00,2025-11-20 17:00,2025-11-24 07:00,2025-11-24 07:00,0,48,100
CN.SEA1.DS.3090,REMEDY - TAPE & FINISH DRYWALL - SEA1 - GL 19-16 - D LINE - L2,Complete,SEA - 1,West Support Building,SUES-1 - 19-16,L2 - SubFab Level,DS/AD INTERIORS,CONSTRUCTION,CHERRY COATING,DRYWALL,FIZ DATA CENTER,INTERIORS,2024-08-15 07:00,2024-08-19 17:00,2024-08-11 07:00,2024-08-13 17:00,2025-11-20 17:00,2025-11-20 17:00,2025-11-24 07:00,2025-11-24 07:00,0,30,100
CN.SEA1.DS..3100,FINISH PAINT - SEA1 - GL 19-16 - D LINE - L2,Not Started,SEA - 1,West Support Building,SUES-1 - 19-16,L2 - SubFab Level,DS/AD INTERIORS,CONSTRUCTION,FINISH PAINT,TBD Architectural Finishes,FIZ DATA CENTER,INTERIORS,2025-11-21 07:00,2025-11-21 17:00,,,2025-11-21 07:00,2025-11-21 17:00,2025-12-05 07:00,2025-12-05 17:00,10,10,0
CN.SEA1.DS..3080,REMEDY - FRAME & DRYWALL - SEA1 - GL 19-16 - D LINE - L2,Complete,SEA - 1,West Support Building,SUES-1 - 19-16,L2 - SubFab Level,DS/AD INTERIORS,CONSTRUCTION,BERG,DRYWALL,FIZ DATA CENTER,INTERIORS,2024-06-24 07:00,2024-07-05 17:00,2024-06-24 07:00,2024-07-02 17:00,2025-11-20 17:00,2025-11-20 17:00,2025-11-24 07:00,2025-11-24 07:00,0,70,100
CN.SEA1.DS..3070,DRYWALL (1 side) (INT) - SEA1 - GL 19-16 - L2 - D LINE - DS/AD,Complete,SEA - 1,West Support Building,SUES-1 - 19-16,L2 - SubFab Level,DS/AD INTERIORS,CONSTRUCTION,,DRYWALL,FIZ DATA CENTER,INTERIORS,2024-01-17 07:00,2024-01-21 15:00,2024-02-09 07:00,2024-02-15 16:00,2025-11-20 17:00,2025-11-20 17:00,2025-11-24 07:00,2025-11-24 07:00,0,48,100
CN.AB.AR.6120,TEMP WALLS Framing and Drywall- SEB1- GL 19-16 - L3 - C-A,Complete,SEA - 1,,SUES-1 - 19-16,L3 / Waffle Slab Level,ELECTRIC RM 2,CONSTRUCTION,,DRYWALL,,,2023-10-09 08:00,2023-10-13 08:00,2023-10-03 08:00,2023-10-07 16:00,2025-11-20 17:00,2025-11-20 17:00,2025-11-24 07:00,2025-11-24 07:00,0,40,100
CN.SEA1.5320,PH1 -WELD CLIPS - CLADDING STEEL - SEA1 - GL 19-16 - C LINE (DS AREA),Complete,SEA - 1,East Support Building,SUES-1 - 19-16,EXTERIOR SKIN,,CONSTRUCTION,,INSULATED METAL PANELS,JAMES LIVELY,,2023-11-08 14:00,2023-11-09 16:00,2023-11-08 14:00,2023-11-09 16:00,2025-11-20 17:00,2025-11-20 17:00,2025-11-21 07:00,2025-11-21 07:00,0,12,100
CN.SEA1.LD.3000,LOADING DOCK- LOADING DOCK RETAINING WALLS EXCAVATION & FRP - SEA1 - GL 14-18 A-LINE,Complete,SEA - 1,East Support Building,SUES-1 - 19-16,L1 - Fndn Slab,,CONSTRUCTION,BAKER,INSULATED METAL PANELS,AMBER CARO,INTERIORS,2025-03-10 07:00,2025-03-14 17:00,2025-02-24 07:00,2025-03-03 16:00,2025-11-20 17:00,2025-11-20 17:00,2025-10-29 07:00,2025-10-29 07:00,0,50,100
CN.SEA5.1290,IMPACT - DS STEEL BEAM STIFFNER CONNECTION FIXES - SEA1 - GL 19-16 - L4 - C-E,Complete,SEA - 1,,SUES-1 - 19-16,DS/AD,,CONSTRUCTION,,Steel Erection,,,2024-01-02 09:00,2024-01-04 08:00,2024-01-02 07:00,2024-01-21 13:00,2025-11-20 17:00,2025-11-20 17:00,2025-12-02 07:00,2025-12-02 07:00,0,16,100
CN.SEA1.5330,PH1- DS/AD DECKING & DETAILING - SEA1 - GL 18-15  C-E - L6,Complete,SEA - 1,East Support Building,SUES-1 - 19-16,DS/AD,,CONSTRUCTION,,Decking & Detail,SEAN MONK,,2023-12-09 08:00,2023-12-14 16:00,2023-12-09 08:00,2023-12-12 11:00,2025-11-20 17:00,2025-11-20 17:00,2025-06-13 08:00,2025-06-13 08:00,0,48,100
CN.SEA1.5350,PH1- DS/AD FRP SLAB - SEA1 - GL 19-16 - L2 - C-E,Complete,SEA - 1,East Support Building,SUES-1 - 19-16,DS/AD,,CONSTRUCTION,,SOMD,CONCRETE,,2023-11-13 07:00,2023-11-16 11:00,2023-11-13 07:00,2023-11-16 11:00,2025-11-20 17:00,2025-11-20 17:00,2025-06-13 08:00,2025-06-13 08:00,0,24,100
CN.SEA1.3040,DS/AD STEEL SPRAY FIREPROOFING SFRM - SEA1 - GL 19-16 C-E L1 CEILING,Complete,SEA - 1,,SUES-1 - 19-16,DS/AD,,CONSTRUCTION,,Fireproofing,,,2023-11-21 07:00,2023-12-12 09:00,2023-11-19 07:00,2023-12-03 16:00,2025-11-20 17:00,2025-11-20 17:00,2025-11-24 07:00,2025-11-24 07:00,0,152,100
CN.SEA1.DS.1470,METAL STUD FRAMING (2hr) - SEA1 - GL 19-16 - L3 - D LINE - DS/AD,Complete,SEA - 1,West Support Building,SUES-1 - 19-16,L3 / Waffle Slab Level,DS/AD INTERIORS,CONSTRUCTION,BERG,TBD Architectural Finishes,FIZ DATA CENTER,INTERIORS,2023-12-04 08:00,2023-12-09 16:00,2023-12-04 08:00,2023-12-31 13:00,2025-11-20 17:00,2025-11-20 17:00,2025-06-13 08:00,2025-06-13 08:00,0,48,100
CN.SEA1.DS..4040,TAPE & FINISH DRYWALL - SEA1 - GL 19-16 - D LINE - L3,Complete,SEA - 1,West Support Building,SUES-1 - 19-16,L3 / Waffle Slab Level,DS/AD INTERIORS,CONSTRUCTION,CHERRY COATING,DRYWALL,FIZ DATA CENTER,INTERIORS,2024-06-13 07:00,2024-06-18 17:00,2024-06-13 07:00,2024-06-20 17:00,2025-11-20 17:00,2025-11-20 17:00,2025-06-13 08:00,2025-06-13 08:00,0,40,100
CN.SEA1.DS.4050,D/S SGP Wall Turnover - SEA1 - GL 19-16 - D LINE - L3,Complete,SEA - 1,West Support Building,SUES-1 - 19-16,L3 / Waffle Slab Level,DS/AD INTERIORS,CONSTRUCTION,SECAI,TBD Architectural Finishes,FIZ DATA CENTER,INTERIORS,2024-06-20 07:00,2024-06-20 17:00,2024-06-20 07:00,2024-06-20 17:00,2025-11-20 17:00,2025-11-20 17:00,2025-06-13 08:00,2025-06-13 08:00,0,10,100
CN.SEA1.DS.4030,DRYWALL 2 SIDE - SEA1 - GL 20-16 - D LINE - L3,Complete,SEA - 1,West Support Building,SUES-1 - 19-16,L3 / Waffle Slab Level,DS/AD INTERIORS,CONSTRUCTION,BERG,DRYWALL,FIZ DATA CENTER,INTERIORS,2024-04-29 07:00,2024-05-03 17:00,2024-04-29 07:00,2024-06-18 17:00,2025-11-20 17:00,2025-11-20 17:00,2025-06-13 08:00,2025-06-13 08:00,0,40,100
CN.SEA1.DS.4020,DRYWALL & INSULATION (1st layer) (INT) - SEA1 - GL 19-16 - L3 - D LINE - DS/AD,Complete,SEA - 1,West Support Building,SUES-1 - 19-16,L3 / Waffle Slab Level,DS/AD INTERIORS,CONSTRUCTION,BERG,DRYWALL,FIZ DATA CENTER,INTERIORS,2024-04-22 07:00,2024-04-24 17:00,2024-04-22 07:00,2024-04-29 17:00,2025-11-20 17:00,2025-11-20 17:00,2025-06-13 08:00,2025-06-13 08:00,0,30,100
CN.SEA1.6000,WATER PROOF PEDASTALS - GL 19-15 - SEA-1-ROOF,Complete,SEA - 1,East Support Building,SUES-1 - 19-16,L4 - SUP Roof - FAB Roof,,CONSTRUCTION,,Roofing,JAMES LIVELY,SOMD / Roofing / Waterproofing,2023-11-06 09:00,2023-11-06 17:00,2023-10-22 08:00,2023-10-22 16:00,2025-11-20 17:00,2025-11-20 17:00,2025-12-05 17:00,2025-12-05 17:00,0,8,100
CN.SEA1.6010,WATER PROOFING & POUR PEDASTALS - GL 19-15 - SEA-1-ROOF,Complete,SEA - 1,East Support Building,SUES-1 - 19-16,L4 - SUP Roof - FAB Roof,,CONSTRUCTION,,Roofing,JAMES LIVELY,SOMD / Roofing / Waterproofing,2023-11-07 07:00,2023-11-07 15:00,2023-10-23 07:00,2023-10-23 15:00,2025-11-20 17:00,2025-11-20 17:00,2025-12-05 17:00,2025-12-05 17:00,0,8,100
CN.SEA1.6020,FINISH WATER PROOFING & POUR PEDASTALS - GL 19-15 - SEA-1-ROOF,Complete,SEA - 1,East Support Building,SUES-1 - 19-16,L4 - SUP Roof - FAB Roof,,CONSTRUCTION,,Roofing,JAMES LIVELY,SOMD / Roofing / Waterproofing,2023-11-07 15:00,2023-11-08 13:00,2023-10-24 07:00,2023-10-25 13:00,2025-11-20 17:00,2025-11-20 17:00,2025-12-05 17:00,2025-12-05 17:00,0,8,100
CN.SEA1.6030,STRIP PEDESTALS - GL 19-15 - SEA-1-ROOF,Complete,SEA - 1,East Support Building,SUES-1 - 19-16,L4 - SUP Roof - FAB Roof,,CONSTRUCTION,,Roofing,JAMES LIVELY,SOMD / Roofing / Waterproofing,2023-11-08 13:00,2023-11-09 11:00,2023-10-26 13:00,2023-10-27 11:00,2025-11-20 17:00,2025-11-20 17:00,2025-12-05 17:00,2025-12-05 17:00,0,8,100
CN.SEA1.6040,INSTALL PRIMER - SEA1 - GL 20-17 - C-A - L4 ROOF,Complete,SEA - 1,East Support Building,SUES-1 - 19-16,L4 - SUP Roof - FAB Roof,,CONSTRUCTION,BRAZOS,TOPPING,JAMES LIVELY,SOMD / Roofing / Waterproofing,2024-09-20 07:00,2024-09-20 17:00,2024-09-23 07:00,2024-09-23 17:00,2025-11-20 17:00,2025-11-20 17:00,2025-12-05 17:00,2025-12-05 17:00,0,10,100
CN.SEA1.6060,INSPECT PRIMER - SEA1 - GL 20-17 - C-A - L4 ROOF,Complete,SEA - 1,East Support Building,SUES-1 - 19-16,L4 - SUP Roof - FAB Roof,,CONSTRUCTION,BRAZOS,TOPPING,JAMES LIVELY,SOMD / Roofing / Waterproofing,2024-09-20 07:00,2024-09-20 17:00,2024-09-24 07:00,2024-09-24 17:00,2025-11-20 17:00,2025-11-20 17:00,2025-12-05 17:00,2025-12-05 17:00,0,10,100
CN.SEA1.6080,INSTALL BASE COAT - SEA1 - GL 20-17 - C-A - L4 ROOF,Complete,SEA - 1,East Support Building,SUES-1 - 19-16,L4 - SUP Roof - FAB Roof,,CONSTRUCTION,BRAZOS,TOPPING,JAMES LIVELY,SOMD / Roofing / Waterproofing,2024-09-26 07:00,2024-09-26 17:00,2024-09-26 07:00,2024-09-26 17:00,2025-11-20 17:00,2025-11-20 17:00,2025-12-05 17:00,2025-12-05 17:00,0,10,100
CN.SEA1.6100,INSPECT BASE COAT - SEA1 - GL 20-17 - C-A - L4 ROOF,Complete,SEA - 1,East Support Building,SUES-1 - 19-16,L4 - SUP Roof - FAB Roof,,CONSTRUCTION,BRAZOS,TOPPING,JAMES LIVELY,SOMD / Roofing / Waterproofing,2024-09-26 07:00,2024-09-26 17:00,2024-09-26 07:00,2024-09-26 17:00,2025-11-20 17:00,2025-11-20 17:00,2025-12-05 17:00,2025-12-05 17:00,0,10,100
CN.SEA1.6110,INSTALL TOP COAT - SEA1 - GL 20-17 - C-A - L4 ROOF,Complete,SEA - 1,East Support Building,SUES-1 - 19-16,L4 - SUP Roof - FAB Roof,,CONSTRUCTION,BRAZOS,TOPPING,JAMES LIVELY,SOMD / Roofing / Waterproofing,2024-09-27 07:00,2024-09-30 17:00,2024-09-27 07:00,2024-09-28 17:00,2025-11-20 17:00,2025-11-20 17:00,2025-12-05 17:00,2025-12-05 17:00,0,20,100
CN.SEA1.6120,INSPECT TOP COAT - SEA1 - GL 20-17 - C-A - L4 ROOF,Complete,SEA - 1,East Support Building,SUES-1 - 19-16,L4 - SUP Roof - FAB Roof,,CONSTRUCTION,BRAZOS,TOPPING,JAMES LIVELY,SOMD / Roofing / Waterproofing,2024-09-30 07:00,2024-09-30 17:00,2024-09-30 07:00,2024-09-30 17:00,2025-11-20 17:00,2025-11-20 17:00,2025-12-05 17:00,2025-12-05 17:00,0,10,100
CN.SEA1.6130,INSPECT TOP COAT CRICKET - SEA1 - GL 20-17 - C-A - L4 ROOF,Complete,SEA - 1,East Support Building,SUES-1 - 19-16,L4 - SUP Roof - FAB Roof,,CONSTRUCTION,BRAZOS,TOPPING,JAMES LIVELY,SOMD / Roofing / Waterproofing,2024-10-07 07:00,2024-10-07 17:00,2024-10-07 07:00,2024-10-07 17:00,2025-11-20 17:00,2025-11-20 17:00,2025-12-05 17:00,2025-12-05 17:00,0,10,100
CN.SEA1.5360,FRAMING & DRYWALL - ELEVATOR 20 - SEA1 - GL 19-16 - L1 - B-C (3 sides only),Complete,SEA - 1,West Support Building,SUES-1 - 19-16,L1 - Fndn Slab,,CONSTRUCTION,,DRYWALL,,INTERIORS,2023-11-13 07:00,2023-11-20 11:00,2023-11-10 07:00,2023-11-20 17:00,2025-11-20 17:00,2025-11-20 17:00,2025-11-14 17:00,2025-11-14 17:00,0,64,100
CN.SEA1.5380,FRAMING & DRYWALL - ELEVATOR 20 - SEA-1 - L3 GL 19-16 - B-C (3 sides only),Complete,SEA - 1,West Support Building,SUES-1 - 19-16,L3 / Waffle Slab Level,,CONSTRUCTION,,DRYWALL,,INTERIORS,2024-02-29 07:00,2024-03-06 11:00,2024-02-29 07:00,2024-03-07 00:00,2025-11-20 17:00,2025-11-20 17:00,2025-11-14 17:00,2025-11-14 17:00,0,64,100
CN.SEA1.6210,DSAD PENETRATION SUPPORT STEEL FRAMING - SEA1 - GL 19-16 - L3 C-E,Complete,SEA - 1,East Support Building,SUES-1 - 19-16,DS/AD,,CONSTRUCTION,,Decking & Detail,SEAN MONK,,2024-01-02 09:00,2024-01-07 08:00,2024-01-16 07:00,2024-01-22 17:00,2025-11-20 17:00,2025-11-20 17:00,2025-10-16 07:00,2025-10-16 07:00,0,40,100
CN.SEA1.6220,DSAD PENETRATION SUPPORT STEEL FRAMING - SEA1 - GL 17-16 - C-E - L4,Complete,SEA - 1,East Support Building,SUES-1 - 19-16,DS/AD,,CONSTRUCTION,PERRY & PERRY,Decking & Detail,SEAN MONK,,2024-06-21 07:00,2024-06-24 17:00,2024-06-14 07:00,2024-06-17 17:00,2025-11-20 17:00,2025-11-20 17:00,2025-10-16 07:00,2025-10-16 07:00,0,20,100
CN.SEA1.5370,CURE FRP SLAB - SEB-5 GL - SEA1 - GL 19-16 C-E - L6,Complete,SEA - 1,,SUES-1 - 19-16,DS/AD,,CONSTRUCTION,,SOMD,,,2023-12-14 07:00,2023-12-16 11:00,2023-12-14 07:00,2023-12-16 12:00,2025-11-20 17:00,2025-11-20 17:00,2025-12-02 07:00,2025-12-02 07:00,0,24,100
CN.SEA1.5420,PH1- DS/AD FRP SLAB - SEA1 - GL 19-16 - L6 - C-E,Complete,SEA - 1,,SUES-1 - 19-16,DS/AD,,CONSTRUCTION,,SOMD,,,2023-12-14 07:00,2023-12-16 11:00,2023-12-14 07:00,2023-12-16 12:00,2025-11-20 17:00,2025-11-20 17:00,2025-12-02 07:00,2025-12-02 07:00,0,24,100
CN.SEA1.1220,CLADDING STEEL AND DETAILING & INSPECTION - GL 19-16 - A LINE [SUP EXTERIOR WALL] (IMPACTED BY TRESTLE),Complete,SEA - 1,,SUES-1 - 19-16,EXTERIOR SKIN,,CONSTRUCTION,PATRIOT,INSULATED METAL PANELS,,,2024-07-19 07:00,2024-08-05 17:00,2024-04-17 07:00,2024-07-18 17:00,2025-11-20 17:00,2025-11-20 17:00,2025-09-04 07:00,2025-09-04 07:00,0,120,100
CN.SEA1.5430,PH1- DS/AD GRATING - SEA1 - GL 19-16 C-E - L3,Complete,SEA - 1,,SUES-1 - 19-16,DS/AD,,CONSTRUCTION,,SOMD,,,2023-11-06 11:00,2023-11-07 17:00,2023-11-06 11:00,2023-11-07 17:00,2025-11-20 17:00,2025-11-20 17:00,2025-12-05 17:00,2025-12-05 17:00,0,16,100
CN.SEA1.3060,AD STEEL PAINT FIREPROOFING IFRM - SEA1 - GL 19-16 - C-E - L2-CEILING,Complete,SEA - 1,,SUES-1 - 19-16,DS/AD,,CONSTRUCTION,ROLLING PLAINS,Fireproofing,,,2024-05-02 07:00,2024-05-17 17:00,2024-05-02 07:00,2024-05-07 17:00,2025-11-20 17:00,2025-11-20 17:00,2025-12-05 17:00,2025-12-05 17:00,0,100,100
CN.SEA1.1300,INSTALL INSULATED METAL PANEL MODULES - GL 18.5-17 - D LINE (AD AREA) [L6 SOMD LEFTOUT],Complete,SEA - 1,,SUES-1 - 19-16,EXTERIOR SKIN,,CONSTRUCTION,KOVACH,INSULATED METAL PANELS,,,2024-07-12 07:00,2024-07-16 17:00,2024-07-11 07:00,2024-07-15 17:00,2025-11-20 17:00,2025-11-20 17:00,2025-12-05 17:00,2025-12-05 17:00,0,50,100
CN.AB.AR.4800,OVERHEAD DOOR DIMENSIONS FIELD MEASURE- SEA1 - GL 19-16 - L1 - C-A,Complete,SEA - 1,,SUES-1 - 19-16,EXTERIOR SKIN,,CONSTRUCTION,,INSULATED METAL PANELS,,,2023-11-27 08:00,2023-11-28 14:00,2023-11-16 08:00,2023-11-17 16:00,2025-11-20 17:00,2025-11-20 17:00,2025-11-21 07:00,2025-11-21 07:00,0,16,100
CN.SEA1.5440,KNEE WALL- SEA1 - GL 19-16 - L4 - C-E,Complete,SEA - 1,,SUES-1 - 19-16,DS/AD,,CONSTRUCTION,,Cast-in Place Concrete - Baker Concrete,,,2024-01-22 07:00,2024-01-25 09:00,2024-01-19 07:00,2024-02-05 15:00,2025-11-20 17:00,2025-11-20 17:00,2025-11-21 07:00,2025-11-21 07:00,0,32,100
CN.SEA1.3070,D-LINE STEEL SPRAY FIREPROOFING SFRM2 - SEA1 - L3-CEILING - GL 16-19,Complete,SEA - 1,,SUES-1 - 19-16,L4 - SUP Roof - FAB Roof,DS/AD INTERIORS,CONSTRUCTION,ROLLING PLAINS,Fireproofing,,,2024-04-25 07:00,2024-05-02 17:00,2024-04-25 07:00,2024-04-29 17:00,2025-11-20 17:00,2025-11-20 17:00,2025-06-13 08:00,2025-06-13 08:00,0,50,100
CN.SEA1.5450,IMPACT - ENVIRONMENTAL PROTECTION FOR COLUMNS & BEAMS COATING BY SECAI - GL 3-33 - C-A - L3,Complete,SEA - 1,,SUEN-3 - 25-28,L3 / Waffle Slab Level,WAFER I/O RM,CONSTRUCTION,SECAI,TBD Architectural Finishes,,,2023-11-02 07:00,2023-12-04 11:00,2023-11-01 07:00,2024-05-01 17:00,2025-11-20 17:00,2025-11-20 17:00,2025-11-24 07:00,2025-11-24 07:00,0,184,100
CN.SEA1.6440,DS SPRAY FIREPROOFING SFRM - SEA1 - GL 19-17 - C-D - L4&L5 CEILING,Not Started,SEA - 1,East Support Building,SUES-1 - 19-16,L4 - SUP Roof - FAB Roof,DS/AD INTERIORS,CONSTRUCTION,ROLLING PLAINS,Fireproofing,HOON WOO,,2025-11-25 07:00,2025-11-26 17:00,,,2025-11-25 07:00,2025-11-26 17:00,2025-12-04 07:00,2025-12-05 17:00,20,20,0
CN.SEA1.DS.1471,REMAINING METAL STUD FRAMING (2hr) (Around Stair) - SEA1 - GL 19-16 - L3 - D LINE - DS/AD,Complete,SEA - 1,West Support Building,SUES-1 - 19-16,L3 / Waffle Slab Level,DS/AD INTERIORS,CONSTRUCTION,BERG,TBD Architectural Finishes,FIZ DATA CENTER,INTERIORS,2024-04-15 07:00,2024-04-18 17:00,2024-04-15 07:00,2024-04-18 17:00,2025-11-20 17:00,2025-11-20 17:00,2025-11-10 07:00,2025-11-10 07:00,0,40,100
CN.SEA1.6450,IMPACT [S.TIA-12] - WAITING ON MEP LAYOUTS - SEA1 - GL 19-16 - L4 - C-E,Complete,SEA - 1,East Support Building,SUES-1 - 19-16,DS/AD,,CONSTRUCTION,,Decking & Detail,SEAN MONK,,2024-01-22 07:00,2024-01-25 17:00,2024-01-10 07:00,2024-04-10 17:00,2025-11-20 17:00,2025-11-20 17:00,2025-10-16 07:00,2025-10-16 07:00,0,40,100
CN.SEA1.DS.4060,METAL STUD FRAMING (2hr) - SEA1 - GL 19-16 - L2 - D LINE - DS/AD,Complete,SEA - 1,West Support Building,SUES-1 - 19-16,L2 - SubFab Level,DS/AD INTERIORS,CONSTRUCTION,BERG,TBD Architectural Finishes,FIZ DATA CENTER,INTERIORS,2024-01-22 07:00,2024-01-26 15:00,2024-01-02 07:00,2024-01-10 15:00,2025-11-20 17:00,2025-11-20 17:00,2025-11-24 07:00,2025-11-24 07:00,0,48,100
CN.SEA1.DS..4050,DRYWALL (1 side) (INT) - SEA1 - GL 19-16 - L2 - D LINE - DS/AD,Complete,SEA - 1,West Support Building,SUES-1 - 19-16,L2 - SubFab Level,DS/AD INTERIORS,CONSTRUCTION,,DRYWALL,FIZ DATA CENTER,INTERIORS,2024-01-26 15:00,2024-01-31 13:00,2024-01-03 15:00,2024-01-16 17:00,2025-11-20 17:00,2025-11-20 17:00,2025-11-24 07:00,2025-11-24 07:00,0,48,100
CN.AB.AR.6780,INSTALL RAISED ACCESS FLOORING - I/O FAB116303 - SUE - L1 - GL C/15,Complete,SEA - 1,,SUES-1 - 19-16,L1 - Fndn Slab,MECH RM 2,CONSTRUCTION,SELECT PREFAB,TBD Architectural Finishes,,,2025-02-27 07:00,2025-03-10 17:00,2025-02-27 07:00,2025-03-03 17:00,2025-11-20 17:00,2025-11-20 17:00,2025-11-21 07:00,2025-11-21 07:00,0,80,100
CN.SEA1.6460,IMPACT - DESIGN CHANGE - RETROFIT STEEL APPROVAL FABRICATION INSTALL - SEA1 - GL 19-18 - C-E - L4(only 4/10 can be insta,Complete,SEA - 1,East Support Building,SUES-1 - 19-16,DS/AD,,CONSTRUCTION,W&W,Decking & Detail,SEAN MONK,,2024-02-26 07:00,2024-03-28 17:00,2024-01-10 07:00,2025-04-25 17:00,2025-11-20 17:00,2025-11-20 17:00,2025-12-05 17:00,2025-12-05 17:00,0,200,100
CN.SEA1.6480,IMPACT [C24] - SECAI DIRECTS LEAVEOUT FOR MEP EQUIPMENT ACCESS / AWAIT TURNOVER TO YATES - GL 16-17 - C-D - L6,Complete,SEA - 1,,SUES-1 - 19-16,DS/AD,,CONSTRUCTION,SECAI,SOMD,,,2024-05-16 07:00,2024-05-23 17:00,2023-12-09 07:00,2024-07-22 17:00,2025-11-20 17:00,2025-11-20 17:00,2025-10-16 07:00,2025-10-16 07:00,0,50,100
CN.SEA1.6490,IMPACT [ES16 / ES17] - RE-INSTALL CLADDING STEEL - GL16-18 - A LINE [SUP EXTERIOR WALL],Complete,SEA - 1,East Support Building,SUES-1 - 19-16,EXTERIOR SKIN,,CONSTRUCTION,PATRIOT,INSULATED METAL PANELS,JAMES LIVELY,,2024-07-19 07:00,2024-07-26 17:00,2024-07-08 07:00,2024-07-18 17:00,2025-11-20 17:00,2025-11-20 17:00,2025-09-04 07:00,2025-09-04 07:00,0,60,100
CN.SEA1.DS.4070,REMAINING - DRYWALL 2 SIDE SEA1 - GL 19-16 - L1 - D LINE - DS/AD,Complete,SEA - 1,West Support Building,SUES-1 - 19-16,L1 - Fndn Slab,DS/AD INTERIORS,CONSTRUCTION,,DRYWALL,FIZ DATA CENTER,INTERIORS,2024-02-12 07:00,2024-02-15 17:00,2024-02-12 07:00,2024-02-15 17:00,2025-11-20 17:00,2025-11-20 17:00,2025-12-01 17:00,2025-12-01 17:00,0,40,100
CN.SEA1.6500,IMPACT [S.TIA-46] - CCD 127 - WW L4E ROOF DRAIN PENETRATION STEEL - SEA1 - GL 19-16 - L4E - C-E,Complete,SEA - 1,East Support Building,SUES-1 - 19-16,DS/AD,,CONSTRUCTION,,Decking & Detail,SEAN MONK,,2024-04-08 07:00,2024-04-29 17:00,2024-03-09 08:00,2024-04-01 16:00,2025-11-20 17:00,2025-11-20 17:00,2025-06-13 08:00,2025-06-13 08:00,0,140,100
CN.SEA1.6510,IMPACT - LATCON / VELTRI SOMD PENETRATION SUPPORT STEEL - SUE - A-C - L3,Active,SEA - 1,West Support Building,SUES-1 - 19-16,L3 / Waffle Slab Level,,CONSTRUCTION,LATCON,TBD Architectural Finishes,,INTERIORS,2024-09-06 07:00,2024-10-18 17:00,2024-08-21 07:00,,2025-12-10 07:00,2025-12-10 07:00,2025-12-05 17:00,2025-12-05 17:00,0,250,0
CN.SEA1.6520,LATCON / VELTRI SOMD ROOF DRAIN PENETRATION SUPPORT STEEL - SUE - GL 3-33 - C-E - L6,Complete,SEA - 1,West Support Building,SUES-1 - 19-16,DS/AD,,CONSTRUCTION,LATCON,Steel Erection,,INTERIORS,2024-04-15 07:00,2024-05-16 17:00,2024-04-10 07:00,2024-06-27 17:00,2025-11-20 17:00,2025-11-20 17:00,2025-08-26 07:00,2025-08-26 07:00,0,210,100
CN.SEA1.6530,WWSE SOMD PENETRATIONS - SEA1 - GL 3-33 - C-E L4E,Complete,SEA - 1,West Support Building,SUES-1 - 19-16,DS/AD,,CONSTRUCTION,,TBD Architectural Finishes,,INTERIORS,2024-03-18 07:00,2024-04-22 11:00,2024-03-14 07:00,2024-03-29 11:00,2025-11-20 17:00,2025-11-20 17:00,2025-08-26 07:00,2025-08-26 07:00,0,224,100
CN.SEA1.6540,INSTALL ELEVATOR HSS STEEL DOOR OPENINGS - ELEVATOR 20 - SEA1 - GL 19-16 - B-C - L3,Complete,SEA - 1,West Support Building,SUES-1 - 19-16,L3 / Waffle Slab Level,,CONSTRUCTION,W&W,DRYWALL,,INTERIORS,2024-04-08 07:00,2024-04-18 11:00,2024-03-25 07:00,2025-01-20 17:00,2025-11-20 17:00,2025-11-20 17:00,2025-12-05 17:00,2025-12-05 17:00,0,64,100
CN.SEA1.6560,PH1 - F/R/P/W OAC PAD AIRLOCK WALLS - SEA1 - GL 19-17 - L4,Complete,SEA - 1,East Support Building,SUES-1 - 19-16,L4 - SUP Roof - FAB Roof,,CONSTRUCTION,BAKER,CIP WALL,JAMES LIVELY,SOMD / Roofing / Waterproofing,2024-07-19 07:00,2024-07-25 17:00,2024-06-28 07:00,2024-07-03 17:00,2025-11-20 17:00,2025-11-20 17:00,2025-12-05 17:00,2025-12-05 17:00,0,50,100
CN.SEA1.6800,INSTALL BASE COAT CRICKET - SEA1 - GL 20-17 - C-A - L4 ROOF,Complete,SEA - 1,East Support Building,SUES-1 - 19-16,L4 - SUP Roof - FAB Roof,,CONSTRUCTION,BRAZOS,TOPPING,JAMES LIVELY,SOMD / Roofing / Waterproofing,2024-10-07 07:00,2024-10-07 17:00,2024-10-05 07:00,2024-10-05 17:00,2025-11-20 17:00,2025-11-20 17:00,2025-12-05 17:00,2025-12-05 17:00,0,10,100
CN.SEA1.6810,INSPECT BASE COAT CRICKET - SEA1 - GL 20-17 - C-A - L4 ROOF,Complete,SEA - 1,East Support Building,SUES-1 - 19-16,L4 - SUP Roof - FAB Roof,,CONSTRUCTION,BRAZOS,TOPPING,JAMES LIVELY,SOMD / Roofing / Waterproofing,2024-10-07 07:00,2024-10-07 17:00,2024-10-05 07:00,2024-10-05 17:00,2025-11-20 17:00,2025-11-20 17:00,2025-12-05 17:00,2025-12-05 17:00,0,10,100
CN.SEA1.6820,INSTALL TOP COAT CRICKET - SEA1 - GL 20-17 - C-A - L4 ROOF,Complete,SEA - 1,East Support Building,SUES-1 - 19-16,L4 - SUP Roof - FAB Roof,,CONSTRUCTION,BRAZOS,TOPPING,JAMES LIVELY,SOMD / Roofing / Waterproofing,2024-10-07 07:00,2024-10-08 17:00,2024-10-07 07:00,2024-10-07 17:00,2025-11-20 17:00,2025-11-20 17:00,2025-12-05 17:00,2025-12-05 17:00,0,20,100
CN.SEA1.6830,INSTALL CRICKET - SEA1 - GL 20-17 - C-A - L4 ROOF,Complete,SEA - 1,East Support Building,SUES-1 - 19-16,L4 - SUP Roof - FAB Roof,,CONSTRUCTION,BRAZOS,TOPPING,JAMES LIVELY,SOMD / Roofing / Waterproofing,2024-10-01 07:00,2024-10-07 17:00,2024-10-01 07:00,2024-10-03 17:00,2025-11-20 17:00,2025-11-20 17:00,2025-12-05 17:00,2025-12-05 17:00,0,40,100
CN.SEA1.6840,INSPECT CRICKET - SEA1 - GL 20-17 - C-A - L4 ROOF,Complete,SEA - 1,East Support Building,SUES-1 - 19-16,L4 - SUP Roof - FAB Roof,,CONSTRUCTION,BRAZOS,TOPPING,JAMES LIVELY,SOMD / Roofing / Waterproofing,2024-10-03 07:00,2024-10-03 17:00,2024-10-03 07:00,2024-10-03 17:00,2025-11-20 17:00,2025-11-20 17:00,2025-12-05 17:00,2025-12-05 17:00,0,10,100
CN.SEA1.6850,INSTALL PRIMER CRICKET - SEA1 - GL 20-17 - C-A - L4 ROOF,Complete,SEA - 1,East Support Building,SUES-1 - 19-16,L4 - SUP Roof - FAB Roof,,CONSTRUCTION,BRAZOS,TOPPING,JAMES LIVELY,SOMD / Roofing / Waterproofing,2024-10-21 07:00,2024-10-21 17:00,2024-10-04 07:00,2024-10-04 17:00,2025-11-20 17:00,2025-11-20 17:00,2025-12-05 17:00,2025-12-05 17:00,0,10,100
CN.SEA1.6860,INSPECT PRIMER CRICKET - SEA1 - GL 20-17 - C-A - L4 ROOF,Complete,SEA - 1,East Support Building,SUES-1 - 19-16,L4 - SUP Roof - FAB Roof,,CONSTRUCTION,BRAZOS,TOPPING,JAMES LIVELY,SOMD / Roofing / Waterproofing,2024-10-04 07:00,2024-10-04 17:00,2024-10-04 07:00,2024-10-04 17:00,2025-11-20 17:00,2025-11-20 17:00,2025-12-05 17:00,2025-12-05 17:00,0,10,100
CN.SEA1.6870,PH1 - WATERPROOFING/INSPECT OAC PAD AIRLOCK WALLS - SEA1 - GL 19-17 - L4,Complete,SEA - 1,East Support Building,SUES-1 - 19-16,L4 - SUP Roof - FAB Roof,,CONSTRUCTION,BRAZOS,CIP WALL,JAMES LIVELY,SOMD / Roofing / Waterproofing,2024-07-12 07:00,2024-07-19 17:00,2024-06-25 07:00,2024-06-27 17:00,2025-11-20 17:00,2025-11-20 17:00,2025-12-05 17:00,2025-12-05 17:00,0,60,100
CN.SEA1.6880,IMPACT - D-LINE STEEL SPRAY FIREPROOFING SFRM2 - SEA1- SEA1 - L3-CEILING - GL 16-19- INSPECT SURFACE PREP ADDITIONAL STE,Complete,SEA - 1,,SUES-1 - 19-16,L4 - SUP Roof - FAB Roof,DS/AD INTERIORS,CONSTRUCTION,ROLLING PLAINS,Fireproofing,,,2024-04-19 07:00,2024-04-26 17:00,2024-04-19 07:00,2024-04-25 17:00,2025-11-20 17:00,2025-11-20 17:00,2025-06-13 08:00,2025-06-13 08:00,0,60,100
CN.SEA1.6910,DSAD PENETRATION SUPPORT STEEL FRAMING - SEA1 - GL 19-17 - L4 - C-E,Complete,SEA - 1,East Support Building,SUES-1 - 19-16,DS/AD,,CONSTRUCTION,,Decking & Detail,SEAN MONK,,2024-05-09 07:00,2024-05-17 17:00,2024-04-11 07:00,2024-04-17 17:00,2025-11-20 17:00,2025-11-20 17:00,2025-10-16 07:00,2025-10-16 07:00,0,60,100
CN.SEA1.6940,IMPACT - MECH PIPE NEEDS TO BE REMOVED - GL 18-20 - C LINE (DS AREA) (18-20),Complete,SEA - 1,East Support Building,SUES-1 - 19-16,EXTERIOR SKIN,,CONSTRUCTION,KOVACH,INSULATED METAL PANELS,JAMES LIVELY,,2024-04-19 07:00,2024-05-09 17:00,2024-04-16 07:00,2024-05-13 17:00,2025-11-20 17:00,2025-11-20 17:00,2025-12-05 17:00,2025-12-05 17:00,0,90,100
CN.SEA1.DS..4060,REMEDY - DEMO DRYWALL (INT) - SEA1 - GL 19-16 - L2 - D LINE - DS/AD,Complete,SEA - 1,West Support Building,SUES-1 - 19-16,L2 - SubFab Level,DS/AD INTERIORS,CONSTRUCTION,,DRYWALL,FIZ DATA CENTER,INTERIORS,2024-06-03 07:00,2024-06-10 15:00,2024-06-01 07:00,2024-06-06 15:00,2025-11-20 17:00,2025-11-20 17:00,2025-11-24 07:00,2025-11-24 07:00,0,48,100
CN.SEA1.8985,COMPLETE EXTERIOR DRYWALL - ELEVATOR 20 - SEA1 - GL 19-16 - L1- L3 - B-C (3 sides only),Complete,SEA - 1,West Support Building,SUES-1 - 19-16,,ELEVATOR,CONSTRUCTION,BERG,DRYWALL,,INTERIORS,2024-08-09 07:00,2024-08-20 17:00,2024-08-02 07:00,2024-08-10 17:00,2025-11-20 17:00,2025-11-20 17:00,2025-11-24 07:00,2025-11-24 07:00,0,70,100
CN.SEA1.9025,CURE TOPPING SLAB - SEA1 - GL 20-17 - C-A - L4 ROOF,Complete,SEA - 1,East Support Building,SUES-1 - 19-16,L4 - SUP Roof - FAB Roof,,CONSTRUCTION,BAKER,TOPPING,CONCRETE,SOMD / Roofing / Waterproofing,2024-10-10 07:00,2024-10-14 17:00,2024-10-10 07:00,2024-10-12 17:00,2025-11-20 17:00,2025-11-20 17:00,2025-12-05 17:00,2025-12-05 17:00,0,30,100
CN.SEA1.9055,CURE - AD STEEL PAINT FIREPROOFING IFRM - SEA1 - GL 19-16 - C-E - L2-CEILING,Complete,SEA - 1,,SUES-1 - 19-16,DS/AD,,CONSTRUCTION,ROLLING PLAINS,Fireproofing,,,2024-05-02 07:00,2024-05-06 11:00,2024-05-02 07:00,2024-05-07 17:00,2025-11-20 17:00,2025-11-20 17:00,2025-12-05 17:00,2025-12-05 17:00,0,100,100
CN.AB.AR.6960,INSTALL WALL PROTECTION - STAIR 20 - GL 18-19 - C-D - L1,Not Started,SEA - 1,East Support Building,SUES-1 - 19-16,L1 - Fndn Slab,DS/AD INTERIORS,CONSTRUCTION,BERNCO,TBD Architectural Finishes,JAMES LEE,INTERIORS,2025-11-21 07:00,2025-11-25 17:00,,,2025-11-21 07:00,2025-11-25 17:00,2025-12-03 07:00,2025-12-05 17:00,30,30,0
CN.AB.AR.6970,INSTALL WALL PROTECTION - STAIR 20 - GL 18-19 - C-D - L3,Not Started,SEA - 1,East Support Building,SUES-1 - 19-16,L3 / Waffle Slab Level,DS/AD INTERIORS,CONSTRUCTION,BERNCO,TBD Architectural Finishes,JAMES LEE,INTERIORS,2025-11-21 07:00,2025-11-25 17:00,,,2025-11-21 07:00,2025-11-25 17:00,2025-12-03 07:00,2025-12-05 17:00,30,30,0
CN.AB.AR.6980,INSTALL WALL PROTECTION - AIR LOCK 20 - GL 17-18 - C-D - L2,Not Started,SEA - 1,East Support Building,SUES-1 - 19-16,L2 - SubFab Level,DS/AD INTERIORS,CONSTRUCTION,BERNCO,TBD Architectural Finishes,JAMES LEE,INTERIORS,2025-11-21 07:00,2025-11-25 17:00,,,2025-11-21 07:00,2025-11-25 17:00,2025-12-03 07:00,2025-12-05 17:00,30,30,0
CN.AB.AR.6990,INSTALL WALL PROTECTION - IT SECURITY ROOM 20 / FA ROOM 20 - GL 18-19 - B-C - L2,Not Started,SEA - 1,East Support Building,SUES-1 - 19-16,L2 - SubFab Level,,CONSTRUCTION,BERNCO,TBD Architectural Finishes,JAMES LEE,INTERIORS,2025-11-21 07:00,2025-11-25 17:00,,,2025-11-21 07:00,2025-11-25 17:00,2025-12-03 07:00,2025-12-05 17:00,30,30,0
CN.SEA1.DS..4070,IMPACT - FIRE SPRINKLERS AND DUCT WORK IN THE WAY - GL 16- 17,Complete,SEA - 1,West Support Building,SUES-1 - 19-16,L3 / Waffle Slab Level,DS/AD INTERIORS,CONSTRUCTION,CHERRY COATING,DRYWALL,FIZ DATA CENTER,INTERIORS,2024-06-13 07:00,2024-06-18 17:00,2024-06-13 07:00,2024-06-17 17:00,2025-11-20 17:00,2025-11-20 17:00,2025-06-13 08:00,2025-06-13 08:00,0,40,100
CN.SEA1.9065,IMPACT - YATES/SECAI COORDINATE PLAN FOR STEEL FIX - L6 EXPANSION JOINT REMEDIATION - GL 19 - C-D / K-L,Complete,SEA - 1,East Support Building,SUES-1 - 19-16,DS/AD,,CONSTRUCTION,W&W,Decking & Detail,SEAN MONK,,2024-02-26 07:00,2024-03-25 17:00,2024-04-15 07:00,2024-06-17 17:00,2025-11-20 17:00,2025-11-20 17:00,2025-12-05 17:00,2025-12-05 17:00,0,170,100
CN.SEA1.9075,IMPACT - YATES SUBMIT REPAIR PROCEDURE STEEL FIX - L6 EXPANSION JOINT REMEDIATION - GL 19 - C-D / K-L,Complete,SEA - 1,East Support Building,SUES-1 - 19-16,DS/AD,,CONSTRUCTION,W&W,Decking & Detail,SEAN MONK,,2024-06-28 07:00,2024-07-05 17:00,2024-06-18 07:00,2024-06-26 17:00,2025-11-20 17:00,2025-11-20 17:00,2025-12-05 17:00,2025-12-05 17:00,0,40,100
CN.SEA1.9085,IMPACT - SECAI REVIEW & COORDINATE ALTERNATIVE STEEL FIX - L6 EXPANSION JOINT REMEDIATION - GL 19 - C-D / K-L,Complete,SEA - 1,East Support Building,SUES-1 - 19-16,DS/AD,,CONSTRUCTION,W&W,Decking & Detail,SEAN MONK,,2024-02-26 07:00,2024-03-07 17:00,2024-06-27 07:00,2024-07-10 17:00,2025-11-20 17:00,2025-11-20 17:00,2025-12-05 17:00,2025-12-05 17:00,0,90,100
CN.SEA1.9105,IMPACT - COMPLETE STEEL FIX - REPLACE CORBELS - L6 EXPANSION JOINT REMEDIATION - GL 19 - C-D,Complete,SEA - 1,East Support Building,SUES-1 - 19-16,DS/AD,,CONSTRUCTION,W&W,Decking & Detail,SEAN MONK,,2024-11-04 07:00,2024-11-15 17:00,2024-11-04 07:00,2024-11-12 17:00,2025-11-20 17:00,2025-11-20 17:00,2025-12-05 17:00,2025-12-05 17:00,0,80,100
CN.SEA1.9135,IMPACT - COMPLETE STEEL FIX - REPLACE CORBELS - L6 EXPANSION JOINT REMEDIATION - GL 19 - K-L,Complete,SEA - 1,East Support Building,SUWN-1 - 18-21,DS/AD,,CONSTRUCTION,W&W,Decking & Detail,SEAN MONK,,2024-10-29 07:00,2024-11-11 17:00,2024-10-28 07:00,2024-11-06 17:00,2025-11-20 17:00,2025-11-20 17:00,2025-12-05 17:00,2025-12-05 17:00,0,80,100
CN.SEA1.9205,IMPACT - REMAINING INSULATED METAL PANEL MODULES - GL 17-16 - D LINE (AD AREA) [L6 SOMD LEAVEOUT],Complete,SEA - 1,,SUES-1 - 19-16,EXTERIOR SKIN,,CONSTRUCTION,KOVACH,INSULATED METAL PANELS,,,2024-09-19 07:00,2024-09-21 17:00,2024-08-19 07:00,2024-08-22 17:00,2025-11-20 17:00,2025-11-20 17:00,2025-12-05 17:00,2025-12-05 17:00,0,30,100
CN.SEA1.LD.3010,LOADING DOCK EXCAVATION & DRILL PIERS - SEA1 - GL 14-18 A-LINE,Complete,SEA - 1,East Support Building,SUES-1 - 19-16,L1 - Fndn Slab,,CONSTRUCTION,BAKER,INSULATED METAL PANELS,AMBER CARO,INTERIORS,2025-01-27 07:00,2025-02-07 17:00,2025-01-07 07:00,2025-01-17 17:00,2025-11-20 17:00,2025-11-20 17:00,2025-09-04 07:00,2025-09-04 07:00,0,100,100
CN.SEA1.LD.3020,LOADING DOCK- DOCK RECESS SLAB EXCAVATION & FRP - SEA1 - GL 14-18 A-LINE,Complete,SEA - 1,East Support Building,SUES-1 - 19-16,L1 - Fndn Slab,,CONSTRUCTION,BAKER,INSULATED METAL PANELS,AMBER CARO,INTERIORS,2025-02-26 07:00,2025-03-04 17:00,2025-01-24 12:00,2025-01-30 10:00,2025-11-20 17:00,2025-11-20 17:00,2025-09-04 07:00,2025-09-04 07:00,0,50,100
CN.SEA1.LD.3030,LOADING DOCK- LOADING DOCK SLAB EXCAVATION & FRP - SEA1 - GL 14-18 A-LINE,Complete,SEA - 1,East Support Building,SUES-1 - 19-16,L1 - Fndn Slab,,CONSTRUCTION,BAKER,INSULATED METAL PANELS,AMBER CARO,INTERIORS,2025-03-04 07:00,2025-03-13 17:00,2025-01-31 07:00,2025-03-03 14:00,2025-11-20 17:00,2025-11-20 17:00,2025-09-04 07:00,2025-09-04 07:00,0,80,100
CN.SEA1.LD.3050,LOADING DOCK EXCAVATION & DRILL PIERS - SEA1 - GL 28-33 A-LINE,Complete,SEA - 1,East Support Building,SUEN-5 - 31-33,L1 - Fndn Slab,,CONSTRUCTION,BAKER,INSULATED METAL PANELS,AMBER CARO,INTERIORS,2024-12-02 08:00,2024-12-23 08:00,2024-12-11 08:00,2024-12-27 16:00,2025-11-20 17:00,2025-11-20 17:00,2025-09-04 07:00,2025-09-04 07:00,0,120,100
CN.SEA1.LD.3060,LOADING DOCK- RAMPS PLACED - SEA1 - GL 28-33 A-LINE,Complete,SEA - 1,East Support Building,SUEN-5 - 31-33,L1 - Fndn Slab,,CONSTRUCTION,BAKER,INSULATED METAL PANELS,AMBER CARO,INTERIORS,2025-03-13 07:00,2025-03-19 17:00,2025-02-13 07:00,2025-03-07 16:00,2025-11-20 17:00,2025-11-20 17:00,2025-11-13 17:00,2025-11-13 17:00,0,50,100
CN.SEA1.LD.3080,LOADING DOCK- LOADING DOCK ACCESS RAMP EXCAVATION & FRP - SEA1 - GL 14-18 A-LINE,Complete,SEA - 1,East Support Building,SUES-1 - 19-16,L1 - Fndn Slab,,CONSTRUCTION,BAKER,INSULATED METAL PANELS,AMBER CARO,INTERIORS,2025-03-19 07:00,2025-04-01 17:00,2025-03-03 07:00,2025-03-07 17:00,2025-11-20 17:00,2025-11-20 17:00,2025-11-13 17:00,2025-11-13 17:00,0,100,100
CN.SEA1.LD.3090,LOADING DOCK EXCAVATION & DRILL PIERS - SWA5 - GL 3-8 N-LINE,Complete,SEA - 1,East Support Building,FIZ 2 / SUWS 5  (GL6-1) - GL J - N - DATA CENTER 1,L1 - Fndn Slab,,CONSTRUCTION,BAKER,INSULATED METAL PANELS,AMBER CARO,INTERIORS,2025-02-13 07:00,2025-02-21 17:00,2025-01-21 14:14,2025-01-28 13:00,2025-11-20 17:00,2025-11-20 17:00,2025-09-04 07:00,2025-09-04 07:00,0,70,100
CN.SEA1.LD.3100,LOADING DOCK- DOCK RECESS SLAB EXCAVATION & FRP - SEA1 - GL 3-8 N-LINE,Complete,SEA - 1,East Support Building,FIZ 2 / SUWS 5  (GL6-1) - GL J - N - DATA CENTER 1,L1 - Fndn Slab,,CONSTRUCTION,BAKER,INSULATED METAL PANELS,AMBER CARO,INTERIORS,2025-03-10 07:00,2025-03-14 17:00,2025-02-06 07:00,2025-02-24 15:00,2025-11-20 17:00,2025-11-20 17:00,2025-09-04 07:00,2025-09-04 07:00,0,50,100
CN.SEA1.LD.3110,LOADING DOCK- LOADING  DOCK leveler  SLAB  FRP  - SEA1 - GL 3-8  N-LINE,Complete,SEA - 1,East Support Building,FIZ 2 / SUWS 5  (GL6-1) - GL J - N - DATA CENTER 1,L1 - Fndn Slab,,CONSTRUCTION,BAKER,INSULATED METAL PANELS,AMBER CARO,INTERIORS,2025-03-14 07:00,2025-03-25 17:00,2025-02-15 09:53,2025-02-27 15:00,2025-11-20 17:00,2025-11-20 17:00,2025-09-04 07:00,2025-09-04 07:00,0,80,100
CN.SEA1.LD.3120,LOADING DOCK- LOADING  DOCK ACCESS RAMP EXCAVATION & FRP  - SEA1 - GL 3-8  N-LINE - Delete,Complete,SEA - 1,East Support Building,FIZ 2 / SUWS 5  (GL6-1) - GL J - N - DATA CENTER 1,L1 - Fndn Slab,,CONSTRUCTION,BAKER,INSULATED METAL PANELS,AMBER CARO,INTERIORS,2025-03-24 07:00,2025-03-27 17:00,2025-02-24 07:00,2025-03-05 15:00,2025-11-20 17:00,2025-11-20 17:00,2025-10-15 07:00,2025-10-15 07:00,0,40,100
CN.SEA1.LD.3130,LOADING DOCK EXCAVATION & DRILL PIERS - SWA1 - GL 14-18 N-LINE,Complete,SEA - 1,East Support Building,SUWS-1 - 18-15,L1 - Fndn Slab,,CONSTRUCTION,BAKER,INSULATED METAL PANELS,AMBER CARO,INTERIORS,2025-02-24 07:00,2025-03-03 17:00,2025-02-20 07:00,2025-02-25 17:00,2025-11-20 17:00,2025-11-20 17:00,2025-08-26 07:00,2025-08-26 07:00,0,60,100
CN.SEA1.LD.3140,LOADING DOCK- DOCK RECESS SLAB EXCAVATION & FRP - SWA1 - GL 14-18 N-LINE,Complete,SEA - 1,East Support Building,SUWS-1 - 18-15,L1 - Fndn Slab,,CONSTRUCTION,BAKER,INSULATED METAL PANELS,AMBER CARO,INTERIORS,2025-04-22 07:00,2025-04-28 17:00,2025-03-18 07:00,2025-03-21 17:00,2025-11-20 17:00,2025-11-20 17:00,2025-11-14 07:00,2025-11-14 07:00,0,50,100
CN.SEA1.LD.3150,LOADING DOCK- LOADING DOCK SLAB EXCAVATION & FRP - SWA1 - GL 14-18 N-LINE,Complete,SEA - 1,East Support Building,SUWS-1 - 18-15,L1 - Fndn Slab,,CONSTRUCTION,BAKER,INSULATED METAL PANELS,AMBER CARO,INTERIORS,2025-05-13 07:00,2025-05-15 17:00,2025-04-17 07:00,2025-04-21 17:00,2025-11-20 17:00,2025-11-20 17:00,2025-11-14 07:00,2025-11-14 07:00,0,30,100
CN.SEA1.LD.3160,LOADING DOCK- LOADING  DOCK ACCESS RAMP EXCAVATION & FRP  - SWA1 - GL 14-18  N-LINE,Complete,SEA - 1,East Support Building,SUWS-1 - 18-15,L1 - Fndn Slab,,CONSTRUCTION,BAKER,INSULATED METAL PANELS,AMBER CARO,INTERIORS,2025-05-16 07:00,2025-05-21 17:00,2025-04-22 12:00,2025-04-25 17:00,2025-11-20 17:00,2025-11-20 17:00,2025-11-14 07:00,2025-11-14 07:00,0,40,100
CN.SEA1.9215,IMPACT - YATES AWAIT JACOBS TO CONFIRM REPLACEMENT CORBEL DESIGN - L6 EXPANSION JOINT REMEDIATION - GL 19 - C-D / K-L,Complete,SEA - 1,East Support Building,SUES-1 - 19-16,DS/AD,,CONSTRUCTION,W&W,Decking & Detail,SEAN MONK,,2024-02-26 07:00,2024-03-07 17:00,2024-06-28 07:00,2024-07-10 17:00,2025-11-20 17:00,2025-11-20 17:00,2025-12-05 17:00,2025-12-05 17:00,0,90,100
CN.SEA1.9225,IMPACT - WWAFCO PREP CORBEL SHOP DRAWINGS - SUBMIT TO SECAI - L6 EXPANSION JOINT REMEDIATION - GL 19 - C-D / K-L,Complete,SEA - 1,East Support Building,SUES-1 - 19-16,DS/AD,,CONSTRUCTION,W&W,Decking & Detail,SEAN MONK,,2024-07-12 07:00,2024-07-23 17:00,2024-07-11 07:00,2024-09-14 17:00,2025-11-20 17:00,2025-11-20 17:00,2025-12-05 17:00,2025-12-05 17:00,0,80,100
CN.SEA1.9235,IMPACT - SECAI REVIEW & APPROVE CORBEL SHOP DRAWINGS - L6 EXPANSION JOINT REMEDIATION - GL 19 - C-D / K-L,Complete,SEA - 1,East Support Building,SUES-1 - 19-16,DS/AD,,CONSTRUCTION,W&W,Decking & Detail,SEAN MONK,,2024-09-16 07:00,2024-09-27 17:00,2024-09-16 07:00,2024-09-28 17:00,2025-11-20 17:00,2025-11-20 17:00,2025-12-05 17:00,2025-12-05 17:00,0,80,100
CN.SEA1.9245,IMPACT - WWAFCO FABRICATE & DELIVER NEW CORBELS - L6 EXPANSION JOINT REMEDIATION - GL 19 - C-D / K-L,Complete,SEA - 1,East Support Building,SUES-1 - 19-16,DS/AD,,CONSTRUCTION,W&W,Decking & Detail,SEAN MONK,,2024-09-30 07:00,2024-10-18 17:00,2024-09-30 07:00,2024-10-26 17:00,2025-11-20 17:00,2025-11-20 17:00,2025-12-05 17:00,2025-12-05 17:00,0,120,100
CN.SEA1.9255,IMPACT - WWAFCO ERECT SCAFFOLD - L6 EXPANSION JOINT REMEDIATION - GL 19 - C-D,Complete,SEA - 1,East Support Building,SUES-1 - 19-16,DS/AD,,CONSTRUCTION,W&W,Decking & Detail,SEAN MONK,,2024-10-31 07:00,2024-11-12 17:00,2024-10-28 07:00,2024-11-02 17:00,2025-11-20 17:00,2025-11-20 17:00,2025-12-05 17:00,2025-12-05 17:00,0,80,100
CN.SEA1.9265,IMPACT - WWAFCO DISMANTLE SCAFFOLD - L6 EXPANSION JOINT REMEDIATION - GL 19 - C-D,Complete,SEA - 1,East Support Building,SUES-1 - 19-16,DS/AD,,CONSTRUCTION,W&W,Decking & Detail,SEAN MONK,,2024-11-14 07:00,2024-11-26 17:00,2024-11-14 07:00,2024-11-26 17:00,2025-11-20 17:00,2025-11-20 17:00,2025-12-05 17:00,2025-12-05 17:00,0,80,100
CN.SEA1.9275,IMPACT - WWAFCO ERECT SCAFFOLD - L6 EXPANSION JOINT REMEDIATION - GL 19 - K-L,Complete,SEA - 1,East Support Building,SUWN-1 - 18-21,DS/AD,,CONSTRUCTION,W&W,Decking & Detail,SEAN MONK,,2024-11-01 07:00,2024-11-14 17:00,2024-10-21 07:00,2024-10-26 17:00,2025-11-20 17:00,2025-11-20 17:00,2025-12-05 17:00,2025-12-05 17:00,0,80,100
CN.SEA1.9285,IMPACT - WWAFCO DISMANTLE SCAFFOLD - L6 EXPANSION JOINT REMEDIATION - GL 19 - K-L,Complete,SEA - 1,East Support Building,SUWN-1 - 18-21,DS/AD,,CONSTRUCTION,W&W,Decking & Detail,SEAN MONK,,2024-11-07 07:00,2024-11-19 17:00,2024-11-07 07:00,2024-11-19 17:00,2025-11-20 17:00,2025-11-20 17:00,2025-12-05 17:00,2025-12-05 17:00,0,80,100
CN.SEA1.9295,IMPACT - LATCON / VELTRI SOMD PENETRATION SUPPORT STEEL - SUE - A-C - L2,Active,SEA - 1,West Support Building,SUES-1 - 19-16,L2 - SubFab Level,,CONSTRUCTION,LATCON,TBD Architectural Finishes,,INTERIORS,2024-09-03 07:00,2024-10-14 17:00,2024-09-03 07:00,,2025-12-09 07:00,2025-12-09 17:00,2025-12-05 07:00,2025-12-05 17:00,10,250,0
CN.SEA1.9315,IMPACT - LATCON / VELTRI SOMD PENETRATION SUPPORT STEEL - SUE - A-C - L4 (TURNED OVER TO SECAI),Complete,SEA - 1,West Support Building,SUES-1 - 19-16,L4 - SUP Roof - FAB Roof,,CONSTRUCTION,LATCON,TBD Architectural Finishes,,INTERIORS,2024-09-06 07:00,2024-10-18 17:00,2024-08-06 07:00,2025-06-27 17:00,2025-11-20 17:00,2025-11-20 17:00,2025-12-05 17:00,2025-12-05 17:00,0,250,100
CN.SEA1.9325,IMPACT - SECAI PROVIDE ACCESS TO SOMD PENETRATION AREAS / CCD APPROVAL - SUE - A-C - L2-L4,Complete,SEA - 1,West Support Building,SUES-1 - 19-16,L3 / Waffle Slab Level,,CONSTRUCTION,LATCON,TBD Architectural Finishes,,INTERIORS,2024-07-12 07:00,2024-08-09 17:00,2024-06-28 07:00,2024-08-05 17:00,2025-11-20 17:00,2025-11-20 17:00,2025-12-05 07:00,2025-12-05 07:00,0,200,100
CN.AB.AR.7020,REMAINING DRYWALL & FINISHES  - FIRE ALARM ROOM 20  - SEA1 - GL 18-19 - C-A - L1,Complete,SEA - 1,East Support Building,SUES-1 - 19-16,L1 - Fndn Slab,FIRE ALARM ,CONSTRUCTION,BERG,DRYWALL,AMBER CARO,INTERIORS,2024-07-26 07:00,2024-08-01 17:00,2024-07-23 07:00,2024-08-01 17:00,2025-11-20 17:00,2025-11-20 17:00,2025-12-05 17:00,2025-12-05 17:00,0,50,100
CN.AB.AR.7040,REMAINING DRYWALL & FINISHES - FIRE ALARM 18 - SEA1 - GL 30-31 - C-A - L1,Complete,SEA - 1,East Support Building,SUEN-5 - 31-33,L1 - Fndn Slab,FIRE ALARM ,CONSTRUCTION,BERG,DRYWALL,AMBER CARO,INTERIORS,2024-08-09 07:00,2024-08-16 17:00,2024-07-24 07:00,2024-08-03 17:00,2025-11-20 17:00,2025-11-20 17:00,2025-12-05 17:00,2025-12-05 17:00,0,50,100
CN.AB.AR.7060,INSTALL GOAL POSTS - ELEVATOR 20 HALLWAY - SEA1 - GL 19-16 - C-A - L3,Complete,SEA - 1,East Support Building,SUES-1 - 19-16,L3 / Waffle Slab Level,,CONSTRUCTION,BERG,DRYWALL,AMBER CARO,INTERIORS,2024-07-26 07:00,2024-08-05 17:00,2024-07-08 07:00,2024-07-29 17:00,2025-11-20 17:00,2025-11-20 17:00,2025-12-05 17:00,2025-12-05 17:00,0,70,100
CN.SEA1.DS..4080,INSTALL GOAL POSTS - 4A ELEVATOR HALL 20 - SEA1 - GL 19-16 - D LINE - L2,Complete,SEA - 1,West Support Building,SUES-1 - 19-16,L2 - SubFab Level,DS/AD INTERIORS,CONSTRUCTION,FINISH PAINT,TBD Architectural Finishes,FIZ DATA CENTER,INTERIORS,2024-08-19 07:00,2024-08-26 17:00,2024-08-17 07:00,2024-08-19 17:00,2025-11-20 17:00,2025-11-20 17:00,2025-11-25 07:00,2025-11-25 07:00,0,50,100
CN.AB.AR.7230,IMPACT - EAST WALL REDESIGN TO SHAFT WALL - FIRE ALARM ROOM 20 - SEA1 - GL 18-19 - C-A - L1,Complete,SEA - 1,East Support Building,SUES-1 - 19-16,L1 - Fndn Slab,FIRE ALARM ,CONSTRUCTION,BERG,DRYWALL,AMBER CARO,INTERIORS,2024-07-26 07:00,2024-08-01 17:00,2024-07-23 07:00,2024-07-23 17:00,2025-11-20 17:00,2025-11-20 17:00,2025-12-05 17:00,2025-12-05 17:00,0,50,100
CN.SEA1.9345,INSTALL ACCESS LADDER - ELEVATOR 20,Complete,SEA - 1,West Support Building,SUES-1 - 19-16,,ELEVATOR,CONSTRUCTION,,TBD Architectural Finishes,,INTERIORS,2024-11-26 07:00,2024-12-02 17:00,2024-10-09 07:00,2024-10-11 17:00,2025-11-20 17:00,2025-11-20 17:00,2025-12-05 17:00,2025-12-05 17:00,0,40,100
CN.SEA1.9355,IMPACT - APACHE DEMO DRYWALL & SCRAPE FIREPROOFING SFRM-1 - ELEVATOR 20 - ALL LEVELS,Complete,SEA - 1,West Support Building,SUES-1 - 19-16,,ELEVATOR,CONSTRUCTION,,TBD Architectural Finishes,,INTERIORS,2024-08-23 07:00,2024-08-30 17:00,2024-08-11 07:00,2024-08-15 17:00,2025-11-20 17:00,2025-11-20 17:00,2025-11-26 07:00,2025-11-26 07:00,0,80,100
CN.SEA1.9375,DESCOPED - DRYWALL - CATCH-UP INSPECTIONS (INTERIOR SHAFT) & FIRE CAULK - L1&L2 ONLY,Complete,SEA - 1,West Support Building,SUES-1 - 19-16,,ELEVATOR,CONSTRUCTION,,TBD Architectural Finishes,,INTERIORS,2025-05-12 07:00,2025-05-30 17:00,2025-05-12 07:00,2025-07-03 09:00,2025-11-20 17:00,2025-11-20 17:00,2025-12-03 07:00,2025-12-03 07:00,0,140,100
CN.SEA1.9395,IMPACT - REAPPLY FIREPROOFING SFRM-2 - ELEVATOR 20 - ALL LEVELS,Complete,SEA - 1,West Support Building,SUES-1 - 19-16,,ELEVATOR,CONSTRUCTION,,TBD Architectural Finishes,,INTERIORS,2024-08-31 07:00,2024-09-09 17:00,2024-08-16 07:00,2024-08-23 17:00,2025-11-20 17:00,2025-11-20 17:00,2025-11-26 07:00,2025-11-26 07:00,0,80,100
CN.SEA1.DS.4080,REMEDY - TAPE & FINISH DRYWALL - SEA1 - GL 15-20 - C LINE - L2,Not Started,SEA - 1,West Support Building,SUES-1 - 19-16,L2 - SubFab Level,DS/AD INTERIORS,CONSTRUCTION,CHERRY COATING,DRYWALL,FIZ DATA CENTER,INTERIORS,2025-12-08 07:00,2025-12-10 17:00,,,2025-12-08 07:00,2025-12-10 17:00,2025-11-26 07:00,2025-12-02 17:00,30,30,0
CN.SEA1.DS..4090,REMEDY - FRAME & DRYWALL - SEA1 - GL 15-20 - C LINE - L2,Active,SEA - 1,West Support Building,SUES-1 - 19-16,L2 - SubFab Level,DS/AD INTERIORS,CONSTRUCTION,BERG,DRYWALL,FIZ DATA CENTER,INTERIORS,2024-10-15 07:00,2024-11-08 17:00,2024-10-07 07:00,,2025-12-05 07:00,2025-12-05 17:00,2025-11-25 07:00,2025-11-25 17:00,10,150,0
CN.SEA1.DS..4100,IMPACT - REMEDY - SCAFFOLDING OBSTRUCTION & H& H PIPE IN THE WAY - SEA1 - GL 15-20 - C LINE - L2,Active,SEA - 1,West Support Building,SUES-1 - 19-16,L2 - SubFab Level,DS/AD INTERIORS,CONSTRUCTION,BERG,DRYWALL,FIZ DATA CENTER,INTERIORS,2024-10-21 07:00,2024-10-24 17:00,2024-07-22 07:00,,2025-11-21 07:00,2025-11-21 17:00,2025-11-18 07:00,2025-11-18 17:00,10,30,0
CN.SEA1.DS..4110,IMPACT - REMEDY - SCAFFOLDING & PIPERACK OBSTRUCTION - SEA1 - GL 20-25 - C LINE - L2,Complete,SEA - 1,West Support Building,SUEN-2 - 22-25,L2 - SubFab Level,DS/AD INTERIORS,CONSTRUCTION,BERG,DRYWALL,FIZ DATA CENTER,INTERIORS,2024-09-27 07:00,2024-10-01 17:00,2024-08-19 07:00,2024-11-01 10:00,2025-11-20 17:00,2025-11-20 17:00,2025-11-19 07:00,2025-11-19 07:00,0,30,100
CN.SEA1.9425,SECAI - ELEVATOR TURNOVER TO SECAI / AWAIT ELEVATOR COMPLETION FOR REMAINING WORK - ELEVATOR 20,Complete,SEA - 1,West Support Building,SUES-1 - 19-16,,ELEVATOR,CONSTRUCTION,BERG,DRYWALL,,INTERIORS,2024-10-11 07:00,2024-12-03 17:00,2024-09-09 07:00,2025-01-13 17:00,2025-11-20 17:00,2025-11-20 17:00,2025-11-26 07:00,2025-11-26 07:00,0,300,100
CN.SEA1.9435,COMPLETE MECHANICAL ROOM DRYWALL / TAPE & FLOAT - ELEVATOR 20,Complete,SEA - 1,West Support Building,SUES-1 - 19-16,,ELEVATOR,CONSTRUCTION,BERG,DRYWALL,,INTERIORS,2024-08-09 07:00,2024-08-27 17:00,2024-08-02 07:00,2024-08-29 17:00,2025-11-20 17:00,2025-11-20 17:00,2025-11-26 07:00,2025-11-26 07:00,0,110,100
CN.SEA1.10235,IMPACT - REMEDIATION OF MECHANICAL ROOM DRYWALL & CEILING DAMEGED DUE TO WATER INTRUSION - ELEVATOR 20,Complete,SEA - 1,West Support Building,SUES-1 - 19-16,,ELEVATOR,CONSTRUCTION,BERG,DRYWALL,,INTERIORS,2024-09-27 07:00,2024-10-21 17:00,2024-09-07 07:00,2024-10-01 17:00,2025-11-20 17:00,2025-11-20 17:00,2025-12-05 17:00,2025-12-05 17:00,0,140,100
CN.SEA1.10245,DESCOPED -SECAI TOOK OVER - ELEVATOR 20,Complete,SEA - 1,West Support Building,SUES-1 - 19-16,,ELEVATOR,CONSTRUCTION,,TBD Architectural Finishes,,INTERIORS,2025-07-11 17:00,2025-07-11 17:00,2025-07-11 17:00,2025-07-11 17:00,2025-11-20 17:00,2025-11-20 17:00,2025-12-05 17:00,2025-12-05 17:00,0,0,100
CN.SEA1.10265,IMPACT - CCD APPROVAL FOR MECH RM REMEDIATION FOR WATER INTRUSION - ELEVATOR 20,Complete,SEA - 1,West Support Building,SUES-1 - 19-16,,ELEVATOR,CONSTRUCTION,BERG,DRYWALL,,INTERIORS,2024-08-09 07:00,2024-08-27 17:00,2024-08-30 07:00,2024-09-06 17:00,2025-11-20 17:00,2025-11-20 17:00,2025-12-05 17:00,2025-12-05 17:00,0,110,100
CN.SEA1.10275,INSTALL ELEVATOR PLATFORM / SAFETY BARRICADE - ELEVATOR 20,Complete,SEA - 1,West Support Building,SUES-1 - 19-16,,ELEVATOR,CONSTRUCTION,,TBD Architectural Finishes,,INTERIORS,2025-04-21 07:00,2025-04-24 17:00,2025-01-31 07:00,2025-02-06 17:00,2025-11-20 17:00,2025-11-20 17:00,2025-11-26 07:00,2025-11-26 07:00,0,40,100
CN.SEA1.10285,IMPACT - COMPLETE REMAINING FIREPROOFING - ELEVATOR 20 - completed,Complete,SEA - 1,West Support Building,SUES-1 - 19-16,,ELEVATOR,CONSTRUCTION,,TBD Architectural Finishes,,INTERIORS,2025-04-21 07:00,2025-04-24 17:00,2025-02-26 07:00,2025-03-25 17:00,2025-11-20 17:00,2025-11-20 17:00,2025-12-03 07:00,2025-12-03 07:00,0,40,100
CN.SEA1.10295,"COMPLETE REMAINING FRAMING, DRYWALL, FIRE CAULKING - INTERIOR SHAFT & DOOR FRONTS - ELEVATOR 20 - complete 5/9",Complete,SEA - 1,West Support Building,SUES-1 - 19-16,,ELEVATOR,CONSTRUCTION,,TBD Architectural Finishes,,INTERIORS,2025-04-23 07:00,2025-05-16 17:00,2025-03-10 07:00,2025-04-11 17:00,2025-11-20 17:00,2025-11-20 17:00,2025-11-26 07:00,2025-11-26 07:00,0,180,100
CN.SEA1.10305,IMPACT - COMPLETE REMAINING HSS STEEL DOOR OPENINGS - ELEVATOR 20,Complete,SEA - 1,West Support Building,SUES-1 - 19-16,,ELEVATOR,CONSTRUCTION,,TBD Architectural Finishes,,INTERIORS,2025-01-16 07:00,2025-02-02 17:00,2025-01-16 07:00,2025-02-20 17:00,2025-11-20 17:00,2025-11-20 17:00,2025-12-05 17:00,2025-12-05 17:00,0,180,100
CN.SEA1.10325,DESCOPED - TAPE & FLOAT - DOOR FRONTS & SHAFT - ELEVATOR 20,Complete,SEA - 1,West Support Building,SUES-1 - 19-16,,ELEVATOR,CONSTRUCTION,,TBD Architectural Finishes,,INTERIORS,2025-09-12 07:00,2025-09-16 17:00,2025-07-02 08:31,2025-07-03 17:00,2025-11-20 17:00,2025-11-20 17:00,2025-12-05 17:00,2025-12-05 17:00,0,30,100
CN.SEA1.10335,SECAI - INSTALL ELEVATOR DOOR FRAMES - ELEVATOR 20 - SECAI TO PROVIDE SCHEDULE,Complete,SEA - 1,West Support Building,SUES-1 - 19-16,,ELEVATOR,CONSTRUCTION,,TBD Architectural Finishes,,INTERIORS,2025-07-18 07:00,2025-07-24 17:00,2025-06-30 12:00,2025-07-03 17:00,2025-11-20 17:00,2025-11-20 17:00,2025-12-05 17:00,2025-12-05 17:00,0,50,100
CN.SEA1.10355,C-CHANNEL INSTALLATION - ELEVATOR 20 - remaining Lvl 3 Latcon to add flat bar to correct out off tolerance install,Complete,SEA - 1,West Support Building,SUES-1 - 19-16,,ELEVATOR,CONSTRUCTION,,TBD Architectural Finishes,,INTERIORS,2025-05-16 07:00,2025-05-20 17:00,2025-05-16 07:00,2025-05-16 17:00,2025-11-20 17:00,2025-11-20 17:00,2025-12-05 17:00,2025-12-05 17:00,0,30,100
CN.SEA1.10365,IMPACT - NO ACCESS FOR SCISSOR LIFTS SOMD PENETRATION SUPPORT STEEL - SUE - A-C - L2,Active,SEA - 1,West Support Building,SUES-1 - 19-16,L2 - SubFab Level,,CONSTRUCTION,LATCON,TBD Architectural Finishes,,INTERIORS,2024-09-03 07:00,2024-10-14 17:00,2024-09-03 07:00,,2025-11-21 07:00,2025-11-21 17:00,2025-11-19 07:00,2025-11-19 17:00,10,250,0
CN.SEA1.10375,IMPACT - NO ACCESS FOR SCISSOR LIFTS SOMD PENETRATION SUPPORT STEEL - SUE - A-C - L3,Active,SEA - 1,West Support Building,SUES-1 - 19-16,L3 / Waffle Slab Level,,CONSTRUCTION,LATCON,TBD Architectural Finishes,,INTERIORS,2024-09-06 07:00,2024-10-18 17:00,2024-08-21 07:00,,2025-11-21 07:00,2025-11-21 17:00,2025-11-19 07:00,2025-11-19 17:00,10,250,0
CN.SEA1.10385,IMPACT - NO SCAFFOLDING/SCISSOR LIFT ACTIVITIES SOMD PENETRATION SUPPORT STEEL - SUE - A-C - L4 (TURNED OVER TO SECAI),Complete,SEA - 1,West Support Building,SUES-1 - 19-16,L4 - SUP Roof - FAB Roof,,CONSTRUCTION,LATCON,TBD Architectural Finishes,,INTERIORS,2024-09-06 07:00,2024-10-18 17:00,2024-08-06 07:00,2025-06-27 07:00,2025-11-20 17:00,2025-11-20 17:00,2025-12-05 17:00,2025-12-05 17:00,0,250,100
CN.AB.AR.7830,FINISH DRYWALL & FINISHES - AIRLOCK ROOM 20 - SEA1 - GL 19-16 - C-A - L3,Complete,SEA - 1,East Support Building,SUES-1 - 19-16,L3 / Waffle Slab Level,AIRLOCKS & VESTABLES,CONSTRUCTION,FINISH PAINT,TBD Architectural Finishes,JAMES LEE,INTERIORS,2025-01-23 07:00,2025-01-29 17:00,2025-01-23 07:00,2025-02-03 17:00,2025-11-20 17:00,2025-11-20 17:00,2025-11-14 17:00,2025-11-14 17:00,0,50,100
CN.AB.AR.7840,IMPACT - E17 - MEP MATERIAL EQUIPMENT IN WAY- AIRLOCK ROOM 20 ELEV HALL - SEA1 - GL 19-16 - C-A - L3,Complete,SEA - 1,East Support Building,SUES-1 - 19-16,L3 / Waffle Slab Level,,CONSTRUCTION,CHERRY COATING,DRYWALL,AMBER CARO,INTERIORS,2024-04-23 07:00,2024-04-29 17:00,2024-10-29 07:00,2025-01-20 17:00,2025-11-20 17:00,2025-11-20 17:00,2025-11-14 17:00,2025-11-14 17:00,0,50,100
CN.AB.AR.7850,DRYWALL & TAPE & FINISH- E 33 - SEA1 - GL 19-16 - C-A - L3,Not Started,SEA - 1,East Support Building,SUEN-5 - 31-33,L3 / Waffle Slab Level,,CONSTRUCTION,CHERRY COATING,DRYWALL,AMBER CARO,INTERIORS,2025-11-24 07:00,2025-11-24 07:00,,,2025-11-24 07:00,2025-11-24 07:00,2025-12-05 17:00,2025-12-05 17:00,0,0,0
CN.AB.AR.7860,IMPACT - E33 CEILING B-B.5 MEP MATERIAL IN WAY OF STUDS - DRYWALL & TAPE & FINISH- E 33 - SEA1 - GL 19-16 - C-A - L3,Active,SEA - 1,East Support Building,SUEN-5 - 31-33,L3 / Waffle Slab Level,,CONSTRUCTION,CHERRY COATING,DRYWALL,AMBER CARO,INTERIORS,2024-11-18 07:00,2024-11-25 17:00,2024-10-24 07:00,,2025-11-21 07:00,2025-11-21 17:00,2025-12-05 07:00,2025-12-05 17:00,10,50,0
CN.SEA1.LD.3180,IMPACT - RFI's - LACK OF DESIGN COORDINATION - LOADING DOCK FOUNDATIONS - SEA1 - GL 28-33 A-LINE,Complete,SEA - 1,East Support Building,SUEN-5 - 31-33,L1 - Fndn Slab,,CONSTRUCTION,BAKER,INSULATED METAL PANELS,AMBER CARO,INTERIORS,2024-12-30 07:00,2025-01-10 17:00,2024-12-20 07:00,2025-01-22 17:00,2025-11-20 17:00,2025-11-20 17:00,2025-09-04 07:00,2025-09-04 07:00,0,90,100
CN.SEA1.LD.3190,IMPACT - RFI's - LACK OF DESIGN COORDINATION - LOADING DOCK FOUNDATIONS - A line 14 - 18,Complete,SEA - 1,East Support Building,SUES-1 - 19-16,L1 - Fndn Slab,,CONSTRUCTION,BAKER,INSULATED METAL PANELS,AMBER CARO,INTERIORS,2024-12-30 07:00,2025-01-10 17:00,2024-12-20 07:00,2025-01-06 17:00,2025-11-20 17:00,2025-11-20 17:00,2025-10-29 07:00,2025-10-29 07:00,0,90,100
CN.AB.AR.8390,FINISH DRYWALL - VESTIBULE 21 - L3,Complete,SEA - 1,East Support Building,SUES-3 - 13-9,L3 / Waffle Slab Level,AIRLOCKS & VESTABLES,CONSTRUCTION,FINISH PAINT,TBD Architectural Finishes,JAMES LEE,INTERIORS,2025-02-04 07:00,2025-02-12 17:00,2025-02-04 07:00,2025-07-21 17:00,2025-11-20 17:00,2025-11-20 17:00,2025-12-05 17:00,2025-12-05 17:00,0,70,100
CN.AB.AR.8410,FINISH DRYWALL & FINISHES -VESTIUBLE 20 - SEA1 - GL 19-16 - C-A - L3,Complete,SEA - 1,East Support Building,SUES-1 - 19-16,L3 / Waffle Slab Level,AIRLOCKS & VESTABLES,CONSTRUCTION,FINISH PAINT,TBD Architectural Finishes,JAMES LEE,INTERIORS,2025-09-25 07:00,2025-09-26 17:00,2025-05-13 07:00,2025-09-30 17:00,2025-11-20 17:00,2025-11-20 17:00,2025-12-05 17:00,2025-12-05 17:00,0,20,100
CN.AB.AR.8420,FINISH DRYWALL -CLEAN VESITUBLE 19 - SEA1 - GL 19-16 - C-A - L3,Active,SEA - 1,East Support Building,SUEN-3 - 25-28,L3 / Waffle Slab Level,AIRLOCKS & VESTABLES,CONSTRUCTION,FINISH PAINT,TBD Architectural Finishes,JAMES LEE,INTERIORS,2025-02-05 07:00,2025-02-13 17:00,2025-02-05 07:00,,2025-12-03 07:00,2025-12-03 07:00,2025-12-05 17:00,2025-12-05 17:00,0,70,0
CN.SEA1.LD.3200,IMPACT - RFI RETAINING WALL - LOADING DOCK - SEA1 - GL 14-18 A-LINE,Complete,SEA - 1,East Support Building,SUES-1 - 19-16,L1 - Fndn Slab,,CONSTRUCTION,BAKER,INSULATED METAL PANELS,AMBER CARO,INTERIORS,2025-01-27 07:00,2025-02-07 17:00,2025-01-18 07:00,2025-01-24 10:00,2025-11-20 17:00,2025-11-20 17:00,2025-10-29 07:00,2025-10-29 07:00,0,100,100
CN.SEA1.LD.3210,IMPACT - PATRIOT MISC METAL - LOADING DOCK- BACK FILL & FINE GARTING - SEA1 - GL 14-18 A-LINE,Complete,SEA - 1,East Support Building,SUES-1 - 19-16,L1 - Fndn Slab,,CONSTRUCTION,BAKER,INSULATED METAL PANELS,AMBER CARO,INTERIORS,2025-03-24 07:00,2025-03-26 17:00,2025-03-03 07:00,2025-03-07 17:00,2025-11-20 17:00,2025-11-20 17:00,2025-10-29 07:00,2025-10-29 07:00,0,30,100
CN.AB.AR.8490,IMPACT - SECAI DS/AD OPENING - VESTIBULE 21 - L3,Complete,SEA - 1,East Support Building,SUES-3 - 13-9,L3 / Waffle Slab Level,AIRLOCKS & VESTABLES,CONSTRUCTION,FINISH PAINT,TBD Architectural Finishes,JAMES LEE,INTERIORS,2025-01-23 07:00,2025-01-31 17:00,2025-01-23 07:00,2025-07-21 17:00,2025-11-20 17:00,2025-11-20 17:00,2025-12-05 17:00,2025-12-05 17:00,0,70,100
CN.AB.AR.8500,IMPACT - SECAI FLOORING CONTRACTOR WORKING IN THE AREA - AIRLOCK ROOM 20 - SEA1 - GL 19-16 - C-A - L3,Complete,SEA - 1,East Support Building,SUES-1 - 19-16,L3 / Waffle Slab Level,AIRLOCKS & VESTABLES,CONSTRUCTION,FINISH PAINT,TBD Architectural Finishes,JAMES LEE,INTERIORS,2025-01-23 07:00,2025-01-29 17:00,2025-01-23 07:00,2025-01-29 17:00,2025-11-20 17:00,2025-11-20 17:00,2025-11-14 17:00,2025-11-14 17:00,0,50,100
CN.SEA1.LD.3220,IMPACT - SUBMITTAL #0757 - RECESS SLAB - NEW DESIGN - LOADING DOCK FOUNDATIONS - SEA1 - GL 28-33 A-LINE,Complete,SEA - 1,East Support Building,SUEN-5 - 31-33,L1 - Fndn Slab,,CONSTRUCTION,BAKER,INSULATED METAL PANELS,AMBER CARO,INTERIORS,2025-02-10 07:00,2025-02-20 17:00,2025-01-21 07:00,2025-02-06 17:00,2025-11-20 17:00,2025-11-20 17:00,2025-10-24 07:00,2025-10-24 07:00,0,90,100
CN.SEA1.LD.3230,IMPACT - GL 4 - ELECTRICAL RELOCATION - LOADING DOCK - SWA5 - GL 3-8 N-LINE,Complete,SEA - 1,East Support Building,FIZ 2 / SUWS 5  (GL6-1) - GL J - N - DATA CENTER 1,L1 - Fndn Slab,,CONSTRUCTION,BAKER,INSULATED METAL PANELS,AMBER CARO,INTERIORS,2025-01-27 07:00,2025-02-04 17:00,2025-01-07 07:00,2025-01-22 17:00,2025-11-20 17:00,2025-11-20 17:00,2025-09-04 07:00,2025-09-04 07:00,0,70,100
CN.SEA1.LD.3240,IMPACT - N/17 BUCKHOIST SLAB REMOVAL SECAI - LOADING DOCK - SWA1 - GL 14-18 N-LINE,Complete,SEA - 1,East Support Building,SUWS-1 - 18-15,L1 - Fndn Slab,,CONSTRUCTION,BAKER,INSULATED METAL PANELS,AMBER CARO,INTERIORS,2025-02-03 07:00,2025-02-10 17:00,2025-01-13 07:00,2025-02-20 17:00,2025-11-20 17:00,2025-11-20 17:00,2025-08-26 07:00,2025-08-26 07:00,0,60,100
CN.SEA1.10395,IMPACT - IOCC APPROVAL FOR L2 HSS STEEL CHANGE - ELEVATOR 20,Complete,SEA - 1,West Support Building,SUES-1 - 19-16,,ELEVATOR,CONSTRUCTION,,TBD Architectural Finishes,,INTERIORS,2025-01-16 07:00,2025-02-02 17:00,2025-01-16 07:00,2025-02-07 17:00,2025-11-20 17:00,2025-11-20 17:00,2025-12-05 17:00,2025-12-05 17:00,0,180,100
CN.AB.AR.8560,IMPACT - MEP DUCT/ IN THE WAY - ELEVTOR HALL 20 - SEA1 - GL 19-16 - C-A - L3,Active,SEA - 1,East Support Building,SUES-1 - 19-16,L3 / Waffle Slab Level,ELECTRIC RM 2,CONSTRUCTION,CHERRY COATING,DRYWALL,AMBER CARO,INTERIORS,2024-04-23 07:00,2024-04-29 17:00,2025-01-25 07:00,,2025-11-21 07:00,2025-11-21 17:00,2025-12-05 07:00,2025-12-05 17:00,10,50,0
CN.AB.AR.8570,FINISH DRYWALL &_ FINISHES - ELEVTOR HALL 20 - SEA1 - GL 19-16 - C-A - L3,Not Started,SEA - 1,East Support Building,SUES-1 - 19-16,L3 / Waffle Slab Level,ELECTRIC RM 2,CONSTRUCTION,CHERRY COATING,DRYWALL,AMBER CARO,INTERIORS,2025-11-24 07:00,2025-11-24 07:00,,,2025-11-24 07:00,2025-11-24 07:00,2025-12-05 17:00,2025-12-05 17:00,0,0,0
CN.AB.AR.8580,IMPACT - PENDING CAT WALK TO CONTINUE BACK SIDE SHEATHING -VESTIUBLE 20 - SEA1 - GL 19-16 - C-A - L3,Complete,SEA - 1,East Support Building,SUES-1 - 19-16,L3 / Waffle Slab Level,AIRLOCKS & VESTABLES,CONSTRUCTION,FINISH PAINT,TBD Architectural Finishes,JAMES LEE,INTERIORS,2025-01-27 07:00,2025-02-04 17:00,2025-01-25 07:00,2025-09-19 17:00,2025-11-20 17:00,2025-11-20 17:00,2025-12-05 17:00,2025-12-05 17:00,0,70,100
CN.AB.AR.8590,IMPACT - SECAI FLOORING COUNTRACTOR IN THE AREA -VESTIUBLE 20 - SEA1 - GL 19-16 - C-A - L3,Complete,SEA - 1,East Support Building,SUES-1 - 19-16,L3 / Waffle Slab Level,AIRLOCKS & VESTABLES,CONSTRUCTION,FINISH PAINT,TBD Architectural Finishes,JAMES LEE,INTERIORS,2025-01-27 07:00,2025-02-04 17:00,2025-01-25 07:00,2025-09-26 17:00,2025-11-20 17:00,2025-11-20 17:00,2025-12-05 17:00,2025-12-05 17:00,0,70,100
CN.SEA1.LD.3250,IMPACT - MEP UG PLUMBING - LOADING DOCK FOUNDATIONS - SEA1 - GL 28-33 A-LINE,Complete,SEA - 1,East Support Building,SUEN-5 - 31-33,L1 - Fndn Slab,,CONSTRUCTION,BAKER,INSULATED METAL PANELS,AMBER CARO,INTERIORS,2025-02-10 07:00,2025-02-20 17:00,2025-01-08 07:00,2025-01-31 10:00,2025-11-20 17:00,2025-11-20 17:00,2025-09-04 07:00,2025-09-04 07:00,0,90,100
CN.SEA1.LD.3260,IMPACT - RFI 1722/9388 - BOLLARD CLASH w EDGE OF SLAB - Cut and Install Bollards delayed - SEA1 - GL 28-33 A-LINE,Complete,SEA - 1,East Support Building,SUEN-5 - 31-33,L1 - Fndn Slab,,CONSTRUCTION,BAKER,INSULATED METAL PANELS,AMBER CARO,INTERIORS,2025-02-10 07:00,2025-02-20 17:00,2025-02-05 07:00,2025-04-21 15:00,2025-11-20 17:00,2025-11-20 17:00,2025-09-04 07:00,2025-09-04 07:00,0,90,100
CN.SWA5.LD.3270,IMPACT - RFI 17242/9824 - N LINE INSTALL BOLLARDS DELAYED - LOADING DOCK - SWA5 - GL 4-8 - N Line-change thickness,Complete,SEA - 1,East Support Building,FIZ 2 / SUWS 5  (GL6-1) - GL J - N - DATA CENTER 1,L1 - Fndn Slab,,CONSTRUCTION,BAKER,INSULATED METAL PANELS,AMBER CARO,INTERIORS,2025-02-10 07:00,2025-02-20 17:00,2025-02-05 07:00,2025-09-19 17:00,2025-11-20 17:00,2025-11-20 17:00,2025-12-05 17:00,2025-12-05 17:00,0,90,100
CN.AB.AR.8650,IMPACT - NEED SCAFFOLDING TO COMPLETE N-WALL & FIRE CAULKING -CLEAN VESITUBLE 19 - SEA1 - GL 19-16 - C-A - L3,Active,SEA - 1,East Support Building,SUEN-3 - 25-28,L3 / Waffle Slab Level,AIRLOCKS & VESTABLES,CONSTRUCTION,FINISH PAINT,TBD Architectural Finishes,JAMES LEE,INTERIORS,2025-02-05 07:00,2025-02-13 17:00,2025-02-05 07:00,,2025-11-21 07:00,2025-11-21 17:00,2025-11-26 07:00,2025-11-26 17:00,10,70,0
CN.SEA1.LD.3280,IMPACT - SECAI T&T CRANE - LOADING DOCK 2 - SWA1 - GL 14-18 N-LINE,Complete,SEA - 1,East Support Building,SUWS-1 - 18-15,L1 - Fndn Slab,,CONSTRUCTION,BAKER,INSULATED METAL PANELS,AMBER CARO,INTERIORS,2025-02-24 07:00,2025-03-03 17:00,2025-02-27 07:00,2025-03-04 15:00,2025-11-20 17:00,2025-11-20 17:00,2025-09-29 07:00,2025-09-29 07:00,0,60,100
CN.SEA1.10405,POTENTIAL IMPACT - EDGE PLATE AND CUTTING SLAB - ELEVATOR 20 - completed,Complete,SEA - 1,West Support Building,SUES-1 - 19-16,,ELEVATOR,CONSTRUCTION,,TBD Architectural Finishes,,INTERIORS,2025-04-21 07:00,2025-05-09 17:00,2025-03-27 07:00,2025-04-10 17:00,2025-11-20 17:00,2025-11-20 17:00,2025-11-26 07:00,2025-11-26 07:00,0,150,100
CN.SEA1.10415,DRYWALL - DOOR FRONTS - ELEVATOR 20,Complete,SEA - 1,West Support Building,SUES-1 - 19-16,,ELEVATOR,CONSTRUCTION,,TBD Architectural Finishes,,INTERIORS,2025-04-22 07:00,2025-05-09 17:00,2025-04-22 07:00,2025-05-09 17:00,2025-11-20 17:00,2025-11-20 17:00,2025-12-03 07:00,2025-12-03 07:00,0,140,100
CN.A1.UG.1110,PH1- UNDERGROUND PLUMBING SEA2,Complete,SEA - 2,East Support Building,SUES-2 - 16-13,L1 - Fndn Slab,,CONSTRUCTION,,Underground Plumbing - Cobb,ANDREA SOLIS,,2022-10-10 07:00,2022-10-14 17:00,2022-10-10 07:00,2022-10-14 17:00,2025-11-20 17:00,2025-11-20 17:00,2025-06-13 08:00,2025-06-13 08:00,0,40,100
CN.A1.UG.1120,PH1- UNDERGROUND ELECTRICAL SEA2,Complete,SEA - 2,East Support Building,SUES-2 - 16-13,L1 - Fndn Slab,,CONSTRUCTION,,Underground Electrical - (By Owner),ANDREA SOLIS,,2022-10-13 11:00,2022-10-17 11:00,2022-10-13 11:00,2022-10-20 13:00,2025-11-20 17:00,2025-11-20 17:00,2025-06-13 08:00,2025-06-13 08:00,0,40,100
CN.SEA2.1000,PH1- SUP - EXCAVATE PIER CAPS - SEA2,Complete,SEA - 2,East Support Building,SUES-2 - 16-13,L1 - Fndn Slab,,CONSTRUCTION,,Excavate CIP,ANDREA SOLIS,,2022-09-29 11:00,2022-10-01 15:00,2022-09-29 11:00,2022-10-01 16:00,2025-11-20 17:00,2025-11-20 17:00,2025-06-13 08:00,2025-06-13 08:00,0,24,100
CN.SEA2.1010,PH1-FRP GRADE BEAM - SEA2,Complete,SEA - 2,East Support Building,SUES-2 - 16-13,L1 - Fndn Slab,,CONSTRUCTION,,Pour Concrete,ANDREA SOLIS,,2022-10-21 07:00,2022-10-23 09:00,2022-10-21 07:00,2022-10-24 11:00,2025-11-20 17:00,2025-11-20 17:00,2025-06-13 08:00,2025-06-13 08:00,0,22,100
CN.SEA2.1020,PH1-BLACK BASE (NOW RAT SLAB) - SEA2,Complete,SEA - 2,East Support Building,SUES-2 - 16-13,L1 - Fndn Slab,,CONSTRUCTION,,RAT SLAB,ANDREA SOLIS,,2022-10-24 11:00,2022-10-27 15:00,2022-10-24 11:00,2022-10-27 15:00,2025-11-20 17:00,2025-11-20 17:00,2025-06-13 08:00,2025-06-13 08:00,0,24,100
CN.SEA2.1030,PH1-CURE PIER CAPS - SEA2,Complete,SEA - 2,East Support Building,SUES-2 - 16-13,L1 - Fndn Slab,,CONSTRUCTION,,Concrete Cure,ANDREA SOLIS,,2022-10-24 11:00,2022-10-24 11:00,2022-10-24 11:00,2022-10-24 11:00,2025-11-20 17:00,2025-11-20 17:00,2025-06-13 08:00,2025-06-13 08:00,0,0,100
CN.SEA2.1080,PH1- FRP SLAB - SEA-2-L3,Complete,SEA - 2,East Support Building,SUES-2 - 16-13,L3 / Waffle Slab Level,,CONSTRUCTION,,SOMD,CONCRETE,,2023-06-12 07:00,2023-06-17 15:00,2023-06-12 07:00,2023-06-22 11:00,2025-11-20 17:00,2025-11-20 17:00,2025-06-13 08:00,2025-06-13 08:00,0,48,100
CN.SEA2.1120,PH1- FRP SLAB - SEA-2-ROOF,Complete,SEA - 2,East Support Building,SUES-2 - 16-13,L4 - SUP Roof - FAB Roof,,CONSTRUCTION,,SOMD,CONCRETE,SOMD / Roofing / Waterproofing,2023-07-11 07:00,2023-07-14 09:00,2023-07-11 07:00,2023-07-22 16:00,2025-11-20 17:00,2025-11-20 17:00,2025-10-16 07:00,2025-10-16 07:00,0,32,100
CN.SEA2.1100,PH1- CURE SOMD - SEA-2-L3,Complete,SEA - 2,East Support Building,SUES-2 - 16-13,L3 / Waffle Slab Level,,CONSTRUCTION,,Concrete Cure,JAMES LEE,,2023-06-22 11:00,2023-06-23 09:00,2023-06-22 11:00,2023-06-22 19:00,2025-11-20 17:00,2025-11-20 17:00,2025-12-05 07:00,2025-12-05 07:00,0,8,100
CN.SEA2.1130,PH1- CURE SOMD - SEA-2-ROOF,Complete,SEA - 2,East Support Building,SUES-2 - 16-13,L4 - SUP Roof - FAB Roof,,CONSTRUCTION,,Concrete Cure,JAMES LEE,SOMD / Roofing / Waterproofing,2023-08-01 13:00,2023-08-03 17:00,2023-07-22 20:23,2023-07-23 20:00,2025-11-20 17:00,2025-11-20 17:00,2025-10-16 07:00,2025-10-16 07:00,0,24,100
CN.SEA2.1090,PH1- 1st FLOOR SLAB - SEA-2-L1,Complete,SEA - 2,East Support Building,SUES-2 - 16-13,L1 - Fndn Slab,,CONSTRUCTION,,Pour Concrete,ANDREA SOLIS,,2022-10-28 09:00,2022-11-01 10:00,2022-10-28 09:00,2022-11-03 12:00,2025-11-20 17:00,2025-11-20 17:00,2025-06-13 08:00,2025-06-13 08:00,0,41,100
CN.SEA2.1190,FRP TOPPING SLAB - GL 16-11 - C-A - L4 ROOF,Complete,SEA - 2,East Support Building,SUES-2 - 16-13,L4 - SUP Roof - FAB Roof,,CONSTRUCTION,BAKER,TOPPING,CONCRETE,SOMD / Roofing / Waterproofing,2024-07-29 07:00,2024-07-31 17:00,2024-07-24 07:00,2024-07-25 17:00,2025-11-20 17:00,2025-11-20 17:00,2025-12-05 17:00,2025-12-05 17:00,0,30,100
CN.SEA2.1220,MEP EQPT PADS (LAYOUT & INSTALL DOWELS)- SEA-2-ROOF,Complete,SEA - 2,East Support Building,SUES-2 - 16-13,L4 - SUP Roof - FAB Roof,,CONSTRUCTION,,Cast-in Place Concrete - Baker Concrete,JAMES LEE,SOMD / Roofing / Waterproofing,2023-08-01 13:00,2023-08-03 17:00,2023-07-24 13:00,2023-07-26 13:00,2025-11-20 17:00,2025-11-20 17:00,2025-10-16 07:00,2025-10-16 07:00,0,24,100
CN.SEA2.1050,TIER 1 ERECT PRECAST COLUMNS & BEAMS - SEA2,Complete,SEA - 2,East Support Building,SUES-2 - 16-13,L3 / Waffle Slab Level,,CONSTRUCTION,,"SUP EAST A,B",SEAN MONK,,2023-02-27 08:00,2023-03-05 14:00,2023-02-27 08:00,2023-03-06 16:00,2025-11-20 17:00,2025-11-20 17:00,2025-06-13 08:00,2025-06-13 08:00,0,56,100
CN.SEA2.1140,PH1-ROOF LAYER PARAPET (FRAMING & SHEATING RIP)- SEA2 GL 16-13 L4,Complete,SEA - 2,East Support Building,SUES-2 - 16-13,L4 - SUP Roof - FAB Roof,,CONSTRUCTION,,FAB Subfab and Parapets,JAMES LIVELY,SOMD / Roofing / Waterproofing,2023-08-02 07:00,2023-08-03 13:00,2023-07-26 21:00,2023-07-27 13:00,2025-11-20 17:00,2025-11-20 17:00,2025-10-16 07:00,2025-10-16 07:00,0,16,100
CN.SEA2.1160,PH1-FLUID APPLIED MEMBRANE ROOFING - SEA2,Complete,SEA - 2,East Support Building,SUES-2 - 16-13,L4 - SUP Roof - FAB Roof,,CONSTRUCTION,,Roofing,JAMES LIVELY,SOMD / Roofing / Waterproofing,2023-08-04 07:00,2023-08-07 09:00,2023-07-28 07:00,2023-07-29 07:00,2025-11-20 17:00,2025-11-20 17:00,2025-10-16 07:00,2025-10-16 07:00,0,32,100
CN.SEA2.1170,PH1 - CLADDING STEEL INTERIOR - GL 16-13 - D LINE (AD AREA),Complete,SEA - 2,East Support Building,SUES-2 - 16-13,EXTERIOR SKIN,,CONSTRUCTION,PATRIOT,INSULATED METAL PANELS,JAMES LIVELY,,2024-05-03 07:00,2024-05-10 17:00,2024-04-22 07:00,2024-05-03 17:00,2025-11-20 17:00,2025-11-20 17:00,2025-11-21 07:00,2025-11-21 07:00,0,50,100
CN.SEA2.1200,PH1 - INSTALL INSULATED METAL PANEL MODULES - SEA2 - GL 16-13 - C LINE (DS AREA),Complete,SEA - 2,East Support Building,SUES-2 - 16-13,EXTERIOR SKIN,,CONSTRUCTION,,INSULATED METAL PANELS,JAMES LIVELY,,2024-04-15 07:00,2024-04-23 09:00,2024-04-04 11:00,2024-04-12 17:00,2025-11-20 17:00,2025-11-20 17:00,2025-10-29 07:00,2025-10-29 07:00,0,62,100
CN.SEA2.1150,PH1 - CLADDING STEEL - SEA-2 A LINE [SUP EXTERIOR WALL],Complete,SEA - 2,East Support Building,SUES-2 - 16-13,EXTERIOR SKIN,,CONSTRUCTION,,INSULATED METAL PANELS,JAMES LIVELY,,2023-10-02 07:00,2023-10-07 13:00,2023-09-23 07:00,2023-09-30 11:00,2025-11-20 17:00,2025-11-20 17:00,2025-10-16 07:00,2025-10-16 07:00,0,56,100
CN.SEA2.1180,PH1 - INSTALL INSULATED METAL PANEL MODULES - SEA2 - GL 16-13 - A LINE [SUP EXTERIOR WALL],Complete,SEA - 2,East Support Building,SUES-2 - 16-13,EXTERIOR SKIN,,CONSTRUCTION,,INSULATED METAL PANELS,JAMES LIVELY,,2024-01-02 11:00,2024-01-12 11:00,2024-01-02 11:00,2024-01-11 15:00,2025-11-20 17:00,2025-11-20 17:00,2025-12-04 07:00,2025-12-04 07:00,0,72,100
CN.SEA2.1110,PH1- AD STEEL FRAME INSTALL - SEA-2 fab side,Complete,SEA - 2,East Support Building,SUES-2 - 16-13,DS/AD,,CONSTRUCTION,,Steel Erection,SEAN MONK,,2023-05-23 07:00,2023-05-28 15:00,2023-05-23 07:00,2023-06-02 15:00,2025-11-20 17:00,2025-11-20 17:00,2025-06-13 08:00,2025-06-13 08:00,0,48,100
CN.AB.AR.2030,METAL STUD FRAMING (2hr) - SEA2 - GL 16-13 - L1 - C-A - MECHANICAL RM-2,Complete,SEA - 2,East Support Building,SUES-2 - 16-13,L1 - Fndn Slab,MECH RM 2,CONSTRUCTION,BERG,TBD Architectural Finishes,AMBER CARO,INTERIORS,2023-10-09 07:00,2023-10-13 15:00,2023-10-09 07:00,2023-10-17 11:00,2025-11-20 17:00,2025-11-20 17:00,2025-11-24 07:00,2025-11-24 07:00,0,48,100
CN.AB.AR.3590,MEP ROUGH IN & INSPECTION (by SECAI) - SEA2 - GL 16-13 - L1 - C-A - MECHANICAL RM-2,Complete,SEA - 2,West Support Building,SUES-2 - 16-13,L1 - Fndn Slab,MECH RM 2,CONSTRUCTION,,DRYWALL,AMBER CARO,,2023-12-01 07:00,2023-12-02 13:00,2023-12-01 07:00,2023-12-02 14:00,2025-11-20 17:00,2025-11-20 17:00,2025-11-24 07:00,2025-11-24 07:00,0,16,100
CN.AB.AR.3600,TAPE & FINISH DRYWALL - MECHANICAL RM-2 - SEA2 - GL 16-13 - C-A - L1,Complete,SEA - 2,West Support Building,SUES-2 - 16-13,L1 - Fndn Slab,MECH RM 2,CONSTRUCTION,CHERRY COATING,DRYWALL,AMBER CARO,INTERIORS,2024-02-29 11:00,2024-03-06 11:00,2024-02-29 07:00,2024-08-30 17:00,2025-11-20 17:00,2025-11-20 17:00,2025-11-24 07:00,2025-11-24 07:00,0,40,100
CN.AB.AR.3620,CRC (SECAI) Trenches - SEA-2-L1- GL 16-13 MECHANICAL RM-2,Complete,SEA - 2,West Support Building,SUES-2 - 16-13,L1 - Fndn Slab,MECH RM 2,CONSTRUCTION,,TBD Architectural Finishes,JAMES LEE,INTERIORS,2023-10-05 07:00,2023-10-08 17:00,2023-10-05 07:00,2023-10-12 11:00,2025-11-20 17:00,2025-11-20 17:00,2025-11-24 07:00,2025-11-24 07:00,0,40,100
CN.AB.AR.3640,FLOOR STRIPING - MECHANICAL RM-2 - SEA2 - GL 16-13 - C-A - L1,Not Started,SEA - 2,West Support Building,SUES-2 - 16-13,L1 - Fndn Slab,MECH RM 2,CONSTRUCTION,FLOOR STRIPING PAINT,TBD Architectural Finishes,AMBER CARO,INTERIORS,2025-11-26 07:00,2025-12-04 17:00,,,2025-11-26 07:00,2025-12-04 17:00,2025-12-01 07:00,2025-12-05 17:00,50,50,0
CN.AB.AR.3650,INSTALL WALL PROTECTION - MECH RM 2 - GL 13-14 - A-C - L1,Not Started,SEA - 2,West Support Building,SUES-2 - 16-13,L1 - Fndn Slab,MECH RM 2,CONSTRUCTION,BERNCO,TBD Architectural Finishes,JAMES LEE,INTERIORS,2025-11-21 07:00,2025-11-25 17:00,,,2025-11-21 07:00,2025-11-25 17:00,2025-11-24 07:00,2025-11-26 17:00,30,30,0
CN.AB.AR.3610,FRAMING & DRYWALL -- SEA2 - GL 13 - C-A - L1- EXIT PASSWAY 21 - SECAI TOOK OVER FOR ACCELERATION,Complete,SEA - 2,West Support Building,SUES-2 - 16-13,L1 - Fndn Slab,MECH RM 2,CONSTRUCTION,FINISH PAINT,TBD Architectural Finishes,JAMES LEE,INTERIORS,2025-06-27 07:00,2025-07-25 17:00,2025-06-27 07:00,2025-06-27 17:00,2025-11-20 17:00,2025-11-20 17:00,2025-11-24 07:00,2025-11-24 07:00,0,200,100
CN.SEA2.1250,PH1- DECKING GL 15 - 14 - SEA-2-ROOF,Complete,SEA - 2,East Support Building,SUES-2 - 16-13,L4 - SUP Roof - FAB Roof,,CONSTRUCTION,,Decking & Detail,SEAN MONK,SOMD / Roofing / Waterproofing,2023-07-03 07:00,2023-07-06 13:00,2023-07-03 07:00,2023-07-06 13:00,2025-11-20 17:00,2025-11-20 17:00,2025-06-13 08:00,2025-06-13 08:00,0,16,100
CN.SEA2.1260,PH1- DECKING GL 15 - 14 - SEA-2-L3,Complete,SEA - 2,East Support Building,SUES-2 - 16-13,L3 / Waffle Slab Level,,CONSTRUCTION,,Decking & Detail,SEAN MONK,,2023-04-15 14:00,2023-04-17 10:00,2023-04-18 10:00,2023-04-21 12:00,2025-11-20 17:00,2025-11-20 17:00,2025-06-13 08:00,2025-06-13 08:00,0,16,100
CN.SEA1.1430,PH1- MEP EQPT PADS (INSTALL DRAIN MATS)- SEA-2-ROOF,Complete,SEA - 2,East Support Building,SUES-2 - 16-13,L4 - SUP Roof - FAB Roof,,CONSTRUCTION,,Waterproofing - Preferred,JAMES LIVELY,SOMD / Roofing / Waterproofing,2023-09-08 09:00,2023-09-09 15:00,2023-08-12 13:02,2023-08-19 16:00,2025-11-20 17:00,2025-11-20 17:00,2025-10-16 07:00,2025-10-16 07:00,0,16,100
CN.SEA1.1440,PH1- ERECT PRECAST OAC PADS - SEA-2-ROOF,Complete,SEA - 2,East Support Building,SUES-2 - 16-13,L4 - SUP Roof - FAB Roof,,CONSTRUCTION,,OAC/ MECH PADS,CONCRETE,SOMD / Roofing / Waterproofing,2023-09-14 11:00,2023-09-21 15:00,2023-08-19 13:34,2023-08-27 16:00,2025-11-20 17:00,2025-11-20 17:00,2025-10-16 07:00,2025-10-16 07:00,0,64,100
CN.SEA1.1450,PH1- MEP EQPT PADS (FORM / INSTALL PVC ANGLE)- SEA-2-ROOF,Complete,SEA - 2,East Support Building,SUES-2 - 16-13,L4 - SUP Roof - FAB Roof,,CONSTRUCTION,,OAC/ MECH PADS,CONCRETE,SOMD / Roofing / Waterproofing,2023-10-02 07:00,2023-10-03 13:00,2023-09-14 09:30,2023-09-15 17:00,2025-11-20 17:00,2025-11-20 17:00,2025-12-05 17:00,2025-12-05 17:00,0,16,100
CN.SEA1.1460,PH1- MEP EQPT PADS (REPAIR WATERPROOF)- SEA-2-ROOF,Complete,SEA - 2,East Support Building,SUES-2 - 16-13,L4 - SUP Roof - FAB Roof,,CONSTRUCTION,,OAC/ MECH PADS,CONCRETE,SOMD / Roofing / Waterproofing,2023-10-03 13:00,2023-10-05 09:00,2023-09-16 09:00,2023-09-18 17:00,2025-11-20 17:00,2025-11-20 17:00,2025-12-05 17:00,2025-12-05 17:00,0,16,100
CN.SEA1.1470,PH1- MEP EQPT PADS (TROUGHS DRAIN MATS & MEP SLEEVES)- SEA-2-ROOF,Complete,SEA - 2,East Support Building,SUES-2 - 16-13,L4 - SUP Roof - FAB Roof,,CONSTRUCTION,,OAC/ MECH PADS,CONCRETE,SOMD / Roofing / Waterproofing,2023-10-06 09:00,2023-10-07 15:00,2023-09-19 09:00,2023-09-21 17:00,2025-11-20 17:00,2025-11-20 17:00,2025-12-05 17:00,2025-12-05 17:00,0,16,100
CN.SEA1.1480,PH1- MEP EQPT PADS  (TROUGHS INSULATION)- SEA-2-ROOF,Complete,SEA - 2,East Support Building,SUES-2 - 16-13,L4 - SUP Roof - FAB Roof,,CONSTRUCTION,,OAC/ MECH PADS,CONCRETE,SOMD / Roofing / Waterproofing,2023-10-08 08:00,2023-10-08 16:00,2023-09-22 13:00,2023-09-24 16:00,2025-11-20 17:00,2025-11-20 17:00,2025-12-05 17:00,2025-12-05 17:00,0,8,100
CN.SEA1.1490,PH1- MEP EQPT PADS (FORM REBAR POUR TROUGHS)- SEA-2-ROOF,Complete,SEA - 2,East Support Building,SUES-2 - 16-13,L4 - SUP Roof - FAB Roof,,CONSTRUCTION,,OAC/ MECH PADS,CONCRETE,SOMD / Roofing / Waterproofing,2023-10-09 07:00,2023-10-10 13:00,2023-09-25 13:00,2023-09-26 00:00,2025-11-20 17:00,2025-11-20 17:00,2025-12-05 17:00,2025-12-05 17:00,0,16,100
CN.SEA1.1500,PH1- MEP EQPT PADS (TROUGH WATERPROOF & MEP SLEEVES IN TROUGHS)- SEA-2-ROOF,Complete,SEA - 2,East Support Building,SUES-2 - 16-13,L4 - SUP Roof - FAB Roof,,CONSTRUCTION,,OAC/ MECH PADS,CONCRETE,SOMD / Roofing / Waterproofing,2023-10-02 07:00,2023-10-03 13:00,2023-09-26 07:00,2023-09-28 17:00,2025-11-20 17:00,2025-11-20 17:00,2025-12-05 17:00,2025-12-05 17:00,0,16,100
CN.SEA2.1270,PH1-CIP WALLS (DS) (EXTERIOR)- SEA2,Complete,SEA - 2,East Support Building,SUES-2 - 16-13,L4 - SUP Roof - FAB Roof,,CONSTRUCTION,,CIP WALL,CONCRETE,SOMD / Roofing / Waterproofing,2023-10-02 07:00,2023-10-05 09:00,2023-09-05 11:00,2023-09-11 17:00,2025-11-20 17:00,2025-11-20 17:00,2025-10-16 07:00,2025-10-16 07:00,0,32,100
CN.SEA2.1290,PH1- CONC SEALER - SEA2 - GL 16-13 - L3 - C-A,Complete,SEA - 2,East Support Building,SUES-2 - 16-13,L3 / Waffle Slab Level,,CONSTRUCTION,,Pour Concrete,JAMES LIVELY,SOMD / Roofing / Waterproofing,2024-01-02 09:00,2024-01-07 16:00,2024-01-02 07:00,2024-01-08 09:00,2025-11-20 17:00,2025-11-20 17:00,2025-12-05 07:00,2025-12-05 07:00,0,48,100
CN.SEA2.1300,PH1- SET/ FIX ANCHOR BOLTS - SEA-2-L1,Complete,SEA - 2,East Support Building,SUES-2 - 16-13,L1 - Fndn Slab,,CONSTRUCTION,,Waterproofing - Preferred,JAMES LIVELY,SOMD / Roofing / Waterproofing,2023-04-27 11:00,2023-04-29 15:00,2023-04-27 11:00,2023-04-29 16:00,2025-11-20 17:00,2025-11-20 17:00,2025-06-13 08:00,2025-06-13 08:00,0,24,100
CN.SEA2.1310,PH1- TOPPING SLAB w TRENCH & ANGLE EMBEDS- SEA-2-L1,Complete,SEA - 2,East Support Building,SUES-2 - 16-13,L1 - Fndn Slab,MECH RM 2,CONSTRUCTION,,TOPPING,CONCRETE,SOMD / Roofing / Waterproofing,2023-10-09 07:00,2023-10-16 17:00,2023-09-25 07:00,2023-09-28 09:00,2025-11-20 17:00,2025-11-20 17:00,2025-11-13 17:00,2025-11-13 17:00,0,80,100
CN.SEA2.1320,PH1- DS/AD DETAILING GL 16 - 13  SEA-2 GL C-E,Complete,SEA - 2,East Support Building,SUES-2 - 16-13,DS/AD,,CONSTRUCTION,,Decking & Detail,SEAN MONK,,2023-09-16 08:00,2023-09-23 12:00,2023-09-12 08:00,2023-09-20 16:00,2025-11-20 17:00,2025-11-20 17:00,2025-06-13 08:00,2025-06-13 08:00,0,64,100
CN.SEA2.1340,AD WATERPROOFING - SEA2 - GL 16-13 - D-E - L4/E,Complete,SEA - 2,East Support Building,SUES-2 - 16-13,DS/AD,,CONSTRUCTION,BRAZOS,TOPPING,SEAN MONK,,2024-09-09 07:00,2024-09-26 17:00,2024-07-24 07:00,2024-08-11 17:00,2025-11-20 17:00,2025-11-20 17:00,2025-12-05 17:00,2025-12-05 17:00,0,110,100
CN.SEA2.1350,AD TOPPING SLAB - SEA2 - GL 16-13 - D-E - L4/E,Complete,SEA - 2,East Support Building,SUES-2 - 16-13,DS/AD,,CONSTRUCTION,BAKER,SOMD,CONCRETE,,2024-08-27 07:00,2024-08-29 17:00,2024-08-12 07:00,2024-08-14 17:00,2025-11-20 17:00,2025-11-20 17:00,2025-12-05 17:00,2025-12-05 17:00,0,30,100
TIER 22.1050,TIER 2 ERECT PRECAST COLUMNS & BEAMS - SEA2,Complete,SEA - 2,East Support Building,SUES-2 - 16-13,L4 - SUP Roof - FAB Roof,,CONSTRUCTION,,"SUP EAST A,B",SEAN MONK,,2023-06-26 07:00,2023-06-30 17:00,2023-06-26 07:00,2023-06-30 17:00,2025-11-20 17:00,2025-11-20 17:00,2025-06-13 08:00,2025-06-13 08:00,0,40,100
CN.SEA2.1360,PH1- DECKING GL 14 - 13 - SEA-2-L3,Complete,SEA - 2,East Support Building,SUES-2 - 16-13,L3 / Waffle Slab Level,,CONSTRUCTION,,Decking & Detail,SEAN MONK,,2023-04-18 11:00,2023-04-20 17:00,2023-04-18 11:00,2023-04-21 17:00,2025-11-20 17:00,2025-11-20 17:00,2025-06-13 08:00,2025-06-13 08:00,0,16,100
CN.SEA2.1370,PH1- DECKING GL 13 - 12 - SEA-2-L3,Complete,SEA - 2,East Support Building,SUES-2 - 16-13,L3 / Waffle Slab Level,,CONSTRUCTION,,Decking & Detail,SEAN MONK,,2023-04-21 07:00,2023-04-22 13:00,2023-04-21 07:00,2023-04-22 14:00,2025-11-20 17:00,2025-11-20 17:00,2025-06-13 08:00,2025-06-13 08:00,0,16,100
CN.SEA2.1380,PH1- DECKING GL 14 - 13 - SEA-2-ROOF,Complete,SEA - 2,East Support Building,SUES-2 - 16-13,L4 - SUP Roof - FAB Roof,,CONSTRUCTION,,Decking & Detail,SEAN MONK,SOMD / Roofing / Waterproofing,2023-07-06 13:00,2023-07-08 09:00,2023-07-06 13:00,2023-07-08 10:00,2025-11-20 17:00,2025-11-20 17:00,2025-10-16 07:00,2025-10-16 07:00,0,16,100
CN.SEA2.1390,PH1- DECKING GL 13 - 12 - SEA-2-ROOF,Complete,SEA - 2,East Support Building,SUES-2 - 16-13,L4 - SUP Roof - FAB Roof,,CONSTRUCTION,,Decking & Detail,SEAN MONK,SOMD / Roofing / Waterproofing,2023-07-08 10:00,2023-07-09 16:00,2023-07-08 10:00,2023-07-10 17:00,2025-11-20 17:00,2025-11-20 17:00,2025-10-16 07:00,2025-10-16 07:00,0,16,100
CN.SEA2.1400,PH1- DS/AD DETAILING & DECKING - SEA2 - GL 16-13 - L2-L3 - C-E,Complete,SEA - 2,East Support Building,SUES-2 - 16-13,DS/AD,,CONSTRUCTION,,Decking & Detail,SEAN MONK,,2023-10-30 07:00,2023-11-05 15:00,2023-10-10 07:00,2023-10-18 07:00,2025-11-20 17:00,2025-11-20 17:00,2025-06-13 08:00,2025-06-13 08:00,0,48,100
CN.AB.AR.4260,DRYWALL 2 SIDE - MECHANICAL RM-2 - SEA2 - GL 16-13 - C-A - L1,Complete,SEA - 2,East Support Building,SUES-2 - 16-13,L1 - Fndn Slab,MECH RM 2,CONSTRUCTION,BERG,DRYWALL,AMBER CARO,INTERIORS,2024-02-29 07:00,2024-03-05 17:00,2024-02-27 07:00,2024-08-26 17:00,2025-11-20 17:00,2025-11-20 17:00,2025-11-24 07:00,2025-11-24 07:00,0,40,100
CN.AB.AR.4270,DRYWALL & INSULATION (1 side) (INT) - SEA2 - GL 16-13 - L1 - C-A MECHANICAL RM-2,Complete,SEA - 2,East Support Building,SUES-2 - 16-13,L1 - Fndn Slab,MECH RM 2,CONSTRUCTION,,DRYWALL,AMBER CARO,INTERIORS,2024-01-23 07:00,2024-01-24 13:00,2024-01-23 07:00,2024-01-26 13:00,2025-11-20 17:00,2025-11-20 17:00,2025-11-24 07:00,2025-11-24 07:00,0,16,100
CN.SEA2.1420,PH1- DS STEEL FRAME INSTALL - SEA-2 Comeback Sup Side,Complete,SEA - 2,East Support Building,SUES-2 - 16-13,DS/AD,,CONSTRUCTION,,Steel Erection,SEAN MONK,,2023-07-25 13:00,2023-07-30 11:00,2023-07-13 13:00,2023-07-17 17:00,2025-11-20 17:00,2025-11-20 17:00,2025-06-13 08:00,2025-06-13 08:00,0,48,100
CN.SEA2.1430,PH1- EXTERIOR CURBS - SEA-2-L1,Complete,SEA - 2,East Support Building,SUES-2 - 16-13,L1 - Fndn Slab,,CONSTRUCTION,,Pour Concrete,JAMES LEE,SOMD / Roofing / Waterproofing,2023-05-02 13:00,2023-05-07 13:00,2023-05-02 13:00,2023-05-08 15:00,2025-11-20 17:00,2025-11-20 17:00,2025-10-16 07:00,2025-10-16 07:00,0,40,100
CN.SEA2.1440,PH1- MEP PADS - SEA-2-L1,Complete,SEA - 2,East Support Building,SUES-2 - 16-13,L1 - Fndn Slab,MECH RM 2,CONSTRUCTION,,Pour Concrete,JAMES LEE,SOMD / Roofing / Waterproofing,2023-10-09 07:00,2023-10-11 11:00,2023-10-09 07:00,2023-10-12 11:00,2025-11-20 17:00,2025-11-20 17:00,2025-11-24 07:00,2025-11-24 07:00,0,24,100
CN.SEA2.AR.2030,METAL STUD FRAMING (2hr - SEA2 - GL 16-13 - L3 - C-A - ELECTRICAL ROOM 2,Complete,SEA - 2,East Support Building,SUES-2 - 16-13,L3 / Waffle Slab Level,ELECTRIC RM 2,CONSTRUCTION,BERG,TBD Architectural Finishes,AMBER CARO,INTERIORS,2023-11-16 07:00,2023-11-19 09:00,2023-11-13 07:00,2023-11-16 12:00,2025-11-20 17:00,2025-11-20 17:00,2025-12-05 07:00,2025-12-05 07:00,0,32,100
CN.SEA2.AR.3590,MEP ROUGH IN & INSPECTION (by SECAI) - SEA2 - GL 16-13 - L3 - C-A,Complete,SEA - 2,West Support Building,SUES-2 - 16-13,L3 / Waffle Slab Level,ELECTRIC RM 2,CONSTRUCTION,,Owner & Design Team,AMBER CARO,,2023-11-19 11:00,2023-11-22 13:00,2023-11-17 11:00,2023-11-18 08:00,2025-11-20 17:00,2025-11-20 17:00,2025-12-05 07:00,2025-12-05 07:00,0,32,100
CN.SEA2.AR.3600,TAPE & FINISH DRYWALL - SEA2 - GL 16-13 - L3 - C-A - ELECTRICAL ROOM 2,Complete,SEA - 2,West Support Building,SUES-2 - 16-13,L3 / Waffle Slab Level,ELECTRIC RM 2,CONSTRUCTION,,DRYWALL,AMBER CARO,INTERIORS,2024-03-25 07:00,2024-03-28 09:00,2024-03-25 07:00,2024-03-28 09:00,2025-11-20 17:00,2025-11-20 17:00,2025-12-05 07:00,2025-12-05 07:00,0,32,100
CN.SEA2.AR.3610,FINISH PAINT - ELECTRICAL ROOM 2 - SEA2 - GL 16-13 - C-A - L3,Not Started,SEA - 2,West Support Building,SUES-2 - 16-13,L3 / Waffle Slab Level,ELECTRIC RM 2,CONSTRUCTION,FINISH PAINT,TBD Architectural Finishes,JAMES LEE,INTERIORS,2025-11-21 07:00,2025-11-21 17:00,,,2025-11-21 07:00,2025-11-21 17:00,2025-12-05 07:00,2025-12-05 17:00,10,10,0
CN.SEA2.AR.4260,DRYWALL 2 SIDE - SEA2 - GL 16-13 - L3 - C-A - ELECTRICAL ROOM 2,Complete,SEA - 2,East Support Building,SUES-2 - 16-13,L3 / Waffle Slab Level,ELECTRIC RM 2,CONSTRUCTION,,DRYWALL,AMBER CARO,INTERIORS,2024-03-09 08:00,2024-03-12 10:00,2024-03-01 00:00,2024-03-08 16:00,2025-11-20 17:00,2025-11-20 17:00,2025-12-05 07:00,2025-12-05 07:00,0,32,100
CN.SEA2.AR.4270,DRYWALL & INSULATION (1 side) (INT) - SEA2 - GL 16-13 - L3 - C-A - ELECTRICAL ROOM 2,Complete,SEA - 2,East Support Building,SUES-2 - 16-13,L3 / Waffle Slab Level,ELECTRIC RM 2,CONSTRUCTION,,DRYWALL,AMBER CARO,INTERIORS,2024-01-02 09:00,2024-01-06 10:00,2024-01-02 07:00,2024-01-06 10:00,2025-11-20 17:00,2025-11-20 17:00,2025-12-05 07:00,2025-12-05 07:00,0,32,100
CN.SEA1.5240,PH1- GROUT SHIM - PRECAST OAC PADS - SEA-2-ROOF,Complete,SEA - 2,East Support Building,SUES-2 - 16-13,L4 - SUP Roof - FAB Roof,,CONSTRUCTION,,OAC/ MECH PADS,CONCRETE,SOMD / Roofing / Waterproofing,2023-09-22 09:00,2023-09-30 11:00,2023-08-28 10:30,2023-09-12 17:00,2025-11-20 17:00,2025-11-20 17:00,2025-10-16 07:00,2025-10-16 07:00,0,72,100
CN.SEA2.1450,IMPACT - DRB-01 ADDITIONAL BEAMS BETWEEN FAB AND AD - SEA2 - GL 16-13 - L2-L3 - C-E,Complete,SEA - 2,,SUES-2 - 16-13,DS/AD,,CONSTRUCTION,,Decking & Detail,,,2024-01-02 09:00,2024-01-04 08:00,2024-01-02 07:00,2024-01-04 13:00,2025-11-20 17:00,2025-11-20 17:00,2025-06-13 08:00,2025-06-13 08:00,0,16,100
SEC.AR.4420,SECAI - MEP PIPE RACK INSTALL AREA B DS SIDE - SEA2 - GL 15-11 - L4 - C-A,Complete,SEA - 2,East Support Building,SUES-2 - 16-13,L4 - SUP Roof - FAB Roof,,CONSTRUCTION,SECAI,Owner & Design Team,,INTERIORS,2024-07-29 07:00,2024-07-29 17:00,2024-07-29 07:00,2024-07-29 17:00,2025-11-20 17:00,2025-11-20 17:00,2025-12-05 17:00,2025-12-05 17:00,0,10,100
CN.SEA2.1460,PH1 - CLADDING STEEL  EXTERIOR - SEA2 - GL 16-13 - C LINE  (DS AREA),Complete,SEA - 2,East Support Building,SUES-2 - 16-13,EXTERIOR SKIN,,CONSTRUCTION,,INSULATED METAL PANELS,JAMES LIVELY,,2023-11-10 07:00,2023-11-18 09:00,2023-11-10 07:00,2023-12-12 15:00,2025-11-20 17:00,2025-11-20 17:00,2025-10-29 07:00,2025-10-29 07:00,0,72,100
SEA2.MOCKUP,QC INSPECT CLADDING STEEL - SEA2 - GL 15-14 - A LINE [SUP EXTERIOR WALL],Complete,SEA - 2,East Support Building,SUES-2 - 16-13,EXTERIOR SKIN,,CONSTRUCTION,,INSULATED METAL PANELS,JAMES LIVELY,,2023-11-11 08:00,2023-11-11 16:00,2023-11-11 08:00,2023-11-11 16:00,2025-11-20 17:00,2025-11-20 17:00,2025-12-04 07:00,2025-12-04 07:00,0,8,100
SEA2.MOCKUP10,BAKER GROUT BASE PLATES - SEA2 - GL 15-14 - C-E,Complete,SEA - 2,East Support Building,SUES-2 - 16-13,EXTERIOR SKIN,,CONSTRUCTION,,INSULATED METAL PANELS,JAMES LIVELY,,2023-11-11 15:00,2023-11-12 13:00,2023-11-11 15:00,2023-11-12 15:00,2025-11-20 17:00,2025-11-20 17:00,2025-12-04 07:00,2025-12-04 07:00,0,8,100
SEA2.MOCKUP20,CAULK ANGLES GDA - SEA2 - GL 15-14 - C-E,Complete,SEA - 2,East Support Building,SUES-2 - 16-13,EXTERIOR SKIN,,CONSTRUCTION,,INSULATED METAL PANELS,JAMES LIVELY,,2023-11-09 13:00,2023-11-10 11:00,2023-11-09 13:00,2023-11-10 11:00,2025-11-20 17:00,2025-11-20 17:00,2025-12-04 07:00,2025-12-04 07:00,0,8,100
SEA2.MOCKUP30,SECAI QC INSPECTION - CLADDING MOCKUP SIGN OFF - SEA2 - GL 15-14 - C-E,Complete,SEA - 2,East Support Building,SUES-2 - 16-13,EXTERIOR SKIN,,CONSTRUCTION,,INSULATED METAL PANELS,JAMES LIVELY,,2023-12-07 07:00,2023-12-07 15:00,2023-12-07 07:00,2023-12-07 15:00,2025-11-20 17:00,2025-11-20 17:00,2025-12-04 07:00,2025-12-04 07:00,0,8,100
SEA2.MOCKUP40,KOVACH MOBILIZATION & DETAILING - SEA2 - GL 15-14 - C-E,Complete,SEA - 2,East Support Building,SUES-2 - 16-13,EXTERIOR SKIN,,CONSTRUCTION,,INSULATED METAL PANELS,JAMES LIVELY,,2023-12-08 15:00,2023-12-09 13:00,2023-12-08 15:00,2023-12-09 14:00,2025-11-20 17:00,2025-11-20 17:00,2025-12-04 07:00,2025-12-04 07:00,0,8,100
SEA2.MOCKUP50,SECAI INSPECT IMP MOCKUP - SEA2 - GL 15-14 - C-E,Complete,SEA - 2,East Support Building,SUES-2 - 16-13,EXTERIOR SKIN,,CONSTRUCTION,,INSULATED METAL PANELS,JAMES LIVELY,,2023-12-18 13:00,2023-12-19 11:00,2023-12-18 13:00,2023-12-19 11:00,2025-11-20 17:00,2025-11-20 17:00,2025-12-04 07:00,2025-12-04 07:00,0,8,100
CN.SEA2.1001,METAL STUD FRAMING (2hr) - SWA2-GL 16-13- L1 D LINE,Complete,SEA - 2,West Support Building,SUES-2 - 16-13,L1 - Fndn Slab,DS/AD INTERIORS,CONSTRUCTION,BERG,TBD Architectural Finishes,FIZ DATA CENTER,INTERIORS,2023-10-09 11:00,2023-10-14 09:00,2023-10-09 11:00,2023-10-13 11:00,2025-11-20 17:00,2025-11-20 17:00,2025-12-01 17:00,2025-12-01 17:00,0,48,100
CN.SEA2.1041,TAPE & FINISH DRYWALL - SEA2 - GL 16-13 - L1 -  D LINE,Complete,SEA - 2,West Support Building,SUES-2 - 16-13,L1 - Fndn Slab,DS/AD INTERIORS,CONSTRUCTION,,DRYWALL,FIZ DATA CENTER,INTERIORS,2024-01-29 07:00,2024-02-01 17:00,2024-01-29 07:00,2024-02-02 17:00,2025-11-20 17:00,2025-11-20 17:00,2025-12-01 17:00,2025-12-01 17:00,0,40,100
CN.SEA2.1051,PRIMER & PAINT DRYWALL - GL 16-13 - D LINE - L1,Complete,SEA - 2,West Support Building,SUES-2 - 16-13,L1 - Fndn Slab,DS/AD INTERIORS,CONSTRUCTION,FINISH PAINT,TBD Architectural Finishes,FIZ DATA CENTER,INTERIORS,2024-10-25 07:00,2024-10-29 17:00,2024-10-25 07:00,2024-10-28 17:00,2025-11-20 17:00,2025-11-20 17:00,2025-12-01 17:00,2025-12-01 17:00,0,30,100
CN.SEA2.1031,DRYWALL 2 SIDE - SEA2 - GL 16-13 - L1 - D LINE,Complete,SEA - 2,West Support Building,SUES-2 - 16-13,L1 - Fndn Slab,DS/AD INTERIORS,CONSTRUCTION,,DRYWALL,FIZ DATA CENTER,INTERIORS,2024-02-10 08:00,2024-02-14 08:00,2024-01-23 08:00,2024-01-26 11:00,2025-11-20 17:00,2025-11-20 17:00,2025-12-01 17:00,2025-12-01 17:00,0,40,100
CN.SEA2.1021,DRYWALL & INSULATION (1 side) (INT) - SWA2-GL 16-13- L1 D LINE,Complete,SEA - 2,West Support Building,SUES-2 - 16-13,L1 - Fndn Slab,DS/AD INTERIORS,CONSTRUCTION,,DRYWALL,FIZ DATA CENTER,INTERIORS,2023-10-16 07:00,2023-10-20 15:00,2023-10-16 07:00,2023-10-21 13:00,2025-11-20 17:00,2025-11-20 17:00,2025-12-01 17:00,2025-12-01 17:00,0,48,100
CN.SEA2.1061,METAL STUD FRAMING (2hr) - SEA2 - GL 16-13 - L2 - D LINE,Complete,SEA - 2,West Support Building,SUES-2 - 16-13,L2 - SubFab Level,DS/AD INTERIORS,CONSTRUCTION,BERG,TBD Architectural Finishes,FIZ DATA CENTER,INTERIORS,2024-01-17 07:00,2024-01-21 15:00,2024-01-15 07:00,2024-01-20 16:00,2025-11-20 17:00,2025-11-20 17:00,2025-11-24 07:00,2025-11-24 07:00,0,48,100
CN.SEA2.1101,REMEDY - TAPE & FINISH DRYWALL - SEA2 - GL 16-13 - D LINE - L2,Complete,SEA - 2,West Support Building,SUES-2 - 16-13,L2 - SubFab Level,DS/AD INTERIORS,CONSTRUCTION,CHERRY COATING,DRYWALL,FIZ DATA CENTER,INTERIORS,2024-08-23 07:00,2024-08-27 17:00,2024-08-07 07:00,2024-08-10 17:00,2025-11-20 17:00,2025-11-20 17:00,2025-12-04 07:00,2025-12-04 07:00,0,30,100
CN.SEA2.1111,FINISH PAINT - SEA2 - GL 16-13 - D LINE - L2,Not Started,SEA - 2,West Support Building,SUES-2 - 16-13,L2 - SubFab Level,DS/AD INTERIORS,CONSTRUCTION,FINISH PAINT,TBD Architectural Finishes,FIZ DATA CENTER,INTERIORS,2025-11-21 07:00,2025-11-24 17:00,,,2025-11-21 07:00,2025-11-24 17:00,2025-12-04 07:00,2025-12-05 17:00,20,20,0
CN.SEA2.1091,REMEDY - DEMO DRYWALL (INT) - SEA2 - GL 16-13 - L2 - D LINE,Complete,SEA - 2,West Support Building,SUES-2 - 16-13,L2 - SubFab Level,DS/AD INTERIORS,CONSTRUCTION,,DRYWALL,FIZ DATA CENTER,INTERIORS,2024-06-03 07:00,2024-06-13 09:00,2024-06-01 07:00,2024-06-10 09:00,2025-11-20 17:00,2025-11-20 17:00,2025-11-24 07:00,2025-11-24 07:00,0,62,100
CN.SEA2.1081,DRYWALL & INSULATION (1 side) (INT) - SEA2 - GL 16-13 - L2 - D LINE,Complete,SEA - 2,West Support Building,SUES-2 - 16-13,L2 - SubFab Level,DS/AD INTERIORS,CONSTRUCTION,,DRYWALL,FIZ DATA CENTER,INTERIORS,2024-01-22 08:00,2024-01-26 16:00,2024-01-22 08:00,2024-01-26 16:00,2025-11-20 17:00,2025-11-20 17:00,2025-11-24 07:00,2025-11-24 07:00,0,48,100
CN.SEA2.AR.2040,TEMP WALLS Framing and Drywall- SEB2- GL 16-13 - L3 - C-A,Complete,SEA - 2,,SUES-2 - 16-13,L3 / Waffle Slab Level,ELECTRIC RM 2,CONSTRUCTION,,DRYWALL,,,2023-10-07 08:00,2023-10-11 08:00,2023-10-07 08:00,2023-10-11 16:00,2025-11-20 17:00,2025-11-20 17:00,2025-12-05 17:00,2025-12-05 17:00,0,40,100
CN.SEA2.1490,PH1 -WELD CLIPS - CLADDING STEEL - SEA2 - GL 16-13 - C-E (DSAREA),Complete,SEA - 2,East Support Building,SUES-2 - 16-13,EXTERIOR SKIN,,CONSTRUCTION,,INSULATED METAL PANELS,JAMES LIVELY,,2023-10-24 07:00,2023-10-25 09:30,2023-10-24 07:00,2023-10-25 09:30,2025-11-20 17:00,2025-11-20 17:00,2025-10-29 07:00,2025-10-29 07:00,0,12,100
CN.SEA2.1410,IMPACT - DS STEEL BEAM STIFFNER CONNECTION FIXES - SEA2 - GL 16-13 - L4 - C-E,Complete,SEA - 2,,SUES-2 - 16-13,DS/AD,,CONSTRUCTION,,Decking & Detail,,,2024-01-02 09:00,2024-01-04 08:00,2023-12-14 07:00,2023-12-16 13:00,2025-11-20 17:00,2025-11-20 17:00,2025-12-02 07:00,2025-12-02 07:00,0,16,100
CN.SEA5.3961,PH1- DS/AD DECKING  GL 16 - 13  SEA-2 L2-L3,Complete,SEA - 2,East Support Building,SUES-2 - 16-13,DS/AD,,CONSTRUCTION,,Decking & Detail,SEAN MONK,,2023-09-21 11:00,2023-10-05 17:00,2023-09-21 11:00,2023-09-27 07:00,2025-11-20 17:00,2025-11-20 17:00,2025-06-13 08:00,2025-06-13 08:00,0,136,100
CN.SEA5.3971,PH1- DS/AD FRP SLAB - SEA2 - GL 16-13 - L3 - C-E,Complete,SEA - 2,East Support Building,SUES-2 - 16-13,DS/AD,,CONSTRUCTION,,Decking & Detail,CONCRETE,,2023-10-30 07:00,2023-11-02 13:00,2023-10-30 07:00,2023-11-01 07:00,2025-11-20 17:00,2025-11-20 17:00,2025-10-16 07:00,2025-10-16 07:00,0,16,100
CN.SEA2.1470,AD STEEL PAINT FIREPROOFING IFRM - SEA2 - GL 16-13 - L2-CEILING - C-E,Complete,SEA - 2,,SUES-2 - 16-13,DS/AD,,CONSTRUCTION,,Fireproofing,,,2023-12-20 07:00,2023-12-29 15:00,2023-12-20 07:00,2024-01-01 13:00,2025-11-20 17:00,2025-11-20 17:00,2025-10-16 07:00,2025-10-16 07:00,0,48,100
CN.SEA2.1121,METAL STUD FRAMING (2hr) - SEA2 - GL 16-13 - L3 - D LINE - D Line,Complete,SEA - 2,West Support Building,SUES-2 - 16-13,L3 / Waffle Slab Level,DS/AD INTERIORS,CONSTRUCTION,BERG,TBD Architectural Finishes,FIZ DATA CENTER,INTERIORS,2024-02-10 11:00,2024-02-15 09:00,2024-02-10 11:00,2024-02-15 12:00,2025-11-20 17:00,2025-11-20 17:00,2025-06-13 08:00,2025-06-13 08:00,0,48,100
CN.SEA2.1161,TAPE & FINISH DRYWALL - SEA2 - GL 16-13 - D LINE - L3,Complete,SEA - 2,West Support Building,SUES-2 - 16-13,L3 / Waffle Slab Level,DS/AD INTERIORS,CONSTRUCTION,CHERRY COATING,DRYWALL,FIZ DATA CENTER,INTERIORS,2024-05-17 07:00,2024-05-23 17:00,2024-05-17 07:00,2024-05-21 17:00,2025-11-20 17:00,2025-11-20 17:00,2025-06-13 08:00,2025-06-13 08:00,0,40,100
CN.SEA2.1171,D/S SGP Wall Turnover - SEA2 - GL 16-13 - D LINE - L3,Complete,SEA - 2,West Support Building,SUES-2 - 16-13,L3 / Waffle Slab Level,DS/AD INTERIORS,CONSTRUCTION,,TBD Architectural Finishes,FIZ DATA CENTER,INTERIORS,2024-05-21 07:00,2024-05-21 17:00,2024-05-21 07:00,2024-05-21 17:00,2025-11-20 17:00,2025-11-20 17:00,2025-06-13 08:00,2025-06-13 08:00,0,10,100
CN.SEA2.1151,DRYWALL 2 SIDE - SEA2 - GL 16-13 - L3 - D LINE,Complete,SEA - 2,West Support Building,SUES-2 - 16-13,L3 / Waffle Slab Level,DS/AD INTERIORS,CONSTRUCTION,BERG,DRYWALL,FIZ DATA CENTER,INTERIORS,2024-04-30 07:00,2024-05-06 17:00,2024-04-30 07:00,2024-05-03 09:00,2025-11-20 17:00,2025-11-20 17:00,2025-06-13 08:00,2025-06-13 08:00,0,40,100
CN.SEA2.1141,DRYWALL & INSULATION (1st layer) (INT) - SEA2 - GL 16-13 - L3 - D LINE,Complete,SEA - 2,West Support Building,SUES-2 - 16-13,L3 / Waffle Slab Level,DS/AD INTERIORS,CONSTRUCTION,,DRYWALL,FIZ DATA CENTER,INTERIORS,2024-02-19 11:00,2024-02-25 09:00,2024-02-19 11:00,2024-02-25 12:00,2025-11-20 17:00,2025-11-20 17:00,2025-06-13 08:00,2025-06-13 08:00,0,48,100
CN.SEA2.6000,WATER PROOF PEDASTALS -SEA2 - GL 15-11 - L4 - C-AROOF,Complete,SEA - 2,East Support Building,SUES-2 - 16-13,L4 - SUP Roof - FAB Roof,,CONSTRUCTION,,Roofing,,SOMD / Roofing / Waterproofing,2023-12-18 07:00,2023-12-18 15:00,2023-12-18 07:00,2023-12-18 15:00,2025-11-20 17:00,2025-11-20 17:00,2025-12-05 17:00,2025-12-05 17:00,0,8,100
CN.SEA2.6010,WATER PROOFING & POUR PEDASTALS - SEA2 - GL 15-11 - L4 - C-A - ROOF,Complete,SEA - 2,East Support Building,SUES-2 - 16-13,L4 - SUP Roof - FAB Roof,,CONSTRUCTION,,Roofing,,SOMD / Roofing / Waterproofing,2023-12-18 15:00,2023-12-19 13:00,2023-12-18 15:00,2023-12-19 13:00,2025-11-20 17:00,2025-11-20 17:00,2025-12-05 17:00,2025-12-05 17:00,0,8,100
CN.SEA2.6020,FINISH WATER PROOFING & POUR PEDASTALS - SEA2 - GL 15-11 - L4 - C-A - ROOF,Complete,SEA - 2,East Support Building,SUES-2 - 16-13,L4 - SUP Roof - FAB Roof,,CONSTRUCTION,,Roofing,,SOMD / Roofing / Waterproofing,2023-12-19 13:00,2023-12-20 11:00,2023-12-19 13:00,2023-12-20 11:00,2025-11-20 17:00,2025-11-20 17:00,2025-12-05 17:00,2025-12-05 17:00,0,8,100
CN.SEA2.6030,STRIP PEDESTALS - SEA2 - GL 15-11 - L4 - C-A - ROOF,Complete,SEA - 2,East Support Building,SUES-2 - 16-13,L4 - SUP Roof - FAB Roof,,CONSTRUCTION,,Roofing,,SOMD / Roofing / Waterproofing,2023-12-20 11:00,2023-12-21 09:00,2023-12-20 11:00,2023-12-21 09:00,2025-11-20 17:00,2025-11-20 17:00,2025-12-05 17:00,2025-12-05 17:00,0,8,100
CN.SEA2.6040,INSTALL PRIMER - GL 16-11 - C-A - L4 ROOF,Complete,SEA - 2,East Support Building,SUES-2 - 16-13,L4 - SUP Roof - FAB Roof,,CONSTRUCTION,BRAZOS,TOPPING,,SOMD / Roofing / Waterproofing,2024-07-16 07:00,2024-07-16 17:00,2024-07-09 07:00,2024-07-09 17:00,2025-11-20 17:00,2025-11-20 17:00,2025-12-05 17:00,2025-12-05 17:00,0,10,100
CN.SEA2.6060,INSPECT PRIMER - GL 16-11 - C-A - L4 ROOF,Complete,SEA - 2,East Support Building,SUES-2 - 16-13,L4 - SUP Roof - FAB Roof,,CONSTRUCTION,BRAZOS,TOPPING,,SOMD / Roofing / Waterproofing,2024-07-16 07:00,2024-07-16 17:00,2024-07-09 07:00,2024-07-09 17:00,2025-11-20 17:00,2025-11-20 17:00,2025-12-05 17:00,2025-12-05 17:00,0,10,100
CN.SEA2.6080,INSTALL BASE COAT - GL 16-11 - C-A - L4 ROOF,Complete,SEA - 2,East Support Building,SUES-2 - 16-13,L4 - SUP Roof - FAB Roof,,CONSTRUCTION,BRAZOS,TOPPING,,SOMD / Roofing / Waterproofing,2024-07-17 07:00,2024-07-17 17:00,2024-07-10 07:00,2024-07-10 17:00,2025-11-20 17:00,2025-11-20 17:00,2025-12-05 17:00,2025-12-05 17:00,0,10,100
CN.SEA2.6100,INSPECT BASE COAT - GL 16-11 - C-A - L4 ROOF,Complete,SEA - 2,East Support Building,SUES-2 - 16-13,L4 - SUP Roof - FAB Roof,,CONSTRUCTION,BRAZOS,TOPPING,,SOMD / Roofing / Waterproofing,2024-07-17 07:00,2024-07-17 17:00,2024-07-10 07:00,2024-07-10 17:00,2025-11-20 17:00,2025-11-20 17:00,2025-12-05 17:00,2025-12-05 17:00,0,10,100
CN.SEA2.6110,INSTALL TOP COAT - GL 16-11 - C-A - L4 ROOF,Complete,SEA - 2,East Support Building,SUES-2 - 16-13,L4 - SUP Roof - FAB Roof,,CONSTRUCTION,BRAZOS,TOPPING,,SOMD / Roofing / Waterproofing,2024-07-18 07:00,2024-07-19 17:00,2024-07-11 07:00,2024-07-11 17:00,2025-11-20 17:00,2025-11-20 17:00,2025-12-05 17:00,2025-12-05 17:00,0,20,100
CN.SEA2.6120,INSPECT TOP COAT - GL 16-11 - C-A - L4 ROOF,Complete,SEA - 2,East Support Building,SUES-2 - 16-13,L4 - SUP Roof - FAB Roof,,CONSTRUCTION,BRAZOS,TOPPING,,SOMD / Roofing / Waterproofing,2024-07-12 07:00,2024-07-12 17:00,2024-07-11 07:00,2024-07-11 17:00,2025-11-20 17:00,2025-11-20 17:00,2025-12-05 17:00,2025-12-05 17:00,0,10,100
CN.SEA2.6130,INSPECT TOP COAT CRICKET - GL 16-11 - C-A - L4 ROOF,Complete,SEA - 2,East Support Building,SUES-2 - 16-13,L4 - SUP Roof - FAB Roof,,CONSTRUCTION,BRAZOS,TOPPING,,SOMD / Roofing / Waterproofing,2024-07-29 07:00,2024-07-29 17:00,2024-07-23 07:00,2024-07-23 17:00,2025-11-20 17:00,2025-11-20 17:00,2025-12-05 17:00,2025-12-05 17:00,0,10,100
CN.SEA5.4061,PH1- DS/AD DECKING & DETAILING - SEA2 - GL 16-13 - L6 - C-E,Complete,SEA - 2,East Support Building,SUES-2 - 16-13,DS/AD,,CONSTRUCTION,,Decking & Detail,SEAN MONK,,2023-12-09 08:00,2023-12-14 08:00,2023-12-07 08:00,2023-12-10 11:00,2025-11-20 17:00,2025-11-20 17:00,2025-06-13 08:00,2025-06-13 08:00,0,40,100
CN.SEA5.4071,PH1- DS/AD DECKING & DETAILING - SEA2 - GL 16-13 - L4&4/E - C-E,Complete,SEA - 2,East Support Building,SUES-2 - 16-13,DS/AD,,CONSTRUCTION,,Decking & Detail,SEAN MONK,,2024-01-17 07:00,2024-01-21 15:00,2024-01-11 10:00,2024-01-17 12:00,2025-11-20 17:00,2025-11-20 17:00,2025-10-16 07:00,2025-10-16 07:00,0,48,100
CN.SEA1.5400,PH1- DS/AD FRP SLAB - SEA2 - GL 16-13 - L4/E - C-E,Complete,SEA - 2,East Support Building,SUES-2 - 16-13,DS/AD,,CONSTRUCTION,,SOMD,CONCRETE,,2024-01-22 12:00,2024-01-26 12:00,2024-01-16 12:00,2024-01-19 12:00,2025-11-20 17:00,2025-11-20 17:00,2025-10-16 07:00,2025-10-16 07:00,0,40,100
CN.SEA5.3991,PH1- DS/AD FRP SLAB - SEA-2 L2,Complete,SEA - 2,,SUES-2 - 16-13,DS/AD,,CONSTRUCTION,,SOMD,,,2023-09-30 08:00,2023-10-04 08:00,2023-09-30 08:00,2023-10-02 16:00,2025-11-20 17:00,2025-11-20 17:00,2025-11-24 07:00,2025-11-24 07:00,0,40,100
CN.SEA2.1480,DS/AD STEEL SPRAY FIREPROOFING SFRM- SEA-2 L1 CEILING,Complete,SEA - 2,,SUES-2 - 16-13,DS/AD,,CONSTRUCTION,,Fireproofing,,,2023-10-13 08:00,2023-10-18 15:00,2023-10-13 08:00,2023-10-17 16:00,2025-11-20 17:00,2025-11-20 17:00,2025-11-24 07:00,2025-11-24 07:00,0,56,100
CN.SEA5.6220,DSAD PENETRATION SUPPORT STEEL FRAMING - SEA2 - GL 16-13 - L3 - C-E,Complete,SEA - 2,East Support Building,SUES-2 - 16-13,DS/AD,,CONSTRUCTION,,Decking & Detail,SEAN MONK,,2024-01-02 09:00,2024-01-07 08:00,2024-01-02 07:00,2024-01-02 07:00,2025-11-20 17:00,2025-11-20 17:00,2025-10-16 07:00,2025-10-16 07:00,0,40,100
CN.SEA5.6230,DSAD PENETRATION SUPPORT STEEL FRAMING - SEA2 - GL 14-10 - L4 - C-E,Complete,SEA - 2,East Support Building,SUES-2 - 16-13,DS/AD,,CONSTRUCTION,,Decking & Detail,SEAN MONK,,2024-04-25 07:00,2024-04-30 17:00,2024-04-11 07:00,2024-04-17 17:00,2025-11-20 17:00,2025-11-20 17:00,2025-10-16 07:00,2025-10-16 07:00,0,40,100
CN.SEA5.4091,PH1- DS/AD FRP SLAB - SEA2 - GL 16-13 - L6 - C-E,Complete,SEA - 2,,SUES-2 - 16-13,DS/AD,,CONSTRUCTION,,SOMD,,,2023-12-11 07:00,2023-12-14 11:00,2023-12-11 07:00,2023-12-14 11:00,2025-11-20 17:00,2025-11-20 17:00,2025-12-02 07:00,2025-12-02 07:00,0,24,100
CN.SEA5.4101,CURE FRP SLAB - SEA2 - GL 16-13 - L6 - C-E,Complete,SEA - 2,,SUES-2 - 16-13,DS/AD,,CONSTRUCTION,,SOMD,,,2023-12-14 11:00,2023-12-16 15:00,2023-12-14 11:00,2023-12-16 16:00,2025-11-20 17:00,2025-11-20 17:00,2025-12-02 07:00,2025-12-02 07:00,0,24,100
CN.SEA2.1500,CLADDING STEEL AND DETAILING INSPECTIONS - SEA2 GL16-13 A LINE [SUP EXTERIOR WALL](Waiting on MEP CRANE),Complete,SEA - 2,,SUES-2 - 16-13,EXTERIOR SKIN,,CONSTRUCTION,,INSULATED METAL PANELS,,,2023-10-30 13:00,2023-11-11 11:00,2023-10-30 13:00,2023-11-13 11:00,2025-11-20 17:00,2025-11-20 17:00,2025-12-04 07:00,2025-12-04 07:00,0,98,100
CN.SEA2.6200,IMPACT - MEP OAC EQUIPMENT CRANE & STOCKED MATERIAL CRANE PADS - SEA2 - GL 16-13 - C-E,Complete,SEA - 2,,SUES-3 - 13-9,EXTERIOR SKIN,,CONSTRUCTION,,INSULATED METAL PANELS,,,2023-10-30 08:00,2023-11-04 10:00,2023-10-02 08:00,2023-10-27 07:00,2025-11-20 17:00,2025-11-20 17:00,2025-10-16 07:00,2025-10-16 07:00,0,32,100
CN.SEA2.1530,INSTALL INSULATED METAL PANEL MODULES - GL 16-13 - D LINE (AD AREA),Complete,SEA - 2,,SUES-2 - 16-13,EXTERIOR SKIN,,CONSTRUCTION,KOVACH,INSULATED METAL PANELS,,,2024-07-05 07:00,2024-07-09 17:00,2024-07-04 07:00,2024-07-10 17:00,2025-11-20 17:00,2025-11-20 17:00,2025-12-05 17:00,2025-12-05 17:00,0,50,100
CN.SEA2.1221,IMPACT DRYWALL DAMAGED BY SECAI D LINE,Complete,SEA - 2,,SUES-2 - 16-13,L1 - Fndn Slab,DS/AD INTERIORS,CONSTRUCTION,,DRYWALL,,,2023-11-13 08:00,2023-11-18 08:00,2023-11-13 08:00,2023-11-25 16:00,2025-11-20 17:00,2025-11-20 17:00,2025-12-01 17:00,2025-12-01 17:00,0,40,100
CN.SEA2.1231,METAL STUD FRAMING (2hr) - SEA2 - GL 16-13 - L2 - D Line,Complete,SEA - 2,,SUES-2 - 16-13,L2 - SubFab Level,DS/AD INTERIORS,CONSTRUCTION,BERG,,,,2023-10-20 08:00,2023-10-25 08:30,2023-10-20 08:00,2023-10-24 16:00,2025-11-20 17:00,2025-11-20 17:00,2025-11-24 07:00,2025-11-24 07:00,0,40,100
CN.SEA2.1241,DRYWALL & INSULATION (1 side) (INT) - SEA2 - GL 16-13 - L2 - D Line,Complete,SEA - 2,,SUES-2 - 16-13,L2 - SubFab Level,DS/AD INTERIORS,CONSTRUCTION,,,,,2023-10-24 08:00,2023-10-29 08:00,2023-10-24 08:00,2023-10-28 16:00,2025-11-20 17:00,2025-11-20 17:00,2025-11-24 07:00,2025-11-24 07:00,0,40,100
CN.SEA2.1251,IMPACT DRYWALL REWORK DUE TO DAMAGE BY SECAI (TIDY),Complete,SEA - 2,,SUES-2 - 16-13,L2 - SubFab Level,DS/AD INTERIORS,CONSTRUCTION,,TBD Architectural Finishes,,,2023-11-30 07:00,2023-12-03 17:00,2023-11-29 08:00,2023-12-31 13:00,2025-11-20 17:00,2025-11-20 17:00,2025-11-24 07:00,2025-11-24 07:00,0,40,100
CN.SEA2.6230,IMPACT - MEP CRANE & STOCKED MATERIAL CRANE PADS - SEA2 - GL 18-13 - C-E,Complete,SEA - 2,,SUES-2 - 16-13,EXTERIOR SKIN,,CONSTRUCTION,,INSULATED METAL PANELS,,,2023-10-30 08:00,2023-11-04 10:00,2023-10-30 08:00,2023-12-22 11:00,2025-11-20 17:00,2025-11-20 17:00,2025-10-16 07:00,2025-10-16 07:00,0,32,100
CN.SEA2.1550,KNEE WALL -SEA2 - GL 16-13 - L4 - C-E -DS/AD,Complete,SEA - 2,,SUES-2 - 16-13,DS/AD,,CONSTRUCTION,,Cast-in Place Concrete - Baker Concrete,,,2024-01-22 07:00,2024-01-25 09:00,2024-01-22 07:00,2024-01-24 09:00,2025-11-20 17:00,2025-11-20 17:00,2025-11-21 07:00,2025-11-21 07:00,0,32,100
IMP.4650,IMPACT BROWN AND ROOT MATERIAL IMPACTING,Complete,SEA - 2,,SUES-2 - 16-13,L1 - Fndn Slab,MECH RM 2,CONSTRUCTION,,DRYWALL,,,2023-12-04 07:00,2023-12-08 17:00,2023-12-04 07:00,2023-12-19 13:00,2025-11-20 17:00,2025-11-20 17:00,2025-11-24 07:00,2025-11-24 07:00,0,40,100
CN.SEA2.1560,D-LINE STEEL SPRAY FIREPROOFING SFRM2 - SEA2 - L3-CEILING - GL 13-16,Complete,SEA - 2,,SUES-2 - 16-13,L4 - SUP Roof - FAB Roof,DS/AD INTERIORS,CONSTRUCTION,ROLLING PLAINS,Fireproofing,,,2024-04-15 07:00,2024-04-23 17:00,2024-04-15 07:00,2024-04-18 17:00,2025-11-20 17:00,2025-11-20 17:00,2025-06-13 08:00,2025-06-13 08:00,0,70,100
CN.SEA2.6240,IMPACT - W&W MEP PIPERACK STEEL CRANE Gridline A 13 - 14 - SEA2 - A-Line,Complete,SEA - 2,,SUES-3 - 13-9,EXTERIOR SKIN,,CONSTRUCTION,,INSULATED METAL PANELS,,,2023-12-28 07:00,2024-01-03 14:00,2023-12-27 07:00,2024-01-01 13:00,2025-11-20 17:00,2025-11-20 17:00,2025-10-29 07:00,2025-10-29 07:00,0,32,100
CN.SEA5.6440,DS SPRAY FIREPROOFING SFRM C-D (READY MEP DUCT) - SEA2 - GL 16-13 - L4&L5 CEILING - D LINE,Complete,SEA - 2,East Support Building,SUES-2 - 16-13,L4 - SUP Roof - FAB Roof,DS/AD INTERIORS,CONSTRUCTION,,Fireproofing,HOON WOO,,2024-03-18 08:00,2024-03-24 16:00,2024-03-18 08:00,2024-03-22 16:00,2025-11-20 17:00,2025-11-20 17:00,2025-11-14 07:00,2025-11-14 07:00,0,48,100
CN.SEA5.6470,IMPACT [S.TIA-12] - WAITING ON MEP LAYOUTS - SEA2 - GL 14-10 - L4 - C-E,Complete,SEA - 2,East Support Building,SUES-2 - 16-13,DS/AD,,CONSTRUCTION,,Decking & Detail,SEAN MONK,,2024-01-22 07:00,2024-01-25 17:00,2024-01-10 07:00,2024-04-10 17:00,2025-11-20 17:00,2025-11-20 17:00,2025-10-16 07:00,2025-10-16 07:00,0,40,100
CN.SEA2.6520,IMPACT [E.TIA-3] - CLADDING STEEL LEAVE OUT - INSTALL INSULATED METAL PANELS - SEA2-GL 16-13-A LINE [SUP EXTERIOR WALL],Complete,SEA - 2,East Support Building,SUES-2 - 16-13,EXTERIOR SKIN,,CONSTRUCTION,,INSULATED METAL PANELS,JAMES LIVELY,,2024-02-19 07:00,2024-02-23 15:00,2024-01-04 07:00,2024-03-08 00:00,2025-11-20 17:00,2025-11-20 17:00,2025-12-04 07:00,2025-12-04 07:00,0,48,100
CN.SEA2.6530,IMPACT [S.TIA-14] - MEP MATERIALS IN THE WAY - GL 14-10 - C-A - L4 ROOF,Complete,SEA - 2,East Support Building,SUES-2 - 16-13,L4 - SUP Roof - FAB Roof,,CONSTRUCTION,SECAI,TOPPING,,SOMD / Roofing / Waterproofing,2024-01-22 07:00,2024-01-25 17:00,2024-01-11 07:00,2024-07-08 17:00,2025-11-20 17:00,2025-11-20 17:00,2025-12-05 17:00,2025-12-05 17:00,0,40,100
CN.SEA2.6540,PH1 - F/R/P/W OAC PAD AIRLOCK WALLS - SEA2 - GL 16-12 - L4,Complete,SEA - 2,East Support Building,SUES-2 - 16-13,L4 - SUP Roof - FAB Roof,,CONSTRUCTION,BAKER,CIP WALL,CONCRETE,SOMD / Roofing / Waterproofing,2024-06-14 07:00,2024-06-21 17:00,2024-06-04 07:00,2024-06-07 17:00,2025-11-20 17:00,2025-11-20 17:00,2025-12-05 17:00,2025-12-05 17:00,0,50,100
CN.SEA2.6570,INSTALL BASE COAT CRICKET - GL 16-11 - C-A - L4 ROOF,Complete,SEA - 2,East Support Building,SUES-2 - 16-13,L4 - SUP Roof - FAB Roof,,CONSTRUCTION,BRAZOS,TOPPING,,SOMD / Roofing / Waterproofing,2024-07-23 07:00,2024-07-23 17:00,2024-07-18 07:00,2024-07-18 17:00,2025-11-20 17:00,2025-11-20 17:00,2025-12-05 17:00,2025-12-05 17:00,0,10,100
CN.SEA2.6580,INSPECT BASE COAT CRICKET - GL 16-11 - C-A - L4 ROOF,Complete,SEA - 2,East Support Building,SUES-2 - 16-13,L4 - SUP Roof - FAB Roof,,CONSTRUCTION,BRAZOS,TOPPING,,SOMD / Roofing / Waterproofing,2024-07-23 07:00,2024-07-23 17:00,2024-07-18 07:00,2024-07-18 17:00,2025-11-20 17:00,2025-11-20 17:00,2025-12-05 17:00,2025-12-05 17:00,0,10,100
CN.SEA2.6590,INSTALL TOP COAT CRICKET - GL 16-11 - C-A - L4 ROOF,Complete,SEA - 2,East Support Building,SUES-2 - 16-13,L4 - SUP Roof - FAB Roof,,CONSTRUCTION,BRAZOS,TOPPING,,SOMD / Roofing / Waterproofing,2024-07-26 07:00,2024-07-29 17:00,2024-07-20 07:00,2024-07-23 17:00,2025-11-20 17:00,2025-11-20 17:00,2025-12-05 17:00,2025-12-05 17:00,0,20,100
CN.SEA2.6600,INSTALL CRICKET - GL 16-11 - C-A - L4 ROOF,Complete,SEA - 2,East Support Building,SUES-2 - 16-13,L4 - SUP Roof - FAB Roof,,CONSTRUCTION,BRAZOS,TOPPING,,SOMD / Roofing / Waterproofing,2024-07-19 07:00,2024-07-22 17:00,2024-07-12 07:00,2024-07-16 17:00,2025-11-20 17:00,2025-11-20 17:00,2025-12-05 17:00,2025-12-05 17:00,0,20,100
CN.SEA2.6610,INSPECT CRICKET - GL 16-11 - C-A - L4 ROOF,Complete,SEA - 2,East Support Building,SUES-2 - 16-13,L4 - SUP Roof - FAB Roof,,CONSTRUCTION,BRAZOS,TOPPING,,SOMD / Roofing / Waterproofing,2024-07-22 07:00,2024-07-22 17:00,2024-07-16 07:00,2024-07-16 17:00,2025-11-20 17:00,2025-11-20 17:00,2025-12-05 17:00,2025-12-05 17:00,0,10,100
CN.SEA2.6620,INSTALL PRIMER CRICKET - GL 16-11 - C-A - L4 ROOF,Complete,SEA - 2,East Support Building,SUES-2 - 16-13,L4 - SUP Roof - FAB Roof,,CONSTRUCTION,BRAZOS,TOPPING,,SOMD / Roofing / Waterproofing,2024-07-22 07:00,2024-07-22 17:00,2024-07-17 07:00,2024-07-17 17:00,2025-11-20 17:00,2025-11-20 17:00,2025-12-05 17:00,2025-12-05 17:00,0,10,100
CN.SEA2.6630,INSPECT PRIMER CRICKET - GL 16-11 - C-A - L4 ROOF,Complete,SEA - 2,East Support Building,SUES-2 - 16-13,L4 - SUP Roof - FAB Roof,,CONSTRUCTION,BRAZOS,TOPPING,,SOMD / Roofing / Waterproofing,2024-07-22 07:00,2024-07-22 17:00,2024-07-17 07:00,2024-07-17 17:00,2025-11-20 17:00,2025-11-20 17:00,2025-12-05 17:00,2025-12-05 17:00,0,10,100
CN.SEA2.6640,PH1 - WATERPROOFING/INSPECT OAC PAD AIRLOCK WALLS - SEA2 - GL 16-12 - L4,Complete,SEA - 2,East Support Building,SUES-2 - 16-13,L4 - SUP Roof - FAB Roof,,CONSTRUCTION,BRAZOS,CIP WALL,CONCRETE,SOMD / Roofing / Waterproofing,2024-06-11 07:00,2024-06-20 17:00,2024-06-02 07:00,2024-06-03 17:00,2025-11-20 17:00,2025-11-20 17:00,2025-12-05 17:00,2025-12-05 17:00,0,60,100
CN.SEA2.6650,IMPACT - D-LINE STEEL SPRAY FIREPROOFING SFRM2 - SEA2 - SEA2 - L3-CEILING - GL 13-16- INSPECT SURFACE PREP ADDITIONAL ST,Complete,SEA - 2,,SUES-2 - 16-13,L4 - SUP Roof - FAB Roof,DS/AD INTERIORS,CONSTRUCTION,ROLLING PLAINS,Fireproofing,,,2024-04-04 07:00,2024-04-15 17:00,2024-04-04 07:00,2024-04-12 17:00,2025-11-20 17:00,2025-11-20 17:00,2025-06-13 08:00,2025-06-13 08:00,0,60,100
CN.SEA2.6670,REMEDY - FRAME & DRYWALL- SEA2 - GL 16-13 - L2 - D LINE,Complete,SEA - 2,West Support Building,SUES-2 - 16-13,L2 - SubFab Level,DS/AD INTERIORS,CONSTRUCTION,BERG,DRYWALL,FIZ DATA CENTER,INTERIORS,2024-07-22 07:00,2024-08-12 17:00,2024-07-19 07:00,2024-07-30 17:00,2025-11-20 17:00,2025-11-20 17:00,2025-12-04 07:00,2025-12-04 07:00,0,150,100
CN.SEA2.6690,CURE TOPPING SLAB - GL 16-11 - C-A - L4 ROOF,Complete,SEA - 2,East Support Building,SUES-2 - 16-13,L4 - SUP Roof - FAB Roof,,CONSTRUCTION,BAKER,TOPPING,CONCRETE,SOMD / Roofing / Waterproofing,2024-09-06 07:00,2024-09-09 17:00,2024-07-26 07:00,2024-07-29 17:00,2025-11-20 17:00,2025-11-20 17:00,2025-12-05 17:00,2025-12-05 17:00,0,20,100
CN.SEA2.6700,CURE- AD STEEL PAINT FIREPROOFING IFRM - SEA2 - GL 16-13 - L2-CEILING - C-E,Complete,SEA - 2,,SUES-2 - 16-13,DS/AD,,CONSTRUCTION,,Fireproofing,,,2023-12-20 07:00,2023-12-22 07:00,2023-12-20 07:00,2024-01-01 13:00,2025-11-20 17:00,2025-11-20 17:00,2025-12-05 17:00,2025-12-05 17:00,0,48,100
CN.AB.AR.8350,IMPACT - MEP ROUGH-IN FOR CEILING NOT COMPLETE -- SEA2 - GL 13 - C-A - L1- EXIT PASSWAY 21,Complete,SEA - 2,West Support Building,SUES-2 - 16-13,L1 - Fndn Slab,MECH RM 2,CONSTRUCTION,FINISH PAINT,TBD Architectural Finishes,JAMES LEE,INTERIORS,2024-12-23 07:00,2025-01-22 17:00,2024-12-23 07:00,2025-02-10 17:00,2025-11-20 17:00,2025-11-20 17:00,2025-11-24 07:00,2025-11-24 07:00,0,200,100
CN.A1.UG.1130,PH1- UNDERGROUND PLUMBING SEA3,Complete,SEA - 3,East Support Building,SUES-3 - 13-9,L1 - Fndn Slab,,CONSTRUCTION,,Underground Plumbing - Cobb,ANDREA SOLIS,,2022-11-03 11:00,2022-11-07 11:00,2022-11-03 11:00,2022-11-08 13:00,2025-11-20 17:00,2025-11-20 17:00,2025-06-13 08:00,2025-06-13 08:00,0,40,100
CN.A1.UG.1140,PH1- UNDERGROUND ELECTRICAL SEA3,Complete,SEA - 3,East Support Building,SUES-3 - 13-9,L1 - Fndn Slab,,CONSTRUCTION,,Underground Electrical - (By Owner),ANDREA SOLIS,,2022-11-07 07:00,2022-11-11 17:00,2022-11-07 07:00,2022-11-11 17:00,2025-11-20 17:00,2025-11-20 17:00,2025-06-13 08:00,2025-06-13 08:00,0,40,100
CN.SEA1.1290,PH1- U/G - R/I - SPRINKLER & PLUMBING - SEA3,Complete,SEA - 3,East Support Building,SUES-3 - 13-9,L1 - Fndn Slab,,CONSTRUCTION,,U/G FIRE & PLUMBING,ANDREA SOLIS,,2022-11-03 07:00,2022-11-06 17:00,2022-11-03 07:00,2022-11-08 09:00,2025-11-20 17:00,2025-11-20 17:00,2025-06-13 08:00,2025-06-13 08:00,0,40,100
CN.SEA3.1000,PH1- SUP - EXCAVATE PIER CAPS - SEA3,Complete,SEA - 3,East Support Building,SUES-3 - 13-9,L1 - Fndn Slab,,CONSTRUCTION,,Excavate CIP,ANDREA SOLIS,,2022-10-31 13:00,2022-11-03 17:00,2022-10-31 13:00,2022-11-02 17:00,2025-11-20 17:00,2025-11-20 17:00,2025-06-13 08:00,2025-06-13 08:00,0,24,100
CN.SEA3.1010,PH1-FRP GRADE BEAMS - SEA3,Complete,SEA - 3,East Support Building,SUES-3 - 13-9,L1 - Fndn Slab,,CONSTRUCTION,,Pour Concrete,ANDREA SOLIS,,2022-11-12 08:00,2022-11-17 08:00,2022-11-12 08:00,2022-11-18 09:00,2025-11-20 17:00,2025-11-20 17:00,2025-06-13 08:00,2025-06-13 08:00,0,40,100
CN.SEA3.1020,PH1-BLACK BASE (NOW RAT SLAB) - SEA3,Complete,SEA - 3,East Support Building,SUES-3 - 13-9,L1 - Fndn Slab,,CONSTRUCTION,,RAT SLAB,ANDREA SOLIS,,2022-12-27 07:00,2022-12-30 11:00,2022-12-08 15:00,2022-12-12 11:00,2025-11-20 17:00,2025-11-20 17:00,2025-06-13 08:00,2025-06-13 08:00,0,24,100
CN.SEA3.1030,PH1-CURE PIER CAPS - SEA3,Complete,SEA - 3,East Support Building,SUES-3 - 13-9,L1 - Fndn Slab,,CONSTRUCTION,,Concrete Cure,ANDREA SOLIS,,2022-11-18 09:00,2022-11-18 09:00,2022-11-18 09:00,2022-11-18 09:00,2025-11-20 17:00,2025-11-20 17:00,2025-06-13 08:00,2025-06-13 08:00,0,0,100
CN.SEA3.1080,PH1- FRP SLAB - SEA-3-L3,Complete,SEA - 3,East Support Building,SUES-3 - 13-9,L3 / Waffle Slab Level,,CONSTRUCTION,,SOMD,CONCRETE,,2023-07-31 07:00,2023-08-02 11:00,2023-07-31 07:00,2023-08-02 11:00,2025-11-20 17:00,2025-11-20 17:00,2025-11-10 07:00,2025-11-10 07:00,0,24,100
CN.SEA3.1110,PH1- FRP SLAB - SEA-3-ROOF,Complete,SEA - 3,East Support Building,SUES-3 - 13-9,L4 - SUP Roof - FAB Roof,,CONSTRUCTION,,SOMD,CONCRETE,SOMD / Roofing / Waterproofing,2023-07-31 15:00,2023-08-03 17:00,2023-07-31 15:00,2023-08-02 11:00,2025-11-20 17:00,2025-11-20 17:00,2025-10-29 07:00,2025-10-29 07:00,0,32,100
CN.SEA3.1100,PH1- CURE SOMD - SEA-3-L3,Complete,SEA - 3,East Support Building,SUES-3 - 13-9,L3 / Waffle Slab Level,,CONSTRUCTION,,Concrete Cure,JAMES LEE,,2023-08-02 11:00,2023-08-04 15:00,2023-08-02 11:00,2023-08-03 11:00,2025-11-20 17:00,2025-11-20 17:00,2025-11-10 07:00,2025-11-10 07:00,0,24,100
CN.SEA3.1120,PH1- CURE SOMD - SEA-3-ROOF,Complete,SEA - 3,East Support Building,SUES-3 - 13-9,L4 - SUP Roof - FAB Roof,,CONSTRUCTION,,Concrete Cure,JAMES LEE,SOMD / Roofing / Waterproofing,2023-09-05 07:00,2023-09-07 11:00,2023-08-02 15:56,2023-08-05 07:00,2025-11-20 17:00,2025-11-20 17:00,2025-10-29 07:00,2025-10-29 07:00,0,24,100
CN.SEA3.1090,PH1- 1st FLOOR SLAB - F4 - SEA-3-L1,Complete,SEA - 3,East Support Building,SUES-3 - 13-9,L1 - Fndn Slab,,CONSTRUCTION,,Pour Concrete,ANDREA SOLIS,,2023-01-10 07:00,2023-01-16 09:00,2023-01-03 07:00,2023-01-06 07:00,2025-11-20 17:00,2025-11-20 17:00,2025-06-13 08:00,2025-06-13 08:00,0,52,100
CN.SEA3.1180,FRP TOPPING SLAB (AREA AROUND PADS) - GL 11-6 - C-A - L4 ROOF,Complete,SEA - 3,East Support Building,SUES-3 - 13-9,L4 - SUP Roof - FAB Roof,,CONSTRUCTION,BAKER,TOPPING,CONCRETE,SOMD / Roofing / Waterproofing,2024-07-09 07:00,2024-07-12 17:00,2024-06-27 07:00,2024-06-27 17:00,2025-11-20 17:00,2025-11-20 17:00,2025-12-05 17:00,2025-12-05 17:00,0,30,100
CN.SEA3.1220,PH1- MEP EQPT PADS(DRILL & EPOXY)- SEA-3-ROOF,Complete,SEA - 3,East Support Building,SUES-3 - 13-9,L4 - SUP Roof - FAB Roof,,CONSTRUCTION,,Cast-in Place Concrete - Baker Concrete,JAMES LEE,SOMD / Roofing / Waterproofing,2023-09-05 07:00,2023-09-07 11:00,2023-08-21 07:00,2023-08-22 17:00,2025-11-20 17:00,2025-11-20 17:00,2025-11-10 07:00,2025-11-10 07:00,0,24,100
CN.SEA3.1050,TIER 1 ERECT PRECAST COLUMNS & BEAMS - SEA3,Complete,SEA - 3,East Support Building,SUES-3 - 13-9,L3 / Waffle Slab Level,,CONSTRUCTION,,"SUP EAST A,B",SEAN MONK,,2023-04-24 07:00,2023-04-27 11:00,2023-04-24 07:00,2023-04-27 11:00,2025-11-20 17:00,2025-11-20 17:00,2025-06-13 08:00,2025-06-13 08:00,0,24,100
CN.SEA3.1130,PH1-ROOF LAYER PARAPET( FRAMING & SHEATHING RIP) - SEA3 - GL 13-9 - L4 - C-A,Complete,SEA - 3,East Support Building,SUES-3 - 13-9,L4 - SUP Roof - FAB Roof,,CONSTRUCTION,,FAB Subfab and Parapets,JAMES LIVELY,SOMD / Roofing / Waterproofing,2023-12-18 07:00,2023-12-19 13:00,2023-12-18 07:00,2023-12-19 13:00,2025-11-20 17:00,2025-11-20 17:00,2025-12-05 17:00,2025-12-05 17:00,0,16,100
CN.SEA3.1160,PH1-FLUID APPLIED MEMBRANE ROOFING - SEA3,Complete,SEA - 3,East Support Building,SUES-3 - 13-9,L4 - SUP Roof - FAB Roof,,CONSTRUCTION,,Roofing,JAMES LIVELY,SOMD / Roofing / Waterproofing,2023-09-06 13:00,2023-09-09 15:00,2023-08-23 13:00,2023-08-29 17:00,2025-11-20 17:00,2025-11-20 17:00,2025-11-10 07:00,2025-11-10 07:00,0,32,100
CN.SEA3.1190,PH1 - CLADDING STEEL INTERIOR - GL 13-9 - D LINE (AD AREA),Complete,SEA - 3,East Support Building,SUES-3 - 13-9,EXTERIOR SKIN,,CONSTRUCTION,PATRIOT,INSULATED METAL PANELS,JAMES LIVELY,,2024-05-06 07:00,2024-05-13 17:00,2024-04-25 07:00,2024-04-30 17:00,2025-11-20 17:00,2025-11-20 17:00,2025-11-21 07:00,2025-11-21 07:00,0,50,100
CN.SEA3.1210,PH1 - INSTALL INSULATED METAL PANEL MODULES - SEA3 - GL 13-9 - C LINE (DS AREA),Complete,SEA - 3,East Support Building,SUES-3 - 13-9,EXTERIOR SKIN,,CONSTRUCTION,,INSULATED METAL PANELS,JAMES LIVELY,,2023-12-18 07:00,2024-01-05 11:00,2023-12-18 07:00,2024-01-27 16:00,2025-11-20 17:00,2025-11-20 17:00,2025-10-29 07:00,2025-10-29 07:00,0,96,100
CN.SEA3.1150,PH1 - CLADDING STEEL - SEA-3 A LINE [SUP EXTERIOR WALL],Complete,SEA - 3,East Support Building,SUES-3 - 13-9,EXTERIOR SKIN,,CONSTRUCTION,,INSULATED METAL PANELS,JAMES LIVELY,,2023-10-10 13:00,2023-10-16 09:00,2023-09-30 13:00,2023-10-09 11:00,2025-11-20 17:00,2025-11-20 17:00,2025-10-29 07:00,2025-10-29 07:00,0,56,100
CN.SEA3.1170,PH1 - INSTALL INSULATED METAL PANEL MODULES - SEA3 - GL 13-9 - A LINE [SUP EXTERIOR WALL],Complete,SEA - 3,East Support Building,SUES-3 - 13-9,EXTERIOR SKIN,,CONSTRUCTION,,INSULATED METAL PANELS,JAMES LIVELY,,2024-01-25 07:00,2024-01-29 15:00,2024-01-25 07:00,2024-01-30 07:00,2025-11-20 17:00,2025-11-20 17:00,2025-12-05 17:00,2025-12-05 17:00,0,48,100
CN.SEA3.1140,PH1- AD STEEL FRAME INSTALL - SEA-3 fab side,Complete,SEA - 3,East Support Building,SUES-3 - 13-9,DS/AD,,CONSTRUCTION,,Steel Erection,SEAN MONK,,2023-06-12 07:00,2023-06-16 17:00,2023-06-06 07:00,2023-06-10 17:00,2025-11-20 17:00,2025-11-20 17:00,2025-06-13 08:00,2025-06-13 08:00,0,40,100
CN.AB.AR.2110,METAL STUD FRAMING (2hr) - SEA3 - GL 13-9 - L1 - C-A - MECHANICAL ROOM 1 NORTH,Complete,SEA - 3,East Support Building,SUES-3 - 13-9,L1 - Fndn Slab,MECH RM 1,CONSTRUCTION,BERG,TBD Architectural Finishes,AMBER CARO,INTERIORS,2023-11-13 07:00,2023-11-18 15:00,2023-11-13 07:00,2023-11-18 16:00,2025-11-20 17:00,2025-11-20 17:00,2025-11-13 17:00,2025-11-13 17:00,0,48,100
CN.AB.AR.2120,INSTALL METAL STAIRS - STAIR 21 - MECHANICAL ROOM 1 NORTH - SEA3 - GL 13-9 - C-A - L1,Complete,SEA - 3,East Support Building,SUES-3 - 13-9,L1 - Fndn Slab,MECH RM 1,CONSTRUCTION,PATRIOT,INSULATED METAL PANELS,JAMES LEE,INTERIORS,2023-10-23 07:00,2023-10-24 17:00,2023-10-23 07:00,2023-10-24 17:00,2025-11-20 17:00,2025-11-20 17:00,2025-12-05 17:00,2025-12-05 17:00,0,20,100
CN.AB.AR.3660,MEP ROUGH IN & INSPECTION (by SECAI) - SEA3 - GL 13-9 - L1 - C-A - MECHANICAL ROOM 1 NORTH,Complete,SEA - 3,East Support Building,SUES-3 - 13-9,L1 - Fndn Slab,MECH RM 1,CONSTRUCTION,,TBD Architectural Finishes,AMBER CARO,,2023-11-19 08:00,2023-11-27 08:00,2023-11-19 08:00,2023-11-19 10:00,2025-11-20 17:00,2025-11-20 17:00,2025-11-24 07:00,2025-11-24 07:00,0,40,100
CN.AB.AR.3670,TAPE & FINISH DRYWALL - MECHANICAL ROOM 1 NORTH - SEA3 - GL 13-9 - C-A - L1,Complete,SEA - 3,East Support Building,SUES-3 - 13-9,L1 - Fndn Slab,MECH RM 1,CONSTRUCTION,CHERRY COATING,DRYWALL,AMBER CARO,INTERIORS,2024-10-21 07:00,2024-10-28 17:00,2024-08-21 07:00,2024-08-27 17:00,2025-11-20 17:00,2025-11-20 17:00,2025-12-04 07:00,2025-12-04 07:00,0,50,100
CN.AB.AR.3720,INSTALL WALL PROTECTION - STAIR 21 - GL 12-13 - C-D - L1,Not Started,SEA - 3,East Support Building,SUES-3 - 13-9,L1 - Fndn Slab,DS/AD INTERIORS,CONSTRUCTION,BERNCO,TBD Architectural Finishes,JAMES LEE,INTERIORS,2025-11-21 07:00,2025-11-25 17:00,,,2025-11-21 07:00,2025-11-25 17:00,2025-12-03 07:00,2025-12-05 17:00,30,30,0
CN.AB.AR.3680,FINISH PAINT - MECHANICAL ROOM 1 NORTH - SEA3 - GL 13-9 - C-A - L1,Not Started,SEA - 3,East Support Building,SUES-3 - 13-9,L1 - Fndn Slab,MECH RM 1,CONSTRUCTION,FINISH PAINT,TBD Architectural Finishes,JAMES LEE,INTERIORS,2025-11-21 07:00,2025-11-24 17:00,,,2025-11-21 07:00,2025-11-24 17:00,2025-12-04 07:00,2025-12-05 17:00,20,20,0
CN.SEA2.1230,INSTALL METAL STAIRS - STAIR #21 - 13/D - ALL LEVELS,Complete,SEA - 3,East Support Building,SUES-3 - 13-9,INTERIOR STAIR TOWER - STAIR #21 (CLEAN ROOM),,CONSTRUCTION,,INSULATED METAL PANELS,JAMES LIVELY,INTERIORS,2023-10-09 07:00,2023-10-20 17:00,2023-09-13 07:00,2023-10-23 17:00,2025-11-20 17:00,2025-11-20 17:00,2025-06-13 08:00,2025-06-13 08:00,0,120,100
CN.SEA3.1240,PH1- DECKING GL 12 - 11 - SEA-3-ROOF,Complete,SEA - 3,East Support Building,SUES-3 - 13-9,L4 - SUP Roof - FAB Roof,,CONSTRUCTION,,Decking & Detail,SEAN MONK,SOMD / Roofing / Waterproofing,2023-07-03 07:00,2023-07-12 11:00,2023-07-11 07:00,2023-07-12 13:00,2025-11-20 17:00,2025-11-20 17:00,2025-06-13 08:00,2025-06-13 08:00,0,74,100
CN.SEA3.1250,PH1- DECKING GL 12 - 11 - SEA-3-L3,Complete,SEA - 3,East Support Building,SUES-3 - 13-9,L3 / Waffle Slab Level,,CONSTRUCTION,,Decking & Detail,SEAN MONK,,2023-04-27 11:00,2023-04-28 17:00,2023-04-27 11:00,2023-04-28 17:00,2025-11-20 17:00,2025-11-20 17:00,2025-06-13 08:00,2025-06-13 08:00,0,16,100
CN.SEA1.1510,PH1- MEP EQPT PADS (INSTALL DRAIN MATS)- SEA-3-ROOF,Complete,SEA - 3,East Support Building,SUES-3 - 13-9,L4 - SUP Roof - FAB Roof,,CONSTRUCTION,,Waterproofing - Preferred,JAMES LIVELY,SOMD / Roofing / Waterproofing,2023-09-10 08:00,2023-09-11 14:00,2023-08-30 13:30,2023-09-02 16:00,2025-11-20 17:00,2025-11-20 17:00,2025-12-04 07:00,2025-12-04 07:00,0,16,100
CN.SEA1.1520,PH1- ERECT PRECAST OAC PADS - SEA-3-ROOF,Complete,SEA - 3,East Support Building,SUES-3 - 13-9,L4 - SUP Roof - FAB Roof,,CONSTRUCTION,,OAC/ MECH PADS,CONCRETE,SOMD / Roofing / Waterproofing,2023-09-06 11:00,2023-09-14 13:00,2023-09-05 07:00,2023-09-09 16:00,2025-11-20 17:00,2025-11-20 17:00,2025-12-04 07:00,2025-12-04 07:00,0,72,100
CN.SEA1.1530,PH1- MEP EQPT PADS (FORM / INSTALL PVC ANGLE)- SEA-3-ROOF,Complete,SEA - 3,East Support Building,SUES-3 - 13-9,L4 - SUP Roof - FAB Roof,,CONSTRUCTION,,OAC/ MECH PADS,CONCRETE,SOMD / Roofing / Waterproofing,2023-10-02 07:00,2023-10-03 13:00,2023-09-18 15:26,2023-09-19 17:00,2025-11-20 17:00,2025-11-20 17:00,2025-12-04 07:00,2025-12-04 07:00,0,16,100
CN.SEA1.1540,PH1- MEP EQPT PADS (REPAIR WATERPROOF)- SEA-3-ROOF,Complete,SEA - 3,East Support Building,SUES-3 - 13-9,L4 - SUP Roof - FAB Roof,,CONSTRUCTION,,OAC/ MECH PADS,CONCRETE,SOMD / Roofing / Waterproofing,2023-10-03 13:00,2023-10-05 09:00,2023-09-15 11:11,2023-09-16 16:00,2025-11-20 17:00,2025-11-20 17:00,2025-12-04 07:00,2025-12-04 07:00,0,16,100
CN.SEA1.1550,PH1- MEP EQPT PADS (TROUGHS DRAIN MATS & MEP SLEEVES) - SEA-3-ROOF,Complete,SEA - 3,East Support Building,SUES-3 - 13-9,L4 - SUP Roof - FAB Roof,,CONSTRUCTION,,OAC/ MECH PADS,CONCRETE,SOMD / Roofing / Waterproofing,2023-10-06 09:00,2023-10-07 15:00,2023-09-17 12:04,2023-09-18 17:00,2025-11-20 17:00,2025-11-20 17:00,2025-12-04 07:00,2025-12-04 07:00,0,16,100
CN.SEA1.1560,PH1- MEP EQPT PADS (TROUGHS INSULATION)- SEA-3-ROOF,Complete,SEA - 3,East Support Building,SUES-3 - 13-9,L4 - SUP Roof - FAB Roof,,CONSTRUCTION,,OAC/ MECH PADS,CONCRETE,SOMD / Roofing / Waterproofing,2023-10-08 08:00,2023-10-08 16:00,2023-09-19 16:49,2023-09-21 17:00,2025-11-20 17:00,2025-11-20 17:00,2025-12-04 07:00,2025-12-04 07:00,0,8,100
CN.SEA1.1570,PH1- MEP EQPT PADS (FORM REBAR POUR TROUGHS)- SEA-3-ROOF,Complete,SEA - 3,East Support Building,SUES-3 - 13-9,L4 - SUP Roof - FAB Roof,,CONSTRUCTION,,OAC/ MECH PADS,CONCRETE,SOMD / Roofing / Waterproofing,2023-10-09 07:00,2023-10-10 13:00,2023-09-21 16:55,2023-09-23 16:00,2025-11-20 17:00,2025-11-20 17:00,2025-12-04 07:00,2025-12-04 07:00,0,16,100
CN.SEA1.1580,PH1- MEP EQPT PADS (TROUGH WATERPROOF & MEP SLEEVES IN TROUGHS) - SEA-3-ROOF,Complete,SEA - 3,East Support Building,SUES-3 - 13-9,L4 - SUP Roof - FAB Roof,,CONSTRUCTION,,OAC/ MECH PADS,CONCRETE,SOMD / Roofing / Waterproofing,2023-10-10 13:00,2023-10-12 09:00,2023-09-24 08:01,2023-09-26 17:00,2025-11-20 17:00,2025-11-20 17:00,2025-12-04 07:00,2025-12-04 07:00,0,16,100
CN.SEA3.1260,PH1-CIP WALL (DS)- SEA3 - impacted by SECAI MEP access,Complete,SEA - 3,East Support Building,SUES-3 - 13-9,L4 - SUP Roof - FAB Roof,,CONSTRUCTION,,CIP WALL,CONCRETE,SOMD / Roofing / Waterproofing,2023-10-02 07:00,2023-10-05 09:00,2023-09-15 15:00,2023-10-13 15:00,2025-11-20 17:00,2025-11-20 17:00,2025-10-29 07:00,2025-10-29 07:00,0,32,100
CN.SEA3.1450,PH1- SET/ FIX ANCHOR BOLTS - SEA3 - GL 13-9 - L1 - C-A,Complete,SEA - 3,East Support Building,SUES-3 - 13-9,L1 - Fndn Slab,,CONSTRUCTION,,Pour Concrete,JAMES LIVELY,SOMD / Roofing / Waterproofing,2023-04-25 07:00,2023-04-27 13:00,2023-05-01 07:00,2023-05-05 13:00,2025-11-20 17:00,2025-11-20 17:00,2025-06-13 08:00,2025-06-13 08:00,0,16,100
CN.SEA3.1470,PH1- TOPPING SLAB w TRENCH & ANGLE EMBEDS- SEA-3-L1,Complete,SEA - 3,East Support Building,SUES-3 - 13-9,L1 - Fndn Slab,,CONSTRUCTION,,TOPPING,CONCRETE,SOMD / Roofing / Waterproofing,2023-09-19 09:00,2023-09-22 13:00,2023-09-19 09:00,2023-09-22 13:00,2025-11-20 17:00,2025-11-20 17:00,2025-11-13 17:00,2025-11-13 17:00,0,24,100
CN.SEA3.1480,PH1- DS/AD DECKING & DETAILING - SEA3 - GL 13-9 - L6 -C-E,Complete,SEA - 3,East Support Building,SUES-3 - 13-9,DS/AD,,CONSTRUCTION,,Decking & Detail,SEAN MONK,,2023-11-17 07:00,2023-11-20 17:00,2023-11-17 07:00,2023-11-29 17:00,2025-11-20 17:00,2025-11-20 17:00,2025-06-13 08:00,2025-06-13 08:00,0,40,100
CN.SEA3.1490,PH1- DS/AD FRP SLAB - DS/AD - SEA3 - GL 13-9 - L4/E - C-E,Complete,SEA - 3,East Support Building,SUES-3 - 13-9,DS/AD,,CONSTRUCTION,,SOMD,CONCRETE,,2024-02-05 15:00,2024-02-09 09:00,2024-02-05 15:00,2024-02-06 17:00,2025-11-20 17:00,2025-11-20 17:00,2025-06-13 08:00,2025-06-13 08:00,0,24,100
CN.SEA3.1500,AD WATERPROOFING - SEA3 - GL 13-8 - D-E - L4/E [IMPACTED BY KOVACH MATERIAL/EQPT FOR 10 DAYS],Complete,SEA - 3,East Support Building,SUES-3 - 13-9,DS/AD,,CONSTRUCTION,BRAZOS,TOPPING,SEAN MONK,,2024-08-23 07:00,2024-09-09 17:00,2024-08-14 07:00,2024-09-03 17:00,2025-11-20 17:00,2025-11-20 17:00,2025-12-05 17:00,2025-12-05 17:00,0,110,100
CN.SEA3.1510,AD TOPPING SLAB - SEA3 - GL 13-8 - D-E - L4/E,Complete,SEA - 3,East Support Building,SUES-3 - 13-9,DS/AD,,CONSTRUCTION,BAKER,TOPPING,CONCRETE,,2024-09-10 07:00,2024-09-12 17:00,2024-09-04 07:00,2024-09-04 17:00,2025-11-20 17:00,2025-11-20 17:00,2025-12-05 17:00,2025-12-05 17:00,0,20,100
TIER 23.1050,TIER 2 ERECT PRECAST COLUMNS & BEAMS - SEA3,Complete,SEA - 3,East Support Building,SUES-3 - 13-9,L4 - SUP Roof - FAB Roof,,CONSTRUCTION,,"SUP EAST A,B",SEAN MONK,,2023-07-13 07:00,2023-07-18 13:00,2023-07-06 07:00,2023-07-10 09:00,2025-11-20 17:00,2025-11-20 17:00,2025-06-13 08:00,2025-06-13 08:00,0,56,100
CN.SEA3.1520,PH1- DECKING GL 11 - 10 - SEA-3-L3,Complete,SEA - 3,East Support Building,SUES-3 - 13-9,L3 / Waffle Slab Level,,CONSTRUCTION,,Decking & Detail,SEAN MONK,,2023-06-12 07:00,2023-06-13 13:00,2023-06-12 07:00,2023-07-11 17:00,2025-11-20 17:00,2025-11-20 17:00,2025-06-13 08:00,2025-06-13 08:00,0,16,100
CN.SEA3.1530,PH1- DECKING GL 10 - 9 - SEA-3-L3,Complete,SEA - 3,East Support Building,SUES-3 - 13-9,L3 / Waffle Slab Level,,CONSTRUCTION,,Decking & Detail,SEAN MONK,,2023-08-01 13:00,2023-08-03 09:00,2023-07-14 08:23,2023-07-17 15:00,2025-11-20 17:00,2025-11-20 17:00,2025-06-13 08:00,2025-06-13 08:00,0,16,100
CN.SEA3.1540,PH1- DECKING GL 11 - 10 - SEA-3-ROOF,Complete,SEA - 3,East Support Building,SUES-3 - 13-9,L4 - SUP Roof - FAB Roof,,CONSTRUCTION,,Decking & Detail,SEAN MONK,SOMD / Roofing / Waterproofing,2023-08-01 13:00,2023-08-03 09:00,2023-07-18 09:00,2023-07-21 11:00,2025-11-20 17:00,2025-11-20 17:00,2025-06-13 08:00,2025-06-13 08:00,0,16,100
CN.SEA3.1550,PH1- DECKING GL 10 - 9 - SEA-3-ROOF,Complete,SEA - 3,East Support Building,SUES-3 - 13-9,L4 - SUP Roof - FAB Roof,,CONSTRUCTION,,Decking & Detail,SEAN MONK,SOMD / Roofing / Waterproofing,2023-08-03 09:00,2023-08-04 15:00,2023-07-22 08:00,2023-07-31 15:00,2025-11-20 17:00,2025-11-20 17:00,2025-06-13 08:00,2025-06-13 08:00,0,16,100
CN.SEA3.1560,PH1- DS/AD DECKING & DETAILING - SEA3 - GL 13-9 - L4 & L4/E - C-E,Complete,SEA - 3,East Support Building,SUES-3 - 13-9,DS/AD,,CONSTRUCTION,,Decking & Detail,SEAN MONK,,2024-01-17 07:00,2024-01-21 15:00,2024-01-15 07:00,2024-01-20 15:00,2025-11-20 17:00,2025-11-20 17:00,2025-06-13 08:00,2025-06-13 08:00,0,48,100
CN.AB.AR.4280,DRYWALL 2 SIDE - MECHANICAL ROOM 1 NORTH - SEA3 - GL 13-9 - C-A - L1,Complete,SEA - 3,East Support Building,SUES-3 - 13-9,L1 - Fndn Slab,MECH RM 1,CONSTRUCTION,BERG,DRYWALL,AMBER CARO,INTERIORS,2024-03-18 07:00,2024-03-22 17:00,2024-03-16 07:00,2024-08-20 17:00,2025-11-20 17:00,2025-11-20 17:00,2025-12-04 07:00,2025-12-04 07:00,0,40,100
CN.AB.AR.4290,DRYWALL & INSULATION (1 side) (INT) - SEA3 - GL 13-9 - L1 - C-A - MECHANICAL ROOM 1 NORTH,Complete,SEA - 3,East Support Building,SUES-3 - 13-9,L1 - Fndn Slab,MECH RM 1,CONSTRUCTION,,DRYWALL,AMBER CARO,INTERIORS,2023-12-04 07:00,2023-12-08 17:00,2023-12-04 07:00,2023-12-08 17:00,2025-11-20 17:00,2025-11-20 17:00,2025-11-24 07:00,2025-11-24 07:00,0,40,100
CN.SEA3.1580,PH1- DS STEEL FRAME INSTALL - SEA-3 Comeback Sup Side,Complete,SEA - 3,East Support Building,SUES-3 - 13-9,DS/AD,,CONSTRUCTION,,Steel Erection,SEAN MONK,,2023-07-24 07:00,2023-07-28 15:00,2023-07-17 07:00,2023-07-29 11:00,2025-11-20 17:00,2025-11-20 17:00,2025-06-13 08:00,2025-06-13 08:00,0,48,100
CN.SEA3.1590,PH1- EXTERIOR CURBS- SEA-3-L1,Complete,SEA - 3,East Support Building,SUES-3 - 13-9,L1 - Fndn Slab,,CONSTRUCTION,,Pour Concrete,JAMES LEE,SOMD / Roofing / Waterproofing,2023-09-25 13:00,2023-09-30 13:00,2023-09-25 13:00,2023-09-30 14:00,2025-11-20 17:00,2025-11-20 17:00,2025-10-29 07:00,2025-10-29 07:00,0,40,100
CN.SEA3.1600,PH1- MEP PADS - SEA-3-L1,Complete,SEA - 3,East Support Building,SUES-3 - 13-9,L1 - Fndn Slab,,CONSTRUCTION,,Pour Concrete,JAMES LEE,SOMD / Roofing / Waterproofing,2023-10-10 13:00,2023-10-14 13:00,2023-10-10 13:00,2023-10-14 15:00,2025-11-20 17:00,2025-11-20 17:00,2025-11-13 17:00,2025-11-13 17:00,0,40,100
CN.SEA3.4990,METAL STUD FRAMING (2hr) - SEA-3-L3- ELECTRICAL ROOM 2 & BATTERY ROOM 1,Complete,SEA - 3,East Support Building,SUES-3 - 13-9,L3 / Waffle Slab Level,ELECTRIC RM 2,CONSTRUCTION,BERG,TBD Architectural Finishes,AMBER CARO,INTERIORS,2023-10-16 07:00,2023-10-19 09:00,2023-10-20 07:00,2023-10-26 11:00,2025-11-20 17:00,2025-11-20 17:00,2025-11-10 07:00,2025-11-10 07:00,0,32,100
CN.SEA3.3660,MEP ROUGH IN & INSPECTION (by SECAI) - SEA3 - GL 13-9 - L3 - C-A - ELECTRICAL ROOM 2 & BATTERY ROOM 1,Complete,SEA - 3,East Support Building,SUES-3 - 13-9,L3 / Waffle Slab Level,ELECTRIC RM 2,CONSTRUCTION,,Owner & Design Team,AMBER CARO,,2024-03-18 07:00,2024-03-23 09:00,2024-02-26 00:00,2024-03-08 00:00,2025-11-20 17:00,2025-11-20 17:00,2025-11-25 17:00,2025-11-25 17:00,0,32,100
CN.SEA3.3670,TAPE & FINISH DRYWALL - SEA3 - GL 13-9 - L3 - C-A - ELECTRICAL ROOM 2 & BATTERY ROOM 1,Complete,SEA - 3,East Support Building,SUES-3 - 13-9,L3 / Waffle Slab Level,ELECTRIC RM 2,CONSTRUCTION,,DRYWALL,AMBER CARO,INTERIORS,2024-03-22 07:00,2024-03-27 09:00,2024-03-21 07:00,2024-03-25 11:00,2025-11-20 17:00,2025-11-20 17:00,2025-12-05 17:00,2025-12-05 17:00,0,32,100
CN.SEA3.3720,INSTALL WALL PROTECTION - STAIR 21 - GL 12-13 - C-D - L2,Not Started,SEA - 3,East Support Building,SUES-3 - 13-9,L2 - SubFab Level,DS/AD INTERIORS,CONSTRUCTION,BERNCO,TBD Architectural Finishes,JAMES LEE,INTERIORS,2025-11-21 07:00,2025-11-25 17:00,,,2025-11-21 07:00,2025-11-25 17:00,2025-12-03 07:00,2025-12-05 17:00,30,30,0
CN.SEA3.3680,REMAINING DRYWALL & FINISHES  -BATTERY ROOM 1 - SEA3 - GL 13-9 - C-A - L3,Complete,SEA - 3,East Support Building,SUES-3 - 13-9,L3 / Waffle Slab Level,ELECTRIC RM 2,CONSTRUCTION,FINISH PAINT,TBD Architectural Finishes,JAMES LEE,INTERIORS,2025-09-03 07:00,2025-09-08 17:00,2025-09-03 07:00,2025-09-08 17:00,2025-11-20 17:00,2025-11-20 17:00,2025-12-05 17:00,2025-12-05 17:00,0,40,100
CN.SEA3.4280,DRYWALL 2 SIDE - SEA3 - GL 13-9 - L3 - C-A - ELECTRICAL ROOM 2 & BATTERY ROOM 1,Complete,SEA - 3,East Support Building,SUES-3 - 13-9,L3 / Waffle Slab Level,ELECTRIC RM 2,CONSTRUCTION,,DRYWALL,AMBER CARO,INTERIORS,2024-03-09 15:00,2024-03-12 17:00,2024-03-09 15:00,2024-03-14 10:00,2025-11-20 17:00,2025-11-20 17:00,2025-11-25 17:00,2025-11-25 17:00,0,32,100
CN.SEA3.4290,DRYWALL & INSULATION (1 side) (INT) - SEA-3-L3- ELECTRICAL ROOM 2 & BATTERY ROOM 1,Complete,SEA - 3,East Support Building,SUES-3 - 13-9,L3 / Waffle Slab Level,ELECTRIC RM 2,CONSTRUCTION,,DRYWALL,AMBER CARO,INTERIORS,2023-10-24 07:00,2023-10-28 09:00,2023-10-24 07:00,2023-10-28 10:00,2025-11-20 17:00,2025-11-20 17:00,2025-11-25 17:00,2025-11-25 17:00,0,32,100
CN.SEA1.5250,PH1- GROUT SHIM - PRECAST OAC PADS - SEA-3-ROOF,Complete,SEA - 3,East Support Building,SUES-3 - 13-9,L4 - SUP Roof - FAB Roof,,CONSTRUCTION,,OAC/ MECH PADS,CONCRETE,SOMD / Roofing / Waterproofing,2023-10-03 13:00,2023-10-08 11:00,2023-09-10 08:06,2023-09-14 17:00,2025-11-20 17:00,2025-11-20 17:00,2025-12-04 07:00,2025-12-04 07:00,0,48,100
CN.SEA3.5000,PH1- SECAI MEP UG DRAIN WORK - SEA-3-L1 - 12- 15,Complete,SEA - 3,East Support Building,SUES-3 - 13-9,L1 - Fndn Slab,,CONSTRUCTION,,TOPPING,CONCRETE,SOMD / Roofing / Waterproofing,2023-10-13 16:00,2023-10-15 16:00,2023-09-14 16:00,2023-09-18 08:00,2025-11-20 17:00,2025-11-20 17:00,2025-10-29 07:00,2025-10-29 07:00,0,20,100
CN.SEA3.1610,IMPACT - DRB-01 ADDITIONAL BEAMS BETWEEN FAB AND AD - SEA3 - GL 13-9 - L6 - C-E - ROOF,Complete,SEA - 3,,SUES-3 - 13-9,DS/AD,,CONSTRUCTION,,INSULATED METAL PANELS,,,2024-01-02 09:00,2024-01-22 12:00,2024-01-02 07:00,2024-01-07 16:00,2025-11-20 17:00,2025-11-20 17:00,2025-06-13 08:00,2025-06-13 08:00,0,152,100
CN.SEA3.5010,PH1 - CLADDING STEEL  EXTERIOR - SEA3 - GL 13-9 - C LINE  (DS AREA),Complete,SEA - 3,East Support Building,SUES-3 - 13-9,EXTERIOR SKIN,,CONSTRUCTION,,INSULATED METAL PANELS,JAMES LIVELY,,2023-11-10 07:00,2023-11-18 09:00,2023-11-10 07:00,2023-12-10 17:00,2025-11-20 17:00,2025-11-20 17:00,2025-10-29 07:00,2025-10-29 07:00,0,72,100
EMB2000,IMPACT - Missing Precast Embed C9 Level 3A (#2000),Complete,SEA - 3,East Support Building,SUES-3 - 13-9,DS/AD,,CONSTRUCTION,,Steel Erection,SEAN MONK,,2023-09-16 08:00,2023-09-21 08:00,2023-08-04 08:00,2023-09-16 11:00,2025-11-20 17:00,2025-11-20 17:00,2025-06-13 08:00,2025-06-13 08:00,0,40,100
CN.SEA3.5020,PH1- DS/AD DECKING & DETAILING GL 13 - 9 SEA-3 L2-L3,Complete,SEA - 3,East Support Building,SUES-3 - 13-9,DS/AD,,CONSTRUCTION,,Decking & Detail,SEAN MONK,,2023-07-31 07:00,2023-08-03 09:00,2023-07-31 07:00,2023-08-03 09:00,2025-11-20 17:00,2025-11-20 17:00,2025-10-29 07:00,2025-10-29 07:00,0,32,100
CN.SEA3.5030,PH1- DS/AD FRP SLAB - SEA-3 L2,Complete,SEA - 3,East Support Building,SUES-3 - 13-9,DS/AD,,CONSTRUCTION,,SOMD,CONCRETE,,2023-10-09 07:00,2023-10-11 11:00,2023-09-23 07:00,2023-09-25 17:00,2025-11-20 17:00,2025-11-20 17:00,2025-11-13 17:00,2025-11-13 17:00,0,24,100
CN.SEA3.1419,AD STEEL PAINT FIREPROOFING IFRM - SEA3 - GL 13-9 - C-E - L2-CEILING,Complete,SEA - 3,East Support Building,SUES-3 - 13-9,DS/AD,,CONSTRUCTION,ROLLING PLAINS,Fireproofing,HOON WOO,,2024-06-20 07:00,2024-06-28 17:00,2024-06-20 07:00,2024-06-25 17:00,2025-11-20 17:00,2025-11-20 17:00,2025-11-26 07:00,2025-11-26 07:00,0,60,100
CN.SEA3.1061,METAL STUD FRAMING (2hr) - SEA3 - GL 13-9 - L1 - D LINE,Complete,SEA - 3,West Support Building,SUES-3 - 13-9,L1 - Fndn Slab,DS/AD INTERIORS,CONSTRUCTION,BERG,TBD Architectural Finishes,FIZ DATA CENTER,INTERIORS,2023-10-17 10:00,2023-10-22 08:00,2023-10-17 10:00,2023-10-30 15:00,2025-11-20 17:00,2025-11-20 17:00,2025-11-13 17:00,2025-11-13 17:00,0,48,100
CN.SEA3.1111,TAPE & FINISH DRYWALL - SEA3 - GL 13-9 - L1 - D LINE,Complete,SEA - 3,West Support Building,SUES-3 - 13-9,L1 - Fndn Slab,DS/AD INTERIORS,CONSTRUCTION,,DRYWALL,FIZ DATA CENTER,INTERIORS,2024-02-01 13:00,2024-02-05 13:00,2024-02-01 13:00,2024-02-05 17:00,2025-11-20 17:00,2025-11-20 17:00,2025-12-01 17:00,2025-12-01 17:00,0,40,100
CN.SEA3.1121,PRIMER & PAINT DRYWALL -  GL 13-9 - D LINE - L1,Complete,SEA - 3,West Support Building,SUES-3 - 13-9,L1 - Fndn Slab,DS/AD INTERIORS,CONSTRUCTION,FINISH PAINT,TBD Architectural Finishes,FIZ DATA CENTER,INTERIORS,2024-10-21 07:00,2024-10-24 17:00,2024-10-21 07:00,2024-10-24 17:00,2025-11-20 17:00,2025-11-20 17:00,2025-12-01 17:00,2025-12-01 17:00,0,30,100
CN.SEA3.1091,DRYWALL 2 SIDE - SEA3 - GL 13-9 - L1 - D LINE,Complete,SEA - 3,West Support Building,SUES-3 - 13-9,L1 - Fndn Slab,DS/AD INTERIORS,CONSTRUCTION,,DRYWALL,FIZ DATA CENTER,INTERIORS,2024-01-22 09:00,2024-01-26 09:00,2024-01-22 09:00,2024-01-26 09:00,2025-11-20 17:00,2025-11-20 17:00,2025-12-01 17:00,2025-12-01 17:00,0,40,100
CN.SEA3.1081,DRYWALL & INSULATION (1 side) (INT) - SEA3 - GL 13-9 - L1 - D LINE,Complete,SEA - 3,West Support Building,SUES-3 - 13-9,L1 - Fndn Slab,DS/AD INTERIORS,CONSTRUCTION,,DRYWALL,FIZ DATA CENTER,INTERIORS,2023-10-20 11:00,2023-10-27 09:00,2023-10-20 11:00,2023-11-16 11:00,2025-11-20 17:00,2025-11-20 17:00,2025-12-01 17:00,2025-12-01 17:00,0,48,100
CN.SEA3.5040,TEMP WALLS Framing and Drywall - SEB2- GL 13-9 - L3 - C-A,Complete,SEA - 3,,SUES-3 - 13-9,L3 / Waffle Slab Level,ELECTRIC RM 2,CONSTRUCTION,,DRYWALL,,,2023-10-09 08:00,2023-10-13 08:00,2023-10-09 08:00,2023-10-13 16:00,2025-11-20 17:00,2025-11-20 17:00,2025-11-24 07:00,2025-11-24 07:00,0,40,100
CN.SEA3.5050,PH1 -WELD CLIPS - CLADDING STEEL - SEA3 - GL 13-9 - C-E (DS AREA),Complete,SEA - 3,East Support Building,SUES-3 - 13-9,EXTERIOR SKIN,,CONSTRUCTION,,INSULATED METAL PANELS,JAMES LIVELY,,2023-09-10 08:00,2023-09-11 10:00,2023-09-10 08:00,2023-09-11 11:00,2025-11-20 17:00,2025-11-20 17:00,2025-10-29 07:00,2025-10-29 07:00,0,12,100
CN.SEA3.1570,IMPACT - DS STEEL BEAM STIFFNER CONNECTION FIXES - SEA3 - GL 13-9 - L4 - C-E,Complete,SEA - 3,,SUES-3 - 13-9,DS/AD,,CONSTRUCTION,,Decking & Detail,,,2023-12-07 07:00,2023-12-10 17:00,2023-12-07 07:00,2023-12-10 11:00,2025-11-20 17:00,2025-11-20 17:00,2025-06-13 08:00,2025-06-13 08:00,0,40,100
CN.SEA3.1101,METAL STUD FRAMING (2hr) - SEA3 - GL 13-9 - L3 - D LINE,Complete,SEA - 3,West Support Building,SUES-3 - 13-9,L3 / Waffle Slab Level,DS/AD INTERIORS,CONSTRUCTION,BERG,TBD Architectural Finishes,FIZ DATA CENTER,INTERIORS,2024-02-10 09:00,2024-02-14 17:00,2024-02-10 09:00,2024-02-15 10:00,2025-11-20 17:00,2025-11-20 17:00,2025-06-13 08:00,2025-06-13 08:00,0,48,100
CN.SEA3.1161,TAPE & FINISH DRYWALL - SEA3 - GL 13-9 - D LINE - L3,Complete,SEA - 3,West Support Building,SUES-3 - 13-9,L3 / Waffle Slab Level,DS/AD INTERIORS,CONSTRUCTION,CHERRY COATING,DRYWALL,FIZ DATA CENTER,INTERIORS,2024-06-13 07:00,2024-06-18 17:00,2024-06-13 07:00,2024-08-07 17:00,2025-11-20 17:00,2025-11-20 17:00,2025-06-13 08:00,2025-06-13 08:00,0,40,100
CN.SEA3.1171,D/S SGP Wall Turnover - SEA3 - GL 13-9 - D LINE - L3,Complete,SEA - 3,West Support Building,SUES-3 - 13-9,L3 / Waffle Slab Level,DS/AD INTERIORS,CONSTRUCTION,SECAI,TBD Architectural Finishes,FIZ DATA CENTER,INTERIORS,2024-08-08 07:00,2024-08-08 17:00,2024-08-08 07:00,2024-08-08 17:00,2025-11-20 17:00,2025-11-20 17:00,2025-06-13 08:00,2025-06-13 08:00,0,10,100
CN.SEA3.1151,DRYWALL 2 SIDE - SEA3 - GL 13-9 - D LINE - L3,Complete,SEA - 3,West Support Building,SUES-3 - 13-9,L3 / Waffle Slab Level,DS/AD INTERIORS,CONSTRUCTION,BERG,DRYWALL,FIZ DATA CENTER,INTERIORS,2024-04-24 07:00,2024-04-29 17:00,2024-04-24 07:00,2024-07-30 17:00,2025-11-20 17:00,2025-11-20 17:00,2025-06-13 08:00,2025-06-13 08:00,0,40,100
CN.SEA3.1141,DRYWALL & INSULATION (1st layer) (INT) - SEA3 - GL 13-9 - L3 - D LINE,Complete,SEA - 3,West Support Building,SUES-3 - 13-9,L3 / Waffle Slab Level,DS/AD INTERIORS,CONSTRUCTION,,DRYWALL,FIZ DATA CENTER,INTERIORS,2024-03-09 08:00,2024-03-17 16:00,2024-02-29 00:00,2024-03-05 16:00,2025-11-20 17:00,2025-11-20 17:00,2025-06-13 08:00,2025-06-13 08:00,0,48,100
CN.SEA3.6000,WATER PROOF PEDASTALS - SEA3 - GL 11-7 - L4 - C-A - ROOF,Complete,SEA - 3,East Support Building,SUES-3 - 13-9,L4 - SUP Roof - FAB Roof,,CONSTRUCTION,,Roofing,,SOMD / Roofing / Waterproofing,2023-12-21 09:00,2023-12-21 17:00,2023-12-21 09:00,2023-12-21 17:00,2025-11-20 17:00,2025-11-20 17:00,2025-12-05 17:00,2025-12-05 17:00,0,8,100
CN.SEA3.6010,WATER PROOFING & POUR PEDASTALS - SEA3 - GL 11-7 - L4 - C-A - ROOF,Complete,SEA - 3,East Support Building,SUES-3 - 13-9,L4 - SUP Roof - FAB Roof,,CONSTRUCTION,,Roofing,,SOMD / Roofing / Waterproofing,2023-12-22 07:00,2023-12-22 15:00,2023-12-22 07:00,2023-12-22 15:00,2025-11-20 17:00,2025-11-20 17:00,2025-12-05 17:00,2025-12-05 17:00,0,8,100
CN.SEA3.6020,FINISH WATER PROOFING & POUR PEDASTALS - SEA3 - GL 11-7 - L4 - C-A - ROOF,Complete,SEA - 3,East Support Building,SUES-3 - 13-9,L4 - SUP Roof - FAB Roof,,CONSTRUCTION,,Roofing,,SOMD / Roofing / Waterproofing,2024-01-22 07:00,2024-01-22 15:00,2024-01-02 11:00,2024-01-04 12:00,2025-11-20 17:00,2025-11-20 17:00,2025-12-05 17:00,2025-12-05 17:00,0,8,100
CN.SEA3.6030,STRIP PEDSTALS - SEA3 - GL 11-7 - L4 - C-A - ROOF,Complete,SEA - 3,East Support Building,SUES-3 - 13-9,L4 - SUP Roof - FAB Roof,,CONSTRUCTION,,Roofing,,SOMD / Roofing / Waterproofing,2024-01-22 15:00,2024-01-23 13:00,2024-01-06 08:00,2024-01-06 16:00,2025-11-20 17:00,2025-11-20 17:00,2025-12-05 17:00,2025-12-05 17:00,0,8,100
CN.SEA3.6040,INSTALL PRIMER - GL 11-9 - C-A - L4 ROOF,Complete,SEA - 3,East Support Building,SUES-3 - 13-9,L4 - SUP Roof - FAB Roof,,CONSTRUCTION,BRAZOS,TOPPING,,SOMD / Roofing / Waterproofing,2024-06-10 07:00,2024-06-10 17:00,2024-06-06 07:00,2024-06-06 17:00,2025-11-20 17:00,2025-11-20 17:00,2025-12-05 17:00,2025-12-05 17:00,0,10,100
CN.SEA3.6060,INSPECT PRIMER - GL 11-9 - C-A - L4 ROOF,Complete,SEA - 3,East Support Building,SUES-3 - 13-9,L4 - SUP Roof - FAB Roof,,CONSTRUCTION,BRAZOS,TOPPING,,SOMD / Roofing / Waterproofing,2024-06-07 07:00,2024-06-07 17:00,2024-06-06 07:00,2024-06-06 17:00,2025-11-20 17:00,2025-11-20 17:00,2025-12-05 17:00,2025-12-05 17:00,0,10,100
CN.SEA3.6070,INSTALL BASE COAT - GL 11-9 - C-A - L4 ROOF,Complete,SEA - 3,East Support Building,SUES-3 - 13-9,L4 - SUP Roof - FAB Roof,,CONSTRUCTION,BRAZOS,TOPPING,,SOMD / Roofing / Waterproofing,2024-06-14 07:00,2024-06-14 17:00,2024-06-07 07:00,2024-06-07 17:00,2025-11-20 17:00,2025-11-20 17:00,2025-12-05 17:00,2025-12-05 17:00,0,10,100
CN.SEA3.6090,INSPECT BASE COAT - GL 11-9 - C-A - L4 ROOF,Complete,SEA - 3,East Support Building,SUES-3 - 13-9,L4 - SUP Roof - FAB Roof,,CONSTRUCTION,BRAZOS,TOPPING,,SOMD / Roofing / Waterproofing,2024-06-14 07:00,2024-06-14 17:00,2024-06-07 07:00,2024-06-07 17:00,2025-11-20 17:00,2025-11-20 17:00,2025-12-05 17:00,2025-12-05 17:00,0,10,100
CN.SEA3.6100,INSTALL TOP COAT - GL 11-9 - C-A - L4 ROOF,Complete,SEA - 3,East Support Building,SUES-3 - 13-9,L4 - SUP Roof - FAB Roof,,CONSTRUCTION,BRAZOS,TOPPING,,SOMD / Roofing / Waterproofing,2024-06-17 07:00,2024-06-18 17:00,2024-06-08 07:00,2024-06-10 17:00,2025-11-20 17:00,2025-11-20 17:00,2025-12-05 17:00,2025-12-05 17:00,0,20,100
CN.SEA3.6110,INSPECT TOP COAT - GL 11-9 - C-A - L4 ROOF,Complete,SEA - 3,East Support Building,SUES-3 - 13-9,L4 - SUP Roof - FAB Roof,,CONSTRUCTION,BRAZOS,TOPPING,,SOMD / Roofing / Waterproofing,2024-06-17 07:00,2024-06-17 17:00,2024-06-10 07:00,2024-06-10 17:00,2025-11-20 17:00,2025-11-20 17:00,2025-12-05 17:00,2025-12-05 17:00,0,10,100
CN.SEA3.6120,INSTALL BASE COAT CRICKET - GL 11-9 - C-A - L4 ROOF,Complete,SEA - 3,East Support Building,SUES-3 - 13-9,L4 - SUP Roof - FAB Roof,,CONSTRUCTION,BRAZOS,TOPPING,,SOMD / Roofing / Waterproofing,2024-07-02 07:00,2024-07-02 17:00,2024-06-24 07:00,2024-06-24 17:00,2025-11-20 17:00,2025-11-20 17:00,2025-12-05 17:00,2025-12-05 17:00,0,10,100
CN.SEA3.6130,INSPECT TOP COAT CRICKET - GL 11-9 - C-A - L4 ROOF,Complete,SEA - 3,East Support Building,SUES-3 - 13-9,L4 - SUP Roof - FAB Roof,,CONSTRUCTION,BRAZOS,TOPPING,,SOMD / Roofing / Waterproofing,2024-07-08 07:00,2024-07-08 17:00,2024-06-26 07:00,2024-06-26 17:00,2025-11-20 17:00,2025-11-20 17:00,2025-12-05 17:00,2025-12-05 17:00,0,10,100
CN.SEA2.1520,IMPACT [CL 48-67] - LEVEL 1 DRAIN BODIES - EXCAVATION & INSTALL - SEA-3 - L1 - GL 9-10.5,Complete,SEA - 3,East Support Building,SUES-3 - 13-9,L1 - Fndn Slab,,CONSTRUCTION,,Pour Concrete,JAMES LEE,SOMD / Roofing / Waterproofing,2023-10-16 07:00,2023-10-19 09:00,2023-10-16 07:00,2023-11-06 11:00,2025-11-20 17:00,2025-11-20 17:00,2025-12-05 17:00,2025-12-05 17:00,0,32,100
CN.SEA3.5060,PH1- DS/AD GRATING - SEA3 - GL 13-9 - C-E,Complete,SEA - 3,,SUES-3 - 13-9,DS/AD,,CONSTRUCTION,,SOMD,,,2023-10-30 07:00,2023-11-02 13:00,2023-10-28 08:00,2023-10-30 13:00,2025-11-20 17:00,2025-11-20 17:00,2025-11-26 07:00,2025-11-26 07:00,0,16,100
CN.SEA3.1429,DS/AD STEEL SPRAY FIREPROOFING SFRM- SEA-3 -L1 CEILING,Complete,SEA - 3,,SUES-3 - 13-9,DS/AD,,CONSTRUCTION,,INSULATED METAL PANELS,,,2023-10-13 08:00,2023-10-13 16:00,2023-10-13 08:00,2023-10-16 16:00,2025-11-20 17:00,2025-11-20 17:00,2025-11-13 17:00,2025-11-13 17:00,0,8,100
CN.SEA3.6180,DSAD PENETRATION SUPPORT STEEL FRAMING - SEA3 - GL 13-9 -L3 - C-E,Complete,SEA - 3,East Support Building,SUES-3 - 13-9,DS/AD,,CONSTRUCTION,,Decking & Detail,SEAN MONK,,2024-02-05 07:00,2024-02-09 17:00,2024-01-20 07:00,2024-01-25 17:00,2025-11-20 17:00,2025-11-20 17:00,2025-10-16 07:00,2025-10-16 07:00,0,40,100
CN.SEA3.6190,DSAD PENETRATION SUPPORT STEEL FRAMING - SEA3 - GL 9-13 - L4 - C-E,Complete,SEA - 3,East Support Building,SUES-3 - 13-9,DS/AD,,CONSTRUCTION,,Decking & Detail,SEAN MONK,,2024-04-23 07:00,2024-04-26 17:00,2024-04-11 07:00,2024-04-17 17:00,2025-11-20 17:00,2025-11-20 17:00,2025-10-16 07:00,2025-10-16 07:00,0,40,100
CN.SEA3.1620,PH1- DS/AD FRP SLAB - DS/AD - SEA3 - GL 13-9 - L6 - C-E,Complete,SEA - 3,,SUES-3 - 13-9,DS/AD,,CONSTRUCTION,,SOMD,,,2023-11-30 07:00,2023-12-02 11:00,2023-11-30 07:00,2023-12-01 12:00,2025-11-20 17:00,2025-11-20 17:00,2025-06-13 08:00,2025-06-13 08:00,0,24,100
CN.SEA3.1630,CURE SLAB - SEA3 - GL 13-9 - L6 - C-E,Complete,SEA - 3,,SUES-3 - 13-9,DS/AD,,CONSTRUCTION,,SOMD,,,2023-12-02 11:00,2023-12-04 15:00,2023-12-02 11:00,2023-12-05 13:00,2025-11-20 17:00,2025-11-20 17:00,2025-06-13 08:00,2025-06-13 08:00,0,24,100
IMP.5070,IMPACT - ANCHOR FIXES ON KNEE WALL - GL C - L4 - DS AREA - SEA3 - GL 13-9,Complete,SEA - 3,,SUES-3 - 13-9,EXTERIOR SKIN,,CONSTRUCTION,,Cast-in Place Concrete - Baker Concrete,,,2023-10-24 07:00,2023-10-30 13:00,2023-10-24 07:00,2023-10-30 17:00,2025-11-20 17:00,2025-11-20 17:00,2025-10-29 07:00,2025-10-29 07:00,0,56,100
CN.SEA3.1640,REMAINING CLADDING FOR LEAVE OUTS GL 9-11 - A LINE [SUP EXTERIOR WALL],Complete,SEA - 3,,SUES-3 - 13-9,EXTERIOR SKIN,,CONSTRUCTION,PATRIOT,INSULATED METAL PANELS,,,2024-10-03 07:00,2024-10-15 17:00,2024-10-03 07:00,2024-10-05 17:00,2025-11-20 17:00,2025-11-20 17:00,2025-12-05 17:00,2025-12-05 17:00,0,80,100
CN.SEA3.1191,IMPACT - MEP & PIPE RACK MATERIAL OBSTRUCTION - SEA3 - GL 13-6 - L1 - D LINE,Complete,SEA - 3,,SUES-3 - 13-9,L1 - Fndn Slab,DS/AD INTERIORS,CONSTRUCTION,,TBD Architectural Finishes,,,2023-11-27 07:00,2023-12-01 17:00,2023-11-27 07:00,2023-12-05 17:00,2025-11-20 17:00,2025-11-20 17:00,2025-12-01 17:00,2025-12-01 17:00,0,40,100
CN.SEA3.1650,INSTALL INSULATED METAL PANEL MODULES - GL 13-9 - D LINE (AD AREA),Complete,SEA - 3,,SUES-3 - 13-9,EXTERIOR SKIN,,CONSTRUCTION,KOVACH,INSULATED METAL PANELS,,,2024-07-05 07:00,2024-07-09 17:00,2024-07-02 07:00,2024-07-04 17:00,2025-11-20 17:00,2025-11-20 17:00,2025-12-05 17:00,2025-12-05 17:00,0,50,100
EMB6060,IMPACT - Missing Precast Embed C13 4A SEQ 1604 - SEA3 - GL 13-9 - C-E,Complete,SEA - 3,East Support Building,SUES-3 - 13-9,DS/AD,,CONSTRUCTION,,Steel Erection,SEAN MONK,,2023-11-13 07:00,2023-11-17 17:00,2023-11-14 07:00,2023-12-14 11:00,2025-11-20 17:00,2025-11-20 17:00,2025-06-13 08:00,2025-06-13 08:00,0,40,100
CN.SEA2.6210,IMPACT [CL 41] - PATRIOT TURNOVER - METAL STAIR 21 - SEA3 - GL 13-9 - L1 - C-A,Complete,SEA - 3,East Support Building,SUES-3 - 13-9,INTERIOR STAIR TOWER - STAIR #21 (CLEAN ROOM),,CONSTRUCTION,,INSULATED METAL PANELS,JAMES LIVELY,INTERIORS,2023-10-09 07:00,2023-10-12 17:00,2023-10-17 07:00,2023-11-06 17:00,2025-11-20 17:00,2025-11-20 17:00,2025-11-12 07:00,2025-11-12 07:00,0,40,100
CN.SEA2.6220,INSTALL REMAINING METAL STAIRS - STAIR #21 - 13/D - ALL LEVELS,Complete,SEA - 3,East Support Building,SUES-3 - 13-9,INTERIOR STAIR TOWER - STAIR #21 (CLEAN ROOM),,CONSTRUCTION,,INSULATED METAL PANELS,JAMES LIVELY,INTERIORS,2023-12-04 07:00,2023-12-11 11:00,2023-11-07 07:00,2023-11-17 15:00,2025-11-20 17:00,2025-11-20 17:00,2025-11-12 07:00,2025-11-12 07:00,0,64,100
CN.SEA3.1660,KNEE WALL -SEA3 - GL 13-9 - L4 - C-E -DS/AD,Complete,SEA - 3,,SUES-3 - 13-9,DS/AD,,CONSTRUCTION,,Cast-in Place Concrete - Baker Concrete,,,2024-02-08 07:00,2024-02-11 09:00,2024-02-08 07:00,2024-02-11 12:00,2025-11-20 17:00,2025-11-20 17:00,2025-11-21 07:00,2025-11-21 07:00,0,32,100
CN.SEA3.1439,D-LINE STEEL SPRAY FIREPROOFING SFRM2 - SEA3 - L3-CEILING - GL 9-13,Complete,SEA - 3,,SUES-3 - 13-9,L4 - SUP Roof - FAB Roof,DS/AD INTERIORS,CONSTRUCTION,ROLLING PLAINS,Fireproofing,,,2024-04-15 07:00,2024-04-18 17:00,2024-04-15 07:00,2024-04-18 17:00,2025-11-20 17:00,2025-11-20 17:00,2025-06-13 08:00,2025-06-13 08:00,0,40,100
CN.SEA1.6230,REMAINING CIP OAC PAD - SEA-3 - GL 9 - L4 ROOF,Complete,SEA - 3,East Support Building,SUES-3 - 13-9,L4 - SUP Roof - FAB Roof,,CONSTRUCTION,BAKER,OAC/ MECH PADS,CONCRETE,SOMD / Roofing / Waterproofing,2024-05-31 07:00,2024-06-07 17:00,2024-02-09 07:00,2024-02-14 17:00,2025-11-20 17:00,2025-11-20 17:00,2025-12-05 17:00,2025-12-05 17:00,0,50,100
CN.SEA3.6210,PH1 - INSTALL REMAINING INSULATED METAL PANEL MODULES - SEA3 - GL 13-9 - C LINE (DS AREA),Complete,SEA - 3,East Support Building,SUES-3 - 13-9,EXTERIOR SKIN,,CONSTRUCTION,,INSULATED METAL PANELS,JAMES LIVELY,,2024-03-19 11:00,2024-03-28 13:00,2024-03-19 11:00,2024-03-29 09:00,2025-11-20 17:00,2025-11-20 17:00,2025-10-29 07:00,2025-10-29 07:00,0,72,100
CN.SEA3.6220,IMPACT - W&W MEP PIPE RACK STEEL CRANE Gridline C 10 - 14 SEA3 - C-Line,Complete,SEA - 3,East Support Building,SUES-3 - 13-9,EXTERIOR SKIN,,CONSTRUCTION,,INSULATED METAL PANELS,JAMES LIVELY,,2023-12-18 07:00,2024-01-05 11:00,2023-12-21 07:00,2024-01-23 16:00,2025-11-20 17:00,2025-11-20 17:00,2025-10-29 07:00,2025-10-29 07:00,0,96,100
CN.SEA3.6240,IMPACT - MEP & PIPE RACK MATERIAL OBSTRUCTION - SEA3 - GL 13-6 - L1 - D LINE,Complete,SEA - 3,,SUES-3 - 13-9,L1 - Fndn Slab,DS/AD INTERIORS,CONSTRUCTION,,TBD Architectural Finishes,,,2023-11-27 07:00,2023-12-01 17:00,2023-09-15 07:00,2023-12-11 09:00,2025-11-20 17:00,2025-11-20 17:00,2025-11-24 07:00,2025-11-24 07:00,0,40,100
CN.A1.UG.1410,DS SPRAY FIREPROOFING SFRM C-D (READY MEP DUCT) - SEA3 - GL 13-9 - L4&L5 CEILING - D LINE,Complete,SEA - 3,East Support Building,SUES-3 - 13-9,L4 - SUP Roof - FAB Roof,DS/AD INTERIORS,CONSTRUCTION,,Fireproofing,HOON WOO,,2024-03-18 09:00,2024-03-24 17:00,2024-03-18 09:00,2024-03-22 17:00,2025-11-20 17:00,2025-11-20 17:00,2025-11-14 07:00,2025-11-14 07:00,0,48,100
CN.SEA3.6660,IMPACT [S.TIA-11] - WAITING ON MEP LAYOUTS - SEA3 - GL 9-13 - L4 - C-E,Complete,SEA - 3,East Support Building,SUES-3 - 13-9,DS/AD,,CONSTRUCTION,,Decking & Detail,SEAN MONK,,2024-01-22 07:00,2024-01-25 17:00,2024-01-10 07:00,2024-04-10 17:00,2025-11-20 17:00,2025-11-20 17:00,2025-10-16 07:00,2025-10-16 07:00,0,40,100
CN.SEA3.6670,IMPACT - MULTIPLE CABLE TRAY IN THE WAY - DRYWALL 2 SIDE - SEA3 - GL 13-9 - L3 - C-A - ELEC ROOM 2 & BATTERY ROOM 1,Complete,SEA - 3,East Support Building,SUES-3 - 13-9,L3 / Waffle Slab Level,ELECTRIC RM 2,CONSTRUCTION,,DRYWALL,AMBER CARO,INTERIORS,2024-01-25 09:00,2024-01-28 11:00,2023-11-06 09:00,2024-03-08 15:00,2025-11-20 17:00,2025-11-20 17:00,2025-11-25 17:00,2025-11-25 17:00,0,32,100
CN.SEA3.6680,PH1 - F/R/P/W OAC PAD AIRLOCK WALLS - SEA3 - GL 11-9 - L4,Complete,SEA - 3,East Support Building,SUES-3 - 13-9,L4 - SUP Roof - FAB Roof,,CONSTRUCTION,BAKER,CIP WALL,CONCRETE,SOMD / Roofing / Waterproofing,2024-05-31 07:00,2024-06-07 17:00,2024-05-21 07:00,2024-05-25 17:00,2025-11-20 17:00,2025-11-20 17:00,2025-12-05 17:00,2025-12-05 17:00,0,50,100
CN.SEA3.6850,INSPECT BASE COAT CRICKET - GL 11-9 - C-A - L4 ROOF,Complete,SEA - 3,East Support Building,SUES-3 - 13-9,L4 - SUP Roof - FAB Roof,,CONSTRUCTION,BRAZOS,TOPPING,,SOMD / Roofing / Waterproofing,2024-07-02 07:00,2024-07-02 17:00,2024-06-24 07:00,2024-06-24 17:00,2025-11-20 17:00,2025-11-20 17:00,2025-12-05 17:00,2025-12-05 17:00,0,10,100
CN.SEA3.6860,INSTALL TOP COAT CRICKET - GL 11-9 - C-A - L4 ROOF,Complete,SEA - 3,East Support Building,SUES-3 - 13-9,L4 - SUP Roof - FAB Roof,,CONSTRUCTION,BRAZOS,TOPPING,,SOMD / Roofing / Waterproofing,2024-07-05 07:00,2024-07-08 17:00,2024-06-25 07:00,2024-06-26 17:00,2025-11-20 17:00,2025-11-20 17:00,2025-12-05 17:00,2025-12-05 17:00,0,20,100
CN.SEA3.6870,INSTALL CRICKET - GL 11-9 - C-A - L4 ROOF,Complete,SEA - 3,East Support Building,SUES-3 - 13-9,L4 - SUP Roof - FAB Roof,,CONSTRUCTION,BRAZOS,TOPPING,,SOMD / Roofing / Waterproofing,2024-06-28 07:00,2024-07-01 17:00,2024-06-20 07:00,2024-06-21 17:00,2025-11-20 17:00,2025-11-20 17:00,2025-12-05 17:00,2025-12-05 17:00,0,20,100
CN.SEA3.6880,INSPECT CRICKET - GL 11-9 - C-A - L4 ROOF,Complete,SEA - 3,East Support Building,SUES-3 - 13-9,L4 - SUP Roof - FAB Roof,,CONSTRUCTION,BRAZOS,TOPPING,,SOMD / Roofing / Waterproofing,2024-07-01 07:00,2024-07-01 17:00,2024-06-21 07:00,2024-06-21 17:00,2025-11-20 17:00,2025-11-20 17:00,2025-12-05 17:00,2025-12-05 17:00,0,10,100
CN.SEA3.6890,INSTALL PRIMER CRICKET - GL 11-9 - C-A - L4 ROOF,Complete,SEA - 3,East Support Building,SUES-3 - 13-9,L4 - SUP Roof - FAB Roof,,CONSTRUCTION,BRAZOS,TOPPING,,SOMD / Roofing / Waterproofing,2024-07-01 07:00,2024-07-01 17:00,2024-06-22 07:00,2024-06-22 17:00,2025-11-20 17:00,2025-11-20 17:00,2025-12-05 17:00,2025-12-05 17:00,0,10,100
CN.SEA3.6900,INSPECT PRIMER CRICKET - GL 11-9 - C-A - L4 ROOF,Complete,SEA - 3,East Support Building,SUES-3 - 13-9,L4 - SUP Roof - FAB Roof,,CONSTRUCTION,BRAZOS,TOPPING,,SOMD / Roofing / Waterproofing,2024-07-01 07:00,2024-07-01 17:00,2024-06-22 07:00,2024-06-22 17:00,2025-11-20 17:00,2025-11-20 17:00,2025-12-05 17:00,2025-12-05 17:00,0,10,100
CN.SEA3.6910,PH1 - WATERPROOFING/INSPECT OAC PAD AIRLOCK WALLS - SEA3 - GL 11-9 - L4,Complete,SEA - 3,East Support Building,SUES-3 - 13-9,L4 - SUP Roof - FAB Roof,,CONSTRUCTION,BRAZOS,CIP WALL,CONCRETE,SOMD / Roofing / Waterproofing,2024-05-28 07:00,2024-06-06 17:00,2024-05-14 07:00,2024-05-20 17:00,2025-11-20 17:00,2025-11-20 17:00,2025-12-05 17:00,2025-12-05 17:00,0,60,100
CN.SEA3.6960,IMPACT - D-LINE STEEL SPRAY FIREPROOFING SFRM2 - SEA3 - L3-CEILING - GL 9-13 - INSPECT SURFACE PREP ADDITIONAL STEEL,Complete,SEA - 3,,SUES-3 - 13-9,L4 - SUP Roof - FAB Roof,DS/AD INTERIORS,CONSTRUCTION,ROLLING PLAINS,Fireproofing,,,2024-04-04 07:00,2024-04-15 17:00,2024-04-04 07:00,2024-04-12 17:00,2025-11-20 17:00,2025-11-20 17:00,2025-06-13 08:00,2025-06-13 08:00,0,60,100
CN.SEA3.7000,FRP TOPPING SLAB (AIRLOCK AREA BETWEEN PADS) - GL 11-6 - C-A - L4 ROOF,Complete,SEA - 3,East Support Building,SUES-3 - 13-9,L4 - SUP Roof - FAB Roof,,CONSTRUCTION,BAKER,TOPPING,CONCRETE,SOMD / Roofing / Waterproofing,2024-07-08 07:00,2024-07-09 17:00,2024-06-27 07:00,2024-06-27 17:00,2025-11-20 17:00,2025-11-20 17:00,2025-12-05 17:00,2025-12-05 17:00,0,20,100
CN.SEA3.7010,IMPACT - RAMP IN THE WAY - SEA3 - GL 11-13 - D LINE - L3,Complete,SEA - 3,West Support Building,SUES-3 - 13-9,L3 / Waffle Slab Level,DS/AD INTERIORS,CONSTRUCTION,BERG,DRYWALL,FIZ DATA CENTER,INTERIORS,2024-04-24 07:00,2024-04-29 17:00,2024-04-25 07:00,2024-06-13 17:00,2025-11-20 17:00,2025-11-20 17:00,2025-06-13 08:00,2025-06-13 08:00,0,40,100
CN.SEA3.7020,IMPACT - PENDING RFI ON WALL TYPE CHANGE - SEA3 - GL 13-9 - D LINE - L3,Complete,SEA - 3,West Support Building,SUES-3 - 13-9,L3 / Waffle Slab Level,DS/AD INTERIORS,CONSTRUCTION,BERG,DRYWALL,FIZ DATA CENTER,INTERIORS,2024-05-30 07:00,2024-06-04 17:00,2024-05-30 07:00,2024-06-13 17:00,2025-11-20 17:00,2025-11-20 17:00,2025-06-13 08:00,2025-06-13 08:00,0,40,100
CN.SEA3.7030,CURE TOPPING SLAB (AREA AROUND PADS) - GL 11-6 - C-A - L4 ROOF,Complete,SEA - 3,East Support Building,SUES-3 - 13-9,L4 - SUP Roof - FAB Roof,,CONSTRUCTION,BAKER,TOPPING,CONCRETE,SOMD / Roofing / Waterproofing,2024-09-06 07:00,2024-09-09 17:00,2024-06-28 07:00,2024-07-01 17:00,2025-11-20 17:00,2025-11-20 17:00,2025-12-05 17:00,2025-12-05 17:00,0,20,100
CN.SEA3.7070,CURE - AD STEEL PAINT FIREPROOFING IFRM - SEA3 - GL 13-9 - C-E - L2-CEILING,Complete,SEA - 3,East Support Building,SUES-3 - 13-9,DS/AD,,CONSTRUCTION,ROLLING PLAINS,Fireproofing,HOON WOO,,2024-06-27 07:00,2024-07-16 17:00,2024-06-26 07:00,2024-07-09 17:00,2025-11-20 17:00,2025-11-20 17:00,2025-12-05 17:00,2025-12-05 17:00,0,180,100
CN.SEA3.7080,DEMO DRYWALL - INSTALL GOAL POSTS - BATTERY ROOM 1 - SEA3 - GL 13-9 - C-A - L3,Complete,SEA - 3,East Support Building,SUES-3 - 13-9,L3 / Waffle Slab Level,ELECTRIC RM 2,CONSTRUCTION,FINISH PAINT,TBD Architectural Finishes,JAMES LEE,INTERIORS,2024-07-26 07:00,2024-07-31 17:00,2024-07-15 07:00,2024-07-29 17:00,2025-11-20 17:00,2025-11-20 17:00,2025-11-25 17:00,2025-11-25 17:00,0,40,100
CN.SEA3.7100,IMPACT - OVERHEAD MEP INSTALLATION IMPENDING WORK - -BATTERY ROOM 1 - SEA3 - GL 13-9 - C-A - L3,Complete,SEA - 3,East Support Building,SUES-3 - 13-9,L3 / Waffle Slab Level,ELECTRIC RM 2,CONSTRUCTION,FINISH PAINT,TBD Architectural Finishes,JAMES LEE,INTERIORS,2025-01-27 07:00,2025-01-30 17:00,2025-01-25 07:00,2025-08-12 17:00,2025-11-20 17:00,2025-11-20 17:00,2025-12-05 17:00,2025-12-05 17:00,0,40,100
CN.A1.UG.1150,PH1- UNDERGROUND PLUMBING SEA4,Complete,SEA - 4,East Support Building,SUES-4 - 9-6,L1 - Fndn Slab,,CONSTRUCTION,,Underground Plumbing - Cobb,ANDREA SOLIS,,2022-10-25 11:00,2022-10-30 11:00,2022-10-25 11:00,2022-10-31 13:00,2025-11-20 17:00,2025-11-20 17:00,2025-06-13 08:00,2025-06-13 08:00,0,40,100
CN.A1.UG.1160,PH1- UNDERGROUND ELECTRICAL SEA4,Complete,SEA - 4,East Support Building,SUES-4 - 9-6,L1 - Fndn Slab,,CONSTRUCTION,,Underground Electrical - (By Owner),ANDREA SOLIS,,2022-10-28 15:00,2022-11-01 15:00,2022-10-28 15:00,2022-12-01 11:00,2025-11-20 17:00,2025-11-20 17:00,2025-06-13 08:00,2025-06-13 08:00,0,40,100
CN.SEA4.1000,PH1- SUP - EXCAVATE PIER CAPS - SEA4,Complete,SEA - 4,East Support Building,SUES-4 - 9-6,L1 - Fndn Slab,,CONSTRUCTION,,Excavate CIP,ANDREA SOLIS,,2022-10-21 15:00,2022-10-24 09:00,2022-10-21 15:00,2022-11-23 11:00,2025-11-20 17:00,2025-11-20 17:00,2025-06-13 08:00,2025-06-13 08:00,0,24,100
CN.SEA4.1010,PH1-FRP GRADE BEAM - SEA4,Complete,SEA - 4,East Support Building,SUES-4 - 9-6,L1 - Fndn Slab,,CONSTRUCTION,,Pour Concrete,ANDREA SOLIS,,2022-12-03 08:00,2022-12-08 08:00,2022-12-03 08:00,2022-12-09 09:00,2025-11-20 17:00,2025-11-20 17:00,2025-06-13 08:00,2025-06-13 08:00,0,40,100
CN.SEA4.1020,PH1-BLACK BASE (NOW RAT SLAB) - SEA4,Complete,SEA - 4,East Support Building,SUES-4 - 9-6,L1 - Fndn Slab,,CONSTRUCTION,,RAT SLAB,ANDREA SOLIS,,2022-12-30 11:00,2023-01-03 15:00,2022-12-12 11:00,2022-12-15 09:00,2025-11-20 17:00,2025-11-20 17:00,2025-06-13 08:00,2025-06-13 08:00,0,24,100
CN.SEA4.1030,PH1-CURE PIER CAPS - SEA4,Complete,SEA - 4,East Support Building,SUES-4 - 9-6,L1 - Fndn Slab,,CONSTRUCTION,,Concrete Cure,ANDREA SOLIS,,2022-12-27 07:00,2022-12-30 11:00,2022-12-09 13:00,2022-12-12 11:00,2025-11-20 17:00,2025-11-20 17:00,2025-06-13 08:00,2025-06-13 08:00,0,24,100
CN.SEA4.1080,PH1- FRP SLAB - SEA-4-L3,Complete,SEA - 4,East Support Building,SUES-4 - 9-6,L3 / Waffle Slab Level,,CONSTRUCTION,,SOMD,CONCRETE,,2023-08-04 15:00,2023-08-07 09:00,2023-08-04 15:00,2023-08-08 11:00,2025-11-20 17:00,2025-11-20 17:00,2025-11-10 07:00,2025-11-10 07:00,0,24,100
CN.SEA4.1110,PH1- FRP SLAB - SEA-4-ROOF,Complete,SEA - 4,East Support Building,SUES-4 - 9-6,L4 - SUP Roof - FAB Roof,,CONSTRUCTION,,SOMD,CONCRETE,SOMD / Roofing / Waterproofing,2023-08-21 07:00,2023-08-24 11:00,2023-08-16 07:00,2023-08-19 07:00,2025-11-20 17:00,2025-11-20 17:00,2025-10-29 07:00,2025-10-29 07:00,0,24,100
CN.SEA4.1100,PH1- CURE SOMD - SEA-4-L3,Complete,SEA - 4,East Support Building,SUES-4 - 9-6,L3 / Waffle Slab Level,,CONSTRUCTION,,Concrete Cure,JAMES LEE,,2023-08-08 11:00,2023-08-11 15:00,2023-08-08 11:00,2023-08-09 11:00,2025-11-20 17:00,2025-11-20 17:00,2025-11-20 07:00,2025-11-20 07:00,0,24,100
CN.SEA4.1130,PH1- CURE SOMD - SEA-4-ROOF,Complete,SEA - 4,East Support Building,SUES-4 - 9-6,L4 - SUP Roof - FAB Roof,,CONSTRUCTION,,Concrete Cure,JAMES LEE,SOMD / Roofing / Waterproofing,2023-09-05 07:00,2023-09-07 11:00,2023-08-19 16:10,2023-08-20 23:00,2025-11-20 17:00,2025-11-20 17:00,2025-10-29 07:00,2025-10-29 07:00,0,24,100
CN.SEA4.1090,PH1- 1st FLOOR SLAB - F3 - SEA-4-L1,Complete,SEA - 4,East Support Building,SUES-4 - 9-6,L1 - Fndn Slab,,CONSTRUCTION,,Pour Concrete,ANDREA SOLIS,,2022-12-15 13:00,2022-12-18 15:00,2022-12-15 13:00,2022-12-19 17:00,2025-11-20 17:00,2025-11-20 17:00,2025-06-13 08:00,2025-06-13 08:00,0,32,100
CN.SEA4.1220,MEP EQPT PADS (LAYOUT & INSTALL DOWELS)- SEA-4-ROOF,Complete,SEA - 4,East Support Building,SUES-4 - 9-6,L4 - SUP Roof - FAB Roof,,CONSTRUCTION,,Cast-in Place Concrete - Baker Concrete,JAMES LEE,SOMD / Roofing / Waterproofing,2023-10-02 07:00,2023-10-04 11:00,2023-09-16 07:00,2023-09-18 17:00,2025-11-20 17:00,2025-11-20 17:00,2025-12-04 07:00,2025-12-04 07:00,0,24,100
CN.SEA4.1050,TIER 1 ERECT PRECAST COLUMNS & BEAMS - SEA4,Complete,SEA - 4,East Support Building,SUES-4 - 9-6,L3 / Waffle Slab Level,,CONSTRUCTION,,"SUP EAST A,B",SEAN MONK,,2023-05-23 07:00,2023-06-03 09:00,2023-05-23 07:00,2023-06-23 17:00,2025-11-20 17:00,2025-11-20 17:00,2025-06-13 08:00,2025-06-13 08:00,0,72,100
CN.SEA4.1140,PH1-ROOF LAYER PARAPET(FRAMING & SHEATING RIP) - SEA4 - GL 9-6 - L4 - C-A - ROOF,Complete,SEA - 4,East Support Building,SUES-4 - 9-6,L4 - SUP Roof - FAB Roof,,CONSTRUCTION,,TOPPING,JAMES LIVELY,SOMD / Roofing / Waterproofing,2023-10-30 07:00,2023-11-02 13:00,2023-10-28 08:00,2023-10-30 17:00,2025-11-20 17:00,2025-11-20 17:00,2025-12-05 17:00,2025-12-05 17:00,0,16,100
CN.SEA4.1160,PH1-FLUID APPLIED MEMBRANE ROOFING - SEA4,Complete,SEA - 4,East Support Building,SUES-4 - 9-6,L4 - SUP Roof - FAB Roof,,CONSTRUCTION,,Roofing,JAMES LIVELY,SOMD / Roofing / Waterproofing,2023-10-05 11:00,2023-10-08 13:00,2023-09-19 11:00,2023-09-22 11:00,2025-11-20 17:00,2025-11-20 17:00,2025-12-04 07:00,2025-12-04 07:00,0,32,100
CN.SEA4.1170,PH1 - CLADDING STEEL INTERIOR - GL 9-6 - D LINE (AD AREA),Complete,SEA - 4,East Support Building,SUES-4 - 9-6,EXTERIOR SKIN,,CONSTRUCTION,PATRIOT,INSULATED METAL PANELS,JAMES LIVELY,,2024-04-29 07:00,2024-05-02 11:00,2024-03-28 07:00,2024-04-05 17:00,2025-11-20 17:00,2025-11-20 17:00,2025-11-21 07:00,2025-11-21 07:00,0,24,100
CN.SEA4.1200,PH1 - INSTALL INSULATED METAL PANEL MODULES - SEA4 - GL 9-6 - C (DS AREA),Complete,SEA - 4,East Support Building,SUES-4 - 9-6,EXTERIOR SKIN,,CONSTRUCTION,,INSULATED METAL PANELS,JAMES LIVELY,,2024-02-22 07:00,2024-03-01 09:00,2024-02-22 07:00,2024-03-02 16:00,2025-11-20 17:00,2025-11-20 17:00,2025-10-29 07:00,2025-10-29 07:00,0,72,100
CN.SEA4.1150,PH1 - CLADDING STEEL  - SEA-4 A LINE [SUP EXTERIOR WALL],Complete,SEA - 4,East Support Building,SUES-4 - 9-6,EXTERIOR SKIN,,CONSTRUCTION,,INSULATED METAL PANELS,JAMES LIVELY,,2023-10-16 14:00,2023-10-22 10:00,2023-10-10 07:00,2023-10-16 16:00,2025-11-20 17:00,2025-11-20 17:00,2025-11-21 07:00,2025-11-21 07:00,0,56,100
CN.SEA4.1180,INSTALL INSULATED METAL PANEL MODULES - GL 8-6 - A LINE [SUP EXTERIOR WALL],Complete,SEA - 4,East Support Building,SUES-4 - 9-6,EXTERIOR SKIN,,CONSTRUCTION,KOVACH,INSULATED METAL PANELS,JAMES LIVELY,,2024-09-15 07:00,2024-09-24 17:00,2024-08-07 07:00,2024-08-30 17:00,2025-11-20 17:00,2025-11-20 17:00,2025-12-05 17:00,2025-12-05 17:00,0,90,100
CN.SEA4.1120,PH1- AD STEEL FRAME INSTALL - SEA-4 fab side,Complete,SEA - 4,East Support Building,SUES-4 - 9-6,DS/AD,,CONSTRUCTION,,Steel Erection,SEAN MONK,,2023-08-21 07:00,2023-08-26 15:00,2023-08-12 07:00,2023-08-14 16:00,2025-11-20 17:00,2025-11-20 17:00,2025-06-13 08:00,2025-06-13 08:00,0,48,100
CN.AB.AR.2220,METAL STUD FRAMING (2hr) - SEA4 - GL 9-6 L2 - D LINE,Complete,SEA - 4,East Support Building,SUES-4 - 9-6,L2 - SubFab Level,DS/AD INTERIORS,CONSTRUCTION,BERG,TBD Architectural Finishes,AMBER CARO,INTERIORS,2024-01-22 07:00,2024-01-24 11:00,2024-01-15 07:00,2024-01-19 11:00,2025-11-20 17:00,2025-11-20 17:00,2025-11-24 07:00,2025-11-24 07:00,0,24,100
CN.SEA4.1230,PH1- METAL STAIR 22 INSTALL - SEA4 - GL 5-6 L1 - C-A,Complete,SEA - 4,East Support Building,SUES-4 - 9-6,L1 - Fndn Slab,MECH RM 1,CONSTRUCTION,,INSULATED METAL PANELS,JAMES LIVELY,INTERIORS,2023-10-17 13:00,2023-11-02 13:00,2023-10-13 13:00,2023-11-20 10:00,2025-11-20 17:00,2025-11-20 17:00,2025-11-10 07:00,2025-11-10 07:00,0,120,100
CN.SEA4.1240,DS/AD STEEL SPRAY FIREPROOFING SFRM - SEA4 - GL 9-6 - C-E L1 CEILING,Complete,SEA - 4,East Support Building,SUES-4 - 9-6,DS/AD,,CONSTRUCTION,,Fireproofing,HOON WOO,,2023-12-14 07:00,2023-12-19 13:00,2023-12-14 07:00,2023-12-15 11:00,2025-11-20 17:00,2025-11-20 17:00,2025-06-13 08:00,2025-06-13 08:00,0,56,100
CN.SEA4.1250,FRP TOPPING SLAB - GL 9-6 - C-A - L4 ROOF,Complete,SEA - 4,East Support Building,SUES-4 - 9-6,L4 - SUP Roof - FAB Roof,,CONSTRUCTION,BAKER,Pour Concrete,JAMES LIVELY,SOMD / Roofing / Waterproofing,2024-07-15 07:00,2024-07-17 17:00,2024-06-27 07:00,2024-06-27 17:00,2025-11-20 17:00,2025-11-20 17:00,2025-12-04 07:00,2025-12-04 07:00,0,30,100
CN.SEA4.1260,PH1- DECKING GL 9 - 8 - SEA-4-ROOF,Complete,SEA - 4,East Support Building,SUES-4 - 9-6,L4 - SUP Roof - FAB Roof,,CONSTRUCTION,,Decking & Detail,SEAN MONK,SOMD / Roofing / Waterproofing,2023-08-04 15:00,2023-08-06 11:00,2023-08-04 15:00,2023-08-07 13:00,2025-11-20 17:00,2025-11-20 17:00,2025-06-13 08:00,2025-06-13 08:00,0,16,100
CN.SEA4.1270,PH1- DECKING GL 9 - 8 - SEA-4-L3,Complete,SEA - 4,East Support Building,SUES-4 - 9-6,L3 / Waffle Slab Level,,CONSTRUCTION,,Decking & Detail,SEAN MONK,,2023-07-31 07:00,2023-08-01 13:00,2023-07-31 07:00,2023-08-01 13:00,2025-11-20 17:00,2025-11-20 17:00,2025-06-13 08:00,2025-06-13 08:00,0,16,100
CN.SEA1.1590,PH1- MEP EQPT PADS (INSTALL DRAIN MATS)- SEA-4-ROOF,Complete,SEA - 4,East Support Building,SUES-4 - 9-6,L4 - SUP Roof - FAB Roof,,CONSTRUCTION,,Pour Concrete,JAMES LEE,SOMD / Roofing / Waterproofing,2023-10-09 07:00,2023-10-10 13:00,2023-09-23 08:00,2023-09-24 13:00,2025-11-20 17:00,2025-11-20 17:00,2025-12-04 07:00,2025-12-04 07:00,0,16,100
CN.SEA1.1600,PH1- ERECT PRECAST OAC PADS - SEA4 - GL 9-6 - L4 - C-A - ROOF,Complete,SEA - 4,East Support Building,SUES-4 - 9-6,L4 - SUP Roof - FAB Roof,,CONSTRUCTION,,OAC/ MECH PADS,CONCRETE,SOMD / Roofing / Waterproofing,2023-10-16 07:00,2023-10-19 09:00,2023-10-09 07:00,2023-10-18 18:00,2025-11-20 17:00,2025-11-20 17:00,2025-12-04 07:00,2025-12-04 07:00,0,32,100
CN.SEA1.1610,PH1- MEP EQPT PADS (FORM / INSTALL PVC ANGLE) - SEA4 - GL 9-6 - L4 - C-A - ROOF,Complete,SEA - 4,East Support Building,SUES-4 - 9-6,L4 - SUP Roof - FAB Roof,,CONSTRUCTION,,OAC/ MECH PADS,CONCRETE,SOMD / Roofing / Waterproofing,2023-11-04 10:00,2023-11-05 16:00,2023-10-24 07:00,2023-10-25 17:30,2025-11-20 17:00,2025-11-20 17:00,2025-12-04 07:00,2025-12-04 07:00,0,16,100
CN.SEA1.1620,PH1- MEP EQPT PADS (REPAIR WATERPROOF) - SEA4 - GL 9-6 - L4 - C-A - ROOF,Complete,SEA - 4,East Support Building,SUES-4 - 9-6,L4 - SUP Roof - FAB Roof,,CONSTRUCTION,,OAC/ MECH PADS,CONCRETE,SOMD / Roofing / Waterproofing,2023-11-06 09:00,2023-11-07 15:00,2023-10-25 13:30,2023-10-26 00:00,2025-11-20 17:00,2025-11-20 17:00,2025-12-04 07:00,2025-12-04 07:00,0,16,100
CN.SEA1.1630,PH1- MEP EQPT PADS (TROUGHS DRAIN MATS & MEP SLEEVES) - SEA4 - GL 9-6 - L4 - C-A - ROOF,Complete,SEA - 4,East Support Building,SUES-4 - 9-6,L4 - SUP Roof - FAB Roof,,CONSTRUCTION,,OAC/ MECH PADS,CONCRETE,SOMD / Roofing / Waterproofing,2023-11-07 15:00,2023-11-10 09:00,2023-10-24 15:00,2023-10-27 09:00,2025-11-20 17:00,2025-11-20 17:00,2025-12-04 07:00,2025-12-04 07:00,0,24,100
CN.SEA1.1640,PH1- MEP EQPT PADS (TROUGHS INSULATION) - SEA4 - GL 9-6 - L4 - C-A - ROOF,Complete,SEA - 4,East Support Building,SUES-4 - 9-6,L4 - SUP Roof - FAB Roof,,CONSTRUCTION,,OAC/ MECH PADS,CONCRETE,SOMD / Roofing / Waterproofing,2023-11-10 09:00,2023-11-10 17:00,2023-10-30 07:00,2023-10-30 17:00,2025-11-20 17:00,2025-11-20 17:00,2025-12-04 07:00,2025-12-04 07:00,0,8,100
CN.SEA1.1650,PH1- MEP EQPT PADS (FORM REBAR POUR TROUGHS) - SEA4 - GL 9-6 - L4 - C-A - ROOF,Complete,SEA - 4,East Support Building,SUES-4 - 9-6,L4 - SUP Roof - FAB Roof,,CONSTRUCTION,,OAC/ MECH PADS,CONCRETE,SOMD / Roofing / Waterproofing,2023-11-11 08:00,2023-11-12 14:00,2023-10-30 14:30,2023-10-31 00:00,2025-11-20 17:00,2025-11-20 17:00,2025-12-04 07:00,2025-12-04 07:00,0,16,100
CN.SEA1.1660,PH1- MEP EQPT PADS(TROUGH WATERPROOF & MEP SLEEVES IN TROUGHS) - SEA4 - GL 9-6 - L4 - C-A - ROOF,Complete,SEA - 4,East Support Building,SUES-4 - 9-6,L4 - SUP Roof - FAB Roof,,CONSTRUCTION,,OAC/ MECH PADS,CONCRETE,SOMD / Roofing / Waterproofing,2023-11-13 07:00,2023-11-14 13:00,2023-11-02 07:00,2023-11-03 17:00,2025-11-20 17:00,2025-11-20 17:00,2025-12-04 07:00,2025-12-04 07:00,0,16,100
CN.SEA3.1270,PH1-CIP WALL (DS)- SEA4,Complete,SEA - 4,East Support Building,SUES-4 - 9-6,L4 - SUP Roof - FAB Roof,,CONSTRUCTION,,CIP WALL,CONCRETE,SOMD / Roofing / Waterproofing,2023-10-02 07:00,2023-10-04 11:00,2023-08-31 09:00,2023-09-08 17:00,2025-11-20 17:00,2025-11-20 17:00,2025-10-29 07:00,2025-10-29 07:00,0,24,100
CN.SEA4.1310,PH1- TOPPING SLAB w TRENCH & ANGLE EMBEDS- SEA-4-L1,Complete,SEA - 4,East Support Building,SUES-4 - 9-6,L1 - Fndn Slab,,CONSTRUCTION,,TOPPING,CONCRETE,SOMD / Roofing / Waterproofing,2023-09-14 16:00,2023-09-17 10:00,2023-09-14 16:00,2023-09-18 12:00,2025-11-20 17:00,2025-11-20 17:00,2025-11-10 07:00,2025-11-10 07:00,0,24,100
CN.SEA4.1330,PH1- DS/AD FRP SLAB - DS/AD - SEA4 - GL 9-6 - C-E - L3,Complete,SEA - 4,East Support Building,SUES-4 - 9-6,DS/AD,,CONSTRUCTION,,SOMD,CONCRETE,,2023-11-30 07:00,2023-12-02 11:00,2023-11-30 07:00,2023-12-01 12:00,2025-11-20 17:00,2025-11-20 17:00,2025-06-13 08:00,2025-06-13 08:00,0,24,100
CN.SEA4.1340,AD WATERPROOFING - SEA4 - GL 8-6 - D-E - L4/E,Complete,SEA - 4,East Support Building,SUES-4 - 9-6,DS/AD,,CONSTRUCTION,BRAZOS,TOPPING,SEAN MONK,,2024-10-14 07:00,2024-10-21 17:00,2024-10-07 07:00,2024-10-19 17:00,2025-11-20 17:00,2025-11-20 17:00,2025-12-05 17:00,2025-12-05 17:00,0,50,100
CN.SEA4.1350,AD TOPPING SLAB - SEA4 - GL 8-6 - D-E - L4/E,Complete,SEA - 4,East Support Building,SUES-4 - 9-6,DS/AD,,CONSTRUCTION,BAKER,SOMD,CONCRETE,,2024-10-21 07:00,2024-10-24 17:00,2024-10-21 07:00,2024-10-24 17:00,2025-11-20 17:00,2025-11-20 17:00,2025-12-05 17:00,2025-12-05 17:00,0,30,100
TIER 24.1050,TIER 2 ERECT PRECAST COLUMNS & BEAMS - SEA4,Complete,SEA - 4,East Support Building,SUES-4 - 9-6,L4 - SUP Roof - FAB Roof,,CONSTRUCTION,,"SUP EAST A,B",SEAN MONK,,2023-06-30 09:00,2023-07-07 15:00,2023-07-09 09:00,2023-07-15 09:00,2025-11-20 17:00,2025-11-20 17:00,2025-06-13 08:00,2025-06-13 08:00,0,56,100
CN.SEA4.1360,PH1- DECKING GL 8 - 7 - SEA-4-L3,Complete,SEA - 4,East Support Building,SUES-4 - 9-6,L3 / Waffle Slab Level,,CONSTRUCTION,,Decking & Detail,SEAN MONK,,2023-08-01 13:00,2023-08-03 09:00,2023-08-01 13:00,2023-08-03 09:00,2025-11-20 17:00,2025-11-20 17:00,2025-06-13 08:00,2025-06-13 08:00,0,16,100
CN.SEA4.1370,PH1- DECKING GL 7 - 6 - SEA-4-L3,Complete,SEA - 4,East Support Building,SUES-4 - 9-6,L3 / Waffle Slab Level,,CONSTRUCTION,,Decking & Detail,SEAN MONK,,2023-08-03 09:00,2023-08-04 15:00,2023-08-03 09:00,2023-08-04 15:00,2025-11-20 17:00,2025-11-20 17:00,2025-06-13 08:00,2025-06-13 08:00,0,16,100
CN.SEA4.1380,PH1- DECKING GL 8 - 7 - SEA-4-ROOF,Complete,SEA - 4,East Support Building,SUES-4 - 9-6,L4 - SUP Roof - FAB Roof,,CONSTRUCTION,,Decking & Detail,SEAN MONK,SOMD / Roofing / Waterproofing,2023-08-07 13:00,2023-08-10 09:00,2023-08-07 13:00,2023-08-10 09:00,2025-11-20 17:00,2025-11-20 17:00,2025-06-13 08:00,2025-06-13 08:00,0,16,100
CN.SEA4.1390,PH1- DECKING GL 7 - 6 - SEA-4-ROOF,Complete,SEA - 4,East Support Building,SUES-4 - 9-6,L4 - SUP Roof - FAB Roof,,CONSTRUCTION,,Decking & Detail,SEAN MONK,SOMD / Roofing / Waterproofing,2023-08-10 09:00,2023-08-11 15:00,2023-08-10 09:00,2023-08-11 15:00,2025-11-20 17:00,2025-11-20 17:00,2025-06-13 08:00,2025-06-13 08:00,0,16,100
CN.SEA4.1420,PH1- DS STEEL FRAME INSTALL - SEA-4 Comeback Sup Side,Complete,SEA - 4,East Support Building,SUES-4 - 9-6,DS/AD,,CONSTRUCTION,,Steel Erection,SEAN MONK,,2023-08-28 07:00,2023-09-02 15:00,2023-08-15 07:00,2023-08-20 16:00,2025-11-20 17:00,2025-11-20 17:00,2025-06-13 08:00,2025-06-13 08:00,0,48,100
CN.SEA4.1430,PH1- EXTERIOR CURBS - SEA-4-L1,Complete,SEA - 4,East Support Building,SUES-4 - 9-6,L1 - Fndn Slab,,CONSTRUCTION,,Pour Concrete,JAMES LEE,SOMD / Roofing / Waterproofing,2023-10-02 16:00,2023-10-04 12:00,2023-10-02 16:00,2023-10-05 12:00,2025-11-20 17:00,2025-11-20 17:00,2025-11-10 07:00,2025-11-10 07:00,0,16,100
CN.SEA4.1440,PH1- MEP PADS - SEA-4-L1,Complete,SEA - 4,East Support Building,SUES-4 - 9-6,L1 - Fndn Slab,,CONSTRUCTION,,Pour Concrete,JAMES LEE,SOMD / Roofing / Waterproofing,2023-10-16 07:00,2023-10-20 15:00,2023-10-06 07:00,2023-10-13 07:00,2025-11-20 17:00,2025-11-20 17:00,2025-11-10 07:00,2025-11-10 07:00,0,48,100
CN.SEA4.2220,METAL STUD FRAMING (2hr) - SEA4 - GL 9-6 L1 - C-A - MECHANICAL ROOM 1 SOUTH,Complete,SEA - 4,East Support Building,SUES-4 - 9-6,L1 - Fndn Slab,MECH RM 1,CONSTRUCTION,BERG,TBD Architectural Finishes,AMBER CARO,INTERIORS,2023-11-27 07:00,2023-12-01 17:00,2023-11-27 07:00,2023-12-01 17:00,2025-11-20 17:00,2025-11-20 17:00,2025-11-13 17:00,2025-11-13 17:00,0,40,100
CN.SEA4.3660,MEP ROUGH IN & INSPECTION (by SECAI) - SEA4 - GL 9-6 L1 - C-A - MECHANICAL ROOM 1 SOUTH,Complete,SEA - 4,East Support Building,SUES-4 - 9-6,L1 - Fndn Slab,MECH RM 1,CONSTRUCTION,,Owner & Design Team,AMBER CARO,,2023-12-02 08:00,2023-12-07 08:00,2023-12-02 08:00,2023-12-02 11:00,2025-11-20 17:00,2025-11-20 17:00,2025-12-04 07:00,2025-12-04 07:00,0,40,100
CN.SEA4.3670,TAPE & FINISH DRYWALL - MECHANICAL ROOM 1 SOUTH - SEA4 - GL 9-6 - C-A - L1,Complete,SEA - 4,East Support Building,SUES-4 - 9-6,L1 - Fndn Slab,MECH RM 1,CONSTRUCTION,CHERRY COATING,DRYWALL,AMBER CARO,INTERIORS,2024-08-19 07:00,2024-08-26 17:00,2024-08-19 07:00,2024-08-30 17:00,2025-11-20 17:00,2025-11-20 17:00,2025-12-04 07:00,2025-12-04 07:00,0,50,100
CN.SEA4.3680,FINISH PAINT - MECHANICAL ROOM 1 SOUTH - SEA4 - GL 9-6 - C-A - L1,Not Started,SEA - 4,East Support Building,SUES-4 - 9-6,L1 - Fndn Slab,MECH RM 1,CONSTRUCTION,FINISH PAINT,TBD Architectural Finishes,JAMES LEE,INTERIORS,2025-11-21 07:00,2025-11-24 17:00,,,2025-11-21 07:00,2025-11-24 17:00,2025-12-04 07:00,2025-12-05 17:00,20,20,0
CN.SEA4.4280,DRYWALL 2 SIDE - MECHANICAL ROOM 1 SOUTH - SEA4 - GL 9-6 - C-A - L1,Complete,SEA - 4,East Support Building,SUES-4 - 9-6,L1 - Fndn Slab,MECH RM 1,CONSTRUCTION,BERG,DRYWALL,AMBER CARO,INTERIORS,2024-03-18 07:00,2024-03-22 17:00,2024-03-16 07:00,2024-08-27 17:00,2025-11-20 17:00,2025-11-20 17:00,2025-12-04 07:00,2025-12-04 07:00,0,40,100
CN.SEA4.4290,DRYWALL & INSULATION (1 side) (INT) - SEA4 - GL 9-6 L1 - C-A - MECHANICAL ROOM 1 SOUTH,Complete,SEA - 4,East Support Building,SUES-4 - 9-6,L1 - Fndn Slab,MECH RM 1,CONSTRUCTION,,DRYWALL,AMBER CARO,INTERIORS,2023-11-20 07:00,2023-11-27 17:00,2023-11-20 07:00,2023-11-27 17:00,2025-11-20 17:00,2025-11-20 17:00,2025-12-04 07:00,2025-12-04 07:00,0,40,100
CN.SEA4.4300,METAL STUD FRAMING (2hr) - SEA-4 - L3,Complete,SEA - 4,East Support Building,SUES-4 - 9-6,L3 / Waffle Slab Level,ELECTRIC RM 2,CONSTRUCTION,BERG,TBD Architectural Finishes,AMBER CARO,INTERIORS,2023-10-24 07:00,2023-10-28 17:00,2023-10-23 09:00,2023-10-26 10:00,2025-11-20 17:00,2025-11-20 17:00,2025-11-20 07:00,2025-11-20 07:00,0,40,100
CN.SEA4.4310,MEP ROUGH IN & INSPECTION (by SECAI) - SEA4 - GL 9-6 - L3 - C-A,Complete,SEA - 4,East Support Building,SUES-4 - 9-6,L3 / Waffle Slab Level,ELECTRIC RM 2,CONSTRUCTION,,Owner & Design Team,AMBER CARO,,2024-01-23 07:00,2024-01-26 17:00,2024-01-23 07:00,2024-01-26 17:00,2025-11-20 17:00,2025-11-20 17:00,2025-11-20 07:00,2025-11-20 07:00,0,40,100
CN.SEA4.4340,TAPE & FINISH DRYWALL - SEA4 - GL 9-6 - L3 - C-A,Complete,SEA - 4,East Support Building,SUES-4 - 9-6,L3 / Waffle Slab Level,ELECTRIC RM 2,CONSTRUCTION,,DRYWALL,AMBER CARO,INTERIORS,2024-03-17 07:00,2024-03-20 17:00,2024-03-03 00:00,2024-03-08 16:00,2025-11-20 17:00,2025-11-20 17:00,2025-11-20 07:00,2025-11-20 07:00,0,40,100
CN.SEA4.4350,TAPE & FINISH DRYWALL - SEA4 - GL 9-6 - C-A - L3- ELEVATOR HALL 22,Not Started,SEA - 4,East Support Building,SUES-4 - 9-6,L3 / Waffle Slab Level,ELECTRIC RM 2,CONSTRUCTION,FINISH PAINT,TBD Architectural Finishes,JAMES LEE,INTERIORS,2025-11-25 07:00,2025-12-03 17:00,,,2025-11-25 07:00,2025-12-03 17:00,2025-11-20 07:00,2025-11-26 17:00,50,50,0
CN.SEA4.4330,DRYWALL 2 SIDE - SEA4 - GL 9-6 - L3 - C-A,Complete,SEA - 4,East Support Building,SUES-4 - 9-6,L3 / Waffle Slab Level,ELECTRIC RM 2,CONSTRUCTION,,DRYWALL,AMBER CARO,INTERIORS,2024-03-09 08:00,2024-03-17 08:00,2024-02-28 00:00,2024-03-02 00:00,2025-11-20 17:00,2025-11-20 17:00,2025-11-20 07:00,2025-11-20 07:00,0,40,100
CN.SEA4.4320,DRYWALL & INSULATION (3=1 side) (INT) - SEA-4-L3,Complete,SEA - 4,East Support Building,SUES-4 - 9-6,L3 / Waffle Slab Level,ELECTRIC RM 2,CONSTRUCTION,,DRYWALL,AMBER CARO,INTERIORS,2023-10-25 07:30,2023-10-29 17:00,2023-10-25 07:30,2023-10-28 11:00,2025-11-20 17:00,2025-11-20 17:00,2025-11-20 07:00,2025-11-20 07:00,0,40,100
CN.SEA1.5260,PH1- GROUT SHIM PRECAST OAC PADS - SEA4 - GL 9-6 - L4 - C-A - ROOF,Complete,SEA - 4,East Support Building,SUES-4 - 9-6,L4 - SUP Roof - FAB Roof,,CONSTRUCTION,,TBD Architectural Finishes,CONCRETE,SOMD / Roofing / Waterproofing,2023-10-30 15:00,2023-11-04 09:00,2023-10-22 08:00,2023-10-24 17:00,2025-11-20 17:00,2025-11-20 17:00,2025-12-04 07:00,2025-12-04 07:00,0,24,100
SECAI.UG.SUE96,IMPACT - SECAI MEP UG DRAIN INSTALL - SEA-4-L1,Complete,SEA - 4,East Support Building,SUES-4 - 9-6,L1 - Fndn Slab,,CONSTRUCTION,,TOPPING,CONCRETE,SOMD / Roofing / Waterproofing,2023-10-09 07:00,2023-10-12 16:00,2023-09-04 07:00,2023-09-13 16:00,2025-11-20 17:00,2025-11-20 17:00,2025-10-29 07:00,2025-10-29 07:00,0,39,100
CN.SEA4.1450,IMPACT - DRB-01 ADDITIONAL BEAMS BETWEEN FAB AND AD - SEA4 - GL 9-6 - C-E,Complete,SEA - 4,,SUES-4 - 9-6,DS/AD,,CONSTRUCTION,,Decking & Detail,,,2023-11-13 07:00,2023-11-14 13:00,2023-11-10 07:00,2024-01-02 15:00,2025-11-20 17:00,2025-11-20 17:00,2025-06-13 08:00,2025-06-13 08:00,0,16,100
SEC.AR.4440,SECAI - MEP PIPE RACK INSTALL AREA B DS SIDE - SEA4 - GL 9-6 - C-A - L4 ROOF,Complete,SEA - 4,East Support Building,SUES-4 - 9-6,L4 - SUP Roof - FAB Roof,,CONSTRUCTION,SECAI,Owner & Design Team,,INTERIORS,2024-09-06 07:00,2024-09-06 17:00,2024-07-23 07:00,2024-07-23 17:00,2025-11-20 17:00,2025-11-20 17:00,2025-12-05 17:00,2025-12-05 17:00,0,10,100
CN.SEA4.4370,PH1 - CLADDING STEEL  EXTERIOR - SEA4 - GL 9-6 - C LINE  (DS AREA) (9~6),Complete,SEA - 4,East Support Building,SUES-4 - 9-6,EXTERIOR SKIN,,CONSTRUCTION,,INSULATED METAL PANELS,JAMES LIVELY,,2024-02-01 08:00,2024-02-10 10:00,2024-02-01 08:00,2024-02-12 14:00,2025-11-20 17:00,2025-11-20 17:00,2025-10-29 07:00,2025-10-29 07:00,0,82,100
CN.SEA4.1061,METAL STUD FRAMING (2hr) - SEA4 - GL 9-6 L1 - D LINE,Complete,SEA - 4,West Support Building,SUES-4 - 9-6,L1 - Fndn Slab,DS/AD INTERIORS,CONSTRUCTION,BERG,TBD Architectural Finishes,FIZ DATA CENTER,INTERIORS,2023-10-12 07:00,2023-10-16 15:00,2023-10-12 07:00,2023-10-30 15:00,2025-11-20 17:00,2025-11-20 17:00,2025-11-13 17:00,2025-11-13 17:00,0,48,100
CN.SEA4.1131,TAPE & FINISH DRYWALL - SEA4 - GL 9-6 L1 - D LINE,Complete,SEA - 4,West Support Building,SUES-4 - 9-6,L1 - Fndn Slab,DS/AD INTERIORS,CONSTRUCTION,,DRYWALL,FIZ DATA CENTER,INTERIORS,2024-01-22 07:00,2024-01-25 17:00,2024-01-04 07:00,2024-01-06 17:00,2025-11-20 17:00,2025-11-20 17:00,2025-12-01 17:00,2025-12-01 17:00,0,40,100
CN.SEA4.1151,PRIMER & PAINT DRYWALL -  GL 9-6 - D LINE - L1,Complete,SEA - 4,West Support Building,SUES-4 - 9-6,L1 - Fndn Slab,DS/AD INTERIORS,CONSTRUCTION,FINISH PAINT,TBD Architectural Finishes,FIZ DATA CENTER,INTERIORS,2024-10-21 07:00,2024-10-24 17:00,2024-10-21 07:00,2024-10-24 17:00,2025-11-20 17:00,2025-11-20 17:00,2025-12-01 17:00,2025-12-01 17:00,0,30,100
CN.SEA4.1111,DRYWALL 2 SIDE - SEA4 - GL 9-6 L1 - D LINE,Complete,SEA - 4,West Support Building,SUES-4 - 9-6,L1 - Fndn Slab,DS/AD INTERIORS,CONSTRUCTION,,DRYWALL,FIZ DATA CENTER,INTERIORS,2023-12-04 07:00,2023-12-08 17:00,2023-12-04 07:00,2023-12-11 15:00,2025-11-20 17:00,2025-11-20 17:00,2025-12-01 17:00,2025-12-01 17:00,0,40,100
CN.SEA4.1081,DRYWALL & INSULATION (1 side) (INT) - SEA4 - GL 9-6 L1 - D LINE,Complete,SEA - 4,West Support Building,SUES-4 - 9-6,L1 - Fndn Slab,DS/AD INTERIORS,CONSTRUCTION,,DRYWALL,FIZ DATA CENTER,INTERIORS,2023-10-16 07:00,2023-10-20 15:00,2023-10-16 07:00,2023-11-16 11:00,2025-11-20 17:00,2025-11-20 17:00,2025-12-01 17:00,2025-12-01 17:00,0,48,100
CN.SEA4.1141,REMEDY - TAPE & FINISH DRYWALL - SEA4 - GL 9-6 - D LINE - L2,Complete,SEA - 4,West Support Building,SUES-4 - 9-6,L2 - SubFab Level,DS/AD INTERIORS,CONSTRUCTION,CHERRY COATING,DRYWALL,FIZ DATA CENTER,INTERIORS,2024-08-23 07:00,2024-08-27 17:00,2024-08-07 07:00,2024-08-10 17:00,2025-11-20 17:00,2025-11-20 17:00,2025-12-04 07:00,2025-12-04 07:00,0,30,100
CN.SEA4.1161,FINISH PAINT - FA LAB 1 - SEA4 - GL 9-6 - D LINE - L2,Not Started,SEA - 4,West Support Building,SUES-4 - 9-6,L2 - SubFab Level,DS/AD INTERIORS,CONSTRUCTION,FINISH PAINT,TBD Architectural Finishes,FIZ DATA CENTER,INTERIORS,2025-11-21 07:00,2025-11-24 17:00,,,2025-11-21 07:00,2025-11-24 17:00,2025-12-04 07:00,2025-12-05 17:00,20,20,0
CN.SEA4.1121,REMEDY - FRAME & DRYWALL - SEA4 - GL 9-6 - D LINE - L2,Complete,SEA - 4,West Support Building,SUES-4 - 9-6,L2 - SubFab Level,DS/AD INTERIORS,CONSTRUCTION,BERG,DRYWALL,FIZ DATA CENTER,INTERIORS,2024-07-18 07:00,2024-08-08 17:00,2024-07-18 07:00,2024-08-06 17:00,2025-11-20 17:00,2025-11-20 17:00,2025-12-04 07:00,2025-12-04 07:00,0,150,100
CN.SEA4.1101,DRYWALL & INSULATION (1 side) (INT) - SEA4 - GL 9-6 L2 - D LINE,Complete,SEA - 4,West Support Building,SUES-4 - 9-6,L2 - SubFab Level,DS/AD INTERIORS,CONSTRUCTION,,DRYWALL,FIZ DATA CENTER,INTERIORS,2024-01-24 11:00,2024-01-29 09:00,2024-01-18 11:00,2024-01-21 13:00,2025-11-20 17:00,2025-11-20 17:00,2025-11-24 07:00,2025-11-24 07:00,0,48,100
CN.SEA4.4390,TEMP WALLS Framing and Drywall - SEB2- GL 9-6 - L3 - C-A,Complete,SEA - 4,,SUES-4 - 9-6,L3 / Waffle Slab Level,ELECTRIC RM 2,CONSTRUCTION,,DRYWALL,,,2023-10-09 08:00,2023-10-13 08:00,2023-10-09 08:00,2023-10-13 16:00,2025-11-20 17:00,2025-11-20 17:00,2025-11-20 07:00,2025-11-20 07:00,0,40,100
CN.SEA4.4400,PH1 -WELD CLIPS - CLADDING STEEL - SEA4 - GL 9-6 - C LINE (DS AREA),Complete,SEA - 4,East Support Building,SUES-4 - 9-6,EXTERIOR SKIN,,CONSTRUCTION,,INSULATED METAL PANELS,JAMES LIVELY,,2023-09-18 07:00,2023-09-19 09:00,2023-09-18 07:00,2023-09-19 09:00,2025-11-20 17:00,2025-11-20 17:00,2025-10-29 07:00,2025-10-29 07:00,0,12,100
CN.SEA4.1262,IMPACT - DS STEEL BEAM STIFFNER CONNECTION FIXES - SEA4 - GL 9-6 - C-E - L4,Complete,SEA - 4,,SUES-4 - 9-6,DS/AD,,CONSTRUCTION,,Decking & Detail,,,2023-11-16 07:00,2023-11-19 17:00,2023-11-16 07:00,2023-11-20 11:00,2025-11-20 17:00,2025-11-20 17:00,2025-06-13 08:00,2025-06-13 08:00,0,40,100
CN.SEA4.1232,PH1- DS/AD DETAILING & DETAILING - SEA4 - GL 9-6 - L2-L3 - C-E,Complete,SEA - 4,East Support Building,SUES-4 - 9-6,DS/AD,,CONSTRUCTION,,Decking & Detail,SEAN MONK,,2023-09-25 07:00,2023-09-30 15:00,2023-09-25 07:00,2023-11-02 09:00,2025-11-20 17:00,2025-11-20 17:00,2025-06-13 08:00,2025-06-13 08:00,0,48,100
CN.SEA4.1171,METAL STUD FRAMING (2hr) - SEA4 - GL 9-6 - L3 - D LINE - E Line,Complete,SEA - 4,West Support Building,SUES-4 - 9-6,L3 / Waffle Slab Level,DS/AD INTERIORS,CONSTRUCTION,BERG,TBD Architectural Finishes,FIZ DATA CENTER,INTERIORS,2024-02-10 08:00,2024-02-14 16:00,2024-02-10 08:00,2024-02-15 09:00,2025-11-20 17:00,2025-11-20 17:00,2025-06-13 08:00,2025-06-13 08:00,0,48,100
CN.SEA4.1211,TAPE & FINISH DRYWALL - SEA4 - GL 9-6 - D LINE - L3,Complete,SEA - 4,West Support Building,SUES-4 - 9-6,L3 / Waffle Slab Level,DS/AD INTERIORS,CONSTRUCTION,CHERRY COATING,DRYWALL,FIZ DATA CENTER,INTERIORS,2024-06-13 07:00,2024-06-18 17:00,2024-06-13 07:00,2024-06-20 17:00,2025-11-20 17:00,2025-11-20 17:00,2025-06-13 08:00,2025-06-13 08:00,0,40,100
CN.SEA4.1221,D/S SGP Wall Turnover - SEA4 - GL 9-6 - D LINE - L3,Complete,SEA - 4,West Support Building,SUES-4 - 9-6,L3 / Waffle Slab Level,DS/AD INTERIORS,CONSTRUCTION,SECAI,TBD Architectural Finishes,FIZ DATA CENTER,INTERIORS,2024-09-27 07:00,2024-09-27 17:00,2024-06-20 07:00,2024-06-20 17:00,2025-11-20 17:00,2025-11-20 17:00,2025-06-13 08:00,2025-06-13 08:00,0,10,100
CN.SEA4.1201,DRYWALL 2 SIDE - SEA4 - GL 9-6 - D LINE - L3,Complete,SEA - 4,West Support Building,SUES-4 - 9-6,L3 / Waffle Slab Level,DS/AD INTERIORS,CONSTRUCTION,BERG,DRYWALL,FIZ DATA CENTER,INTERIORS,2024-04-22 07:00,2024-04-25 17:00,2024-04-22 07:00,2024-06-10 17:00,2025-11-20 17:00,2025-11-20 17:00,2025-06-13 08:00,2025-06-13 08:00,0,40,100
CN.SEA4.1191,DRYWALL & INSULATION (1st layer) (INT) - SEA4 - GL 9-6 - L3 - D LINE,Complete,SEA - 4,West Support Building,SUES-4 - 9-6,L3 / Waffle Slab Level,DS/AD INTERIORS,CONSTRUCTION,,DRYWALL,FIZ DATA CENTER,INTERIORS,2024-02-29 07:00,2024-03-02 11:00,2024-02-29 07:00,2024-03-02 12:00,2025-11-20 17:00,2025-11-20 17:00,2025-06-13 08:00,2025-06-13 08:00,0,24,100
CN.SEA4.6000,WATER PROOFING & POUR PEDASTALS - SEA4 - GL 7-4 - L4 - C-A - ROOF,Complete,SEA - 4,East Support Building,SUES-4 - 9-6,L4 - SUP Roof - FAB Roof,,CONSTRUCTION,,Roofing,,SOMD / Roofing / Waterproofing,2023-11-14 13:00,2023-11-16 11:00,2023-11-04 08:00,2023-11-05 16:00,2025-11-20 17:00,2025-11-20 17:00,2025-12-04 07:00,2025-12-04 07:00,0,8,100
CN.SEA4.6010,FINISH WATER PROOFING & POUR PEDASTALS - SEA4 - GL 7-4 - L4 - C-A - ROOF,Complete,SEA - 4,East Support Building,SUES-4 - 9-6,L4 - SUP Roof - FAB Roof,,CONSTRUCTION,,Roofing,,SOMD / Roofing / Waterproofing,2023-11-16 11:00,2023-11-17 09:00,2023-11-06 10:00,2023-11-06 15:00,2025-11-20 17:00,2025-11-20 17:00,2025-12-04 07:00,2025-12-04 07:00,0,8,100
CN.SEA4.6020,STRIP PEDSTALS - SEA4 - GL 7-4 - L4 - C-A - ROOF,Complete,SEA - 4,East Support Building,SUES-4 - 9-6,L4 - SUP Roof - FAB Roof,,CONSTRUCTION,,Roofing,,SOMD / Roofing / Waterproofing,2023-11-17 09:00,2023-11-17 17:00,2023-11-06 09:00,2023-11-06 17:00,2025-11-20 17:00,2025-11-20 17:00,2025-12-04 07:00,2025-12-04 07:00,0,8,100
CN.SEA4.6030,INSTALL PRIMER - GL 9-6 - C-A - L4 ROOF,Complete,SEA - 4,East Support Building,SUES-4 - 9-6,L4 - SUP Roof - FAB Roof,,CONSTRUCTION,BRAZOS,TOPPING,,SOMD / Roofing / Waterproofing,2024-06-10 07:00,2024-06-10 17:00,2024-06-06 07:00,2024-06-06 17:00,2025-11-20 17:00,2025-11-20 17:00,2025-12-04 07:00,2025-12-04 07:00,0,10,100
CN.SEA4.6040,INSPECT PRIMER - GL 9-6 - C-A - L4 ROOF,Complete,SEA - 4,East Support Building,SUES-4 - 9-6,L4 - SUP Roof - FAB Roof,,CONSTRUCTION,BRAZOS,TOPPING,,SOMD / Roofing / Waterproofing,2024-06-07 07:00,2024-06-07 17:00,2024-06-06 07:00,2024-06-06 17:00,2025-11-20 17:00,2025-11-20 17:00,2025-12-04 07:00,2025-12-04 07:00,0,10,100
CN.SEA4.6050,INSTALL BASE COAT - GL 9-6 - C-A - L4 ROOF,Complete,SEA - 4,East Support Building,SUES-4 - 9-6,L4 - SUP Roof - FAB Roof,,CONSTRUCTION,BRAZOS,TOPPING,,SOMD / Roofing / Waterproofing,2024-06-14 07:00,2024-06-14 17:00,2024-06-07 07:00,2024-06-07 17:00,2025-11-20 17:00,2025-11-20 17:00,2025-12-04 07:00,2025-12-04 07:00,0,10,100
CN.SEA4.6060,INSPECT BASE COAT - GL 9-6 - C-A - L4 ROOF,Complete,SEA - 4,East Support Building,SUES-4 - 9-6,L4 - SUP Roof - FAB Roof,,CONSTRUCTION,BRAZOS,TOPPING,,SOMD / Roofing / Waterproofing,2024-06-14 07:00,2024-06-14 17:00,2024-06-07 07:00,2024-06-07 17:00,2025-11-20 17:00,2025-11-20 17:00,2025-12-04 07:00,2025-12-04 07:00,0,10,100
CN.SEA4.6070,INSTALL TOP COAT - GL 9-6 - C-A - L4 ROOF,Complete,SEA - 4,East Support Building,SUES-4 - 9-6,L4 - SUP Roof - FAB Roof,,CONSTRUCTION,BRAZOS,TOPPING,,SOMD / Roofing / Waterproofing,2024-06-17 07:00,2024-06-18 17:00,2024-06-08 07:00,2024-06-10 17:00,2025-11-20 17:00,2025-11-20 17:00,2025-12-04 07:00,2025-12-04 07:00,0,20,100
CN.SEA4.6080,INSPECT TOP COAT - GL 9-6 - C-A - L4 ROOF,Complete,SEA - 4,East Support Building,SUES-4 - 9-6,L4 - SUP Roof - FAB Roof,,CONSTRUCTION,BRAZOS,TOPPING,,SOMD / Roofing / Waterproofing,2024-06-17 07:00,2024-06-17 17:00,2024-06-10 07:00,2024-06-10 17:00,2025-11-20 17:00,2025-11-20 17:00,2025-12-04 07:00,2025-12-04 07:00,0,10,100
CN.SEA4.6090,INSTALL BASE COAT CRICKET - GL 9-6 - C-A - L4 ROOF,Complete,SEA - 4,East Support Building,SUES-4 - 9-6,L4 - SUP Roof - FAB Roof,,CONSTRUCTION,BRAZOS,TOPPING,,SOMD / Roofing / Waterproofing,2024-07-11 07:00,2024-07-11 17:00,2024-06-24 07:00,2024-06-24 17:00,2025-11-20 17:00,2025-11-20 17:00,2025-12-04 07:00,2025-12-04 07:00,0,10,100
CN.SEA4.6100,INSPECT BASE COAT CRICKET - GL 9-6 - C-A - L4 ROOF,Complete,SEA - 4,East Support Building,SUES-4 - 9-6,L4 - SUP Roof - FAB Roof,,CONSTRUCTION,BRAZOS,TOPPING,,SOMD / Roofing / Waterproofing,2024-07-11 07:00,2024-07-11 17:00,2024-06-24 07:00,2024-06-24 17:00,2025-11-20 17:00,2025-11-20 17:00,2025-12-04 07:00,2025-12-04 07:00,0,10,100
CN.SEA4.6110,INSTALL TOP COAT CRICKET - GL 9-6 - C-A - L4 ROOF,Complete,SEA - 4,East Support Building,SUES-4 - 9-6,L4 - SUP Roof - FAB Roof,,CONSTRUCTION,BRAZOS,TOPPING,,SOMD / Roofing / Waterproofing,2024-07-12 07:00,2024-07-15 17:00,2024-06-25 07:00,2024-06-26 17:00,2025-11-20 17:00,2025-11-20 17:00,2025-12-04 07:00,2025-12-04 07:00,0,20,100
CN.SEA4.6120,INSPECT TOP COAT CRICKET - GL 9-6 - C-A - L4 ROOF,Complete,SEA - 4,East Support Building,SUES-4 - 9-6,L4 - SUP Roof - FAB Roof,,CONSTRUCTION,BRAZOS,TOPPING,,SOMD / Roofing / Waterproofing,2024-07-15 07:00,2024-07-15 17:00,2024-06-26 07:00,2024-06-26 17:00,2025-11-20 17:00,2025-11-20 17:00,2025-12-04 07:00,2025-12-04 07:00,0,10,100
CN.SEA4.1272,PH1- DS/AD DECKING & DETAILING - SEA4 - GL 9-6 - C-E - L6,Complete,SEA - 4,East Support Building,SUES-4 - 9-6,DS/AD,,CONSTRUCTION,,Decking & Detail,SEAN MONK,,2023-11-13 07:00,2023-11-17 17:00,2023-11-08 07:00,2023-11-10 17:00,2025-11-20 17:00,2025-11-20 17:00,2025-06-13 08:00,2025-06-13 08:00,0,40,100
CN.SEA4.1282,PH1- DS/AD DECKING & DETAILING - SEA4 - GL 9-6 - C-E - L4 & L4/E,Complete,SEA - 4,East Support Building,SUES-4 - 9-6,DS/AD,,CONSTRUCTION,,Decking & Detail,SEAN MONK,,2024-01-17 07:00,2024-01-21 15:00,2024-01-15 16:00,2024-01-20 13:00,2025-11-20 17:00,2025-11-20 17:00,2025-06-13 08:00,2025-06-13 08:00,0,48,100
CN.SEA4.1292,PH1- DS/AD FRP SLAB - SEA4 - GL 9-6 - C-E - L4/E,Complete,SEA - 4,East Support Building,SUES-4 - 9-6,DS/AD,,CONSTRUCTION,,SOMD,CONCRETE,,2024-01-22 07:00,2024-01-25 17:00,2024-01-22 07:00,2024-01-25 17:00,2025-11-20 17:00,2025-11-20 17:00,2025-06-13 08:00,2025-06-13 08:00,0,40,100
CN.SEA4.4410,IMPACT - CURE 60DAYS BEFORE TEMP EXPANSION JOINT POUR BACK - SEA-4-ROOF,Complete,SEA - 4,East Support Building,SUES-4 - 9-6,L4 - SUP Roof - FAB Roof,,CONSTRUCTION,,Steel Fabricator - W&W,JAMES LEE,SOMD / Roofing / Waterproofing,2023-09-05 07:00,2023-09-07 11:00,2023-08-17 16:10,2023-10-12 09:00,2025-11-20 17:00,2025-11-20 17:00,2025-12-04 07:00,2025-12-04 07:00,0,24,100
CN.SEA4.4420,IMPACT [CL 48-67] - LEVEL 1 DRAIN BODIES - excavation & install - SEA-3 - L1 - GL 7-9,Complete,SEA - 4,East Support Building,SUES-4 - 9-6,L1 - Fndn Slab,MECH RM 1,CONSTRUCTION,,TBD Architectural Finishes,JAMES LIVELY,INTERIORS,2023-10-17 13:00,2023-10-20 15:00,2023-10-13 13:00,2023-10-15 16:00,2025-11-20 17:00,2025-11-20 17:00,2025-12-05 17:00,2025-12-05 17:00,0,32,100
CN.SEA1.6200,IMPACT - MISSING 4 ANCHOR BOLTS - SEA4 - L4A - C8 - SEQ1606,Complete,SEA - 4,East Support Building,SUES-4 - 9-6,L4 - SUP Roof - FAB Roof,,CONSTRUCTION,,Steel Fabricator - W&W,CONCRETE,SOMD / Roofing / Waterproofing,2023-10-30 07:00,2023-11-02 13:00,2023-10-21 08:00,2023-10-22 16:00,2025-11-20 17:00,2025-11-20 17:00,2025-12-04 07:00,2025-12-04 07:00,0,16,100
CN.SEA4.6170,DSAD PENETRATION SUPPORT STEEL FRAMING - SEA4 - GL 9-6 - C-E - L3,Complete,SEA - 4,East Support Building,SUES-4 - 9-6,DS/AD,,CONSTRUCTION,,SOMD,CONCRETE,,2024-01-25 07:00,2024-01-28 17:00,2024-01-25 07:00,2024-01-29 11:00,2025-11-20 17:00,2025-11-20 17:00,2025-10-16 07:00,2025-10-16 07:00,0,40,100
CN.SEA4.6180,DSAD PENETRATION SUPPORT STEEL FRAMING - SEA4 - GL 9-6 - C-E - L4,Complete,SEA - 4,East Support Building,SUES-4 - 9-6,DS/AD,,CONSTRUCTION,,SOMD,CONCRETE,,2024-02-22 08:00,2024-02-27 08:00,2024-02-22 07:00,2024-03-22 16:00,2025-11-20 17:00,2025-11-20 17:00,2025-10-16 07:00,2025-10-16 07:00,0,30,100
CN.SEA4.1312,PH1- DS/AD FRP SLAB - SEA4 - GL 9-6 - C-E - L6,Complete,SEA - 4,,SUES-4 - 9-6,DS/AD,,CONSTRUCTION,,SOMD,,,2023-11-11 08:00,2023-11-16 08:00,2023-11-11 08:00,2023-11-12 11:00,2025-11-20 17:00,2025-11-20 17:00,2025-06-13 08:00,2025-06-13 08:00,0,40,100
CN.SEA4.4430,DETAIL & INSPECT CLADDING STEEL - SEA-1 A LINE [SUP EXTERIOR WALL](Waiting on MEP CRANE),Complete,SEA - 4,,SUES-4 - 9-6,EXTERIOR SKIN,,CONSTRUCTION,,INSULATED METAL PANELS,,,2024-03-01 15:00,2024-03-05 15:00,2024-03-01 15:00,2024-03-05 17:00,2025-11-20 17:00,2025-11-20 17:00,2025-12-05 17:00,2025-12-05 17:00,0,40,100
CN.SEA4.1400,INSTALL INSULATED METAL PANEL MODULES - GL 9-6 - D LINE (AD AREA) [7~8 LEAVEOUT FOR SCAFFOLD],Complete,SEA - 4,,SUES-4 - 9-6,EXTERIOR SKIN,,CONSTRUCTION,KOVACH,INSULATED METAL PANELS,,,2024-07-05 07:00,2024-07-09 17:00,2024-07-01 07:00,2024-07-03 17:00,2025-11-20 17:00,2025-11-20 17:00,2025-12-05 17:00,2025-12-05 17:00,0,50,100
CN.SEA4.1460,PH1- DS/AD FRP SLAB - DS/AD - SEA4 - GL 9-6 - C-E - L2,Complete,SEA - 4,,SUES-4 - 9-6,DS/AD,,CONSTRUCTION,,SOMD,,,2023-11-30 15:00,2023-12-04 15:00,2023-11-30 15:00,2023-12-01 09:00,2025-11-20 17:00,2025-11-20 17:00,2025-06-13 08:00,2025-06-13 08:00,0,40,100
CN.SEA4.6220,KNEE WALL -SEA3 - GL9-6 - L4 - C-E -DS/AD,Complete,SEA - 4,,SUES-4 - 9-6,DS/AD,,CONSTRUCTION,,Cast-in Place Concrete - Baker Concrete,,,2024-02-12 07:00,2024-02-15 09:00,2024-02-12 07:00,2024-02-15 09:00,2025-11-20 17:00,2025-11-20 17:00,2025-11-21 07:00,2025-11-21 07:00,0,32,100
CN.SEA4.1322,IMPACT RESEQUENCE OF WORK DUE TO MEP PIPE RACK STEEL INSTALLATION,Complete,SEA - 4,,SUES-4 - 9-6,DS/AD,,CONSTRUCTION,,Pour Concrete,,,2023-12-11 08:00,2023-12-16 08:00,2023-12-02 08:00,2024-01-05 16:00,2025-11-20 17:00,2025-11-20 17:00,2025-06-13 08:00,2025-06-13 08:00,0,40,100
CN.SEA4.1470,AD STEEL PAINT FIREPROOFING IFRM - SEA4 - GL 9-6 - C-E - L2-CEILING,Complete,SEA - 4,,SUES-4 - 9-6,DS/AD,,CONSTRUCTION,ROLLING PLAINS,Fireproofing,,,2024-06-20 07:00,2024-06-28 17:00,2024-06-20 07:00,2024-06-25 17:00,2025-11-20 17:00,2025-11-20 17:00,2025-11-26 07:00,2025-11-26 07:00,0,60,100
CN.SEA4.1490,D-LINE STEEL SPRAY FIREPROOFING SFRM2 - SEA4 - L3-CEILING - GL 6-9,Complete,SEA - 4,,SUES-4 - 9-6,L4 - SUP Roof - FAB Roof,DS/AD INTERIORS,CONSTRUCTION,ROLLING PLAINS,Fireproofing,,,2024-04-16 07:00,2024-04-22 17:00,2024-04-15 07:00,2024-04-18 17:00,2025-11-20 17:00,2025-11-20 17:00,2025-06-13 08:00,2025-06-13 08:00,0,50,100
CN.SEA4.6260,MEP IN WALL ROUGH INS SEA4 - GL 9-6 - L3 - D LINE,Complete,SEA - 4,West Support Building,SUES-4 - 9-6,L3 / Waffle Slab Level,DS/AD INTERIORS,CONSTRUCTION,SECAI,TBD Architectural Finishes,FIZ DATA CENTER,INTERIORS,2024-04-15 07:00,2024-04-19 17:00,2024-04-02 07:00,2024-04-17 17:00,2025-11-20 17:00,2025-11-20 17:00,2025-06-13 08:00,2025-06-13 08:00,0,50,100
CN.SEA4.6270,DCC BEAM (STEEL STRUCTURE) SEA4 - GL 9-6 - L3 - D LINE,Complete,SEA - 4,West Support Building,SUES-4 - 9-6,L3 / Waffle Slab Level,DS/AD INTERIORS,CONSTRUCTION,,TBD Architectural Finishes,FIZ DATA CENTER,INTERIORS,2024-01-27 14:00,2024-02-03 16:00,2024-01-12 14:00,2024-01-15 17:00,2025-11-20 17:00,2025-11-20 17:00,2025-06-13 08:00,2025-06-13 08:00,0,72,100
CN.SEA4.6280,TEMPORARY SCAFFOLD PLATFORM SEA4 - GL 9-6 - L3 - D LINE,Complete,SEA - 4,West Support Building,SUES-4 - 9-6,L3 / Waffle Slab Level,DS/AD INTERIORS,CONSTRUCTION,,TBD Architectural Finishes,FIZ DATA CENTER,INTERIORS,2024-02-05 13:00,2024-02-11 11:00,2024-01-15 13:00,2024-01-18 17:00,2025-11-20 17:00,2025-11-20 17:00,2025-06-13 08:00,2025-06-13 08:00,0,48,100
CN.SEA4.6290,Drywall Clips & AMTS Installs Support Beams - SEA4 - GL 9-6 - D LINE - L4,Complete,SEA - 4,,SUES-4 - 9-6,L4 - SUP Roof - FAB Roof,DS/AD INTERIORS,CONSTRUCTION,,Fireproofing,,,2024-03-23 08:00,2024-03-30 10:00,2024-03-01 00:00,2024-03-07 00:00,2025-11-20 17:00,2025-11-20 17:00,2025-06-13 08:00,2025-06-13 08:00,0,72,100
CN.SEA4.6300,AD STEEL APPLY INTUMESCENT - SEA4 - GL 6-9 - D-E - L3 CEILING,Complete,SEA - 4,,SUES-4 - 9-6,L4 - SUP Roof - FAB Roof,DS/AD INTERIORS,CONSTRUCTION,ROLLING PLAINS,Fireproofing,,,2024-05-23 07:00,2024-05-30 17:00,2024-05-23 07:00,2024-05-28 17:00,2025-11-20 17:00,2025-11-20 17:00,2025-06-13 08:00,2025-06-13 08:00,0,40,100
CN.SEA4.6310,ADD FLANGE EXTENSIONS/ CUT GRATING SEA4 - GL 9-6 - D LINE - L3,Complete,SEA - 4,,SUES-4 - 9-6,L3 / Waffle Slab Level,DS/AD INTERIORS,CONSTRUCTION,,Fireproofing,,,2024-01-19 08:00,2024-01-21 12:00,2024-01-19 08:00,2024-01-21 15:00,2025-11-20 17:00,2025-11-20 17:00,2025-06-13 08:00,2025-06-13 08:00,0,24,100
CN.SEA4.6320,IMPACT-D-LINE STEEL SPRAY FIREPROOFING SFRM2 - SEA4 - L3-CEILING - GL 6-9 - INSPECT SURFACE PREP ADDITIONAL STEEL,Complete,SEA - 4,,SUES-4 - 9-6,L4 - SUP Roof - FAB Roof,DS/AD INTERIORS,CONSTRUCTION,ROLLING PLAINS,Fireproofing,,,2024-04-04 07:00,2024-04-15 17:00,2024-04-04 07:00,2024-04-12 17:00,2025-11-20 17:00,2025-11-20 17:00,2025-06-13 08:00,2025-06-13 08:00,0,60,100
CN.SEA1.6330,DCC BEAM (STEEL STRUCTURE) SEA4 - GL 19-16 - L3 - D LINE,Complete,SEA - 4,West Support Building,SUES-1 - 19-16,L3 / Waffle Slab Level,DS/AD INTERIORS,CONSTRUCTION,,TBD Architectural Finishes,FIZ DATA CENTER,INTERIORS,2024-01-17 07:00,2024-01-20 17:00,2024-01-15 07:00,2024-01-19 17:00,2025-11-20 17:00,2025-11-20 17:00,2025-06-13 08:00,2025-06-13 08:00,0,40,100
CN.SEA1.6340,TEMPORARY SCAFFOLD PLATFORM - SEA4 - GL 19-16 - L3 - D LINE,Complete,SEA - 4,West Support Building,SUES-1 - 19-16,L3 / Waffle Slab Level,DS/AD INTERIORS,CONSTRUCTION,,TBD Architectural Finishes,FIZ DATA CENTER,INTERIORS,2024-03-12 07:00,2024-03-20 15:00,2024-03-12 07:00,2024-03-19 09:00,2025-11-20 17:00,2025-11-20 17:00,2025-06-13 08:00,2025-06-13 08:00,0,48,100
CN.SEA1.6350,Drywall Clips & AMTS Installs Support Beams - SEA4 - GL 19-16 - D LINE - L4,Complete,SEA - 4,,SUES-1 - 19-16,L4 - SUP Roof - FAB Roof,DS/AD INTERIORS,CONSTRUCTION,,Fireproofing,,,2024-03-23 08:00,2024-03-30 10:00,2024-03-13 00:00,2024-03-20 00:00,2025-11-20 17:00,2025-11-20 17:00,2025-06-13 08:00,2025-06-13 08:00,0,72,100
CN.SEA1.6360,DS STEEL SPRAY SFRM - SEA1 - GL 16-19 - C-D - L3 CEILING,Complete,SEA - 4,,SUES-1 - 19-16,L4 - SUP Roof - FAB Roof,DS/AD INTERIORS,CONSTRUCTION,ROLLING PLAINS,Fireproofing,,,2024-05-07 07:00,2024-05-14 17:00,2024-05-07 07:00,2024-05-13 17:00,2025-11-20 17:00,2025-11-20 17:00,2025-12-05 17:00,2025-12-05 17:00,0,50,100
CN.SEA1.6341,AD STEEL APPLY INTUMESCENT - SEA1 - GL 16-19 - D-E - L3 CEILING,Complete,SEA - 4,,SUES-1 - 19-16,L4 - SUP Roof - FAB Roof,DS/AD INTERIORS,CONSTRUCTION,ROLLING PLAINS,Fireproofing,,,2024-05-23 07:00,2024-05-31 17:00,2024-05-23 07:00,2024-05-28 17:00,2025-11-20 17:00,2025-11-20 17:00,2025-06-13 08:00,2025-06-13 08:00,0,50,100
CN.SEA4.6390,SECAI -Installs TEMP SCAFFOLDS - SEA4 - GL 9-6 - D LINE - L4,Complete,SEA - 4,,SUES-4 - 9-6,L4 - SUP Roof - FAB Roof,DS/AD INTERIORS,CONSTRUCTION,,Fireproofing,,,2024-04-24 07:00,2024-04-29 17:00,2024-02-08 07:00,2024-02-13 17:00,2025-11-20 17:00,2025-11-20 17:00,2025-11-14 07:00,2025-11-14 07:00,0,40,100
CN.SEA1.6400,MEP IN WALL ROUGH INS - SEA4 - GL 19-16 - L3 - D LINE,Complete,SEA - 4,West Support Building,SUES-1 - 19-16,L3 / Waffle Slab Level,DS/AD INTERIORS,CONSTRUCTION,SECAI,TBD Architectural Finishes,FIZ DATA CENTER,INTERIORS,2024-04-29 07:00,2024-04-29 17:00,2024-04-29 07:00,2024-04-29 17:00,2025-11-20 17:00,2025-11-20 17:00,2025-06-13 08:00,2025-06-13 08:00,0,10,100
CN.SEA1.6430,IMPACT - SECAI Installs TEMP SCAFFOLD PLATFORMS[F49] - SEA1 - GL 19-16 - D LINE - L4-L6,Active,SEA - 4,,SUES-1 - 19-16,L4 - SUP Roof - FAB Roof,DS/AD INTERIORS,CONSTRUCTION,SECAI,Fireproofing,,,2024-02-27 07:00,2024-03-04 17:00,2024-02-27 07:00,,2025-11-21 07:00,2025-11-21 17:00,2025-12-02 07:00,2025-12-02 17:00,10,50,0
CN.SEA2.6450,Drywall Clips & AMTS Installs Support Beams - SEA4 - GL 16-13 - D LINE - L4,Complete,SEA - 4,,SUES-2 - 16-13,L4 - SUP Roof - FAB Roof,DS/AD INTERIORS,CONSTRUCTION,,Fireproofing,,,2024-02-19 07:00,2024-02-27 09:00,2024-02-19 07:00,2024-02-24 13:00,2025-11-20 17:00,2025-11-20 17:00,2025-06-13 08:00,2025-06-13 08:00,0,72,100
CN.SEA2.6460,AD Side INTUMESCENT PAINT APPLY -SEA2 - L4/E - GL 13-16/D-E,Complete,SEA - 4,,SUES-2 - 16-13,L4 - SUP Roof - FAB Roof,DS/AD INTERIORS,CONSTRUCTION,ROLLING PLAINS,Fireproofing,,,2024-03-01 07:00,2024-03-08 17:00,2024-03-01 07:00,2024-03-07 17:00,2025-11-20 17:00,2025-11-20 17:00,2025-12-05 17:00,2025-12-05 17:00,0,60,100
CN.SEA2.6440,SECAI Installs TEMP SCAFFOLD PLATFORMS - SEA4 - GL 16-13 - D LINE - L4 - L6,Complete,SEA - 4,,SUES-2 - 16-13,L4 - SUP Roof - FAB Roof,DS/AD INTERIORS,CONSTRUCTION,,Fireproofing,,,2024-04-15 07:00,2024-04-18 17:00,2024-01-18 07:00,2024-01-22 17:00,2025-11-20 17:00,2025-11-20 17:00,2025-11-14 07:00,2025-11-14 07:00,0,40,100
CN.SEA2.6500,DCC BEAM (STEEL STRUCTURE) - DSAD - SEA4 - GL 16-13 - L3 - D LINE,Complete,SEA - 4,West Support Building,SUES-2 - 16-13,L3 / Waffle Slab Level,DS/AD INTERIORS,CONSTRUCTION,,TBD Architectural Finishes,FIZ DATA CENTER,INTERIORS,2024-01-22 07:00,2024-01-23 13:00,2024-01-08 07:00,2024-01-10 13:00,2025-11-20 17:00,2025-11-20 17:00,2025-06-13 08:00,2025-06-13 08:00,0,16,100
CN.SEA2.6510,TEMPORARY SCAFFOLD PLATFORM - SEA4 -  GL 16-13 - L3 - D LINE,Complete,SEA - 4,West Support Building,SUES-2 - 16-13,L3 / Waffle Slab Level,DS/AD INTERIORS,CONSTRUCTION,,TBD Architectural Finishes,FIZ DATA CENTER,INTERIORS,2024-01-23 13:00,2024-01-28 11:00,2024-01-10 13:00,2024-01-15 14:00,2025-11-20 17:00,2025-11-20 17:00,2025-06-13 08:00,2025-06-13 08:00,0,48,100
CN.SEA2.6441,MEP IN WALL ROUGH INS  SEA4 - GL16-13 - L3 - D LINE,Complete,SEA - 4,West Support Building,SUES-2 - 16-13,L3 / Waffle Slab Level,DS/AD INTERIORS,CONSTRUCTION,SECAI,TBD Architectural Finishes,FIZ DATA CENTER,INTERIORS,2024-04-22 07:00,2024-04-22 17:00,2024-04-22 07:00,2024-04-26 17:00,2025-11-20 17:00,2025-11-20 17:00,2025-06-13 08:00,2025-06-13 08:00,0,10,100
CN.SEA3.6520,DCC BEAM (STEEL STRUCTURE) - DSAD - SEA4 - GL 13-9 - L3 - D LINE,Complete,SEA - 4,West Support Building,SUES-3 - 13-9,L3 / Waffle Slab Level,DS/AD INTERIORS,CONSTRUCTION,,TBD Architectural Finishes,FIZ DATA CENTER,INTERIORS,2024-01-27 14:00,2024-02-03 16:00,2024-01-07 08:00,2024-01-11 17:00,2025-11-20 17:00,2025-11-20 17:00,2025-06-13 08:00,2025-06-13 08:00,0,72,100
CN.SEA3.6530,TEMPORARY SCAFFOLD PLATFORM - SEA4 - GL 13-9 - L3 - D LINE,Complete,SEA - 4,West Support Building,SUES-3 - 13-9,L3 / Waffle Slab Level,DS/AD INTERIORS,CONSTRUCTION,,TBD Architectural Finishes,FIZ DATA CENTER,INTERIORS,2024-02-05 13:00,2024-02-11 11:00,2024-01-12 13:00,2024-01-15 14:00,2025-11-20 17:00,2025-11-20 17:00,2025-06-13 08:00,2025-06-13 08:00,0,48,100
CN.SEA3.6540,MEP IN WALL ROUGH INS - SEA4 - GL 13-9 - L3 - D LINE,Complete,SEA - 4,West Support Building,SUES-3 - 13-9,L3 / Waffle Slab Level,DS/AD INTERIORS,CONSTRUCTION,SECAI,TBD Architectural Finishes,FIZ DATA CENTER,INTERIORS,2024-04-19 07:00,2024-04-19 17:00,2024-04-19 07:00,2024-04-19 17:00,2025-11-20 17:00,2025-11-20 17:00,2025-06-13 08:00,2025-06-13 08:00,0,10,100
CN.SEA3.6560,Drywall Clips & AMTS Installs Support Beams - SEA4 - GL 13-9 - D LINE - L4,Complete,SEA - 4,,SUES-3 - 13-9,L4 - SUP Roof - FAB Roof,DS/AD INTERIORS,CONSTRUCTION,,Fireproofing,,,2024-03-23 08:00,2024-03-27 08:00,2024-03-11 08:00,2024-03-15 11:00,2025-11-20 17:00,2025-11-20 17:00,2025-11-14 07:00,2025-11-14 07:00,0,40,100
CN.SEA3.6570,DS STEEL SPRAY SRFM - SEA3 - L4 GL13-19/C-D,Complete,SEA - 4,,SUES-3 - 13-9,L4 - SUP Roof - FAB Roof,DS/AD INTERIORS,CONSTRUCTION,ROLLING PLAINS,Fireproofing,,,2024-03-26 07:00,2024-04-01 17:00,2024-03-26 07:00,2024-03-30 17:00,2025-11-20 17:00,2025-11-20 17:00,2025-12-05 17:00,2025-12-05 17:00,0,50,100
CN.SEA3.6580,AD STEEL APPLY INTUMESCENT - SEA3 - GL 9-13 - D-E - L3 CEILING,Complete,SEA - 4,,SUES-3 - 13-9,L4 - SUP Roof - FAB Roof,DS/AD INTERIORS,CONSTRUCTION,ROLLING PLAINS,Fireproofing,,,2024-05-23 07:00,2024-05-30 17:00,2024-05-23 07:00,2024-05-28 17:00,2025-11-20 17:00,2025-11-20 17:00,2025-06-13 08:00,2025-06-13 08:00,0,40,100
CN.SEA3.6550,SECAI Installs TEMP SCAFFOLD PLATFORMS - SEA4 - GL 13-9 - D LINE - L4 - L6,Complete,SEA - 4,,SUES-3 - 13-9,L4 - SUP Roof - FAB Roof,DS/AD INTERIORS,CONSTRUCTION,,Fireproofing,,,2024-04-19 07:00,2024-04-24 17:00,2024-01-31 07:00,2024-02-05 17:00,2025-11-20 17:00,2025-11-20 17:00,2025-11-14 07:00,2025-11-14 07:00,0,40,100
CN.SEA5.6430,SECAI -Installs TEMP SCAFFOLDS - SEB5 - GL 31-33 - D LINE - L4,Complete,SEA - 4,,SUEN-5 - 31-33,L4 - SUP Roof - FAB Roof,DS/AD INTERIORS,CONSTRUCTION,,Fireproofing,,,2024-04-12 09:00,2024-04-18 09:00,2024-03-15 15:00,2024-03-19 17:00,2025-11-20 17:00,2025-11-20 17:00,2025-12-05 17:00,2025-12-05 17:00,0,40,100
CN.SEB4.6460,SECAI -Installs TEMP SCAFFOLDS - SEB5 - GL 31-33 - D LINE - L4,Complete,SEA - 4,,SUEN-4 - 28-31,L4 - SUP Roof - FAB Roof,DS/AD INTERIORS,CONSTRUCTION,,Fireproofing,,,2024-02-19 07:00,2024-02-23 17:00,2024-02-19 07:00,2024-02-23 17:00,2025-11-20 17:00,2025-11-20 17:00,2025-12-05 17:00,2025-12-05 17:00,0,40,100
CN.SEA4.6400,DS SPRAY FIREPROOFING SFRM C-D (READY MEP DUCT) - SEA4 - GL 9-6 - D LINE - L5 - L6,Complete,SEA - 4,East Support Building,SUES-4 - 9-6,L4 - SUP Roof - FAB Roof,DS/AD INTERIORS,CONSTRUCTION,ROLLING PLAINS,Fireproofing,HOON WOO,,2024-03-27 07:00,2024-04-02 17:00,2024-03-27 07:00,2024-04-02 17:00,2025-11-20 17:00,2025-11-20 17:00,2025-11-14 07:00,2025-11-14 07:00,0,50,100
CN.SEA4.6410,IMPACT - STARCON STUBS COLUMNS - GL 9-6 - C-E,Complete,SEA - 4,,SUES-4 - 9-6,DS/AD,,CONSTRUCTION,,Pour Concrete,,,2023-12-11 08:00,2023-12-16 08:00,2023-11-29 08:00,2024-01-12 16:00,2025-11-20 17:00,2025-11-20 17:00,2025-06-13 08:00,2025-06-13 08:00,0,40,100
CN.SEA4.6490,IMPACT [S.TIA-11] - WAITING ON MEP LAYOUTS - SEA4 - GL 9-6 - C-E - L4,Complete,SEA - 4,East Support Building,SUES-4 - 9-6,DS/AD,,CONSTRUCTION,,SOMD,CONCRETE,,2024-01-22 07:00,2024-01-25 17:00,2024-01-10 07:00,2024-02-20 13:00,2025-11-20 17:00,2025-11-20 17:00,2025-10-16 07:00,2025-10-16 07:00,0,40,100
CN.SEA4.6500,REMAINING TAPE & FINISH DRYWALL - SEA4 - GL 9-6 L1 - D LINE,Complete,SEA - 4,West Support Building,SUES-4 - 9-6,L1 - Fndn Slab,DS/AD INTERIORS,CONSTRUCTION,,DRYWALL,FIZ DATA CENTER,INTERIORS,2024-01-26 07:00,2024-01-28 11:00,2024-01-26 07:00,2024-01-28 14:00,2025-11-20 17:00,2025-11-20 17:00,2025-12-01 17:00,2025-12-01 17:00,0,24,100
CN.SEA3.6690,PH1 - F/R/P/W OAC PAD AIRLOCK WALLS - SEA4 - GL 9-7 - L4,Complete,SEA - 4,East Support Building,SUES-4 - 9-6,L4 - SUP Roof - FAB Roof,,CONSTRUCTION,BAKER,CIP WALL,CONCRETE,SOMD / Roofing / Waterproofing,2024-05-28 07:00,2024-06-04 17:00,2024-05-21 07:00,2024-05-25 17:00,2025-11-20 17:00,2025-11-20 17:00,2025-12-04 07:00,2025-12-04 07:00,0,50,100
CN.SEA4.6520,INSTALL CRICKET - GL 9-6 - C-A - L4 ROOF,Complete,SEA - 4,East Support Building,SUES-4 - 9-6,L4 - SUP Roof - FAB Roof,,CONSTRUCTION,BRAZOS,TOPPING,,SOMD / Roofing / Waterproofing,2024-07-08 07:00,2024-07-09 17:00,2024-06-20 07:00,2024-06-21 17:00,2025-11-20 17:00,2025-11-20 17:00,2025-12-04 07:00,2025-12-04 07:00,0,20,100
CN.SEA4.6530,INSPECT CRICKET - GL 9-6 - C-A - L4 ROOF,Complete,SEA - 4,East Support Building,SUES-4 - 9-6,L4 - SUP Roof - FAB Roof,,CONSTRUCTION,BRAZOS,TOPPING,,SOMD / Roofing / Waterproofing,2024-07-08 07:00,2024-07-08 17:00,2024-06-21 07:00,2024-06-21 17:00,2025-11-20 17:00,2025-11-20 17:00,2025-12-04 07:00,2025-12-04 07:00,0,10,100
CN.SEA4.6540,INSTALL PRIMER CRICKET - GL 9-6 - C-A - L4 ROOF,Complete,SEA - 4,East Support Building,SUES-4 - 9-6,L4 - SUP Roof - FAB Roof,,CONSTRUCTION,BRAZOS,TOPPING,,SOMD / Roofing / Waterproofing,2024-07-09 07:00,2024-07-09 17:00,2024-06-22 07:00,2024-06-22 17:00,2025-11-20 17:00,2025-11-20 17:00,2025-12-04 07:00,2025-12-04 07:00,0,10,100
CN.SEA4.6550,INSPECT PRIMER CRICKET - GL 9-6 - C-A - L4 ROOF,Complete,SEA - 4,East Support Building,SUES-4 - 9-6,L4 - SUP Roof - FAB Roof,,CONSTRUCTION,BRAZOS,TOPPING,,SOMD / Roofing / Waterproofing,2024-07-09 07:00,2024-07-09 17:00,2024-06-22 07:00,2024-06-22 17:00,2025-11-20 17:00,2025-11-20 17:00,2025-12-04 07:00,2025-12-04 07:00,0,10,100
CN.SEA3.6920,PH1 - WATERPROOFING/INSPECT OAC PAD AIRLOCK WALLS - SEA4 - GL 9-7 - L4,Complete,SEA - 4,East Support Building,SUES-4 - 9-6,L4 - SUP Roof - FAB Roof,,CONSTRUCTION,BRAZOS,CIP WALL,CONCRETE,SOMD / Roofing / Waterproofing,2024-05-28 07:00,2024-06-06 17:00,2024-05-14 07:00,2024-05-20 17:00,2025-11-20 17:00,2025-11-20 17:00,2025-12-04 07:00,2025-12-04 07:00,0,60,100
CN.SEA1.6900,IMPACT - INSPECT & SURFACE PREP ADDITIONAL AD STEEL FOR INTUMESCENT - SEA1 - GL 16-19 - D-E - L3 CEILING,Complete,SEA - 4,,SUES-1 - 19-16,L4 - SUP Roof - FAB Roof,DS/AD INTERIORS,CONSTRUCTION,ROLLING PLAINS,Fireproofing,,,2024-05-13 07:00,2024-05-20 17:00,2024-05-13 07:00,2024-05-21 17:00,2025-11-20 17:00,2025-11-20 17:00,2025-06-13 08:00,2025-06-13 08:00,0,50,100
CN.SEA3.6980,IMPACT - AD STEEL APPLY INTUMESCENT - SEA3 - L3 CEILING - GL 9-13/D-E - INSPECT - SURFACE PREP ADDITIONAL STEELS,Complete,SEA - 4,,SUES-3 - 13-9,L4 - SUP Roof - FAB Roof,DS/AD INTERIORS,CONSTRUCTION,ROLLING PLAINS,Fireproofing,,,2024-05-13 07:00,2024-05-30 17:00,2024-05-13 07:00,2024-05-24 17:00,2025-11-20 17:00,2025-11-20 17:00,2025-06-13 08:00,2025-06-13 08:00,0,100,100
CN.SEA4.6560,IMPACT - AD STEEL APPLY INTUMESCENT - L3 CEILING - L4/E - GL 6-9/D-E - INSPECT - SURFACE PREP ADDITIONAL STEELS,Complete,SEA - 4,,SUES-4 - 9-6,L4 - SUP Roof - FAB Roof,DS/AD INTERIORS,CONSTRUCTION,ROLLING PLAINS,Fireproofing,,,2024-05-13 07:00,2024-05-30 17:00,2024-05-13 07:00,2024-05-24 17:00,2025-11-20 17:00,2025-11-20 17:00,2025-06-13 08:00,2025-06-13 08:00,0,100,100
CN.AB.AR.6900,METAL STUD FRAMING (2hr) - SEA4 - GL 13-9 L2 - D LINE,Complete,SEA - 4,East Support Building,SUES-3 - 13-9,L2 - SubFab Level,DS/AD INTERIORS,CONSTRUCTION,BERG,TBD Architectural Finishes,AMBER CARO,INTERIORS,2024-01-22 07:00,2024-01-24 11:00,2024-01-22 07:00,2024-01-26 11:00,2025-11-20 17:00,2025-11-20 17:00,2025-11-24 07:00,2025-11-24 07:00,0,24,100
CN.SEA4.6590,REMEDY - TAPE & FINISH DRYWALL - SEA4 - GL 13-9 - D LINE - L2,Complete,SEA - 4,West Support Building,SUES-3 - 13-9,L2 - SubFab Level,DS/AD INTERIORS,CONSTRUCTION,CHERRY COATING,DRYWALL,FIZ DATA CENTER,INTERIORS,2024-08-12 07:00,2024-08-15 17:00,2024-08-07 07:00,2024-08-10 17:00,2025-11-20 17:00,2025-11-20 17:00,2025-11-24 07:00,2025-11-24 07:00,0,30,100
CN.SEA4.6580,REMEDY - FRAME & DRYWALL - SEA4 - GL 13-9 - D LINE - L2,Complete,SEA - 4,West Support Building,SUES-3 - 13-9,L2 - SubFab Level,DS/AD INTERIORS,CONSTRUCTION,BERG,DRYWALL,FIZ DATA CENTER,INTERIORS,2024-07-26 07:00,2024-08-19 17:00,2024-07-17 07:00,2024-08-06 17:00,2025-11-20 17:00,2025-11-20 17:00,2025-11-24 07:00,2025-11-24 07:00,0,150,100
CN.SEA4.6570,DRYWALL & INSULATION (1 side) (INT) - SEA4 - GL 13-9 L2 - D LINE,Complete,SEA - 4,West Support Building,SUES-3 - 13-9,L2 - SubFab Level,DS/AD INTERIORS,CONSTRUCTION,,DRYWALL,FIZ DATA CENTER,INTERIORS,2024-01-24 11:00,2024-01-29 09:00,2024-01-29 11:00,2024-02-02 11:00,2025-11-20 17:00,2025-11-20 17:00,2025-11-24 07:00,2025-11-24 07:00,0,48,100
CN.SEA4.6610,REMEDY - DEMO DRYWALL (INT) - SEA4 - GL 13-9 L2 - D LINE,Complete,SEA - 4,West Support Building,SUES-3 - 13-9,L2 - SubFab Level,DS/AD INTERIORS,CONSTRUCTION,BERG,DRYWALL,FIZ DATA CENTER,INTERIORS,2024-07-01 07:00,2024-07-08 17:00,2024-07-01 07:00,2024-07-06 17:00,2025-11-20 17:00,2025-11-20 17:00,2025-11-24 07:00,2025-11-24 07:00,0,40,100
CN.SEA4.6620,CURE TOPPING SLAB (AROUND OAC PAD ONLY) - GL 9-6 - C-A - L4 ROOF,Complete,SEA - 4,East Support Building,SUES-4 - 9-6,L4 - SUP Roof - FAB Roof,,CONSTRUCTION,BAKER,Pour Concrete,JAMES LIVELY,SOMD / Roofing / Waterproofing,2024-07-12 07:00,2024-07-16 17:00,2024-06-28 07:00,2024-07-01 17:00,2025-11-20 17:00,2025-11-20 17:00,2025-12-04 07:00,2025-12-04 07:00,0,30,100
CN.SEA4.6630,IMPACT - CRICKET DESIGN CONFLICT WITH ROOF DRAINS NOT BEING INSTALLED - GL 11-6 - C-A - L4 ROOF,Complete,SEA - 4,East Support Building,SUES-4 - 9-6,L4 - SUP Roof - FAB Roof,,CONSTRUCTION,BRAZOS,TOPPING,,SOMD / Roofing / Waterproofing,2024-06-21 07:00,2024-07-09 17:00,2024-06-11 07:00,2024-06-19 17:00,2025-11-20 17:00,2025-11-20 17:00,2025-12-04 07:00,2025-12-04 07:00,0,100,100
CN.SEA4.6640,CURE - AD STEEL PAINT FIREPROOFING IFRM - SEA4 - GL 9-6 - C-E - L2-CEILING,Complete,SEA - 4,,SUES-4 - 9-6,DS/AD,,CONSTRUCTION,ROLLING PLAINS,Fireproofing,,,2024-06-27 07:00,2024-07-16 17:00,2024-06-26 17:00,2024-07-09 17:00,2025-11-20 17:00,2025-11-20 17:00,2025-12-05 17:00,2025-12-05 17:00,0,180,100
CN.SEA4.6660,IMPACT - INSTALL INSULATED METAL PANEL MODULES - GL 7-8 - D LINE (AD AREA) [SCAFFOLD LEAVEOUT AREA],Complete,SEA - 4,,SUES-4 - 9-6,EXTERIOR SKIN,,CONSTRUCTION,KOVACH,INSULATED METAL PANELS,,,2024-07-23 07:00,2024-07-25 17:00,2024-07-16 07:00,2024-07-19 17:00,2025-11-20 17:00,2025-11-20 17:00,2025-12-05 17:00,2025-12-05 17:00,0,20,100
CN.SEA4.6670,IMPACT - AWAIT SECAI TO DISMANTLE SCAFFOLD - GL 7-8 - D LINE (AD AREA),Complete,SEA - 4,,SUES-4 - 9-6,EXTERIOR SKIN,,CONSTRUCTION,KOVACH,INSULATED METAL PANELS,,,2024-07-05 07:00,2024-07-09 17:00,2024-07-01 07:00,2024-07-12 17:00,2025-11-20 17:00,2025-11-20 17:00,2025-12-05 17:00,2025-12-05 17:00,0,50,100
CN.SEA4.6680,IMPACT - REMEDY - SECAI WELDING CREW BLOCKING THE AREA - SEA4 - GL 10-12 - D LINE - L2,Complete,SEA - 4,West Support Building,SUES-3 - 13-9,L2 - SubFab Level,DS/AD INTERIORS,CONSTRUCTION,BERG,DRYWALL,FIZ DATA CENTER,INTERIORS,2024-07-26 07:00,2024-08-19 17:00,2024-07-23 07:00,2024-08-02 17:00,2025-11-20 17:00,2025-11-20 17:00,2025-11-24 07:00,2025-11-24 07:00,0,150,100
CN.SEA4.6720,REMEDY - TAPE & FINISH DRYWALL - SEA4 - GL 5-10 - C LINE - L2,Not Started,SEA - 4,West Support Building,SUES-4 - 9-6,L2 - SubFab Level,DS/AD INTERIORS,CONSTRUCTION,CHERRY COATING,DRYWALL,FIZ DATA CENTER,INTERIORS,2025-12-08 07:00,2025-12-10 17:00,,,2025-12-08 07:00,2025-12-10 17:00,2025-12-03 07:00,2025-12-05 17:00,30,30,0
CN.SEA4.6710,REMEDY - FRAME & DRYWALL - SEA4 - GL 5-10 - C LINE - L2,Active,SEA - 4,West Support Building,SUES-4 - 9-6,L2 - SubFab Level,DS/AD INTERIORS,CONSTRUCTION,BERG,DRYWALL,FIZ DATA CENTER,INTERIORS,2024-10-07 07:00,2024-10-31 17:00,2024-10-07 07:00,,2025-12-08 07:00,2025-12-08 07:00,2025-12-02 17:00,2025-12-02 17:00,0,150,0
CN.SEA4.6740,REMEDY - TAPE & FINISH DRYWALL - SEA4 - GL 10-15 - C LINE - L2,Not Started,SEA - 4,West Support Building,SUES-3 - 13-9,L2 - SubFab Level,DS/AD INTERIORS,CONSTRUCTION,CHERRY COATING,DRYWALL,FIZ DATA CENTER,INTERIORS,2025-12-08 07:00,2025-12-10 17:00,,,2025-12-08 07:00,2025-12-10 17:00,2025-12-03 07:00,2025-12-05 17:00,30,30,0
CN.SEA4.6730,REMEDY - FRAME & DRYWALL - SEA4 - GL 10-15 - C LINE - L2,Active,SEA - 4,West Support Building,SUES-3 - 13-9,L2 - SubFab Level,DS/AD INTERIORS,CONSTRUCTION,BERG,DRYWALL,FIZ DATA CENTER,INTERIORS,2024-08-05 07:00,2024-08-28 17:00,2024-08-05 07:00,,2025-12-03 07:00,2025-12-05 17:00,2025-11-26 07:00,2025-12-02 17:00,30,150,100
CN.SEA4.6750,IMPACT - REMEDY - MEP SCAFFOLDINGS IN THE WAY - SEA4 - GL 5-10 - C LINE - L2,Active,SEA - 4,West Support Building,SUES-4 - 9-6,L2 - SubFab Level,DS/AD INTERIORS,CONSTRUCTION,BERG,DRYWALL,FIZ DATA CENTER,INTERIORS,2024-10-04 07:00,2024-10-10 17:00,2024-07-22 07:00,,2025-11-21 07:00,2025-11-21 17:00,2025-11-24 07:00,2025-11-24 17:00,10,40,100
CN.SEA4.6760,FINISH PAINT - SEA4 - GL 9-6 - C-A - L3,Not Started,SEA - 4,East Support Building,SUES-4 - 9-6,L3 / Waffle Slab Level,ELECTRIC RM 2,CONSTRUCTION,FINISH PAINT,TBD Architectural Finishes,JAMES LEE,INTERIORS,2025-12-04 07:00,2025-12-10 17:00,,,2025-12-04 07:00,2025-12-10 17:00,2025-12-01 07:00,2025-12-05 17:00,50,50,0
CN.SEA4.6770,"IMPACT - MEP BARRICADE, MATERIAL AND SCAFFOLDING IN THE WAY FOR 2ND LAYER - SEA4 - GL 10-15 - C LINE - L2",Active,SEA - 4,West Support Building,SUES-3 - 13-9,L2 - SubFab Level,DS/AD INTERIORS,CONSTRUCTION,BERG,DRYWALL,FIZ DATA CENTER,INTERIORS,2024-08-05 07:00,2024-08-28 17:00,2024-08-05 07:00,,2025-11-21 07:00,2025-11-25 17:00,2025-11-21 07:00,2025-11-25 17:00,30,150,100
CN.FIZ4.DP.1000,PH1- SLAB FIZ4 (EAST OUTER),Complete,SEA - 5,Data Center (Gridlines 1-3),SUES-5 - 6-1 - FIZ - GL A -E,L1 - Fndn Slab,,CONSTRUCTION,,Cast-in Place Concrete - Baker Concrete,JAMES LEE,,2023-01-14 08:00,2023-02-02 16:00,2023-01-14 08:00,2023-02-25 17:00,2025-11-20 17:00,2025-11-20 17:00,2025-12-05 17:00,2025-12-05 17:00,0,168,100
CN.FIZ4.DP.1010,PH1- CURE SLAB FIZ4 (EAST OUTER),Complete,SEA - 5,Data Center (Gridlines 1-3),SUES-5 - 6-1 - FIZ - GL A -E,L1 - Fndn Slab,,CONSTRUCTION,,Cast-in Place Concrete - Baker Concrete,JAMES LEE,,2023-02-27 15:00,2023-03-06 11:00,2023-02-25 08:42,2023-02-28 13:00,2025-11-20 17:00,2025-11-20 17:00,2025-12-05 17:00,2025-12-05 17:00,0,56,100
CN.A1.UG.1170,PH1- UNDERGROUND PLUMBING SEA5,Complete,SEA - 5,East Support Building,SUES-5 - 6-1 - FIZ - GL A -E,L1 - Fndn Slab,,CONSTRUCTION,,Underground Plumbing - Cobb,ANDREA SOLIS,,2022-10-13 11:00,2022-10-17 11:00,2022-10-13 11:00,2022-10-18 13:00,2025-11-20 17:00,2025-11-20 17:00,2025-06-13 08:00,2025-06-13 08:00,0,40,100
CN.A1.UG.1180,PH1- UNDERGROUND ELECTRICAL SEA5,Complete,SEA - 5,East Support Building,SUES-5 - 6-1 - FIZ - GL A -E,L1 - Fndn Slab,,CONSTRUCTION,,Underground Electrical - (By Owner),ANDREA SOLIS,,2022-10-21 07:00,2022-10-24 17:00,2022-10-21 07:00,2022-11-29 07:00,2025-11-20 17:00,2025-11-20 17:00,2025-06-13 08:00,2025-06-13 08:00,0,40,100
CN.SEA5.1000,PH1- SUP - EXCAVATE PIER CAPS - SEA5,Complete,SEA - 5,East Support Building,SUES-5 - 6-1 - FIZ - GL A -E,L1 - Fndn Slab,,CONSTRUCTION,,Excavate CIP,ANDREA SOLIS,,2022-11-21 07:00,2022-11-23 11:00,2022-11-21 07:00,2022-11-23 11:00,2025-11-20 17:00,2025-11-20 17:00,2025-06-13 08:00,2025-06-13 08:00,0,24,100
CN.SEA5.1010,PH1-FRP GRADE BEAM - SEA5,Complete,SEA - 5,East Support Building,SUES-5 - 6-1 - FIZ - GL A -E,L1 - Fndn Slab,,CONSTRUCTION,,Pour Concrete,ANDREA SOLIS,,2022-10-27 09:00,2022-10-31 09:00,2022-10-27 09:00,2022-11-01 11:00,2025-11-20 17:00,2025-11-20 17:00,2025-06-13 08:00,2025-06-13 08:00,0,40,100
CN.SEA5.1020,PH1- ELEVATOR PIT WALLS - SEA5 (Submittal to be revised),Complete,SEA - 5,East Support Building,SUES-5 - 6-1 - FIZ - GL A -E,L1 - Fndn Slab,,CONSTRUCTION,,RAT SLAB,JAMES LEE,,2023-01-10 07:00,2023-01-15 15:00,2022-12-30 07:00,2023-02-11 16:00,2025-11-20 17:00,2025-11-20 17:00,2025-06-13 08:00,2025-06-13 08:00,0,48,100
CN.SEA5.1030,PH1-CURE PIER CAPS - SEA5,Complete,SEA - 5,East Support Building,SUES-5 - 6-1 - FIZ - GL A -E,L1 - Fndn Slab,,CONSTRUCTION,,Concrete Cure,ANDREA SOLIS,,2022-11-01 11:00,2022-11-04 15:00,2022-11-01 11:00,2022-11-17 17:00,2025-11-20 17:00,2025-11-20 17:00,2025-06-13 08:00,2025-06-13 08:00,0,24,100
CN.SEA5.1060,PH1- FRP SLAB - SEA-5-L2,Complete,SEA - 5,East Support Building,SUES-5 - 6-1 - FIZ - GL A -E,L2 - SubFab Level,,CONSTRUCTION,,SOMD,CONCRETE,,2023-08-21 07:00,2023-08-24 11:00,2023-08-21 07:00,2023-08-24 11:00,2025-11-20 17:00,2025-11-20 17:00,2025-10-27 09:00,2025-10-27 09:00,0,24,100
CN.SEA5.1080,PH1- FRP SLAB - SEA-5-L3,Complete,SEA - 5,East Support Building,SUES-5 - 6-1 - FIZ - GL A -E,L3 / Waffle Slab Level,,CONSTRUCTION,,SOMD,CONCRETE,,2023-09-06 13:00,2023-09-08 17:00,2023-09-06 13:00,2023-09-08 17:00,2025-11-20 17:00,2025-11-20 17:00,2025-06-13 08:00,2025-06-13 08:00,0,24,100
CN.SEA5.1110,PH1- FRP SLAB - SEA-5-ROOF,Complete,SEA - 5,East Support Building,SUES-5 - 6-1 - FIZ - GL A -E,L4 - SUP Roof - FAB Roof,,CONSTRUCTION,,SOMD,CONCRETE,SOMD / Roofing / Waterproofing,2023-09-21 07:00,2023-09-23 11:00,2023-09-21 07:00,2023-09-23 12:00,2025-11-20 17:00,2025-11-20 17:00,2025-06-13 08:00,2025-06-13 08:00,0,24,100
CN.SEA5.1070,PH1- CURE SOMD - SEA-5-L2,Complete,SEA - 5,East Support Building,SUES-5 - 6-1 - FIZ - GL A -E,L2 - SubFab Level,,CONSTRUCTION,,Concrete Cure,JAMES LEE,,2023-08-24 11:00,2023-08-29 17:00,2023-08-24 11:00,2023-08-26 19:00,2025-11-20 17:00,2025-11-20 17:00,2025-12-05 17:00,2025-12-05 17:00,0,56,100
CN.SEA5.1100,PH1- CURE SOMD - SEA-5-L3,Complete,SEA - 5,East Support Building,SUES-5 - 6-1 - FIZ - GL A -E,L3 / Waffle Slab Level,,CONSTRUCTION,,Concrete Cure,JAMES LEE,,2023-10-09 07:00,2023-10-11 11:00,2023-09-08 20:44,2023-09-12 20:44,2025-11-20 17:00,2025-11-20 17:00,2025-11-10 07:00,2025-11-10 07:00,0,24,100
CN.SEA5.1130,PH1- CURE SOMD - SEA-5-ROOF,Complete,SEA - 5,East Support Building,SUES-5 - 6-1 - FIZ - GL A -E,L4 - SUP Roof - FAB Roof,,CONSTRUCTION,,Concrete Cure,JAMES LEE,SOMD / Roofing / Waterproofing,2023-10-02 07:00,2023-10-04 11:00,2023-09-23 14:30,2023-09-25 01:00,2025-11-20 17:00,2025-11-20 17:00,2025-06-13 08:00,2025-06-13 08:00,0,24,100
CN.SEA5.1090,PH1- 1st FLOOR SLAB - SEA-5-L1-,Complete,SEA - 5,East Support Building,SUES-5 - 6-1 - FIZ - GL A -E,L1 - Fndn Slab,,CONSTRUCTION,,Pour Concrete,JAMES LEE,,2023-02-21 07:00,2023-03-02 17:00,2023-02-21 07:00,2023-02-24 07:00,2025-11-20 17:00,2025-11-20 17:00,2025-06-13 08:00,2025-06-13 08:00,0,80,100
CN.SEA5.1220,PH1- MEP EQPT PADS(DRILL DOWELS & EPOXY) - SEA5 FIZ - GL 6-1 - L4 - C-A,Complete,SEA - 5,East Support Building,SUES-5 - 6-1 - FIZ - GL A -E,L4 - SUP Roof - FAB Roof,,CONSTRUCTION,,Cast-in Place Concrete - Baker Concrete,JAMES LEE,SOMD / Roofing / Waterproofing,2023-11-17 16:00,2023-11-20 10:00,2023-11-17 16:00,2023-12-06 13:00,2025-11-20 17:00,2025-11-20 17:00,2025-12-05 17:00,2025-12-05 17:00,0,24,100
CN.SEA5.1050,TIER 1 ERECT PRECAST COLUMNS & BEAMS - SEA5,Complete,SEA - 5,East Support Building,SUES-5 - 6-1 - FIZ - GL A -E,L2 - SubFab Level,,CONSTRUCTION,,"SUP EAST A,B",SEAN MONK,,2023-06-24 08:00,2023-06-30 14:00,2023-06-24 08:00,2023-07-01 16:00,2025-11-20 17:00,2025-11-20 17:00,2025-06-13 08:00,2025-06-13 08:00,0,56,100
CN.SEA5.1140,PH1-ROOF LAYER PARAPET(FRAMING & SHEATH RIP)- SEA5 FIZ - GL 3-1 - L4 - C-A,Complete,SEA - 5,East Support Building,SUES-5 - 6-1 - FIZ - GL A -E,L4 - SUP Roof - FAB Roof,,CONSTRUCTION,BERG,TOPPING,JAMES LIVELY,SOMD / Roofing / Waterproofing,2024-05-09 07:00,2024-05-10 17:00,2024-04-15 07:00,2024-04-16 17:00,2025-11-20 17:00,2025-11-20 17:00,2025-12-05 17:00,2025-12-05 17:00,0,20,100
CN.SEA5.1180,PH1 - CLADDING STEEL INTERIOR - GL 6-1 - D LINE (AD AREA) (3~5),Complete,SEA - 5,East Support Building,SUES-5 - 6-1 - FIZ - GL A -E,EXTERIOR SKIN,,CONSTRUCTION,PATRIOT,INSULATED METAL PANELS,JAMES LIVELY,,2024-03-28 09:00,2024-04-16 11:00,2024-03-28 09:00,2024-04-05 17:00,2025-11-20 17:00,2025-11-20 17:00,2025-11-21 07:00,2025-11-21 07:00,0,112,100
CN.SEA5.1200,PH1 - INSTALL INSULATED METAL PANEL MODULES GL 6-3 - C LINE (DS AREA),Complete,SEA - 5,East Support Building,SUES-5 - 6-1 - FIZ - GL A -E,EXTERIOR SKIN,,CONSTRUCTION,,INSULATED METAL PANELS,JAMES LIVELY,,2024-04-04 08:30,2024-04-12 10:30,2024-04-04 07:00,2024-04-09 17:00,2025-11-20 17:00,2025-11-20 17:00,2025-10-29 07:00,2025-10-29 07:00,0,42,100
CN.SEA5.1150,CLADDING STEEL - GL 1-3 - A LINE [SUP EXTERIOR WALL],Complete,SEA - 5,East Support Building,SUES-5 - 6-1 - FIZ - GL A -E,EXTERIOR SKIN,,CONSTRUCTION,PATRIOT,INSULATED METAL PANELS,JAMES LIVELY,,2024-03-22 07:00,2024-04-02 13:00,2024-03-21 07:00,2024-04-27 12:00,2025-11-20 17:00,2025-11-20 17:00,2025-11-21 07:00,2025-11-21 07:00,0,76,100
CN.SEA5.1170,INSTALL INSULATED METAL PANEL MODULES - GL 1-3 - A LINE [SUP EXTERIOR WALL] - NIGHT SHIFT ONLY [1~1.5 LEAVEOUT],Complete,SEA - 5,East Support Building,SUES-5 - 6-1 - FIZ - GL A -E,EXTERIOR SKIN,,CONSTRUCTION,KOVACH,INSULATED METAL PANELS,JAMES LIVELY,,2024-06-28 07:00,2024-07-06 17:00,2024-06-26 07:00,2024-07-16 17:00,2025-11-20 17:00,2025-11-20 17:00,2025-11-21 07:00,2025-11-21 07:00,0,70,100
CN.SEA5.1120,PH1- AD STEEL FRAME INSTALL - SEA-5 fab side,Complete,SEA - 5,East Support Building,SUES-5 - 6-1 - FIZ - GL A -E,DS/AD,,CONSTRUCTION,,Steel Erection,SEAN MONK,,2023-08-28 07:00,2023-09-06 09:00,2023-08-28 07:00,2023-09-15 10:00,2025-11-20 17:00,2025-11-20 17:00,2025-06-13 08:00,2025-06-13 08:00,0,72,100
CN.AB.AR.2320,METAL STUD FRAMING (2hr) - SEA5 FIZ - GL 6-1 - L3 - C-A,Complete,SEA - 5,East Support Building,SUES-5 - 6-1 - FIZ - GL A -E,L3 / Waffle Slab Level,ELECTRIC RM 2,CONSTRUCTION,BERG,TBD Architectural Finishes,AMBER CARO,INTERIORS,2024-01-22 07:00,2024-01-27 13:00,2023-12-29 07:00,2024-01-03 14:00,2025-11-20 17:00,2025-11-20 17:00,2025-11-10 07:00,2025-11-10 07:00,0,56,100
CN.AB.AR.3800,MEP ROUGH IN & INSPECTION (by SECAI) - SEA5 FIZ - GL 6-1 - L3 - C-A,Complete,SEA - 5,East Support Building,SUES-5 - 6-1 - FIZ - GL A -E,L3 / Waffle Slab Level,ELECTRIC RM 2,CONSTRUCTION,,Owner & Design Team,AMBER CARO,,2024-02-26 07:00,2024-02-29 17:00,2024-02-26 07:00,2024-04-15 17:00,2025-11-20 17:00,2025-11-20 17:00,2025-12-05 17:00,2025-12-05 17:00,0,40,100
CN.AB.AR.3810,TAPE & FINISH DRYWALL - SEA5 FIZ - GL 6-1 - C-A - L3,Complete,SEA - 5,East Support Building,SUES-5 - 6-1 - FIZ - GL A -E,L3 / Waffle Slab Level,ELECTRIC RM 2,CONSTRUCTION,CHERRY COATING,DRYWALL,AMBER CARO,INTERIORS,2024-04-30 07:00,2024-05-07 17:00,2024-04-30 07:00,2024-10-01 17:00,2025-11-20 17:00,2025-11-20 17:00,2025-12-05 17:00,2025-12-05 17:00,0,50,100
CN.AB.AR.3860,INSTALL WALL PROTECTION - I/O ROOM 1 - GL 4-6 - B-C - L1,Not Started,SEA - 5,East Support Building,SUES-5 - 6-1 - FIZ - GL A -E,L1 - Fndn Slab,OAC MECH RM,CONSTRUCTION,BERNCO,TBD Architectural Finishes,JAMES LEE,INTERIORS,2025-11-21 07:00,2025-11-25 17:00,,,2025-11-21 07:00,2025-11-25 17:00,2025-11-24 07:00,2025-11-26 17:00,30,30,0
CN.AB.AR.3820,FINISH PAINT - SEA5 FIZ - GL 6-1 - C-A - L3,Not Started,SEA - 5,East Support Building,SUES-5 - 6-1 - FIZ - GL A -E,L3 / Waffle Slab Level,ELECTRIC RM 2,CONSTRUCTION,FINISH PAINT,TBD Architectural Finishes,JAMES LEE,INTERIORS,2025-11-25 07:00,2025-12-02 17:00,,,2025-11-25 07:00,2025-12-02 17:00,2025-12-02 07:00,2025-12-05 17:00,40,40,0
CN.SEA5.1250,PH1- DECKING GL 6 - 4 - SEA-5-ROOF,Complete,SEA - 5,East Support Building,SUES-5 - 6-1 - FIZ - GL A -E,L4 - SUP Roof - FAB Roof,,CONSTRUCTION,,Decking & Detail,SEAN MONK,SOMD / Roofing / Waterproofing,2023-08-11 15:00,2023-08-13 11:00,2023-08-11 15:00,2023-08-14 13:00,2025-11-20 17:00,2025-11-20 17:00,2025-06-13 08:00,2025-06-13 08:00,0,16,100
CN.SEA5.1260,PH1- DECKING GL 6 - 4 - SEA-5-L3,Complete,SEA - 5,East Support Building,SUES-5 - 6-1 - FIZ - GL A -E,L3 / Waffle Slab Level,,CONSTRUCTION,,Decking & Detail,SEAN MONK,,2023-07-31 07:00,2023-08-01 13:00,2023-07-31 07:00,2023-08-01 13:00,2025-11-20 17:00,2025-11-20 17:00,2025-06-13 08:00,2025-06-13 08:00,0,16,100
CN.SEA5.1270,PH1- DECKING GL 6 - 4 - SEA-5-L2,Complete,SEA - 5,East Support Building,SUES-5 - 6-1 - FIZ - GL A -E,L2 - SubFab Level,,CONSTRUCTION,,Decking & Detail,SEAN MONK,,2023-08-04 15:00,2023-08-06 11:00,2023-08-04 15:00,2023-08-07 13:00,2025-11-20 17:00,2025-11-20 17:00,2025-10-27 09:00,2025-10-27 09:00,0,16,100
CN.SEA3.1280,PH1-CIP WALL (DS) - SEA5 - GL 6-1 - L4 - C-A,Complete,SEA - 5,East Support Building,SUES-5 - 6-1 - FIZ - GL A -E,L4 - SUP Roof - FAB Roof,,CONSTRUCTION,,CIP WALL,CONCRETE,SOMD / Roofing / Waterproofing,2023-10-30 07:00,2023-11-04 09:00,2023-10-21 08:00,2023-10-25 15:30,2025-11-20 17:00,2025-11-20 17:00,2025-11-21 07:00,2025-11-21 07:00,0,32,100
CN.SEA5.1280,PH1- WATERPROOFING - SEA-5-L3,Complete,SEA - 5,East Support Building,SUES-5 - 6-1 - FIZ - GL A -E,L3 / Waffle Slab Level,,CONSTRUCTION,,Waterproofing - Preferred,JAMES LIVELY,SOMD / Roofing / Waterproofing,2023-10-16 07:00,2023-10-17 13:00,2023-09-13 07:00,2023-09-15 13:00,2025-11-20 17:00,2025-11-20 17:00,2025-11-10 07:00,2025-11-10 07:00,0,16,100
CN.SEA5.1310,PH1- TOPPING SLAB w TRENCH & ANGLE EMBEDS- SEA-5-L1,Complete,SEA - 5,East Support Building,SUES-5 - 6-1 - FIZ - GL A -E,L1 - Fndn Slab,,CONSTRUCTION,,TOPPING,CONCRETE,SOMD / Roofing / Waterproofing,2023-10-12 07:00,2023-10-14 11:00,2023-10-12 07:00,2023-10-14 12:00,2025-11-20 17:00,2025-11-20 17:00,2025-11-13 17:00,2025-11-13 17:00,0,24,100
CN.SEA5.1320,PH1- DS/AD DETAILING & DECKING - SEA5 FIZ - GL 6-3 - L2-L3 - C-E,Complete,SEA - 5,East Support Building,SUES-5 - 6-1 - FIZ - GL A -E,DS/AD,,CONSTRUCTION,,Decking & Detail,SEAN MONK,,2023-11-27 07:00,2023-12-01 17:00,2023-11-27 07:00,2023-11-30 17:00,2025-11-20 17:00,2025-11-20 17:00,2025-10-16 07:00,2025-10-16 07:00,0,40,100
CN.SEA5.1330,PH1- DS/AD FRP SLAB - DS/AD - SEA5 FIZ - GL 6-3 - C-E - L4/E,Complete,SEA - 5,East Support Building,SUES-5 - 6-1 - FIZ - GL A -E,DS/AD,,CONSTRUCTION,,SOMD,CONCRETE,,2024-01-22 13:00,2024-01-24 17:00,2024-01-22 13:00,2024-01-24 17:00,2025-11-20 17:00,2025-11-20 17:00,2025-10-16 07:00,2025-10-16 07:00,0,24,100
CN.SEA5.1340,AD WATERPROOFING - SEA5 - GL 6-3 - D-E - L4/E,Complete,SEA - 5,East Support Building,SUES-5 - 6-1 - FIZ - GL A -E,DS/AD,,CONSTRUCTION,BRAZOS,Steel Erection,SEAN MONK,,2024-10-14 07:00,2024-10-21 17:00,2024-10-07 07:00,2024-10-19 17:00,2025-11-20 17:00,2025-11-20 17:00,2025-12-05 17:00,2025-12-05 17:00,0,50,100
CN.SEA5.1350,AD TOPPING SLAB - SEA5 - GL 6-3 - D-E - L4/E,Complete,SEA - 5,East Support Building,SUES-5 - 6-1 - FIZ - GL A -E,DS/AD,,CONSTRUCTION,BAKER,SOMD,CONCRETE,,2024-10-21 07:00,2024-10-24 17:00,2024-10-21 07:00,2024-10-24 17:00,2025-11-20 17:00,2025-11-20 17:00,2025-12-05 17:00,2025-12-05 17:00,0,30,100
TIER 25.1050,TIER 2 GROUT PRECAST COLUMNS & BEAMS - SEA5,Complete,SEA - 5,East Support Building,SUES-5 - 6-1 - FIZ - GL A -E,L4 - SUP Roof - FAB Roof,,CONSTRUCTION,,"SUP EAST A,B",SEAN MONK,,2023-07-03 07:00,2023-07-16 13:00,2023-07-11 07:00,2023-08-03 09:00,2025-11-20 17:00,2025-11-20 17:00,2025-06-13 08:00,2025-06-13 08:00,0,116,100
CN.SEA5.1360,PH1- DECKING GL 4 - 3 - SEA-5-L2,Complete,SEA - 5,East Support Building,SUES-5 - 6-1 - FIZ - GL A -E,L2 - SubFab Level,,CONSTRUCTION,,Decking & Detail,SEAN MONK,,2023-08-28 13:00,2023-09-01 15:00,2023-08-28 13:00,2023-09-01 15:00,2025-11-20 17:00,2025-11-20 17:00,2025-10-27 09:00,2025-10-27 09:00,0,32,100
CN.SEA5.1370,PH1- DECKING GL 3 - 1 - SEA-5-L2,Complete,SEA - 5,East Support Building,SUES-5 - 6-1 - FIZ - GL A -E,L2 - SubFab Level,,CONSTRUCTION,,Decking & Detail,SEAN MONK,,2023-08-10 09:00,2023-08-11 15:00,2023-08-10 09:00,2023-08-11 15:00,2025-11-20 17:00,2025-11-20 17:00,2025-10-27 09:00,2025-10-27 09:00,0,16,100
CN.SEA5.1380,PH1- DECKING GL 4 - 3 - SEA-5-L3,Complete,SEA - 5,East Support Building,SUES-5 - 6-1 - FIZ - GL A -E,L3 / Waffle Slab Level,,CONSTRUCTION,,Decking & Detail,SEAN MONK,,2023-09-05 07:00,2023-09-06 13:00,2023-09-05 07:00,2023-09-06 13:00,2025-11-20 17:00,2025-11-20 17:00,2025-06-13 08:00,2025-06-13 08:00,0,16,100
CN.SEA5.1390,PH1- DECKING GL 3 - 1 - SEA-5-L3,Complete,SEA - 5,East Support Building,SUES-5 - 6-1 - FIZ - GL A -E,L3 / Waffle Slab Level,,CONSTRUCTION,,Decking & Detail,SEAN MONK,,2023-08-03 09:00,2023-08-04 15:00,2023-08-03 09:00,2023-08-04 15:00,2025-11-20 17:00,2025-11-20 17:00,2025-06-13 08:00,2025-06-13 08:00,0,16,100
CN.SEA5.1400,PH1- DECKING GL 4 - 2 - SEA-5-ROOF,Complete,SEA - 5,East Support Building,SUES-5 - 6-1 - FIZ - GL A -E,L4 - SUP Roof - FAB Roof,,CONSTRUCTION,,Decking & Detail,SEAN MONK,SOMD / Roofing / Waterproofing,2023-08-14 13:00,2023-08-16 09:00,2023-08-14 13:00,2023-08-16 09:00,2025-11-20 17:00,2025-11-20 17:00,2025-06-13 08:00,2025-06-13 08:00,0,16,100
CN.SEA5.1410,PH1- DECKING GL 2 - 1 - SEA-5-ROOF,Complete,SEA - 5,East Support Building,SUES-5 - 6-1 - FIZ - GL A -E,L4 - SUP Roof - FAB Roof,,CONSTRUCTION,,Decking & Detail,SEAN MONK,SOMD / Roofing / Waterproofing,2023-08-16 09:00,2023-08-17 15:00,2023-08-16 09:00,2023-08-17 15:00,2025-11-20 17:00,2025-11-20 17:00,2025-06-13 08:00,2025-06-13 08:00,0,16,100
CN.SEA5.1420,PH1- DS/AD DECKING  & DETAILING - SEA5 FIZ - GL 6-1 - C-E - L4 & L4/E,Complete,SEA - 5,East Support Building,SUES-5 - 6-1 - FIZ - GL A -E,DS/AD,,CONSTRUCTION,,Decking & Detail,SEAN MONK,,2024-01-02 09:00,2024-01-07 16:00,2024-01-02 07:00,2024-01-08 09:00,2025-11-20 17:00,2025-11-20 17:00,2025-10-16 07:00,2025-10-16 07:00,0,48,100
CN.AB.AR.4320,DRYWALL 2 SIDE - SEA5 FIZ - GL 6-1 - C-A - L3,Complete,SEA - 5,East Support Building,SUES-5 - 6-1 - FIZ - GL A -E,L3 / Waffle Slab Level,ELECTRIC RM 2,CONSTRUCTION,BERG,DRYWALL,AMBER CARO,INTERIORS,2024-04-16 07:00,2024-04-22 17:00,2024-04-16 07:00,2024-09-26 17:00,2025-11-20 17:00,2025-11-20 17:00,2025-12-02 07:00,2025-12-02 07:00,0,50,100
CN.AB.AR.4330,DRYWALL & INSULATION (1 side) (INT) - SEA5 FIZ - GL 6-1 - L3 - C-A,Complete,SEA - 5,East Support Building,SUES-5 - 6-1 - FIZ - GL A -E,L3 / Waffle Slab Level,,CONSTRUCTION,,DRYWALL,AMBER CARO,INTERIORS,2024-02-01 07:00,2024-02-05 15:00,2024-01-04 07:00,2024-01-14 09:00,2025-11-20 17:00,2025-11-20 17:00,2025-11-18 07:00,2025-11-18 07:00,0,48,100
CN.SWB5.1480,PH1- ERECT STEEL - NE PENTHOUSE,Complete,SEA - 5,East Support Building,NORTH EAST PENTHOUSE,L4 - SUP Roof - FAB Roof,,CONSTRUCTION,,Steel Erection,SEAN MONK,,2024-02-05 09:00,2024-02-15 15:00,2024-02-05 09:00,2024-02-27 11:00,2025-11-20 17:00,2025-11-20 17:00,2025-10-16 07:00,2025-10-16 07:00,0,96,100
CN.SWB5.1520,PH1- INSTALL DECKING & STUDS - NE PENTHOUSE ROOF,Complete,SEA - 5,East Support Building,NORTH EAST PENTHOUSE,L5 - SUP L5,,CONSTRUCTION,,Decking & Detail,SEAN MONK,,2024-02-29 11:00,2024-03-05 09:00,2024-02-29 11:00,2024-03-03 13:00,2025-11-20 17:00,2025-11-20 17:00,2025-11-17 07:00,2025-11-17 07:00,0,48,100
CN.SWB5.1530,PH1- FRP SLAB ON DECK - NE PENTHOUSE ROOF,Complete,SEA - 5,East Support Building,NORTH EAST PENTHOUSE,L5 - SUP L5,,CONSTRUCTION,BAKER,SOMD,CONCRETE,,2024-06-04 07:00,2024-06-07 17:00,2024-05-14 07:00,2024-05-20 17:00,2025-11-20 17:00,2025-11-20 17:00,2025-11-17 07:00,2025-11-17 07:00,0,30,100
CN.SWB5.1550,PH1- INSTALL CLADDING STEEL & DETAILING - NE PENTHOUSE,Complete,SEA - 5,East Support Building,NORTH EAST PENTHOUSE,EXTERIOR SKIN,,CONSTRUCTION,PATRIOT,INSULATED METAL PANELS,SEAN MONK,,2024-03-07 15:00,2024-03-29 17:00,2024-03-07 07:00,2024-05-17 17:00,2025-11-20 17:00,2025-11-20 17:00,2025-11-17 07:00,2025-11-17 07:00,0,122,100
CN.SWB5.1560,PH1- INSTALL INSULATED METAL PANELS - NE PENTHOUSE - SOUTH & EAST WALLS,Complete,SEA - 5,East Support Building,NORTH EAST PENTHOUSE,EXTERIOR SKIN,,CONSTRUCTION,KOVACH,INSULATED METAL PANELS,SEAN MONK,,2024-08-25 07:00,2024-08-27 17:00,2024-08-19 07:00,2024-09-19 17:00,2025-11-20 17:00,2025-11-20 17:00,2025-11-26 07:00,2025-11-26 07:00,0,30,100
CN.SWB5.1570,INSTALL EDGE OF SLAB - NE PENTHOUSE- L4-A LINE,Complete,SEA - 5,East Support Building,NORTH EAST PENTHOUSE,L4 - SUP Roof - FAB Roof,,CONSTRUCTION,BERG,Steel Erection,SEAN MONK,,2024-10-29 07:00,2024-11-05 17:00,2024-10-29 07:00,2024-12-23 17:00,2025-11-20 17:00,2025-11-20 17:00,2025-11-26 07:00,2025-11-26 07:00,0,50,100
CN.SWB5.1600,PH1- INSTALL EXTERIOR DOOR / LOUVERS FRAMES - NE PENTHOUSE,Not Started,SEA - 5,East Support Building,NORTH EAST PENTHOUSE,L4 - SUP Roof - FAB Roof,,CONSTRUCTION,DOORS AND HARDWARE,TBD Architectural Finishes,SEAN MONK,,2025-11-25 07:00,2025-12-01 17:00,,,2025-11-25 07:00,2025-12-01 17:00,2025-11-26 07:00,2025-12-02 17:00,30,30,0
CN.SWB5.1610,PH1- INSTALL EXTERIOR DOORS / LOUVERS - NE PENTHOUSE,Not Started,SEA - 5,East Support Building,NORTH EAST PENTHOUSE,L4 - SUP Roof - FAB Roof,,CONSTRUCTION,DOORS AND HARDWARE,TBD Architectural Finishes,SEAN MONK,,2025-11-25 07:00,2025-12-01 17:00,,,2025-11-25 07:00,2025-12-01 17:00,2025-12-03 07:00,2025-12-05 17:00,30,30,0
CN.SWB5.1620,PH1- INSTALL INTERIOR METAL STUD FRAMING (2hr) - NE PENTHOUSE,Complete,SEA - 5,East Support Building,NORTH EAST PENTHOUSE,L4 - SUP Roof - FAB Roof,,CONSTRUCTION,BERG,TBD Architectural Finishes,SEAN MONK,,2024-06-25 07:00,2024-07-01 17:00,2024-06-25 07:00,2024-08-05 17:00,2025-11-20 17:00,2025-11-20 17:00,2025-11-24 07:00,2025-11-24 07:00,0,40,100
CN.SWB5.1630,PH1- INSTALL INTERIOR DRYWALL - NE PENTHOUSE,Complete,SEA - 5,East Support Building,NORTH EAST PENTHOUSE,L4 - SUP Roof - FAB Roof,,CONSTRUCTION,BERG,TBD Architectural Finishes,SEAN MONK,,2024-06-20 07:00,2024-06-24 17:00,2024-07-20 07:00,2024-08-03 07:00,2025-11-20 17:00,2025-11-20 17:00,2025-11-24 07:00,2025-11-24 07:00,0,30,100
CN.SWB5.1640,PH1- INSTALL EXTERIOR STEEL ACCESS STAIRS / RAMPS - NE PENTHOUSE - STAIR 76/R15/R5/R30,Not Started,SEA - 5,East Support Building,NORTH EAST PENTHOUSE,L4 - SUP Roof - FAB Roof,,CONSTRUCTION,PATRIOT,TBD Architectural Finishes,SEAN MONK,,2025-12-02 07:00,2025-12-04 17:00,,,2025-12-02 07:00,2025-12-04 17:00,2025-12-03 07:00,2025-12-05 17:00,30,30,0
CN.SWB5.2040,PH1- INSTALL DECKING - NE PENTHOUSE,Complete,SEA - 5,East Support Building,NORTH EAST PENTHOUSE,L4 - SUP Roof - FAB Roof,,CONSTRUCTION,,Decking & Detail,SEAN MONK,,2024-02-29 11:00,2024-03-01 17:00,2024-02-29 11:00,2024-03-02 16:00,2025-11-20 17:00,2025-11-20 17:00,2025-10-16 07:00,2025-10-16 07:00,0,16,100
CN.AB1.ST.1530,FIREPROOFING - SFRM INFILL STEEL - ELECTRICAL ROOM 4 - SEA5 FIZ - GL 6-1 - C-A - L2,Complete,SEA - 5,South Areas (Team A - Gridlines 3-17),SUES-5 - 6-1 - FIZ - GL A -E,L2 - SubFab Level,,CONSTRUCTION,ROLLING PLAINS,Fireproofing,AMBER CARO,,2024-09-06 07:00,2024-09-12 17:00,2024-08-01 07:00,2024-08-07 17:00,2025-11-20 17:00,2025-11-20 17:00,2025-12-05 17:00,2025-12-05 17:00,0,40,100
CN.SWB5.2100,PH1- FRP STRUCTURAL SLAB SOMD - NE PENTHOUSE,Complete,SEA - 5,East Support Building,NORTH EAST PENTHOUSE,L4 - SUP Roof - FAB Roof,,CONSTRUCTION,BAKER,SOMD,CONCRETE,,2024-06-03 07:00,2024-06-03 17:00,2024-05-17 07:00,2024-05-20 17:00,2025-11-20 17:00,2025-11-20 17:00,2025-11-17 07:00,2025-11-17 07:00,0,10,100
CN.SEA5.1440,PH1- DS STEEL FRAME INSTALL - SEA5 FIZ - GL 6-1 - C-E - ROOF Comeback Sup Side,Complete,SEA - 5,East Support Building,SUES-5 - 6-1 - FIZ - GL A -E,DS/AD,,CONSTRUCTION,,Steel Erection,SEAN MONK,,2023-11-02 07:00,2023-11-05 09:00,2023-11-02 07:00,2023-11-05 12:00,2025-11-20 17:00,2025-11-20 17:00,2025-06-13 08:00,2025-06-13 08:00,0,32,100
CN.SEA5.1450,PH1- EXTERIOR CURBS - SEA-5-L1,Complete,SEA - 5,East Support Building,SUES-5 - 6-1 - FIZ - GL A -E,L1 - Fndn Slab,,CONSTRUCTION,,Pour Concrete,JAMES LEE,SOMD / Roofing / Waterproofing,2024-03-01 08:00,2024-03-04 10:00,2024-03-01 08:00,2024-03-04 14:00,2025-11-20 17:00,2025-11-20 17:00,2025-11-21 07:00,2025-11-21 07:00,0,32,100
CN.SEA5.1460,PH1- MEP PADS & INTERIOR CURBS - SEA-5-L1,Complete,SEA - 5,East Support Building,SUES-5 - 6-1 - FIZ - GL A -E,L1 - Fndn Slab,,CONSTRUCTION,,Pour Concrete,JAMES LEE,SOMD / Roofing / Waterproofing,2023-10-09 07:00,2023-10-13 15:00,2023-10-09 07:00,2023-10-14 16:00,2025-11-20 17:00,2025-11-20 17:00,2025-11-13 17:00,2025-11-13 17:00,0,48,100
CN.SEA51941,METAL STUD FRAMING (2hr) w DOOR FRAMES - SEA5 FIZ - GL 6-1 - L1 - C-A - OAC MECHANICAL RM & I/O ROOM 1,Complete,SEA - 5,East Support Building,SUES-5 - 6-1 - FIZ - GL A -E,L1 - Fndn Slab,OAC MECH RM,CONSTRUCTION,BERG,TBD Architectural Finishes,AMBER CARO,INTERIORS,2023-10-14 08:00,2023-10-19 14:00,2023-10-14 08:00,2023-11-17 17:00,2025-11-20 17:00,2025-11-20 17:00,2025-11-13 17:00,2025-11-13 17:00,0,56,100
CN.SEA53520,MEP ROUGH IN & INSPECTION (by SECAI) - SEA5 FIZ - GL 6-1 - L1 - C-A - OAC MECHANICAL RM & I/O ROOM 1,Complete,SEA - 5,East Support Building,SUES-5 - 6-1 - FIZ - GL A -E,L1 - Fndn Slab,OAC MECH RM,CONSTRUCTION,,Owner & Design Team,AMBER CARO,,2023-11-18 08:00,2023-11-22 08:00,2023-11-18 08:00,2023-11-19 11:00,2025-11-20 17:00,2025-11-20 17:00,2025-11-24 07:00,2025-11-24 07:00,0,40,100
CN.SEA53530,TAPE & FINISH DRYWALL - SEA5 FIZ - GL 6-1 - L1 - C-A - OAC MECHANICAL RM & I/O ROOM 1,Complete,SEA - 5,East Support Building,SUES-5 - 6-1 - FIZ - GL A -E,L1 - Fndn Slab,OAC MECH RM,CONSTRUCTION,,DRYWALL,AMBER CARO,INTERIORS,2024-01-22 07:00,2024-01-25 17:00,2024-01-16 07:00,2024-01-21 17:00,2025-11-20 17:00,2025-11-20 17:00,2025-11-24 07:00,2025-11-24 07:00,0,40,100
CN.SEA53540,FRAMING & DRYWALL - SEA5 - GL 4/ A-B - L1,Complete,SEA - 5,East Support Building,SUES-5 - 6-1 - FIZ - GL A -E,L1 - Fndn Slab,OAC MECH RM,CONSTRUCTION,FINISH PAINT,TBD Architectural Finishes,JAMES LEE,INTERIORS,2025-06-13 07:00,2025-07-25 17:00,2025-06-13 07:00,2025-09-22 17:00,2025-11-20 17:00,2025-11-20 17:00,2025-12-05 17:00,2025-12-05 17:00,0,300,100
CN.SEA54240,DRYWALL 2 SIDE - SEA5 FIZ - GL 6-1 - L1 - C-A - OAC MECHANICAL RM & I/O ROOM 1,Complete,SEA - 5,East Support Building,SUES-5 - 6-1 - FIZ - GL A -E,L1 - Fndn Slab,OAC MECH RM,CONSTRUCTION,,DRYWALL,AMBER CARO,INTERIORS,2023-12-18 07:00,2023-12-21 17:00,2023-12-18 07:00,2023-12-21 17:00,2025-11-20 17:00,2025-11-20 17:00,2025-11-24 07:00,2025-11-24 07:00,0,40,100
CN.SEA54250,DRYWALL & INSULATION (1 side) - SEA5 FIZ - GL 6-1 - L1 - C-A - OAC MECHANICAL RM & I/O ROOM 1,Complete,SEA - 5,East Support Building,SUES-5 - 6-1 - FIZ - GL A -E,L1 - Fndn Slab,OAC MECH RM,CONSTRUCTION,,DRYWALL,AMBER CARO,INTERIORS,2023-11-30 07:00,2023-12-04 15:00,2023-11-30 07:00,2023-12-05 11:00,2025-11-20 17:00,2025-11-20 17:00,2025-11-24 07:00,2025-11-24 07:00,0,48,100
CN.SEA54640,FLOOR STRIPING - OAC MECHANICAL RM & I/O ROOM 1 - SEA5 FIZ - GL 6-1 - C-A - L1,Not Started,SEA - 5,East Support Building,SUES-5 - 6-1 - FIZ - GL A -E,L1 - Fndn Slab,OAC MECH RM,CONSTRUCTION,FLOOR STRIPING PAINT,TBD Architectural Finishes,JAMES LEE,INTERIORS,2025-11-26 07:00,2025-12-04 17:00,,,2025-11-26 07:00,2025-12-04 17:00,2025-12-01 07:00,2025-12-05 17:00,50,50,0
CN.SEA5670,INSTALL ELEVATOR STEEL - SEA5 FIZ - GL 3-4 - L1 - B-C - ELEVATOR 22,Complete,SEA - 5,West Support Building,SUES-5 - 6-1 - FIZ - GL A -E,L1 - Fndn Slab,ELEVATOR,CONSTRUCTION,,TBD Architectural Finishes,,INTERIORS,2024-01-22 07:00,2024-01-26 10:12,2024-01-02 07:00,2024-01-10 10:12,2025-11-20 17:00,2025-11-20 17:00,2025-11-24 07:00,2025-11-24 07:00,0,43.2,100
CN.SEA5681,INSTALL METAL STAIRS - STAIR #22 - 6/D - ALL LEVELS,Complete,SEA - 5,West Support Building,SUES-5 - 6-1 - FIZ - GL A -E,INTERIOR STAIR TOWER - STAIR #22 - DE-SCOPED,,CONSTRUCTION,,INSULATED METAL PANELS,,INTERIORS,2023-12-04 07:00,2023-12-05 13:00,2023-12-05 09:00,2023-12-07 15:00,2025-11-20 17:00,2025-11-20 17:00,2025-10-27 09:00,2025-10-27 09:00,0,16,100
CN.SEA5.3860,INSTALL WALL PROTECTION - ELEVATOR HALL 22 - GL 3-5 - B-C - L3,Not Started,SEA - 5,East Support Building,SUES-5 - 6-1 - FIZ - GL A -E,L3 / Waffle Slab Level,ELEVATOR,CONSTRUCTION,BERNCO,TBD Architectural Finishes,JAMES LEE,INTERIORS,2025-11-26 07:00,2025-12-02 17:00,,,2025-11-26 07:00,2025-12-02 17:00,2025-12-03 07:00,2025-12-05 17:00,30,30,0
CN.SEA5.3861,INSTALL WALL PROTECTION - ELEVATOR HALL 22 - GL 3-5 - B-C - L2,Not Started,SEA - 5,East Support Building,SUES-5 - 6-1 - FIZ - GL A -E,L2 - SubFab Level,,CONSTRUCTION,BERNCO,TBD Architectural Finishes,JAMES LEE,INTERIORS,2025-11-21 07:00,2025-11-25 17:00,,,2025-11-21 07:00,2025-11-25 17:00,2025-11-26 07:00,2025-12-02 17:00,30,30,0
CN.SEA5520,MEP ROUGH IN & INSPECTION (by SECAI) - SEA-5 - L2 only - ELECTRICAL ROOM 4,Complete,SEA - 5,East Support Building,SUES-5 - 6-1 - FIZ - GL A -E,L2 - SubFab Level,ELECTRIC RM 4,CONSTRUCTION,,Owner & Design Team,AMBER CARO,,2023-09-12 12:00,2023-09-17 12:00,2023-09-12 12:00,2023-09-18 14:00,2025-11-20 17:00,2025-11-20 17:00,2025-11-24 07:00,2025-11-24 07:00,0,40,100
CN.SEA5530,TAPE & FINISH DRYWALL - SEA5 FIZ - GL 6-1 - L2 - C-A - ELECTRICAL ROOM 4,Complete,SEA - 5,East Support Building,SUES-5 - 6-1 - FIZ - GL A -E,L2 - SubFab Level,ELECTRIC RM 4,CONSTRUCTION,,DRYWALL,AMBER CARO,INTERIORS,2024-01-12 09:00,2024-01-18 12:00,2024-01-12 09:00,2024-01-16 13:00,2025-11-20 17:00,2025-11-20 17:00,2025-11-24 07:00,2025-11-24 07:00,0,40,100
CN.SEA5540,FINISH PAINT - ELECTRICAL ROOM 4 - SEA5 FIZ - GL 6-1 - C-A - L2,Not Started,SEA - 5,East Support Building,SUES-5 - 6-1 - FIZ - GL A -E,L2 - SubFab Level,ELECTRIC RM 4,CONSTRUCTION,FINISH PAINT,TBD Architectural Finishes,JAMES LEE,INTERIORS,2025-11-21 07:00,2025-11-24 17:00,,,2025-11-21 07:00,2025-11-24 17:00,2025-12-04 07:00,2025-12-05 17:00,20,20,0
CN.SEA5240,DRYWALL 2 SIDE - SEA5 FIZ - GL 6-1 - L2 - C-A - ELECTRICAL ROOM 4,Complete,SEA - 5,East Support Building,SUES-5 - 6-1 - FIZ - GL A -E,L2 - SubFab Level,ELECTRIC RM 4,CONSTRUCTION,,DRYWALL,AMBER CARO,INTERIORS,2024-01-08 09:00,2024-01-14 09:00,2024-01-08 09:00,2024-01-12 09:00,2025-11-20 17:00,2025-11-20 17:00,2025-11-24 07:00,2025-11-24 07:00,0,40,100
CN.SEA5250,DRYWALL & INSULATION (1 side) - SEA-5 - L2 only - ELECTRICAL ROOM 4,Complete,SEA - 5,East Support Building,SUES-5 - 6-1 - FIZ - GL A -E,L2 - SubFab Level,ELECTRIC RM 4,CONSTRUCTION,,DRYWALL,AMBER CARO,INTERIORS,2023-11-06 09:00,2023-11-10 17:00,2023-09-19 09:00,2023-09-26 17:00,2025-11-20 17:00,2025-11-20 17:00,2025-11-24 07:00,2025-11-24 07:00,0,48,100
CN.SEA5640,FLOOR STRIPING - ELECTRICAL ROOM 4 - SEA5 FIZ - GL 6-1 - C-A - L2,Not Started,SEA - 5,East Support Building,SUES-5 - 6-1 - FIZ - GL A -E,L2 - SubFab Level,ELECTRIC RM 4,CONSTRUCTION,FLOOR STRIPING PAINT,TBD Architectural Finishes,JAMES LEE,INTERIORS,2025-11-26 07:00,2025-12-02 17:00,,,2025-11-26 07:00,2025-12-02 17:00,2025-12-03 07:00,2025-12-05 17:00,30,30,0
CN.SEA5.70,INSTALL ELEVATOR STEEL - SEA5 FIZ-L3 - ELEVATOR 22,Complete,SEA - 5,West Support Building,SUES-5 - 6-1 - FIZ - GL A -E,,ELEVATOR,CONSTRUCTION,,TBD Architectural Finishes,,INTERIORS,2024-01-29 07:00,2024-01-31 14:12,2024-01-03 07:00,2024-02-08 07:00,2025-11-20 17:00,2025-11-20 17:00,2025-11-24 07:00,2025-11-24 07:00,0,27.2,100
CN.SEA5.3871,PH1- FRP SLAB 3 - 1- SEA-5-L3-FIZ,Complete,SEA - 5,East Support Building,SUES-5 - 6-1 - FIZ - GL A -E,L3 / Waffle Slab Level,,CONSTRUCTION,,SOMD,CONCRETE,,2023-09-05 07:00,2023-09-07 11:00,2023-09-05 07:00,2023-09-07 11:00,2025-11-20 17:00,2025-11-20 17:00,2025-10-27 09:00,2025-10-27 09:00,0,24,100
CN.SEA5.1470,IMPACT - DRB-01 ADDITIONAL BEAMS BETWEEN FAB AND AD - SEA5 FIZ - GL 6-1 - C-E - ROOF,Complete,SEA - 5,,SUES-5 - 6-1 - FIZ - GL A -E,DS/AD,,CONSTRUCTION,,Steel Erection,,,2023-12-20 07:00,2023-12-21 13:00,2023-12-20 07:00,2023-12-21 13:00,2025-11-20 17:00,2025-11-20 17:00,2025-06-13 08:00,2025-06-13 08:00,0,16,100
CN.SEA5.3881,PH1 - CLADDING STEEL  EXTERIOR - SEA5 FIZ - GL 6-3 - C LINE  (DS AREA) (6~3),Complete,SEA - 5,East Support Building,SUES-5 - 6-1 - FIZ - GL A -E,EXTERIOR SKIN,,CONSTRUCTION,,INSULATED METAL PANELS,JAMES LIVELY,,2024-02-15 09:00,2024-02-25 11:00,2024-02-15 09:00,2024-03-01 09:00,2025-11-20 17:00,2025-11-20 17:00,2025-10-29 07:00,2025-10-29 07:00,0,92,100
EMB1018,IMPACT - Missing Precast Embeds (2) GL E3 and E4 (#18),Complete,SEA - 5,East Support Building,SUES-5 - 6-1 - FIZ - GL A -E,DS/AD,,CONSTRUCTION,,Steel Erection,SEAN MONK,,2023-10-09 07:00,2023-10-12 17:00,2023-10-09 07:00,2023-10-13 17:00,2025-11-20 17:00,2025-11-20 17:00,2025-10-16 07:00,2025-10-16 07:00,0,40,100
EMB1012,IMPACT - Missing Precast Embeds (4) Between B4 and C4 Level 2 (#12),Complete,SEA - 5,East Support Building,SUES-5 - 6-1 - FIZ - GL A -E,DS/AD,,CONSTRUCTION,,Steel Erection,SEAN MONK,,2023-09-16 08:00,2023-09-18 12:00,2023-09-16 08:00,2023-09-18 15:00,2025-11-20 17:00,2025-11-20 17:00,2025-06-13 08:00,2025-06-13 08:00,0,24,100
EMB1011,IMPACT - Missing Precast Embeds (2) Between GL B3 and C3 Level 2 (#11),Complete,SEA - 5,East Support Building,SUES-5 - 6-1 - FIZ - GL A -E,DS/AD,,CONSTRUCTION,,Steel Erection,SEAN MONK,,2023-09-16 08:00,2023-09-18 12:00,2023-09-16 08:00,2023-09-18 15:00,2025-11-20 17:00,2025-11-20 17:00,2025-06-13 08:00,2025-06-13 08:00,0,24,100
EMB1003,IMPACT - Missing Precast Embed Between GL C2 and C3 Level 4 (#03),Complete,SEA - 5,East Support Building,SUES-5 - 6-1 - FIZ - GL A -E,DS/AD,,CONSTRUCTION,,Steel Erection,SEAN MONK,,2023-10-09 07:00,2023-10-12 17:00,2023-08-22 07:00,2023-10-13 17:00,2025-11-20 17:00,2025-11-20 17:00,2025-10-16 07:00,2025-10-16 07:00,0,40,100
EMB5000,IMPACT - Missing Precast Embeds (2) Between GL B4 and C4 Level 3 (#5000),Complete,SEA - 5,East Support Building,SUES-5 - 6-1 - FIZ - GL A -E,DS/AD,,CONSTRUCTION,,Steel Erection,SEAN MONK,,2023-09-16 08:00,2023-09-18 12:00,2023-09-16 08:00,2023-09-18 15:00,2025-11-20 17:00,2025-11-20 17:00,2025-06-13 08:00,2025-06-13 08:00,0,24,100
CN.SEA5.3901,PH1- DS/AD FRP SLAB - SEA-5 L2-L3 GL 1-3,Complete,SEA - 5,East Support Building,SUES-5 - 6-1 - FIZ - GL A -E,DS/AD,,CONSTRUCTION,,SOMD,CONCRETE,,2023-10-02 07:00,2023-10-07 13:00,2023-10-02 07:00,2023-10-08 16:00,2025-11-20 17:00,2025-11-20 17:00,2025-06-13 08:00,2025-06-13 08:00,0,56,100
CN.SEA5.3911,DS/AD STEEL SPRAY FIREPROOFING SFRM - SEA5 FIZ - GL 6-3 L1 CEILING C-E,Complete,SEA - 5,,SUES-5 - 6-1 - FIZ - GL A -E,DS/AD,,CONSTRUCTION,,Fireproofing,,,2023-12-11 07:00,2023-12-17 13:00,2023-12-11 07:00,2023-12-12 17:00,2025-11-20 17:00,2025-11-20 17:00,2025-06-13 08:00,2025-06-13 08:00,0,56,100
CN.SEA5.1222,METAL STUD FRAMING (2hr - SEA5 FIZ - GL 6-1 - L1 - D LINE,Complete,SEA - 5,West Support Building,SUES-5 - 6-1 - FIZ - GL A -E,L1 - Fndn Slab,DS/AD INTERIORS,CONSTRUCTION,BERG,TBD Architectural Finishes,FIZ DATA CENTER,INTERIORS,2023-11-08 13:00,2023-11-13 11:00,2023-11-08 13:00,2023-11-11 15:00,2025-11-20 17:00,2025-11-20 17:00,2025-11-13 17:00,2025-11-13 17:00,0,48,100
CN.SEA5.1302,TAPE & FINISH DRYWALL - SEA5 FIZ - GL 6-1 - L1 - D LINE,Complete,SEA - 5,West Support Building,SUES-5 - 6-1 - FIZ - GL A -E,L1 - Fndn Slab,DS/AD INTERIORS,CONSTRUCTION,,DRYWALL,FIZ DATA CENTER,INTERIORS,2023-12-14 07:00,2023-12-17 17:00,2023-12-14 07:00,2024-01-08 13:00,2025-11-20 17:00,2025-11-20 17:00,2025-12-01 17:00,2025-12-01 17:00,0,40,100
CN.SEA5.1322,PRIMER & PAINT DRYWALL -  GL 6-3 - D LINE - L1,Complete,SEA - 5,West Support Building,SUES-5 - 6-1 - FIZ - GL A -E,L1 - Fndn Slab,DS/AD INTERIORS,CONSTRUCTION,FINISH PAINT,TBD Architectural Finishes,FIZ DATA CENTER,INTERIORS,2024-10-21 07:00,2024-10-24 17:00,2024-10-21 07:00,2024-10-24 17:00,2025-11-20 17:00,2025-11-20 17:00,2025-12-01 17:00,2025-12-01 17:00,0,30,100
CN.SEA5.1282,DRYWALL 2 SIDE - SEA5 FIZ - GL 6-1 - L1 - D LINE,Complete,SEA - 5,West Support Building,SUES-5 - 6-1 - FIZ - GL A -E,L1 - Fndn Slab,DS/AD INTERIORS,CONSTRUCTION,,DRYWALL,FIZ DATA CENTER,INTERIORS,2023-12-11 07:00,2023-12-15 17:00,2023-12-11 07:00,2023-12-29 13:00,2025-11-20 17:00,2025-11-20 17:00,2025-12-01 17:00,2025-12-01 17:00,0,40,100
CN.SEA5.1262,DRYWALL & INSULATION (1 side) (INT) - SEA5 FIZ - GL 6-1 - L1 - D LINE,Complete,SEA - 5,West Support Building,SUES-5 - 6-1 - FIZ - GL A -E,L1 - Fndn Slab,DS/AD INTERIORS,CONSTRUCTION,,DRYWALL,FIZ DATA CENTER,INTERIORS,2023-12-01 15:00,2023-12-07 13:00,2023-12-01 15:00,2023-12-08 09:00,2025-11-20 17:00,2025-11-20 17:00,2025-12-01 17:00,2025-12-01 17:00,0,48,100
CN.SEA5.1232,METAL STUD FRAMING (2hr) - SEA5 FIZ - GL 6-1 - L2 - D LINE,Complete,SEA - 5,West Support Building,SUES-5 - 6-1 - FIZ - GL A -E,L2 - SubFab Level,DS/AD INTERIORS,CONSTRUCTION,BERG,TBD Architectural Finishes,FIZ DATA CENTER,INTERIORS,2024-01-22 07:00,2024-01-26 15:00,2024-01-02 07:00,2024-01-08 15:00,2025-11-20 17:00,2025-11-20 17:00,2025-11-24 07:00,2025-11-24 07:00,0,48,100
CN.SEA5.1312,REMEDY - TAPE & FINISH DRYWALL - SEA5 FIZ - GL 3-6 - D LINE - L2,Complete,SEA - 5,West Support Building,SUES-5 - 6-1 - FIZ - GL A -E,L2 - SubFab Level,DS/AD INTERIORS,CONSTRUCTION,CHERRY COATING,DRYWALL,FIZ DATA CENTER,INTERIORS,2024-08-23 07:00,2024-08-27 17:00,2024-08-07 07:00,2024-08-10 17:00,2025-11-20 17:00,2025-11-20 17:00,2025-11-24 07:00,2025-11-24 07:00,0,30,100
CN.SEA5.1332,FINISH PAINT - SEA5 FIZ - GL 6-1 - D LINE - L2,Not Started,SEA - 5,West Support Building,SUES-5 - 6-1 - FIZ - GL A -E,L2 - SubFab Level,DS/AD INTERIORS,CONSTRUCTION,FINISH PAINT,TBD Architectural Finishes,FIZ DATA CENTER,INTERIORS,2025-11-21 07:00,2025-11-24 17:00,,,2025-11-21 07:00,2025-11-24 17:00,2025-12-04 07:00,2025-12-05 17:00,20,20,0
CN.SEA5.1292,REMEDY - FRAME & DRYWALL - SEA5 FIZ - GL 3-6 - D LINE - L2,Complete,SEA - 5,West Support Building,SUES-5 - 6-1 - FIZ - GL A -E,L2 - SubFab Level,DS/AD INTERIORS,CONSTRUCTION,BERG,DRYWALL,FIZ DATA CENTER,INTERIORS,2024-07-15 07:00,2024-08-02 17:00,2024-07-19 07:00,2024-08-06 17:00,2025-11-20 17:00,2025-11-20 17:00,2025-11-24 07:00,2025-11-24 07:00,0,150,100
CN.SEA5.1272,DRYWALL (1 side) (INT) - SEA5 FIZ - GL 6-1 - L2 - D LINE,Complete,SEA - 5,West Support Building,SUES-5 - 6-1 - FIZ - GL A -E,L2 - SubFab Level,DS/AD INTERIORS,CONSTRUCTION,,DRYWALL,FIZ DATA CENTER,INTERIORS,2024-01-26 15:00,2024-01-31 13:00,2024-01-08 15:00,2024-01-15 09:00,2025-11-20 17:00,2025-11-20 17:00,2025-11-24 07:00,2025-11-24 07:00,0,48,100
CN.SEA5.3951,PH1 -WELD CLIPS - CLADDING STEEL - SEA5 FIZ - GL 6-1 - C LINE (DS AREA),Complete,SEA - 5,East Support Building,SUES-5 - 6-1 - FIZ - GL A -E,EXTERIOR SKIN,,CONSTRUCTION,,INSULATED METAL PANELS,JAMES LIVELY,,2024-02-19 07:00,2024-02-20 09:00,2024-02-19 07:00,2024-02-20 09:00,2025-11-20 17:00,2025-11-20 17:00,2025-10-29 07:00,2025-10-29 07:00,0,12,100
CN.SEA5.1480,IMPACT - DS STEEL BEAM STIFFNER CONNECTION FIXES - SEA5 FIZ - GL 6-1 - C-E - L4,Complete,SEA - 5,,SUES-5 - 6-1 - FIZ - GL A -E,DS/AD,,CONSTRUCTION,,Steel Erection,,,2024-01-08 09:00,2024-01-10 15:00,2024-01-08 09:00,2024-01-19 11:00,2025-11-20 17:00,2025-11-20 17:00,2025-10-16 07:00,2025-10-16 07:00,0,16,100
CN.SEA5.1342,METAL STUD FRAMING (2hr) - SEA5 FIZ - GL 6-1 - L3 - D LINE,Complete,SEA - 5,West Support Building,SUES-5 - 6-1 - FIZ - GL A -E,L3 / Waffle Slab Level,DS/AD INTERIORS,CONSTRUCTION,BERG,TBD Architectural Finishes,FIZ DATA CENTER,INTERIORS,2024-02-26 07:00,2024-02-29 17:00,2024-02-24 09:00,2024-02-29 10:00,2025-11-20 17:00,2025-11-20 17:00,2025-06-13 08:00,2025-06-13 08:00,0,40,100
CN.SEA5.1382,TAPE & FINISH DRYWALL - SEA5 FIZ - GL 6-3 - D LINE - L3,Complete,SEA - 5,West Support Building,SUES-5 - 6-1 - FIZ - GL A -E,L3 / Waffle Slab Level,DS/AD INTERIORS,CONSTRUCTION,CHERRY COATING,DRYWALL,FIZ DATA CENTER,INTERIORS,2024-06-13 07:00,2024-06-18 17:00,2024-06-13 07:00,2024-06-25 17:00,2025-11-20 17:00,2025-11-20 17:00,2025-06-13 08:00,2025-06-13 08:00,0,40,100
CN.SEA5.1392,D/S SGP Wall Turnover - SEA5 FIZ - GL 6-3 - D LINE - L3,Complete,SEA - 5,West Support Building,SUES-5 - 6-1 - FIZ - GL A -E,L3 / Waffle Slab Level,DS/AD INTERIORS,CONSTRUCTION,SECAI,TBD Architectural Finishes,FIZ DATA CENTER,INTERIORS,2024-06-25 07:00,2024-06-25 17:00,2024-06-25 07:00,2024-06-25 17:00,2025-11-20 17:00,2025-11-20 17:00,2025-06-13 08:00,2025-06-13 08:00,0,10,100
CN.SEA5.1372,DRYWALL 2 SIDE - SEA5 FIZ - GL 6-3 - D LINE - L3,Complete,SEA - 5,West Support Building,SUES-5 - 6-1 - FIZ - GL A -E,L3 / Waffle Slab Level,DS/AD INTERIORS,CONSTRUCTION,BERG,DRYWALL,FIZ DATA CENTER,INTERIORS,2024-04-18 07:00,2024-04-26 17:00,2024-04-18 07:00,2024-06-21 17:00,2025-11-20 17:00,2025-11-20 17:00,2025-06-13 08:00,2025-06-13 08:00,0,70,100
CN.SEA5.1362,DRYWALL & INSULATION (1st layer) (INT) - SEA5 FIZ - GL 6-1 - L3 - D LINE,Complete,SEA - 5,West Support Building,SUES-5 - 6-1 - FIZ - GL A -E,L3 / Waffle Slab Level,DS/AD INTERIORS,CONSTRUCTION,,DRYWALL,FIZ DATA CENTER,INTERIORS,2024-02-26 07:00,2024-02-29 17:00,2024-02-24 11:00,2024-02-29 12:00,2025-11-20 17:00,2025-11-20 17:00,2025-06-13 08:00,2025-06-13 08:00,0,40,100
CN.SEA5.6000,WATERPROOFING AT PEDASTALS - SEA5 FIZ - GL 4-1 - C-A - L4 ROOF,Complete,SEA - 5,East Support Building,SUES-5 - 6-1 - FIZ - GL A -E,L4 - SUP Roof - FAB Roof,,CONSTRUCTION,BRAZOS,TOPPING,,SOMD / Roofing / Waterproofing,2024-09-06 07:00,2024-09-06 17:00,2024-08-06 07:00,2024-08-07 17:00,2025-11-20 17:00,2025-11-20 17:00,2025-12-05 17:00,2025-12-05 17:00,0,10,100
CN.SEA5.6010,FRP PEDASTALS - SEA5 FIZ - GL 4-1 - C-A - L4 ROOF,Complete,SEA - 5,East Support Building,SUES-5 - 6-1 - FIZ - GL A -E,L4 - SUP Roof - FAB Roof,,CONSTRUCTION,BAKER,TOPPING,,SOMD / Roofing / Waterproofing,2024-09-09 07:00,2024-09-09 17:00,2024-08-08 07:00,2024-08-08 17:00,2025-11-20 17:00,2025-11-20 17:00,2025-12-05 17:00,2025-12-05 17:00,0,10,100
CN.SEA5.6020,INSTALL PRIMER - GL 6-5 - C-A - L4 ROOF,Complete,SEA - 5,East Support Building,SUES-5 - 6-1 - FIZ - GL A -E,L4 - SUP Roof - FAB Roof,,CONSTRUCTION,BRAZOS,TOPPING,,SOMD / Roofing / Waterproofing,2024-08-09 07:00,2024-08-09 17:00,2024-08-08 07:00,2024-08-08 17:00,2025-11-20 17:00,2025-11-20 17:00,2025-12-03 07:00,2025-12-03 07:00,0,10,100
CN.SEA5.6030,INSPECT PRIMER - GL 6-5 - C-A - L4 ROOF,Complete,SEA - 5,East Support Building,SUES-5 - 6-1 - FIZ - GL A -E,L4 - SUP Roof - FAB Roof,,CONSTRUCTION,BRAZOS,TOPPING,,SOMD / Roofing / Waterproofing,2024-08-09 07:00,2024-08-09 17:00,2024-08-08 07:00,2024-08-08 17:00,2025-11-20 17:00,2025-11-20 17:00,2025-12-03 07:00,2025-12-03 07:00,0,10,100
CN.SEA5.6040,INSTALL BASE COAT - GL 6-5 - C-A - L4 ROOF,Complete,SEA - 5,East Support Building,SUES-5 - 6-1 - FIZ - GL A -E,L4 - SUP Roof - FAB Roof,,CONSTRUCTION,BRAZOS,TOPPING,,SOMD / Roofing / Waterproofing,2024-08-16 07:00,2024-08-16 17:00,2024-08-09 07:00,2024-08-10 17:00,2025-11-20 17:00,2025-11-20 17:00,2025-12-03 07:00,2025-12-03 07:00,0,10,100
CN.SEA5.6050,INSPECT BASE COAT - GL 6-5 - C-A - L4 ROOF,Complete,SEA - 5,East Support Building,SUES-5 - 6-1 - FIZ - GL A -E,L4 - SUP Roof - FAB Roof,,CONSTRUCTION,BRAZOS,TOPPING,,SOMD / Roofing / Waterproofing,2024-08-12 07:00,2024-08-12 17:00,2024-08-10 07:00,2024-08-10 17:00,2025-11-20 17:00,2025-11-20 17:00,2025-12-05 17:00,2025-12-05 17:00,0,10,100
CN.SEA5.6060,INSTALL TOP COAT - GL 6-5 - C-A - L4 ROOF,Complete,SEA - 5,East Support Building,SUES-5 - 6-1 - FIZ - GL A -E,L4 - SUP Roof - FAB Roof,,CONSTRUCTION,BRAZOS,TOPPING,,SOMD / Roofing / Waterproofing,2024-08-13 07:00,2024-08-15 17:00,2024-08-11 07:00,2024-08-11 17:00,2025-11-20 17:00,2025-11-20 17:00,2025-12-05 17:00,2025-12-05 17:00,0,20,100
CN.SEA5.6070,INSPECT TOP COAT - GL 6-5 - C-A - L4 ROOF,Complete,SEA - 5,East Support Building,SUES-5 - 6-1 - FIZ - GL A -E,L4 - SUP Roof - FAB Roof,,CONSTRUCTION,BRAZOS,TOPPING,,SOMD / Roofing / Waterproofing,2024-08-15 07:00,2024-08-15 17:00,2024-08-11 07:00,2024-08-11 17:00,2025-11-20 17:00,2025-11-20 17:00,2025-12-05 17:00,2025-12-05 17:00,0,10,100
CN.SEA5.6080,INSTALL BASE COAT CRICKET - GL 6-5 - C-A - L4 ROOF,Complete,SEA - 5,East Support Building,SUES-5 - 6-1 - FIZ - GL A -E,L4 - SUP Roof - FAB Roof,,CONSTRUCTION,BRAZOS,TOPPING,,SOMD / Roofing / Waterproofing,2024-08-26 07:00,2024-08-26 17:00,2024-08-14 07:00,2024-08-14 17:00,2025-11-20 17:00,2025-11-20 17:00,2025-12-05 17:00,2025-12-05 17:00,0,10,100
CN.SEA5.6090,INSPECT BASE COAT CRICKET - GL 6-5 - C-A - L4 ROOF,Complete,SEA - 5,East Support Building,SUES-5 - 6-1 - FIZ - GL A -E,L4 - SUP Roof - FAB Roof,,CONSTRUCTION,BRAZOS,TOPPING,,SOMD / Roofing / Waterproofing,2024-08-26 07:00,2024-08-26 17:00,2024-08-14 07:00,2024-08-14 17:00,2025-11-20 17:00,2025-11-20 17:00,2025-12-05 17:00,2025-12-05 17:00,0,10,100
CN.SEA5.6100,INSTALL TOP COAT CRICKET - GL 6-5 - C-A - L4 ROOF,Complete,SEA - 5,East Support Building,SUES-5 - 6-1 - FIZ - GL A -E,L4 - SUP Roof - FAB Roof,,CONSTRUCTION,BRAZOS,TOPPING,,SOMD / Roofing / Waterproofing,2024-08-27 07:00,2024-08-27 17:00,2024-08-15 07:00,2024-08-15 17:00,2025-11-20 17:00,2025-11-20 17:00,2025-12-05 17:00,2025-12-05 17:00,0,10,100
CN.SEA5.6110,INSPECT TOP COAT CRICKET - GL 6-5 - C-A - L4 ROOF,Complete,SEA - 5,East Support Building,SUES-5 - 6-1 - FIZ - GL A -E,L4 - SUP Roof - FAB Roof,,CONSTRUCTION,BRAZOS,TOPPING,,SOMD / Roofing / Waterproofing,2024-08-27 07:00,2024-08-27 17:00,2024-08-15 07:00,2024-08-15 17:00,2025-11-20 17:00,2025-11-20 17:00,2025-12-05 17:00,2025-12-05 17:00,0,10,100
CN.SEA5.6140,FRP TOPPING SLAB - GL 6-5 - C-A - L4 ROOF,Complete,SEA - 5,East Support Building,SUES-5 - 6-1 - FIZ - GL A -E,L4 - SUP Roof - FAB Roof,,CONSTRUCTION,BAKER,TOPPING,,SOMD / Roofing / Waterproofing,2024-08-28 07:00,2024-08-29 17:00,2024-08-16 07:00,2024-08-17 17:00,2025-11-20 17:00,2025-11-20 17:00,2025-12-05 17:00,2025-12-05 17:00,0,20,100
CN.SEA5.1402,FRAMING - ELEVATOR 22 - SEA5 - L1-2 GL 3-4 - B-C (3 sides only),Complete,SEA - 5,West Support Building,SUES-5 - 6-1 - FIZ - GL A -E,L1 - Fndn Slab,ELEVATOR,CONSTRUCTION,,DRYWALL,,INTERIORS,2024-01-29 11:24,2024-02-03 12:36,2024-01-10 11:24,2024-01-15 09:12,2025-11-20 17:00,2025-11-20 17:00,2025-12-05 17:00,2025-12-05 17:00,0,51.2,100
CN.SEA5.3981,PH1- DS/AD FRP SLAB - SEA5 FIZ - GL 6-3 - L2-L3 - C-E,Complete,SEA - 5,,SUES-5 - 6-1 - FIZ - GL A -E,DS/AD,,CONSTRUCTION,,SOMD,,,2023-12-04 07:00,2023-12-10 13:00,2023-11-22 07:00,2023-12-04 17:00,2025-11-20 17:00,2025-11-20 17:00,2025-06-13 08:00,2025-06-13 08:00,0,56,100
CN.SEA5.1490,L6- DS/AD DECKING & DETAILING - SEA5 FIZ - GL 6-3 - C-E - L6,Complete,SEA - 5,,SUES-5 - 6-1 - FIZ - GL A -E,DS/AD,,CONSTRUCTION,,Decking & Detail,,,2024-01-02 09:00,2024-01-07 08:00,2024-01-12 07:00,2024-01-15 14:00,2025-11-20 17:00,2025-11-20 17:00,2025-06-13 08:00,2025-06-13 08:00,0,40,100
CN.SEA5.6190,IMPACT - MISSING 4 ANCHOR BOLTS - SEA5 FIZ - C4 - 4A - (35),Complete,SEA - 5,East Support Building,SUES-5 - 6-1 - FIZ - GL A -E,L4 - SUP Roof - FAB Roof,,CONSTRUCTION,,Steel Fabricator - W&W,JAMES LEE,SOMD / Roofing / Waterproofing,2023-12-04 07:00,2023-12-05 13:00,2023-09-25 07:00,2023-10-30 13:00,2025-11-20 17:00,2025-11-20 17:00,2025-06-13 08:00,2025-06-13 08:00,0,16,100
CN.SEA54710,IMPACT - Missing 2 Precast Embeds - SEA5 - B-C 3-4 L1A - SEQ 5201,Complete,SEA - 5,,SUES-5 - 6-1 - FIZ - GL A -E,L1 - Fndn Slab,OAC MECH RM,CONSTRUCTION,,Steel Fabricator - W&W,,,2023-10-30 07:00,2023-11-02 13:00,2023-10-27 09:00,2023-10-28 16:00,2025-11-20 17:00,2025-11-20 17:00,2025-11-24 07:00,2025-11-24 07:00,0,16,100
CN.SEA5.6200,IMPACT [S.TIA-16] - MISSING EMBED - ALONG E LINE BETWEEN 3-4 - SEA5 - L3A - SEQ 1701 (GATE),Complete,SEA - 5,East Support Building,SUES-5 - 6-1 - FIZ - GL A -E,L3 / Waffle Slab Level,,CONSTRUCTION,,Steel Fabricator - W&W,JAMES LIVELY,SOMD / Roofing / Waterproofing,2023-10-30 07:00,2023-11-02 13:00,2023-10-25 07:00,2023-10-27 13:00,2025-11-20 17:00,2025-11-20 17:00,2025-06-13 08:00,2025-06-13 08:00,0,16,100
CN.SEA5.6210,IMPACT - MISSING EMBEDS (WHOLE BAY) - SEA5 - GL A - C/ 4-3 (32),Complete,SEA - 5,East Support Building,SUES-5 - 6-1 - FIZ - GL A -E,L4 - SUP Roof - FAB Roof,,CONSTRUCTION,,Steel Fabricator - W&W,JAMES LEE,SOMD / Roofing / Waterproofing,2023-10-30 07:00,2023-11-04 17:00,2023-09-18 07:00,2023-09-20 10:00,2025-11-20 17:00,2025-11-20 17:00,2025-06-13 08:00,2025-06-13 08:00,0,40,100
SITE6020,IMPACT - SECAI Transformer and Temp Generator setup - SUE GL 3 (WW & Patriot work at 1-3 line and 3-4),Complete,SEA - 5,East Support Building,SUES-5 - 6-1 - FIZ - GL A -E,DS/AD,,CONSTRUCTION,,Steel Erection,SEAN MONK,,2023-09-16 08:00,2023-09-18 12:00,2023-09-08 08:00,2023-09-20 08:00,2025-11-20 17:00,2025-11-20 17:00,2025-06-13 08:00,2025-06-13 08:00,0,24,100
CN.SEA5.1510,PH1- DS/AD DETAILING & DECKING  GL 1 - 3  SEA-5 L2- L3,Complete,SEA - 5,,SUES-5 - 6-1 - FIZ - GL A -E,DS/AD,,CONSTRUCTION,,Decking & Detail,,,2023-09-18 08:00,2023-09-23 08:00,2023-09-18 08:00,2023-09-22 16:00,2025-11-20 17:00,2025-11-20 17:00,2025-06-13 08:00,2025-06-13 08:00,0,40,100
CN.SEA5.4001,DS STEEL SPRAY FIREPROOFING SFRM- SEA-5 L3-CEILING GL 1-3,Complete,SEA - 5,,SUES-5 - 6-1 - FIZ - GL A -E,DS/AD,,CONSTRUCTION,,Fireproofing,,,2023-10-16 08:00,2023-10-20 16:00,2023-10-16 08:00,2023-10-25 16:00,2025-11-20 17:00,2025-11-20 17:00,2025-10-16 07:00,2025-10-16 07:00,0,48,100
CN.SEA5.1520,PH1- DS/AD FRP SLAB - DS/AD - SEA5 FIZ - GL 6-1 - C-E - L6,Complete,SEA - 5,,SUES-5 - 6-1 - FIZ - GL A -E,DS/AD,,CONSTRUCTION,,SOMD,,,2024-02-17 13:00,2024-02-19 17:00,2024-02-17 13:00,2024-02-18 10:00,2025-11-20 17:00,2025-11-20 17:00,2025-10-16 07:00,2025-10-16 07:00,0,24,100
CN.SEA5.1190,DETAIL & INSPECT CLADDING STEEL - GL 1-6 - A LINE [SUP EXTERIOR WALL] - PHASE 1 - WEEKEND WORK DURING STARCON STANDDOWN,Complete,SEA - 5,,SUES-5 - 6-1 - FIZ - GL A -E,EXTERIOR SKIN,,CONSTRUCTION,PATRIOT,INSULATED METAL PANELS,,,2024-06-10 07:00,2024-06-10 17:00,2024-06-01 07:00,2024-06-02 17:00,2025-11-20 17:00,2025-11-20 17:00,2025-11-21 07:00,2025-11-21 07:00,0,10,100
CN.SEA5.1230,PH1-REMAINING FRP SLAB AROUND ELEVATORS - SEA5 FIZ - GL 6-1 - L2 - C-A -,Complete,SEA - 5,,SUES-5 - 6-1 - FIZ - GL A -E,L2 - SubFab Level,,CONSTRUCTION,,Cast-in Place Concrete - Baker Concrete,,,2024-01-02 09:00,2024-01-07 08:00,2024-01-02 07:00,2024-01-07 10:00,2025-11-20 17:00,2025-11-20 17:00,2025-12-05 17:00,2025-12-05 17:00,0,40,100
CN.SEA5.6240,PH1-REMAINING FRP SLAB AROUND ELEVATORS - SEA5 FIZ - GL 6-1 - L3 - C-A,Complete,SEA - 5,,SUES-5 - 6-1 - FIZ - GL A -E,L3 / Waffle Slab Level,,CONSTRUCTION,,Cast-in Place Concrete - Baker Concrete,,,2023-12-04 07:00,2023-12-08 17:00,2023-12-01 07:00,2023-12-05 17:00,2025-11-20 17:00,2025-11-20 17:00,2025-11-10 07:00,2025-11-10 07:00,0,40,100
CN.SEA5.6250,PH1-REMAINING FRP SLAB AROUND ELEVATORS - SEA5 FIZ - GL 6-1 - L4 - C-A - ROOF,Complete,SEA - 5,,SUES-5 - 6-1 - FIZ - GL A -E,L4 - SUP Roof - FAB Roof,,CONSTRUCTION,,Cast-in Place Concrete - Baker Concrete,,,2023-11-13 08:00,2023-11-18 08:00,2023-11-12 08:00,2023-11-14 11:00,2025-11-20 17:00,2025-11-20 17:00,2025-12-05 17:00,2025-12-05 17:00,0,40,100
CN.SEA54720,IMPACT - MCDEAN CABLE TRAY & MEP DUCT WORK OBSTRUCTION - SEA5 FIZ - GL 6-1 - L2 - C-A,Complete,SEA - 5,East Support Building,SUES-5 - 6-1 - FIZ - GL A -E,L2 - SubFab Level,ELECTRIC RM 4,CONSTRUCTION,,DRYWALL,AMBER CARO,INTERIORS,2024-01-02 09:00,2024-01-07 16:00,2023-11-01 07:00,2024-01-09 09:00,2025-11-20 17:00,2025-11-20 17:00,2025-11-24 07:00,2025-11-24 07:00,0,48,100
CN.AB.AR.6510,INSTALL VIP ROOM GLASS WINDOW & FRAME - SEA5 FIZ - GL 2 - G-F - L3,Complete,SEA - 5,East Support Building,SUES-5 - 6-1 - FIZ - GL A -E,L3 / Waffle Slab Level,ELECTRIC RM 2,CONSTRUCTION,BERG,TBD Architectural Finishes,AMBER CARO,INTERIORS,2024-09-23 07:00,2024-10-03 17:00,2024-09-21 07:00,2024-09-26 17:00,2025-11-20 17:00,2025-11-20 17:00,2025-12-05 17:00,2025-12-05 17:00,0,70,100
CN.AB.AR.6520,IMPACT - ROOF DRAIN OBSTRUCTION - SEA5 FIZ - GL 1 - L3 - C-A,Complete,SEA - 5,East Support Building,SUES-5 - 6-1 - FIZ - GL A -E,L3 / Waffle Slab Level,,CONSTRUCTION,SECAI,TBD Architectural Finishes,AMBER CARO,INTERIORS,2024-01-22 07:00,2024-01-25 17:00,2024-01-02 07:00,2024-03-26 17:00,2025-11-20 17:00,2025-11-20 17:00,2025-12-02 07:00,2025-12-02 07:00,0,40,100
CN.SEA5.1540,INSTALL INSULATED METAL PANEL MODULES - GL 6-3 - D LINE (AD AREA) [4~5 LEAVEOUT FOR SCAFFOLD],Complete,SEA - 5,,SUES-5 - 6-1 - FIZ - GL A -E,EXTERIOR SKIN,,CONSTRUCTION,KOVACH,INSULATED METAL PANELS,,,2024-07-05 07:00,2024-07-09 17:00,2024-07-01 07:00,2024-07-03 17:00,2025-11-20 17:00,2025-11-20 17:00,2025-11-21 07:00,2025-11-21 07:00,0,50,100
CN.SEB5.1280,INSTALL INSULATED METAL PANEL MODULES - GL 31-33 - D LINE (AD AREA),Complete,SEA - 5,,SUEN-5 - 31-33,EXTERIOR SKIN,,CONSTRUCTION,KOVACH,INSULATED METAL PANELS,,,2024-05-14 07:00,2024-05-19 17:00,2024-05-14 07:00,2024-06-01 17:00,2025-11-20 17:00,2025-11-20 17:00,2025-11-21 07:00,2025-11-21 07:00,0,60,100
CN.SEA5.1550,CLADDING STEEL - GL 3-5 - A LINE [SUP EXTERIOR WALL],Complete,SEA - 5,,SUES-5 - 6-1 - FIZ - GL A -E,EXTERIOR SKIN,,CONSTRUCTION,PATRIOT,INSULATED METAL PANELS,,,2024-04-01 07:00,2024-04-12 09:00,2024-03-26 07:00,2024-04-24 12:00,2025-11-20 17:00,2025-11-20 17:00,2025-11-21 07:00,2025-11-21 07:00,0,72,100
CN.SEA5.1560,INSTALL INSULATED METAL PANEL MODULES - GL 3-6 - A LINE [SUP EXTERIOR WALL & PH EXTERIOR WALL] - NIGHT SHIFT ONLY,Complete,SEA - 5,,SUES-5 - 6-1 - FIZ - GL A -E,EXTERIOR SKIN,,CONSTRUCTION,KOVACH,INSULATED METAL PANELS,,,2024-07-25 07:00,2024-08-02 17:00,2024-07-10 07:00,2024-08-02 17:00,2025-11-20 17:00,2025-11-20 17:00,2025-11-21 07:00,2025-11-21 07:00,0,90,100
CN.SEA5.6260,IMPACT [S.TIA-6] - F03B.05(SEQ9941) - DUCT SHAFT OPENING RETROFIT REVISION/FABRICATION - SEA5 - L3 - GL 3 - A-B.5,Complete,SEA - 5,East Support Building,SUES-5 - 6-1 - FIZ - GL A -E,L3 / Waffle Slab Level,,CONSTRUCTION,,SOMD,CONCRETE,,2023-11-20 07:00,2023-11-22 17:00,2023-11-17 07:00,2024-04-08 17:00,2025-11-20 17:00,2025-11-20 17:00,2025-06-13 08:00,2025-06-13 08:00,0,30,100
CN.SEA5.6270,IMPACT [CL 84-85] - SECAI TEMP STAIR & SUPER DECK REMOVAL - SEA5 - L1 - GL 1-5 - A LINE,Complete,SEA - 5,East Support Building,SUES-5 - 6-1 - FIZ - GL A -E,L1 - Fndn Slab,,CONSTRUCTION,,Pour Concrete,JAMES LEE,SOMD / Roofing / Waterproofing,2023-11-20 07:00,2023-12-07 09:00,2023-10-13 07:00,2024-02-17 14:00,2025-11-20 17:00,2025-11-20 17:00,2025-10-16 07:00,2025-10-16 07:00,0,112,100
CN.SEA5.1570,PH1- DS/AD DETAILING & DECKING  GL 6-3  SEA-5 L2- L3,Complete,SEA - 5,,SUES-5 - 6-1 - FIZ - GL A -E,DS/AD,,CONSTRUCTION,,,,,2023-11-20 08:00,2023-11-28 08:00,2023-11-20 08:00,2023-11-22 16:00,2025-11-20 17:00,2025-11-20 17:00,2025-06-13 08:00,2025-06-13 08:00,0,40,100
CN.SEA5.1580,KNEE WALL -SEA5 - GL 6-3 - L4 - C-E -DS/AD,Complete,SEA - 5,,SUES-5 - 6-1 - FIZ - GL A -E,DS/AD,,CONSTRUCTION,,Cast-in Place Concrete - Baker Concrete,,,2024-02-12 08:00,2024-02-15 10:00,2024-02-12 08:00,2024-02-15 10:00,2025-11-20 17:00,2025-11-20 17:00,2025-11-21 07:00,2025-11-21 07:00,0,32,100
CN.SEA54760,IMPACT - METAL STAIR PATRIOT TURNOVER - STAIR #22 - 6/D - ALL LEVELS,Complete,SEA - 5,West Support Building,SUES-5 - 6-1 - FIZ - GL A -E,INTERIOR STAIR TOWER - STAIR #22 - DE-SCOPED,,CONSTRUCTION,,INSULATED METAL PANELS,,INTERIORS,2023-12-04 07:00,2023-12-08 09:00,2023-11-17 07:00,2023-12-05 09:00,2025-11-20 17:00,2025-11-20 17:00,2025-10-27 09:00,2025-10-27 09:00,0,32,100
CN.SEA5.4031,AD STEEL PAINT FIREPROOFING IFRM - SEA5 FIZ - GL 6-3 - C-E - L2-CEILING,Complete,SEA - 5,,SUES-5 - 6-1 - FIZ - GL A -E,DS/AD,,CONSTRUCTION,ROLLING PLAINS,Fireproofing,,,2024-07-11 07:00,2024-07-18 17:00,2024-07-11 07:00,2024-07-17 17:00,2025-11-20 17:00,2025-11-20 17:00,2025-12-05 17:00,2025-12-05 17:00,0,60,100
CN.SEA5.4041,D-LINE STEEL SPRAY FIREPROOFING SFRM2 - SEA5 - L3-CEILING - GL 6-3,Complete,SEA - 5,,SUES-5 - 6-1 - FIZ - GL A -E,L4 - SUP Roof - FAB Roof,DS/AD INTERIORS,CONSTRUCTION,ROLLING PLAINS,Fireproofing,,,2024-04-15 07:00,2024-04-19 17:00,2024-04-15 07:00,2024-04-18 17:00,2025-11-20 17:00,2025-11-20 17:00,2025-06-13 08:00,2025-06-13 08:00,0,50,100
EMB6100,IMPACT - Missing Embeds (2) GL E3 and E4 L3A SEQ. 1701,Complete,SEA - 5,East Support Building,SUES-5 - 6-1 - FIZ - GL A -E,DS/AD,,CONSTRUCTION,,Steel Erection,SEAN MONK,,2023-10-09 07:00,2023-10-12 17:00,2023-10-12 07:00,2024-01-02 17:00,2025-11-20 17:00,2025-11-20 17:00,2025-10-16 07:00,2025-10-16 07:00,0,40,100
CN.SEA5.6300,DCC BEAM (STEEL STRUCTURE)- SEA5 FIZ - GL 6-1 - L3,Complete,SEA - 5,West Support Building,SUES-5 - 6-1 - FIZ - GL A -E,L3 / Waffle Slab Level,DS/AD INTERIORS,CONSTRUCTION,,TBD Architectural Finishes,FIZ DATA CENTER,INTERIORS,2024-02-02 08:00,2024-02-10 10:00,2024-02-02 08:00,2024-02-06 15:00,2025-11-20 17:00,2025-11-20 17:00,2025-06-13 08:00,2025-06-13 08:00,0,72,100
CN.SEA5.6310,TEMPORARY SCAFFOLD PLATFORM - SEA5 FIZ - GL 6-1 - L3 D LINE,Complete,SEA - 5,West Support Building,SUES-5 - 6-1 - FIZ - GL A -E,L3 / Waffle Slab Level,DS/AD INTERIORS,CONSTRUCTION,,TBD Architectural Finishes,FIZ DATA CENTER,INTERIORS,2024-02-12 08:00,2024-02-16 16:00,2024-02-12 08:00,2024-02-16 16:00,2025-11-20 17:00,2025-11-20 17:00,2025-06-13 08:00,2025-06-13 08:00,0,48,100
CN.SEA5.6320,MEP IN WALL ROUGH INS GL 6-3 - L3 - D LINE,Complete,SEA - 5,West Support Building,SUES-5 - 6-1 - FIZ - GL A -E,L3 / Waffle Slab Level,DS/AD INTERIORS,CONSTRUCTION,,TBD Architectural Finishes,FIZ DATA CENTER,INTERIORS,2024-04-15 07:00,2024-04-19 17:00,2024-04-15 07:00,2024-04-18 17:00,2025-11-20 17:00,2025-11-20 17:00,2025-06-13 08:00,2025-06-13 08:00,0,50,100
CN.SEA5.6330,Drywall Clips & AMTS Installs Support Beams - SEA5 - GL 6-3 - L4- D LINE,Complete,SEA - 5,,SUES-5 - 6-1 - FIZ - GL A -E,L4 - SUP Roof - FAB Roof,DS/AD INTERIORS,CONSTRUCTION,,Fireproofing,,,2024-03-23 08:00,2024-03-30 10:00,2024-03-04 00:00,2024-03-13 00:00,2025-11-20 17:00,2025-11-20 17:00,2025-11-24 07:00,2025-11-24 07:00,0,72,100
CN.SEA5.6340,DS STEEL SPRAY SRFM - SEA5 -L4 6-3/C-D,Complete,SEA - 5,,SUES-5 - 6-1 - FIZ - GL A -E,L4 - SUP Roof - FAB Roof,DS/AD INTERIORS,CONSTRUCTION,ROLLING PLAINS,Fireproofing,,,2024-03-19 07:00,2024-03-26 17:00,2024-03-19 07:00,2024-03-25 17:00,2025-11-20 17:00,2025-11-20 17:00,2025-12-05 17:00,2025-12-05 17:00,0,50,100
CN.SEA5.6350,ADD FLANGE EXTENSIONS/ CUT GRATING SEA5 FIZ - GL 6-3 - L3- D LINE,Complete,SEA - 5,,SUES-5 - 6-1 - FIZ - GL A -E,L3 / Waffle Slab Level,DS/AD INTERIORS,CONSTRUCTION,,Fireproofing,,,2024-02-20 07:00,2024-02-22 11:00,2024-02-20 07:00,2024-02-23 11:00,2025-11-20 17:00,2025-11-20 17:00,2025-06-13 08:00,2025-06-13 08:00,0,24,100
CN.SEA5.6360,AD STEEL APPLY INTUMESCENT - SEA5 - GL 6-3/D-E - L3 CEILING,Complete,SEA - 5,,SUES-5 - 6-1 - FIZ - GL A -E,L4 - SUP Roof - FAB Roof,DS/AD INTERIORS,CONSTRUCTION,ROLLING PLAINS,Fireproofing,,,2024-05-21 16:49,2024-06-04 07:12,2024-05-23 16:49,2024-05-28 13:00,2025-11-20 17:00,2025-11-20 17:00,2025-06-13 08:00,2025-06-13 08:00,0,60.383333,100
CN.SEA5.6450,DS SPRAY FIREPROOFING SFRM (READY MEP DUCT) - SEA5 - L4&L5 CEILING GL 6-3/C-D,Complete,SEA - 5,,SUES-5 - 6-1 - FIZ - GL A -E,L4 - SUP Roof - FAB Roof,DS/AD INTERIORS,CONSTRUCTION,ROLLING PLAINS,Fireproofing,,,2024-05-28 07:00,2024-06-06 17:00,2024-05-25 07:00,2024-06-03 17:00,2025-11-20 17:00,2025-11-20 17:00,2025-11-14 07:00,2025-11-14 07:00,0,60,100
CN.SEA5.6480,REMAINING - TAPE & FINISH DRYWALL - SEA5 FIZ - GL 6-1 - L1 - D LINE,Complete,SEA - 5,West Support Building,SUES-5 - 6-1 - FIZ - GL A -E,L1 - Fndn Slab,DS/AD INTERIORS,CONSTRUCTION,,DRYWALL,FIZ DATA CENTER,INTERIORS,2024-01-29 07:00,2024-01-31 11:00,2024-01-29 07:00,2024-01-30 11:00,2025-11-20 17:00,2025-11-20 17:00,2025-12-01 17:00,2025-12-01 17:00,0,24,100
CN.SEA5.6490,REMAINING FRAMING & DRYWALL - ELEVATOR 22 - ALL LEVELS,Complete,SEA - 5,West Support Building,SUES-5 - 6-1 - FIZ - GL A -E,,ELEVATOR,CONSTRUCTION,BERG,DRYWALL,,INTERIORS,2024-03-25 07:00,2024-04-23 17:00,2024-03-15 07:00,2024-08-11 17:00,2025-11-20 17:00,2025-11-20 17:00,2025-11-24 07:00,2025-11-24 07:00,0,200,100
CN.SEA5.6500,IMPACT [C27] - STARCON LAYOUT - SEA5 FIZ A LINE [SUP EXTERIOR WALL] GL 3-6 - C-E,Complete,SEA - 5,,SUES-5 - 6-1 - FIZ - GL A -E,EXTERIOR SKIN,,CONSTRUCTION,,INSULATED METAL PANELS,,,2024-02-10 14:00,2024-02-14 14:00,2024-01-04 14:00,2024-03-15 13:00,2025-11-20 17:00,2025-11-20 17:00,2025-11-21 07:00,2025-11-21 07:00,0,40,100
CN.SEA5.6510,IMPACT - FIZ ROOF OFFICE MATERIAL IN THE WAY - DS/AD - SEA5 FIZ - GL 6-1 - C-E - L4 & L4/E,Complete,SEA - 5,East Support Building,SUES-5 - 6-1 - FIZ - GL A -E,DS/AD,,CONSTRUCTION,,SOMD,CONCRETE,,2024-01-24 11:00,2024-01-26 15:00,2024-01-18 11:00,2024-01-21 11:00,2025-11-20 17:00,2025-11-20 17:00,2025-10-16 07:00,2025-10-16 07:00,0,24,100
CN.SEA54770,INSTALL RAISED ACCESS FLOORING - I/O FAB116108 - SUE - L1- GL A/6,Complete,SEA - 5,,SUES-5 - 6-1 - FIZ - GL A -E,L1 - Fndn Slab,OAC MECH RM,CONSTRUCTION,SELECT PREFAB,TBD Architectural Finishes,,,2025-02-24 07:00,2025-03-05 17:00,2025-02-24 07:00,2025-02-26 17:00,2025-11-20 17:00,2025-11-20 17:00,2025-11-21 07:00,2025-11-21 07:00,0,80,100
CN.SEA54780,INSTALL RAISED ACCESS FLOORING -/O FAB146107SUE -L4- SE PH,Not Started,SEA - 5,,SUES-5 - 6-1 - FIZ - GL A -E,L4 - SUP Roof - FAB Roof,OAC MECH RM,CONSTRUCTION,SELECT PREFAB,TBD Architectural Finishes,,,2025-11-24 07:00,2025-11-26 17:00,,,2025-11-24 07:00,2025-11-26 17:00,2025-11-21 07:00,2025-11-25 17:00,30,30,0
CN.SEA54790,INSTALL RAISED ACCESS FLOORING - L2 - DATA CENTER A,Complete,SEA - 5,,SUES-5 - 6-1 - FIZ - GL A -E,L2 - SubFab Level,OAC MECH RM,CONSTRUCTION,SELECT PREFAB,TBD Architectural Finishes,,,2025-03-06 07:00,2025-03-17 17:00,2025-03-06 07:00,2025-03-07 17:00,2025-11-20 17:00,2025-11-20 17:00,2025-11-21 07:00,2025-11-21 07:00,0,80,100
CN.SEA5.6550,IMPACT [S.TIA-19] - ELEVATOR 22 HSS SPLICE CONNECTION - SEA5 FIZ,Complete,SEA - 5,West Support Building,ELEVATORS,L1 - Fndn Slab,ELEVATOR,PRE - CON / BUYOUT / IMPACTS,,TBD Architectural Finishes,,INTERIORS,2024-03-18 07:00,2024-03-26 09:00,2023-11-09 07:00,2024-03-15 14:00,2025-11-20 17:00,2025-11-20 17:00,2025-11-24 07:00,2025-11-24 07:00,0,62,100
CN.SEA5.6560,INSTALL ELEVATOR HSS STEEL DOOR OPENINGS - ELEVATOR 22 - SEA5 - GL 6-1 - L2-3,Complete,SEA - 5,West Support Building,SUES-5 - 6-1 - FIZ - GL A -E,,ELEVATOR,CONSTRUCTION,W&W,DRYWALL,,INTERIORS,2024-04-08 07:00,2024-04-18 11:00,2024-03-25 07:00,2024-04-24 17:00,2025-11-20 17:00,2025-11-20 17:00,2025-11-24 07:00,2025-11-24 07:00,0,64,100
CN.SEA5.6610,INSTALL CRICKET - GL 6-5 - C-A - L4 ROOF,Complete,SEA - 5,East Support Building,SUES-5 - 6-1 - FIZ - GL A -E,L4 - SUP Roof - FAB Roof,,CONSTRUCTION,BRAZOS,TOPPING,,SOMD / Roofing / Waterproofing,2024-08-23 07:00,2024-08-23 17:00,2024-08-12 07:00,2024-08-12 17:00,2025-11-20 17:00,2025-11-20 17:00,2025-12-05 17:00,2025-12-05 17:00,0,10,100
CN.SEA5.6620,INSPECT CRICKET - GL 6-5 - C-A - L4 ROOF,Complete,SEA - 5,East Support Building,SUES-5 - 6-1 - FIZ - GL A -E,L4 - SUP Roof - FAB Roof,,CONSTRUCTION,BRAZOS,TOPPING,,SOMD / Roofing / Waterproofing,2024-08-23 07:00,2024-08-23 17:00,2024-08-12 07:00,2024-08-12 17:00,2025-11-20 17:00,2025-11-20 17:00,2025-12-05 17:00,2025-12-05 17:00,0,10,100
CN.SEA5.6630,INSTALL PRIMER CRICKET - GL 6-5 - C-A - L4 ROOF,Complete,SEA - 5,East Support Building,SUES-5 - 6-1 - FIZ - GL A -E,L4 - SUP Roof - FAB Roof,,CONSTRUCTION,BRAZOS,TOPPING,,SOMD / Roofing / Waterproofing,2024-08-26 07:00,2024-08-26 17:00,2024-08-13 07:00,2024-08-13 17:00,2025-11-20 17:00,2025-11-20 17:00,2025-12-05 17:00,2025-12-05 17:00,0,10,100
CN.SEA5.6640,INSPECT PRIMER CRICKET - GL 6-5 - C-A - L4 ROOF,Complete,SEA - 5,East Support Building,SUES-5 - 6-1 - FIZ - GL A -E,L4 - SUP Roof - FAB Roof,,CONSTRUCTION,BRAZOS,TOPPING,,SOMD / Roofing / Waterproofing,2024-08-26 07:00,2024-08-26 17:00,2024-08-13 07:00,2024-08-13 17:00,2025-11-20 17:00,2025-11-20 17:00,2025-12-05 17:00,2025-12-05 17:00,0,10,100
CN.SEA5.6660,IMPACT - D-LINE STEEL SPRAY FIREPROOFING SFRM2 - SEA5 - L3-CEILING - GL 6-3 - INSPECT SURFACE PREP ADDITIONAL STEEL,Complete,SEA - 5,,SUES-5 - 6-1 - FIZ - GL A -E,L4 - SUP Roof - FAB Roof,DS/AD INTERIORS,CONSTRUCTION,ROLLING PLAINS,Fireproofing,,,2024-04-04 07:00,2024-04-15 17:00,2024-04-04 07:00,2024-04-12 17:00,2025-11-20 17:00,2025-11-20 17:00,2025-06-13 08:00,2025-06-13 08:00,0,60,100
CN.SWB5.8010,IMPACT - L4A PRECAST CONFLICT - ELEVATOR 18 - RFI 6444 - ERECT STEEL - NE PENTHOUSE,Complete,SEA - 5,East Support Building,NORTH EAST PENTHOUSE,L4 - SUP Roof - FAB Roof,,CONSTRUCTION,W&W,Steel Erection,SEAN MONK,,2024-02-05 09:00,2024-02-16 15:00,2024-03-10 07:00,2024-05-02 17:00,2025-11-20 17:00,2025-11-20 17:00,2025-11-17 07:00,2025-11-17 07:00,0,96,100
CN.SEB5.8020,IMPACT - CLADDING POSTS ELEVATION ISSUE - L4C - RFI 1264 - NE PENTHOUSE,Complete,SEA - 5,East Support Building,NORTH EAST PENTHOUSE,L4 - SUP Roof - FAB Roof,,CONSTRUCTION,,Steel Erection,SEAN MONK,,2024-02-05 09:00,2024-02-15 15:00,2024-03-10 08:00,2024-04-01 09:00,2025-11-20 17:00,2025-11-20 17:00,2025-11-17 07:00,2025-11-17 07:00,0,96,100
CN.SWB5.8030,IMPACT - CLADDING POSTS ELEVATION ISSUE - L4C - RFI 1264 ANSWER - NW PENTHOUSE (CCD 269),Complete,SEA - 5,East Support Building,NORTH WEST PENTHOUSE,L4 - SUP Roof - FAB Roof,,CONSTRUCTION,,Steel Erection,SEAN MONK,,2024-02-05 09:00,2024-02-15 15:00,2024-03-10 08:00,2024-04-01 09:00,2025-11-20 17:00,2025-11-20 17:00,2025-11-17 07:00,2025-11-17 07:00,0,96,100
CN.SWA5.8040,IMPACT [C35] - ELEVATOR 1B BENT PLATE & L4A BEAM - ERECT STEEL - SW PENTHOUSE,Complete,SEA - 5,East Support Building,SOUTH WEST PENTHOUSE,L4 - SUP Roof - FAB Roof,,CONSTRUCTION,W&W,Steel Erection,SEAN MONK,,2024-04-19 07:00,2024-04-25 17:00,2024-04-16 07:00,2024-04-24 17:00,2025-11-20 17:00,2025-11-20 17:00,2025-12-01 07:00,2025-12-01 07:00,0,50,100
CN.SWB5.8830,IMPACT - CLADDING POSTS ELEVATION ISSUE - L4C - CCD 269 APPROVAL - NW PENTHOUSE,Complete,SEA - 5,East Support Building,NORTH WEST PENTHOUSE,L4 - SUP Roof - FAB Roof,,CONSTRUCTION,PATRIOT,Steel Erection,SEAN MONK,,2024-04-08 07:00,2024-04-15 17:00,2024-04-02 07:00,2024-04-11 17:00,2025-11-20 17:00,2025-11-20 17:00,2025-11-17 07:00,2025-11-17 07:00,0,40,100
CN.SWB5.8840,IMPACT - CLADDING POSTS ELEVATION ISSUE - L4C - SWITCH INSTALL STEEL - NW PENTHOUSE,Complete,SEA - 5,East Support Building,NORTH WEST PENTHOUSE,L4 - SUP Roof - FAB Roof,,CONSTRUCTION,PATRIOT,Steel Erection,SEAN MONK,,2024-05-20 07:00,2024-06-03 17:00,2024-04-29 07:00,2024-05-21 17:00,2025-11-20 17:00,2025-11-20 17:00,2025-11-17 07:00,2025-11-17 07:00,0,80,100
CN.SEB5.8850,IMPACT - CLADDING POSTS ELEVATION ISSUE - L4C - CCD 269 APPROVAL - NE PENTHOUSE,Complete,SEA - 5,East Support Building,NORTH EAST PENTHOUSE,L4 - SUP Roof - FAB Roof,,CONSTRUCTION,PATRIOT,Steel Erection,SEAN MONK,,2024-04-08 07:00,2024-04-15 17:00,2024-04-02 07:00,2024-04-11 17:00,2025-11-20 17:00,2025-11-20 17:00,2025-11-17 07:00,2025-11-17 07:00,0,40,100
CN.SEB5.8860,IMPACT - CLADDING POSTS ELEVATION ISSUE - L4C -SWITCH/ INSTALL STEEL - NE PENTHOUSE,Complete,SEA - 5,East Support Building,NORTH EAST PENTHOUSE,L4 - SUP Roof - FAB Roof,,CONSTRUCTION,PATRIOT,Steel Erection,SEAN MONK,,2024-05-20 07:00,2024-06-03 17:00,2024-05-06 07:00,2024-05-16 17:00,2025-11-20 17:00,2025-11-20 17:00,2025-11-17 07:00,2025-11-17 07:00,0,80,100
CN.SEA5.8060,IMPACT - AD STEEL APPLY INTUMESCENT - SEA5 - L3-CEILINGE - GL 6-3/D-E - INSPECT - SURFACE PREP ADDITIONAL STEELS,Complete,SEA - 5,,SUES-5 - 6-1 - FIZ - GL A -E,L4 - SUP Roof - FAB Roof,DS/AD INTERIORS,CONSTRUCTION,ROLLING PLAINS,Fireproofing,,,2024-05-13 07:00,2024-05-30 17:00,2024-05-13 07:00,2024-05-24 17:00,2025-11-20 17:00,2025-11-20 17:00,2025-06-13 08:00,2025-06-13 08:00,0,100,100
CN.SEA5.8080,IMPACT - SECAI / STARCON CRANE IN THE WAY - GL 1-6 - A LINE [SUP EXTERIOR WALL],Complete,SEA - 5,,SUES-5 - 6-1 - FIZ - GL A -E,EXTERIOR SKIN,,CONSTRUCTION,PATRIOT,INSULATED METAL PANELS,,,2024-05-31 07:00,2024-06-17 17:00,2024-04-29 07:00,2024-05-31 17:00,2025-11-20 17:00,2025-11-20 17:00,2025-11-21 07:00,2025-11-21 07:00,0,100,100
CN.SEA5.8100,D LINE STEEL SPRAY FIREPROOFING SFRM - SEA5 FIZ - GL 6-3 - D - L2-CEILING,Complete,SEA - 5,,SUES-5 - 6-1 - FIZ - GL A -E,DS/AD,,CONSTRUCTION,ROLLING PLAINS,Fireproofing,,,2024-05-21 07:00,2024-06-06 17:00,2024-05-21 07:00,2024-05-28 17:00,2025-11-20 17:00,2025-11-20 17:00,2025-12-05 17:00,2025-12-05 17:00,0,90,100
CN.SEA5.8110,D LINE STEEL SPRAY FIREPROOFING SFRM - SEA4 - GL 9-6 - D - L2-CEILING,Complete,SEA - 5,,SUES-4 - 9-6,DS/AD,,CONSTRUCTION,ROLLING PLAINS,Fireproofing,,,2024-05-16 12:00,2024-06-03 12:00,2024-05-14 12:00,2024-05-28 12:00,2025-11-20 17:00,2025-11-20 17:00,2025-12-05 17:00,2025-12-05 17:00,0,90,100
CN.SEA5.8120,D LINE STEEL SPRAY FIREPROOFING SFRM - SEA4 - GL 13-9 - D - L2-CEILING,Complete,SEA - 5,,SUES-3 - 13-9,DS/AD,,CONSTRUCTION,ROLLING PLAINS,Fireproofing,,,2024-05-14 12:00,2024-05-31 12:00,2024-05-14 12:00,2024-05-28 12:00,2025-11-20 17:00,2025-11-20 17:00,2025-12-05 17:00,2025-12-05 17:00,0,90,100
CN.SEA5.8130,D LINE STEEL SPRAY FIREPROOFING SFRM - SEA4 - GL 19-16 - D - L2-CEILING,Complete,SEA - 5,,SUES-1 - 19-16,DS/AD,,CONSTRUCTION,ROLLING PLAINS,Fireproofing,,,2024-06-07 07:00,2024-06-17 17:00,2024-06-07 07:00,2024-06-14 17:00,2025-11-20 17:00,2025-11-20 17:00,2025-12-05 17:00,2025-12-05 17:00,0,60,100
CN.SEA5.8140,D LINE STEEL SPRAY FIREPROOFING SFRM - SEA4 - GL 19-22 - D - L2-CEILING,Complete,SEA - 5,,SUEN-1 - 19-22,DS/AD,,CONSTRUCTION,ROLLING PLAINS,Fireproofing,,,2024-06-06 07:00,2024-06-14 17:00,2024-06-06 07:00,2024-06-13 17:00,2025-11-20 17:00,2025-11-20 17:00,2025-12-05 17:00,2025-12-05 17:00,0,60,100
CN.SEA5.8150,D LINE STEEL SPRAY FIREPROOFING SFRM - SEA4 - GL 22-25 - D - L2-CEILING,Complete,SEA - 5,,SUEN-2 - 22-25,DS/AD,,CONSTRUCTION,ROLLING PLAINS,Fireproofing,,,2024-06-06 07:00,2024-06-14 17:00,2024-06-06 07:00,2024-06-13 17:00,2025-11-20 17:00,2025-11-20 17:00,2025-12-05 17:00,2025-12-05 17:00,0,60,100
CN.SEA5.8160,D LINE STEEL SPRAY FIREPROOFING SFRM - SEA4 - GL 28-31 - D - L2-CEILING,Complete,SEA - 5,,SUEN-4 - 28-31,DS/AD,,CONSTRUCTION,ROLLING PLAINS,Fireproofing,,,2024-05-31 07:00,2024-06-10 17:00,2024-05-31 07:00,2024-06-04 17:00,2025-11-20 17:00,2025-11-20 17:00,2025-12-05 17:00,2025-12-05 17:00,0,60,100
CN.SEA5.8170,D LINE STEEL SPRAY FIREPROOFING SFRM - SEA4 - GL 31-33 - D - L2-CEILING,Complete,SEA - 5,,SUEN-5 - 31-33,DS/AD,,CONSTRUCTION,ROLLING PLAINS,Fireproofing,,,2024-05-31 07:00,2024-06-10 17:00,2024-05-31 07:00,2024-06-04 17:00,2025-11-20 17:00,2025-11-20 17:00,2025-12-05 17:00,2025-12-05 17:00,0,60,100
CN.SEA5.8180,K LINE STEEL SPRAY FIREPROOFING SFRM  - SEA4 - GL 6-1 - D - L2-CEILING,Complete,SEA - 5,,FIZ 2 / SUWS 5  (GL6-1) - GL J - N - DATA CENTER 1,DS/AD,,CONSTRUCTION,ROLLING PLAINS,Fireproofing,,,2024-05-20 07:00,2024-06-04 17:00,2024-05-20 07:00,2024-05-25 17:00,2025-11-20 17:00,2025-11-20 17:00,2025-12-05 17:00,2025-12-05 17:00,0,90,100
CN.SEA5.8190,K LINE STEEL SPRAY FIREPROOFING SFRM - SEA4 - GL 12-9 - D - L2 CEILING,Complete,SEA - 5,,SUWS-3 - 12-9,DS/AD,,CONSTRUCTION,ROLLING PLAINS,Fireproofing,,,2024-05-20 07:00,2024-06-04 17:00,2024-05-20 07:00,2024-05-25 17:00,2025-11-20 17:00,2025-11-20 17:00,2025-12-05 17:00,2025-12-05 17:00,0,90,100
CN.SEA5.8200,K LINE STEEL SPRAY FIREPROOFING SFRM - SEA4 - GL 15-12 - D - L2-CEILING,Complete,SEA - 5,,SUWS-2 - 15-12,DS/AD,,CONSTRUCTION,ROLLING PLAINS,Fireproofing,,,2024-06-03 07:00,2024-06-17 17:00,2024-06-01 07:00,2024-06-13 17:00,2025-11-20 17:00,2025-11-20 17:00,2025-12-05 17:00,2025-12-05 17:00,0,90,100
CN.SEA5.8210,K LINE STEEL SPRAY FIREPROOFING SFRM - SEA4 - GL 18-15 - D - L2-CEILING,Complete,SEA - 5,,SUWS-1 - 18-15,DS/AD,,CONSTRUCTION,ROLLING PLAINS,Fireproofing,,,2024-06-14 07:00,2024-06-28 17:00,2024-06-14 07:00,2024-06-18 17:00,2025-11-20 17:00,2025-11-20 17:00,2025-12-05 17:00,2025-12-05 17:00,0,90,100
CN.SEA5.8220,K LINE STEEL SPRAY FIREPROOFING SFRM  - SEA4 - GL 18-21 - D - L2-CEILING,Complete,SEA - 5,,SUWN-1 - 18-21,DS/AD,,CONSTRUCTION,ROLLING PLAINS,Fireproofing,,,2024-06-14 07:00,2024-06-28 17:00,2024-06-14 07:00,2024-06-18 17:00,2025-11-20 17:00,2025-11-20 17:00,2025-12-05 17:00,2025-12-05 17:00,0,90,100
CN.SEA5.8230,K LINE STEEL SPRAY FIREPROOFING SFRM  - SEA4 - GL 21-24 - D - L2-CEILING,Complete,SEA - 5,,SUWN-2 - 21-24,DS/AD,,CONSTRUCTION,ROLLING PLAINS,Fireproofing,,,2024-06-14 07:00,2024-06-28 17:00,2024-06-14 07:00,2024-06-18 17:00,2025-11-20 17:00,2025-11-20 17:00,2025-12-05 17:00,2025-12-05 17:00,0,90,100
CN.SEA5.8240,K LINE STEEL SPRAY FIREPROOFING SFRM  - SEA4 - GL 24-27 - D - L2-CEILING,Complete,SEA - 5,,SUWN-3 - 24-27,DS/AD,,CONSTRUCTION,ROLLING PLAINS,Fireproofing,,,2024-06-14 07:00,2024-06-28 17:00,2024-06-14 07:00,2024-06-18 17:00,2025-11-20 17:00,2025-11-20 17:00,2025-12-05 17:00,2025-12-05 17:00,0,90,100
CN.SEA5.8250,K LINE STEEL SPRAY FIREPROOFING SFRM  - SEA4 - GL 27-30 - D - L2-CEILING,Complete,SEA - 5,,SUWN-4 - 27-30,DS/AD,,CONSTRUCTION,ROLLING PLAINS,Fireproofing,,,2024-06-17 07:00,2024-07-01 17:00,2024-06-17 07:00,2024-06-25 17:00,2025-11-20 17:00,2025-11-20 17:00,2025-12-05 17:00,2025-12-05 17:00,0,90,100
CN.SEA5.8260,K LINE STEEL SPRAY FIREPROOFING SFRM  - SEA4 - GL 30-33 - D - L2-CEILING,Complete,SEA - 5,,SUWN-5 - 30-33,DS/AD,,CONSTRUCTION,ROLLING PLAINS,Fireproofing,,,2024-06-18 07:00,2024-07-02 17:00,2024-06-18 07:00,2024-06-25 17:00,2025-11-20 17:00,2025-11-20 17:00,2025-12-05 17:00,2025-12-05 17:00,0,90,100
CN.SEA5.8980,REMEDY - DEMO DRYWALL (INT)  - SEA5 FIZ - GL 3-6 - L2 - D LINE,Complete,SEA - 5,West Support Building,SUES-5 - 6-1 - FIZ - GL A -E,L2 - SubFab Level,DS/AD INTERIORS,CONSTRUCTION,BERG,DRYWALL,FIZ DATA CENTER,INTERIORS,2024-07-08 07:00,2024-07-15 15:00,2024-07-08 07:00,2024-07-11 15:00,2025-11-20 17:00,2025-11-20 17:00,2025-11-24 07:00,2025-11-24 07:00,0,48,100
CN.SEA5.9010,IMPACT - REMEDY - TAPE & FINISH DRYWALL - SEA5 FIZ - GL 6-3 - D LINE - L1,Complete,SEA - 5,West Support Building,SUES-5 - 6-1 - FIZ - GL A -E,L1 - Fndn Slab,DS/AD INTERIORS,CONSTRUCTION,CHERRY COATING,DRYWALL,FIZ DATA CENTER,INTERIORS,2024-10-21 07:00,2024-10-24 17:00,2024-10-01 07:00,2024-10-07 17:00,2025-11-20 17:00,2025-11-20 17:00,2025-11-24 07:00,2025-11-24 07:00,0,30,100
CN.SEA5.9000,IMPACT - REMEDY - FRAME & DRYWALL - SEA5 FIZ - GL 6-3 - D LINE - L1,Complete,SEA - 5,West Support Building,SUES-5 - 6-1 - FIZ - GL A -E,L1 - Fndn Slab,DS/AD INTERIORS,CONSTRUCTION,BERG,DRYWALL,FIZ DATA CENTER,INTERIORS,2024-07-26 07:00,2024-08-19 17:00,2024-07-22 07:00,2024-09-19 17:00,2025-11-20 17:00,2025-11-20 17:00,2025-11-24 07:00,2025-11-24 07:00,0,150,100
CN.SEA5.8990,IMPACT - REMEDY - DEMO DRYWALL (INT) - GL 6-1 - L1 - D LINE,Complete,SEA - 5,West Support Building,SUES-5 - 6-1 - FIZ - GL A -E,L1 - Fndn Slab,DS/AD INTERIORS,CONSTRUCTION,,DRYWALL,FIZ DATA CENTER,INTERIORS,2024-05-29 12:00,2024-06-06 12:00,2024-05-16 09:01,2024-05-24 17:00,2025-11-20 17:00,2025-11-20 17:00,2025-11-13 17:00,2025-11-13 17:00,0,70,100
CN.SEA5.9040,IMPACT - REMEDY - TAPE & FINISH DRYWALL - SEA5- GL 9-6 - D LINE - L1,Complete,SEA - 5,West Support Building,SUES-4 - 9-6,L1 - Fndn Slab,DS/AD INTERIORS,CONSTRUCTION,CHERRY COATING,DRYWALL,FIZ DATA CENTER,INTERIORS,2024-09-20 07:00,2024-09-24 17:00,2024-09-09 07:00,2024-09-12 17:00,2025-11-20 17:00,2025-11-20 17:00,2025-11-13 17:00,2025-11-13 17:00,0,30,100
CN.SEA5.9030,IMPACT - REMEDY - FRAME & DRYWALL - SEA5- GL 9-6 - D LINE - L1,Complete,SEA - 5,West Support Building,SUES-4 - 9-6,L1 - Fndn Slab,DS/AD INTERIORS,CONSTRUCTION,BERG,DRYWALL,FIZ DATA CENTER,INTERIORS,2024-08-16 07:00,2024-08-30 17:00,2024-08-08 07:00,2024-09-07 17:00,2025-11-20 17:00,2025-11-20 17:00,2025-11-13 17:00,2025-11-13 17:00,0,100,100
CN.SEA5.9020,IMPACT - REMEDY - DEMO DRYWALL (INT) - GL 9-6 - L1 - D LINE,Complete,SEA - 5,West Support Building,SUES-4 - 9-6,L1 - Fndn Slab,DS/AD INTERIORS,CONSTRUCTION,,DRYWALL,FIZ DATA CENTER,INTERIORS,2024-05-29 12:00,2024-06-06 12:00,2024-05-16 14:02,2024-05-24 17:00,2025-11-20 17:00,2025-11-20 17:00,2025-11-13 17:00,2025-11-13 17:00,0,70,100
CN.SEA5.9070,IMPACT - REMEDY - TAPE & FINISH DRYWALL - SEA3 - GL 13-9 - D LINE - L1,Complete,SEA - 5,West Support Building,SUES-3 - 13-9,L1 - Fndn Slab,DS/AD INTERIORS,CONSTRUCTION,CHERRY COATING,DRYWALL,FIZ DATA CENTER,INTERIORS,2024-09-20 07:00,2024-09-24 17:00,2024-09-10 07:00,2024-09-19 17:00,2025-11-20 17:00,2025-11-20 17:00,2025-11-24 07:00,2025-11-24 07:00,0,30,100
CN.SEA5.9060,IMPACT - REMEDY - FRAME & DRYWALL - SEA3 - GL 13-9 - D LINE - L1,Complete,SEA - 5,West Support Building,SUES-3 - 13-9,L1 - Fndn Slab,DS/AD INTERIORS,CONSTRUCTION,BERG,DRYWALL,FIZ DATA CENTER,INTERIORS,2024-08-09 07:00,2024-08-26 17:00,2024-08-02 07:00,2024-09-05 17:00,2025-11-20 17:00,2025-11-20 17:00,2025-11-24 07:00,2025-11-24 07:00,0,100,100
CN.SEA5.9050,IMPACT - REMEDY - DEMO DRYWALL (INT) - GL 13-9 - L1 - D LINE,Complete,SEA - 5,West Support Building,SUES-3 - 13-9,L1 - Fndn Slab,DS/AD INTERIORS,CONSTRUCTION,,DRYWALL,FIZ DATA CENTER,INTERIORS,2024-06-04 12:00,2024-06-13 12:00,2024-05-23 12:00,2024-06-04 17:00,2025-11-20 17:00,2025-11-20 17:00,2025-11-24 07:00,2025-11-24 07:00,0,70,100
CN.SEA5.9100,IMPACT - REMEDY - TAPE & FINISH DRYWALL - SEA2 - GL 16-13 - D LINE - L1,Complete,SEA - 5,West Support Building,SUES-2 - 16-13,L1 - Fndn Slab,DS/AD INTERIORS,CONSTRUCTION,CHERRY COATING,DRYWALL,FIZ DATA CENTER,INTERIORS,2024-09-10 07:00,2024-09-13 17:00,2024-09-10 07:00,2024-09-13 17:00,2025-11-20 17:00,2025-11-20 17:00,2025-12-01 17:00,2025-12-01 17:00,0,30,100
CN.SEA5.9080,IMPACT - REMEDY - FRAME & DRYWALL - SEA2 - GL 16-13 - D LINE - L1,Complete,SEA - 5,West Support Building,SUES-2 - 16-13,L1 - Fndn Slab,DS/AD INTERIORS,CONSTRUCTION,BERG,DRYWALL,FIZ DATA CENTER,INTERIORS,2024-07-17 07:00,2024-08-06 17:00,2024-07-17 07:00,2024-08-27 17:00,2025-11-20 17:00,2025-11-20 17:00,2025-11-24 07:00,2025-11-24 07:00,0,150,100
CN.SEA5.9090,IMPACT - REMEDY - DEMO DRYWALL (INT) - GL 16-13 - L1 - D LINE,Complete,SEA - 5,West Support Building,SUES-2 - 16-13,L1 - Fndn Slab,DS/AD INTERIORS,CONSTRUCTION,,DRYWALL,FIZ DATA CENTER,INTERIORS,2024-06-04 12:00,2024-06-13 12:00,2024-05-26 10:01,2024-06-04 17:00,2025-11-20 17:00,2025-11-20 17:00,2025-11-24 07:00,2025-11-24 07:00,0,70,100
CN.SEA5.9130,IMPACT - REMEDY - TAPE & FINISH DRYWALL - SEA3 - GL 19-16 - D LINE - L1,Complete,SEA - 5,West Support Building,SUES-1 - 19-16,L1 - Fndn Slab,DS/AD INTERIORS,CONSTRUCTION,CHERRY COATING,DRYWALL,FIZ DATA CENTER,INTERIORS,2024-09-09 07:00,2024-09-12 17:00,2024-09-07 07:00,2024-09-10 17:00,2025-11-20 17:00,2025-11-20 17:00,2025-12-01 17:00,2025-12-01 17:00,0,30,100
CN.SEA5.9110,IMPACT - REMEDY - FRAME & DRYWALL - SEA3 - GL 19-16 - D LINE - L1,Complete,SEA - 5,West Support Building,SUES-1 - 19-16,L1 - Fndn Slab,DS/AD INTERIORS,CONSTRUCTION,BERG,DRYWALL,FIZ DATA CENTER,INTERIORS,2024-08-09 07:00,2024-08-26 17:00,2024-08-03 07:00,2024-08-27 17:00,2025-11-20 17:00,2025-11-20 17:00,2025-12-01 17:00,2025-12-01 17:00,0,100,100
CN.SEA5.9120,IMPACT - REMEDY - DEMO DRYWALL (INT) - GL 19-16 - L1 - D LINE,Complete,SEA - 5,West Support Building,SUES-1 - 19-16,L1 - Fndn Slab,DS/AD INTERIORS,CONSTRUCTION,,DRYWALL,FIZ DATA CENTER,INTERIORS,2024-06-04 12:00,2024-06-13 12:00,2024-05-26 07:00,2024-06-04 17:00,2025-11-20 17:00,2025-11-20 17:00,2025-11-24 07:00,2025-11-24 07:00,0,70,100
CN.SEA5.9160,IMPACT - REMEDY - TAPE & FINISH DRYWALL - SEA3 - GL 19-22 - D LINE - L1,Complete,SEA - 5,West Support Building,SUEN-1 - 19-22,L1 - Fndn Slab,DS/AD INTERIORS,CONSTRUCTION,CHERRY COATING,DRYWALL,FIZ DATA CENTER,INTERIORS,2024-09-09 07:00,2024-09-12 17:00,2024-09-07 07:00,2024-09-10 17:00,2025-11-20 17:00,2025-11-20 17:00,2025-12-01 17:00,2025-12-01 17:00,0,30,100
CN.SEA5.9140,IMPACT - REMEDY - FRAME & DRYWALL - SEA3 - GL 19-22 - D LINE - L1,Complete,SEA - 5,West Support Building,SUEN-1 - 19-22,L1 - Fndn Slab,DS/AD INTERIORS,CONSTRUCTION,BERG,DRYWALL,FIZ DATA CENTER,INTERIORS,2024-07-17 07:00,2024-08-06 17:00,2024-07-17 07:00,2024-08-27 17:00,2025-11-20 17:00,2025-11-20 17:00,2025-12-01 17:00,2025-12-01 17:00,0,150,100
CN.SEA5.9150,IMPACT - REMEDY - DEMO DRYWALL (INT) -  GL 19-22 - L1 - D LINE,Complete,SEA - 5,West Support Building,SUEN-1 - 19-22,L1 - Fndn Slab,DS/AD INTERIORS,CONSTRUCTION,,DRYWALL,FIZ DATA CENTER,INTERIORS,2024-06-03 12:00,2024-06-11 12:00,2024-05-24 08:47,2024-06-02 17:00,2025-11-20 17:00,2025-11-20 17:00,2025-11-24 07:00,2025-11-24 07:00,0,70,100
CN.SEA5.9190,IMPACT - REMEDY - TAPE & FINISH DRYWALL - SEA3 - GL 22-25 - D LINE - L1,Complete,SEA - 5,West Support Building,SUEN-2 - 22-25,L1 - Fndn Slab,DS/AD INTERIORS,CONSTRUCTION,CHERRY COATING,DRYWALL,FIZ DATA CENTER,INTERIORS,2024-09-20 07:00,2024-09-24 17:00,2024-09-07 07:00,2024-09-10 17:00,2025-11-20 17:00,2025-11-20 17:00,2025-12-01 17:00,2025-12-01 17:00,0,30,100
CN.SEA5.9170,IMPACT - REMEDY - FRAME & DRYWALL - SEA3 - GL 22-25 - D LINE - L1,Complete,SEA - 5,West Support Building,SUEN-2 - 22-25,L1 - Fndn Slab,DS/AD INTERIORS,CONSTRUCTION,BERG,DRYWALL,FIZ DATA CENTER,INTERIORS,2024-07-15 07:00,2024-08-02 17:00,2024-07-15 07:00,2024-08-27 17:00,2025-11-20 17:00,2025-11-20 17:00,2025-12-01 17:00,2025-12-01 17:00,0,150,100
CN.SEA5.9180,IMPACT - REMEDY - DEMO DRYWALL (INT) -  GL 22-25 - L1 - D LINE,Complete,SEA - 5,West Support Building,SUEN-2 - 22-25,L1 - Fndn Slab,DS/AD INTERIORS,CONSTRUCTION,,DRYWALL,FIZ DATA CENTER,INTERIORS,2024-06-03 12:00,2024-06-11 12:00,2024-06-03 12:00,2024-06-11 12:00,2025-11-20 17:00,2025-11-20 17:00,2025-11-24 07:00,2025-11-24 07:00,0,70,100
CN.SEA5.9220,IMPACT - REMEDY - TAPE & FINISH DRYWALL - SEA3 - GL 25-28 - D LINE - L1,Complete,SEA - 5,West Support Building,SUEN-3 - 25-28,L1 - Fndn Slab,DS/AD INTERIORS,CONSTRUCTION,CHERRY COATING,DRYWALL,FIZ DATA CENTER,INTERIORS,2024-08-26 07:00,2024-08-28 17:00,2024-08-24 07:00,2024-08-27 17:00,2025-11-20 17:00,2025-11-20 17:00,2025-12-01 17:00,2025-12-01 17:00,0,30,100
CN.SEA5.9200,IMPACT - REMEDY - FRAME & DRYWALL - SEB3 - GL 25-28 - D LINE - L1,Complete,SEA - 5,West Support Building,SUEN-3 - 25-28,L1 - Fndn Slab,DS/AD INTERIORS,CONSTRUCTION,BERG,DRYWALL,FIZ DATA CENTER,INTERIORS,2024-07-15 07:00,2024-08-02 17:00,2024-07-15 07:00,2024-08-23 17:00,2025-11-20 17:00,2025-11-20 17:00,2025-12-01 17:00,2025-12-01 17:00,0,150,100
CN.SEA5.9210,IMPACT - REMEDY - DEMO DRYWALL (INT) -  GL 25-28 - L1 - D LINE,Complete,SEA - 5,West Support Building,SUEN-3 - 25-28,L1 - Fndn Slab,DS/AD INTERIORS,CONSTRUCTION,,DRYWALL,FIZ DATA CENTER,INTERIORS,2024-06-03 12:00,2024-06-11 12:00,2024-06-03 12:00,2024-06-11 16:00,2025-11-20 17:00,2025-11-20 17:00,2025-11-24 07:00,2025-11-24 07:00,0,70,100
CN.SEA5.9250,IMPACT - REMEDY - TAPE & FINISH DRYWALL - SEA3 - GL 28-31 - D LINE - L1,Complete,SEA - 5,West Support Building,SUEN-4 - 28-31,L1 - Fndn Slab,DS/AD INTERIORS,CONSTRUCTION,CHERRY COATING,DRYWALL,FIZ DATA CENTER,INTERIORS,2024-08-26 07:00,2024-08-28 17:00,2024-08-24 07:00,2024-08-27 17:00,2025-11-20 17:00,2025-11-20 17:00,2025-12-01 17:00,2025-12-01 17:00,0,30,100
CN.SEA5.9230,IMPACT - REMEDY - FRAME & DRYWALL - SEA3 - GL 28-31 - D LINE - L1,Complete,SEA - 5,West Support Building,SUEN-4 - 28-31,L1 - Fndn Slab,DS/AD INTERIORS,CONSTRUCTION,BERG,DRYWALL,FIZ DATA CENTER,INTERIORS,2024-07-16 07:00,2024-08-05 17:00,2024-07-16 07:00,2024-08-23 17:00,2025-11-20 17:00,2025-11-20 17:00,2025-12-01 07:00,2025-12-01 07:00,0,150,100
CN.SEA5.9240,IMPACT - REMEDY - DEMO DRYWALL (INT) -  GL 28-31 - L1 - D LINE,Complete,SEA - 5,West Support Building,SUEN-4 - 28-31,L1 - Fndn Slab,DS/AD INTERIORS,CONSTRUCTION,,DRYWALL,FIZ DATA CENTER,INTERIORS,2024-06-03 07:00,2024-06-10 17:00,2024-06-03 07:00,2024-06-10 17:00,2025-11-20 17:00,2025-11-20 17:00,2025-11-24 07:00,2025-11-24 07:00,0,70,100
CN.SEA5.9280,IMPACT - REMEDY - TAPE & FINISH DRYWALL - SWA3 - GL 31-33 - D LINE - L1,Complete,SEA - 5,West Support Building,SUEN-5 - 31-33,L1 - Fndn Slab,DS/AD INTERIORS,CONSTRUCTION,CHERRY COATING,DRYWALL,FIZ DATA CENTER,INTERIORS,2024-08-26 07:00,2024-08-28 17:00,2024-08-24 07:00,2024-08-27 17:00,2025-11-20 17:00,2025-11-20 17:00,2025-11-24 07:00,2025-11-24 07:00,0,30,100
CN.SEA5.9260,IMPACT - REMEDY - FRAME & DRYWALL - SWA3 - GL 31-33 - D LINE - L1,Complete,SEA - 5,West Support Building,SUEN-5 - 31-33,L1 - Fndn Slab,DS/AD INTERIORS,CONSTRUCTION,BERG,DRYWALL,FIZ DATA CENTER,INTERIORS,2024-07-15 07:00,2024-08-02 17:00,2024-07-15 07:00,2024-08-23 17:00,2025-11-20 17:00,2025-11-20 17:00,2025-11-24 07:00,2025-11-24 07:00,0,150,100
CN.SEA5.9270,IMPACT - REMEDY - DEMO DRYWALL (INT) -  GL 31-33 - L1 - D LINE,Complete,SEA - 5,West Support Building,SUEN-5 - 31-33,L1 - Fndn Slab,DS/AD INTERIORS,CONSTRUCTION,,DRYWALL,FIZ DATA CENTER,INTERIORS,2024-06-03 07:00,2024-06-10 17:00,2024-06-03 07:00,2024-06-10 17:00,2025-11-20 17:00,2025-11-20 17:00,2025-11-24 07:00,2025-11-24 07:00,0,70,100
CN.SEA5.9310,IMPACT - REMEDY - TAPE & FINISH DRYWALL - SUW4 - GL 9-6 - K LINE - L1,Complete,SEA - 5,West Support Building,SUWS-4 - 9-6,L1 - Fndn Slab,DS/AD INTERIORS,CONSTRUCTION,CHERRY COATING,DRYWALL,FIZ DATA CENTER,INTERIORS,2024-09-12 07:00,2024-09-16 17:00,2024-09-12 07:00,2024-09-13 17:00,2025-11-20 17:00,2025-11-20 17:00,2025-12-05 17:00,2025-12-05 17:00,0,30,100
CN.SEA5.9300,IMPACT - REMEDY - FRAME & DRYWALL - SUW4 - GL 9-6 - K LINE - L1,Complete,SEA - 5,West Support Building,SUWS-4 - 9-6,L1 - Fndn Slab,DS/AD INTERIORS,CONSTRUCTION,BERG,DRYWALL,FIZ DATA CENTER,INTERIORS,2024-07-31 07:00,2024-08-23 17:00,2024-07-22 07:00,2024-09-07 17:00,2025-11-20 17:00,2025-11-20 17:00,2025-12-05 17:00,2025-12-05 17:00,0,150,100
CN.SEA5.9290,IMPACT - REMEDY - DEMO DRYWALL (INT) -  GL 3-6 - L1 - K LINE,Complete,SEA - 5,West Support Building,FIZ 2 / SUWS 5  (GL6-1) - GL J - N - DATA CENTER 1,L1 - Fndn Slab,DS/AD INTERIORS,CONSTRUCTION,,DRYWALL,FIZ DATA CENTER,INTERIORS,2024-05-28 07:00,2024-06-03 17:00,2024-05-28 07:00,2024-06-03 17:00,2025-11-20 17:00,2025-11-20 17:00,2025-11-24 07:00,2025-11-24 07:00,0,70,100
CN.SEA5.9340,IMPACT - REMEDY - TAPE & FINISH DRYWALL - SWA3 - GL 12-9 - K LINE - L1,Complete,SEA - 5,West Support Building,SUWS-3 - 12-9,L1 - Fndn Slab,DS/AD INTERIORS,CONSTRUCTION,CHERRY COATING,DRYWALL,FIZ DATA CENTER,INTERIORS,2024-09-09 07:00,2024-09-12 17:00,2024-09-07 07:00,2024-09-10 17:00,2025-11-20 17:00,2025-11-20 17:00,2025-11-24 07:00,2025-11-24 07:00,0,30,100
CN.SEA5.9330,IMPACT - REMEDY - FRAME & DRYWALL - SWA3 - GL 12-9 - K LINE - L1,Complete,SEA - 5,West Support Building,SUWS-3 - 12-9,L1 - Fndn Slab,DS/AD INTERIORS,CONSTRUCTION,BERG,DRYWALL,FIZ DATA CENTER,INTERIORS,2024-08-23 07:00,2024-09-16 17:00,2024-08-12 07:00,2024-09-05 17:00,2025-11-20 17:00,2025-11-20 17:00,2025-11-24 07:00,2025-11-24 07:00,0,150,100
CN.SEA5.9320,IMPACT - REMEDY - DEMO DRYWALL (INT) - GL 12-9 - L1 - K LINE,Complete,SEA - 5,West Support Building,SUWS-3 - 12-9,L1 - Fndn Slab,DS/AD INTERIORS,CONSTRUCTION,,DRYWALL,FIZ DATA CENTER,INTERIORS,2024-05-28 07:00,2024-06-03 17:00,2024-05-28 07:00,2024-06-03 17:00,2025-11-20 17:00,2025-11-20 17:00,2025-11-24 07:00,2025-11-24 07:00,0,70,100
CN.SEA5.9370,IMPACT - REMEDY - TAPE & FINISH DRYWALL - SWA3 - GL 15-12 - K LINE - L1,Complete,SEA - 5,West Support Building,SUWS-2 - 15-12,L1 - Fndn Slab,DS/AD INTERIORS,CONSTRUCTION,CHERRY COATING,DRYWALL,FIZ DATA CENTER,INTERIORS,2024-09-09 07:00,2024-09-12 17:00,2024-09-07 07:00,2024-09-10 17:00,2025-11-20 17:00,2025-11-20 17:00,2025-12-05 17:00,2025-12-05 17:00,0,30,100
CN.SEA5.9360,IMPACT - REMEDY - FRAME & DRYWALL - SWA3 - GL 15-12 - K LINE - L1,Complete,SEA - 5,West Support Building,SUWS-2 - 15-12,L1 - Fndn Slab,DS/AD INTERIORS,CONSTRUCTION,BERG,DRYWALL,FIZ DATA CENTER,INTERIORS,2024-08-23 07:00,2024-08-27 17:00,2024-08-07 07:00,2024-09-05 17:00,2025-11-20 17:00,2025-11-20 17:00,2025-12-05 17:00,2025-12-05 17:00,0,30,100
CN.SEA5.9350,IMPACT - REMEDY - DEMO DRYWALL (INT) - GL 15-12 - L1 - K LINE,Complete,SEA - 5,West Support Building,SUWS-2 - 15-12,L1 - Fndn Slab,DS/AD INTERIORS,CONSTRUCTION,,DRYWALL,FIZ DATA CENTER,INTERIORS,2024-05-28 07:00,2024-06-03 17:00,2024-05-28 07:00,2024-06-03 17:00,2025-11-20 17:00,2025-11-20 17:00,2025-11-24 07:00,2025-11-24 07:00,0,70,100
CN.SEA5.9400,IMPACT - REMEDY - TAPE & FINISH DRYWALL - SWA3 - GL 18-15 - K LINE - L1,Complete,SEA - 5,West Support Building,SUWS-1 - 18-15,L1 - Fndn Slab,DS/AD INTERIORS,CONSTRUCTION,CHERRY COATING,DRYWALL,FIZ DATA CENTER,INTERIORS,2024-09-20 07:00,2024-09-24 17:00,2024-09-07 07:00,2024-09-10 17:00,2025-11-20 17:00,2025-11-20 17:00,2025-11-24 07:00,2025-11-24 07:00,0,30,100
CN.SEA5.9390,IMPACT - REMEDY - FRAME & DRYWALL - SWA3 - GL 18-15 - K LINE - L1,Complete,SEA - 5,West Support Building,SUWS-1 - 18-15,L1 - Fndn Slab,DS/AD INTERIORS,CONSTRUCTION,BERG,DRYWALL,FIZ DATA CENTER,INTERIORS,2024-08-23 07:00,2024-09-12 17:00,2024-08-01 07:00,2024-09-04 17:00,2025-11-20 17:00,2025-11-20 17:00,2025-11-24 07:00,2025-11-24 07:00,0,130,100
CN.SEA5.9380,IMPACT - REMEDY - DEMO DRYWALL (INT) - GL 18-15 - L1 - K LINE,Complete,SEA - 5,West Support Building,SUWS-1 - 18-15,L1 - Fndn Slab,DS/AD INTERIORS,CONSTRUCTION,,DRYWALL,FIZ DATA CENTER,INTERIORS,2024-06-04 07:00,2024-06-11 17:00,2024-06-04 07:00,2024-06-11 17:00,2025-11-20 17:00,2025-11-20 17:00,2025-11-24 07:00,2025-11-24 07:00,0,70,100
CN.SEA5.9430,IMPACT - REMEDY - TAPE & FINISH DRYWALL - SWB3 - GL 18-21 - K LINE - L1,Complete,SEA - 5,West Support Building,SUWN-1 - 18-21,L1 - Fndn Slab,DS/AD INTERIORS,CONSTRUCTION,CHERRY COATING,DRYWALL,FIZ DATA CENTER,INTERIORS,2024-09-06 07:00,2024-09-10 17:00,2024-08-22 07:00,2024-08-24 17:00,2025-11-20 17:00,2025-11-20 17:00,2025-12-05 17:00,2025-12-05 17:00,0,30,100
CN.SEA5.9420,IMPACT - REMEDY - FRAME & DRYWALL - SWB3 - GL 18-21 - K LINE - L1,Complete,SEA - 5,West Support Building,SUWN-1 - 18-21,L1 - Fndn Slab,DS/AD INTERIORS,CONSTRUCTION,BERG,DRYWALL,FIZ DATA CENTER,INTERIORS,2024-07-26 07:00,2024-08-19 17:00,2024-07-24 07:00,2024-08-21 17:00,2025-11-20 17:00,2025-11-20 17:00,2025-11-24 07:00,2025-11-24 07:00,0,150,100
CN.SEA5.9410,IMPACT - REMEDY - DEMO DRYWALL (INT) - GL 18-21 - L1 - K LINE,Complete,SEA - 5,West Support Building,SUWN-1 - 18-21,L1 - Fndn Slab,DS/AD INTERIORS,CONSTRUCTION,,DRYWALL,FIZ DATA CENTER,INTERIORS,2024-06-04 07:00,2024-06-11 17:00,2024-06-04 07:00,2024-06-11 17:00,2025-11-20 17:00,2025-11-20 17:00,2025-11-24 07:00,2025-11-24 07:00,0,70,100
CN.SEA5.9460,IMPACT - REMEDY - TAPE & FINISH DRYWALL - SWB3 - GL 21-24 - K LINE - L1,Complete,SEA - 5,West Support Building,SUWN-2 - 21-24,L1 - Fndn Slab,DS/AD INTERIORS,CONSTRUCTION,CHERRY COATING,DRYWALL,FIZ DATA CENTER,INTERIORS,2024-08-23 07:00,2024-08-27 17:00,2024-08-20 07:00,2024-08-22 17:00,2025-11-20 17:00,2025-11-20 17:00,2025-11-24 07:00,2025-11-24 07:00,0,30,100
CN.SEA5.9450,IMPACT - REMEDY - FRAME & DRYWALL - SWB3 - GL 21-24 - K LINE - L1,Complete,SEA - 5,West Support Building,SUWN-2 - 21-24,L1 - Fndn Slab,DS/AD INTERIORS,CONSTRUCTION,BERG,DRYWALL,FIZ DATA CENTER,INTERIORS,2024-07-16 07:00,2024-08-05 17:00,2024-07-16 07:00,2024-08-19 17:00,2025-11-20 17:00,2025-11-20 17:00,2025-11-24 07:00,2025-11-24 07:00,0,150,100
CN.SEA5.9440,IMPACT - REMEDY - DEMO DRYWALL (INT) -  GL 21-24 - L1 - K LINE,Complete,SEA - 5,West Support Building,SUWN-2 - 21-24,L1 - Fndn Slab,DS/AD INTERIORS,CONSTRUCTION,,DRYWALL,FIZ DATA CENTER,INTERIORS,2024-06-04 07:00,2024-06-11 17:00,2024-06-04 07:00,2024-06-11 17:00,2025-11-20 17:00,2025-11-20 17:00,2025-11-24 07:00,2025-11-24 07:00,0,70,100
CN.SEA5.9490,IMPACT - REMEDY - TAPE & FINISH DRYWALL - SWB3 - GL 24-27 - K LINE - L1,Complete,SEA - 5,West Support Building,SUWN-3 - 24-27,L1 - Fndn Slab,DS/AD INTERIORS,CONSTRUCTION,CHERRY COATING,DRYWALL,FIZ DATA CENTER,INTERIORS,2024-08-20 07:00,2024-08-23 17:00,2024-08-20 07:00,2024-08-22 17:00,2025-11-20 17:00,2025-11-20 17:00,2025-12-05 17:00,2025-12-05 17:00,0,30,100
CN.SEA5.9480,IMPACT - REMEDY - FRAME & DRYWALL - SWB3 - GL 24-27 - K LINE - L1,Complete,SEA - 5,West Support Building,SUWN-3 - 24-27,L1 - Fndn Slab,DS/AD INTERIORS,CONSTRUCTION,BERG,DRYWALL,FIZ DATA CENTER,INTERIORS,2024-07-16 07:00,2024-08-05 17:00,2024-07-16 07:00,2024-08-19 17:00,2025-11-20 17:00,2025-11-20 17:00,2025-11-24 07:00,2025-11-24 07:00,0,150,100
CN.SEA5.9470,IMPACT - REMEDY - DEMO DRYWALL (INT) -  GL 24-27 - L1 - K LINE,Complete,SEA - 5,West Support Building,SUWN-3 - 24-27,L1 - Fndn Slab,DS/AD INTERIORS,CONSTRUCTION,,DRYWALL,FIZ DATA CENTER,INTERIORS,2024-06-04 07:00,2024-06-11 17:00,2024-06-04 07:00,2024-06-11 17:00,2025-11-20 17:00,2025-11-20 17:00,2025-11-24 07:00,2025-11-24 07:00,0,70,100
CN.SEA5.9520,IMPACT - REMEDY - TAPE & FINISH DRYWALL - SWB3 - GL 27-30 - K LINE - L1,Complete,SEA - 5,West Support Building,SUWN-4 - 27-30,L1 - Fndn Slab,DS/AD INTERIORS,CONSTRUCTION,CHERRY COATING,DRYWALL,FIZ DATA CENTER,INTERIORS,2024-08-19 07:00,2024-08-22 17:00,2024-08-17 07:00,2024-08-21 17:00,2025-11-20 17:00,2025-11-20 17:00,2025-11-24 07:00,2025-11-24 07:00,0,30,100
CN.SEA5.9510,IMPACT - REMEDY - FRAME & DRYWALL - SWB3 - GL 27-30 - K LINE - L1,Complete,SEA - 5,West Support Building,SUWN-4 - 27-30,L1 - Fndn Slab,DS/AD INTERIORS,CONSTRUCTION,BERG,DRYWALL,FIZ DATA CENTER,INTERIORS,2024-07-16 07:00,2024-08-05 17:00,2024-07-16 07:00,2024-08-15 17:00,2025-11-20 17:00,2025-11-20 17:00,2025-11-24 07:00,2025-11-24 07:00,0,150,100
CN.SEA5.9500,IMPACT - REMEDY - DEMO DRYWALL (INT) -  GL 27-30 - L1 - K LINE,Complete,SEA - 5,West Support Building,SUWN-4 - 27-30,L1 - Fndn Slab,DS/AD INTERIORS,CONSTRUCTION,,DRYWALL,FIZ DATA CENTER,INTERIORS,2024-06-04 07:00,2024-06-11 17:00,2024-06-04 07:00,2024-06-11 17:00,2025-11-20 17:00,2025-11-20 17:00,2025-11-24 07:00,2025-11-24 07:00,0,70,100
CN.SEA5.9550,IMPACT - REMEDY - TAPE & FINISH DRYWALL - SEA3 - GL 30-33 - K LINE - L1,Complete,SEA - 5,West Support Building,SUWN-5 - 30-33,L1 - Fndn Slab,DS/AD INTERIORS,CONSTRUCTION,CHERRY COATING,DRYWALL,FIZ DATA CENTER,INTERIORS,2024-08-23 07:00,2024-08-27 17:00,2024-08-17 07:00,2024-08-22 17:00,2025-11-20 17:00,2025-11-20 17:00,2025-11-24 07:00,2025-11-24 07:00,0,30,100
CN.SEA5.9540,IMPACT - REMEDY - FRAME & DRYWALL - SWB3 - GL 30-33 - K LINE - L1,Complete,SEA - 5,West Support Building,SUWN-5 - 30-33,L1 - Fndn Slab,DS/AD INTERIORS,CONSTRUCTION,BERG,DRYWALL,FIZ DATA CENTER,INTERIORS,2024-07-18 07:00,2024-08-08 17:00,2024-07-18 07:00,2024-08-15 17:00,2025-11-20 17:00,2025-11-20 17:00,2025-11-24 07:00,2025-11-24 07:00,0,150,100
CN.SEA5.9530,IMPACT - REMEDY - DEMO DRYWALL (INT) -  GL 30-33 - L1 - K LINE,Complete,SEA - 5,West Support Building,SUWN-5 - 30-33,L1 - Fndn Slab,DS/AD INTERIORS,CONSTRUCTION,,DRYWALL,FIZ DATA CENTER,INTERIORS,2024-06-04 07:00,2024-06-11 17:00,2024-06-04 07:00,2024-06-11 17:00,2025-11-20 17:00,2025-11-20 17:00,2025-11-24 07:00,2025-11-24 07:00,0,70,100
CN.SEA5.9580,IMPACT - REMEDY - TAPE & FINISH DRYWALL - SEA5- GL 5-10 - C LINE - L1,Complete,SEA - 5,West Support Building,SUES-4 - 9-6,L1 - Fndn Slab,DS/AD INTERIORS,CONSTRUCTION,CHERRY COATING,DRYWALL,FIZ DATA CENTER,INTERIORS,2024-09-05 07:00,2024-09-09 17:00,2024-08-16 07:00,2024-08-20 17:00,2025-11-20 17:00,2025-11-20 17:00,2025-11-24 07:00,2025-11-24 07:00,0,30,100
CN.SEA5.9570,IMPACT - REMEDY - FRAME & DRYWALL - SEA5- GL 5-10 - C LINE - L1,Complete,SEA - 5,West Support Building,SUES-4 - 9-6,L1 - Fndn Slab,DS/AD INTERIORS,CONSTRUCTION,BERG,DRYWALL,FIZ DATA CENTER,INTERIORS,2024-07-15 07:00,2024-08-02 17:00,2024-07-15 07:00,2024-08-15 17:00,2025-11-20 17:00,2025-11-20 17:00,2025-11-24 07:00,2025-11-24 07:00,0,150,100
CN.SEA5.9560,IMPACT - REMEDY - CLEAN UP DRYWALL (INT) - GL 5-10 - L1 - C LINE,Complete,SEA - 5,West Support Building,SUES-4 - 9-6,L1 - Fndn Slab,DS/AD INTERIORS,CONSTRUCTION,MK MARLOW,DRYWALL,FIZ DATA CENTER,INTERIORS,2024-07-08 07:00,2024-07-11 17:00,2024-07-10 07:00,2024-07-13 17:00,2025-11-20 17:00,2025-11-20 17:00,2025-11-24 07:00,2025-11-24 07:00,0,30,100
CN.SEA5.9610,IMPACT - REMEDY - TAPE & FINISH DRYWALL - SEA5- GL 10-13 - C LINE - L1,Complete,SEA - 5,West Support Building,SUES-3 - 13-9,L1 - Fndn Slab,DS/AD INTERIORS,CONSTRUCTION,CHERRY COATING,DRYWALL,FIZ DATA CENTER,INTERIORS,2024-08-16 07:00,2024-08-20 17:00,2024-08-16 07:00,2024-08-20 17:00,2025-11-20 17:00,2025-11-20 17:00,2025-11-24 07:00,2025-11-24 07:00,0,30,100
CN.SEA5.9600,IMPACT - REMEDY - FRAME & DRYWALL - SEA5- GL 10-13 - C LINE - L1,Complete,SEA - 5,West Support Building,SUES-3 - 13-9,L1 - Fndn Slab,DS/AD INTERIORS,CONSTRUCTION,BERG,DRYWALL,FIZ DATA CENTER,INTERIORS,2024-07-17 07:00,2024-08-06 17:00,2024-07-17 07:00,2024-08-15 17:00,2025-11-20 17:00,2025-11-20 17:00,2025-11-24 07:00,2025-11-24 07:00,0,150,100
CN.SEA5.9590,IMPACT - REMEDY - CLEAN UP DRYWALL (INT) - GL 10-13 - L1 - C LINE,Complete,SEA - 5,West Support Building,SUES-3 - 13-9,L1 - Fndn Slab,DS/AD INTERIORS,CONSTRUCTION,MK MARLOW,DRYWALL,FIZ DATA CENTER,INTERIORS,2024-07-11 07:00,2024-07-19 17:00,2024-07-11 07:00,2024-07-15 17:00,2025-11-20 17:00,2025-11-20 17:00,2025-11-24 07:00,2025-11-24 07:00,0,70,100
CN.SEA5.9640,IMPACT - REMEDY - TAPE & FINISH DRYWALL - SEA5- GL 13-16 - C LINE - L1,Complete,SEA - 5,West Support Building,SUES-2 - 16-13,L1 - Fndn Slab,DS/AD INTERIORS,CONSTRUCTION,CHERRY COATING,DRYWALL,FIZ DATA CENTER,INTERIORS,2024-09-06 07:00,2024-09-10 17:00,2024-08-27 07:00,2024-08-30 17:00,2025-11-20 17:00,2025-11-20 17:00,2025-11-24 07:00,2025-11-24 07:00,0,30,100
CN.SEA5.9630,IMPACT - REMEDY - FRAME & DRYWALL - SEA5- GL 13-16 - C LINE - L1,Complete,SEA - 5,West Support Building,SUES-2 - 16-13,L1 - Fndn Slab,DS/AD INTERIORS,CONSTRUCTION,BERG,DRYWALL,FIZ DATA CENTER,INTERIORS,2024-07-18 07:00,2024-08-08 17:00,2024-07-18 07:00,2024-08-26 17:00,2025-11-20 17:00,2025-11-20 17:00,2025-11-24 07:00,2025-11-24 07:00,0,150,100
CN.SEA5.9620,IMPACT - REMEDY - CLEAN UP DRYWALL (INT) - GL 13-16 - L1 - C LINE,Complete,SEA - 5,West Support Building,SUES-2 - 16-13,L1 - Fndn Slab,DS/AD INTERIORS,CONSTRUCTION,MK MARLOW,DRYWALL,FIZ DATA CENTER,INTERIORS,2024-07-11 07:00,2024-07-19 17:00,2024-07-13 07:00,2024-07-17 17:00,2025-11-20 17:00,2025-11-20 17:00,2025-11-24 07:00,2025-11-24 07:00,0,70,100
CN.SEA5.9670,IMPACT - REMEDY - TAPE & FINISH DRYWALL - SEA5- GL 16-19 - C LINE - L1,Complete,SEA - 5,West Support Building,SUES-1 - 19-16,L1 - Fndn Slab,DS/AD INTERIORS,CONSTRUCTION,CHERRY COATING,DRYWALL,FIZ DATA CENTER,INTERIORS,2024-08-29 07:00,2024-09-03 17:00,2024-08-29 07:00,2024-11-13 17:00,2025-11-20 17:00,2025-11-20 17:00,2025-11-24 07:00,2025-11-24 07:00,0,30,100
CN.SEA5.9660,IMPACT - REMEDY - FRAME & DRYWALL - SEA5- GL 16-19 - C LINE - L1,Complete,SEA - 5,West Support Building,SUES-1 - 19-16,L1 - Fndn Slab,DS/AD INTERIORS,CONSTRUCTION,BERG,DRYWALL,FIZ DATA CENTER,INTERIORS,2024-09-03 07:00,2024-09-26 17:00,2024-07-27 07:00,2024-08-24 17:00,2025-11-20 17:00,2025-11-20 17:00,2025-11-24 07:00,2025-11-24 07:00,0,150,100
CN.SEA5.9650,IMPACT - REMEDY - CLEAN UP DRYWALL (INT) - GL 16-19 - L1 - C LINE,Complete,SEA - 5,West Support Building,SUES-1 - 19-16,L1 - Fndn Slab,DS/AD INTERIORS,CONSTRUCTION,MK MARLOW,DRYWALL,FIZ DATA CENTER,INTERIORS,2024-07-15 07:00,2024-07-23 17:00,2024-07-15 07:00,2024-07-18 17:00,2025-11-20 17:00,2025-11-20 17:00,2025-11-24 07:00,2025-11-24 07:00,0,70,100
CN.SEA5.9700,IMPACT - REMEDY - TAPE & FINISH DRYWALL - SEA5- GL 19-22 - C LINE - L1,Complete,SEA - 5,West Support Building,SUEN-1 - 19-22,L1 - Fndn Slab,DS/AD INTERIORS,CONSTRUCTION,CHERRY COATING,DRYWALL,FIZ DATA CENTER,INTERIORS,2024-09-06 07:00,2024-09-10 17:00,2024-08-26 07:00,2024-08-28 17:00,2025-11-20 17:00,2025-11-20 17:00,2025-12-01 17:00,2025-12-01 17:00,0,30,100
CN.SEA5.9690,IMPACT - REMEDY - FRAME & DRYWALL - SEA5- GL 19-22 - C LINE - L1,Complete,SEA - 5,West Support Building,SUEN-1 - 19-22,L1 - Fndn Slab,DS/AD INTERIORS,CONSTRUCTION,BERG,DRYWALL,FIZ DATA CENTER,INTERIORS,2024-07-18 07:00,2024-08-08 17:00,2024-07-18 07:00,2024-08-24 17:00,2025-11-20 17:00,2025-11-20 17:00,2025-12-01 17:00,2025-12-01 17:00,0,150,100
CN.SEA5.9680,IMPACT - REMEDY - CLEAN UP DRYWALL (INT) - GL 19-22 - L1 - C LINE,Complete,SEA - 5,West Support Building,SUEN-1 - 19-22,L1 - Fndn Slab,DS/AD INTERIORS,CONSTRUCTION,MK MARLOW,DRYWALL,FIZ DATA CENTER,INTERIORS,2024-07-11 07:00,2024-07-19 17:00,2024-07-11 07:00,2024-07-15 17:00,2025-11-20 17:00,2025-11-20 17:00,2025-12-01 17:00,2025-12-01 17:00,0,70,100
CN.SEA5.9730,IMPACT - REMEDY - TAPE & FINISH DRYWALL - SEA5- GL 22-25 - C LINE - L1,Complete,SEA - 5,West Support Building,SUEN-2 - 22-25,L1 - Fndn Slab,DS/AD INTERIORS,CONSTRUCTION,CHERRY COATING,DRYWALL,FIZ DATA CENTER,INTERIORS,2024-08-26 07:00,2024-08-28 17:00,2024-08-26 07:00,2024-08-28 17:00,2025-11-20 17:00,2025-11-20 17:00,2025-12-05 17:00,2025-12-05 17:00,0,30,100
CN.SEA5.9720,IMPACT - REMEDY - FRAME & DRYWALL - SEA5- GL 22-25 - C LINE - L1,Complete,SEA - 5,West Support Building,SUEN-2 - 22-25,L1 - Fndn Slab,DS/AD INTERIORS,CONSTRUCTION,BERG,DRYWALL,FIZ DATA CENTER,INTERIORS,2024-08-27 07:00,2024-09-19 17:00,2024-08-01 07:00,2024-08-24 17:00,2025-11-20 17:00,2025-11-20 17:00,2025-12-05 17:00,2025-12-05 17:00,0,150,100
CN.SEA5.9710,IMPACT - REMEDY - CLEAN UP DRYWALL (INT) - GL 22-25 - L1 - C LINE,Complete,SEA - 5,West Support Building,SUEN-2 - 22-25,L1 - Fndn Slab,DS/AD INTERIORS,CONSTRUCTION,MK MARLOW,DRYWALL,FIZ DATA CENTER,INTERIORS,2024-07-11 07:00,2024-07-19 17:00,2024-07-11 07:00,2024-07-29 17:00,2025-11-20 17:00,2025-11-20 17:00,2025-12-05 17:00,2025-12-05 17:00,0,70,100
CN.SEA5.9760,IMPACT - REMEDY - TAPE & FINISH DRYWALL - 1 LINE - L1- A-N,Complete,SEA - 5,West Support Building,FIZ3 (East Inner) GL G-E,L1 - Fndn Slab,FA/TEM LAB,CONSTRUCTION,CHERRY COATING,DRYWALL,FIZ DATA CENTER,INTERIORS,2024-08-26 07:00,2024-08-30 17:00,2024-07-31 07:00,2024-08-05 17:00,2025-11-20 17:00,2025-11-20 17:00,2025-12-05 17:00,2025-12-05 17:00,0,50,100
CN.SEA5.9750,IMPACT - REMEDY - FRAME & DRYWALL - 1 LINE - L1- A-N,Complete,SEA - 5,West Support Building,FIZ3 (East Inner) GL G-E,L1 - Fndn Slab,FA/TEM LAB,CONSTRUCTION,BERG,DRYWALL,FIZ DATA CENTER,INTERIORS,2024-06-06 07:00,2024-07-18 17:00,2024-06-06 07:00,2024-07-30 17:00,2025-11-20 17:00,2025-11-20 17:00,2025-12-05 17:00,2025-12-05 17:00,0,250,100
CN.SEA5.9740,IMPACT - REMEDY - DEMO DRYWALL (INT) - 1 LINE - L1 - A-N,Complete,SEA - 5,West Support Building,FIZ3 (East Inner) GL G-E,L1 - Fndn Slab,FA/TEM LAB,CONSTRUCTION,,DRYWALL,FIZ DATA CENTER,INTERIORS,2024-05-20 07:00,2024-05-26 17:00,2024-05-20 07:00,2024-06-11 17:00,2025-11-20 17:00,2025-11-20 17:00,2025-12-05 17:00,2025-12-05 17:00,0,70,100
CN.SEA5.9790,IMPACT - REMEDY - TAPE & FINISH DRYWALL - 3 LINE - L1- A-N,Complete,SEA - 5,West Support Building,FIZ3 (East Inner) GL G-E,L1 - Fndn Slab,FA/TEM LAB,CONSTRUCTION,CHERRY COATING,DRYWALL,FIZ DATA CENTER,INTERIORS,2024-08-09 07:00,2024-08-16 17:00,2024-07-29 07:00,2024-08-05 17:00,2025-11-20 17:00,2025-11-20 17:00,2025-12-05 17:00,2025-12-05 17:00,0,50,100
CN.SEA5.9780,IMPACT - REMEDY - FRAME & DRYWALL - 3 LINE - L1- A-N,Complete,SEA - 5,West Support Building,FIZ3 (East Inner) GL G-E,L1 - Fndn Slab,FA/TEM LAB,CONSTRUCTION,BERG,DRYWALL,FIZ DATA CENTER,INTERIORS,2024-06-11 07:00,2024-07-16 17:00,2024-06-11 07:00,2024-07-25 17:00,2025-11-20 17:00,2025-11-20 17:00,2025-12-05 17:00,2025-12-05 17:00,0,200,100
CN.SEA5.9770,IMPACT - REMEDY - DEMO DRYWALL (INT) - 3 LINE - L1 - A-N,Complete,SEA - 5,West Support Building,FIZ3 (East Inner) GL G-E,L1 - Fndn Slab,FA/TEM LAB,CONSTRUCTION,,DRYWALL,FIZ DATA CENTER,INTERIORS,2024-05-20 07:00,2024-05-26 17:00,2024-05-20 07:00,2024-05-30 17:00,2025-11-20 17:00,2025-11-20 17:00,2025-12-05 17:00,2025-12-05 17:00,0,70,100
CN.SEA5.9800,DETAIL & INSPECT CLADDING STEEL - GL 1-6 - A LINE [SUP EXTERIOR WALL] - PHASE 2 - WEEKEND WORK DURING STARCON STANDDOWN,Complete,SEA - 5,,SUES-5 - 6-1 - FIZ - GL A -E,EXTERIOR SKIN,,CONSTRUCTION,PATRIOT,INSULATED METAL PANELS,,,2024-06-24 07:00,2024-06-24 17:00,2024-06-08 07:00,2024-06-09 17:00,2025-11-20 17:00,2025-11-20 17:00,2025-11-21 07:00,2025-11-21 07:00,0,10,100
CN.SEA5.9810,IMPACT - SECAI / STARCON CRANE IN THE WAY - GL 1-6 - A LINE [SUP EXTERIOR WALL] - GIVEN PRIORITY DURING WEEKDAYS,Complete,SEA - 5,,SUES-5 - 6-1 - FIZ - GL A -E,EXTERIOR SKIN,,CONSTRUCTION,PATRIOT,INSULATED METAL PANELS,,,2024-06-10 07:00,2024-06-14 17:00,2024-06-03 07:00,2024-06-07 17:00,2025-11-20 17:00,2025-11-20 17:00,2025-11-21 07:00,2025-11-21 07:00,0,40,100
CN.SEA5.9820,IMPACT - SECAI / STARCON CRANE IN THE WAY - GL 1-6 - A LINE [SUP EXTERIOR WALL] - GIVEN PRIORITY DURING WEEKDAYS,Complete,SEA - 5,,SUES-5 - 6-1 - FIZ - GL A -E,EXTERIOR SKIN,,CONSTRUCTION,PATRIOT,INSULATED METAL PANELS,,,2024-06-24 07:00,2024-06-28 17:00,2024-06-10 07:00,2024-06-14 17:00,2025-11-20 17:00,2025-11-20 17:00,2025-11-21 07:00,2025-11-21 07:00,0,40,100
CN.SEA5.9830,IMPACT - SECAI / STARCON CRANE IN THE WAY - GL 1-6 - A LINE [SUP EXTERIOR WALL] - GIVEN PRIORITY DURING WEEKDAYS,Complete,SEA - 5,,SUES-5 - 6-1 - FIZ - GL A -E,EXTERIOR SKIN,,CONSTRUCTION,PATRIOT,INSULATED METAL PANELS,,,2024-07-01 07:00,2024-07-08 17:00,2024-06-17 07:00,2024-06-21 17:00,2025-11-20 17:00,2025-11-20 17:00,2025-11-21 07:00,2025-11-21 07:00,0,40,100
CN.SEA5.9835,IMPACT - REMEDY - TAPE & FINISH DRYWALL - 1 LINE - L3- A-N,Complete,SEA - 5,West Support Building,FIZ3 (East Inner) GL G-E,L3 / Waffle Slab Level,FA/TEM LAB,CONSTRUCTION,CHERRY COATING,DRYWALL,FIZ DATA CENTER,INTERIORS,2024-09-27 07:00,2024-10-04 17:00,2024-07-15 07:00,2024-10-03 17:00,2025-11-20 17:00,2025-11-20 17:00,2025-12-04 17:00,2025-12-04 17:00,0,50,100
CN.SEA5.9821,IMPACT - REMEDY - FRAME & DRYWALL - 1 LINE - L3 - A-N,Complete,SEA - 5,West Support Building,FIZ3 (East Inner) GL G-E,L3 / Waffle Slab Level,FA/TEM LAB,CONSTRUCTION,BERG,DRYWALL,FIZ DATA CENTER,INTERIORS,2024-06-24 07:00,2024-08-01 17:00,2024-06-24 07:00,2024-09-26 17:00,2025-11-20 17:00,2025-11-20 17:00,2025-12-04 17:00,2025-12-04 17:00,0,250,100
CN.SEA5.9805,IMPACT - REMEDY - DEMO DRYWALL (INT) - 1 LINE - L3 - A-N,Complete,SEA - 5,West Support Building,FIZ3 (East Inner) GL G-E,L3 / Waffle Slab Level,FA/TEM LAB,CONSTRUCTION,MK MARLOW,DRYWALL,FIZ DATA CENTER,INTERIORS,2024-06-18 07:00,2024-06-28 17:00,2024-06-18 07:00,2024-08-01 17:00,2025-11-20 17:00,2025-11-20 17:00,2025-11-25 07:00,2025-11-25 07:00,0,70,100
CN.SEA5.9865,REMEDY - TAPE & FINISH DRYWALL - SEA5 - DATA CENTER 2  - GL G-N - L2 - 1 LINE,Complete,SEA - 5,West Support Building,FIZ1 (West Inner) GL J-G - DATA CENTER 2,L2 - SubFab Level,DATA CENTER 2,CONSTRUCTION,CHERRY COATING,DRYWALL,FIZ DATA CENTER,INTERIORS,2024-09-26 07:00,2024-10-03 17:00,2024-09-26 07:00,2024-10-01 17:00,2025-11-20 17:00,2025-11-20 17:00,2025-10-21 07:00,2025-10-21 07:00,0,50,100
CN.SEA5.9855,REMEDY - FRAME & DRYWALL - SEA5 - DATA CENTER 2  - GL G-N - D LINE - 1 LINE,Complete,SEA - 5,West Support Building,FIZ1 (West Inner) GL J-G - DATA CENTER 2,L2 - SubFab Level,DATA CENTER 2,CONSTRUCTION,BERG,DRYWALL,FIZ DATA CENTER,INTERIORS,2024-09-20 07:00,2024-10-10 17:00,2024-09-17 07:00,2024-09-30 17:00,2025-11-20 17:00,2025-11-20 17:00,2025-10-21 07:00,2025-10-21 07:00,0,120,100
CN.SEA5.9845,REMEDY - DEMO DAMAGED DRYWALL (INT)  - SEA5 - DATA CENTER 2  - GL G-N - L2 -1 LINE,Complete,SEA - 5,West Support Building,FIZ1 (West Inner) GL J-G - DATA CENTER 2,L2 - SubFab Level,DATA CENTER 2,CONSTRUCTION,BERG,DRYWALL,FIZ DATA CENTER,INTERIORS,2024-09-20 07:00,2024-09-27 17:00,2024-09-11 07:00,2024-09-16 17:00,2025-11-20 17:00,2025-11-20 17:00,2025-10-21 07:00,2025-10-21 07:00,0,50,100
CN.SEA5.9895,REMEDY - TAPE & FINISH DRYWALL - SEA5 - DATA CENTER 2  - GL G-N - L2 - 3 LINE,Complete,SEA - 5,West Support Building,FIZ1 (West Inner) GL J-G - DATA CENTER 2,L2 - SubFab Level,DATA CENTER 2,CONSTRUCTION,CHERRY COATING,DRYWALL,FIZ DATA CENTER,INTERIORS,2025-08-18 07:00,2025-08-22 17:00,2025-08-18 07:00,2025-08-22 17:00,2025-11-20 17:00,2025-11-20 17:00,2025-12-05 17:00,2025-12-05 17:00,0,50,100
CN.SEA5.9885,REMEDY - FRAME & DRYWALL - SEA5 - DATA CENTER 2  - GL G-N - D LINE - 3 LINE,Complete,SEA - 5,West Support Building,FIZ1 (West Inner) GL J-G - DATA CENTER 2,L2 - SubFab Level,DATA CENTER 2,CONSTRUCTION,BERG,DRYWALL,FIZ DATA CENTER,INTERIORS,2024-09-26 07:00,2024-10-15 17:00,2024-09-23 07:00,2025-08-22 17:00,2025-11-20 17:00,2025-11-20 17:00,2025-11-26 17:00,2025-11-26 17:00,0,120,100
CN.SEA5.9875,REMEDY - DEMO DRYWALL (INT)  - SEA5 - DATA CENTER 2  - GL G-N - L2 -3 LINE,Complete,SEA - 5,West Support Building,FIZ1 (West Inner) GL J-G - DATA CENTER 2,L2 - SubFab Level,DATA CENTER 2,CONSTRUCTION,BERG,DRYWALL,FIZ DATA CENTER,INTERIORS,2024-09-20 07:00,2024-09-27 17:00,2024-09-11 07:00,2024-09-16 17:00,2025-11-20 17:00,2025-11-20 17:00,2025-11-26 07:00,2025-11-26 07:00,0,50,100
CN.SEA5.9925,CURE - AD STEEL PAINT FIREPROOFING IFRM - SEA5 FIZ - GL 6-3 - C-E - L2-CEILING,Complete,SEA - 5,,SUES-5 - 6-1 - FIZ - GL A -E,DS/AD,,CONSTRUCTION,ROLLING PLAINS,Fireproofing,,,2024-07-18 07:00,2024-08-05 17:00,2024-07-18 07:00,2024-08-05 17:00,2025-11-20 17:00,2025-11-20 17:00,2025-12-05 17:00,2025-12-05 17:00,0,180,100
CN.AB.AR.6950,INSTALL WALL PROTECTION - STAIR 22 - GL 5-6 - C-D - L1,Not Started,SEA - 5,East Support Building,SUES-5 - 6-1 - FIZ - GL A -E,L1 - Fndn Slab,DS/AD INTERIORS,CONSTRUCTION,BERNCO,TBD Architectural Finishes,JAMES LEE,INTERIORS,2025-12-30 15:00,2026-01-05 15:00,,,2025-12-30 15:00,2026-01-05 15:00,2025-12-03 07:00,2025-12-05 17:00,30,30,0
CN.SEA5.9985,INSTALL WALL PROTECTION - STAIR 22 - GL 5-6 - C-D - L2,Not Started,SEA - 5,East Support Building,SUES-5 - 6-1 - FIZ - GL A -E,L2 - SubFab Level,DS/AD INTERIORS,CONSTRUCTION,BERNCO,TBD Architectural Finishes,JAMES LEE,INTERIORS,2025-12-30 15:00,2026-01-05 15:00,,,2025-12-30 15:00,2026-01-05 15:00,2025-12-03 07:00,2025-12-05 17:00,30,30,0
CN.SEA5.9995,INSTALL WALL PROTECTION - STAIR 22 - GL 5-6 - C-D - L3,Not Started,SEA - 5,East Support Building,SUES-5 - 6-1 - FIZ - GL A -E,L3 / Waffle Slab Level,DS/AD INTERIORS,CONSTRUCTION,BERNCO,TBD Architectural Finishes,JAMES LEE,INTERIORS,2025-12-30 15:00,2026-01-05 15:00,,,2025-12-30 15:00,2026-01-05 15:00,2025-12-03 07:00,2025-12-05 17:00,30,30,0
CN.SEA5.10005,INSTALL WALL PROTECTION - IT/SECURITY RM 22 - GL 3 - C-D - L3,Not Started,SEA - 5,East Support Building,SUES-5 - 6-1 - FIZ - GL A -E,L3 / Waffle Slab Level,DS/AD INTERIORS,CONSTRUCTION,BERNCO,TBD Architectural Finishes,JAMES LEE,INTERIORS,2025-11-21 07:00,2025-11-25 17:00,,,2025-11-21 07:00,2025-11-25 17:00,2025-12-03 07:00,2025-12-05 17:00,30,30,0
CN.SEA5.10015,INSTALL WALL PROTECTION - IT/SECURITY ROOM 22 & STAIR 22 - GL 4-6 - C-D - L4,Not Started,SEA - 5,East Support Building,SUES-5 - 6-1 - FIZ - GL A -E,L4 - SUP Roof - FAB Roof,DS/AD INTERIORS,CONSTRUCTION,BERNCO,TBD Architectural Finishes,JAMES LEE,INTERIORS,2025-11-21 07:00,2025-11-25 17:00,,,2025-11-21 07:00,2025-11-25 17:00,2025-12-03 07:00,2025-12-05 17:00,30,30,0
CN.SEA5.10095,IMPACT - REMEDY- PENDING DESIGN & RFI APPROVAL BY SECAI - D LINE - L1,Complete,SEA - 5,West Support Building,SUEN-5 - 31-33,L1 - Fndn Slab,DS/AD INTERIORS,CONSTRUCTION,BERG,DRYWALL,FIZ DATA CENTER,INTERIORS,2024-06-13 07:00,2024-06-28 17:00,2024-06-13 07:00,2024-06-25 17:00,2025-11-20 17:00,2025-11-20 17:00,2025-11-24 07:00,2025-11-24 07:00,0,100,100
CN.SEA5.10105,IMPACT - REMEDY - PENDING DESING APPROVAL AND RFI BY SECAI - K LINE - L1,Complete,SEA - 5,West Support Building,SUWN-5 - 30-33,L1 - Fndn Slab,DS/AD INTERIORS,CONSTRUCTION,BERG,DRYWALL,FIZ DATA CENTER,INTERIORS,2024-06-13 07:00,2024-06-28 17:00,2024-06-13 07:00,2024-06-25 17:00,2025-11-20 17:00,2025-11-20 17:00,2025-11-24 07:00,2025-11-24 07:00,0,100,100
CN.SEA5.10115,IMPACT - REMEDY - DEMO DRYWALL (INT) -  GL 9-6 - L1 - K LINE,Complete,SEA - 5,West Support Building,SUWS-4 - 9-6,L1 - Fndn Slab,DS/AD INTERIORS,CONSTRUCTION,,DRYWALL,FIZ DATA CENTER,INTERIORS,2024-05-28 07:00,2024-06-03 17:00,2024-05-28 07:00,2024-06-03 17:00,2025-11-20 17:00,2025-11-20 17:00,2025-11-24 07:00,2025-11-24 07:00,0,70,100
CN.SEA5.10135,IMPACT - REMEDY - TAPE & FINISH DRYWALL - SUW4 - GL 3-6 - K LINE - L1,Complete,SEA - 5,West Support Building,FIZ 2 / SUWS 5  (GL6-1) - GL J - N - DATA CENTER 1,L1 - Fndn Slab,DS/AD INTERIORS,CONSTRUCTION,CHERRY COATING,DRYWALL,FIZ DATA CENTER,INTERIORS,2024-09-26 07:00,2024-09-30 17:00,2024-09-26 07:00,2024-09-28 17:00,2025-11-20 17:00,2025-11-20 17:00,2025-12-05 17:00,2025-12-05 17:00,0,30,100
CN.SEA5.10125,IMPACT - REMEDY - FRAME & DRYWALL - SUW4 - GL 3-6 - K LINE - L1,Complete,SEA - 5,West Support Building,FIZ 2 / SUWS 5  (GL6-1) - GL J - N - DATA CENTER 1,L1 - Fndn Slab,DS/AD INTERIORS,CONSTRUCTION,BERG,DRYWALL,FIZ DATA CENTER,INTERIORS,2024-07-22 07:00,2024-08-12 17:00,2024-07-22 07:00,2024-09-23 17:00,2025-11-20 17:00,2025-11-20 17:00,2025-12-05 17:00,2025-12-05 17:00,0,150,100
CN.SEA5.10145,IMPACT - INSTALL INSULATED METAL PANEL MODULES - GL 4-5 - D LINE (AD AREA) [SCAFFOLD LEAVEOUT AREA],Complete,SEA - 5,,SUES-5 - 6-1 - FIZ - GL A -E,EXTERIOR SKIN,,CONSTRUCTION,KOVACH,INSULATED METAL PANELS,,,2024-07-23 07:00,2024-07-25 17:00,2024-07-13 07:00,2024-07-15 17:00,2025-11-20 17:00,2025-11-20 17:00,2025-12-05 17:00,2025-12-05 17:00,0,20,100
CN.SEA5.10155,IMPACT - AWAIT SECAI TO DISMANTLE SCAFFOLD - GL 4-5 - D LINE (AD AREA),Complete,SEA - 5,,SUES-5 - 6-1 - FIZ - GL A -E,EXTERIOR SKIN,,CONSTRUCTION,KOVACH,INSULATED METAL PANELS,,,2024-07-10 07:00,2024-07-14 17:00,2024-07-01 07:00,2024-07-12 17:00,2025-11-20 17:00,2025-11-20 17:00,2025-12-05 17:00,2025-12-05 17:00,0,50,100
CN.SEA5.10165,IMPACT - INSTALL HAT CHANNEL - GL 1-1.5 - A LINE [SUP EXTERIOR WALL],Complete,SEA - 5,East Support Building,SUES-5 - 6-1 - FIZ - GL A -E,EXTERIOR SKIN,,CONSTRUCTION,KOVACH,INSULATED METAL PANELS,JAMES LIVELY,,2024-08-15 07:00,2024-08-17 17:00,2024-07-23 07:00,2024-07-25 17:00,2025-11-20 17:00,2025-11-20 17:00,2025-12-05 17:00,2025-12-05 17:00,0,30,100
CN.SEA5.10185,IMPACT - INSTALL INSULATED METAL PANEL MODULES - GL 1-1.5 - A LINE [SUP EXTERIOR WALL],Complete,SEA - 5,East Support Building,SUES-5 - 6-1 - FIZ - GL A -E,EXTERIOR SKIN,,CONSTRUCTION,KOVACH,INSULATED METAL PANELS,JAMES LIVELY,,2024-08-09 07:00,2024-08-10 17:00,2024-08-01 07:00,2024-08-02 17:00,2025-11-20 17:00,2025-11-20 17:00,2025-12-05 17:00,2025-12-05 17:00,0,20,100
CN.SEA5.10195,IMPACT - SCAFFOLDING BLOCKING THE AREA - 1 LINE - L1- A-B & M-N,Complete,SEA - 5,West Support Building,FIZ3 (East Inner) GL G-E,L1 - Fndn Slab,FA/TEM LAB,CONSTRUCTION,BERG,DRYWALL,FIZ DATA CENTER,INTERIORS,2024-06-06 07:00,2024-07-18 17:00,2024-06-20 07:00,2024-07-22 17:00,2025-11-20 17:00,2025-11-20 17:00,2025-12-05 17:00,2025-12-05 17:00,0,250,100
CN.SEA5.10205,IMPACT - REMEDY - DEMO DRYWALL INCOMPLETE 8'' ON THE TOP - GL 5-10 - L1 - K LINE,Complete,SEA - 5,West Support Building,SUWS-4 - 9-6,L1 - Fndn Slab,DS/AD INTERIORS,CONSTRUCTION,,DRYWALL,FIZ DATA CENTER,INTERIORS,2024-05-28 07:00,2024-06-03 17:00,2024-06-20 07:00,2024-07-30 17:00,2025-11-20 17:00,2025-11-20 17:00,2025-12-05 17:00,2025-12-05 17:00,0,70,100
CN.SEA5.10215,IMPACT - REMEDY - SCAFFOLDING BLOCKING THE WORK - SWA3 - GL 15-13 - K LINE - L1,Complete,SEA - 5,West Support Building,SUWS-2 - 15-12,L1 - Fndn Slab,DS/AD INTERIORS,CONSTRUCTION,BERG,DRYWALL,FIZ DATA CENTER,INTERIORS,2024-06-03 07:00,2024-06-14 17:00,2024-06-03 07:00,2024-08-03 17:00,2025-11-20 17:00,2025-11-20 17:00,2025-12-05 17:00,2025-12-05 17:00,0,80,100
CN.SEA5.10225,IMPACT - REMEDY - SCAFFOLDING BLOCKING THE WORK - SWA3 - GL 7-10 - K LINE - L1,Complete,SEA - 5,West Support Building,SUWS-4 - 9-6,L1 - Fndn Slab,DS/AD INTERIORS,CONSTRUCTION,BERG,DRYWALL,FIZ DATA CENTER,INTERIORS,2024-06-03 07:00,2024-06-14 17:00,2024-07-07 07:00,2024-07-25 17:00,2025-11-20 17:00,2025-11-20 17:00,2025-12-05 17:00,2025-12-05 17:00,0,80,100
CN.SEA5.10235,IMPACT - REMEDY - REMOVE SCAFFOLDING BY SECAI - SEA3 - GL 25-29 - D LINE - L1,Complete,SEA - 5,West Support Building,SUEN-4 - 28-31,L1 - Fndn Slab,DS/AD INTERIORS,CONSTRUCTION,BERG,DRYWALL,FIZ DATA CENTER,INTERIORS,2024-07-11 07:00,2024-07-22 17:00,2024-07-11 07:00,2024-07-15 17:00,2025-11-20 17:00,2025-11-20 17:00,2025-12-01 07:00,2025-12-01 07:00,0,80,100
CN.SEA5.10255,IMPACT - REMEDY - TAPE & FINISH DRYWALL - SEA5 FIZ - GL 3-5 - C LINE - L1,Complete,SEA - 5,West Support Building,SUES-5 - 6-1 - FIZ - GL A -E,L1 - Fndn Slab,DS/AD INTERIORS,CONSTRUCTION,CHERRY COATING,DRYWALL,FIZ DATA CENTER,INTERIORS,2024-08-19 07:00,2024-08-22 17:00,2024-08-16 07:00,2024-08-19 07:00,2025-11-20 17:00,2025-11-20 17:00,2025-12-05 17:00,2025-12-05 17:00,0,30,100
CN.SEA5.10245,IMPACT - REMEDY - FRAME & DRYWALL - SEA5 FIZ - GL 3-5 - C LINE - L1,Complete,SEA - 5,West Support Building,SUES-5 - 6-1 - FIZ - GL A -E,L1 - Fndn Slab,DS/AD INTERIORS,CONSTRUCTION,BERG,DRYWALL,FIZ DATA CENTER,INTERIORS,2024-07-15 07:00,2024-08-02 17:00,2024-07-15 07:00,2024-08-15 17:00,2025-11-20 17:00,2025-11-20 17:00,2025-12-05 17:00,2025-12-05 17:00,0,150,100
CN.SEA5.10275,IMPACT - REMEDY -STOP WORK DUE TO WATER INTRUSION - GL 16-18 - L1 - C LINE,Complete,SEA - 5,West Support Building,SUES-1 - 19-16,L1 - Fndn Slab,DS/AD INTERIORS,CONSTRUCTION,MK MARLOW,DRYWALL,FIZ DATA CENTER,INTERIORS,2024-07-11 07:00,2024-07-19 17:00,2024-07-11 07:00,2024-07-25 17:00,2025-11-20 17:00,2025-11-20 17:00,2025-11-24 07:00,2025-11-24 07:00,0,70,100
CN.SEA5.10285,IMPACT - REMEDY -STOP WORK DUE TO WATER INTRUSION - GL 23-25 - L1 - C LINE,Complete,SEA - 5,West Support Building,SUEN-2 - 22-25,L1 - Fndn Slab,DS/AD INTERIORS,CONSTRUCTION,MK MARLOW,DRYWALL,FIZ DATA CENTER,INTERIORS,2024-07-11 07:00,2024-07-19 17:00,2024-07-11 07:00,2024-07-30 17:00,2025-11-20 17:00,2025-11-20 17:00,2025-12-05 17:00,2025-12-05 17:00,0,70,100
CN.SEA5.10295,DEMO DRYWALL - INSTALL GOAL POSTS - ELEVATOR 22 - SEA5 - GL 6-1 - L2,Complete,SEA - 5,West Support Building,SUES-5 - 6-1 - FIZ - GL A -E,,ELEVATOR,CONSTRUCTION,BERG,DRYWALL,,INTERIORS,2024-08-06 07:00,2024-08-09 17:00,2024-08-06 07:00,2024-08-12 17:00,2025-11-20 17:00,2025-11-20 17:00,2025-11-25 07:00,2025-11-25 07:00,0,30,100
CN.SEA5.10315,INSTALL GOAL POSTS - SEA5 FIZ - GL 6-1 - 9A AIRLOCK - L1,Complete,SEA - 5,West Support Building,SUES-5 - 6-1 - FIZ - GL A -E,L1 - Fndn Slab,DS/AD INTERIORS,CONSTRUCTION,CHERRY COATING,DRYWALL,FIZ DATA CENTER,INTERIORS,2024-09-24 07:00,2024-09-27 17:00,2024-08-31 07:00,2024-09-05 17:00,2025-11-20 17:00,2025-11-20 17:00,2025-11-24 07:00,2025-11-24 07:00,0,30,100
CN.SEA5.10325,INSTALL GOAL POSTS - 8C AIRLOCK - SEA5- GL 16-19 - C LINE - L1,Complete,SEA - 5,West Support Building,SUES-1 - 19-16,L1 - Fndn Slab,DS/AD INTERIORS,CONSTRUCTION,CHERRY COATING,DRYWALL,FIZ DATA CENTER,INTERIORS,2024-09-20 07:00,2024-09-27 17:00,2024-08-30 07:00,2024-09-05 17:00,2025-11-20 17:00,2025-11-20 17:00,2025-11-24 07:00,2025-11-24 07:00,0,50,100
CN.SEA5.10335,INSTALL GOAL POSTS - 4B AIRLOCK - SUW4 - GL 3-6 - K LINE - L1,Complete,SEA - 5,West Support Building,FIZ 2 / SUWS 5  (GL6-1) - GL J - N - DATA CENTER 1,L1 - Fndn Slab,DS/AD INTERIORS,CONSTRUCTION,CHERRY COATING,DRYWALL,FIZ DATA CENTER,INTERIORS,2024-09-20 07:00,2024-10-01 17:00,2024-07-03 07:00,2024-09-12 17:00,2025-11-20 17:00,2025-11-20 17:00,2025-12-02 07:00,2025-12-02 07:00,0,70,100
CN.SEA5.10345,INSTALL GOAL POSTS - 3B ELEVATOR HALL 22 - GL 3-5 - B-C - L2,Complete,SEA - 5,East Support Building,SUES-5 - 6-1 - FIZ - GL A -E,L2 - SubFab Level,,CONSTRUCTION,BERNCO,TBD Architectural Finishes,JAMES LEE,INTERIORS,2024-08-12 07:00,2024-08-19 17:00,2024-08-12 07:00,2024-08-16 17:00,2025-11-20 17:00,2025-11-20 17:00,2025-11-25 07:00,2025-11-25 07:00,0,50,100
CN.SEA5.10316,IMPACT - REMEDY - DEMOLISH SCAFFODLING & DRYWALL L - 1 LINE - L3 - C-E,Complete,SEA - 5,West Support Building,FIZ3 (East Inner) GL G-E,L3 / Waffle Slab Level,FA/TEM LAB,CONSTRUCTION,BERG,DRYWALL,FIZ DATA CENTER,INTERIORS,2024-06-24 07:00,2024-08-01 17:00,2024-06-24 07:00,2024-08-01 17:00,2025-11-20 17:00,2025-11-20 17:00,2025-12-04 17:00,2025-12-04 17:00,0,250,100
CN.SWB5.9890,INSTALL INSULATED METAL PANELS - NE PENTHOUSE - BREEZEWAY,Complete,SEA - 5,East Support Building,NORTH EAST PENTHOUSE,EXTERIOR SKIN,,CONSTRUCTION,KOVACH,INSULATED METAL PANELS,SEAN MONK,,2024-11-02 07:00,2024-11-12 17:00,2024-10-17 07:00,2024-10-23 17:00,2025-11-20 17:00,2025-11-20 17:00,2025-11-17 07:00,2025-11-17 07:00,0,100,100
CN.SWB5.9900,IMPACT - PATRIOT COMPLETE REMAINING CLADDING STEEL - NE PENTHOUSE - BREEZEWAY,Complete,SEA - 5,East Support Building,NORTH EAST PENTHOUSE,EXTERIOR SKIN,,CONSTRUCTION,KOVACH,INSULATED METAL PANELS,SEAN MONK,,2024-08-25 07:00,2024-08-30 17:00,2024-08-19 07:00,2024-09-05 17:00,2025-11-20 17:00,2025-11-20 17:00,2025-11-17 07:00,2025-11-17 07:00,0,60,100
CN.SWB5.9910,ALPHA PAINT BOLTS / CLADDING - NE PENTHOUSE - BREEZEWAY,Complete,SEA - 5,East Support Building,NORTH EAST PENTHOUSE,EXTERIOR SKIN,,CONSTRUCTION,KOVACH,INSULATED METAL PANELS,SEAN MONK,,2024-09-13 07:00,2024-09-16 17:00,2024-09-04 07:00,2024-09-10 17:00,2025-11-20 17:00,2025-11-20 17:00,2025-11-17 07:00,2025-11-17 07:00,0,40,100
CN.SEA5.10610,latcon - INSTALL ELEVATOR HSS STEEL DOOR FRONTS - ELEVATOR 22 - 5 per front,Complete,SEA - 5,West Support Building,SUES-5 - 6-1 - FIZ - GL A -E,,ELEVATOR,CONSTRUCTION,W&W,DRYWALL,,INTERIORS,2025-05-13 07:00,2025-06-18 17:00,2025-05-19 07:00,2025-07-03 17:00,2025-11-20 17:00,2025-11-20 17:00,2025-11-26 07:00,2025-11-26 07:00,0,260,100
CN.SEA5.10620,IMPACT - REMEDY - SECAI PIPES IN THE WAY - SEA5- GL 17-18 - C LINE - L1,Complete,SEA - 5,West Support Building,SUES-1 - 19-16,L1 - Fndn Slab,DS/AD INTERIORS,CONSTRUCTION,BERG,DRYWALL,FIZ DATA CENTER,INTERIORS,2024-09-03 07:00,2024-09-26 17:00,2024-07-27 07:00,2024-08-19 17:00,2025-11-20 17:00,2025-11-20 17:00,2025-11-24 07:00,2025-11-24 07:00,0,150,100
CN.SEA5.10780,IMPACT - Scaffold obstruction 2nd layer of drywall - SUE - Level 1 - B/3-4,Complete,SEA - 5,West Support Building,B3 - Area 10 (Gridlines 24-27),L1 - Fndn Slab,BUNKER ROOM,CONSTRUCTION,CHERRY COATING,DRYWALL,FIZ DATA CENTER,INTERIORS,2024-10-14 07:00,2024-10-21 17:00,2024-08-19 07:00,2024-11-20 17:00,2025-11-20 17:00,2025-11-20 17:00,2025-12-05 17:00,2025-12-05 17:00,0,50,100
CN.SEA5.10790,IMPACT - CCD #434 - Apache - Scaffolds for Level 1 N18-19 and M18-19,Complete,SEA - 5,West Support Building,SUWN-1 - 18-21,L1 - Fndn Slab,H2 PURIFIER RM,CONSTRUCTION,CHERRY COATING,DRYWALL,FIZ DATA CENTER,INTERIORS,2024-10-14 07:00,2024-10-21 17:00,2024-08-21 07:00,2024-09-21 11:00,2025-11-20 17:00,2025-11-20 17:00,2025-12-04 17:00,2025-12-04 17:00,0,50,100
CN.SWB5.10400,REMAINING TAPE & FLOAT - IT SECURITY ROOM - NE PENTHOUSE,Complete,SEA - 5,East Support Building,NORTH EAST PENTHOUSE,L4 - SUP Roof - FAB Roof,,CONSTRUCTION,DOORS AND HARDWARE,TBD Architectural Finishes,SEAN MONK,,2025-01-02 07:00,2025-01-03 17:00,2025-01-02 07:00,2025-01-04 17:00,2025-11-20 17:00,2025-11-20 17:00,2025-11-24 07:00,2025-11-24 07:00,0,20,100
CN.SWB5.10410,REMAINING TAPE & FLOAT -FIREALARM 18 - NE PENTHOUSE,Complete,SEA - 5,East Support Building,NORTH EAST PENTHOUSE,L4 - SUP Roof - FAB Roof,,CONSTRUCTION,DOORS AND HARDWARE,TBD Architectural Finishes,SEAN MONK,,2025-01-06 07:00,2025-01-08 17:00,2025-01-06 07:00,2025-01-08 17:00,2025-11-20 17:00,2025-11-20 17:00,2025-11-24 07:00,2025-11-24 07:00,0,30,100
CN.SWB5.10420,REMAINING TAPE & FLOAT  -I/O EM-2 -  NE PENTHOUSE,Complete,SEA - 5,East Support Building,NORTH EAST PENTHOUSE,L4 - SUP Roof - FAB Roof,,CONSTRUCTION,DOORS AND HARDWARE,TBD Architectural Finishes,SEAN MONK,,2025-01-06 07:00,2025-01-08 17:00,2025-01-06 07:00,2025-01-08 17:00,2025-11-20 17:00,2025-11-20 17:00,2025-11-24 07:00,2025-11-24 07:00,0,30,100
CN.SWB5.10430,TAPE & FLOAT - 33 COLUMNS & I/O RM 2 - NE PENTHOUSE,Not Started,SEA - 5,East Support Building,NORTH EAST PENTHOUSE,L4 - SUP Roof - FAB Roof,,CONSTRUCTION,DOORS AND HARDWARE,TBD Architectural Finishes,SEAN MONK,,2025-11-21 07:00,2025-11-24 17:00,,,2025-11-21 07:00,2025-11-24 17:00,2025-11-24 07:00,2025-11-25 17:00,20,20,0
CN.SEA5.10800,IMPACT - SECAI TO RELEASE WALLS IN PHASES - DATA CENTER 2 - GL G-N - D LINE - 3 LINE,Complete,SEA - 5,West Support Building,FIZ1 (West Inner) GL J-G - DATA CENTER 2,L2 - SubFab Level,DATA CENTER 2,CONSTRUCTION,BERG,DRYWALL,FIZ DATA CENTER,INTERIORS,2024-09-26 07:00,2024-10-15 17:00,2024-09-23 07:00,2024-12-02 17:00,2025-11-20 17:00,2025-11-20 17:00,2025-11-26 17:00,2025-11-26 17:00,0,120,100
CN.SWB5.10580,INSTALL WATER PROOFING & TOPPING SLAB - NE PENTHOUSE RAMP- L4,Complete,SEA - 5,East Support Building,NORTH EAST PENTHOUSE,L4 - SUP Roof - FAB Roof,,CONSTRUCTION,BERG,Steel Erection,SEAN MONK,,2024-12-02 07:00,2024-12-09 17:00,2024-12-02 07:00,2024-12-09 17:00,2025-11-20 17:00,2025-11-20 17:00,2025-12-05 17:00,2025-12-05 17:00,0,50,100
CN.AB.AR.7810,FINISH DRYWALL & FINISHES - AIRLOCK 22,Complete,SEA - 5,East Support Building,SUES-5 - 6-1 - FIZ - GL A -E,L3 / Waffle Slab Level,AIRLOCKS & VESTABLES,CONSTRUCTION,CHERRY COATING,DRYWALL,AMBER CARO,INTERIORS,2025-02-04 07:00,2025-02-12 17:00,2025-02-04 07:00,2025-08-15 17:00,2025-11-20 17:00,2025-11-20 17:00,2025-12-05 17:00,2025-12-05 17:00,0,70,100
CN.AB.AR.7820,IMPACT - E4 MEP MATERIAL EQUIPMENT IN WAY/ MEP Rough in -ELEVATOR 22 HALLWAY - SEA5 FIZ - GL 6-1 - C-A - L3,Active,SEA - 5,East Support Building,SUES-5 - 6-1 - FIZ - GL A -E,L3 / Waffle Slab Level,AIRLOCKS & VESTABLES,CONSTRUCTION,BERG,DRYWALL,AMBER CARO,INTERIORS,2024-04-16 07:00,2024-04-22 17:00,2024-10-24 07:00,,2025-11-21 07:00,2025-11-24 17:00,2025-11-18 07:00,2025-11-19 17:00,20,50,100
CN.SWB5.10650,IMPACT - MC DEAN BLOCKING THE ACCESS -I/O EM-2 - NE PENTHOUSE,Complete,SEA - 5,East Support Building,NORTH EAST PENTHOUSE,L4 - SUP Roof - FAB Roof,,CONSTRUCTION,DOORS AND HARDWARE,TBD Architectural Finishes,SEAN MONK,,2024-12-02 07:00,2024-12-05 17:00,2024-12-02 07:00,2024-12-24 17:00,2025-11-20 17:00,2025-11-20 17:00,2025-11-24 07:00,2025-11-24 07:00,0,30,100
CN.SEA54860,IMPACT -SECAI W&W INSTALLING OVERHEAD PIPNG - SEA5 - A-B/4 - L1,Complete,SEA - 5,East Support Building,SUES-5 - 6-1 - FIZ - GL A -E,L1 - Fndn Slab,OAC MECH RM,CONSTRUCTION,FINISH PAINT,TBD Architectural Finishes,JAMES LEE,INTERIORS,2024-12-30 07:00,2025-01-09 17:00,2024-12-02 07:00,2025-09-22 07:00,2025-11-20 17:00,2025-11-20 17:00,2025-12-05 17:00,2025-12-05 17:00,0,80,100
CN.SEA54870,INSTALL RAISED ACCESS FLOORING - I/O FAB124101 - SUE- L2- GL G/3,Not Started,SEA - 5,,SUES-5 - 6-1 - FIZ - GL A -E,L2 - SubFab Level,DATA CENTER 2,CONSTRUCTION,SELECT PREFAB,TBD Architectural Finishes,,,2025-11-24 07:00,2025-11-26 17:00,,,2025-11-24 07:00,2025-11-26 17:00,2025-11-21 07:00,2025-11-25 17:00,30,30,0
CN.SEA54880,MATERIAL DELIVERY & CREW MOBILIZATION - RAISED ACCESS FLOORS-,Complete,SEA - 5,,SUES-5 - 6-1 - FIZ - GL A -E,L1 - Fndn Slab,OAC MECH RM,CONSTRUCTION,SELECT PREFAB,TBD Architectural Finishes,,,2025-01-20 07:00,2025-02-13 17:00,2025-01-20 07:00,2025-02-18 17:00,2025-11-20 17:00,2025-11-20 17:00,2025-11-20 07:00,2025-11-20 07:00,0,190,100
CN.SEA54890,INSTALL RAISED ACCESS FLOORING - L2 GL 1-2- DATA CENTER B,Complete,SEA - 5,,SUES-5 - 6-1 - FIZ - GL A -E,L2 - SubFab Level,OAC MECH RM,CONSTRUCTION,SELECT PREFAB,TBD Architectural Finishes,,,2025-02-21 07:00,2025-03-04 17:00,2025-02-21 07:00,2025-03-24 17:00,2025-11-20 17:00,2025-11-20 17:00,2025-11-20 07:00,2025-11-20 07:00,0,80,100
CN.AB.AR.8400,FINISH DRYWALL & FINISHES - VESTIBULE 22,Complete,SEA - 5,East Support Building,SUES-5 - 6-1 - FIZ - GL A -E,L3 / Waffle Slab Level,AIRLOCKS & VESTABLES,CONSTRUCTION,CHERRY COATING,DRYWALL,AMBER CARO,INTERIORS,2025-09-25 07:00,2025-09-26 17:00,2025-09-25 07:00,2025-09-26 17:00,2025-11-20 17:00,2025-11-20 17:00,2025-12-05 17:00,2025-12-05 17:00,0,20,100
CN.AB.AR.8480,IMPACT - PENDING CATWALK BY SECAI - AIRLOCK 22,Complete,SEA - 5,East Support Building,SUES-5 - 6-1 - FIZ - GL A -E,L3 / Waffle Slab Level,AIRLOCKS & VESTABLES,CONSTRUCTION,CHERRY COATING,DRYWALL,AMBER CARO,INTERIORS,2025-09-22 07:00,2025-09-23 17:00,2025-09-22 07:00,2025-09-25 17:00,2025-11-20 17:00,2025-11-20 17:00,2025-12-05 17:00,2025-12-05 17:00,0,20,100
CN.SEA5.10860,INFINITY - CUTTING SLAB - ELEVATOR 22 - 4 per front,Complete,SEA - 5,West Support Building,SUES-5 - 6-1 - FIZ - GL A -E,,ELEVATOR,CONSTRUCTION,W&W,DRYWALL,,INTERIORS,2025-05-13 07:00,2025-06-03 17:00,2025-05-15 07:00,2025-05-22 17:00,2025-11-20 17:00,2025-11-20 17:00,2025-11-26 07:00,2025-11-26 07:00,0,150,100
CN.SEA5.10870,ALPHA PRIMER AND TOUCH UP C CHANNEL EDGE ARMOUR- ELEVATOR 22 - 4 per goal post,Complete,SEA - 5,West Support Building,SUES-5 - 6-1 - FIZ - GL A -E,,ELEVATOR,CONSTRUCTION,W&W,DRYWALL,,INTERIORS,2025-09-02 07:00,2025-09-16 17:00,2025-09-02 07:00,2025-09-02 17:00,2025-11-20 17:00,2025-11-20 17:00,2025-12-05 17:00,2025-12-05 17:00,0,110,100
CN.SWB5.10880,IMPACT - MEP ELECTRICAL & FIRE SPRINKLER TEST & INSPECTION - NE - BREEZEWAY - (Postponed to 8/26),Complete,SEA - 5,East Support Building,NORTH EAST PENTHOUSE,EXTERIOR SKIN,,CONSTRUCTION,KOVACH,INSULATED METAL PANELS,SEAN MONK,,2025-04-04 07:00,2025-04-13 17:00,2025-01-06 07:00,2025-08-27 17:00,2025-11-20 17:00,2025-11-20 17:00,2025-11-17 07:00,2025-11-17 07:00,0,100,100
CN.SWB5.10890,CEILING STUD FRAME FIX W/ PROPER SPACING - NE - BREEZEWAY - (removal & install framing),Complete,SEA - 5,East Support Building,NORTH EAST PENTHOUSE,EXTERIOR SKIN,,CONSTRUCTION,KOVACH,INSULATED METAL PANELS,SEAN MONK,,2025-09-04 07:00,2025-09-13 17:00,2025-09-04 07:00,2025-09-07 17:00,2025-11-20 17:00,2025-11-20 17:00,2025-12-01 07:00,2025-12-01 07:00,0,100,100
CN.SWB5.10900,IMPACT - MEP ROUGH IN CEILING - removal for MEP and reinstall by SECAI / axios - NE - BREEZEWAY,Complete,SEA - 5,East Support Building,NORTH EAST PENTHOUSE,EXTERIOR SKIN,,CONSTRUCTION,KOVACH,INSULATED METAL PANELS,SEAN MONK,,2025-09-14 07:00,2025-09-14 17:00,2025-08-28 07:00,2025-09-02 12:00,2025-11-20 17:00,2025-11-20 17:00,2025-12-01 07:00,2025-12-01 07:00,0,10,100
CN.SWB5.10910,GDA - WATERPROOFING - NE - BREEZEWAY,Complete,SEA - 5,East Support Building,NORTH EAST PENTHOUSE,EXTERIOR SKIN,,CONSTRUCTION,KOVACH,INSULATED METAL PANELS,SEAN MONK,,2025-10-27 07:00,2025-10-31 17:00,2025-10-27 07:00,2025-11-03 17:00,2025-11-20 17:00,2025-11-20 17:00,2025-12-01 07:00,2025-12-01 07:00,0,50,100
CN.SEA5.10900,"EDGE ARMOUR INSTALL - ELEVATOR 22 - 4 per front (level 4 and Level 1A completed, pending level 3 & U1)",Complete,SEA - 5,West Support Building,SUES-5 - 6-1 - FIZ - GL A -E,,ELEVATOR,CONSTRUCTION,W&W,DRYWALL,,INTERIORS,2025-08-05 07:00,2025-08-26 17:00,2025-06-16 07:00,2025-07-07 17:00,2025-11-20 17:00,2025-11-20 17:00,2025-11-26 07:00,2025-11-26 07:00,0,160,100
CN.SEA5.10910,IMPACT - EDGE ARMOUR INSTALL - ELEVATOR 20 - 4 per front,Complete,SEA - 5,West Support Building,SUES-5 - 6-1 - FIZ - GL A -E,,ELEVATOR,CONSTRUCTION,W&W,DRYWALL,,INTERIORS,2025-05-05 07:00,2025-06-09 17:00,2025-04-14 07:00,2025-04-21 17:00,2025-11-20 17:00,2025-11-20 17:00,2025-11-26 07:00,2025-11-26 07:00,0,250,100
CN.SEA5.10920,INSTALL WOOD BLOCKING - GL 1-3 - A - L4 ROOF,Complete,SEA - 5,East Support Building,SUES-5 - 6-1 - FIZ - GL A -E,L4 - SUP Roof - FAB Roof,,CONSTRUCTION,BAKER,TOPPING,,SOMD / Roofing / Waterproofing,2025-05-27 07:00,2025-06-02 17:00,2025-05-23 07:00,2025-05-27 17:00,2025-11-20 17:00,2025-11-20 17:00,2025-12-05 17:00,2025-12-05 17:00,0,50,100
CN.SEA5.10930,INSTALL COPING CAP - GL 1-3 - A - L4 ROOF,Complete,SEA - 5,East Support Building,SUES-5 - 6-1 - FIZ - GL A -E,L4 - SUP Roof - FAB Roof,,CONSTRUCTION,BAKER,TOPPING,,SOMD / Roofing / Waterproofing,2025-06-03 07:00,2025-06-09 17:00,2025-05-28 07:00,2025-06-02 17:00,2025-11-20 17:00,2025-11-20 17:00,2025-12-05 17:00,2025-12-05 17:00,0,50,100
CN.SEA5.10940,INSTALL WOOD BLOCKING - GL 5-7 - A - L4 ROOF,Complete,SEA - 5,East Support Building,SUES-4 - 9-6,L4 - SUP Roof - FAB Roof,,CONSTRUCTION,BAKER,TOPPING,,SOMD / Roofing / Waterproofing,2025-07-16 07:00,2025-07-22 17:00,2025-06-19 07:00,2025-07-11 17:00,2025-11-20 17:00,2025-11-20 17:00,2025-12-05 07:00,2025-12-05 07:00,0,50,100
CN.SEA5.10950,INSTALL EDGE METAL & MEMBRANE - GL 5-7 - A - L4 ROOF,Active,SEA - 5,East Support Building,SUES-4 - 9-6,L4 - SUP Roof - FAB Roof,SUE - SUPPORT EAST,CONSTRUCTION,BAKER,TOPPING,,SOMD / Roofing / Waterproofing,2025-07-25 07:00,2025-07-31 17:00,2025-07-14 07:00,,2025-11-21 07:00,2025-11-21 17:00,2025-12-05 07:00,2025-12-05 17:00,10,50,0
CN.SEA5.10960,"IMPACT - MEP PIPE PENETRATIONS - REWORK SLAB, PARAPET- GL 5-7 - A - L4 ROOF",Complete,SEA - 5,East Support Building,SUES-4 - 9-6,L4 - SUP Roof - FAB Roof,,CONSTRUCTION,BAKER,TOPPING,,SOMD / Roofing / Waterproofing,2025-05-27 07:00,2025-06-05 17:00,2025-05-27 07:00,2025-06-18 17:00,2025-11-20 17:00,2025-11-20 17:00,2025-12-04 07:00,2025-12-04 07:00,0,80,100
CN.SEA5.10970,"IMPACT - SECAI REMOVE NETTING, REWORK HANDRAIL & MOVE GENERATOR - LVL3 - ELEVATOR 22",Complete,SEA - 5,West Support Building,SUES-5 - 6-1 - FIZ - GL A -E,,ELEVATOR,CONSTRUCTION,W&W,DRYWALL,,INTERIORS,2025-05-09 07:00,2025-06-20 17:00,2025-04-29 07:00,2025-07-14 17:00,2025-11-20 17:00,2025-11-20 17:00,2025-11-26 07:00,2025-11-26 07:00,0,300,100
CN.SEA5.10980,SECAI - EDGE ARMOUR INSTALL  - ELEVATOR 05 - 4 per front,Not Started,SEA - 5,West Support Building,SUES-5 - 6-1 - FIZ - GL A -E,,ELEVATOR,CONSTRUCTION,W&W,DRYWALL,,INTERIORS,2025-12-22 07:00,2026-01-21 17:00,,,2025-12-22 07:00,2026-01-21 17:00,2025-10-23 07:00,2025-11-19 17:00,200,200,0
CN.SEA5.10990,EDGE ARMOUR INSTALL - ELEVATOR 18 - 4 per front,Complete,SEA - 5,West Support Building,SUES-5 - 6-1 - FIZ - GL A -E,,ELEVATOR,CONSTRUCTION,W&W,DRYWALL,,INTERIORS,2025-05-13 07:00,2025-06-04 17:00,2025-05-14 07:00,2025-05-31 17:00,2025-11-20 17:00,2025-11-20 17:00,2025-12-05 17:00,2025-12-05 17:00,0,160,100
CN.SEA5.11030,DESCOPED - ALPHA PRIMER AND TOUCH UP C CHANNEL EDGE ARMOUR- ELEVATOR 20,Complete,SEA - 5,West Support Building,SUES-5 - 6-1 - FIZ - GL A -E,,ELEVATOR,CONSTRUCTION,W&W,DRYWALL,,INTERIORS,2025-09-17 07:00,2025-10-02 17:00,2025-07-07 07:00,2025-07-11 17:00,2025-11-20 17:00,2025-11-20 17:00,2025-12-05 17:00,2025-12-05 17:00,0,120,100
CN.SEA5.11040,IMPACT - RFI 1773 - ANCHORAGE TO CONCRETE - ELEVATOR 22,Complete,SEA - 5,West Support Building,SUES-5 - 6-1 - FIZ - GL A -E,,ELEVATOR,CONSTRUCTION,W&W,DRYWALL,,INTERIORS,2025-05-09 07:00,2025-05-22 17:00,2025-05-16 07:00,2025-05-30 17:00,2025-11-20 17:00,2025-11-20 17:00,2025-11-26 07:00,2025-11-26 07:00,0,100,100
CN.SEA5.11050,PIPE PENETRATIONS FLASHING - GL 5-7 - A - L4 ROOF,Not Started,SEA - 5,East Support Building,SUES-4 - 9-6,L4 - SUP Roof - FAB Roof,SUE - SUPPORT EAST,CONSTRUCTION,BAKER,TOPPING,,SOMD / Roofing / Waterproofing,2025-11-21 07:00,2025-11-24 17:00,,,2025-11-21 07:00,2025-11-24 17:00,2025-12-04 07:00,2025-12-05 17:00,20,20,0
CN.SEA5.11070,INSTALL WOOD BLOCKING - GL 22.8 & 25.8 - N line - L4 ROOF,Complete,SEA - 5,East Support Building,SUWN-2 - 21-24,L4 - SUP Roof - FAB Roof,,CONSTRUCTION,BAKER,TOPPING,,SOMD / Roofing / Waterproofing,2025-06-19 07:00,2025-06-25 17:00,2025-06-03 07:00,2025-06-06 17:00,2025-11-20 17:00,2025-11-20 17:00,2025-12-05 17:00,2025-12-05 17:00,0,50,100
CN.SEA5.11090,INSTALL COPING CAP - GL 22.8 & 25.8 - N line - L4 ROOF,Complete,SEA - 5,East Support Building,SUWN-2 - 21-24,L4 - SUP Roof - FAB Roof,,CONSTRUCTION,BAKER,TOPPING,,SOMD / Roofing / Waterproofing,2025-07-11 07:00,2025-07-17 17:00,2025-06-16 07:00,2025-06-19 17:00,2025-11-20 17:00,2025-11-20 17:00,2025-12-05 17:00,2025-12-05 17:00,0,50,100
CN.SEA5.11060,"IMPACT - MEP PIPE PENETRATIONS - REWORK SLAB, PARAPET- GL 22.8 & 25.8 - N line - L4 ROOF",Complete,SEA - 5,East Support Building,SUWN-2 - 21-24,L4 - SUP Roof - FAB Roof,,CONSTRUCTION,BAKER,TOPPING,,SOMD / Roofing / Waterproofing,2025-05-27 07:00,2025-06-05 17:00,2025-05-27 07:00,2025-06-02 17:00,2025-11-20 17:00,2025-11-20 17:00,2025-12-05 17:00,2025-12-05 17:00,0,80,100
CN.SEA5.11080,PIPE PENETRATIONS FLASHING - GL 22.8 & 25.8 - N line - L4 ROOF,Complete,SEA - 5,East Support Building,SUWN-2 - 21-24,L4 - SUP Roof - FAB Roof,,CONSTRUCTION,BAKER,TOPPING,,SOMD / Roofing / Waterproofing,2025-07-03 07:00,2025-07-10 17:00,2025-06-09 11:37,2025-06-13 17:00,2025-11-20 17:00,2025-11-20 17:00,2025-12-05 17:00,2025-12-05 17:00,0,50,100
CN.SEA5.11100,SCAFFOLD BY SECAI FOR FIREPROOFING SFRM TOUCH UP - L5&L6 - C&D-LINE - GL 3-33,Not Started,SEA - 5,,SUES-5 - 6-1 - FIZ - GL A -E,L4 - SUP Roof - FAB Roof,DS/AD INTERIORS,CONSTRUCTION,ROLLING PLAINS,Fireproofing,,,2025-11-26 07:00,2025-12-05 17:00,,,2025-11-26 07:00,2025-12-05 17:00,2025-11-19 07:00,2025-11-26 17:00,60,60,0
CN.SEA5.11110,FIREPROOFING SFRM TOUCH UP - L5&L6 - C&D-LINE - GL 3-33,Not Started,SEA - 5,,SUES-5 - 6-1 - FIZ - GL A -E,L4 - SUP Roof - FAB Roof,DS/AD INTERIORS,CONSTRUCTION,ROLLING PLAINS,Fireproofing,,,2025-12-08 07:00,2025-12-12 17:00,,,2025-12-08 07:00,2025-12-12 17:00,2025-12-01 07:00,2025-12-05 17:00,50,50,0
CN.SEA5.11120,SCAFFOLD BY SECAI FOR FIREPROOFING SFRM TOUCH UP - L2 - C&D-LINE - GL 24,Not Started,SEA - 5,,SUES-5 - 6-1 - FIZ - GL A -E,L4 - SUP Roof - FAB Roof,DS/AD INTERIORS,CONSTRUCTION,ROLLING PLAINS,Fireproofing,,,2025-11-25 07:00,2025-11-26 17:00,,,2025-11-25 07:00,2025-11-26 17:00,2025-11-25 07:00,2025-11-26 17:00,20,20,0
CN.SEA5.11130,FIREPROOFING SFRM TOUCH UP - L2 - C&D-LINE - GL 24,Not Started,SEA - 5,,SUES-5 - 6-1 - FIZ - GL A -E,L4 - SUP Roof - FAB Roof,DS/AD INTERIORS,CONSTRUCTION,ROLLING PLAINS,Fireproofing,,,2025-12-01 07:00,2025-12-05 17:00,,,2025-12-01 07:00,2025-12-05 17:00,2025-12-01 07:00,2025-12-05 17:00,50,50,0
CN.SWB5.11010,IMPACT - SECAI DESIGN CHANGE - NE - BREEZEWAY,Complete,SEA - 5,East Support Building,NORTH EAST PENTHOUSE,EXTERIOR SKIN,,CONSTRUCTION,KOVACH,INSULATED METAL PANELS,SEAN MONK,,2025-08-19 07:00,2025-08-20 17:00,2025-06-15 12:00,2025-06-20 13:00,2025-11-20 17:00,2025-11-20 17:00,2025-11-17 07:00,2025-11-17 07:00,0,20,100
CN.SEA5.11140,IMPACT - MEP PIPES IN THE WAY - INSTALL REMAINING BLOCKING & COPING CAP - GL 1-3 - A - L4 ROOF,Complete,SEA - 5,East Support Building,SUES-5 - 6-1 - FIZ - GL A -E,L4 - SUP Roof - FAB Roof,,CONSTRUCTION,BAKER,TOPPING,,SOMD / Roofing / Waterproofing,2025-06-03 07:00,2025-06-09 17:00,2025-06-03 07:00,2025-06-20 17:00,2025-11-20 17:00,2025-11-20 17:00,2025-12-05 17:00,2025-12-05 17:00,0,50,100
CN.SEA5.11150,SUBMITTAL - 0804 to be Approved & 0800 (approved) to Fix Slab so Latcon can install anchors - ELEVATOR 22 - 5 per front,Complete,SEA - 5,West Support Building,SUES-5 - 6-1 - FIZ - GL A -E,,ELEVATOR,CONSTRUCTION,W&W,DRYWALL,,INTERIORS,2025-05-13 07:00,2025-06-18 17:00,2025-05-19 07:00,2025-07-11 13:00,2025-11-20 17:00,2025-11-20 17:00,2025-11-26 07:00,2025-11-26 07:00,0,260,100
CN.SEA5.11160,IOCC1394 TO BE APPROVED - L2 - C&D-LINE - GL 24,Active,SEA - 5,,SUES-5 - 6-1 - FIZ - GL A -E,L4 - SUP Roof - FAB Roof,DS/AD INTERIORS,CONSTRUCTION,ROLLING PLAINS,Fireproofing,,,2025-06-23 07:00,2025-07-01 17:00,2025-02-22 07:00,,2025-11-21 07:00,2025-11-24 17:00,2025-11-21 07:00,2025-11-24 17:00,20,70,0
CN.SWB5.11020,IMPACT -IOCC SUBMITTED & WAITING SECAI APPROVAL - NE - BREEZEWAY,Complete,SEA - 5,East Support Building,NORTH EAST PENTHOUSE,EXTERIOR SKIN,,CONSTRUCTION,KOVACH,INSULATED METAL PANELS,SEAN MONK,,2025-04-04 07:00,2025-04-13 17:00,2025-06-23 07:00,2025-07-21 07:00,2025-11-20 17:00,2025-11-20 17:00,2025-12-01 07:00,2025-12-01 07:00,0,100,100
CN.SWB5.11030,BERG - SHEATHING (Remove and Reinstall) & INSULATION - PRICING - NE - BREEZEWAY,Complete,SEA - 5,East Support Building,NORTH EAST PENTHOUSE,EXTERIOR SKIN,,CONSTRUCTION,KOVACH,INSULATED METAL PANELS,SEAN MONK,,2025-09-24 07:00,2025-09-25 17:00,2025-09-10 07:00,2025-09-22 17:00,2025-11-20 17:00,2025-11-20 17:00,2025-12-01 07:00,2025-12-01 07:00,0,20,100
CN.SWB5.11040,IMPACT - SUBMITTAL PREP & APPROVAL - NE - BREEZEWAY,Complete,SEA - 5,East Support Building,NORTH EAST PENTHOUSE,EXTERIOR SKIN,,CONSTRUCTION,KOVACH,INSULATED METAL PANELS,SEAN MONK,,2025-08-21 07:00,2025-08-30 17:00,2025-07-24 07:00,2025-08-05 17:00,2025-11-20 17:00,2025-11-20 17:00,2025-12-01 07:00,2025-12-01 07:00,0,100,100
CN.SWB5.11050,KOVACH - INSTAL ACM PANEL - NE - BREEZEWAY,Not Started,SEA - 5,East Support Building,NORTH EAST PENTHOUSE,EXTERIOR SKIN,,CONSTRUCTION,KOVACH,INSULATED METAL PANELS,SEAN MONK,,2025-11-21 07:00,2025-11-25 17:00,,,2025-11-21 07:00,2025-11-25 17:00,2025-12-01 07:00,2025-12-05 17:00,50,50,0
CN.A1.UG.1190,PH1- UNDERGROUND PLUMBING SEB1,Complete,SEB - 1,East Support Building,SUEN-1 - 19-22,L1 - Fndn Slab,,CONSTRUCTION,,Underground Plumbing - Cobb,ANDREA SOLIS,,2022-08-15 07:00,2022-08-18 17:00,2022-08-15 07:00,2022-08-18 17:00,2025-11-20 17:00,2025-11-20 17:00,2025-06-13 08:00,2025-06-13 08:00,0,40,100
CN.A1.UG.1200,PH1- UNDERGROUND ELECTRICAL SEB1,Complete,SEB - 1,East Support Building,SUEN-1 - 19-22,L1 - Fndn Slab,,CONSTRUCTION,,Underground Electrical - (By Owner),ANDREA SOLIS,,2022-09-27 07:00,2022-09-30 17:00,2022-09-27 07:00,2022-09-30 17:00,2025-11-20 17:00,2025-11-20 17:00,2025-06-13 08:00,2025-06-13 08:00,0,40,100
CN.SEB1.1000,PH1- SUP - EXCAVATE PIER CAPS - SEB1,Complete,SEB - 1,East Support Building,SUEN-1 - 19-22,L1 - Fndn Slab,,CONSTRUCTION,,Excavate CIP,ANDREA SOLIS,,2022-08-10 08:00,2022-08-12 12:00,2022-08-10 08:00,2022-08-26 09:24,2025-11-20 17:00,2025-11-20 17:00,2025-06-13 08:00,2025-06-13 08:00,0,24,100
CN.SEB1.1010,PH1-FRP GRADE BEAM - SEB1,Complete,SEB - 1,East Support Building,SUEN-1 - 19-22,L1 - Fndn Slab,,CONSTRUCTION,,Pour Concrete,ANDREA SOLIS,,2022-10-01 08:00,2022-10-05 08:00,2022-10-01 08:00,2022-10-06 09:00,2025-11-20 17:00,2025-11-20 17:00,2025-06-13 08:00,2025-06-13 08:00,0,40,100
CN.SEB1.1080,PH1- FRP SLAB - SEB-1-L3,Complete,SEB - 1,East Support Building,SUEN-1 - 19-22,L3 / Waffle Slab Level,,CONSTRUCTION,,SOMD,CONCRETE,,2023-08-03 09:00,2023-08-05 13:00,2023-08-03 09:00,2023-08-05 14:00,2025-11-20 17:00,2025-11-20 17:00,2025-06-13 08:00,2025-06-13 08:00,0,24,100
CN.SEB1.1120,PH1- FRP SLAB - SEB-1-ROOF,Complete,SEB - 1,East Support Building,SUEN-1 - 19-22,L4 - SUP Roof - FAB Roof,,CONSTRUCTION,,SOMD,CONCRETE,SOMD / Roofing / Waterproofing,2023-09-11 09:00,2023-09-12 15:00,2023-09-11 09:00,2023-09-12 15:00,2025-11-20 17:00,2025-11-20 17:00,2025-09-29 07:00,2025-09-29 07:00,0,16,100
CN.SEB1.1030,PH1-BLACK BASE (NOW RAT SLAB) - SEB1,Complete,SEB - 1,East Support Building,SUEN-1 - 19-22,L1 - Fndn Slab,,CONSTRUCTION,,RAT SLAB,ANDREA SOLIS,,2022-10-06 09:00,2022-10-08 13:00,2022-10-06 09:00,2022-10-08 14:00,2025-11-20 17:00,2025-11-20 17:00,2025-06-13 08:00,2025-06-13 08:00,0,24,100
CN.SEB1.1020,PH1-CURE PIER CAPS - SEB1,Complete,SEB - 1,East Support Building,SUEN-1 - 19-22,L1 - Fndn Slab,,CONSTRUCTION,,Concrete Cure,ANDREA SOLIS,,2022-10-06 09:00,2022-10-06 09:00,2022-10-06 09:00,2022-10-06 09:00,2025-11-20 17:00,2025-11-20 17:00,2025-06-13 08:00,2025-06-13 08:00,0,0,100
CN.SEB1.1100,PH1- CURE SOMD - SEB-1-L3,Complete,SEB - 1,East Support Building,SUEN-1 - 19-22,L3 / Waffle Slab Level,,CONSTRUCTION,,Concrete Cure,JAMES LEE,,2023-08-07 07:00,2023-08-10 11:00,2023-08-06 20:44,2023-08-07 20:44,2025-11-20 17:00,2025-11-20 17:00,2025-09-29 07:00,2025-09-29 07:00,0,24,100
CN.SEB1.1130,PH1- CURE SOMD - SEB-1-ROOF,Complete,SEB - 1,East Support Building,SUEN-1 - 19-22,L4 - SUP Roof - FAB Roof,,CONSTRUCTION,,Concrete Cure,JAMES LEE,SOMD / Roofing / Waterproofing,2023-10-03 07:00,2023-10-05 11:00,2023-09-12 23:48,2023-09-14 03:00,2025-11-20 17:00,2025-11-20 17:00,2025-11-21 07:00,2025-11-21 07:00,0,24,100
CN.SEB1.1200,FRP TOPPING SLAB - GL 20-22 - C-A - L4 ROOF,Complete,SEB - 1,East Support Building,SUEN-1 - 19-22,L4 - SUP Roof - FAB Roof,,CONSTRUCTION,BAKER,TOPPING,CONCRETE,SOMD / Roofing / Waterproofing,2024-10-08 07:00,2024-10-11 17:00,2024-10-08 07:00,2024-10-09 17:00,2025-11-20 17:00,2025-11-20 17:00,2025-12-05 17:00,2025-12-05 17:00,0,30,100
CN.SEB1.1220,MEP EQPT PADS (LAYOUT & INSTALL DOWELS)- SEB-1-ROOF,Complete,SEB - 1,East Support Building,SUEN-1 - 19-22,L4 - SUP Roof - FAB Roof,,CONSTRUCTION,,Cast-in Place Concrete - Baker Concrete,JAMES LEE,SOMD / Roofing / Waterproofing,2023-10-16 07:00,2023-10-18 12:00,2023-10-09 07:00,2023-10-12 07:00,2025-11-20 17:00,2025-11-20 17:00,2025-09-29 07:00,2025-09-29 07:00,0,24,100
CN.SEB1.1230,PH1- 1st FLOOR SLAB - SEB-1-L1,Complete,SEB - 1,East Support Building,SUEN-1 - 19-22,L1 - Fndn Slab,,CONSTRUCTION,,Pour Concrete,ANDREA SOLIS,,2022-10-08 14:00,2022-10-17 14:00,2022-10-08 14:00,2022-10-20 17:00,2025-11-20 17:00,2025-11-20 17:00,2025-06-13 08:00,2025-06-13 08:00,0,80,100
CN.SEB1.1050,TIER 1 ERECT PRECAST COLUMNS & BEAMS - SEB1,Complete,SEB - 1,East Support Building,SUEN-1 - 19-22,L3 / Waffle Slab Level,,CONSTRUCTION,,"SUP EAST A,B",SEAN MONK,,2023-04-13 09:00,2023-04-25 17:00,2023-04-03 09:00,2023-05-08 17:00,2025-11-20 17:00,2025-11-20 17:00,2025-06-13 08:00,2025-06-13 08:00,0,118,100
CN.SEB1.1140,PH1-ROOF LAYER PARAPET(FRAMING & SHEATING RIP) - SEB1- GL 19-22 - L4 - C-A,Complete,SEB - 1,East Support Building,SUEN-1 - 19-22,L4 - SUP Roof - FAB Roof,,CONSTRUCTION,,Roofing,JAMES LIVELY,SOMD / Roofing / Waterproofing,2023-12-11 07:00,2023-12-12 13:00,2023-11-26 07:00,2023-11-27 07:00,2025-11-20 17:00,2025-11-20 17:00,2025-12-05 17:00,2025-12-05 17:00,0,16,100
CN.SEB1.1160,PH1-FLUID APPLIED MEMBRANE ROOFING - SEB1- GL 19-22 - L4 - C-A,Complete,SEB - 1,East Support Building,SUEN-1 - 19-22,L4 - SUP Roof - FAB Roof,,CONSTRUCTION,,Roofing,JAMES LIVELY,SOMD / Roofing / Waterproofing,2023-12-12 13:00,2023-12-15 09:00,2023-11-28 13:00,2023-11-29 09:00,2025-11-20 17:00,2025-11-20 17:00,2025-12-05 17:00,2025-12-05 17:00,0,16,100
CN.SEB1.1170,PH1 - CLADDING STEEL INTERIOR GL 19-22 - D LINE (AD AREA),Complete,SEB - 1,East Support Building,SUEN-1 - 19-22,EXTERIOR SKIN,,CONSTRUCTION,,INSULATED METAL PANELS,JAMES LIVELY,,2024-03-07 07:00,2024-03-11 17:00,2024-03-07 07:00,2024-03-30 00:00,2025-11-20 17:00,2025-11-20 17:00,2025-11-21 07:00,2025-11-21 07:00,0,30,100
CN.SEB1.1190,INSTALL INSULATED METAL PANEL MODULES - GL 19-22 - C LINE (DS AREA) (21~24),Complete,SEB - 1,East Support Building,SUEN-1 - 19-22,EXTERIOR SKIN,,CONSTRUCTION,KOVACH,INSULATED METAL PANELS,JAMES LIVELY,,2024-04-19 07:00,2024-05-09 17:00,2024-04-19 07:00,2024-04-26 17:00,2025-11-20 17:00,2025-11-20 17:00,2025-12-05 17:00,2025-12-05 17:00,0,90,100
CN.SEB1.1150,CLADDING STEEL - GL 18-19 - A LINE [SUP EXTERIOR WALL] (ABOVE MEP TANK LEAVEOUT),Complete,SEB - 1,East Support Building,SUES-1 - 19-16,EXTERIOR SKIN,,CONSTRUCTION,PATRIOT,INSULATED METAL PANELS,JAMES LIVELY,,2024-09-13 07:00,2024-09-19 17:00,2024-08-19 07:00,2024-08-30 17:00,2025-11-20 17:00,2025-11-20 17:00,2025-09-29 07:00,2025-09-29 07:00,0,40,100
CN.SEB1.1180,INSTALL INSULATED METAL PANEL MODULES - GL 18-19 - A LINE [SUP EXTERIOR WALL] (MEP TANK LEAVEOUT),Complete,SEB - 1,East Support Building,SUES-1 - 19-16,EXTERIOR SKIN,,CONSTRUCTION,KOVACH,INSULATED METAL PANELS,JAMES LIVELY,,2024-11-21 07:00,2024-11-27 17:00,2024-11-21 07:00,2024-11-27 17:00,2025-11-20 17:00,2025-11-20 17:00,2025-12-05 17:00,2025-12-05 17:00,0,50,100
CN.SEB1.1110,PH1- AD STEEL FRAME INSTALL - SEB-1 fab side - (South crane moves here),Complete,SEB - 1,East Support Building,SUEN-1 - 19-22,DS/AD,,CONSTRUCTION,,Steel Erection,SEAN MONK,,2023-10-10 13:00,2023-10-13 15:00,2023-10-04 13:00,2023-10-08 08:00,2025-11-20 17:00,2025-11-20 17:00,2025-06-13 08:00,2025-06-13 08:00,0,32,100
CN.AB.AR.2410,METAL STUD FRAMING (2hr) - SEB1 - GL 19-22 - L1 C-A - MECHANICAL ROOM 3 CENTRAL,Complete,SEB - 1,East Support Building,SUEN-1 - 19-22,L1 - Fndn Slab,MECH RM 3,CONSTRUCTION,BERG,TBD Architectural Finishes,AMBER CARO,INTERIORS,2024-02-05 08:00,2024-02-10 08:00,2024-02-05 08:00,2024-02-12 13:00,2025-11-20 17:00,2025-11-20 17:00,2025-11-13 17:00,2025-11-13 17:00,0,40,100
CN.AB.AR.3870,MEP ROUGH IN & INSPECTION (by SECAI) - MECHANICAL ROOM 3 CENTRAL - SEB1 - GL 19-22 - C-A - L1,Complete,SEB - 1,East Support Building,SUEN-1 - 19-22,L1 - Fndn Slab,MECH RM 3,CONSTRUCTION,SECAI,TBD Architectural Finishes,AMBER CARO,,2024-06-10 07:00,2024-06-17 17:00,2024-06-10 07:00,2024-06-15 17:00,2025-11-20 17:00,2025-11-20 17:00,2025-11-20 07:00,2025-11-20 07:00,0,50,100
CN.AB.AR.3880,TAPE & FINISH DRYWALL - MECHANICAL ROOM 3 CENTRAL - SEB1 - GL 19-22 - C-A - L1,Complete,SEB - 1,East Support Building,SUEN-1 - 19-22,L1 - Fndn Slab,MECH RM 3,CONSTRUCTION,CHERRY COATING,DRYWALL,AMBER CARO,INTERIORS,2024-06-28 07:00,2024-07-08 17:00,2024-06-28 07:00,2024-07-05 17:00,2025-11-20 17:00,2025-11-20 17:00,2025-11-20 07:00,2025-11-20 07:00,0,50,100
CN.AB.AR.3930,INSTALL WALL PROTECTION - EXTERIOR BATHROOM WALLS IN MECH RM 3 - GL 21-22 - A-B - L1,Not Started,SEB - 1,East Support Building,SUEN-1 - 19-22,L1 - Fndn Slab,MECH RM 3,CONSTRUCTION,BERNCO,TBD Architectural Finishes,JAMES LEE,INTERIORS,2025-11-21 07:00,2025-11-25 17:00,,,2025-11-21 07:00,2025-11-25 17:00,2025-11-26 07:00,2025-12-02 17:00,30,30,0
CN.AB.AR.3890,FINISH PAINT - MECHANICAL ROOM 3 CENTRAL - SEB1 - GL 19-22 - C-A - L1,Not Started,SEB - 1,East Support Building,SUEN-1 - 19-22,L1 - Fndn Slab,MECH RM 3,CONSTRUCTION,FINISH PAINT,TBD Architectural Finishes,JAMES LEE,INTERIORS,2025-11-21 07:00,2025-11-24 17:00,,,2025-11-21 07:00,2025-11-24 17:00,2025-12-04 07:00,2025-12-05 17:00,20,20,0
CN.SEB1.1240,INSTALL METAL STAIRS - STAIR #20 - 19/D - ALL LEVELS,Complete,SEB - 1,East Support Building,SUES-1 - 19-16,INTERIOR STAIR TOWER - STAIR #20,,CONSTRUCTION,PATRIOT,INSULATED METAL PANELS,JAMES LIVELY,INTERIORS,2024-03-25 07:00,2024-04-03 17:00,2024-03-12 07:00,2024-05-10 07:00,2025-11-20 17:00,2025-11-20 17:00,2025-11-10 07:00,2025-11-10 07:00,0,80,100
CN.SEB1.1260,PH1- DECKING GL 18 - 19 - SEB-1-ROOF,Complete,SEB - 1,East Support Building,SUEN-1 - 19-22,L4 - SUP Roof - FAB Roof,,CONSTRUCTION,,Decking & Detail,SEAN MONK,SOMD / Roofing / Waterproofing,2023-07-31 07:00,2023-08-01 13:00,2023-07-26 07:00,2023-07-28 17:00,2025-11-20 17:00,2025-11-20 17:00,2025-09-29 07:00,2025-09-29 07:00,0,16,100
CN.SEB1.1090,PH1- DECKING GL 18 - 19 - SEB-1-L3,Complete,SEB - 1,East Support Building,SUEN-1 - 19-22,L3 / Waffle Slab Level,,CONSTRUCTION,,Decking & Detail,SEAN MONK,,2023-07-03 07:00,2023-07-06 13:00,2023-07-03 07:00,2023-07-06 13:00,2025-11-20 17:00,2025-11-20 17:00,2025-06-13 08:00,2025-06-13 08:00,0,16,100
CN.SEA1.1750,PH1- CAST IN PLACE OAC PADS - SEB1- GL 19-22 - L4 - C-A - ROOF,Complete,SEB - 1,East Support Building,SUEN-1 - 19-22,L4 - SUP Roof - FAB Roof,,CONSTRUCTION,,OAC/ MECH PADS,CONCRETE,SOMD / Roofing / Waterproofing,2023-12-16 08:00,2023-12-18 12:00,2023-12-02 08:00,2023-12-04 15:00,2025-11-20 17:00,2025-11-20 17:00,2025-12-05 17:00,2025-12-05 17:00,0,24,100
CN.SEA1.1760,PH1- MEP EQPT PADS (FORM / INSTALL PVC ANGLE)  - SEB1- GL 19-22 -  L4 - C-A - ROOF,Complete,SEB - 1,East Support Building,SUEN-1 - 19-22,L4 - SUP Roof - FAB Roof,,CONSTRUCTION,,OAC/ MECH PADS,CONCRETE,SOMD / Roofing / Waterproofing,2023-12-21 09:00,2023-12-22 15:00,2023-12-07 09:00,2023-12-08 15:00,2025-11-20 17:00,2025-11-20 17:00,2025-12-05 17:00,2025-12-05 17:00,0,16,100
CN.SEA1.1770,PH1- MEP EQPT PADS (REPAIR WATERPROOF) - SEB1- GL 19-22 - L4 - C-A - ROOF,Complete,SEB - 1,East Support Building,SUEN-1 - 19-22,L4 - SUP Roof - FAB Roof,,CONSTRUCTION,,OAC/ MECH PADS,CONCRETE,SOMD / Roofing / Waterproofing,2023-12-22 15:00,2023-12-29 11:00,2023-12-08 09:23,2023-12-10 15:00,2025-11-20 17:00,2025-11-20 17:00,2025-12-05 17:00,2025-12-05 17:00,0,16,100
CN.SEA1.1780,PH1- MEP EQPT PADS (TROUGHS DRAIN MATS & MEP SLEEVES) - SEB1- GL 19-22 - L4 - C-A - ROOF,Complete,SEB - 1,East Support Building,SUEN-1 - 19-22,L4 - SUP Roof - FAB Roof,,CONSTRUCTION,,OAC/ MECH PADS,CONCRETE,SOMD / Roofing / Waterproofing,2024-01-02 09:00,2024-01-04 16:00,2024-01-02 07:00,2024-01-05 11:00,2025-11-20 17:00,2025-11-20 17:00,2025-12-05 17:00,2025-12-05 17:00,0,24,100
CN.SEA1.1790,PH1- MEP EQPT PADS (TROUGHS INSULATION) - SEB1- GL 19-22 - L4 - C-A - ROOF,Complete,SEB - 1,East Support Building,SUEN-1 - 19-22,L4 - SUP Roof - FAB Roof,,CONSTRUCTION,,OAC/ MECH PADS,CONCRETE,SOMD / Roofing / Waterproofing,2024-01-05 11:00,2024-01-06 12:00,2024-01-05 11:00,2024-01-06 10:00,2025-11-20 17:00,2025-11-20 17:00,2025-12-05 17:00,2025-12-05 17:00,0,8,100
CN.SEA1.1800,PH1- MEP EQPT PADS (FORM REBAR POUR TROUGHS) - SEB1- GL 19-22 - L4 - C-A - ROOF,Complete,SEB - 1,East Support Building,SUEN-1 - 19-22,L4 - SUP Roof - FAB Roof,,CONSTRUCTION,,OAC/ MECH PADS,CONCRETE,SOMD / Roofing / Waterproofing,2024-01-06 10:00,2024-01-07 16:00,2024-01-06 10:00,2024-01-08 09:00,2025-11-20 17:00,2025-11-20 17:00,2025-12-05 17:00,2025-12-05 17:00,0,16,100
CN.SEA1.1810,PH1- MEP EQPT PADS (TROUGH WATERPROOF & MEP SLEEVES IN TROUGHS) - SEB1- GL 19-22 - L4 - C-A - ROOF,Complete,SEB - 1,East Support Building,SUEN-1 - 19-22,L4 - SUP Roof - FAB Roof,,CONSTRUCTION,,OAC/ MECH PADS,CONCRETE,SOMD / Roofing / Waterproofing,2024-01-07 10:00,2024-01-10 08:00,2024-01-07 10:00,2024-01-08 17:00,2025-11-20 17:00,2025-11-20 17:00,2025-12-05 17:00,2025-12-05 17:00,0,16,100
CN.SEA3.1290,PH1-CIP WALL (DS)- SEB-1,Complete,SEB - 1,East Support Building,SUEN-1 - 19-22,L4 - SUP Roof - FAB Roof,,CONSTRUCTION,,CIP WALL,CONCRETE,SOMD / Roofing / Waterproofing,2023-10-03 15:00,2023-10-06 17:00,2023-09-14 15:56,2023-09-18 10:00,2025-11-20 17:00,2025-11-20 17:00,2025-11-21 07:00,2025-11-21 07:00,0,32,100
CN.SEA1.1890,PH1- MEP EQPT PADS (INSTALL DRAIN MATS) - SEB1- GL 19-22 - L4 - C-A - ROOF,Complete,SEB - 1,East Support Building,SUEN-1 - 19-22,L4 - SUP Roof - FAB Roof,,CONSTRUCTION,,Waterproofing - Preferred,JAMES LIVELY,SOMD / Roofing / Waterproofing,2023-12-15 09:00,2023-12-16 15:00,2023-11-30 09:00,2023-12-01 16:00,2025-11-20 17:00,2025-11-20 17:00,2025-12-05 17:00,2025-12-05 17:00,0,16,100
CN.SEB1.1270,PH1- WATERPROOFING - SEB-1-L3,Complete,SEB - 1,East Support Building,SUEN-1 - 19-22,L3 / Waffle Slab Level,,CONSTRUCTION,,Waterproofing - Preferred,JAMES LIVELY,SOMD / Roofing / Waterproofing,2023-10-16 07:00,2023-10-16 15:00,2023-08-08 07:00,2023-08-08 15:00,2025-11-20 17:00,2025-11-20 17:00,2025-12-05 17:00,2025-12-05 17:00,0,8,100
CN.SEB1.1280,PH1- IMPACT SET/ FIX ANCHOR BOLTS - SEB-1-L1,Complete,SEB - 1,East Support Building,SUEN-1 - 19-22,L1 - Fndn Slab,,CONSTRUCTION,,Pour Concrete,JAMES LIVELY,SOMD / Roofing / Waterproofing,2023-06-19 07:00,2023-06-20 13:00,2023-06-19 07:00,2023-06-20 13:00,2025-11-20 17:00,2025-11-20 17:00,2025-06-13 08:00,2025-06-13 08:00,0,16,100
CN.SEB1.1300,PH1- TOPPING SLAB w TRENCH & ANGLE EMBEDS- SEB-1-L1,Complete,SEB - 1,East Support Building,SUEN-1 - 19-22,L1 - Fndn Slab,,CONSTRUCTION,,TOPPING,CONCRETE,SOMD / Roofing / Waterproofing,2023-06-29 11:00,2023-07-02 13:00,2023-06-29 11:00,2023-06-30 11:00,2025-11-20 17:00,2025-11-20 17:00,2025-09-29 07:00,2025-09-29 07:00,0,32,100
CN.SEB1.1310,PH1- DS/AD DECKING & DETAILING GL 22 - 19 - DS/AD SEB-1 L6,Complete,SEB - 1,East Support Building,SUEN-1 - 19-22,DS/AD,,CONSTRUCTION,,Decking & Detail,SEAN MONK,,2023-11-05 10:00,2023-11-09 10:00,2023-11-05 10:00,2023-11-09 11:00,2025-11-20 17:00,2025-11-20 17:00,2025-06-13 08:00,2025-06-13 08:00,0,40,100
CN.SEB1.1320,PH1- DS/AD FRP SLAB - DS/AD - SEB1- GL 19-22 - C-E -L4/E,Complete,SEB - 1,East Support Building,SUEN-1 - 19-22,DS/AD,,CONSTRUCTION,,SOMD,CONCRETE,,2024-01-22 07:00,2024-01-24 11:00,2024-01-10 07:00,2024-01-11 07:00,2025-11-20 17:00,2025-11-20 17:00,2025-06-13 08:00,2025-06-13 08:00,0,24,100
CN.SEB1.1330,AD WATERPROOFING - SEB1 - GL 19-22 - D-E - L4/E,Complete,SEB - 1,East Support Building,SUEN-1 - 19-22,DS/AD,,CONSTRUCTION,BRAZOS,Waterproofing - Preferred,JAMES LIVELY,,2024-08-20 07:00,2024-09-06 17:00,2024-07-24 07:00,2024-08-11 17:00,2025-11-20 17:00,2025-11-20 17:00,2025-12-05 17:00,2025-12-05 17:00,0,120,100
CN.SEB1.1340,AD TOPPING SLAB - SEB1 - GL 19-22 - D-E - L4/E,Complete,SEB - 1,East Support Building,SUEN-1 - 19-22,DS/AD,,CONSTRUCTION,BAKER,SOMD,CONCRETE,,2024-08-27 07:00,2024-08-29 17:00,2024-08-12 07:00,2024-08-14 17:00,2025-11-20 17:00,2025-11-20 17:00,2025-12-05 17:00,2025-12-05 17:00,0,30,100
TIER 2.1050,TIER 2 GROUT PRECAST COLUMNS & BEAMS - SEB1,Complete,SEB - 1,East Support Building,SUEN-1 - 19-22,L4 - SUP Roof - FAB Roof,,CONSTRUCTION,,"SUP EAST A,B",SEAN MONK,,2023-07-03 07:00,2023-07-16 13:00,2023-07-15 07:00,2023-07-25 17:00,2025-11-20 17:00,2025-11-20 17:00,2025-06-13 08:00,2025-06-13 08:00,0,116,100
CN.SEB1.1350,PH1- DECKING GL 19 - 20 - SEB-1-L3,Complete,SEB - 1,East Support Building,SUEN-1 - 19-22,L3 / Waffle Slab Level,,CONSTRUCTION,,Decking & Detail,SEAN MONK,,2023-07-31 07:00,2023-08-03 09:00,2023-07-07 16:00,2023-07-11 15:00,2025-11-20 17:00,2025-11-20 17:00,2025-06-13 08:00,2025-06-13 08:00,0,32,100
CN.SEB1.1360,PH1- DECKING GL 20 - 21 - SEB-1-L3,Complete,SEB - 1,East Support Building,SUEN-1 - 19-22,L3 / Waffle Slab Level,,CONSTRUCTION,,Decking & Detail,SEAN MONK,,2023-06-23 09:00,2023-06-24 15:00,2023-06-23 09:00,2023-06-26 07:00,2025-11-20 17:00,2025-11-20 17:00,2025-06-13 08:00,2025-06-13 08:00,0,16,100
CN.SEB1.1370,PH1- DECKING GL 19 - 20 - SEB-1-ROOF,Complete,SEB - 1,East Support Building,SUEN-1 - 19-22,L4 - SUP Roof - FAB Roof,,CONSTRUCTION,,Decking & Detail,SEAN MONK,SOMD / Roofing / Waterproofing,2023-09-05 07:00,2023-09-06 13:00,2023-09-05 07:00,2023-09-06 13:00,2025-11-20 17:00,2025-11-20 17:00,2025-09-29 07:00,2025-09-29 07:00,0,16,100
CN.SEB1.1380,PH1- DECKING GL 20 - 21 - SEB-1-ROOF,Complete,SEB - 1,East Support Building,SUEN-1 - 19-22,L4 - SUP Roof - FAB Roof,,CONSTRUCTION,,Decking & Detail,SEAN MONK,SOMD / Roofing / Waterproofing,2023-09-06 13:00,2023-09-08 09:00,2023-09-06 13:00,2023-09-08 09:00,2025-11-20 17:00,2025-11-20 17:00,2025-09-29 07:00,2025-09-29 07:00,0,16,100
CN.SEB1.1390,PH1- DS/AD DECKING & DECKING - DS/AD - SEB1- GL 19-22 - C-E -  L4 & L4/E,Complete,SEB - 1,East Support Building,SUEN-1 - 19-22,DS/AD,,CONSTRUCTION,,Decking & Detail,SEAN MONK,,2024-01-05 11:00,2024-01-10 16:00,2024-01-05 11:00,2024-01-09 15:00,2025-11-20 17:00,2025-11-20 17:00,2025-06-13 08:00,2025-06-13 08:00,0,40,100
CN.AB.AR.4340,DRYWALL 2 SIDE - MECHANICAL ROOM 3 CENTRAL - SEB1 - GL 19-22 - C-A - L1,Complete,SEB - 1,East Support Building,SUEN-1 - 19-22,L1 - Fndn Slab,MECH RM 3,CONSTRUCTION,BERG,DRYWALL,AMBER CARO,INTERIORS,2024-06-17 07:00,2024-06-24 17:00,2024-06-17 07:00,2024-06-22 17:00,2025-11-20 17:00,2025-11-20 17:00,2025-11-20 07:00,2025-11-20 07:00,0,50,100
CN.AB.AR.4350,DRYWALL & INSULATION (1 side) (INT) - MECHANICAL ROOM 3 CENTRAL - SEB1 - GL 19-22 - C-A - L1,Complete,SEB - 1,East Support Building,SUEN-1 - 19-22,L1 - Fndn Slab,MECH RM 3,CONSTRUCTION,BERG,DRYWALL,AMBER CARO,INTERIORS,2024-03-22 07:00,2024-03-27 17:00,2024-03-08 07:00,2024-04-09 17:00,2025-11-20 17:00,2025-11-20 17:00,2025-11-20 07:00,2025-11-20 07:00,0,40,100
CN.SEB1.1410,PH1- DS STEEL FRAME INSTALL - SEB-1 Comeback Sup Side,Complete,SEB - 1,East Support Building,SUEN-1 - 19-22,DS/AD,,CONSTRUCTION,,Steel Erection,SEAN MONK,,2023-10-09 08:00,2023-10-12 10:00,2023-10-09 08:00,2023-10-12 10:00,2025-11-20 17:00,2025-11-20 17:00,2025-06-13 08:00,2025-06-13 08:00,0,32,100
CN.SEB1.1420,PH1- EXTERIOR CURBS - SEB-1-L1,Complete,SEB - 1,East Support Building,SUEN-1 - 19-22,L1 - Fndn Slab,,CONSTRUCTION,,Pour Concrete,JAMES LEE,SOMD / Roofing / Waterproofing,2023-06-20 13:00,2023-06-25 13:00,2023-06-20 13:00,2023-06-26 15:00,2025-11-20 17:00,2025-11-20 17:00,2025-09-29 07:00,2025-09-29 07:00,0,40,100
CN.SEB1.1430,PH1- MEP PADS - SEB-1-L1,Complete,SEB - 1,East Support Building,SUEN-1 - 19-22,L1 - Fndn Slab,,CONSTRUCTION,,Pour Concrete,JAMES LEE,SOMD / Roofing / Waterproofing,2023-07-14 11:00,2023-07-15 17:00,2023-07-01 11:00,2023-07-03 09:00,2025-11-20 17:00,2025-11-20 17:00,2025-09-29 07:00,2025-09-29 07:00,0,16,100
CN.AB.AR.4680,FLOOR STRIPING PAINT - MECHANICAL ROOM 3 CENTRAL - SEB1 - GL 19-22 - C-A - L1,Not Started,SEB - 1,East Support Building,SUEN-1 - 19-22,L1 - Fndn Slab,MECH RM 3,CONSTRUCTION,FLOOR STRIPING PAINT,TBD Architectural Finishes,JAMES LEE,INTERIORS,2025-11-26 07:00,2025-12-02 17:00,,,2025-11-26 07:00,2025-12-02 17:00,2025-12-03 07:00,2025-12-05 17:00,30,30,0
CN.SEB1..2320,METAL STUD FRAMING (2hr) - SEB1- GL 19-22 - L3 - C-A - ELECTRICAL ROOM 2,Complete,SEB - 1,East Support Building,SUEN-1 - 19-22,L3 / Waffle Slab Level,ELECTRIC RM 2,CONSTRUCTION,BERG,TBD Architectural Finishes,AMBER CARO,INTERIORS,2023-11-13 07:00,2023-11-18 15:00,2023-11-13 07:00,2023-11-18 16:00,2025-11-20 17:00,2025-11-20 17:00,2025-12-05 07:00,2025-12-05 07:00,0,48,100
CN.SEB1.4890,FLOOR STRIPING - SEB1 - GL 19-22 - C-A - L2,Not Started,SEB - 1,East Support Building,SUEN-1 - 19-22,L2 - SubFab Level,,CONSTRUCTION,FLOOR STRIPING PAINT,TBD Architectural Finishes,JAMES LEE,INTERIORS,2025-12-11 07:00,2025-12-15 17:00,,,2025-12-11 07:00,2025-12-15 17:00,2025-12-03 07:00,2025-12-05 17:00,30,30,0
CN.SEB15190,INSTALL METAL STAIRS 20 - SEA1 - GL 18-19 - C-A - L3-L4,Complete,SEB - 1,East Support Building,SUES-1 - 19-16,L3 / Waffle Slab Level,,CONSTRUCTION,PATRIOT,INSULATED METAL PANELS,AMBER CARO,INTERIORS,2024-04-24 07:00,2024-04-30 17:00,2024-04-08 07:00,2024-05-10 17:00,2025-11-20 17:00,2025-11-20 17:00,2025-12-01 07:00,2025-12-01 07:00,0,50,100
CN.SEB1.3800,MEP ROUGH IN & INSPECTION (by SECAI) - SEB1- GL 19-22 - L3 - C-A - ELECTRICAL ROOM 2,Complete,SEB - 1,East Support Building,SUEN-1 - 19-22,L3 / Waffle Slab Level,ELECTRIC RM 2,CONSTRUCTION,,Owner & Design Team,AMBER CARO,,2023-11-19 08:00,2023-11-27 16:00,2023-11-19 08:00,2024-02-01 13:00,2025-11-20 17:00,2025-11-20 17:00,2025-12-05 07:00,2025-12-05 07:00,0,48,100
CN.SEB1.3810,TAPE & FINISH DRYWALL  - SEB1- GL 19-22 -  L3 - C-A - ELECTRICAL ROOM 2,Complete,SEB - 1,East Support Building,SUEN-1 - 19-22,L3 / Waffle Slab Level,ELECTRIC RM 2,CONSTRUCTION,,DRYWALL,AMBER CARO,INTERIORS,2024-03-23 08:00,2024-03-27 08:00,2024-03-07 00:00,2024-03-11 00:00,2025-11-20 17:00,2025-11-20 17:00,2025-12-05 17:00,2025-12-05 17:00,0,40,100
CN.SEB1.3820,FINISH PAINT - ELECTRICAL ROOM 2 - SEB1 - GL 19-22 - C-A - L3,Not Started,SEB - 1,East Support Building,SUEN-1 - 19-22,L3 / Waffle Slab Level,ELECTRIC RM 2,CONSTRUCTION,FINISH PAINT,TBD Architectural Finishes,JAMES LEE,INTERIORS,2025-11-21 07:00,2025-11-21 17:00,,,2025-11-21 07:00,2025-11-21 17:00,2025-12-05 07:00,2025-12-05 17:00,10,10,0
CN.SEB1.4320,DRYWALL 2 SIDE - SEB1- GL 19-22 - L3 - C-A - ELECTRICAL ROOM 2,Complete,SEB - 1,East Support Building,SUEN-1 - 19-22,L3 / Waffle Slab Level,ELECTRIC RM 2,CONSTRUCTION,,DRYWALL,AMBER CARO,INTERIORS,2024-02-06 13:00,2024-02-11 13:00,2024-02-06 13:00,2024-03-08 16:00,2025-11-20 17:00,2025-11-20 17:00,2025-12-05 07:00,2025-12-05 07:00,0,40,100
CN.SEB1.4330,DRYWALL & INSULATION (1 side) (INT) - SEB1- GL 19-22 - L3 - C-A- ELECTRICAL ROOM 2,Complete,SEB - 1,East Support Building,SUEN-1 - 19-22,L3 / Waffle Slab Level,ELECTRIC RM 2,CONSTRUCTION,,DRYWALL,AMBER CARO,INTERIORS,2024-01-04 13:00,2024-01-10 11:00,2024-01-04 13:00,2024-01-08 17:00,2025-11-20 17:00,2025-11-20 17:00,2025-12-05 07:00,2025-12-05 07:00,0,40,100
CN.SEA1.5270,PH1- GROUT SHIM PRECAST OAC PADS) - SEB1- GL 19-22 - L4 - C-A - ROOF,Complete,SEB - 1,East Support Building,SUEN-1 - 19-22,L4 - SUP Roof - FAB Roof,,CONSTRUCTION,,TBD Architectural Finishes,CONCRETE,SOMD / Roofing / Waterproofing,2023-12-18 15:00,2023-12-21 09:00,2023-12-04 15:00,2023-12-07 09:00,2025-11-20 17:00,2025-11-20 17:00,2025-12-05 17:00,2025-12-05 17:00,0,24,100
CN.SEB1.4910,PH1- POUR TRENCH ANGLE EMBEDS - SEB-1-L1,Complete,SEB - 1,East Support Building,SUEN-1 - 19-22,L1 - Fndn Slab,,CONSTRUCTION,,TOPPING,CONCRETE,SOMD / Roofing / Waterproofing,2023-09-05 07:00,2023-09-06 13:00,2023-09-01 07:00,2023-09-01 13:00,2025-11-20 17:00,2025-11-20 17:00,2025-09-29 07:00,2025-09-29 07:00,0,16,100
CN.SEB1.4920,SECAI UPW TANK INSTALL - SEB1 - GL 19-22 - L1 C-A,Complete,SEB - 1,East Support Building,SUEN-1 - 19-22,L1 - Fndn Slab,,CONSTRUCTION,,TOPPING,CONCRETE,SOMD / Roofing / Waterproofing,2023-11-13 07:00,2023-11-20 15:00,2023-11-06 07:00,2023-11-12 09:00,2025-11-20 17:00,2025-11-20 17:00,2025-09-29 07:00,2025-09-29 07:00,0,68,100
CN.SEB1.1440,IMPACT - DRB-01 ADDITIONAL BEAMS BETWEEN FAB AND AD GL 19 - 22,Complete,SEB - 1,,SUEN-1 - 19-22,DS/AD,,CONSTRUCTION,,Steel Erection,,,2023-11-13 07:00,2023-11-13 15:00,2023-11-13 07:00,2023-11-13 15:00,2025-11-20 17:00,2025-11-20 17:00,2025-06-13 08:00,2025-06-13 08:00,0,8,100
SEC.AR.4450,SECAI - MEP PIPE RACK INSTALL AREA B DS SIDE - SEB1 - GL 19-22 - C-A - L4,Complete,SEB - 1,East Support Building,SUEN-1 - 19-22,L4 - SUP Roof - FAB Roof,,CONSTRUCTION,SECAI,Owner & Design Team,,INTERIORS,2024-10-14 07:00,2024-10-14 17:00,2024-10-12 07:00,2024-10-12 17:00,2025-11-20 17:00,2025-11-20 17:00,2025-12-05 17:00,2025-12-05 17:00,0,10,100
CN.SEB1.4930,PH1 - CLADDING STEEL  EXTERIOR - SEB1- GL 19-22 - C LINE  (DS AREA),Complete,SEB - 1,East Support Building,SUEN-1 - 19-22,EXTERIOR SKIN,,CONSTRUCTION,,INSULATED METAL PANELS,JAMES LIVELY,,2023-11-28 07:00,2023-12-07 09:00,2023-11-28 07:00,2023-12-15 09:00,2025-11-20 17:00,2025-11-20 17:00,2025-11-17 07:00,2025-11-17 07:00,0,72,100
CN.SEB1.1011,INSTALL CERAMIC TILE (WALLS & FLOOR) - BATHROOM - GL 19-22 - C-A - L1,Complete,SEB - 1,,SUEN-1 - 19-22,L1 - Fndn Slab,BATHROOM,CONSTRUCTION,SPECTRA,TBD Architectural Finishes,,,2025-09-09 07:00,2025-09-15 17:00,2025-09-09 07:00,2025-09-26 07:00,2025-11-20 17:00,2025-11-20 17:00,2025-11-20 07:00,2025-11-20 07:00,0,50,100
CN.SEB1.1081,INSTALL MIRRORS - SEB1 - GL 19-22 - C-A - L1,Active,SEB - 1,,SUEN-1 - 19-22,L1 - Fndn Slab,BATHROOM,CONSTRUCTION,,TBD Architectural Finishes,,,2025-10-16 07:00,2025-10-22 17:00,2025-10-16 07:00,,2025-11-21 07:00,2025-12-01 17:00,2025-11-20 07:00,2025-11-26 17:00,50,50,0
CN.SEB1.1111,INSTALL COUNTERTOPS - SEB1 - GL 19-22 - C-A - L1,Complete,SEB - 1,,SUEN-1 - 19-22,L1 - Fndn Slab,BATHROOM,CONSTRUCTION,H2I,TBD Architectural Finishes,,,2025-09-30 07:00,2025-10-02 17:00,2025-09-30 07:00,2025-10-10 17:00,2025-11-20 17:00,2025-11-20 17:00,2025-11-20 07:00,2025-11-20 07:00,0,30,100
CN.SEB1.1021,METAL STUD FRAMING (2hr) - SEB1 - GL 19-22 - L1 D LINE,Complete,SEB - 1,West Support Building,SUEN-1 - 19-22,L1 - Fndn Slab,DS/AD INTERIORS,CONSTRUCTION,BERG,TBD Architectural Finishes,FIZ DATA CENTER,INTERIORS,2023-11-02 13:00,2023-11-07 11:00,2023-11-02 13:00,2023-11-10 15:00,2025-11-20 17:00,2025-11-20 17:00,2025-11-13 17:00,2025-11-13 17:00,0,48,100
CN.SEB1.1031,METAL STUD FRAMING (2hr) - SEB1 - GL 19-22 - L2 D LINE,Complete,SEB - 1,West Support Building,SUEN-1 - 19-22,L2 - SubFab Level,DS/AD INTERIORS,CONSTRUCTION,BERG,TBD Architectural Finishes,FIZ DATA CENTER,INTERIORS,2024-02-12 11:00,2024-02-17 09:00,2024-02-12 11:00,2024-02-17 10:00,2025-11-20 17:00,2025-11-20 17:00,2025-11-21 17:00,2025-11-21 17:00,0,48,100
CN.SEB1.1121,REMEDY - TAPE & FINISH DRYWALL - SEB1- GL 19-22 -  L2 - D LINE,Complete,SEB - 1,West Support Building,SUEN-1 - 19-22,L2 - SubFab Level,DS/AD INTERIORS,CONSTRUCTION,CHERRY COATING,DRYWALL,FIZ DATA CENTER,INTERIORS,2024-08-23 07:00,2024-08-27 17:00,2024-08-11 07:00,2024-08-13 17:00,2025-11-20 17:00,2025-11-20 17:00,2025-11-21 17:00,2025-11-21 17:00,0,30,100
CN.SEB1.1141,FINISH PAINT - SEB1 - GL 19-22 - D LINE - L2,Not Started,SEB - 1,West Support Building,SUEN-1 - 19-22,L2 - SubFab Level,DS/AD INTERIORS,CONSTRUCTION,FINISH PAINT,TBD Architectural Finishes,FIZ DATA CENTER,INTERIORS,2025-11-21 07:00,2025-11-24 17:00,,,2025-11-21 07:00,2025-11-24 17:00,2025-12-04 07:00,2025-12-05 17:00,20,20,0
CN.SEB1.1091,DRYWALL 2 SIDE- SEB1- GL 19-22 - L2 - D LINE,Complete,SEB - 1,West Support Building,SUEN-1 - 19-22,L2 - SubFab Level,DS/AD INTERIORS,CONSTRUCTION,,DRYWALL,FIZ DATA CENTER,INTERIORS,2024-02-26 07:00,2024-03-01 17:00,2024-02-29 07:00,2024-03-01 11:00,2025-11-20 17:00,2025-11-20 17:00,2025-11-21 17:00,2025-11-21 17:00,0,40,100
CN.SEB1.1061,DRYWALL & INSULATION (1 side) (INT)- SEB1- GL 19-22 - L2 D LINE,Complete,SEB - 1,West Support Building,SUEN-1 - 19-22,L2 - SubFab Level,DS/AD INTERIORS,CONSTRUCTION,,DRYWALL,FIZ DATA CENTER,INTERIORS,2024-02-12 07:00,2024-02-16 15:00,2024-02-12 07:00,2024-02-16 15:00,2025-11-20 17:00,2025-11-20 17:00,2025-11-21 17:00,2025-11-21 17:00,0,48,100
CN.SEB1.1001,TEMP WALLS Framing and Drywall - SEB1- GL 19-22 - L3 - C-A,Complete,SEB - 1,,SUEN-1 - 19-22,L3 / Waffle Slab Level,ELECTRIC RM 2,CONSTRUCTION,,DRYWALL,,,2023-10-13 08:00,2023-10-17 08:00,2023-10-13 08:00,2023-12-26 11:00,2025-11-20 17:00,2025-11-20 17:00,2025-12-05 17:00,2025-12-05 17:00,0,40,100
CN.SEB1.4940,PH1 -WELD CLIPS - CLADDING STEEL - SEB-1 C LINE (DS AREA),Complete,SEB - 1,East Support Building,SUEN-1 - 19-22,EXTERIOR SKIN,,CONSTRUCTION,,INSULATED METAL PANELS,JAMES LIVELY,,2023-10-24 07:00,2023-10-25 09:30,2023-10-23 07:00,2023-10-24 09:00,2025-11-20 17:00,2025-11-20 17:00,2025-11-17 07:00,2025-11-17 07:00,0,12,100
CN.SEB1.1060,IMPACT - DS STEEL BEAM STIFFNER CONNECTION FIXES - SEB1- GL 19-22 - C-E - L4,Complete,SEB - 1,,SUEN-1 - 19-22,DS/AD,,CONSTRUCTION,,Steel Erection,,,2024-01-22 07:00,2024-01-24 11:00,2024-01-02 07:00,2024-01-04 13:00,2025-11-20 17:00,2025-11-20 17:00,2025-10-16 07:00,2025-10-16 07:00,0,24,100
CN.SEB1.4980,AD STEEL PAINT FIREPROOFING IFRM - SEB1- GL 19-22 - C-E - L2-CEILING,Complete,SEB - 1,East Support Building,SUEN-1 - 19-22,DS/AD,,CONSTRUCTION,ROLLING PLAINS,Fireproofing,HOON WOO,,2024-07-15 07:00,2024-07-22 17:00,2024-07-11 07:00,2024-07-15 17:00,2025-11-20 17:00,2025-11-20 17:00,2025-11-26 07:00,2025-11-26 07:00,0,60,100
CN.SEB1.4950,PH1- DS/AD DECKING &  DETAILING GL 22 - 19 - DS/AD SEB-1 L2,Complete,SEB - 1,East Support Building,SUEN-1 - 19-22,DS/AD,,CONSTRUCTION,,Decking & Detail,SEAN MONK,,2023-10-24 07:00,2023-10-28 17:00,2023-10-24 07:00,2023-10-27 10:00,2025-11-20 17:00,2025-11-20 17:00,2025-09-29 07:00,2025-09-29 07:00,0,40,100
CN.SEB1.4970,PH1- DS/AD FRP SLAB - DS/AD - SEB1- GL 19-22 - C-E - L3,Complete,SEB - 1,East Support Building,SUEN-1 - 19-22,DS/AD,,CONSTRUCTION,,SOMD,CONCRETE,,2024-01-08 09:00,2024-01-14 09:00,2024-01-08 09:00,2024-01-12 09:00,2025-11-20 17:00,2025-11-20 17:00,2025-11-26 07:00,2025-11-26 07:00,0,40,100
CN.SEB1.1161,METAL STUD FRAMING (2hr) - SEB1- GL 19-22 - L3 - D LINE,Complete,SEB - 1,West Support Building,SUEN-1 - 19-22,L3 / Waffle Slab Level,DS/AD INTERIORS,CONSTRUCTION,BERG,TBD Architectural Finishes,FIZ DATA CENTER,INTERIORS,2024-03-09 08:00,2024-03-10 14:00,2024-02-19 00:00,2024-02-22 00:00,2025-11-20 17:00,2025-11-20 17:00,2025-06-13 08:00,2025-06-13 08:00,0,16,100
CN.SEB1.1201,TAPE & FINISH DRYWALL - SEB1 - GL 19-22 - D LINE - L3,Complete,SEB - 1,West Support Building,SUEN-1 - 19-22,L3 / Waffle Slab Level,DS/AD INTERIORS,CONSTRUCTION,CHERRY COATING,DRYWALL,FIZ DATA CENTER,INTERIORS,2024-05-28 07:00,2024-06-03 17:00,2024-05-28 07:00,2024-06-01 17:00,2025-11-20 17:00,2025-11-20 17:00,2025-06-13 08:00,2025-06-13 08:00,0,40,100
CN.SEB1.1211,DCC BEAM (STEEL STRUCTURE) - SEB1- GL 19-22 - L3,Complete,SEB - 1,West Support Building,SUEN-1 - 19-22,L3 / Waffle Slab Level,DS/AD INTERIORS,CONSTRUCTION,,TBD Architectural Finishes,FIZ DATA CENTER,INTERIORS,2024-01-22 07:00,2024-01-26 13:00,2024-01-10 07:00,2024-01-11 13:00,2025-11-20 17:00,2025-11-20 17:00,2025-06-13 08:00,2025-06-13 08:00,0,46,100
CN.SEB1.1191,DRYWALL 2 SIDE - SEB1 - GL 20-22 - D LINE - L3,Complete,SEB - 1,West Support Building,SUEN-1 - 19-22,L3 / Waffle Slab Level,DS/AD INTERIORS,CONSTRUCTION,BERG,DRYWALL,FIZ DATA CENTER,INTERIORS,2024-05-06 07:00,2024-05-10 17:00,2024-04-26 07:00,2024-05-15 17:00,2025-11-20 17:00,2025-11-20 17:00,2025-06-13 08:00,2025-06-13 08:00,0,40,100
CN.SEB1.1181,DRYWALL & INSULATION (1st layer) (INT) - SEB1- GL 19-22 - L3 - D LINE,Complete,SEB - 1,West Support Building,SUEN-1 - 19-22,L3 / Waffle Slab Level,DS/AD INTERIORS,CONSTRUCTION,,DRYWALL,FIZ DATA CENTER,INTERIORS,2024-03-18 07:00,2024-03-20 11:00,2024-03-11 00:00,2024-03-18 00:00,2025-11-20 17:00,2025-11-20 17:00,2025-06-13 08:00,2025-06-13 08:00,0,24,100
CN.SEB1.6000,WATER PROOFING & POUR PEDASTALS - SEB1- GL 19-24 - L4 - C-A - ROOF,Complete,SEB - 1,East Support Building,SUEN-1 - 19-22,L4 - SUP Roof - FAB Roof,,CONSTRUCTION,,Roofing,,SOMD / Roofing / Waterproofing,2024-01-10 08:00,2024-01-10 16:00,2024-01-10 08:00,2024-01-10 16:00,2025-11-20 17:00,2025-11-20 17:00,2025-12-05 17:00,2025-12-05 17:00,0,8,100
CN.SEB1.6010,FINISH WATER PROOFING & POUR PEDASTALS - SEB1- GL 19-24 - L4 - C-A - ROOF,Complete,SEB - 1,East Support Building,SUEN-1 - 19-22,L4 - SUP Roof - FAB Roof,,CONSTRUCTION,,Roofing,,SOMD / Roofing / Waterproofing,2024-01-11 09:00,2024-01-12 12:00,2024-01-11 08:00,2024-01-11 16:00,2025-11-20 17:00,2025-11-20 17:00,2025-12-05 17:00,2025-12-05 17:00,0,8,100
CN.SEB1.6020,STRIP PEDSTALS - SEB1- GL 19-24 - L4 - C-A - ROOF,Complete,SEB - 1,East Support Building,SUEN-1 - 19-22,L4 - SUP Roof - FAB Roof,,CONSTRUCTION,,Roofing,,SOMD / Roofing / Waterproofing,2024-01-17 07:00,2024-01-17 15:00,2024-01-15 07:00,2024-01-15 15:00,2025-11-20 17:00,2025-11-20 17:00,2025-12-05 17:00,2025-12-05 17:00,0,8,100
CN.SEB1.6030,INSTALL PRIMER - GL 20-22 - C-A - L4 ROOF,Complete,SEB - 1,East Support Building,SUEN-1 - 19-22,L4 - SUP Roof - FAB Roof,,CONSTRUCTION,BRAZOS,TOPPING,,SOMD / Roofing / Waterproofing,2024-09-20 07:00,2024-09-20 17:00,2024-09-19 07:00,2024-09-19 17:00,2025-11-20 17:00,2025-11-20 17:00,2025-12-05 17:00,2025-12-05 17:00,0,10,100
CN.SEB1.6050,INSPECT PRIMER - GL 20-22 - C-A - L4 ROOF,Complete,SEB - 1,East Support Building,SUEN-1 - 19-22,L4 - SUP Roof - FAB Roof,,CONSTRUCTION,BRAZOS,TOPPING,,SOMD / Roofing / Waterproofing,2024-09-20 07:00,2024-09-20 17:00,2024-09-19 07:00,2024-09-19 17:00,2025-11-20 17:00,2025-11-20 17:00,2025-12-05 17:00,2025-12-05 17:00,0,10,100
CN.SEB1.6070,INSTALL BASE COAT - GL 20-22 - C-A - L4 ROOF,Complete,SEB - 1,East Support Building,SUEN-1 - 19-22,L4 - SUP Roof - FAB Roof,,CONSTRUCTION,BRAZOS,TOPPING,,SOMD / Roofing / Waterproofing,2024-09-26 07:00,2024-09-26 17:00,2024-09-26 07:00,2024-09-26 17:00,2025-11-20 17:00,2025-11-20 17:00,2025-12-05 17:00,2025-12-05 17:00,0,10,100
CN.SEB1.6090,INSPECT BASE COAT - GL 20-22 - C-A - L4 ROOF,Complete,SEB - 1,East Support Building,SUEN-1 - 19-22,L4 - SUP Roof - FAB Roof,,CONSTRUCTION,BRAZOS,TOPPING,,SOMD / Roofing / Waterproofing,2024-09-26 07:00,2024-09-26 17:00,2024-09-26 07:00,2024-09-26 17:00,2025-11-20 17:00,2025-11-20 17:00,2025-12-05 17:00,2025-12-05 17:00,0,10,100
CN.SEB1.6100,INSTALL TOP COAT - GL 20-22 - C-A - L4 ROOF,Complete,SEB - 1,East Support Building,SUEN-1 - 19-22,L4 - SUP Roof - FAB Roof,,CONSTRUCTION,BRAZOS,TOPPING,,SOMD / Roofing / Waterproofing,2024-09-27 07:00,2024-09-30 17:00,2024-09-27 07:00,2024-09-28 17:00,2025-11-20 17:00,2025-11-20 17:00,2025-12-05 17:00,2025-12-05 17:00,0,20,100
CN.SEB1.6110,INSPECT TOP COAT - GL 20-22 - C-A - L4 ROOF,Complete,SEB - 1,East Support Building,SUEN-1 - 19-22,L4 - SUP Roof - FAB Roof,,CONSTRUCTION,BRAZOS,TOPPING,,SOMD / Roofing / Waterproofing,2024-09-30 07:00,2024-09-30 17:00,2024-09-30 07:00,2024-09-30 17:00,2025-11-20 17:00,2025-11-20 17:00,2025-12-05 17:00,2025-12-05 17:00,0,10,100
CN.SEB1.6120,INSPECT TOP COAT CRICKET - GL 20-22 - C-A - L4 ROOF,Complete,SEB - 1,East Support Building,SUEN-1 - 19-22,L4 - SUP Roof - FAB Roof,,CONSTRUCTION,BRAZOS,TOPPING,,SOMD / Roofing / Waterproofing,2024-10-07 07:00,2024-10-07 17:00,2024-10-07 07:00,2024-10-07 17:00,2025-11-20 17:00,2025-11-20 17:00,2025-12-05 17:00,2025-12-05 17:00,0,10,100
CN.SEB1.1131,TAPE & FINISH DRYWALL - SEB1 - GL 19-22 - D LINE - L1,Complete,SEB - 1,West Support Building,SUEN-1 - 19-22,L1 - Fndn Slab,DS/AD INTERIORS,CONSTRUCTION,CHERRY COATING,DRYWALL,FIZ DATA CENTER,INTERIORS,2024-04-04 07:00,2024-04-12 17:00,2024-04-04 07:00,2024-04-11 17:00,2025-11-20 17:00,2025-11-20 17:00,2025-12-01 17:00,2025-12-01 17:00,0,50,100
CN.SEB1.1151,PRIMER & PAINT DRYWALL -  GL 19-22 - D LINE - L1,Complete,SEB - 1,West Support Building,SUEN-1 - 19-22,L1 - Fndn Slab,DS/AD INTERIORS,CONSTRUCTION,FINISH PAINT,TBD Architectural Finishes,FIZ DATA CENTER,INTERIORS,2024-10-25 07:00,2024-10-29 17:00,2024-10-25 07:00,2024-10-28 17:00,2025-11-20 17:00,2025-11-20 17:00,2025-12-01 17:00,2025-12-01 17:00,0,30,100
CN.SEB1.1101,DRYWALL 2 SIDE - SEB1 - GL 19-22 - D LINE - L1,Complete,SEB - 1,West Support Building,SUEN-1 - 19-22,L1 - Fndn Slab,DS/AD INTERIORS,CONSTRUCTION,BERG,DRYWALL,FIZ DATA CENTER,INTERIORS,2024-03-27 07:00,2024-04-02 17:00,2024-03-27 07:00,2024-04-01 17:00,2025-11-20 17:00,2025-11-20 17:00,2025-12-01 17:00,2025-12-01 17:00,0,50,100
CN.SEB1.1071,DRYWALL & INSULATION (1 side) (INT) - SEB1 - GL 19-22 - L1 D LINE,Complete,SEB - 1,West Support Building,SUEN-1 - 19-22,L1 - Fndn Slab,DS/AD INTERIORS,CONSTRUCTION,,DRYWALL,FIZ DATA CENTER,INTERIORS,2023-12-01 07:00,2023-12-05 15:00,2023-12-01 07:00,2024-01-04 13:00,2025-11-20 17:00,2025-11-20 17:00,2025-12-01 17:00,2025-12-01 17:00,0,48,100
TRES.SEB1.11,IMPACT [ES6] - TRESTLE WORK GL 19-22 - A LINE [SUP EXTERIOR WALL],Complete,SEB - 1,East Support Building,SUEN-1 - 19-22,EXTERIOR SKIN,,CONSTRUCTION,PATRIOT,INSULATED METAL PANELS,JAMES LIVELY,,2023-10-02 07:00,2023-10-09 13:00,2023-09-29 07:00,2024-07-11 17:00,2025-11-20 17:00,2025-11-20 17:00,2025-09-04 07:00,2025-09-04 07:00,0,46,100
CN.SEB1.6190,IMPACT - MISSING 6 EMBEDS - SEB1 - A21-A22 1F- SEQ 5304 (NUMARA PIPE DAMAGE),Complete,SEB - 1,,SUEN-1 - 19-22,DS/AD,,CONSTRUCTION,,Steel Fabricator - W&W,,,2023-12-11 07:00,2023-12-15 09:00,2023-10-09 07:00,2023-11-13 09:00,2025-11-20 17:00,2025-11-20 17:00,2025-10-16 07:00,2025-10-16 07:00,0,32,100
CN.SEB1.1400,PH1- DS/AD FRP SLAB - DS/AD - SEB1- GL 19-22 - C-E - L6,Complete,SEB - 1,,SUEN-1 - 19-22,DS/AD,,CONSTRUCTION,,SOMD,,,2024-01-02 09:00,2024-01-04 16:00,2023-12-21 15:00,2023-12-29 17:00,2025-11-20 17:00,2025-11-20 17:00,2025-10-16 07:00,2025-10-16 07:00,0,24,100
CN.SEB1.1450,CURE FRP SLAB - SEB1- GL 19-22 - C-E - L6,Complete,SEB - 1,,SUEN-1 - 19-22,DS/AD,,CONSTRUCTION,,SOMD,,,2024-01-02 09:00,2024-01-04 16:00,2024-01-02 07:00,2024-01-05 11:00,2025-11-20 17:00,2025-11-20 17:00,2025-12-05 17:00,2025-12-05 17:00,0,24,100
CN.SEB1.4960,PH1- DS/AD DECKING &  DETAILING - DS/AD - SEB1- GL 19-22 - C-E - L3,Complete,SEB - 1,,SUEN-1 - 19-22,DS/AD,,CONSTRUCTION,,Decking & Detail,,,2024-01-02 09:00,2024-01-04 16:00,2024-01-02 07:00,2024-01-05 11:00,2025-11-20 17:00,2025-11-20 17:00,2025-11-26 07:00,2025-11-26 07:00,0,24,100
CN.SEB1.1290,CLADDING STEEL & DETAIL/INSPECT - GL 20-21 - A LINE [SUP EXTERIOR WALL] (TRESTLE AREA ABOVE MEP PIPE),Complete,SEB - 1,,SUEN-1 - 19-22,EXTERIOR SKIN,,CONSTRUCTION,PATRIOT,INSULATED METAL PANELS,,,2024-11-25 07:00,2024-12-05 17:00,2024-11-09 07:00,2024-11-27 17:00,2025-11-20 17:00,2025-11-20 17:00,2025-09-29 07:00,2025-09-29 07:00,0,60,100
TRES.SEB1.21,IMPACT - MEP TANKS MOVE IN - SEB-1 A LINE [SUP EXTERIOR WALL],Complete,SEB - 1,East Support Building,SUEN-2 - 22-25,EXTERIOR SKIN,,CONSTRUCTION,,INSULATED METAL PANELS,JAMES LIVELY,,2023-10-30 07:00,2023-11-06 13:00,2023-10-30 07:00,2023-11-06 17:00,2025-11-20 17:00,2025-11-20 17:00,2025-09-29 07:00,2025-09-29 07:00,0,56,100
CN.SEB1.1470,INSTALL INSULATED METAL PANEL MODULES - GL 19.5-22 - D LINE (AD AREA),Complete,SEB - 1,,SUEN-1 - 19-22,EXTERIOR SKIN,,CONSTRUCTION,KOVACH,INSULATED METAL PANELS,,,2024-06-29 07:00,2024-07-05 17:00,2024-06-24 07:00,2024-06-27 17:00,2025-11-20 17:00,2025-11-20 17:00,2025-12-05 17:00,2025-12-05 17:00,0,50,100
CN.SEB1.4941,IMPACT [S.TIA-111] - SECAI MEP AND SPMT CRANE - SEB1- GL 19-22,Complete,SEB - 1,East Support Building,SUEN-1 - 19-22,EXTERIOR SKIN,,CONSTRUCTION,,INSULATED METAL PANELS,JAMES LIVELY,,2023-10-02 07:00,2023-10-07 13:00,2023-11-17 07:00,2023-12-02 15:00,2025-11-20 17:00,2025-11-20 17:00,2025-09-29 07:00,2025-09-29 07:00,0,56,100
CN.SEB1.1480,KNEE WALL -SEB 1 - GL 19-22 - L4 - C-E -DS/AD,Complete,SEB - 1,,SUEN-1 - 19-22,DS/AD,,CONSTRUCTION,,Cast-in Place Concrete - Baker Concrete,,,2024-01-22 07:00,2024-01-25 09:00,2024-01-19 07:28,2024-01-21 16:00,2025-11-20 17:00,2025-11-20 17:00,2025-11-21 07:00,2025-11-21 07:00,0,32,100
CN.SEB1.5010,PH1- DS/AD FRP SLAB - DS/AD - SEB1- GL 19-22 - C-E - L2,Complete,SEB - 1,,SUEN-1 - 19-22,DS/AD,,CONSTRUCTION,,SOMD,,,2024-01-02 09:00,2024-01-07 08:00,2024-01-01 08:00,2024-01-05 16:00,2025-11-20 17:00,2025-11-20 17:00,2025-10-16 07:00,2025-10-16 07:00,0,40,100
CN.SEB1.1070,D-LINE STEEL SPRAY FIREPROOFING SFRM2 - SEB1 - L3-CEILING - GL 19-22,Complete,SEB - 1,,SUEN-1 - 19-22,L4 - SUP Roof - FAB Roof,DS/AD INTERIORS,CONSTRUCTION,ROLLING PLAINS,Fireproofing,,,2024-04-25 07:00,2024-05-02 17:00,2024-04-25 07:00,2024-04-29 17:00,2025-11-20 17:00,2025-11-20 17:00,2025-06-13 08:00,2025-06-13 08:00,0,50,100
EMB4601,IMPACT [S.TIA-16] - MISSING EMBED - SEB1 - C19 SEQ 4601 - L3 / EMBED OBSELETE DUE TO DESIGN REVISION,Complete,SEB - 1,,SUEN-1 - 19-22,DS/AD,,CONSTRUCTION,SECAI,Steel Fabricator - W&W,,,2023-12-11 07:00,2023-12-15 09:00,2023-11-13 07:00,2024-02-15 17:00,2025-11-20 17:00,2025-11-20 17:00,2025-10-16 07:00,2025-10-16 07:00,0,32,100
CN.SEB1.6210,DS ROOF PARAPET - L6 - SEB1- GL 19-22 - C LINE (DS AREA) (21~24),Complete,SEB - 1,East Support Building,SUEN-1 - 19-22,EXTERIOR SKIN,,CONSTRUCTION,,INSULATED METAL PANELS,JAMES LIVELY,,2024-02-15 16:00,2024-02-24 08:00,2024-02-15 16:00,2024-02-19 17:00,2025-11-20 17:00,2025-11-20 17:00,2025-12-05 17:00,2025-12-05 17:00,0,72,100
CN.SEB1.6240,INSTALL TPO ROOFING - SEB1 - GL 17-21 - C-D - L6,Complete,SEB - 1,East Support Building,SUEN-1 - 19-22,L6 - PENTHOUSE / DS ROOF,,CONSTRUCTION,BRAZOS,Waterproofing - Preferred,JAMES LIVELY,,2024-10-14 07:00,2024-10-18 17:00,2024-10-14 07:00,2024-10-18 17:00,2025-11-20 17:00,2025-11-20 17:00,2025-12-05 17:00,2025-12-05 17:00,0,40,100
CN.SEB1.6250,TEMPORARY SCAFFOLD PLATFORM - SEB1- GL 19-22 - L3,Complete,SEB - 1,West Support Building,SUEN-1 - 19-22,L3 / Waffle Slab Level,DS/AD INTERIORS,CONSTRUCTION,,TBD Architectural Finishes,FIZ DATA CENTER,INTERIORS,2024-01-26 13:00,2024-01-31 11:00,2024-01-12 13:00,2024-01-13 15:00,2025-11-20 17:00,2025-11-20 17:00,2025-06-13 08:00,2025-06-13 08:00,0,48,100
CN.SEB1.6260,Drywall Clips & AMTS Installs Support Beams - SEB1- GL 19-22 - D LINE L4,Complete,SEB - 1,,SUEN-1 - 19-22,L4 - SUP Roof - FAB Roof,DS/AD INTERIORS,CONSTRUCTION,,Fireproofing,,,2024-03-23 08:00,2024-03-30 10:00,2024-03-04 00:00,2024-03-11 00:00,2025-11-20 17:00,2025-11-20 17:00,2025-06-13 08:00,2025-06-13 08:00,0,72,100
CN.SEB1.6270,DS STEEL SPRAY SFRM - SEB1 - GL19-22 - C-D - L3 CEILING,Complete,SEB - 1,,SUEN-1 - 19-22,L4 - SUP Roof - FAB Roof,DS/AD INTERIORS,CONSTRUCTION,ROLLING PLAINS,Fireproofing,,,2024-05-31 07:00,2024-06-07 17:00,2024-05-31 07:00,2024-07-02 17:00,2025-11-20 17:00,2025-11-20 17:00,2025-12-05 17:00,2025-12-05 17:00,0,50,100
CN.SEB1.6280,AD STEEL APPLY INTUMESCENT - SEB1 - GL 19-22 - D-E - L3 CEILING,Complete,SEB - 1,,SUEN-1 - 19-22,L4 - SUP Roof - FAB Roof,DS/AD INTERIORS,CONSTRUCTION,ROLLING PLAINS,Fireproofing,,,2024-05-28 07:00,2024-06-04 17:00,2024-05-28 07:00,2024-06-13 17:00,2025-11-20 17:00,2025-11-20 17:00,2025-06-13 08:00,2025-06-13 08:00,0,50,100
CN.SEB1.6580,DS SPRAY FIREPROOFING SFRM (READY MEP DUCT) - SEB1- GL 19-22 - C-D - L4&L5 CEILING,Complete,SEB - 1,East Support Building,SUEN-1 - 19-22,L4 - SUP Roof - FAB Roof,DS/AD INTERIORS,CONSTRUCTION,ROLLING PLAINS,Fireproofing,HOON WOO,,2024-05-06 07:00,2024-05-14 17:00,2024-05-06 07:00,2024-05-13 17:00,2025-11-20 17:00,2025-11-20 17:00,2025-12-05 17:00,2025-12-05 17:00,0,60,100
CN.SEB1.6590,IMPACT [C3] - BATHROOM PIT HATCH OPENING - SEB-1 - L1 - GL 21 (Waiting on Hatch framing),Complete,SEB - 1,East Support Building,SUEN-1 - 19-22,L1 - Fndn Slab,BATHROOM,CONSTRUCTION,,Pour Concrete,ANDREA SOLIS,,2022-10-10 07:00,2022-10-20 14:00,2024-01-03 14:00,2024-03-29 17:00,2025-11-20 17:00,2025-11-20 17:00,2025-11-13 17:00,2025-11-13 17:00,0,67,100
CN.SEB1.6600,IMPACT [C9] - RFI 5825 - TRENCH/ELEVATOR PIT CURB/BATHROOM (NOMURA PIPE CONFLICT) - SEB1 - L1 - GL 21,Complete,SEB - 1,East Support Building,SUEN-1 - 19-22,L1 - Fndn Slab,,CONSTRUCTION,,Pour Concrete,ANDREA SOLIS,,2022-10-10 07:00,2022-10-20 14:00,2024-01-03 07:00,2024-01-12 17:00,2025-11-20 17:00,2025-11-20 17:00,2025-12-01 17:00,2025-12-01 17:00,0,67,100
CN.SEB1.6820,IMPACT [S.TIA-30] - MEP PIPE OBSTRUCTION BLOCKING METAL STAIR INSTALL - STAIR #20 - 19/D - L1-L3,Complete,SEB - 1,East Support Building,SUES-1 - 19-16,INTERIOR STAIR TOWER - STAIR #20,,CONSTRUCTION,,INSULATED METAL PANELS,JAMES LIVELY,INTERIORS,2024-01-22 07:00,2024-01-31 17:00,2023-10-12 07:00,2024-04-01 17:00,2025-11-20 17:00,2025-11-20 17:00,2025-11-10 07:00,2025-11-10 07:00,0,80,100
CN.SEB1.6830,IMPACT [C23] - EXPANSION JOINT DETAIL (C23) - SEB1- GL 19 - C-E -L4 & L4/E,Complete,SEB - 1,East Support Building,SUEN-1 - 19-22,DS/AD,,CONSTRUCTION,,SOMD,CONCRETE,,2024-01-22 07:00,2024-01-24 11:00,2024-01-10 07:00,2024-01-11 07:00,2025-11-20 17:00,2025-11-20 17:00,2025-12-05 17:00,2025-12-05 17:00,0,24,100
CN.SEB1.6840,IMPACT - SECAI MEP LEAVEOUTS FOR PCW TANK (expected November) - GL 18-19 - A LINE [SUP EXTERIOR WALL],Complete,SEB - 1,East Support Building,SUES-1 - 19-16,EXTERIOR SKIN,,CONSTRUCTION,PATRIOT,INSULATED METAL PANELS,JAMES LIVELY,,2024-08-09 07:00,2024-08-09 17:00,2024-07-01 07:00,2024-10-28 17:00,2025-11-20 17:00,2025-11-20 17:00,2025-09-29 07:00,2025-09-29 07:00,0,10,100
CN.SEB1.6860,UNINSTALL & REPLACE DAMAGED GRATING - DS/AD - SEB1- GL 19-24 - C LINE - L2,Complete,SEB - 1,,SUEN-1 - 19-22,DS/AD,,CONSTRUCTION,,SOMD,,,2024-05-06 13:00,2024-05-16 17:00,2024-04-05 13:00,2024-04-15 00:00,2025-11-20 17:00,2025-11-20 17:00,2025-10-16 07:00,2025-10-16 07:00,0,64,100
CN.SEB1.6880,IMPACT [S14] - UNINSTALL & REPLACE DAMAGED GRATING - DS/AD - SEB1- GL 24-25 - C LINE - L2,Complete,SEB - 1,,SUEN-1 - 19-22,DS/AD,,CONSTRUCTION,W&W,SOMD,,,2024-05-31 07:00,2024-06-06 17:00,2024-05-04 07:00,2024-05-08 17:00,2025-11-20 17:00,2025-11-20 17:00,2025-10-16 07:00,2025-10-16 07:00,0,40,100
CN.SEA3.6700,PH1 - F/R/P/W OAC PAD AIRLOCK WALLS - SEB1 - GL 19-22 - L4 (FORM WORK FIRST / REBAR & POUR PENDING GB TURNOVER),Complete,SEB - 1,East Support Building,SUEN-1 - 19-22,L4 - SUP Roof - FAB Roof,,CONSTRUCTION,BAKER,CIP WALL,CONCRETE,SOMD / Roofing / Waterproofing,2024-07-16 07:00,2024-07-22 17:00,2024-06-25 07:00,2024-07-03 17:00,2025-11-20 17:00,2025-11-20 17:00,2025-12-05 17:00,2025-12-05 17:00,0,50,100
CN.SEB1.7200,INSTALL BASE COAT CRICKET - GL 20-22 - C-A - L4 ROOF,Complete,SEB - 1,East Support Building,SUEN-1 - 19-22,L4 - SUP Roof - FAB Roof,,CONSTRUCTION,BRAZOS,TOPPING,,SOMD / Roofing / Waterproofing,2024-10-07 07:00,2024-10-07 17:00,2024-10-05 07:00,2024-10-05 17:00,2025-11-20 17:00,2025-11-20 17:00,2025-12-05 17:00,2025-12-05 17:00,0,10,100
CN.SEB1.7210,INSPECT BASE COAT CRICKET - GL 20-22 - C-A - L4 ROOF,Complete,SEB - 1,East Support Building,SUEN-1 - 19-22,L4 - SUP Roof - FAB Roof,,CONSTRUCTION,BRAZOS,TOPPING,,SOMD / Roofing / Waterproofing,2024-10-07 07:00,2024-10-07 17:00,2024-10-05 07:00,2024-10-05 17:00,2025-11-20 17:00,2025-11-20 17:00,2025-12-05 17:00,2025-12-05 17:00,0,10,100
CN.SEB1.7220,INSTALL TOP COAT CRICKET - GL 20-22 - C-A - L4 ROOF,Complete,SEB - 1,East Support Building,SUEN-1 - 19-22,L4 - SUP Roof - FAB Roof,,CONSTRUCTION,BRAZOS,TOPPING,,SOMD / Roofing / Waterproofing,2024-10-07 07:00,2024-10-08 17:00,2024-10-07 07:00,2024-10-07 17:00,2025-11-20 17:00,2025-11-20 17:00,2025-12-05 17:00,2025-12-05 17:00,0,20,100
CN.SEB1.7230,INSTALL CRICKET - GL 20-22 - C-A - L4 ROOF,Complete,SEB - 1,East Support Building,SUEN-1 - 19-22,L4 - SUP Roof - FAB Roof,,CONSTRUCTION,BRAZOS,TOPPING,,SOMD / Roofing / Waterproofing,2024-10-01 07:00,2024-10-07 17:00,2024-10-01 07:00,2024-10-03 17:00,2025-11-20 17:00,2025-11-20 17:00,2025-12-05 17:00,2025-12-05 17:00,0,40,100
CN.SEB1.7240,INSPECT CRICKET - GL 20-22 - C-A - L4 ROOF,Complete,SEB - 1,East Support Building,SUEN-1 - 19-22,L4 - SUP Roof - FAB Roof,,CONSTRUCTION,BRAZOS,TOPPING,,SOMD / Roofing / Waterproofing,2024-10-03 07:00,2024-10-03 17:00,2024-10-03 07:00,2024-10-03 17:00,2025-11-20 17:00,2025-11-20 17:00,2025-12-05 17:00,2025-12-05 17:00,0,10,100
CN.SEB1.7250,INSTALL PRIMER CRICKET - GL 20-22 - C-A - L4 ROOF,Complete,SEB - 1,East Support Building,SUEN-1 - 19-22,L4 - SUP Roof - FAB Roof,,CONSTRUCTION,BRAZOS,TOPPING,,SOMD / Roofing / Waterproofing,2024-10-21 07:00,2024-10-21 17:00,2024-10-04 07:00,2024-10-04 17:00,2025-11-20 17:00,2025-11-20 17:00,2025-12-05 17:00,2025-12-05 17:00,0,10,100
CN.SEB1.7260,INSPECT PRIMER CRICKET - GL 20-22 - C-A - L4 ROOF,Complete,SEB - 1,East Support Building,SUEN-1 - 19-22,L4 - SUP Roof - FAB Roof,,CONSTRUCTION,BRAZOS,TOPPING,,SOMD / Roofing / Waterproofing,2024-10-04 07:00,2024-10-04 17:00,2024-10-04 07:00,2024-10-04 17:00,2025-11-20 17:00,2025-11-20 17:00,2025-12-05 17:00,2025-12-05 17:00,0,10,100
CN.SEA3.6930,PH1 - WATERPROOFING/INSPECT OAC PAD AIRLOCK WALLS - SEB1 - GL 19-22 - L4,Complete,SEB - 1,East Support Building,SUEN-1 - 19-22,L4 - SUP Roof - FAB Roof,,CONSTRUCTION,BRAZOS,CIP WALL,CONCRETE,SOMD / Roofing / Waterproofing,2024-07-08 07:00,2024-07-16 17:00,2024-06-18 07:00,2024-06-24 17:00,2025-11-20 17:00,2025-11-20 17:00,2025-12-05 17:00,2025-12-05 17:00,0,60,100
CN.SEB1.7280,IMPACT - D-LINE STEEL SPRAY FIREPROOFING SFRM2 - SEB1 - L3-CEILING - GL 19-22- INSPECT SURFACE PREP ADDITIONAL STEEL,Complete,SEB - 1,,SUEN-1 - 19-22,L4 - SUP Roof - FAB Roof,DS/AD INTERIORS,CONSTRUCTION,ROLLING PLAINS,Fireproofing,,,2024-04-19 07:00,2024-04-26 17:00,2024-04-19 07:00,2024-04-25 17:00,2025-11-20 17:00,2025-11-20 17:00,2025-06-13 08:00,2025-06-13 08:00,0,60,100
CN.SEB1.7310,IMPACT - INSPECT & SURFACE PREP ADDITIONAL AD STEEL FOR INTUMESCENT - SEB1 - GL 19-22 - D-E - L3 CEILING,Complete,SEB - 1,,SUEN-1 - 19-22,L4 - SUP Roof - FAB Roof,DS/AD INTERIORS,CONSTRUCTION,ROLLING PLAINS,Fireproofing,,,2024-05-13 07:00,2024-05-20 17:00,2024-05-13 07:00,2024-05-23 00:00,2025-11-20 17:00,2025-11-20 17:00,2025-06-13 08:00,2025-06-13 08:00,0,50,100
CN.SEB1.7410,REMAINING INSTALL INSULATED METAL PANEL MODULES - GL 19.5-18.5 - C LINE (DS AREA) [BLOCKED BY MEP],Complete,SEB - 1,East Support Building,SUEN-1 - 19-22,EXTERIOR SKIN,,CONSTRUCTION,KOVACH,INSULATED METAL PANELS,JAMES LIVELY,,2024-08-09 07:00,2024-08-10 17:00,2024-08-08 07:00,2024-08-21 17:00,2025-11-20 17:00,2025-11-20 17:00,2025-12-05 17:00,2025-12-05 17:00,0,20,100
CN.SEB1.7430,METAL STUD FRAMING (2hr) - SEB2 - GL 22-25 - D LINE - L2,Complete,SEB - 1,West Support Building,SUEN-2 - 22-25,L2 - SubFab Level,DS/AD INTERIORS,CONSTRUCTION,BERG,TBD Architectural Finishes,FIZ DATA CENTER,INTERIORS,2024-05-31 07:00,2024-06-04 15:00,2024-05-10 13:00,2024-05-15 17:00,2025-11-20 17:00,2025-11-20 17:00,2025-11-21 17:00,2025-11-21 17:00,0,48,100
CN.SEB1.7450,REMEDY - TAPE & FINISH DRYWALL - SEB2 - GL 22-25 - D LINE - L2,Complete,SEB - 1,West Support Building,SUEN-2 - 22-25,L2 - SubFab Level,DS/AD INTERIORS,CONSTRUCTION,CHERRY COATING,DRYWALL,FIZ DATA CENTER,INTERIORS,2024-08-16 07:00,2024-08-20 17:00,2024-08-14 07:00,2024-08-16 17:00,2025-11-20 17:00,2025-11-20 17:00,2025-12-05 17:00,2025-12-05 17:00,0,30,100
CN.SEB1.7460,FINISH PAINT - SEB2 - GL 22-25 - D LINE - L2,Complete,SEB - 1,West Support Building,SUEN-2 - 22-25,L2 - SubFab Level,DS/AD INTERIORS,CONSTRUCTION,FINISH PAINT,TBD Architectural Finishes,FIZ DATA CENTER,INTERIORS,2025-07-03 07:00,2025-07-10 17:00,2025-07-03 07:00,2025-07-10 17:00,2025-11-20 17:00,2025-11-20 17:00,2025-12-05 17:00,2025-12-05 17:00,0,50,100
CN.SEB1.7420,REMEDY - FRAME & DRYWALL (INT) - SEB2 - GL 22-25 - D LINE - L2,Complete,SEB - 1,West Support Building,SUEN-2 - 22-25,L2 - SubFab Level,DS/AD INTERIORS,CONSTRUCTION,BERG,DRYWALL,FIZ DATA CENTER,INTERIORS,2024-06-17 07:00,2024-06-21 17:00,2024-06-17 07:00,2024-08-02 17:00,2025-11-20 17:00,2025-11-20 17:00,2025-11-21 17:00,2025-11-21 17:00,0,40,100
CN.SEB.7501,IMPACT - ENVIRONMENTAL CONTOL APPROVAL BY SECAI - SEB1 - GL 3-16 - D-E - L3 CEILING,Complete,SEB - 1,,SUES-5 - 6-1 - FIZ - GL A -E,L4 - SUP Roof - FAB Roof,DS/AD INTERIORS,CONSTRUCTION,ROLLING PLAINS,Fireproofing,,,2024-05-13 07:00,2024-05-20 17:00,2024-05-13 07:00,2024-05-21 17:00,2025-11-20 17:00,2025-11-20 17:00,2025-06-13 08:00,2025-06-13 08:00,0,50,100
CN.SEB55110,FRAMING - STAIRS 20 - SEA1 - GL 18-19 - C-A - L1-L3,Complete,SEB - 1,East Support Building,SUES-1 - 19-16,L1 - Fndn Slab,MECH RM 2,CONSTRUCTION,PATRIOT,INSULATED METAL PANELS,AMBER CARO,INTERIORS,2024-05-13 07:00,2024-06-03 17:00,2024-05-13 07:00,2024-05-20 17:00,2025-11-20 17:00,2025-11-20 17:00,2025-12-01 07:00,2025-12-01 07:00,0,120,100
CN.SEB1.8940,REMEDY - DEMO DRYWALL (INT)- SEB1- GL 19-22 -  L2 - D LINE,Complete,SEB - 1,West Support Building,SUEN-1 - 19-22,L2 - SubFab Level,DS/AD INTERIORS,CONSTRUCTION,,DRYWALL,FIZ DATA CENTER,INTERIORS,2024-06-03 07:00,2024-06-10 17:00,2024-06-01 07:00,2024-06-06 17:00,2025-11-20 17:00,2025-11-20 17:00,2025-11-21 17:00,2025-11-21 17:00,0,50,100
CN.SEB1.8950,REMEDY - FRAME & DRYWALL- SEB1- GL 19-22 -  L2 - D LINE,Complete,SEB - 1,West Support Building,SUEN-1 - 19-22,L2 - SubFab Level,DS/AD INTERIORS,CONSTRUCTION,BERG,DRYWALL,FIZ DATA CENTER,INTERIORS,2024-06-17 07:00,2024-06-27 17:00,2024-06-17 07:00,2024-08-06 17:00,2025-11-20 17:00,2025-11-20 17:00,2025-11-21 17:00,2025-11-21 17:00,0,70,100
CN.SEB1.9030,CURE TOPPING SLAB - GL 20-22 - C-A - L4 ROOF,Complete,SEB - 1,East Support Building,SUEN-1 - 19-22,L4 - SUP Roof - FAB Roof,,CONSTRUCTION,BAKER,TOPPING,CONCRETE,SOMD / Roofing / Waterproofing,2024-10-10 07:00,2024-10-11 17:00,2024-10-10 07:00,2024-10-12 17:00,2025-11-20 17:00,2025-11-20 17:00,2025-12-05 17:00,2025-12-05 17:00,0,20,100
CN.SEB1.9100,REMAINING INSTALL INSULATED METAL PANEL MODULES - GL 19.5-18.5 - D LINE (AD AREA),Complete,SEB - 1,,SUEN-1 - 19-22,EXTERIOR SKIN,,CONSTRUCTION,KOVACH,INSULATED METAL PANELS,,,2024-09-20 07:00,2024-09-22 17:00,2024-09-11 07:00,2024-09-12 17:00,2025-11-20 17:00,2025-11-20 17:00,2025-12-05 17:00,2025-12-05 17:00,0,30,100
CN.SEB1.9160,IMPACT - NO PLATFORM ACCESS - SEB1 - GL19-20 - C-D - L3 CEILING,Complete,SEB - 1,,SUEN-1 - 19-22,L4 - SUP Roof - FAB Roof,DS/AD INTERIORS,CONSTRUCTION,ROLLING PLAINS,Fireproofing,,,2024-05-31 07:00,2024-06-07 17:00,2024-05-31 07:00,2024-06-26 17:00,2025-11-20 17:00,2025-11-20 17:00,2025-12-05 17:00,2025-12-05 17:00,0,50,100
CN.SEB1.9170,CURE - AD STEEL PAINT FIREPROOFING IFRM - SEB1- GL 19-22 - C-E - L2-CEILING,Complete,SEB - 1,East Support Building,SUEN-1 - 19-22,DS/AD,,CONSTRUCTION,ROLLING PLAINS,Fireproofing,HOON WOO,,2024-07-16 07:00,2024-08-04 17:00,2024-07-16 07:00,2024-07-25 17:00,2025-11-20 17:00,2025-11-20 17:00,2025-11-26 07:00,2025-11-26 07:00,0,180,100
CN.SEB1.10040,DS ROOF PARAPET DRY IN - SEB1 - GL 19-22 - C-D - L6,Complete,SEB - 1,East Support Building,SUEN-1 - 19-22,DS/AD,,CONSTRUCTION,BRAZOS,Waterproofing - Preferred,JAMES LIVELY,,2024-08-02 07:00,2024-08-20 17:00,2024-08-01 07:00,2024-09-03 17:00,2025-11-20 17:00,2025-11-20 17:00,2025-12-05 17:00,2025-12-05 17:00,0,110,100
CN.SEB1.10060,REMEDY - TAPE & FINISH DRYWALL - SEB2 - GL 20-25 - C LINE - L2,Not Started,SEB - 1,West Support Building,SUEN-2 - 22-25,L2 - SubFab Level,DS/AD INTERIORS,CONSTRUCTION,CHERRY COATING,DRYWALL,FIZ DATA CENTER,INTERIORS,2025-12-08 07:00,2025-12-10 17:00,,,2025-12-08 07:00,2025-12-10 17:00,2025-11-26 07:00,2025-12-02 17:00,30,30,0
CN.SEB1.10050,REMEDY - FRAME & DRYWALL (INT) - SEB2 - GL 20-25 - C LINE - L2,Not Started,SEB - 1,West Support Building,SUEN-2 - 22-25,L2 - SubFab Level,DS/AD INTERIORS,CONSTRUCTION,BERG,DRYWALL,FIZ DATA CENTER,INTERIORS,2025-12-01 07:00,2025-12-05 17:00,,,2025-12-01 07:00,2025-12-05 17:00,2025-11-19 07:00,2025-11-25 17:00,50,50,0
CN.SEB1.10080,IMPACT - AWAIT SECAI TO MOVE MEP MATERIALS/EQPT & TURNOVER AREA TO YATES - GL 20-26 - C-A - L4 ROOF,Complete,SEB - 1,East Support Building,SUEN-1 - 19-22,L4 - SUP Roof - FAB Roof,,CONSTRUCTION,BRAZOS,TOPPING,,SOMD / Roofing / Waterproofing,2024-08-23 07:00,2024-09-06 17:00,2024-08-18 07:00,2024-09-18 13:00,2025-11-20 17:00,2025-11-20 17:00,2025-12-05 17:00,2025-12-05 17:00,0,100,100
CN.SEB1.10100,CLADDING STEEL & DETAIL/INSPECT - GL 18-19 - A LINE [SUP EXTERIOR WALL] (MEP TANK LEAVEOUT),Complete,SEB - 1,East Support Building,SUES-1 - 19-16,EXTERIOR SKIN,,CONSTRUCTION,PATRIOT,INSULATED METAL PANELS,JAMES LIVELY,,2024-10-29 07:00,2024-11-05 17:00,2024-10-29 07:00,2024-11-05 17:00,2025-11-20 17:00,2025-11-20 17:00,2025-09-29 07:00,2025-09-29 07:00,0,50,100
CN.SEB1.10110,IMPACT - AWAIT SECAI PIPE ELEVATION FIX / TURNOVER AREA TO YATES - GL 19-21 - A LINE [SUP EXTERIOR WALL],Complete,SEB - 1,East Support Building,SUEN-1 - 19-22,EXTERIOR SKIN,,CONSTRUCTION,PATRIOT,INSULATED METAL PANELS,JAMES LIVELY,,2024-08-09 07:00,2024-08-09 17:00,2024-08-12 07:00,2024-10-04 17:00,2025-11-20 17:00,2025-11-20 17:00,2025-09-29 07:00,2025-09-29 07:00,0,10,100
CN.SEB1.10140,INSTALL INSULATED METAL PANEL MODULES - GL 18-19 - A LINE [SUP EXTERIOR WALL] (ABOVE MEP TANK LEAVEOUT),Complete,SEB - 1,East Support Building,SUES-1 - 19-16,EXTERIOR SKIN,,CONSTRUCTION,KOVACH,INSULATED METAL PANELS,JAMES LIVELY,,2024-09-25 07:00,2024-09-29 17:00,2024-09-11 07:00,2024-10-08 17:00,2025-11-20 17:00,2025-11-20 17:00,2025-12-05 17:00,2025-12-05 17:00,0,50,100
CN.SEB1.10150,INSTALL INSULATED METAL PANEL MODULES - GL 20-21 - A LINE [SUP EXTERIOR WALL] (ABOVE MEP PIPE),Complete,SEB - 1,East Support Building,SUEN-1 - 19-22,EXTERIOR SKIN,,CONSTRUCTION,KOVACH,INSULATED METAL PANELS,JAMES LIVELY,,2025-01-23 07:00,2025-01-28 17:00,2025-01-23 07:00,2025-01-24 17:00,2025-11-20 17:00,2025-11-20 17:00,2025-12-05 17:00,2025-12-05 17:00,0,40,100
CN.SEB1.10160,IMPACT - EXPANSION JOINT PARAPET DETAIL - SEB1 - GL 17-21 - C-D - L6,Complete,SEB - 1,East Support Building,SUEN-1 - 19-22,DS/AD,,CONSTRUCTION,BRAZOS,Waterproofing - Preferred,JAMES LIVELY,,2024-09-09 07:00,2024-09-27 17:00,2024-09-09 07:00,2024-10-10 17:00,2025-11-20 17:00,2025-11-20 17:00,2025-12-05 07:00,2025-12-05 07:00,0,120,100
CN.SEB1.10320,IMPACT - SCAFFOLD/ MEP TRADES IN THE WAY - GL 19-21 - A LINE [SUP EXTERIOR WALL],Complete,SEB - 1,East Support Building,SUEN-1 - 19-22,EXTERIOR SKIN,,CONSTRUCTION,PATRIOT,INSULATED METAL PANELS,JAMES LIVELY,,2024-08-09 07:00,2024-08-09 17:00,2024-10-05 07:00,2024-10-22 17:00,2025-11-20 17:00,2025-11-20 17:00,2025-09-29 07:00,2025-09-29 07:00,0,10,100
CN.SEB1.10330,IMPACT - OFFICE BLDG SCHEDULE COMPLETE - A1 LINE [SUP EXTERIOR WALL] (OFFICE BLDG RETURN),Complete,SEB - 1,East Support Building,SUES-5 - 6-1 - FIZ - GL A -E,EXTERIOR SKIN,,CONSTRUCTION,KOVACH,INSULATED METAL PANELS,JAMES LIVELY,,2024-10-14 07:00,2024-10-15 17:00,2024-10-01 07:00,2024-11-12 17:00,2025-11-20 17:00,2025-11-20 17:00,2025-09-29 07:00,2025-09-29 07:00,0,20,100
CN.SEB1.10340,ALPHA PREP PAINTING & PATRIOT CLADDING - A1 LINE [SUP EXTERIOR WALL] (OFFICE BLDG RETURN),Complete,SEB - 1,East Support Building,SUES-5 - 6-1 - FIZ - GL A -E,EXTERIOR SKIN,,CONSTRUCTION,KOVACH,INSULATED METAL PANELS,JAMES LIVELY,,2024-11-21 07:00,2024-11-22 17:00,2024-11-22 07:00,2024-11-27 17:00,2025-11-20 17:00,2025-11-20 17:00,2025-09-29 07:00,2025-09-29 07:00,0,20,100
CN.SEB1.10350,INSTALL INSULATED METAL PANEL - A1 LINE [SUP EXTERIOR WALL] (OFFICE BLDG RETURN Emseal completion delayed),Complete,SEB - 1,East Support Building,SUES-5 - 6-1 - FIZ - GL A -E,EXTERIOR SKIN,,CONSTRUCTION,KOVACH,INSULATED METAL PANELS,JAMES LIVELY,,2024-12-17 07:00,2024-12-23 17:00,2024-12-17 07:00,2024-12-23 17:00,2025-11-20 17:00,2025-11-20 17:00,2025-11-04 07:00,2025-11-04 07:00,0,40,100
CN.SEB1.10360,INSTALL CLADDING - A1 LINE [SUP EXTERIOR WALL] (OFFICE BLDG RETURN),Complete,SEB - 1,East Support Building,SUES-5 - 6-1 - FIZ - GL A -E,EXTERIOR SKIN,,CONSTRUCTION,KOVACH,INSULATED METAL PANELS,JAMES LIVELY,,2024-11-12 07:00,2024-11-15 17:00,2024-11-12 07:00,2024-11-20 17:00,2025-11-20 17:00,2025-11-20 17:00,2025-09-29 07:00,2025-09-29 07:00,0,30,100
CN.SEB1.10370,IMPACT - MEP PIPE DIMENSION NEEDED - GL 19-20 - A LINE [SUP EXTERIOR WALL] (TRESTLE AREA),Complete,SEB - 1,East Support Building,SUEN-1 - 19-22,EXTERIOR SKIN,,CONSTRUCTION,KOVACH,INSULATED METAL PANELS,JAMES LIVELY,,2024-11-12 07:00,2024-11-15 17:00,2024-10-01 07:00,2024-12-06 17:00,2025-11-20 17:00,2025-11-20 17:00,2025-11-12 07:00,2025-11-12 07:00,0,30,100
CN.SEB1.10380,INSTALL & INSPECT CLADDING STEEL - GL 19-20 - A LINE [SUP EXTERIOR WALL] (TRESTLE MEP PENETXN),Complete,SEB - 1,East Support Building,SUEN-1 - 19-22,EXTERIOR SKIN,,CONSTRUCTION,KOVACH,INSULATED METAL PANELS,JAMES LIVELY,,2024-11-12 07:00,2024-11-15 17:00,2024-12-09 07:00,2025-01-04 17:00,2025-11-20 17:00,2025-11-20 17:00,2025-11-13 07:00,2025-11-13 07:00,0,30,100
CN.SEB1.10390,IMPACT - STUD FRAMING - DENSE GLASS - SHEATHING - GL 19-20 - A LINE [SUP EXTERIOR WALL],Complete,SEB - 1,East Support Building,SUEN-1 - 19-22,EXTERIOR SKIN,,CONSTRUCTION,KOVACH,INSULATED METAL PANELS,JAMES LIVELY,,2025-07-23 07:00,2025-08-19 17:00,2025-06-20 07:00,2025-10-28 17:00,2025-11-20 17:00,2025-11-20 17:00,2025-11-13 07:00,2025-11-13 07:00,0,200,100
CN.SEB1.10400,IMPACT - KOVACH INSTALL K WALL PANEL - GL 19-20 - A LINE [SUP EXTERIOR WALL],Not Started,SEB - 1,East Support Building,SUEN-1 - 19-22,EXTERIOR SKIN,,CONSTRUCTION,KOVACH,INSULATED METAL PANELS,JAMES LIVELY,,2025-11-24 07:00,2025-12-16 17:00,,,2025-11-24 07:00,2025-12-16 17:00,2025-11-13 07:00,2025-12-05 17:00,150,150,0
CN.SEB1.10420,IMPACT - PATRIOT PRICING & IOCC APPROVAL FOR CHANGED STEEL - GL 19-20 - A LINE [SUP EXTERIOR WALL] (INSIDE TRUSTLE),Complete,SEB - 1,East Support Building,SUEN-1 - 19-22,EXTERIOR SKIN,,CONSTRUCTION,KOVACH,INSULATED METAL PANELS,JAMES LIVELY,,2024-11-12 07:00,2024-11-18 17:00,2025-01-09 07:00,2025-02-17 07:00,2025-11-20 17:00,2025-11-20 17:00,2025-11-13 07:00,2025-11-13 07:00,0,40,100
CN.SEB1.10430,IMPACT - OFFICE BUILDING EMSEAL COMLETION - A1 LINE [SUP EXTERIOR WALL] (OFFICE BLDG RETURN Emseal completion delayed),Complete,SEB - 1,East Support Building,SUES-5 - 6-1 - FIZ - GL A -E,EXTERIOR SKIN,,CONSTRUCTION,KOVACH,INSULATED METAL PANELS,JAMES LIVELY,,2024-11-27 07:00,2024-12-06 17:00,2024-11-27 07:00,2024-12-16 17:00,2025-11-20 17:00,2025-11-20 17:00,2025-09-29 07:00,2025-09-29 07:00,0,50,100
CN.SEB1.10520,IMPACT - PATRIOT PRICING ON HOLD - Payment issues w SECAI - GL 19-20 - A LINE [SUP EXTERIOR WALL] (INSIDE TRUSTLE),Complete,SEB - 1,East Support Building,SUEN-1 - 19-22,EXTERIOR SKIN,,CONSTRUCTION,KOVACH,INSULATED METAL PANELS,JAMES LIVELY,,2024-11-12 07:00,2024-11-15 17:00,2024-12-09 07:00,2025-01-08 17:00,2025-11-20 17:00,2025-11-20 17:00,2025-11-13 07:00,2025-11-13 07:00,0,30,100
CN.SEB1.10560,PAINT BOLTS AND INSTALL INSULATED METAL PANELS (BELOW TRUSTLE ),Complete,SEB - 1,East Support Building,SUEN-1 - 19-22,EXTERIOR SKIN,,CONSTRUCTION,KOVACH,INSULATED METAL PANELS,JAMES LIVELY,,2025-05-05 07:00,2025-05-09 17:00,2025-05-02 07:00,2025-05-09 17:00,2025-11-20 17:00,2025-11-20 17:00,2025-12-05 17:00,2025-12-05 17:00,0,50,100
CN.SEB1.10570,IMPACT - GREEN BERRY PIPE DELAY- GL 19-20 (BELOW TRUSTLE )(4/20),Complete,SEB - 1,East Support Building,SUEN-1 - 19-22,EXTERIOR SKIN,,CONSTRUCTION,KOVACH,INSULATED METAL PANELS,JAMES LIVELY,,2025-02-07 07:00,2025-02-12 17:00,2025-02-07 07:00,2025-05-02 17:00,2025-11-20 17:00,2025-11-20 17:00,2025-12-05 17:00,2025-12-05 17:00,0,40,100
CN.SEB1.10720,IMPACT - IOCC 1434 MKMARLOW PREP SUBMIT FRAMING & SHEATHING - GL 19-20 - A LINE [SUP EXTERIOR WALL] (INSIDE TRUSTLE),Complete,SEB - 1,East Support Building,SUEN-1 - 19-22,EXTERIOR SKIN,,CONSTRUCTION,KOVACH,INSULATED METAL PANELS,JAMES LIVELY,,2024-11-12 07:00,2024-11-18 17:00,2025-02-18 07:00,2025-04-18 07:00,2025-11-20 17:00,2025-11-20 17:00,2025-11-13 07:00,2025-11-13 07:00,0,40,100
CN.SEB1.10730,"IMPACT - IOCC 1434, 1487, 1489 GDA, 1337,1339- approval- K-WALL - GL 19-20 - A LINE [SUP EXTERIOR WALL] (INSIDE TRUSTLE)",Complete,SEB - 1,East Support Building,SUEN-1 - 19-22,EXTERIOR SKIN,,CONSTRUCTION,KOVACH,INSULATED METAL PANELS,JAMES LIVELY,,2025-06-03 07:00,2025-06-06 17:00,2025-06-18 07:00,2025-06-19 17:00,2025-11-20 17:00,2025-11-20 17:00,2025-11-13 07:00,2025-11-13 07:00,0,40,100
CN.SEB1.10740,IMPACT - SCAFFOLDING FOR MKM - GL 19-20 - A LINE [SUP EXTERIOR WALL] (INSIDE TRUSTLE),Complete,SEB - 1,East Support Building,SUEN-1 - 19-22,EXTERIOR SKIN,,CONSTRUCTION,KOVACH,INSULATED METAL PANELS,JAMES LIVELY,,2025-07-07 07:00,2025-07-11 17:00,2025-06-18 07:00,2025-06-19 00:00,2025-11-20 17:00,2025-11-20 17:00,2025-11-13 07:00,2025-11-13 07:00,0,50,100
CN.SEB1.10750,IMPACT - ALPHA PAINT CLADDING STEEL - GL 19-20 - A LINE [SUP EXTERIOR WALL] INSIDE TRUSTLE,Complete,SEB - 1,East Support Building,SUEN-1 - 19-22,EXTERIOR SKIN,,CONSTRUCTION,KOVACH,INSULATED METAL PANELS,JAMES LIVELY,,2025-10-02 07:00,2025-10-03 17:00,2025-06-16 07:00,2025-06-19 15:00,2025-11-20 17:00,2025-11-20 17:00,2025-11-13 07:00,2025-11-13 07:00,0,20,100
CN.SEB1.10760,IMPACT - GDA WATERPROOFING - GL 19-20 - A LINE [SUP EXTERIOR WALL],Complete,SEB - 1,East Support Building,SUEN-1 - 19-22,EXTERIOR SKIN,,CONSTRUCTION,KOVACH,INSULATED METAL PANELS,JAMES LIVELY,,2025-11-05 07:00,2025-11-17 17:00,2025-11-05 07:00,2025-11-10 17:00,2025-11-21 17:00,2025-11-21 17:00,2025-11-13 07:00,2025-11-13 07:00,0,90,100
CN.SEB1.10770,"IMPACT - RFI 9978 - unanswered NEED WP , WALL TYPE DETAILS - GL 19-20 - A LINE [SUP EXTERIOR WALL] (INSIDE TRUSTLE)",Complete,SEB - 1,East Support Building,SUEN-1 - 19-22,EXTERIOR SKIN,,CONSTRUCTION,KOVACH,INSULATED METAL PANELS,JAMES LIVELY,,2024-11-12 07:00,2024-11-27 17:00,2025-01-31 07:00,2025-05-07 17:00,2025-11-20 17:00,2025-11-20 17:00,2025-11-13 07:00,2025-11-13 07:00,0,100,100
CN.SEB1.10810,IMPACT - IOCC GDA & KOVACH PREP SUBMIT FRAMING & SHEATHING - GL 19-20 - A LINE [SUP EXTERIOR WALL] (INSIDE TRUSTLE),Complete,SEB - 1,East Support Building,SUEN-1 - 19-22,EXTERIOR SKIN,,CONSTRUCTION,KOVACH,INSULATED METAL PANELS,JAMES LIVELY,,2025-06-30 07:00,2025-07-03 17:00,2025-06-03 07:00,2025-06-18 17:00,2025-11-20 17:00,2025-11-20 17:00,2025-11-13 07:00,2025-11-13 07:00,0,40,100
CN.SEB1.10820,IMPACT - CANOPY IMP FLASHING / WATER INTRUSION - RFI 1726 ISSUE & RESPONDED,Complete,SEB - 1,East Support Building,ENCLOSURE,EXTERIOR SKIN,,PRE - CON / BUYOUT / IMPACTS,KOVACH,INSULATED METAL PANELS,JAMES LIVELY,,2024-12-17 07:00,2024-12-26 17:00,2025-04-01 07:00,2025-05-16 17:00,2025-11-20 17:00,2025-11-20 17:00,2025-09-29 07:00,2025-09-29 07:00,0,50,100
CN.SEB1.10830,IMPACT - CANOPY IMP FLASHING / WATER INTRUSION - SECAI DIRECTION OPTION 1 PER RFI 1726,Complete,SEB - 1,East Support Building,ENCLOSURE,EXTERIOR SKIN,,PRE - CON / BUYOUT / IMPACTS,KOVACH,INSULATED METAL PANELS,JAMES LIVELY,,2024-12-17 07:00,2024-12-26 17:00,2025-05-19 07:00,2025-05-22 07:00,2025-11-20 17:00,2025-11-20 17:00,2025-09-29 07:00,2025-09-29 07:00,0,50,100
CN.SEB1.10840,IMPACT - CANOPY IMP FLASHING / WATER INTRUSION - IOCC 1519 REJECTED IMP REMOVAL - SECAI DIRECTED YATES PER ORIGINAL DWGS,Complete,SEB - 1,East Support Building,ENCLOSURE,EXTERIOR SKIN,,PRE - CON / BUYOUT / IMPACTS,KOVACH,INSULATED METAL PANELS,JAMES LIVELY,,2025-08-01 07:00,2025-08-06 17:00,2025-07-25 07:00,2025-07-31 11:00,2025-11-20 17:00,2025-11-20 17:00,2025-09-30 07:00,2025-09-30 07:00,0,40,100
CN.SEB1.10890,IMPACT - CANOPY IMP FLASHING / WATER INTRUSION - PRICING FOR OPTION 1 - STILL SECAI CHANGING DIRECTION,Complete,SEB - 1,East Support Building,ENCLOSURE,EXTERIOR SKIN,,PRE - CON / BUYOUT / IMPACTS,KOVACH,INSULATED METAL PANELS,JAMES LIVELY,,2024-12-17 07:00,2024-12-26 17:00,2025-05-23 07:00,2025-07-25 17:00,2025-11-20 17:00,2025-11-20 17:00,2025-09-29 07:00,2025-09-29 07:00,0,50,100
CN.A1.UG.1210,PH1- UNDERGROUND PLUMBING SEB2,Complete,SEB - 2,East Support Building,SUEN-2 - 22-25,L1 - Fndn Slab,,CONSTRUCTION,,Underground Plumbing - Cobb,ANDREA SOLIS,,2022-10-03 07:00,2022-10-06 17:00,2022-10-03 07:00,2022-10-06 17:00,2025-11-20 17:00,2025-11-20 17:00,2025-06-13 08:00,2025-06-13 08:00,0,40,100
CN.A1.UG.1220,PH1- UNDERGROUND ELECTRICAL SEB2,Complete,SEB - 2,East Support Building,SUEN-2 - 22-25,L1 - Fndn Slab,,CONSTRUCTION,,Underground Electrical - (By Owner),ANDREA SOLIS,,2022-10-07 07:00,2022-10-10 17:00,2022-10-07 07:00,2022-10-13 09:00,2025-11-20 17:00,2025-11-20 17:00,2025-06-13 08:00,2025-06-13 08:00,0,40,100
CN.SEB2.1000,PH1- SUP - EXCAVATE PIER CAPS - SEB2,Complete,SEB - 2,East Support Building,SUEN-2 - 22-25,L1 - Fndn Slab,,CONSTRUCTION,,Excavate CIP,ANDREA SOLIS,,2022-08-30 08:00,2022-09-01 12:00,2022-08-30 08:00,2022-09-09 17:00,2025-11-20 17:00,2025-11-20 17:00,2025-06-13 08:00,2025-06-13 08:00,0,24,100
CN.SEB2.1010,PH1-FRP GRADE BEAM - SEB2,Complete,SEB - 2,East Support Building,SUEN-2 - 22-25,L1 - Fndn Slab,,CONSTRUCTION,,Pour Concrete,ANDREA SOLIS,,2022-11-21 07:00,2022-11-27 17:00,2022-11-21 07:00,2022-11-28 17:00,2025-11-20 17:00,2025-11-20 17:00,2025-06-13 08:00,2025-06-13 08:00,0,40,100
CN.SEB2.1020,PH1-BLACK BASE (NOW RAT SLAB) - SEB2,Complete,SEB - 2,East Support Building,SUEN-2 - 22-25,L1 - Fndn Slab,,CONSTRUCTION,,RAT SLAB,ANDREA SOLIS,,2022-12-27 07:00,2022-12-30 11:00,2022-12-12 07:00,2022-12-15 17:00,2025-11-20 17:00,2025-11-20 17:00,2025-06-13 08:00,2025-06-13 08:00,0,24,100
CN.SEB2.1030,PH1-CURE PIER CAPS - SEB2,Complete,SEB - 2,East Support Building,SUEN-2 - 22-25,L1 - Fndn Slab,,CONSTRUCTION,,Concrete Cure,ANDREA SOLIS,,2022-11-29 07:00,2022-11-29 07:00,2022-11-29 07:00,2022-11-29 07:00,2025-11-20 17:00,2025-11-20 17:00,2025-06-13 08:00,2025-06-13 08:00,0,0,100
CN.SEB2.1080,PH1- FRP SLAB - SEB-2-L3,Complete,SEB - 2,East Support Building,SUEN-2 - 22-25,L3 / Waffle Slab Level,,CONSTRUCTION,,SOMD,CONCRETE,,2023-06-27 13:00,2023-07-03 11:00,2023-06-27 13:00,2023-06-30 13:00,2025-11-20 17:00,2025-11-20 17:00,2025-06-13 08:00,2025-06-13 08:00,0,48,100
CN.SEB2.1120,PH1- FRP SLAB - SEB-2-ROOF,Complete,SEB - 2,East Support Building,SUEN-2 - 22-25,L4 - SUP Roof - FAB Roof,,CONSTRUCTION,,SOMD,CONCRETE,SOMD / Roofing / Waterproofing,2023-09-14 07:00,2023-09-15 13:00,2023-09-14 07:00,2023-09-15 13:00,2025-11-20 17:00,2025-11-20 17:00,2025-11-10 07:00,2025-11-10 07:00,0,16,100
CN.SEB2.1100,PH1- CURE SOMD - SEB-2-L3,Complete,SEB - 2,East Support Building,SUEN-2 - 22-25,L3 / Waffle Slab Level,,CONSTRUCTION,,Concrete Cure,JAMES LEE,,2023-07-06 13:00,2023-07-12 09:00,2023-06-30 13:00,2023-07-03 23:00,2025-11-20 17:00,2025-11-20 17:00,2025-11-10 07:00,2025-11-10 07:00,0,56,100
CN.SEB2.1130,PH1- CURE SOMD - SEB-2-ROOF,Complete,SEB - 2,East Support Building,SUEN-2 - 22-25,L4 - SUP Roof - FAB Roof,,CONSTRUCTION,,Concrete Cure,JAMES LEE,SOMD / Roofing / Waterproofing,2023-10-03 07:00,2023-10-05 11:00,2023-09-16 05:05,2023-09-19 02:00,2025-11-20 17:00,2025-11-20 17:00,2025-11-21 07:00,2025-11-21 07:00,0,24,100
CN.SEB2.1090,PH1- 1st FLOOR SLAB - F8 - SEB-2-L1,Complete,SEB - 2,East Support Building,SUEN-2 - 22-25,L1 - Fndn Slab,,CONSTRUCTION,,Pour Concrete,JAMES LEE,,2023-01-10 07:00,2023-01-13 11:00,2023-01-10 07:00,2023-02-20 15:00,2025-11-20 17:00,2025-11-20 17:00,2025-06-13 08:00,2025-06-13 08:00,0,24,100
CN.SEB2.1220,MEP EQPT PADS (LAYOUT & INSTALL DOWELS)- SEB-2-ROOF,Complete,SEB - 2,East Support Building,SUEN-2 - 22-25,L4 - SUP Roof - FAB Roof,,CONSTRUCTION,,OAC/ MECH PADS,JAMES LEE,SOMD / Roofing / Waterproofing,2023-10-30 07:00,2023-11-03 11:00,2023-10-30 07:00,2023-10-30 17:00,2025-11-20 17:00,2025-11-20 17:00,2025-12-05 17:00,2025-12-05 17:00,0,24,100
CN.SEB2.1050,TIER 1 ERECT PRECAST COLUMNS & BEAMS - SEB2,Complete,SEB - 2,East Support Building,SUEN-2 - 22-25,L3 / Waffle Slab Level,,CONSTRUCTION,,"SUP EAST A,B",SEAN MONK,,2023-04-24 07:00,2023-04-30 13:00,2023-04-24 07:00,2023-05-13 16:00,2025-11-20 17:00,2025-11-20 17:00,2025-06-13 08:00,2025-06-13 08:00,0,56,100
CN.SEB2.1160,PH1-FLUID APPLIED MEMBRANE ROOFING - SEB2,Complete,SEB - 2,East Support Building,SUEN-2 - 22-25,L4 - SUP Roof - FAB Roof,,CONSTRUCTION,,Roofing,JAMES LIVELY,SOMD / Roofing / Waterproofing,2023-11-03 11:00,2023-11-06 13:00,2023-11-01 11:00,2023-11-03 11:00,2025-11-20 17:00,2025-11-20 17:00,2025-12-05 17:00,2025-12-05 17:00,0,32,100
CN.SEB2.1210,FRP TOPPING SLAB - GL 22-24 - C-A - L4 ROOF,Complete,SEB - 2,East Support Building,SUEN-2 - 22-25,L4 - SUP Roof - FAB Roof,,CONSTRUCTION,BAKER,INSULATED METAL PANELS,JAMES LIVELY,SOMD / Roofing / Waterproofing,2024-10-08 07:00,2024-10-14 17:00,2024-10-08 07:00,2024-10-09 17:00,2025-11-20 17:00,2025-11-20 17:00,2025-12-05 17:00,2025-12-05 17:00,0,40,100
CN.SEB2.1170,PH1 - CLADDING STEEL  INTERIOR - SEB-2 - GL 22-25 - D LINE (AD  AREA),Complete,SEB - 2,East Support Building,SUEN-2 - 22-25,EXTERIOR SKIN,,CONSTRUCTION,,INSULATED METAL PANELS,JAMES LIVELY,,2024-03-01 07:00,2024-03-06 13:00,2024-03-01 07:00,2024-03-15 17:00,2025-11-20 17:00,2025-11-20 17:00,2025-11-21 07:00,2025-11-21 07:00,0,56,100
CN.SEB2.1200,INSTALL INSULATED METAL PANEL MODULES - GL 22-25 - C LINE (DS AREA),Complete,SEB - 2,East Support Building,SUEN-2 - 22-25,EXTERIOR SKIN,,CONSTRUCTION,KOVACH,INSULATED METAL PANELS,JAMES LIVELY,,2024-05-04 07:00,2024-05-11 17:00,2024-04-30 07:00,2024-05-08 17:00,2025-11-20 17:00,2025-11-20 17:00,2025-12-05 17:00,2025-12-05 17:00,0,60,100
CN.SEB2.1150,PH1 - CLADDING STEEL  - SEB-2 A LINE [SUP EXTERIOR WALL](Impacted by TRESTLE),Complete,SEB - 2,East Support Building,SUEN-2 - 22-25,EXTERIOR SKIN,,CONSTRUCTION,,INSULATED METAL PANELS,JAMES LIVELY,,2023-09-29 15:00,2023-10-05 11:00,2023-09-29 15:00,2023-10-06 15:00,2025-11-20 17:00,2025-11-20 17:00,2025-09-29 07:00,2025-09-29 07:00,0,56,100
CN.SEB2.1180,PH1 - INSTALL INSULATED METAL PANEL MODULES - SEB-2 - GL 22-25 - A LINE [SUP EXTERIOR WALL],Complete,SEB - 2,East Support Building,SUEN-2 - 22-25,EXTERIOR SKIN,,CONSTRUCTION,,INSULATED METAL PANELS,JAMES LIVELY,,2024-03-18 07:00,2024-03-27 09:00,2024-03-15 08:00,2024-04-04 00:00,2025-11-20 17:00,2025-11-20 17:00,2025-09-30 07:00,2025-09-30 07:00,0,62,100
CN.SEB2.1110,PH1- AD STEEL FRAME INSTALL - SEB-2 fab side,Complete,SEB - 2,East Support Building,SUEN-2 - 22-25,DS/AD,,CONSTRUCTION,,Steel Erection,SEAN MONK,,2023-09-22 15:00,2023-09-25 17:00,2023-09-22 15:00,2023-09-27 11:00,2025-11-20 17:00,2025-11-20 17:00,2025-06-13 08:00,2025-06-13 08:00,0,32,100
CN.AB.AR.2500,METAL STUD FRAMING (2hr) - SEB2 GL 22-25 - L1 C-A - MECHANICAL ROOM 3 NORTH,Complete,SEB - 2,East Support Building,SUEN-2 - 22-25,L1 - Fndn Slab,MECH RM 2,CONSTRUCTION,BERG,TBD Architectural Finishes,AMBER CARO,INTERIORS,2024-02-19 07:00,2024-02-23 17:00,2024-02-19 07:00,2024-02-23 17:00,2025-11-20 17:00,2025-11-20 17:00,2025-11-13 17:00,2025-11-13 17:00,0,40,100
CN.AB.AR.2480,IMPACT - SET/ FIX ANCHOR BOLTS - SEB-2,Complete,SEB - 2,East Support Building,SUEN-2 - 22-25,L1 - Fndn Slab,,CONSTRUCTION,,TBD Architectural Finishes,JAMES LEE,INTERIORS,2023-09-16 08:00,2023-09-17 14:00,2023-09-16 08:00,2023-09-18 15:00,2025-11-20 17:00,2025-11-20 17:00,2025-06-13 08:00,2025-06-13 08:00,0,16,100
CN.AB.AR.3940,IMPACT [D27] - MEP ROUGH IN & INSPECTION (by SECAI) - MECHANICAL ROOM 3 NORTH - SEB2 - GL 22-25 - C-A - L1,Complete,SEB - 2,East Support Building,SUEN-2 - 22-25,L1 - Fndn Slab,MECH RM 2,CONSTRUCTION,SECAI,TBD Architectural Finishes,AMBER CARO,,2024-03-08 07:00,2024-03-18 17:00,2024-03-08 07:00,2024-07-08 17:00,2025-11-20 17:00,2025-11-20 17:00,2025-11-20 07:00,2025-11-20 07:00,0,40,100
CN.AB.AR.3950,TAPE & FINISH DRYWALL - MECHANICAL ROOM 3 NORTH - SEB2 - GL 22-25 - C-A - L1,Complete,SEB - 2,East Support Building,SUEN-2 - 22-25,L1 - Fndn Slab,MECH RM 2,CONSTRUCTION,CHERRY COATING,DRYWALL,AMBER CARO,INTERIORS,2025-08-11 07:00,2025-08-12 17:00,2025-08-11 07:00,2025-08-22 17:00,2025-11-20 17:00,2025-11-20 17:00,2025-11-20 07:00,2025-11-20 07:00,0,20,100
CN.AB.AR.3990,FLOOR STRIPING PAINT - MECHANICAL ROOM 3 NORTH - SEB2 - GL 22-25 - C-A - L1,Not Started,SEB - 2,East Support Building,SUEN-2 - 22-25,L1 - Fndn Slab,MECH RM 2,CONSTRUCTION,FLOOR STRIPING PAINT,TBD Architectural Finishes,AMBER CARO,INTERIORS,2025-12-02 07:00,2025-12-08 17:00,,,2025-12-02 07:00,2025-12-08 17:00,2025-12-01 07:00,2025-12-05 17:00,50,50,0
CN.AB.AR.3960,FINISH PAINT - MECHANICAL ROOM 3 NORTH - SEB2 - GL 22-25 - C-A - L1,Not Started,SEB - 2,East Support Building,SUEN-2 - 22-25,L1 - Fndn Slab,MECH RM 2,CONSTRUCTION,FINISH PAINT,TBD Architectural Finishes,JAMES LEE,INTERIORS,2025-11-21 07:00,2025-12-01 17:00,,,2025-11-21 07:00,2025-12-01 17:00,2025-11-20 07:00,2025-11-26 17:00,50,50,0
CN.SEB2.1240,PH1- DECKING GL 21 - 22 - SEB-2-ROOF,Complete,SEB - 2,East Support Building,SUEN-2 - 22-25,L4 - SUP Roof - FAB Roof,,CONSTRUCTION,,Decking & Detail,SEAN MONK,SOMD / Roofing / Waterproofing,2023-09-06 13:00,2023-09-08 09:00,2023-09-06 13:00,2023-09-08 09:00,2025-11-20 17:00,2025-11-20 17:00,2025-10-16 07:00,2025-10-16 07:00,0,16,100
CN.SEB2.1250,PH1- DECKING GL 21 - 22 - SEB-2-L3,Complete,SEB - 2,East Support Building,SUEN-2 - 22-25,L3 / Waffle Slab Level,,CONSTRUCTION,,Decking & Detail,SEAN MONK,,2023-06-20 13:00,2023-06-23 09:00,2023-06-20 13:00,2023-06-23 09:00,2025-11-20 17:00,2025-11-20 17:00,2025-06-13 08:00,2025-06-13 08:00,0,16,100
CN.SEA1.1820,PH1- CIP OAC PADS - SEB2 - GL 22-25 - C-A - L4 ROOF,Complete,SEB - 2,East Support Building,SUEN-2 - 22-25,L4 - SUP Roof - FAB Roof,,CONSTRUCTION,BAKER,OAC/ MECH PADS,CONCRETE,SOMD / Roofing / Waterproofing,2024-06-28 07:00,2024-07-09 17:00,2024-02-14 07:00,2024-02-23 17:00,2025-11-20 17:00,2025-11-20 17:00,2025-12-05 17:00,2025-12-05 17:00,0,60,100
CN.SEA1.1830,PH1- MEP EQPT PADS (FORM / INSTALL PVC ANGLE) - SEB2 - GL 22-25 - C-A - L4 ROOF,Complete,SEB - 2,East Support Building,SUEN-2 - 22-25,L4 - SUP Roof - FAB Roof,,CONSTRUCTION,BAKER,OAC/ MECH PADS,CONCRETE,SOMD / Roofing / Waterproofing,2024-07-16 07:00,2024-07-17 17:00,2024-02-28 07:00,2024-02-29 17:00,2025-11-20 17:00,2025-11-20 17:00,2025-12-05 17:00,2025-12-05 17:00,0,20,100
CN.SEA1.1840,PH1- MEP EQPT PADS (REPAIR WATERPROOF) - SEB2 - GL 22-25 - C-A - L4 ROOF,Complete,SEB - 2,East Support Building,SUEN-2 - 22-25,L4 - SUP Roof - FAB Roof,,CONSTRUCTION,BRAZOS,OAC/ MECH PADS,CONCRETE,SOMD / Roofing / Waterproofing,2024-07-18 07:00,2024-07-19 17:00,2024-02-29 07:00,2024-02-29 17:00,2025-11-20 17:00,2025-11-20 17:00,2025-12-05 17:00,2025-12-05 17:00,0,20,100
CN.SEA1.1850,PH1- MEP EQPT PADS (TROUGHS DRAIN MATS & MEP SLEEVES) - SEB2 - GL 22-25 - C-A - L4 ROOF,Complete,SEB - 2,East Support Building,SUEN-2 - 22-25,L4 - SUP Roof - FAB Roof,,CONSTRUCTION,,OAC/ MECH PADS,CONCRETE,SOMD / Roofing / Waterproofing,2024-07-22 07:00,2024-07-24 17:00,2024-03-01 07:00,2024-03-04 17:00,2025-11-20 17:00,2025-11-20 17:00,2025-12-05 17:00,2025-12-05 17:00,0,30,100
CN.SEA1.1860,PH1- MEP EQPT PADS (TROUGHS INSULATION) - SEB2 - GL 22-25 - C-A - L4 ROOF,Complete,SEB - 2,East Support Building,SUEN-2 - 22-25,L4 - SUP Roof - FAB Roof,,CONSTRUCTION,,OAC/ MECH PADS,CONCRETE,SOMD / Roofing / Waterproofing,2024-07-24 07:00,2024-07-24 17:00,2024-03-05 07:00,2024-03-05 17:00,2025-11-20 17:00,2025-11-20 17:00,2025-12-05 17:00,2025-12-05 17:00,0,10,100
CN.SEA1.1870,PH1- MEP EQPT PADS (FORM REBAR POUR TROUGHS) - SEB2 - GL 22-25 - C-A - L4 ROOF,Complete,SEB - 2,East Support Building,SUEN-2 - 22-25,L4 - SUP Roof - FAB Roof,,CONSTRUCTION,,OAC/ MECH PADS,CONCRETE,SOMD / Roofing / Waterproofing,2024-07-25 07:00,2024-07-26 17:00,2024-03-06 07:00,2024-03-07 17:00,2025-11-20 17:00,2025-11-20 17:00,2025-12-05 17:00,2025-12-05 17:00,0,20,100
CN.SEA1.1880,PH1- MEP EQPT PADS (TROUGH WATERPROOF & MEP SLEEVES IN TROUGHS) - SEB2 - GL 22-25 - C-A - L4 ROOF,Complete,SEB - 2,East Support Building,SUEN-2 - 22-25,L4 - SUP Roof - FAB Roof,,CONSTRUCTION,,OAC/ MECH PADS,CONCRETE,SOMD / Roofing / Waterproofing,2024-07-29 07:00,2024-07-30 17:00,2024-03-08 07:00,2024-03-09 17:00,2025-11-20 17:00,2025-11-20 17:00,2025-12-05 17:00,2025-12-05 17:00,0,20,100
CN.SEA3.1300,PH1-CIP WALL (DS)- SEB-2,Complete,SEB - 2,East Support Building,SUEN-2 - 22-25,L4 - SUP Roof - FAB Roof,,CONSTRUCTION,,CIP WALL,CONCRETE,SOMD / Roofing / Waterproofing,2023-10-30 07:00,2023-11-04 09:00,2023-10-24 11:00,2023-10-28 10:00,2025-11-20 17:00,2025-11-20 17:00,2025-11-21 07:00,2025-11-21 07:00,0,32,100
CN.SEA1.1900,PH1- MEP EQPT PADS (INSTALL DRAIN MATS)- SEB-2-ROOF,Complete,SEB - 2,East Support Building,SUEN-2 - 22-25,L4 - SUP Roof - FAB Roof,,CONSTRUCTION,,OAC/ MECH PADS,JAMES LIVELY,SOMD / Roofing / Waterproofing,2023-11-07 07:00,2023-11-08 13:00,2023-11-03 07:00,2023-11-04 11:00,2025-11-20 17:00,2025-11-20 17:00,2025-12-05 17:00,2025-12-05 17:00,0,16,100
CN.SEB2.1290,PH1- TOPPING SLAB w TRENCH & ANGLE EMBEDS- SEB-2-L1,Complete,SEB - 2,East Support Building,SUEN-2 - 22-25,L1 - Fndn Slab,MECH RM 2,CONSTRUCTION,,TOPPING,CONCRETE,SOMD / Roofing / Waterproofing,2023-09-11 15:00,2023-09-16 15:00,2023-07-03 15:00,2023-07-06 15:00,2025-11-20 17:00,2025-11-20 17:00,2025-11-13 17:00,2025-11-13 17:00,0,40,100
CN.SEB2.1300,PH1- DS/AD DECKING &  DETAILING GL 22 - 24 - DS/AD SEB-2 L6,Complete,SEB - 2,East Support Building,SUEN-2 - 22-25,DS/AD,,CONSTRUCTION,,Decking & Detail,SEAN MONK,,2023-10-30 07:00,2023-11-04 17:00,2023-10-30 07:00,2023-11-09 10:00,2025-11-20 17:00,2025-11-20 17:00,2025-06-13 08:00,2025-06-13 08:00,0,40,100
CN.SEB2.1310,PH1- DS/AD FRP SLAB - DS/AD SEB-2 - GL 22-25 - L4/E - C-E,Complete,SEB - 2,East Support Building,SUEN-2 - 22-25,DS/AD,,CONSTRUCTION,,SOMD,CONCRETE,,2023-12-17 08:00,2023-12-19 12:00,2023-12-17 08:00,2023-12-19 13:00,2025-11-20 17:00,2025-11-20 17:00,2025-06-13 08:00,2025-06-13 08:00,0,24,100
CN.SEB2.1320,AD WATERPROOFING - SEB2 - GL 22-25 - D-E - L4/E,Complete,SEB - 2,East Support Building,SUEN-2 - 22-25,DS/AD,,CONSTRUCTION,BRAZOS,Waterproofing - Preferred,SEAN MONK,,2024-07-15 07:00,2024-07-29 17:00,2024-07-08 07:00,2024-07-24 17:00,2025-11-20 17:00,2025-11-20 17:00,2025-12-05 17:00,2025-12-05 17:00,0,110,100
CN.SEB2.1330,AD TOPPING SLAB - SEB2 - GL 22-25 - D-E - L4/E,Complete,SEB - 2,East Support Building,SUEN-2 - 22-25,DS/AD,,CONSTRUCTION,BAKER,SOMD,CONCRETE,,2024-08-08 07:00,2024-08-13 17:00,2024-07-25 07:00,2024-07-29 17:00,2025-11-20 17:00,2025-11-20 17:00,2025-12-05 17:00,2025-12-05 17:00,0,40,100
TIER 2.1051,TIER 2 GROUT PRECAST COLUMNS & BEAMS - SEB2,Complete,SEB - 2,East Support Building,SUEN-2 - 22-25,L4 - SUP Roof - FAB Roof,,CONSTRUCTION,,"SUP EAST A,B",SEAN MONK,,2023-07-31 07:00,2023-08-03 17:00,2023-07-26 07:00,2023-07-27 07:00,2025-11-20 17:00,2025-11-20 17:00,2025-06-13 08:00,2025-06-13 08:00,0,40,100
CN.SEB2.1340,PH1- DECKING GL 22 - 23 - SEB-2-L3,Complete,SEB - 2,East Support Building,SUEN-2 - 22-25,L3 / Waffle Slab Level,,CONSTRUCTION,,Decking & Detail,SEAN MONK,,2023-06-23 09:00,2023-06-24 15:00,2023-06-23 09:00,2023-06-24 16:00,2025-11-20 17:00,2025-11-20 17:00,2025-06-13 08:00,2025-06-13 08:00,0,16,100
CN.SEB2.1350,PH1- DECKING GL 23 - 24 - SEB-2-L3,Complete,SEB - 2,East Support Building,SUEN-2 - 22-25,L3 / Waffle Slab Level,,CONSTRUCTION,,Decking & Detail,SEAN MONK,,2023-06-26 07:00,2023-06-27 13:00,2023-06-26 07:00,2023-06-27 13:00,2025-11-20 17:00,2025-11-20 17:00,2025-06-13 08:00,2025-06-13 08:00,0,16,100
CN.SEB2.1360,PH1- DECKING GL 22 - 23 - SEB-2-ROOF,Complete,SEB - 2,East Support Building,SUEN-2 - 22-25,L4 - SUP Roof - FAB Roof,,CONSTRUCTION,,Decking & Detail,SEAN MONK,SOMD / Roofing / Waterproofing,2023-09-08 09:00,2023-09-09 15:00,2023-09-08 09:00,2023-09-09 16:00,2025-11-20 17:00,2025-11-20 17:00,2025-11-10 07:00,2025-11-10 07:00,0,16,100
CN.SEB2.1370,PH1- DECKING GL 23 - 24 - SEB-2-ROOF,Complete,SEB - 2,East Support Building,SUEN-2 - 22-25,L4 - SUP Roof - FAB Roof,,CONSTRUCTION,,Decking & Detail,SEAN MONK,SOMD / Roofing / Waterproofing,2023-09-10 08:00,2023-09-11 14:00,2023-09-10 08:00,2023-09-11 15:00,2025-11-20 17:00,2025-11-20 17:00,2025-11-10 07:00,2025-11-10 07:00,0,16,100
CN.SEB2.1380,PH1- DS/AD DECKING & DETAILING GL 22 - DS/AD SEB-2 L4 & L4/E - C-E,Complete,SEB - 2,East Support Building,SUEN-2 - 22-25,DS/AD,,CONSTRUCTION,,Decking & Detail,SEAN MONK,,2023-12-14 07:00,2023-12-17 17:00,2023-12-14 07:00,2023-12-16 11:00,2025-11-20 17:00,2025-11-20 17:00,2025-06-13 08:00,2025-06-13 08:00,0,40,100
CN.AB.AR.4360,DRYWALL 2 SIDE - MECHANICAL ROOM 3 NORTH - SEB2 - GL 22-25 - C-A - L1,Complete,SEB - 2,East Support Building,SUEN-2 - 22-25,L1 - Fndn Slab,MECH RM 2,CONSTRUCTION,BERG,DRYWALL,AMBER CARO,INTERIORS,2024-11-11 07:00,2024-11-18 17:00,2024-10-18 07:00,2024-10-30 17:00,2025-11-20 17:00,2025-11-20 17:00,2025-11-20 07:00,2025-11-20 07:00,0,50,100
CN.AB.AR.4370,DRYWALL & INSULATION (1 side) (INT) - MECHANICAL RM 3 NORTH [LEAVEOUT AT A LINE FOR SECAI] - SEB2 - GL 22-25 - C-A - L1,Complete,SEB - 2,East Support Building,SUEN-2 - 22-25,L1 - Fndn Slab,MECH RM 2,CONSTRUCTION,BERG,DRYWALL,AMBER CARO,INTERIORS,2024-03-18 07:00,2024-03-22 17:00,2024-03-04 07:00,2024-07-01 17:00,2025-11-20 17:00,2025-11-20 17:00,2025-11-20 07:00,2025-11-20 07:00,0,40,100
CN.SEB2.1400,PH1- DS STEEL FRAME INSTALL - SEB-2 Comeback Sup Side,Complete,SEB - 2,East Support Building,SUEN-2 - 22-25,DS/AD,,CONSTRUCTION,,Steel Erection,SEAN MONK,,2023-09-29 07:00,2023-10-02 09:00,2023-09-29 07:00,2023-10-03 13:00,2025-11-20 17:00,2025-11-20 17:00,2025-06-13 08:00,2025-06-13 08:00,0,32,100
CN.SEB2.1410,PH1- EXTERIOR CURBS- SEB-2-L1,Complete,SEB - 2,East Support Building,SUEN-2 - 22-25,L1 - Fndn Slab,,CONSTRUCTION,,Pour Concrete,JAMES LEE,SOMD / Roofing / Waterproofing,2023-10-16 07:00,2023-10-19 17:00,2023-09-26 07:00,2023-09-29 07:00,2025-11-20 17:00,2025-11-20 17:00,2025-09-29 07:00,2025-09-29 07:00,0,40,100
CN.SEB2.1420,PH1- MEP PADS - SEB2 GL 22-25 - L1 C-A - MECHANICAL ROOM 3 NORTH - Bathroom Pit Rework,Complete,SEB - 2,East Support Building,SUEN-2 - 22-25,L1 - Fndn Slab,MECH RM 2,CONSTRUCTION,,Pour Concrete,JAMES LEE,SOMD / Roofing / Waterproofing,2024-01-25 13:00,2024-01-27 17:00,2024-01-25 13:00,2024-01-28 10:00,2025-11-20 17:00,2025-11-20 17:00,2025-11-13 17:00,2025-11-13 17:00,0,24,100
CN.SEB2.2321,METAL STUD FRAMING (2hr) - SEB2 GL 22-25 - L3 C-A - ELECTRICAL ROOM 2,Complete,SEB - 2,East Support Building,SUEN-2 - 22-25,L3 / Waffle Slab Level,ELECTRIC RM 2,CONSTRUCTION,BERG,TBD Architectural Finishes,AMBER CARO,INTERIORS,2024-02-20 13:00,2024-02-25 13:00,2024-02-20 13:00,2024-02-25 16:00,2025-11-20 17:00,2025-11-20 17:00,2025-11-10 07:00,2025-11-10 07:00,0,40,100
CN.SEB23800,MEP ROUGH IN & INSPECTION (by SECAI) - SEB2 GL 22-25 - L3 C-A,Complete,SEB - 2,East Support Building,SUEN-2 - 22-25,L3 / Waffle Slab Level,ELECTRIC RM 2,CONSTRUCTION,,Owner & Design Team,AMBER CARO,,2024-03-07 07:00,2024-03-10 17:00,2024-03-07 07:00,2024-03-12 11:00,2025-11-20 17:00,2025-11-20 17:00,2025-11-24 07:00,2025-11-24 07:00,0,40,100
CN.SEB23810,TAPE & FINISH DRYWALL - ELECTRICAL ROOM 2 - SEB2 - GL 22-25 - C-A - L3,Complete,SEB - 2,East Support Building,SUEN-2 - 22-25,L3 / Waffle Slab Level,ELECTRIC RM 2,CONSTRUCTION,CHERRY COATING,DRYWALL,AMBER CARO,INTERIORS,2024-11-11 07:00,2024-11-18 17:00,2024-09-16 07:00,2024-09-23 07:00,2025-11-20 17:00,2025-11-20 17:00,2025-11-24 07:00,2025-11-24 07:00,0,50,100
CN.SEB23820,FINISH PAINT - ELECTRICAL ROOM 2 - SEB2 - GL 22-25 - C-A - L3,Not Started,SEB - 2,East Support Building,SUEN-2 - 22-25,L3 / Waffle Slab Level,ELECTRIC RM 2,CONSTRUCTION,FINISH PAINT,TBD Architectural Finishes,JAMES LEE,INTERIORS,2025-11-21 07:00,2025-11-21 17:00,,,2025-11-21 07:00,2025-11-21 17:00,2025-12-05 07:00,2025-12-05 17:00,10,10,0
CN.SEB24320,DRYWALL 2 SIDE - ELECTRICAL ROOM 2 - SEB2 - GL 22-25 - C-A - L3,Complete,SEB - 2,East Support Building,SUEN-2 - 22-25,L3 / Waffle Slab Level,ELECTRIC RM 2,CONSTRUCTION,BERG,DRYWALL,AMBER CARO,INTERIORS,2024-11-04 07:00,2024-11-11 17:00,2024-07-29 07:00,2024-09-11 17:00,2025-11-20 17:00,2025-11-20 17:00,2025-11-24 07:00,2025-11-24 07:00,0,50,100
CN.SEB24330,DRYWALL & INSULATION (1 side) (INT) - SEB2 GL 22-25 - L3 C-A - ELECTRICAL ROOM 2,Complete,SEB - 2,East Support Building,SUEN-2 - 22-25,L3 / Waffle Slab Level,ELECTRIC RM 2,CONSTRUCTION,,DRYWALL,AMBER CARO,INTERIORS,2024-03-17 07:00,2024-03-20 17:00,2024-03-12 07:00,2024-03-15 11:00,2025-11-20 17:00,2025-11-20 17:00,2025-11-24 07:00,2025-11-24 07:00,0,40,100
CN.SEB2860,INSTALL WALL PROTECTION - ELEC ROOM 2 / BATTERY ROOM 2 - GL 22-23 - B-C - L3,Not Started,SEB - 2,East Support Building,SUEN-2 - 22-25,L3 / Waffle Slab Level,ELECTRIC RM 2,CONSTRUCTION,BERNCO,TBD Architectural Finishes,JAMES LEE,INTERIORS,2025-11-21 07:00,2025-11-25 17:00,,,2025-11-21 07:00,2025-11-25 17:00,2025-12-03 07:00,2025-12-05 17:00,30,30,0
CN.SEA1.5280,PH1- GROUT SHIM - PRECAST OAC PADS - SEB2 - GL 22-25 - C-A - L4 ROOF,Complete,SEB - 2,East Support Building,SUEN-2 - 22-25,L4 - SUP Roof - FAB Roof,,CONSTRUCTION,BAKER,TBD Architectural Finishes,CONCRETE,SOMD / Roofing / Waterproofing,2024-07-08 07:00,2024-07-16 17:00,2024-02-24 07:00,2024-02-27 17:00,2025-11-20 17:00,2025-11-20 17:00,2025-12-05 17:00,2025-12-05 17:00,0,60,100
CN.SEB2.1430,IMPACT - DRB-01 ADDITIONAL BEAMS BETWEEN FAB AND AD GL 22 - 25,Complete,SEB - 2,,SUEN-2 - 22-25,DS/AD,,CONSTRUCTION,,Steel Erection,,,2023-10-30 07:00,2023-11-02 13:00,2023-10-30 07:00,2023-11-02 13:00,2025-11-20 17:00,2025-11-20 17:00,2025-06-13 08:00,2025-06-13 08:00,0,16,100
SEC.AR.4460,SECAI - MEP PIPE RACK INSTALL AREA B DS SIDE - SEB2 - GL 22-25 - C-A - L4,Complete,SEB - 2,East Support Building,SUEN-2 - 22-25,L4 - SUP Roof - FAB Roof,,CONSTRUCTION,SECAI,Owner & Design Team,,INTERIORS,2024-10-14 07:00,2024-10-14 17:00,2024-10-12 07:00,2024-10-12 17:00,2025-11-20 17:00,2025-11-20 17:00,2025-12-05 17:00,2025-12-05 17:00,0,10,100
CN.SEB2.2331,PH1 - CLADDING STEEL  EXTERIOR - SEB-2 - GL 22-25 - C (DS AREA),Complete,SEB - 2,East Support Building,SUEN-2 - 22-25,EXTERIOR SKIN,,CONSTRUCTION,,INSULATED METAL PANELS,JAMES LIVELY,,2023-12-15 09:00,2023-12-22 11:00,2023-12-15 09:00,2023-12-24 09:00,2025-11-20 17:00,2025-11-20 17:00,2025-11-17 07:00,2025-11-17 07:00,0,72,100
CN.SEB21041,METAL STUD FRAMING (2hr) - SEB2 GL 22-25 - L1 D LINE,Complete,SEB - 2,West Support Building,SUEN-2 - 22-25,L1 - Fndn Slab,DS/AD INTERIORS,CONSTRUCTION,BERG,TBD Architectural Finishes,FIZ DATA CENTER,INTERIORS,2023-11-09 13:00,2023-11-14 11:00,2023-11-09 13:00,2023-11-11 15:00,2025-11-20 17:00,2025-11-20 17:00,2025-11-13 17:00,2025-11-13 17:00,0,48,100
CN.SEB21091,TAPE & FINISH DRYWALL - SEB2 GL 22-25 - L1 D LINE,Complete,SEB - 2,West Support Building,SUEN-2 - 22-25,L1 - Fndn Slab,DS/AD INTERIORS,CONSTRUCTION,CHERRY COATING,DRYWALL,FIZ DATA CENTER,INTERIORS,2024-09-27 07:00,2024-10-04 17:00,2024-09-07 07:00,2024-09-10 17:00,2025-11-20 17:00,2025-11-20 17:00,2025-12-01 17:00,2025-12-01 17:00,0,50,100
CN.SEB21101,PRIMER & PAINT DRYWALL -  GL 22-25 - D LINE-L1,Complete,SEB - 2,West Support Building,SUEN-2 - 22-25,L1 - Fndn Slab,DS/AD INTERIORS,CONSTRUCTION,FINISH PAINT,TBD Architectural Finishes,FIZ DATA CENTER,INTERIORS,2024-10-28 07:00,2024-10-31 17:00,2024-10-28 07:00,2024-10-31 17:00,2025-11-20 17:00,2025-11-20 17:00,2025-12-01 17:00,2025-12-01 17:00,0,30,100
CN.SEB21081,DRYWALL 2 SIDE - SEB2 GL 22-25 - L1 D LINE,Complete,SEB - 2,West Support Building,SUEN-2 - 22-25,L1 - Fndn Slab,DS/AD INTERIORS,CONSTRUCTION,BERG,DRYWALL,FIZ DATA CENTER,INTERIORS,2024-09-20 07:00,2024-09-27 17:00,2024-07-15 07:00,2024-08-27 17:00,2025-11-20 17:00,2025-11-20 17:00,2025-12-01 17:00,2025-12-01 17:00,0,50,100
CN.SEB21071,DRYWALL & INSULATION (1 side) (INT) - SEB2 GL 22-25 - L1 D LINE,Complete,SEB - 2,West Support Building,SUEN-2 - 22-25,L1 - Fndn Slab,DS/AD INTERIORS,CONSTRUCTION,,DRYWALL,FIZ DATA CENTER,INTERIORS,2023-11-30 15:00,2023-12-05 13:00,2023-11-30 15:00,2023-12-11 11:00,2025-11-20 17:00,2025-11-20 17:00,2025-12-01 17:00,2025-12-01 17:00,0,48,100
CN.SEB21001,TEMP WALLS Framing and Drywall - SEB2 GL 22-25 - L3 C-A,Complete,SEB - 2,,SUEN-2 - 22-25,L3 / Waffle Slab Level,ELECTRIC RM 2,CONSTRUCTION,,DRYWALL,,,2023-10-16 08:00,2023-10-20 08:00,2023-10-13 08:00,2024-01-21 11:00,2025-11-20 17:00,2025-11-20 17:00,2025-11-24 07:00,2025-11-24 07:00,0,40,100
CN.SEB2.2351,PH1 -WELD CLIPS - CLADDING STEEL - SEB-2 - GL 22-25 - C LINE (DS AREA),Complete,SEB - 2,East Support Building,SUEN-2 - 22-25,EXTERIOR SKIN,,CONSTRUCTION,,INSULATED METAL PANELS,JAMES LIVELY,,2023-11-27 07:00,2023-11-28 09:00,2023-11-21 07:00,2023-11-22 09:00,2025-11-20 17:00,2025-11-20 17:00,2025-11-17 07:00,2025-11-17 07:00,0,12,100
CN.SEB21051,IMPACT - DS STEEL BEAM STIFFNER CONNECTION FIXES- SEB2- GL 22-25 - L4 - C-E,Complete,SEB - 2,,SUEN-2 - 22-25,DS/AD,,CONSTRUCTION,,Steel Erection,,,2023-12-11 07:00,2023-12-15 17:00,2023-12-11 07:00,2023-12-13 17:00,2025-11-20 17:00,2025-11-20 17:00,2025-06-13 08:00,2025-06-13 08:00,0,40,100
CN.SEB21011,PH1- DS/AD DECKING & DETAILING - SEB2- GL 22-25 - L2,Complete,SEB - 2,East Support Building,SUEN-2 - 22-25,DS/AD,,CONSTRUCTION,,Decking & Detail,SEAN MONK,,2023-10-30 07:00,2023-10-30 15:00,2023-10-23 07:00,2023-10-27 11:00,2025-11-20 17:00,2025-11-20 17:00,2025-11-13 17:00,2025-11-13 17:00,0,8,100
CN.SEB21021,PH1- DS/AD FRP SLAB - SEB2- GL 22-25 - L3 - C-E,Complete,SEB - 2,East Support Building,SUEN-2 - 22-25,DS/AD,,CONSTRUCTION,,SOMD,CONCRETE,,2024-01-10 07:00,2024-01-13 11:00,2024-01-10 07:00,2024-01-12 11:00,2025-11-20 17:00,2025-11-20 17:00,2025-12-05 17:00,2025-12-05 17:00,0,24,100
CN.SEB21031,AD STEEL SPRAY FIREPROOFING IFRM - SEB2 - GL 22-25 - C-E - L2-CEILING,Complete,SEB - 2,,SUEN-2 - 22-25,DS/AD,,CONSTRUCTION,ROLLING PLAINS,Fireproofing,,,2024-07-15 07:00,2024-07-22 17:00,2024-07-13 07:00,2024-07-20 17:00,2025-11-20 17:00,2025-11-20 17:00,2025-12-05 17:00,2025-12-05 17:00,0,60,100
CN.SEB21111,METAL STUD FRAMING (2hr) - SEB2 GL 22-25 - L3 - D LINE,Complete,SEB - 2,West Support Building,SUEN-2 - 22-25,L3 / Waffle Slab Level,DS/AD INTERIORS,CONSTRUCTION,BERG,TBD Architectural Finishes,FIZ DATA CENTER,INTERIORS,2024-03-17 07:00,2024-03-18 13:00,2024-02-19 00:00,2024-02-23 00:00,2025-11-20 17:00,2025-11-20 17:00,2025-06-13 08:00,2025-06-13 08:00,0,16,100
CN.SEB21151,TAPE & FINISH DRYWALL - SEB2 - GL 22-25 - D LINE - L3,Complete,SEB - 2,West Support Building,SUEN-2 - 22-25,L3 / Waffle Slab Level,DS/AD INTERIORS,CONSTRUCTION,CHERRY COATING,DRYWALL,FIZ DATA CENTER,INTERIORS,2024-05-17 07:00,2024-05-23 17:00,2024-05-17 07:00,2024-05-21 17:00,2025-11-20 17:00,2025-11-20 17:00,2025-06-13 08:00,2025-06-13 08:00,0,40,100
CN.SEB21161,D/S SGP Wall Turnover - SEB2 - GL 22-25 - D LINE - L3,Complete,SEB - 2,West Support Building,SUEN-2 - 22-25,L3 / Waffle Slab Level,DS/AD INTERIORS,CONSTRUCTION,,TBD Architectural Finishes,FIZ DATA CENTER,INTERIORS,2024-05-23 07:00,2024-05-23 17:00,2024-05-23 07:00,2024-05-23 17:00,2025-11-20 17:00,2025-11-20 17:00,2025-06-13 08:00,2025-06-13 08:00,0,10,100
CN.SEB21141,DRYWALL 2 SIDE - SEB2 - GL 22-25 - D LINE - L3,Complete,SEB - 2,West Support Building,SUEN-2 - 22-25,L3 / Waffle Slab Level,DS/AD INTERIORS,CONSTRUCTION,BERG,DRYWALL,FIZ DATA CENTER,INTERIORS,2024-05-13 07:00,2024-05-17 17:00,2024-04-29 07:00,2024-05-13 17:00,2025-11-20 17:00,2025-11-20 17:00,2025-06-13 08:00,2025-06-13 08:00,0,40,100
CN.SEB21131,DRYWALL & INSULATION (1st layer) (INT) - SEB2 GL 22-25 - L3 D LINE,Complete,SEB - 2,West Support Building,SUEN-2 - 22-25,L3 / Waffle Slab Level,DS/AD INTERIORS,CONSTRUCTION,,DRYWALL,FIZ DATA CENTER,INTERIORS,2024-03-17 07:00,2024-03-19 11:00,2024-03-01 00:00,2024-03-14 00:00,2025-11-20 17:00,2025-11-20 17:00,2025-06-13 08:00,2025-06-13 08:00,0,24,100
CN.SEB2.6000,WATERPROOFING AT PEDASTALS - GL 19-24 - SEB2 - C-A - L4 ROOF,Complete,SEB - 2,East Support Building,SUEN-2 - 22-25,L4 - SUP Roof - FAB Roof,,CONSTRUCTION,BRAZOS,TOPPING,,SOMD / Roofing / Waterproofing,2024-07-30 07:00,2024-07-30 17:00,2024-03-11 07:00,2024-03-11 17:00,2025-11-20 17:00,2025-11-20 17:00,2025-12-05 17:00,2025-12-05 17:00,0,10,100
CN.SEB2.6010,FRP PEDASTALS - GL 19-24 - C-A - L4 ROOF,Complete,SEB - 2,East Support Building,SUEN-2 - 22-25,L4 - SUP Roof - FAB Roof,,CONSTRUCTION,BAKER,TOPPING,,SOMD / Roofing / Waterproofing,2024-07-31 07:00,2024-07-31 17:00,2024-03-12 07:00,2024-03-12 17:00,2025-11-20 17:00,2025-11-20 17:00,2025-12-05 17:00,2025-12-05 17:00,0,10,100
CN.SEB2.6020,STRIP PEDSTALS - GL 19-24 - C-A - L4 ROOF,Complete,SEB - 2,East Support Building,SUEN-2 - 22-25,L4 - SUP Roof - FAB Roof,,CONSTRUCTION,BAKER,TOPPING,,SOMD / Roofing / Waterproofing,2024-08-01 07:00,2024-08-01 17:00,2024-03-13 07:00,2024-03-13 17:00,2025-11-20 17:00,2025-11-20 17:00,2025-12-05 17:00,2025-12-05 17:00,0,10,100
CN.SEB2.6030,INSTALL PRIMER - GL 22-24 - C-A - L4 ROOF,Complete,SEB - 2,East Support Building,SUEN-2 - 22-25,L4 - SUP Roof - FAB Roof,,CONSTRUCTION,BRAZOS,TOPPING,,SOMD / Roofing / Waterproofing,2024-09-20 07:00,2024-09-20 17:00,2024-09-19 07:00,2024-09-19 17:00,2025-11-20 17:00,2025-11-20 17:00,2025-12-05 17:00,2025-12-05 17:00,0,10,100
CN.SEB2.6050,INSPECT PRIMER - GL 22-24 - C-A - L4 ROOF,Complete,SEB - 2,East Support Building,SUEN-2 - 22-25,L4 - SUP Roof - FAB Roof,,CONSTRUCTION,BRAZOS,TOPPING,,SOMD / Roofing / Waterproofing,2024-09-20 07:00,2024-09-20 17:00,2024-09-19 07:00,2024-09-19 17:00,2025-11-20 17:00,2025-11-20 17:00,2025-12-05 17:00,2025-12-05 17:00,0,10,100
CN.SEB2.6070,INSTALL BASE COAT - GL 22-24 - C-A - L4 ROOF,Complete,SEB - 2,East Support Building,SUEN-2 - 22-25,L4 - SUP Roof - FAB Roof,,CONSTRUCTION,BRAZOS,TOPPING,,SOMD / Roofing / Waterproofing,2024-09-26 07:00,2024-09-26 17:00,2024-09-26 07:00,2024-09-26 17:00,2025-11-20 17:00,2025-11-20 17:00,2025-12-05 17:00,2025-12-05 17:00,0,10,100
CN.SEB2.6090,INSPECT BASE COAT - GL 22-24 - C-A - L4 ROOF,Complete,SEB - 2,East Support Building,SUEN-2 - 22-25,L4 - SUP Roof - FAB Roof,,CONSTRUCTION,BRAZOS,TOPPING,,SOMD / Roofing / Waterproofing,2024-09-26 07:00,2024-09-26 17:00,2024-09-26 07:00,2024-09-26 17:00,2025-11-20 17:00,2025-11-20 17:00,2025-12-05 17:00,2025-12-05 17:00,0,10,100
CN.SEB2.6100,INSTALL TOP COAT - GL 22-24 - C-A - L4 ROOF,Complete,SEB - 2,East Support Building,SUEN-2 - 22-25,L4 - SUP Roof - FAB Roof,,CONSTRUCTION,BRAZOS,TOPPING,,SOMD / Roofing / Waterproofing,2024-09-27 07:00,2024-09-30 17:00,2024-09-27 07:00,2024-09-27 17:00,2025-11-20 17:00,2025-11-20 17:00,2025-12-05 17:00,2025-12-05 17:00,0,20,100
CN.SEB2.6110,INSPECT TOP COAT - GL 22-24 - C-A - L4 ROOF,Complete,SEB - 2,East Support Building,SUEN-2 - 22-25,L4 - SUP Roof - FAB Roof,,CONSTRUCTION,BRAZOS,TOPPING,,SOMD / Roofing / Waterproofing,2024-09-30 07:00,2024-09-30 17:00,2024-09-30 07:00,2024-09-30 17:00,2025-11-20 17:00,2025-11-20 17:00,2025-12-05 17:00,2025-12-05 17:00,0,10,100
CN.SEB2.6120,INSPECT TOP COAT CRICKET - GL 22-24 - C-A - L4 ROOF,Complete,SEB - 2,East Support Building,SUEN-2 - 22-25,L4 - SUP Roof - FAB Roof,,CONSTRUCTION,BRAZOS,TOPPING,,SOMD / Roofing / Waterproofing,2024-10-07 07:00,2024-10-07 17:00,2024-10-07 07:00,2024-10-07 17:00,2025-11-20 17:00,2025-11-20 17:00,2025-12-05 17:00,2025-12-05 17:00,0,10,100
CN.SEB54920,IMPACT - MISSING 4 ANCHOR BOLTS - SEB2- B24 - 2P SEQ 5304,Complete,SEB - 2,,SUEN-2 - 22-25,L3 / Waffle Slab Level,ELECTRIC RM 2,CONSTRUCTION,,Steel Fabricator - W&W,,,2023-10-30 07:00,2023-11-02 13:00,2023-10-22 08:00,2023-10-24 17:00,2025-11-20 17:00,2025-11-20 17:00,2025-11-10 07:00,2025-11-10 07:00,0,16,100
CN.SEB54930,IMPACT - MISSING EMBED - SEB2- A24 - L3Q - SEQ 5304,Complete,SEB - 2,,SUEN-2 - 22-25,L3 / Waffle Slab Level,ELECTRIC RM 2,CONSTRUCTION,,Steel Fabricator - W&W,,,2023-10-30 07:00,2023-11-02 13:00,2023-10-30 07:00,2023-11-02 13:00,2025-11-20 17:00,2025-11-20 17:00,2025-11-10 07:00,2025-11-10 07:00,0,16,100
CN.SEB54940,DECKING AND FRP SLAB - SEB2 - B24 - L3P SEQ 5304,Complete,SEB - 2,,SUEN-2 - 22-25,L3 / Waffle Slab Level,ELECTRIC RM 2,CONSTRUCTION,BAKER,Decking & Detail,,,2024-07-26 07:00,2024-07-29 17:00,2024-02-01 07:00,2024-02-05 17:00,2025-11-20 17:00,2025-11-20 17:00,2025-11-10 07:00,2025-11-10 07:00,0,20,100
CN.SEB2.1390,PH1- DS/AD FRP SLAB - DS/AD SEB-2 -  GL 22-25 L6,Complete,SEB - 2,,SUEN-2 - 22-25,DS/AD,,CONSTRUCTION,,SOMD,,,2023-11-05 10:00,2023-11-07 14:00,2023-11-05 10:00,2023-11-07 15:00,2025-11-20 17:00,2025-11-20 17:00,2025-06-13 08:00,2025-06-13 08:00,0,24,100
CN.SEB2.1440,CURE FRP SLAB - SEB-5 GL 22-25 - L6 - C-E,Complete,SEB - 2,,SUEN-2 - 22-25,DS/AD,,CONSTRUCTION,,SOMD,,,2023-11-10 07:00,2023-11-12 11:00,2023-11-10 07:00,2023-11-12 14:00,2025-11-20 17:00,2025-11-20 17:00,2025-06-13 08:00,2025-06-13 08:00,0,24,100
CN.SEB21171,PH1- DS/AD DECKING & DETAILING  - SEB2- GL 22-25 - L3 - C-E,Complete,SEB - 2,,SUEN-2 - 22-25,DS/AD,,CONSTRUCTION,,Decking & Detail,,,2024-01-02 09:00,2024-01-07 08:00,2023-12-28 07:00,2024-01-02 17:00,2025-11-20 17:00,2025-11-20 17:00,2025-11-26 07:00,2025-11-26 07:00,0,40,100
CN.SEB2.1280,"REMAINING CLADDING STEEL, DETAILING AND INSPECTION FOR INSULATED METAL PANELS - SEA5 A LINE [SUP EXTERIOR WALL] GL 23-",Complete,SEB - 2,,SUEN-2 - 22-25,EXTERIOR SKIN,,CONSTRUCTION,,INSULATED METAL PANELS,,,2024-03-01 08:00,2024-03-08 16:00,2024-03-01 08:00,2024-03-07 10:00,2025-11-20 17:00,2025-11-20 17:00,2025-09-30 07:00,2025-09-30 07:00,0,78,100
CN.AB.AR.2510,IMPACT DESIGN ERROR FOR TOPPING SLAB AND CONCRETE CURB RFI 1021,Complete,SEB - 2,,SUEN-2 - 22-25,L1 - Fndn Slab,MECH RM 2,CONSTRUCTION,,TOPPING,,,2024-01-22 07:00,2024-01-25 17:00,2024-01-02 07:00,2024-01-22 13:00,2025-11-20 17:00,2025-11-20 17:00,2025-11-13 17:00,2025-11-13 17:00,0,40,100
CN.SEB2.1450,INSTALL INSULATED METAL PANEL MODULES - GL 22-25 - D LINE (AD AREA) [24~25 LEFT OUT - BOTTOM CONNECTION ISSUE],Complete,SEB - 2,,SUEN-2 - 22-25,EXTERIOR SKIN,,CONSTRUCTION,KOVACH,INSULATED METAL PANELS,,,2024-06-18 07:00,2024-06-23 17:00,2024-06-03 07:00,2024-06-12 17:00,2025-11-20 17:00,2025-11-20 17:00,2025-12-05 17:00,2025-12-05 17:00,0,50,100
CN.SEB2.6160,IMPACT - 25 LINE EXP JOINT - CURE 60 Days - SEB2 GL 22-25 - L4 C-A - ROOF,Complete,SEB - 2,East Support Building,SUEN-2 - 22-25,L4 - SUP Roof - FAB Roof,,CONSTRUCTION,,Concrete Cure,JAMES LEE,SOMD / Roofing / Waterproofing,2023-10-03 07:00,2023-10-05 11:00,2023-09-20 00:00,2024-01-31 12:44,2025-11-20 17:00,2025-11-20 17:00,2025-12-05 17:00,2025-12-05 17:00,0,24,100
CN.SEB54950,IMPACT - ELECTRICAL CONDUIT OBSTRUCTION - SUE2- GL 24 - L2 - E,Complete,SEB - 2,,SUEN-2 - 22-25,DS/AD,,CONSTRUCTION,,Decking & Detail,,,2023-11-20 15:00,2023-11-28 15:00,2023-11-13 15:00,2024-01-05 11:00,2025-11-20 17:00,2025-11-20 17:00,2025-12-05 17:00,2025-12-05 17:00,0,40,100
CN.SEB2.1460,KNEE WALL -SEB 2 - GL 22-25 - L4 - C-E -DS/AD,Complete,SEB - 2,,SUEN-2 - 22-25,DS/AD,,CONSTRUCTION,,Cast-in Place Concrete - Baker Concrete,,,2024-02-12 14:00,2024-02-15 16:00,2024-02-12 14:00,2024-02-15 13:00,2025-11-20 17:00,2025-11-20 17:00,2025-11-21 07:00,2025-11-21 07:00,0,32,100
CN.SEB21191,PH1- DS/AD FRP SLAB - SEB2- GL 22-25 - L2 - C-E,Complete,SEB - 2,,SUEN-2 - 22-25,DS/AD,,CONSTRUCTION,,SOMD,,,2023-12-28 07:00,2024-01-04 12:00,2023-12-22 07:00,2023-12-22 17:00,2025-11-20 17:00,2025-11-20 17:00,2025-11-19 07:00,2025-11-19 07:00,0,40,100
CN.SEB21061,DS/AD STEEL SPRAY FIREPROOFING- SEB2- GL 22-25 L1 CEILING C-E,Complete,SEB - 2,,SUEN-2 - 22-25,DS/AD,,CONSTRUCTION,,Fireproofing,,,2023-12-14 08:00,2023-12-19 14:00,2023-12-14 08:00,2023-12-15 16:00,2025-11-20 17:00,2025-11-20 17:00,2025-11-19 07:00,2025-11-19 07:00,0,56,100
CN.SEB21121,D-LINE STEEL SPRAY FIREPROOFING SFRM2- SEB2 - L3-CEILING - GL 22-25,Complete,SEB - 2,,SUEN-2 - 22-25,L4 - SUP Roof - FAB Roof,DS/AD INTERIORS,CONSTRUCTION,ROLLING PLAINS,Fireproofing,,,2024-04-25 07:00,2024-05-02 17:00,2024-04-25 07:00,2024-04-29 17:00,2025-11-20 17:00,2025-11-20 17:00,2025-06-13 08:00,2025-06-13 08:00,0,50,100
CN.SEB54960,IMPACT [S.TIA-107] - W&W STEP DOWN 10% - GL 24 A-C,Complete,SEB - 2,,SUEN-2 - 22-25,L3 / Waffle Slab Level,ELECTRIC RM 2,CONSTRUCTION,,Steel Fabricator - W&W,,,2023-10-30 07:00,2023-11-02 13:00,2023-11-07 07:00,2023-12-07 14:00,2025-11-20 17:00,2025-11-20 17:00,2025-11-10 07:00,2025-11-10 07:00,0,16,100
CN.SEB54970,IMPACT - W&W TEMPORARY EXPANSION 60% - GL 24 A-C,Complete,SEB - 2,,SUEN-2 - 22-25,L3 / Waffle Slab Level,ELECTRIC RM 2,CONSTRUCTION,,Steel Fabricator - W&W,,,2023-10-30 07:00,2023-11-02 13:00,2023-11-07 07:00,2023-12-07 14:00,2025-11-20 17:00,2025-11-20 17:00,2025-11-10 07:00,2025-11-10 07:00,0,16,100
CN.SEB2.6170,IMPACT - REWORK ADDED DBA's L4E SLAB - AD GL 22 - 24 DS/AD SEB-2 L4 & L4/E - C-E,Complete,SEB - 2,East Support Building,SUEN-2 - 22-25,DS/AD,,CONSTRUCTION,,Decking & Detail,SEAN MONK,,2024-01-22 07:00,2024-01-24 11:00,2024-01-10 07:00,2024-01-11 17:00,2025-11-20 17:00,2025-11-20 17:00,2025-06-13 08:00,2025-06-13 08:00,0,24,100
CN.SEB54980,D/S SGP Wall Turnover - SEB1 - GL 19-22 - D LINE - L3,Complete,SEB - 2,West Support Building,SUEN-1 - 19-22,L3 / Waffle Slab Level,DS/AD INTERIORS,CONSTRUCTION,SECAI,TBD Architectural Finishes,FIZ DATA CENTER,INTERIORS,2024-06-13 07:00,2024-06-13 17:00,2024-06-13 07:00,2024-06-13 17:00,2025-11-20 17:00,2025-11-20 17:00,2025-06-13 08:00,2025-06-13 08:00,0,10,100
CN.SEB54990,DCC BEAM (STEEL STRUCTURE) - SEB2 GL 22-25 - L3 - D LINE,Complete,SEB - 2,West Support Building,SUEN-2 - 22-25,L3 / Waffle Slab Level,DS/AD INTERIORS,CONSTRUCTION,,TBD Architectural Finishes,FIZ DATA CENTER,INTERIORS,2024-01-23 07:00,2024-01-23 15:00,2024-01-09 07:00,2024-01-10 15:00,2025-11-20 17:00,2025-11-20 17:00,2025-06-13 08:00,2025-06-13 08:00,0,8,100
CN.SEB55000,TEMPORARY SCAFFOLD PLATFORM - SEB2 GL 22-25 - L3 D LINE,Complete,SEB - 2,West Support Building,SUEN-2 - 22-25,L3 / Waffle Slab Level,DS/AD INTERIORS,CONSTRUCTION,,TBD Architectural Finishes,FIZ DATA CENTER,INTERIORS,2024-01-23 15:00,2024-01-28 13:00,2024-01-11 15:00,2024-01-12 16:00,2025-11-20 17:00,2025-11-20 17:00,2025-06-13 08:00,2025-06-13 08:00,0,48,100
CN.SEB55030,MEP IN WALL ROUGH INS  SEB1- GL 19-22 -  L3 - D LINE,Complete,SEB - 2,West Support Building,SUEN-1 - 19-22,L3 / Waffle Slab Level,DS/AD INTERIORS,CONSTRUCTION,SECAI,TBD Architectural Finishes,FIZ DATA CENTER,INTERIORS,2024-04-23 07:00,2024-04-23 17:00,2024-04-23 07:00,2024-04-26 17:00,2025-11-20 17:00,2025-11-20 17:00,2025-06-13 08:00,2025-06-13 08:00,0,10,100
CN.SEB55040,MEP IN WALL ROUGH INS  SEB2 GL 22-25 - L3 D LINE,Complete,SEB - 2,West Support Building,SUEN-2 - 22-25,L3 / Waffle Slab Level,DS/AD INTERIORS,CONSTRUCTION,SECAI,TBD Architectural Finishes,FIZ DATA CENTER,INTERIORS,2024-04-23 07:00,2024-04-29 17:00,2024-04-23 07:00,2024-04-27 17:00,2025-11-20 17:00,2025-11-20 17:00,2025-06-13 08:00,2025-06-13 08:00,0,50,100
CN.SEB2.6180,DS SPRAY FIREPROOFING SFRM C-D (READY MEP DUCT) - SEB-2 - GL 22-25 - L4&L5 CEILING - D LINE,Complete,SEB - 2,East Support Building,SUEN-2 - 22-25,L4 - SUP Roof - FAB Roof,DS/AD INTERIORS,CONSTRUCTION,,Fireproofing,HOON WOO,,2024-03-05 07:00,2024-03-09 15:00,2024-03-05 07:00,2024-03-14 16:00,2025-11-20 17:00,2025-11-20 17:00,2025-12-05 17:00,2025-12-05 17:00,0,48,100
CN.SEA1.6470,IMPACT [C18] - STOP WORK ALL TEMP EXPANSION JOINTS OAC PAD14 - SEB2 - GL 22-25 - C-A - L4 ROOF,Complete,SEB - 2,East Support Building,SUEN-2 - 22-25,L4 - SUP Roof - FAB Roof,,CONSTRUCTION,SECAI,OAC/ MECH PADS,CONCRETE,SOMD / Roofing / Waterproofing,2024-05-23 11:00,2024-06-14 11:00,2024-01-06 07:00,2024-02-13 17:00,2025-11-20 17:00,2025-11-20 17:00,2025-12-05 17:00,2025-12-05 17:00,0,120,100
CN.SEA3.6710,PH1 - F/R/P/W OAC PAD AIRLOCK WALLS - SEB2 - GL 23-25 - L4 (FORM WORK FIRST / REBAR & POUR PENDING GB TURNOVER),Complete,SEB - 2,East Support Building,SUEN-2 - 22-25,L4 - SUP Roof - FAB Roof,,CONSTRUCTION,BAKER,CIP WALL,CONCRETE,SOMD / Roofing / Waterproofing,2024-07-23 07:00,2024-07-29 17:00,2024-06-25 07:00,2024-07-03 17:00,2025-11-20 17:00,2025-11-20 17:00,2025-12-05 17:00,2025-12-05 17:00,0,50,100
CN.SEB2.6220,INSTALL BASE COAT CRICKET - GL 22-24 - C-A - L4 ROOF,Complete,SEB - 2,East Support Building,SUEN-2 - 22-25,L4 - SUP Roof - FAB Roof,,CONSTRUCTION,BRAZOS,TOPPING,,SOMD / Roofing / Waterproofing,2024-10-07 07:00,2024-10-07 17:00,2024-10-05 07:00,2024-10-05 17:00,2025-11-20 17:00,2025-11-20 17:00,2025-12-05 17:00,2025-12-05 17:00,0,10,100
CN.SEB2.6230,INSPECT BASE COAT CRICKET - GL 22-24 - C-A - L4 ROOF,Complete,SEB - 2,East Support Building,SUEN-2 - 22-25,L4 - SUP Roof - FAB Roof,,CONSTRUCTION,BRAZOS,TOPPING,,SOMD / Roofing / Waterproofing,2024-10-07 07:00,2024-10-07 17:00,2024-10-05 07:00,2024-10-05 17:00,2025-11-20 17:00,2025-11-20 17:00,2025-12-05 17:00,2025-12-05 17:00,0,10,100
CN.SEB2.6240,INSTALL TOP COAT CRICKET - GL 22-24 - C-A - L4 ROOF,Complete,SEB - 2,East Support Building,SUEN-2 - 22-25,L4 - SUP Roof - FAB Roof,,CONSTRUCTION,BRAZOS,TOPPING,,SOMD / Roofing / Waterproofing,2024-10-07 07:00,2024-10-08 17:00,2024-10-07 07:00,2024-10-07 17:00,2025-11-20 17:00,2025-11-20 17:00,2025-12-05 17:00,2025-12-05 17:00,0,20,100
CN.SEB2.6250,INSTALL CRICKET - GL 22-24 - C-A - L4 ROOF,Complete,SEB - 2,East Support Building,SUEN-2 - 22-25,L4 - SUP Roof - FAB Roof,,CONSTRUCTION,BRAZOS,TOPPING,,SOMD / Roofing / Waterproofing,2024-10-01 07:00,2024-10-07 17:00,2024-10-01 07:00,2024-10-03 17:00,2025-11-20 17:00,2025-11-20 17:00,2025-12-05 17:00,2025-12-05 17:00,0,40,100
CN.SEB2.6260,INSPECT CRICKET - GL 22-24 - C-A - L4 ROOF,Complete,SEB - 2,East Support Building,SUEN-2 - 22-25,L4 - SUP Roof - FAB Roof,,CONSTRUCTION,BRAZOS,TOPPING,,SOMD / Roofing / Waterproofing,2024-10-03 07:00,2024-10-03 17:00,2024-10-03 07:00,2024-10-03 17:00,2025-11-20 17:00,2025-11-20 17:00,2025-12-05 17:00,2025-12-05 17:00,0,10,100
CN.SEB2.6270,INSTALL PRIMER CRICKET - GL 22-24 - C-A - L4 ROOF,Complete,SEB - 2,East Support Building,SUEN-2 - 22-25,L4 - SUP Roof - FAB Roof,,CONSTRUCTION,BRAZOS,TOPPING,,SOMD / Roofing / Waterproofing,2024-10-04 07:00,2024-10-04 17:00,2024-10-04 07:00,2024-10-04 17:00,2025-11-20 17:00,2025-11-20 17:00,2025-12-05 17:00,2025-12-05 17:00,0,10,100
CN.SEB2.6280,INSPECT PRIMER CRICKET - GL 22-24 - C-A - L4 ROOF,Complete,SEB - 2,East Support Building,SUEN-2 - 22-25,L4 - SUP Roof - FAB Roof,,CONSTRUCTION,BRAZOS,TOPPING,,SOMD / Roofing / Waterproofing,2024-10-04 07:00,2024-10-04 17:00,2024-10-04 07:00,2024-10-04 17:00,2025-11-20 17:00,2025-11-20 17:00,2025-12-05 17:00,2025-12-05 17:00,0,10,100
CN.SEA3.6940,PH1 - WATERPROOFING/INSPECT OAC PAD AIRLOCK WALLS - SEB2 - GL 23-25 - L4,Complete,SEB - 2,East Support Building,SUEN-2 - 22-25,L4 - SUP Roof - FAB Roof,,CONSTRUCTION,BRAZOS,CIP WALL,CONCRETE,SOMD / Roofing / Waterproofing,2024-07-16 07:00,2024-07-23 17:00,2024-06-18 07:00,2024-06-24 17:00,2025-11-20 17:00,2025-11-20 17:00,2025-12-05 17:00,2025-12-05 17:00,0,60,100
CN.SEB55090,IMPACT - D-LINE STEEL SPRAY FIREPROOFING SFRM2- SEB2 - L3-CEILING - GL 22-25- INSPECT SURFACE PREP ADDITIONAL STEEL,Complete,SEB - 2,,SUEN-2 - 22-25,L4 - SUP Roof - FAB Roof,DS/AD INTERIORS,CONSTRUCTION,ROLLING PLAINS,Fireproofing,,,2024-04-19 07:00,2024-04-26 17:00,2024-04-19 07:00,2024-04-25 17:00,2025-11-20 17:00,2025-11-20 17:00,2025-06-13 08:00,2025-06-13 08:00,0,60,100
CN.SEB2.6300,CURE TOPPING SLAB - GL 22-26 - C-A - L4 ROOF,Complete,SEB - 2,East Support Building,SUEN-2 - 22-25,L4 - SUP Roof - FAB Roof,,CONSTRUCTION,BAKER,INSULATED METAL PANELS,JAMES LIVELY,SOMD / Roofing / Waterproofing,2024-10-10 07:00,2024-10-14 17:00,2024-10-10 07:00,2024-10-12 17:00,2025-11-20 17:00,2025-11-20 17:00,2025-12-05 17:00,2025-12-05 17:00,0,30,100
CN.SEB55130,CURE - AD STEEL SPRAY FIREPROOFING IFRM - SEB2 - GL 22-25 - C-E - L2-CEILING,Complete,SEB - 2,,SUEN-2 - 22-25,DS/AD,,CONSTRUCTION,ROLLING PLAINS,Fireproofing,,,2024-07-21 07:00,2024-08-09 17:00,2024-07-21 07:00,2024-08-09 17:00,2025-11-20 17:00,2025-11-20 17:00,2025-12-05 17:00,2025-12-05 17:00,0,180,100
CN.SEB55170,DEMO DRYWALL - INSTALL GOAL POSTS - BATTERY ROOM 2 - SEB2 - GL 22-25 - C-A - L3,Complete,SEB - 2,East Support Building,SUEN-2 - 22-25,L3 / Waffle Slab Level,ELECTRIC RM 2,CONSTRUCTION,BERG,DRYWALL,AMBER CARO,INTERIORS,2024-08-16 07:00,2024-08-23 17:00,2024-08-05 07:00,2024-08-13 17:00,2025-11-20 17:00,2025-11-20 17:00,2025-12-05 07:00,2025-12-05 07:00,0,50,100
CN.SEB55180,IMPACT - ADDITIONAL SCAFFOLDING NEEDED TO FINISH AD STEEL FIREROOFING - SEB2 - GL 22-25 - C-E - L2-CEILING,Complete,SEB - 2,,SUEN-2 - 22-25,DS/AD,,CONSTRUCTION,ROLLING PLAINS,Fireproofing,,,2024-07-15 07:00,2024-07-22 17:00,2024-06-03 07:00,2024-06-28 17:00,2025-11-20 17:00,2025-11-20 17:00,2025-12-05 17:00,2025-12-05 17:00,0,60,100
CN.SEB55390,FINISH DRYWALL & FINISHES - VESTIBULE - 19 - B-C - L3,Not Started,SEB - 2,East Support Building,SUEN-2 - 22-25,L3 / Waffle Slab Level,ELECTRIC RM 2,CONSTRUCTION,BERNCO,TBD Architectural Finishes,JAMES LEE,INTERIORS,2025-11-21 07:00,2025-11-21 17:00,,,2025-11-21 07:00,2025-11-21 17:00,2025-12-05 07:00,2025-12-05 17:00,10,10,0
CN.A1.UG.1230,PH1- UNDERGROUND PLUMBING SEB3,Complete,SEB - 3,East Support Building,SUEN-3 - 25-28,L1 - Fndn Slab,,CONSTRUCTION,,Underground Plumbing - Cobb,ANDREA SOLIS,,2022-10-13 13:00,2022-10-17 13:00,2022-10-13 13:00,2022-10-18 15:00,2025-11-20 17:00,2025-11-20 17:00,2025-06-13 08:00,2025-06-13 08:00,0,40,100
CN.A1.UG.1240,PH1- UNDERGROUND ELECTRICAL SEB3,Complete,SEB - 3,East Support Building,SUEN-3 - 25-28,L1 - Fndn Slab,,CONSTRUCTION,,Underground Electrical - (By Owner),ANDREA SOLIS,,2022-10-17 09:00,2022-10-22 09:00,2022-10-17 09:00,2022-10-22 10:00,2025-11-20 17:00,2025-11-20 17:00,2025-06-13 08:00,2025-06-13 08:00,0,40,100
CN.SEA1.1250,PH1- U/G - R/I - SPRINKLER & PLUMBING - SEB3,Complete,SEB - 3,East Support Building,SUEN-3 - 25-28,L1 - Fndn Slab,,CONSTRUCTION,,U/G FIRE & PLUMBING,ANDREA SOLIS,,2022-10-13 13:00,2022-10-22 13:00,2022-10-13 13:00,2022-10-24 17:00,2025-11-20 17:00,2025-11-20 17:00,2025-06-13 08:00,2025-06-13 08:00,0,80,100
CN.SEB3.1000,PH1- SUP - EXCAVATE PIER CAPS - SEB3,Complete,SEB - 3,East Support Building,SUEN-3 - 25-28,L1 - Fndn Slab,,CONSTRUCTION,,Excavate CIP,ANDREA SOLIS,,2022-09-12 14:52,2022-09-15 08:52,2022-09-12 14:52,2022-09-15 08:52,2025-11-20 17:00,2025-11-20 17:00,2025-06-13 08:00,2025-06-13 08:00,0,24,100
CN.SEB3.1010,PH1-FRP GRADE BEAM - SEB3,Complete,SEB - 3,East Support Building,SUEN-3 - 25-28,L1 - Fndn Slab,,CONSTRUCTION,,Pour Concrete,ANDREA SOLIS,,2022-10-25 07:00,2022-10-29 17:00,2022-10-25 07:00,2022-10-31 09:00,2025-11-20 17:00,2025-11-20 17:00,2025-06-13 08:00,2025-06-13 08:00,0,40,100
CN.SEB3.1020,PH1-BLACK BASE (NOW RAT SLAB) - SEB3,Complete,SEB - 3,East Support Building,SUEN-3 - 25-28,L1 - Fndn Slab,,CONSTRUCTION,,RAT SLAB,ANDREA SOLIS,,2023-01-31 15:00,2023-02-04 09:00,2023-01-27 13:00,2023-01-30 14:00,2025-11-20 17:00,2025-11-20 17:00,2025-06-13 08:00,2025-06-13 08:00,0,24,100
CN.SEB3.1030,PH1-CURE PIER CAPS - SEB3,Complete,SEB - 3,East Support Building,SUEN-3 - 25-28,L1 - Fndn Slab,,CONSTRUCTION,,Concrete Cure,ANDREA SOLIS,,2022-11-08 07:00,2022-11-08 07:00,2022-11-08 07:00,2022-11-08 07:00,2025-11-20 17:00,2025-11-20 17:00,2025-06-13 08:00,2025-06-13 08:00,0,0,100
CN.SEB3.1060,PH1- FRP SLAB - SEB-3-L2,Complete,SEB - 3,East Support Building,SUEN-3 - 25-28,L2 - SubFab Level,,CONSTRUCTION,,SOMD,CONCRETE,,2023-09-08 09:00,2023-09-09 15:00,2023-09-08 09:00,2023-09-09 16:00,2025-11-20 17:00,2025-11-20 17:00,2025-11-13 07:00,2025-11-13 07:00,0,16,100
CN.SEB3.1080,PH1- FRP SLAB - SEB-3-L3,Complete,SEB - 3,East Support Building,SUEN-3 - 25-28,L3 / Waffle Slab Level,,CONSTRUCTION,,SOMD,CONCRETE,,2023-09-28 07:00,2023-09-29 13:00,2023-09-28 07:00,2023-09-29 13:00,2025-11-20 17:00,2025-11-20 17:00,2025-11-19 07:00,2025-11-19 07:00,0,16,100
CN.SEB3.1120,PH1- FRP SLAB - SEB-3-ROOF,Complete,SEB - 3,East Support Building,SUEN-3 - 25-28,L4 - SUP Roof - FAB Roof,,CONSTRUCTION,,SOMD,CONCRETE,SOMD / Roofing / Waterproofing,2023-10-03 07:00,2023-10-04 13:00,2023-09-20 07:00,2023-09-22 07:00,2025-11-20 17:00,2025-11-20 17:00,2025-11-10 07:00,2025-11-10 07:00,0,16,100
CN.SEB3.1070,PH1- CURE SOMD - SEB-3-L2,Complete,SEB - 3,East Support Building,SUEN-3 - 25-28,L2 - SubFab Level,,CONSTRUCTION,,Concrete Cure,JAMES LEE,,2023-10-09 07:00,2023-10-11 11:00,2023-09-09 20:44,2023-09-11 20:44,2025-11-20 17:00,2025-11-20 17:00,2025-11-19 07:00,2025-11-19 07:00,0,24,100
CN.SEB3.1100,PH1- CURE SOMD - SEB-3-L3,Complete,SEB - 3,East Support Building,SUEN-3 - 25-28,L3 / Waffle Slab Level,,CONSTRUCTION,,Concrete Cure,JAMES LEE,,2023-10-10 13:00,2023-10-12 17:00,2023-09-30 13:00,2023-10-02 13:00,2025-11-20 17:00,2025-11-20 17:00,2025-11-21 07:00,2025-11-21 07:00,0,24,100
CN.SEB3.1130,PH1- CURE SOMD - SEB-3-ROOF,Complete,SEB - 3,East Support Building,SUEN-3 - 25-28,L4 - SUP Roof - FAB Roof,,CONSTRUCTION,,Concrete Cure,JAMES LEE,SOMD / Roofing / Waterproofing,2023-10-03 07:00,2023-10-05 11:00,2023-09-22 18:10,2023-09-24 14:00,2025-11-20 17:00,2025-11-20 17:00,2025-11-17 07:00,2025-11-17 07:00,0,24,100
CN.SEB3.1090,PH1- 1st FLOOR SLAB - F9 - SEB-3-L1,Complete,SEB - 3,East Support Building,SUEN-3 - 25-28,L1 - Fndn Slab,,CONSTRUCTION,,Pour Concrete,JAMES LEE,,2023-02-20 15:00,2023-02-25 15:00,2023-02-20 15:00,2023-02-25 16:00,2025-11-20 17:00,2025-11-20 17:00,2025-06-13 08:00,2025-06-13 08:00,0,40,100
CN.SEB3.1220,MEP EQPT PADS (LAYOUT & INSTALL DOWELS) - SEB3 - GL 25-28 - C-A - L4 ROOF,Complete,SEB - 3,East Support Building,SUEN-3 - 25-28,L4 - SUP Roof - FAB Roof,,CONSTRUCTION,BAKER,OAC/ MECH PADS,JAMES LEE,SOMD / Roofing / Waterproofing,2024-06-07 07:00,2024-06-10 17:00,2024-01-26 07:00,2024-01-27 17:00,2025-11-20 17:00,2025-11-20 17:00,2025-12-05 17:00,2025-12-05 17:00,0,20,100
CN.SEB3.1050,TIER 1 ERECT PRECAST COLUMNS & BEAMS - SEB3,Complete,SEB - 3,East Support Building,SUEN-3 - 25-28,L3 / Waffle Slab Level,,CONSTRUCTION,,"SUP EAST A,B",SEAN MONK,,2023-05-04 07:00,2023-05-09 13:00,2023-05-04 07:00,2023-05-20 16:00,2025-11-20 17:00,2025-11-20 17:00,2025-06-13 08:00,2025-06-13 08:00,0,56,100
CN.SEB3.1140,PH1-ROOF LAYER PARAPET FRAMING & SHEATHING RIP - SEB3 - GL 25-28 - L4 - C-A,Complete,SEB - 3,East Support Building,SUEN-3 - 25-28,L4 - SUP Roof - FAB Roof,,CONSTRUCTION,,FAB Subfab and Parapets,JAMES LIVELY,SOMD / Roofing / Waterproofing,2024-01-17 07:00,2024-01-20 09:00,2024-01-16 08:00,2024-01-20 11:00,2025-11-20 17:00,2025-11-20 17:00,2025-12-05 17:00,2025-12-05 17:00,0,32,100
CN.SEB3.1210,FRP TOPPING SLAB - GL 24-28 - C-A - L4 ROOF,Complete,SEB - 3,East Support Building,SUEN-3 - 25-28,L4 - SUP Roof - FAB Roof,,CONSTRUCTION,BAKER,TOPPING,JAMES LIVELY,,2024-11-15 07:00,2024-11-21 17:00,2024-11-15 07:00,2024-11-18 17:00,2025-11-20 17:00,2025-11-20 17:00,2025-12-05 17:00,2025-12-05 17:00,0,40,100
CN.SEB3.1170,PH1 - CLADDING STEEL INTERIOR GL 25-28 - D LINE (AD AREA),Complete,SEB - 3,East Support Building,SUEN-3 - 25-28,EXTERIOR SKIN,,CONSTRUCTION,,INSULATED METAL PANELS,JAMES LIVELY,,2024-02-29 07:00,2024-03-06 13:00,2024-02-28 14:00,2024-03-11 00:00,2025-11-20 17:00,2025-11-20 17:00,2025-11-21 07:00,2025-11-21 07:00,0,46,100
CN.SEB3.1190,INSTALL INSULATED METAL PANEL MODULES - GL 25-28 - C LINE (DS AREA),Complete,SEB - 3,East Support Building,SUEN-3 - 25-28,EXTERIOR SKIN,,CONSTRUCTION,KOVACH,INSULATED METAL PANELS,JAMES LIVELY,,2024-05-04 07:00,2024-05-11 17:00,2024-04-30 07:00,2024-05-16 17:00,2025-11-20 17:00,2025-11-20 17:00,2025-12-05 17:00,2025-12-05 17:00,0,60,100
CN.SEB3.1150,PH1 - CLADDING STEEL  - SEB-3 A LINE [SUP EXTERIOR WALL],Complete,SEB - 3,East Support Building,SUEN-3 - 25-28,EXTERIOR SKIN,,CONSTRUCTION,,INSULATED METAL PANELS,JAMES LIVELY,,2023-10-30 07:00,2023-11-08 09:00,2023-10-30 07:00,2023-11-08 13:00,2025-11-20 17:00,2025-11-20 17:00,2025-09-30 07:00,2025-09-30 07:00,0,72,100
CN.SEB3.1180,INSTALL INSULATED METAL PANEL MODULES - GL 25-28 - A LINE [SUP EXTERIOR WALL],Complete,SEB - 3,East Support Building,SUEN-3 - 25-28,EXTERIOR SKIN,,CONSTRUCTION,KOVACH,INSULATED METAL PANELS,JAMES LIVELY,,2024-04-12 07:00,2024-04-26 17:00,2024-04-12 07:00,2024-05-18 17:00,2025-11-20 17:00,2025-11-20 17:00,2025-09-30 07:00,2025-09-30 07:00,0,90,100
CN.SEB3.1110,PH1- AD STEEL FRAME INSTALL - SEB-3 fab side,Complete,SEB - 3,East Support Building,SUEN-3 - 25-28,DS/AD,,CONSTRUCTION,,Steel Erection,SEAN MONK,,2023-09-22 09:00,2023-09-24 13:00,2023-09-15 09:00,2023-09-17 16:00,2025-11-20 17:00,2025-11-20 17:00,2025-06-13 08:00,2025-06-13 08:00,0,24,100
CN.AB.AR.2590,METAL STUD FRAMING (2hr) - SEB3 - GL 25-28 - L3 - C-E - (WAFER I/O RM),Complete,SEB - 3,East Support Building,SUEN-3 - 25-28,L3 / Waffle Slab Level,WAFER I/O RM,CONSTRUCTION,BERG,TBD Architectural Finishes,AMBER CARO,INTERIORS,2024-03-25 07:00,2024-03-28 17:00,2024-01-24 00:00,2024-01-31 00:00,2025-11-20 17:00,2025-11-20 17:00,2025-11-10 07:00,2025-11-10 07:00,0,40,100
CN.AB.AR.4010,MEP ROUGH IN & INSPECTION (by SECAI) - SEB3 - GL 25-28 - L3 - C-E (WAFER I/O RM),Complete,SEB - 3,East Support Building,SUEN-3 - 25-28,L3 / Waffle Slab Level,WAFER I/O RM,CONSTRUCTION,SECAI,Owner & Design Team,AMBER CARO,,2024-04-22 07:00,2024-04-23 17:00,2024-04-22 07:00,2024-04-23 17:00,2025-11-20 17:00,2025-11-20 17:00,2025-12-01 07:00,2025-12-01 07:00,0,20,100
CN.AB.AR.4020,TAPE & FINISH DRYWALL - WAFER I/O RM - SEB3 - GL 25-28 - C-A - L3,Complete,SEB - 3,East Support Building,SUEN-3 - 25-28,L3 / Waffle Slab Level,WAFER I/O RM,CONSTRUCTION,CHERRY COATING,DRYWALL,AMBER CARO,INTERIORS,2024-05-06 07:00,2024-05-13 17:00,2024-05-06 07:00,2024-08-07 17:00,2025-11-20 17:00,2025-11-20 17:00,2025-12-05 17:00,2025-12-05 17:00,0,50,100
CN.AB.AR.4030,FINISH PAINT - EDS - SEB3 - GL 25-28 - C-E - L3,Not Started,SEB - 3,East Support Building,SUEN-3 - 25-28,L3 / Waffle Slab Level,DS/AD INTERIORS,CONSTRUCTION,FINISH PAINT,TBD Architectural Finishes,JAMES LEE,INTERIORS,2025-11-21 07:00,2025-11-24 17:00,,,2025-11-21 07:00,2025-11-24 17:00,2025-12-04 07:00,2025-12-05 17:00,20,20,0
CN.SEB3.1230,INSTALL METAL STAIRS - STAIR #19 - 26/D - ALL LEVELS,Complete,SEB - 3,East Support Building,SUEN-3 - 25-28,INTERIOR STAIR TOWER - STAIR #19 (CLEAN ROOM) - DE-SCOPED,,CONSTRUCTION,,INSULATED METAL PANELS,JAMES LIVELY,INTERIORS,2024-02-05 07:00,2024-02-08 17:00,2024-02-02 07:00,2024-04-06 00:00,2025-11-20 17:00,2025-11-20 17:00,2025-11-21 07:00,2025-11-21 07:00,0,40,100
CN.SEB3.1250,PH1- DECKING GL 24 - 25 - SEB-3-ROOF,Complete,SEB - 3,East Support Building,SUEN-3 - 25-28,L4 - SUP Roof - FAB Roof,,CONSTRUCTION,,Decking & Detail,SEAN MONK,SOMD / Roofing / Waterproofing,2023-08-24 09:00,2023-08-24 17:00,2023-08-24 09:00,2023-08-27 16:00,2025-11-20 17:00,2025-11-20 17:00,2025-10-16 07:00,2025-10-16 07:00,0,8,100
CN.SEB3.1260,PH1- DECKING GL 24 - 25 - SEB-3-L3,Complete,SEB - 3,East Support Building,SUEN-3 - 25-28,L3 / Waffle Slab Level,,CONSTRUCTION,,Decking & Detail,SEAN MONK,,2023-07-03 07:00,2023-07-06 13:00,2023-07-03 07:00,2023-07-06 13:00,2025-11-20 17:00,2025-11-20 17:00,2025-10-16 07:00,2025-10-16 07:00,0,16,100
CN.SEB3.1270,PH1- DECKING GL 24 - 25 - SEB-3-L2,Complete,SEB - 3,East Support Building,SUEN-3 - 25-28,L2 - SubFab Level,,CONSTRUCTION,,Decking & Detail,SEAN MONK,,2023-09-05 07:00,2023-09-06 13:00,2023-09-05 07:00,2023-09-06 13:00,2025-11-20 17:00,2025-11-20 17:00,2025-11-10 07:00,2025-11-10 07:00,0,16,100
CN.SEA1.1910,PH1- ERECT CIP OAC PADS - SEB3 - GL 25-28 - C-A - L4 ROOF,Complete,SEB - 3,East Support Building,SUEN-3 - 25-28,L4 - SUP Roof - FAB Roof,,CONSTRUCTION,BAKER,OAC/ MECH PADS,CONCRETE,SOMD / Roofing / Waterproofing,2024-06-11 07:00,2024-06-24 17:00,2024-01-29 07:00,2024-02-02 17:00,2025-11-20 17:00,2025-11-20 17:00,2025-12-05 17:00,2025-12-05 17:00,0,80,100
CN.SEA1.1920,PH1- MEP EQPT PADS (FORM / INSTALL PVC ANGLE) - SEB3 - GL 25-28 - C-A - L4 ROOF,Complete,SEB - 3,East Support Building,SUEN-3 - 25-28,L4 - SUP Roof - FAB Roof,,CONSTRUCTION,BAKER,OAC/ MECH PADS,CONCRETE,SOMD / Roofing / Waterproofing,2024-06-24 07:00,2024-06-25 17:00,2024-02-03 07:00,2024-02-05 17:00,2025-11-20 17:00,2025-11-20 17:00,2025-12-05 17:00,2025-12-05 17:00,0,20,100
CN.SEA1.1930,PH1- MEP EQPT PADS (REPAIR WATERPROOF) - SEB3 - GL 25-28 - C-A - L4 ROOF,Complete,SEB - 3,East Support Building,SUEN-3 - 25-28,L4 - SUP Roof - FAB Roof,,CONSTRUCTION,BRAZOS,OAC/ MECH PADS,CONCRETE,SOMD / Roofing / Waterproofing,2024-06-25 07:00,2024-06-27 17:00,2024-02-06 07:00,2024-02-07 17:00,2025-11-20 17:00,2025-11-20 17:00,2025-12-05 17:00,2025-12-05 17:00,0,20,100
CN.SEA1.1970,PH1- MEP EQPT PADS (TROUGH WATERPROOF & MEP SLEEVES IN TROUGHS) - SEB3 - GL 25-28 - C-A - L4 ROOF,Complete,SEB - 3,East Support Building,SUEN-3 - 25-28,L4 - SUP Roof - FAB Roof,,CONSTRUCTION,BRAZOS,OAC/ MECH PADS,CONCRETE,SOMD / Roofing / Waterproofing,2024-06-28 07:00,2024-07-01 17:00,2024-02-08 07:00,2024-02-08 17:00,2025-11-20 17:00,2025-11-20 17:00,2025-12-05 17:00,2025-12-05 17:00,0,20,100
CN.SEA3.1310,PH1-CIP WALL (DS)- SEB-3,Complete,SEB - 3,East Support Building,SUEN-3 - 25-28,L4 - SUP Roof - FAB Roof,,CONSTRUCTION,,CIP WALL,CONCRETE,SOMD / Roofing / Waterproofing,2023-10-30 07:00,2023-11-04 09:00,2023-10-27 07:00,2023-10-29 11:00,2025-11-20 17:00,2025-11-20 17:00,2025-11-17 07:00,2025-11-17 07:00,0,32,100
CN.SEB3.1290,ANCHOR BOLT EMBEDS INSTALL - SEB-3-L1,Complete,SEB - 3,East Support Building,SUEN-3 - 25-28,L1 - Fndn Slab,,CONSTRUCTION,,Waterproofing - Preferred,JAMES LIVELY,SOMD / Roofing / Waterproofing,2023-10-16 07:00,2023-10-18 12:00,2023-10-09 07:00,2023-10-12 17:00,2025-11-20 17:00,2025-11-20 17:00,2025-09-30 07:00,2025-09-30 07:00,0,24,100
CN.SEB3.1310,PH1- TOPPING SLAB w TRENCH & ANGLE EMBEDS- SEB-3-L1,Complete,SEB - 3,East Support Building,SUEN-3 - 25-28,L1 - Fndn Slab,,CONSTRUCTION,,TOPPING,CONCRETE,SOMD / Roofing / Waterproofing,2023-10-19 07:00,2023-10-21 11:00,2023-10-19 07:00,2023-10-21 12:00,2025-11-20 17:00,2025-11-20 17:00,2025-11-21 07:00,2025-11-21 07:00,0,24,100
CN.SEB3.1320,PH1- DS/AD DECKING & DETAILING GL 24 - 28 - DS/AD SEB-3 L6,Complete,SEB - 3,East Support Building,SUEN-3 - 25-28,DS/AD,,CONSTRUCTION,,Steel Erection,SEAN MONK,,2023-10-30 07:00,2023-11-04 17:00,2023-10-30 07:00,2023-11-06 17:00,2025-11-20 17:00,2025-11-20 17:00,2025-06-13 08:00,2025-06-13 08:00,0,40,100
CN.SEB3.1330,PH1- DS/AD FRP SLAB - DS/AD - SEB3 - GL 25-28 - C-E -L4/E,Complete,SEB - 3,East Support Building,SUEN-3 - 25-28,DS/AD,,CONSTRUCTION,,SOMD,CONCRETE,,2023-12-22 15:00,2024-01-04 10:00,2023-12-17 15:00,2023-12-18 15:00,2025-11-20 17:00,2025-11-20 17:00,2025-06-13 08:00,2025-06-13 08:00,0,40,100
CN.SEB3.1340,AD WATERPROOFING - SEB3 - GL 25-28 - D-E - L4/E,Complete,SEB - 3,East Support Building,SUEN-3 - 25-28,DS/AD,,CONSTRUCTION,BRAZOS,Waterproofing - Preferred,JAMES LIVELY,,2024-07-15 07:00,2024-07-29 17:00,2024-07-08 07:00,2024-07-24 17:00,2025-11-20 17:00,2025-11-20 17:00,2025-12-05 17:00,2025-12-05 17:00,0,110,100
CN.SEB3.1350,AD TOPPING SLAB - SEB3 - GL 25-28 - D-E - L4/E,Complete,SEB - 3,East Support Building,SUEN-3 - 25-28,DS/AD,,CONSTRUCTION,BAKER,TOPPING,CONCRETE,,2024-08-08 07:00,2024-08-13 17:00,2024-07-25 07:00,2024-07-29 17:00,2025-11-20 17:00,2025-11-20 17:00,2025-12-05 17:00,2025-12-05 17:00,0,40,100
TIER 2.1052,TIER 2 GROUT PRECAST COLUMNS & BEAMS - SEB3,Complete,SEB - 3,East Support Building,SUEN-3 - 25-28,L4 - SUP Roof - FAB Roof,,CONSTRUCTION,,"SUP EAST A,B",SEAN MONK,,2023-08-04 07:00,2023-08-07 17:00,2023-07-28 07:00,2023-07-29 09:00,2025-11-20 17:00,2025-11-20 17:00,2025-06-13 08:00,2025-06-13 08:00,0,40,100
CN.SEB3.1360,PH1- DECKING GL 25 - 26 - SEB-3-L2,Complete,SEB - 3,East Support Building,SUEN-3 - 25-28,L2 - SubFab Level,,CONSTRUCTION,,Decking & Detail,SEAN MONK,,2023-09-05 15:00,2023-09-07 11:00,2023-09-05 15:00,2023-09-07 11:00,2025-11-20 17:00,2025-11-20 17:00,2025-11-10 07:00,2025-11-10 07:00,0,16,100
CN.SEB3.1370,PH1- DECKING GL 26 - 27 - SEB-3-L2,Complete,SEB - 3,East Support Building,SUEN-3 - 25-28,L2 - SubFab Level,,CONSTRUCTION,,Decking & Detail,SEAN MONK,,2023-09-06 13:00,2023-09-08 09:00,2023-09-06 13:00,2023-09-08 09:00,2025-11-20 17:00,2025-11-20 17:00,2025-11-10 07:00,2025-11-10 07:00,0,16,100
CN.SEB3.1380,PH1- DECKING GL 25 - 26 - SEB-3-L3,Complete,SEB - 3,East Support Building,SUEN-3 - 25-28,L3 / Waffle Slab Level,,CONSTRUCTION,,Decking & Detail,SEAN MONK,,2023-09-05 07:00,2023-09-06 13:00,2023-09-04 07:00,2023-09-06 13:00,2025-11-20 17:00,2025-11-20 17:00,2025-10-16 07:00,2025-10-16 07:00,0,16,100
CN.SEB3.1390,PH1- DECKING GL 26 - 27 - SEB-3-L3,Complete,SEB - 3,East Support Building,SUEN-3 - 25-28,L3 / Waffle Slab Level,,CONSTRUCTION,,Decking & Detail,SEAN MONK,,2023-09-06 13:00,2023-09-08 09:00,2023-09-06 13:00,2023-09-08 09:00,2025-11-20 17:00,2025-11-20 17:00,2025-11-19 07:00,2025-11-19 07:00,0,16,100
CN.SEB3.1400,PH1- DECKING GL 25 - 26 - SEB-3-ROOF,Complete,SEB - 3,East Support Building,SUEN-3 - 25-28,L4 - SUP Roof - FAB Roof,,CONSTRUCTION,,Decking & Detail,SEAN MONK,SOMD / Roofing / Waterproofing,2023-09-11 07:00,2023-09-14 11:00,2023-09-11 07:00,2023-09-12 13:00,2025-11-20 17:00,2025-11-20 17:00,2025-11-10 07:00,2025-11-10 07:00,0,24,100
CN.SEB3.1410,PH1- DECKING GL 26 - 27 - SEB-3-ROOF,Complete,SEB - 3,East Support Building,SUEN-3 - 25-28,L4 - SUP Roof - FAB Roof,,CONSTRUCTION,,Decking & Detail,SEAN MONK,SOMD / Roofing / Waterproofing,2023-09-12 15:00,2023-09-16 09:00,2023-09-12 15:00,2023-09-14 10:00,2025-11-20 17:00,2025-11-20 17:00,2025-11-10 07:00,2025-11-10 07:00,0,24,100
CN.SEB3.1420,PH1- DS/AD DECKING & DETAILING - DS/AD  - SEB3 - GL 24-28  - C-E - L4 & L4/E,Complete,SEB - 3,East Support Building,SUEN-3 - 25-28,DS/AD,,CONSTRUCTION,,Decking & Detail,SEAN MONK,,2023-12-11 07:00,2023-12-16 15:00,2023-12-11 07:00,2023-12-16 16:00,2025-11-20 17:00,2025-11-20 17:00,2025-06-13 08:00,2025-06-13 08:00,0,48,100
CN.AB.AR.4380,DRYWALL 2 SIDE - WAFER I/O RM - SEB3 - GL 25-28 - C-A - L3,Complete,SEB - 3,East Support Building,SUEN-3 - 25-28,L3 / Waffle Slab Level,WAFER I/O RM,CONSTRUCTION,BERG,DRYWALL,AMBER CARO,INTERIORS,2024-04-30 07:00,2024-05-07 17:00,2024-04-30 07:00,2024-08-03 17:00,2025-11-20 17:00,2025-11-20 17:00,2025-12-01 07:00,2025-12-01 07:00,0,50,100
CN.AB.AR.4390,DRYWALL & INSULATION (1 side) (INT) - SEB3 - GL 25-28 - L3 - C-E - (WAFER I/O RM),Complete,SEB - 3,East Support Building,SUEN-3 - 25-28,L3 / Waffle Slab Level,WAFER I/O RM,CONSTRUCTION,BERG,DRYWALL,AMBER CARO,INTERIORS,2024-04-01 15:00,2024-04-05 15:00,2024-02-01 07:00,2024-04-17 17:00,2025-11-20 17:00,2025-11-20 17:00,2025-11-26 07:00,2025-11-26 07:00,0,40,100
CN.SEB3.1440,PH1- DS STEEL FRAME INSTALL - SEB-3 Comeback Sup Side,Complete,SEB - 3,East Support Building,SUEN-3 - 25-28,DS/AD,,CONSTRUCTION,,Steel Erection,SEAN MONK,,2023-09-29 09:00,2023-10-01 13:00,2023-09-20 07:00,2023-09-22 16:00,2025-11-20 17:00,2025-11-20 17:00,2025-06-13 08:00,2025-06-13 08:00,0,24,100
CN.SEB3.1450,PH1- EXTERIOR CURBS - SEB-3-L1,Complete,SEB - 3,East Support Building,SUEN-3 - 25-28,L1 - Fndn Slab,,CONSTRUCTION,,Pour Concrete,JAMES LEE,SOMD / Roofing / Waterproofing,2023-10-24 07:00,2023-10-29 15:00,2023-10-23 07:00,2023-10-28 16:00,2025-11-20 17:00,2025-11-20 17:00,2025-09-30 07:00,2025-09-30 07:00,0,48,100
CN.SEB3.1460,PH1- MEP PADS - SEB-3-L1- WAFER I/O,Complete,SEB - 3,East Support Building,SUEN-3 - 25-28,L1 - Fndn Slab,WAFER I/O RM,CONSTRUCTION,,Pour Concrete,JAMES LEE,SOMD / Roofing / Waterproofing,2023-10-24 07:00,2023-10-30 15:00,2023-10-23 07:00,2023-10-28 16:00,2025-11-20 17:00,2025-11-20 17:00,2025-11-21 07:00,2025-11-21 07:00,0,38,100
CN.SEB3R.2410,METAL STUD FRAMING (2hr) - SEB3 - GL 25-28 - L1 - C-A - WAFER I/O ( OPEN FOR SECAI),Complete,SEB - 3,East Support Building,SUEN-3 - 25-28,L1 - Fndn Slab,WAFER I/O RM,CONSTRUCTION,BERG,TBD Architectural Finishes,AMBER CARO,INTERIORS,2024-01-02 07:00,2024-01-05 17:00,2024-01-02 07:00,2024-01-24 13:00,2025-11-20 17:00,2025-11-20 17:00,2025-11-25 17:00,2025-11-25 17:00,0,40,100
CN.SEB3R.3870,MEP ROUGH IN & INSPECTION (by SECAI) - SEB3 - GL 25-28 - L1 - C-A WAFER I/O,Complete,SEB - 3,East Support Building,SUEN-3 - 25-28,L1 - Fndn Slab,WAFER I/O RM,CONSTRUCTION,,Owner & Design Team,AMBER CARO,,2024-02-01 13:00,2024-02-07 13:00,2024-02-01 13:00,2024-02-05 17:00,2025-11-20 17:00,2025-11-20 17:00,2025-11-25 17:00,2025-11-25 17:00,0,40,100
CN.SEB3R.3880,TAPE & FINISH DRYWALL - WAFER I/O - SEB3 - GL 25-28 - C-A - L1,Complete,SEB - 3,East Support Building,SUEN-3 - 25-28,L1 - Fndn Slab,WAFER I/O RM,CONSTRUCTION,CHERRY COATING,DRYWALL,AMBER CARO,INTERIORS,2024-05-02 07:00,2024-05-02 17:00,2024-05-02 07:00,2024-05-07 17:00,2025-11-20 17:00,2025-11-20 17:00,2025-11-26 07:00,2025-11-26 07:00,0,10,100
CN.SEB3R.3890,FINISH PAINT - WAFER I/O - SEB3 - GL 25-28 - C-A - L1,Not Started,SEB - 3,East Support Building,SUEN-3 - 25-28,L1 - Fndn Slab,WAFER I/O RM,CONSTRUCTION,FINISH PAINT,TBD Architectural Finishes,JAMES LEE,INTERIORS,2025-12-04 07:00,2025-12-10 17:00,,,2025-12-04 07:00,2025-12-10 17:00,2025-11-26 07:00,2025-12-04 17:00,50,50,0
CN.SEB3.1241,INSTALL METAL STAIRS 19 - - SEB3 - GL 25-28 - L1 - C-A - WAFER I/O,Complete,SEB - 3,East Support Building,SUEN-3 - 25-28,L1 - Fndn Slab,WAFER I/O RM,CONSTRUCTION,,INSULATED METAL PANELS,JAMES LIVELY,INTERIORS,2024-03-25 07:00,2024-04-11 17:00,2024-03-04 08:00,2024-03-21 16:00,2025-11-20 17:00,2025-11-20 17:00,2025-11-26 07:00,2025-11-26 07:00,0,120,100
CN.SEB3R.4340,DRYWALL 2 SIDE - WAFER I/O - SEB3 - GL 25-28 - C-A - L1,Complete,SEB - 3,East Support Building,SUEN-3 - 25-28,L1 - Fndn Slab,WAFER I/O RM,CONSTRUCTION,BERG,DRYWALL,AMBER CARO,INTERIORS,2024-04-11 07:00,2024-04-17 17:00,2024-04-11 07:00,2024-04-25 17:00,2025-11-20 17:00,2025-11-20 17:00,2025-11-25 17:00,2025-11-25 17:00,0,50,100
CN.SEB3R.4350,DRYWALL & INSULATION (1 side) (INT) - WAFER I/O - SEB3 - GL 25-28 - C-A - L1,Complete,SEB - 3,East Support Building,SUEN-3 - 25-28,L1 - Fndn Slab,WAFER I/O RM,CONSTRUCTION,BERG,DRYWALL,AMBER CARO,INTERIORS,2024-03-11 07:00,2024-03-19 17:00,2024-03-04 07:00,2024-06-01 17:00,2025-11-20 17:00,2025-11-20 17:00,2025-11-25 17:00,2025-11-25 17:00,0,40,100
CN.SEB3R.4680,FLOOR STRIPING PAINT - WAFER I/O - SEB3 - GL 25-28 - C-A - L1,Not Started,SEB - 3,East Support Building,SUEN-3 - 25-28,L1 - Fndn Slab,WAFER I/O RM,CONSTRUCTION,FLOOR STRIPING PAINT,TBD Architectural Finishes,JAMES LEE,INTERIORS,2025-12-11 07:00,2025-12-11 17:00,,,2025-12-11 07:00,2025-12-11 17:00,2025-12-05 07:00,2025-12-05 17:00,10,10,0
CN.SEB3R.4690,METAL STUD FRAMING (2hr) - ELECTRICAL ROOM 3 - SEB3 - GL 25-28 - C-A - L2,Complete,SEB - 3,East Support Building,SUEN-3 - 25-28,L2 - SubFab Level,Electric RM 3,CONSTRUCTION,BERG,TBD Architectural Finishes,AMBER CARO,INTERIORS,2024-03-18 07:00,2024-03-22 17:00,2024-03-15 07:00,2024-07-10 17:00,2025-11-20 17:00,2025-11-20 17:00,2025-11-19 07:00,2025-11-19 07:00,0,40,100
CN.SEB3R.4700,MEP ROUGH IN & INSPECTION (by SECAI) - ELECTRICAL ROOM 3 - SEB3 - GL 25-28 - C-A - L2,Complete,SEB - 3,East Support Building,SUEN-3 - 25-28,L2 - SubFab Level,Electric RM 3,CONSTRUCTION,SECAI,Owner & Design Team,AMBER CARO,,2024-08-05 07:00,2024-08-12 17:00,2024-08-05 07:00,2024-08-10 17:00,2025-11-20 17:00,2025-11-20 17:00,2025-11-21 07:00,2025-11-21 07:00,0,50,100
CN.SEB3R.4730,TAPE & FINISH DRYWALL - ELECTRICAL ROOM 3 - SEB3 - GL 25-28 - C-A - L2,Complete,SEB - 3,East Support Building,SUEN-3 - 25-28,L2 - SubFab Level,Electric RM 3,CONSTRUCTION,CHERRY COATING,DRYWALL,AMBER CARO,INTERIORS,2025-07-17 07:00,2025-07-23 17:00,2025-07-17 07:00,2025-07-23 17:00,2025-11-20 17:00,2025-11-20 17:00,2025-11-21 07:00,2025-11-21 07:00,0,50,100
CN.SEB3R.4780,INSTALL WALL PROTECTION - STAIR 19 - GL 25-26 - C-D - L2,Not Started,SEB - 3,East Support Building,SUEN-3 - 25-28,L2 - SubFab Level,DS/AD INTERIORS,CONSTRUCTION,BERNCO,TBD Architectural Finishes,JAMES LEE,INTERIORS,2025-11-21 07:00,2025-11-25 17:00,,,2025-11-21 07:00,2025-11-25 17:00,2025-12-03 07:00,2025-12-05 17:00,30,30,0
CN.SEB3R.4750,FINISH PAINT - ELECTRICAL ROOM 3 - SEB3 - GL 25-28 - C-A - L2,Not Started,SEB - 3,East Support Building,SUEN-3 - 25-28,L2 - SubFab Level,Electric RM 3,CONSTRUCTION,FINISH PAINT,TBD Architectural Finishes,JAMES LEE,INTERIORS,2025-11-21 07:00,2025-12-01 17:00,,,2025-11-21 07:00,2025-12-01 17:00,2025-11-21 07:00,2025-12-01 17:00,50,50,0
CN.SEB3R.4720,DRYWALL 2 SIDE - ELECTRICAL ROOM 3 - SEB3 - GL 25-28 - C-A - L2,Complete,SEB - 3,East Support Building,SUEN-3 - 25-28,L2 - SubFab Level,Electric RM 3,CONSTRUCTION,BERG,DRYWALL,AMBER CARO,INTERIORS,2025-07-10 07:00,2025-07-16 17:00,2025-07-10 07:00,2025-07-16 17:00,2025-11-20 17:00,2025-11-20 17:00,2025-11-21 07:00,2025-11-21 07:00,0,50,100
CN.SEB3R.4710,DRYWALL & INSULATION (1 side) (INT) - ELECTRICAL ROOM 3 - SEB3 - GL 25-28 - C-A - L2,Complete,SEB - 3,East Support Building,SUEN-3 - 25-28,L2 - SubFab Level,Electric RM 3,CONSTRUCTION,BERG,DRYWALL,AMBER CARO,INTERIORS,2024-03-26 11:00,2024-04-01 11:00,2024-03-18 07:00,2024-07-15 17:00,2025-11-20 17:00,2025-11-20 17:00,2025-11-21 07:00,2025-11-21 07:00,0,40,100
CN.SEB3R.4790,FLOOR STRIPING PAINT - ELECTRICAL ROOM 3 - SEB3 - GL 25-28 - C-A - L2,Not Started,SEB - 3,East Support Building,SUEN-3 - 25-28,L2 - SubFab Level,Electric RM 3,CONSTRUCTION,FLOOR STRIPING PAINT,TBD Architectural Finishes,JAMES LEE,INTERIORS,2025-12-02 07:00,2025-12-05 17:00,,,2025-12-02 07:00,2025-12-05 17:00,2025-12-02 07:00,2025-12-05 17:00,40,40,0
CN.SEB3.1470,IMPACT - DRB-01 ADDITIONAL BEAMS BETWEEN FAB AND AD GL 24 - 28 C-E ROOF,Complete,SEB - 3,,SUEN-3 - 25-28,DS/AD,,CONSTRUCTION,,Steel Erection,,,2023-11-20 07:00,2023-11-20 15:00,2023-11-20 07:00,2023-11-20 15:00,2025-11-20 17:00,2025-11-20 17:00,2025-06-13 08:00,2025-06-13 08:00,0,8,100
CN.SEB3.1480,PH1 - CLADDING STEEL  EXTERIOR - SEB3 - GL 25-28 - C LINE (DS AREA),Complete,SEB - 3,East Support Building,SUEN-3 - 25-28,EXTERIOR SKIN,,CONSTRUCTION,,INSULATED METAL PANELS,JAMES LIVELY,,2024-02-19 08:00,2024-02-29 10:00,2024-02-13 08:00,2024-02-20 12:00,2025-11-20 17:00,2025-11-20 17:00,2025-11-17 07:00,2025-11-17 07:00,0,82,100
EMB1016,IMPACT - Missing 2 Precast Embeds ALONG 25 LINE Between - GL B25 and C25 - TR077 - SEQ 5307,Complete,SEB - 3,East Support Building,SUEN-3 - 25-28,L3 / Waffle Slab Level,WAFER I/O RM,CONSTRUCTION,,Steel Erection,SEAN MONK,,2023-09-26 13:00,2023-09-29 09:00,2023-10-10 13:00,2023-10-13 09:00,2025-11-20 17:00,2025-11-20 17:00,2025-11-21 07:00,2025-11-21 07:00,0,16,100
EMB3000,IMPACT - Missing Precast Embed A25 Level 4 (#3000),Complete,SEB - 3,East Support Building,SUEN-3 - 25-28,DS/AD,,CONSTRUCTION,,Steel Erection,SEAN MONK,,2023-09-25 07:00,2023-09-26 13:00,2023-09-18 07:00,2023-09-19 13:00,2025-11-20 17:00,2025-11-20 17:00,2025-11-21 07:00,2025-11-21 07:00,0,16,100
CN.SEA5.3921,PH1- DS/AD DECKING &  24 - 28 - DS/AD SEB-3 L2,Complete,SEB - 3,East Support Building,SUEN-3 - 25-28,DS/AD,,CONSTRUCTION,,Steel Erection,SEAN MONK,,2023-10-18 08:00,2023-10-29 13:00,2023-10-18 08:00,2023-10-28 11:00,2025-11-20 17:00,2025-11-20 17:00,2025-10-16 07:00,2025-10-16 07:00,0,96,100
CN.SEA5.3931,PH1- DS/AD FRP SLAB - SEB3 - GL 25-28 - C-E L3,Complete,SEB - 3,East Support Building,SUEN-3 - 25-28,DS/AD,,CONSTRUCTION,,SOMD,CONCRETE,,2023-12-07 15:00,2023-12-10 09:00,2023-12-07 15:00,2023-12-09 12:00,2025-11-20 17:00,2025-11-20 17:00,2025-12-05 17:00,2025-12-05 17:00,0,24,100
CN.SEA5.3941,DS/AD STEEL SPRAY FIREPROOFING SFRM - SEB3 - GL 25-28 - C-E - L1 CEILING,Complete,SEB - 3,,SUEN-3 - 25-28,DS/AD,,CONSTRUCTION,,Fireproofing,,,2023-12-12 08:00,2023-12-17 08:00,2023-12-12 08:00,2023-12-15 11:00,2025-11-20 17:00,2025-11-20 17:00,2025-11-19 07:00,2025-11-19 07:00,0,40,100
CN.SEB31001,METAL STUD FRAMING (2hr) - SEB3 - GL 25-28 - L1 - D LINE,Complete,SEB - 3,West Support Building,SUEN-3 - 25-28,L1 - Fndn Slab,DS/AD INTERIORS,CONSTRUCTION,BERG,TBD Architectural Finishes,FIZ DATA CENTER,INTERIORS,2023-11-09 11:00,2023-11-14 09:00,2023-11-09 11:00,2023-11-16 11:00,2025-11-20 17:00,2025-11-20 17:00,2025-11-24 07:00,2025-11-24 07:00,0,48,100
CN.SEB31101,PRIMER & PAINT DRYWALL -  GL 25-28 - D LINE- L1,Not Started,SEB - 3,West Support Building,SUEN-3 - 25-28,L1 - Fndn Slab,DS/AD INTERIORS,CONSTRUCTION,FINISH PAINT,TBD Architectural Finishes,FIZ DATA CENTER,INTERIORS,2025-11-21 07:00,2025-11-21 17:00,,,2025-11-21 07:00,2025-11-21 17:00,2025-12-01 17:00,2025-12-02 17:00,10,10,0
CN.SEB31041,DRYWALL & INSULATION (1 side) (INT) - SEB3 - GL 25-28 - L1 - D LINE,Complete,SEB - 3,West Support Building,SUEN-3 - 25-28,L1 - Fndn Slab,DS/AD INTERIORS,CONSTRUCTION,,DRYWALL,FIZ DATA CENTER,INTERIORS,2023-11-30 07:00,2023-12-04 15:00,2023-11-30 07:00,2023-12-29 13:00,2025-11-20 17:00,2025-11-20 17:00,2025-11-24 07:00,2025-11-24 07:00,0,48,100
CN.SEB31011,REMEDY - DEMO DRYWALL (2hr) - SEB3 - GL 22-25-28 - D LINE - L2,Complete,SEB - 3,West Support Building,SUEN-3 - 25-28,L2 - SubFab Level,DS/AD INTERIORS,CONSTRUCTION,BERG,TBD Architectural Finishes,FIZ DATA CENTER,INTERIORS,2024-05-31 07:00,2024-06-06 17:00,2024-05-23 07:00,2024-05-28 17:00,2025-11-20 17:00,2025-11-20 17:00,2025-11-20 07:00,2025-11-20 07:00,0,40,100
CN.SEB31091,REMEDY - TAPE & FINISH DRYWALL - SEB3 - GL 25-28 - D LINE - L2,Complete,SEB - 3,West Support Building,SUEN-3 - 25-28,L2 - SubFab Level,DS/AD INTERIORS,CONSTRUCTION,CHERRY COATING,DRYWALL,FIZ DATA CENTER,INTERIORS,2024-08-16 07:00,2024-08-20 17:00,2024-08-14 07:00,2024-08-16 17:00,2025-11-20 17:00,2025-11-20 17:00,2025-11-20 07:00,2025-11-20 07:00,0,30,100
CN.SEB31111,FINISH PAINT - SEB3 - GL 25-28 - D LINE - L2,Not Started,SEB - 3,West Support Building,SUEN-3 - 25-28,L2 - SubFab Level,DS/AD INTERIORS,CONSTRUCTION,FINISH PAINT,TBD Architectural Finishes,FIZ DATA CENTER,INTERIORS,2025-11-21 07:00,2025-11-24 17:00,,,2025-11-21 07:00,2025-11-24 17:00,2025-12-04 07:00,2025-12-05 17:00,20,20,0
CN.SEB31051,REMEDY - FRAME & DRYWALL (INT) - SEB3 - GL 25-28 - D LINE - L2,Complete,SEB - 3,West Support Building,SUEN-3 - 25-28,L2 - SubFab Level,DS/AD INTERIORS,CONSTRUCTION,BERG,DRYWALL,FIZ DATA CENTER,INTERIORS,2024-07-23 07:00,2024-07-31 17:00,2024-07-23 07:00,2024-08-12 17:00,2025-11-20 17:00,2025-11-20 17:00,2025-11-20 07:00,2025-11-20 07:00,0,70,100
CN.SEB3.1500,PH1 -WELD CLIPS - CLADDING STEEL - SEB3 - GL 25-28 - C LINE (DS AREA),Complete,SEB - 3,East Support Building,SUEN-3 - 25-28,EXTERIOR SKIN,,CONSTRUCTION,,INSULATED METAL PANELS,JAMES LIVELY,,2023-12-18 07:00,2023-12-19 09:00,2023-12-18 07:00,2023-12-19 09:00,2025-11-20 17:00,2025-11-20 17:00,2025-11-17 07:00,2025-11-17 07:00,0,12,100
CN.SEB3.1430,IMPACT - DS STEEL BEAM STIFFNER CONNECTION FIXES L4 GL 25-28 C-E,Complete,SEB - 3,,SUEN-3 - 25-28,DS/AD,,CONSTRUCTION,,Steel Erection,,,2023-11-20 10:00,2023-11-28 10:00,2023-11-20 10:00,2023-11-22 10:00,2025-11-20 17:00,2025-11-20 17:00,2025-06-13 08:00,2025-06-13 08:00,0,40,100
CN.SEB31121,METAL STUD FRAMING (2hr) - SEB3 - GL 25-28 - L3 - E Line,Complete,SEB - 3,West Support Building,SUEN-3 - 25-28,L3 / Waffle Slab Level,DS/AD INTERIORS,CONSTRUCTION,BERG,TBD Architectural Finishes,FIZ DATA CENTER,INTERIORS,2024-03-19 15:00,2024-03-23 11:00,2024-03-19 15:00,2024-03-21 11:00,2025-11-20 17:00,2025-11-20 17:00,2025-06-13 08:00,2025-06-13 08:00,0,16,100
CN.SEB31161,TAPE & FINISH DRYWALL - SEB3 - GL 25-28 - L3 - D LINE - L3,Complete,SEB - 3,West Support Building,SUEN-3 - 25-28,L3 / Waffle Slab Level,DS/AD INTERIORS,CONSTRUCTION,CHERRY COATING,DRYWALL,FIZ DATA CENTER,INTERIORS,2024-06-17 07:00,2024-06-21 17:00,2024-06-05 07:00,2024-06-15 17:00,2025-11-20 17:00,2025-11-20 17:00,2025-06-13 08:00,2025-06-13 08:00,0,40,100
CN.SEB31171,D/S SGP Wall Turnover - SEB3 - GL 25-28 - L3 - D LINE - L3,Complete,SEB - 3,West Support Building,SUEN-3 - 25-28,L3 / Waffle Slab Level,DS/AD INTERIORS,CONSTRUCTION,SECAI,TBD Architectural Finishes,FIZ DATA CENTER,INTERIORS,2024-09-27 07:00,2024-09-27 17:00,2024-06-18 07:00,2024-09-27 17:00,2025-11-20 17:00,2025-11-20 17:00,2025-06-13 08:00,2025-06-13 08:00,0,10,100
CN.SEB31151,DRYWALL 2 SIDE - SEB3 - GL 25-28 - L3 - D LINE - L3,Complete,SEB - 3,West Support Building,SUEN-3 - 25-28,L3 / Waffle Slab Level,DS/AD INTERIORS,CONSTRUCTION,BERG,DRYWALL,FIZ DATA CENTER,INTERIORS,2024-04-18 07:00,2024-04-23 17:00,2024-04-18 07:00,2024-05-13 17:00,2025-11-20 17:00,2025-11-20 17:00,2025-06-13 08:00,2025-06-13 08:00,0,40,100
CN.SEB31141,DRYWALL & INSULATION (1st layer) (INT) - SEB3 - GL 25-28 - L3 - D LINE,Complete,SEB - 3,West Support Building,SUEN-3 - 25-28,L3 / Waffle Slab Level,DS/AD INTERIORS,CONSTRUCTION,,DRYWALL,FIZ DATA CENTER,INTERIORS,2024-02-22 11:00,2024-02-24 15:00,2024-02-22 11:00,2024-02-24 16:00,2025-11-20 17:00,2025-11-20 17:00,2025-06-13 08:00,2025-06-13 08:00,0,24,100
CN.SEB3.6000,WATERPROOFING AT PEDASTALS - GL 24-28 - SEB3 - C-A - L4 ROOF,Complete,SEB - 3,East Support Building,SUEN-3 - 25-28,L4 - SUP Roof - FAB Roof,,CONSTRUCTION,BRAZOS,TOPPING,,SOMD / Roofing / Waterproofing,2024-07-01 07:00,2024-07-01 17:00,2024-02-09 07:00,2024-02-09 17:00,2025-11-20 17:00,2025-11-20 17:00,2025-12-05 17:00,2025-12-05 17:00,0,10,100
CN.SEB3.6010,FRP PEDASTALS - GL 24-28 - SEB3 - C-A - L4 ROOF,Complete,SEB - 3,East Support Building,SUEN-3 - 25-28,L4 - SUP Roof - FAB Roof,,CONSTRUCTION,BAKER,TOPPING,,SOMD / Roofing / Waterproofing,2024-07-02 07:00,2024-07-02 17:00,2024-02-12 07:00,2024-02-12 17:00,2025-11-20 17:00,2025-11-20 17:00,2025-12-05 17:00,2025-12-05 17:00,0,10,100
CN.SEB3.6020,STRIP PEDSTALS & WORK ON SCRUBBER PAD - SEB3 - GL 24-28 - C-A - L4 ROOF,Complete,SEB - 3,East Support Building,SUEN-3 - 25-28,L4 - SUP Roof - FAB Roof,,CONSTRUCTION,BAKER,TOPPING,,SOMD / Roofing / Waterproofing,2024-07-05 07:00,2024-07-05 17:00,2024-02-13 07:00,2024-02-13 17:00,2025-11-20 17:00,2025-11-20 17:00,2025-12-05 17:00,2025-12-05 17:00,0,10,100
CN.SEB3.6030,INSTALL PRIMER - GL 24-28 - C-A - L4 ROOF,Complete,SEB - 3,East Support Building,SUEN-3 - 25-28,L4 - SUP Roof - FAB Roof,,CONSTRUCTION,BRAZOS,TOPPING,,SOMD / Roofing / Waterproofing,2024-10-21 07:00,2024-10-21 17:00,2024-10-21 07:00,2024-10-21 17:00,2025-11-20 17:00,2025-11-20 17:00,2025-12-05 17:00,2025-12-05 17:00,0,10,100
CN.SEB3.6060,INSPECT PRIMER - GL 24-28 - C-A - L4 ROOF,Complete,SEB - 3,East Support Building,SUEN-3 - 25-28,L4 - SUP Roof - FAB Roof,,CONSTRUCTION,BRAZOS,TOPPING,,SOMD / Roofing / Waterproofing,2024-10-22 07:00,2024-10-22 17:00,2024-10-22 07:00,2024-10-22 17:00,2025-11-20 17:00,2025-11-20 17:00,2025-12-05 17:00,2025-12-05 17:00,0,10,100
CN.SEB3.6070,INSTALL BASE COAT - GL 24-28 - C-A - L4 ROOF,Complete,SEB - 3,East Support Building,SUEN-3 - 25-28,L4 - SUP Roof - FAB Roof,,CONSTRUCTION,BRAZOS,TOPPING,,SOMD / Roofing / Waterproofing,2024-10-24 07:00,2024-10-24 17:00,2024-10-24 07:00,2024-10-24 17:00,2025-11-20 17:00,2025-11-20 17:00,2025-12-05 17:00,2025-12-05 17:00,0,10,100
CN.SEB3.6090,INSPECT BASE COAT - GL 24-28 - C-A - L4 ROOF,Complete,SEB - 3,East Support Building,SUEN-3 - 25-28,L4 - SUP Roof - FAB Roof,,CONSTRUCTION,BRAZOS,TOPPING,,SOMD / Roofing / Waterproofing,2024-10-24 07:00,2024-10-24 17:00,2024-10-24 07:00,2024-10-24 17:00,2025-11-20 17:00,2025-11-20 17:00,2025-12-05 17:00,2025-12-05 17:00,0,10,100
CN.SEB3.6100,INSTALL TOP COAT - GL 24-28 - C-A - L4 ROOF,Complete,SEB - 3,East Support Building,SUEN-3 - 25-28,L4 - SUP Roof - FAB Roof,,CONSTRUCTION,BRAZOS,TOPPING,,SOMD / Roofing / Waterproofing,2024-10-25 07:00,2024-10-28 17:00,2024-10-25 07:00,2024-10-26 17:00,2025-11-20 17:00,2025-11-20 17:00,2025-12-05 17:00,2025-12-05 17:00,0,20,100
CN.SEB3.6110,INSPECT TOP COAT - GL 24-28 - C-A - L4 ROOF,Complete,SEB - 3,East Support Building,SUEN-3 - 25-28,L4 - SUP Roof - FAB Roof,,CONSTRUCTION,BRAZOS,TOPPING,,SOMD / Roofing / Waterproofing,2024-10-28 07:00,2024-10-28 17:00,2024-10-28 07:00,2024-10-28 17:00,2025-11-20 17:00,2025-11-20 17:00,2025-12-05 17:00,2025-12-05 17:00,0,10,100
CN.SEB3.6120,INSPECT TOP COAT CRICKET - GL 24-28 - C-A - L4 ROOF,Complete,SEB - 3,East Support Building,SUEN-3 - 25-28,L4 - SUP Roof - FAB Roof,,CONSTRUCTION,BRAZOS,TOPPING,,SOMD / Roofing / Waterproofing,2024-11-14 07:00,2024-11-14 17:00,2024-11-14 07:00,2024-11-14 17:00,2025-11-20 17:00,2025-11-20 17:00,2025-12-05 17:00,2025-12-05 17:00,0,10,100
CN.SEB3R.4800,GROUT & PATCH - SEB3 - GL 25-28 - L1 - C-A,Complete,SEB - 3,,SUEN-3 - 25-28,L1 - Fndn Slab,WAFER I/O RM,CONSTRUCTION,,Steel Erection,,,2024-02-01 08:00,2024-02-02 14:00,2024-02-01 08:00,2024-02-02 14:00,2025-11-20 17:00,2025-11-20 17:00,2025-11-24 07:00,2025-11-24 07:00,0,16,100
CN.SEB3R.4810,"PRIME, PATCH & TOPCOAT PRECAST BEAMS - WAFER I/O - SEB3 - GL 25-28 - C-A - L1",Not Started,SEB - 3,,SUEN-3 - 25-28,L1 - Fndn Slab,WAFER I/O RM,CONSTRUCTION,CHERRY COATING,TBD Architectural Finishes,,,2025-11-24 07:00,2025-11-25 17:00,,,2025-11-24 07:00,2025-11-25 17:00,2025-11-24 07:00,2025-11-25 17:00,20,20,0
CN.SEB3.6160,"PRIME, PATCH & TOPCOAT PRECAST BEAMS - WAFER I/O RM - SEB3 - GL 25-28 - C-A - L3",Complete,SEB - 3,,SUEN-3 - 25-28,L3 / Waffle Slab Level,WAFER I/O RM,CONSTRUCTION,CHERRY COATING,TBD Architectural Finishes,,,2024-06-17 07:00,2024-06-27 17:00,2024-06-17 07:00,2024-07-11 17:00,2025-11-20 17:00,2025-11-20 17:00,2025-12-01 07:00,2025-12-01 07:00,0,70,100
CN.SEB3.6170,DECKING AND FRP SLAB - SEB3 - GL 25-28 - L3 - C-A,Complete,SEB - 3,,SUEN-3 - 25-28,L3 / Waffle Slab Level,,CONSTRUCTION,,Decking & Detail,,,2023-11-14 13:00,2023-11-17 09:00,2023-12-07 13:00,2023-12-09 13:00,2025-11-20 17:00,2025-11-20 17:00,2025-11-21 07:00,2025-11-21 07:00,0,16,100
CN.SEB3.6180,GROUT & PATCH - SEB3 - GL 25-28 - L3 - C-A,Complete,SEB - 3,,SUEN-3 - 25-28,L3 / Waffle Slab Level,WAFER I/O RM,CONSTRUCTION,,TBD Architectural Finishes,,,2024-02-05 08:00,2024-02-06 14:00,2024-02-05 08:00,2024-02-06 14:00,2025-11-20 17:00,2025-11-20 17:00,2025-12-01 07:00,2025-12-01 07:00,0,16,100
CN.SEB3.1510,PH1- DS/AD DETAILING GL 24 - 28 - DS/AD SEB-3 L2-L3,Complete,SEB - 3,,SUEN-3 - 25-28,DS/AD,,CONSTRUCTION,,Steel Erection,,,2023-09-29 08:00,2023-10-03 08:00,2023-09-29 08:00,2023-10-03 16:00,2025-11-20 17:00,2025-11-20 17:00,2025-10-16 07:00,2025-10-16 07:00,0,40,100
CN.SEB3.1520,PH1- DS/AD FRP SLAB - DS/AD SEB-3 L6,Complete,SEB - 3,,SUEN-3 - 25-28,DS/AD,,CONSTRUCTION,,SOMD,,,2023-11-05 10:00,2023-11-07 14:00,2023-11-07 07:00,2023-11-10 17:00,2025-11-20 17:00,2025-11-20 17:00,2025-06-13 08:00,2025-06-13 08:00,0,24,100
CN.SEA5.4011,CURE FRP SLAB - SEB3 - GL 25-28 - C-E - L6,Complete,SEB - 3,,SUEN-3 - 25-28,DS/AD,,CONSTRUCTION,,SOMD,,,2023-11-10 07:00,2023-11-12 11:00,2023-11-10 07:00,2023-11-12 14:00,2025-11-20 17:00,2025-11-20 17:00,2025-06-13 08:00,2025-06-13 08:00,0,24,100
CN.SEA5.4021,PH1- DS/AD DECKING - DS/AD - SEB3 - GL 24-28 - C-E - L3,Complete,SEB - 3,,SUEN-3 - 25-28,DS/AD,,CONSTRUCTION,,Steel Erection,,,2023-11-06 09:00,2023-11-08 13:00,2023-12-01 09:00,2023-12-06 15:00,2025-11-20 17:00,2025-11-20 17:00,2025-11-26 07:00,2025-11-26 07:00,0,24,100
CN.SEB3.1540,IMPACT - INSTALL INSULATED METAL PANEL MODULES - GL 25-28 - D LINE (AD AREA) [26~27 LEFT OUT - BOTTOM CONNECTION ISSUE],Complete,SEB - 3,,SUEN-3 - 25-28,EXTERIOR SKIN,,CONSTRUCTION,KOVACH,INSULATED METAL PANELS,,,2024-06-07 07:00,2024-06-11 17:00,2024-06-05 07:00,2024-06-09 17:00,2025-11-20 17:00,2025-11-20 17:00,2025-11-21 07:00,2025-11-21 07:00,0,50,100
EMB6020,IMPACT - Missing Embeds - GL C29 - TF1-SMT-SH-2006 - TR069,Complete,SEB - 3,East Support Building,SUEN-3 - 25-28,L3 / Waffle Slab Level,,CONSTRUCTION,,Steel Erection,SEAN MONK,,2023-11-13 07:00,2023-11-14 13:00,2023-11-13 07:00,2023-11-14 13:00,2025-11-20 17:00,2025-11-20 17:00,2025-11-21 07:00,2025-11-21 07:00,0,16,100
CN.SEB3.1530,KNEE WALL -SEB3 - GL 25-28 - L4 - C-E -DS/AD,Complete,SEB - 3,,SUEN-3 - 25-28,DS/AD,,CONSTRUCTION,,Cast-in Place Concrete - Baker Concrete,,,2024-02-05 11:00,2024-02-09 13:00,2024-02-05 11:00,2024-02-08 13:00,2025-11-20 17:00,2025-11-20 17:00,2025-11-21 07:00,2025-11-21 07:00,0,32,100
CN.SEB3.1550,PH1- DS/AD FRP SLAB - SEB3 - GL 25-28  - C-E - L2,Complete,SEB - 3,,SUEN-3 - 25-28,DS/AD,,CONSTRUCTION,BAKER,SOMD,,,2024-05-23 07:00,2024-05-31 17:00,2023-12-18 07:00,2023-12-22 17:00,2025-11-20 17:00,2025-11-20 17:00,2025-10-16 07:00,2025-10-16 07:00,0,50,100
CN.SEB3.1560,IMPACT - DOWELS INSPECTION BY SECAI,Complete,SEB - 3,,SUEN-3 - 25-28,L4 - SUP Roof - FAB Roof,,CONSTRUCTION,,OAC/ MECH PADS,,,2023-11-28 07:00,2023-12-02 17:00,2023-11-28 07:00,2024-01-18 17:00,2025-11-20 17:00,2025-11-20 17:00,2025-12-05 17:00,2025-12-05 17:00,0,40,100
CN.SEA5.4051,AD STEEL PAINT FIREPROOFING IFRM - SEB3 - GL 25-28 - D-E - L2 CEILING,Complete,SEB - 3,,SUEN-3 - 25-28,DS/AD,,CONSTRUCTION,ROLLING PLAINS,Fireproofing,,,2024-07-15 07:00,2024-07-22 17:00,2024-07-15 07:00,2024-07-23 17:00,2025-11-20 17:00,2025-11-20 17:00,2025-12-05 17:00,2025-12-05 17:00,0,60,100
CN.SEB3.6190,IMPACT - BAKER DOWELS CIP - SEB3 - GL 25-28 - L4 - C-A - ROOF,Complete,SEB - 3,East Support Building,SUEN-3 - 25-28,L4 - SUP Roof - FAB Roof,,CONSTRUCTION,,OAC/ MECH PADS,JAMES LEE,SOMD / Roofing / Waterproofing,2024-02-05 15:00,2024-02-13 13:00,2024-01-19 15:00,2024-01-25 15:00,2025-11-20 17:00,2025-11-20 17:00,2025-12-05 17:00,2025-12-05 17:00,0,68,100
CN.SEB3.1570,D-LINE STEEL SPRAY FIREPROOFING SFRM2 - SEB3 - L3-CEILING - GL 25-28,Complete,SEB - 3,,SUEN-3 - 25-28,L4 - SUP Roof - FAB Roof,DS/AD INTERIORS,CONSTRUCTION,ROLLING PLAINS,Fireproofing,,,2024-04-24 07:00,2024-04-30 17:00,2024-04-24 07:00,2024-04-29 17:00,2025-11-20 17:00,2025-11-20 17:00,2025-06-13 08:00,2025-06-13 08:00,0,50,100
CN.SEB3.6200,DETAIL & INSPECT CLADDING STEEL - SEB-3 A LINE [SUP EXTERIOR WALL],Complete,SEB - 3,East Support Building,SUEN-3 - 25-28,EXTERIOR SKIN,,CONSTRUCTION,,INSULATED METAL PANELS,JAMES LIVELY,,2024-03-01 15:00,2024-03-08 17:00,2024-03-01 15:00,2024-03-07 14:00,2025-11-20 17:00,2025-11-20 17:00,2025-09-30 07:00,2025-09-30 07:00,0,72,100
CN.SEB3.6210,IMPACT - REWORK ADDED DBA's L4E AD POUR - DS/AD - SEB3 - GL 24-28 - C-E - L4 & L4/E,Complete,SEB - 3,East Support Building,SUEN-3 - 25-28,DS/AD,,CONSTRUCTION,BAKER,Decking & Detail,SEAN MONK,,2024-02-19 07:00,2024-02-21 11:00,2024-01-22 07:00,2024-01-30 17:00,2025-11-20 17:00,2025-11-20 17:00,2025-10-16 07:00,2025-10-16 07:00,0,24,100
CN.SEB55010,DCC BEAM (STEEL STRUCTURE) - SEB3 - GL25-28 - L3,Complete,SEB - 3,West Support Building,SUEN-3 - 25-28,L3 / Waffle Slab Level,DS/AD INTERIORS,CONSTRUCTION,,TBD Architectural Finishes,FIZ DATA CENTER,INTERIORS,2024-01-20 08:00,2024-01-24 08:00,2024-01-20 08:00,2024-01-24 11:00,2025-11-20 17:00,2025-11-20 17:00,2025-06-13 08:00,2025-06-13 08:00,0,40,100
CN.SEB55020,TEMPORARY SCAFFOLD PLATFORM - SEB3 - GL 25-28 - L3,Complete,SEB - 3,West Support Building,SUEN-3 - 25-28,L3 / Waffle Slab Level,DS/AD INTERIORS,CONSTRUCTION,,TBD Architectural Finishes,FIZ DATA CENTER,INTERIORS,2024-01-26 11:00,2024-01-28 15:00,2024-01-26 11:00,2024-01-29 09:00,2025-11-20 17:00,2025-11-20 17:00,2025-06-13 08:00,2025-06-13 08:00,0,24,100
CN.SEB3.6220,INSTALL INSULATED METAL PANEL MODULES - GL 26-28 - E LINE (AD AREA),Complete,SEB - 3,East Support Building,SUEN-3 - 25-28,DS/AD,,CONSTRUCTION,KOVACH,Waterproofing - Preferred,JAMES LIVELY,,2024-07-25 07:00,2024-07-26 17:00,2024-06-11 07:00,2024-06-13 17:00,2025-11-20 17:00,2025-11-20 17:00,2025-12-05 17:00,2025-12-05 17:00,0,20,100
CN.SEB55080,MEP IN WALL ROUGH INS  SEB3 - GL25-28 - L3 - D LINE,Complete,SEB - 3,West Support Building,SUEN-3 - 25-28,L3 / Waffle Slab Level,DS/AD INTERIORS,CONSTRUCTION,SECAI,TBD Architectural Finishes,FIZ DATA CENTER,INTERIORS,2024-04-15 07:00,2024-04-16 17:00,2024-04-15 07:00,2024-04-16 17:00,2025-11-20 17:00,2025-11-20 17:00,2025-06-13 08:00,2025-06-13 08:00,0,20,100
CN.SEB3.6230,Drywall Clips & AMTS Installs Support Beams - SEB3 - GL 25-28 - D LINE - L4E,Complete,SEB - 3,East Support Building,SUEN-3 - 25-28,L4 - SUP Roof - FAB Roof,DS/AD INTERIORS,CONSTRUCTION,,Waterproofing - Preferred,JAMES LIVELY,,2024-03-23 08:00,2024-03-30 10:00,2024-03-11 00:00,2024-03-21 00:00,2025-11-20 17:00,2025-11-20 17:00,2025-06-13 08:00,2025-06-13 08:00,0,72,100
CN.SEB3.6240,DS STEEL SPRAY SFRM - SEB3 - GL 25-28 - C-D - L3 CEILING,Complete,SEB - 3,East Support Building,SUEN-3 - 25-28,L4 - SUP Roof - FAB Roof,DS/AD INTERIORS,CONSTRUCTION,ROLLING PLAINS,Waterproofing - Preferred,JAMES LIVELY,,2024-05-23 07:00,2024-05-30 17:00,2024-05-23 07:00,2024-07-01 15:00,2025-11-20 17:00,2025-11-20 17:00,2025-12-05 17:00,2025-12-05 17:00,0,40,100
CN.SEB3.6250,AD STEEL APPLY INTUMESCENT - SEB3 - GL 25-28 - D-E - L3 CEILING,Complete,SEB - 3,East Support Building,SUEN-3 - 25-28,L4 - SUP Roof - FAB Roof,DS/AD INTERIORS,CONSTRUCTION,ROLLING PLAINS,Waterproofing - Preferred,JAMES LIVELY,,2024-06-14 07:00,2024-06-20 17:00,2024-06-14 07:00,2024-06-18 17:00,2025-11-20 17:00,2025-11-20 17:00,2025-06-13 08:00,2025-06-13 08:00,0,40,100
CN.SEB3.6550,DS SPRAY FIREPROOFING SFRM C-D (READY MEP DUCT) - SEB3 - GL 25-28 - D LINE - L4&L5 CEILING,Complete,SEB - 3,East Support Building,SUEN-3 - 25-28,L4 - SUP Roof - FAB Roof,DS/AD INTERIORS,CONSTRUCTION,,Fireproofing,HOON WOO,,2024-03-01 11:00,2024-03-05 11:00,2024-03-01 11:00,2024-03-05 15:00,2025-11-20 17:00,2025-11-20 17:00,2025-12-05 17:00,2025-12-05 17:00,0,40,100
CN.SEB3.6580,COLUMNS - GRINDING (P1A) - L2 - GL 26-30.6 / F.8 - G-E,Complete,SEB - 3,East Support Building,B4 - Area 11 (Gridlines 27-30),L2 - SubFab Level,,CONSTRUCTION,,Concrete Cure,JAMES LEE,,2024-01-29 07:00,2024-01-31 11:00,2024-01-24 07:00,2024-01-27 11:00,2025-11-20 17:00,2025-11-20 17:00,2025-11-24 07:00,2025-11-24 07:00,0,24,100
CN.SEB3.6590,"COLUMNS - PRIME, INTERMEDIATE COAT & TOP COAT (P1A) - L2 - GL 26-30.6 / F.8 - G",Complete,SEB - 3,East Support Building,B4 - Area 11 (Gridlines 27-30),L2 - SubFab Level,FAB EAST 27 - 31,CONSTRUCTION,,TBD Architectural Finishes,JAMES LEE,,2024-02-05 07:00,2024-02-08 11:00,2024-01-27 07:00,2024-02-07 11:00,2025-11-20 17:00,2025-11-20 17:00,2025-12-05 17:00,2025-12-05 17:00,0,24,100
CN.SEB3.6600,COLUMNS- GRINDING/SCRAPING - L2 - GL 27-30. - G-J- WEST,Complete,SEB - 3,East Support Building,B4 - Area 11 (Gridlines 27-30),L2 - SubFab Level,,CONSTRUCTION,,Concrete Cure,JAMES LEE,,2024-02-19 07:00,2024-02-28 09:00,2024-02-19 07:00,2024-04-09 17:00,2025-11-20 17:00,2025-11-20 17:00,2025-12-05 17:00,2025-12-05 17:00,0,72,100
CN.SEB3.6620,COLUMNS - GRINDING- L2 - GL 26-31 / F.6-E.3 - G-E,Complete,SEB - 3,East Support Building,B4 - Area 11 (Gridlines 27-30),L2 - SubFab Level,,CONSTRUCTION,,TBD Architectural Finishes,JAMES LEE,,2024-02-19 07:00,2024-02-27 09:00,2024-02-19 07:00,2024-02-24 15:00,2025-11-20 17:00,2025-11-20 17:00,2025-12-05 17:00,2025-12-05 17:00,0,72,100
CN.SEB3.6630,"COLUMNS - PRIME, INTERMEDIATE COAT & TOP COAT - L2 - GL 26-31 / F.6-E.3 - G-E - EAST",Complete,SEB - 3,East Support Building,B4 - Area 11 (Gridlines 27-30),L2 - SubFab Level,FAB EAST 27 - 31,CONSTRUCTION,,TBD Architectural Finishes,JAMES LEE,,2024-02-26 15:00,2024-03-06 09:00,2024-02-25 07:00,2024-04-11 17:00,2025-11-20 17:00,2025-11-20 17:00,2025-12-05 17:00,2025-12-05 17:00,0,64,100
CN.SEB3.6640,IMPACT [ST4] - WW WORKING & BLOCKING METAL STAIR INSTALLATION - STAIR #19 - 26/D - ALL LEVELS,Complete,SEB - 3,East Support Building,SUEN-3 - 25-28,INTERIOR STAIR TOWER - STAIR #19 (CLEAN ROOM) - DE-SCOPED,,CONSTRUCTION,,INSULATED METAL PANELS,JAMES LIVELY,INTERIORS,2024-02-05 07:00,2024-02-14 17:00,2024-01-28 07:00,2024-02-01 17:00,2025-11-20 17:00,2025-11-20 17:00,2025-11-21 07:00,2025-11-21 07:00,0,80,100
CN.SEA3.6720,PH1 - F/R/P/W OAC PAD AIRLOCK WALLS - SEB3 - GL 25-27 - L4,Complete,SEB - 3,East Support Building,SUEN-3 - 25-28,L4 - SUP Roof - FAB Roof,,CONSTRUCTION,BAKER,CIP WALL,CONCRETE,SOMD / Roofing / Waterproofing,2024-07-29 07:00,2024-08-02 17:00,2024-06-28 07:00,2024-07-03 17:00,2025-11-20 17:00,2025-11-20 17:00,2025-12-05 17:00,2025-12-05 17:00,0,50,100
CN.SEB3R.4820,"PRIME, PATCH & TOPCOAT PRECAST COLUMNS - WAFER I/O - SEB3 - GL 25-28 - C-A - L1",Not Started,SEB - 3,,SUEN-3 - 25-28,L1 - Fndn Slab,WAFER I/O RM,CONSTRUCTION,CHERRY COATING,TBD Architectural Finishes,,,2025-11-24 07:00,2025-11-25 17:00,,,2025-11-24 07:00,2025-11-25 17:00,2025-12-04 07:00,2025-12-05 17:00,20,20,0
CN.SEB3.6680,"PRIME, PATCH & TOPCOAT PRECAST COLUMNS - WAFER I/O RM - SEB3 - GL 25-28 - C-A - L3",Complete,SEB - 3,,SUEN-3 - 25-28,L3 / Waffle Slab Level,WAFER I/O RM,CONSTRUCTION,CHERRY COATING,TBD Architectural Finishes,,,2024-06-17 07:00,2024-06-27 17:00,2024-06-17 07:00,2024-07-11 17:00,2025-11-20 17:00,2025-11-20 17:00,2025-12-05 17:00,2025-12-05 17:00,0,70,100
CN.SEB3.6690,INSTALL BASE COAT CRICKET - GL 24-28 - C-A - L4 ROOF,Complete,SEB - 3,East Support Building,SUEN-3 - 25-28,L4 - SUP Roof - FAB Roof,,CONSTRUCTION,BRAZOS,TOPPING,,SOMD / Roofing / Waterproofing,2024-11-08 07:00,2024-11-08 17:00,2024-11-09 07:00,2024-11-09 17:00,2025-11-20 17:00,2025-11-20 17:00,2025-12-05 17:00,2025-12-05 17:00,0,10,100
CN.SEB3.6700,INSPECT BASE COAT CRICKET - GL 24-28 - C-A - L4 ROOF,Complete,SEB - 3,East Support Building,SUEN-3 - 25-28,L4 - SUP Roof - FAB Roof,,CONSTRUCTION,BRAZOS,TOPPING,,SOMD / Roofing / Waterproofing,2024-11-11 07:00,2024-11-11 17:00,2024-11-11 07:00,2024-11-11 17:00,2025-11-20 17:00,2025-11-20 17:00,2025-12-05 17:00,2025-12-05 17:00,0,10,100
CN.SEB3.6710,INSTALL TOP COAT CRICKET - GL 24-28 - C-A - L4 ROOF,Complete,SEB - 3,East Support Building,SUEN-3 - 25-28,L4 - SUP Roof - FAB Roof,,CONSTRUCTION,BRAZOS,TOPPING,,SOMD / Roofing / Waterproofing,2024-11-11 07:00,2024-11-12 17:00,2024-11-12 07:00,2024-11-13 17:00,2025-11-20 17:00,2025-11-20 17:00,2025-12-05 17:00,2025-12-05 17:00,0,20,100
CN.SEB3.6720,INSTALL CRICKET - GL 24-28 - C-A - L4 ROOF,Complete,SEB - 3,East Support Building,SUEN-3 - 25-28,L4 - SUP Roof - FAB Roof,,CONSTRUCTION,BRAZOS,TOPPING,,SOMD / Roofing / Waterproofing,2024-10-29 07:00,2024-11-01 17:00,2024-10-29 07:00,2024-11-01 17:00,2025-11-20 17:00,2025-11-20 17:00,2025-12-05 17:00,2025-12-05 17:00,0,30,100
CN.SEB3.6730,INSPECT CRICKET - GL 24-28 - C-A - L4 ROOF,Complete,SEB - 3,East Support Building,SUEN-3 - 25-28,L4 - SUP Roof - FAB Roof,,CONSTRUCTION,BRAZOS,TOPPING,,SOMD / Roofing / Waterproofing,2024-11-04 07:00,2024-11-04 17:00,2024-11-02 07:00,2024-11-02 17:00,2025-11-20 17:00,2025-11-20 17:00,2025-12-05 17:00,2025-12-05 17:00,0,10,100
CN.SEB3.6740,INSTALL PRIMER CRICKET - GL 24-28 - C-A - L4 ROOF,Complete,SEB - 3,East Support Building,SUEN-3 - 25-28,L4 - SUP Roof - FAB Roof,,CONSTRUCTION,BRAZOS,TOPPING,,SOMD / Roofing / Waterproofing,2024-11-04 07:00,2024-11-04 17:00,2024-11-04 07:00,2024-11-05 17:00,2025-11-20 17:00,2025-11-20 17:00,2025-12-05 17:00,2025-12-05 17:00,0,10,100
CN.SEB3.6750,INSPECT PRIMER CRICKET - GL 24-28 - C-A - L4 ROOF,Complete,SEB - 3,East Support Building,SUEN-3 - 25-28,L4 - SUP Roof - FAB Roof,,CONSTRUCTION,BRAZOS,TOPPING,,SOMD / Roofing / Waterproofing,2024-11-05 07:00,2024-11-05 17:00,2024-11-05 07:00,2024-11-05 17:00,2025-11-20 17:00,2025-11-20 17:00,2025-12-05 17:00,2025-12-05 17:00,0,10,100
CN.SEA3.6950,PH1 - WATERPROOFING/INSPECT OAC PAD AIRLOCK WALLS - SEB3 - GL 25-27 - L4,Complete,SEB - 3,East Support Building,SUEN-3 - 25-28,L4 - SUP Roof - FAB Roof,,CONSTRUCTION,BRAZOS,CIP WALL,CONCRETE,SOMD / Roofing / Waterproofing,2024-07-19 07:00,2024-07-26 17:00,2024-06-25 07:00,2024-06-27 17:00,2025-11-20 17:00,2025-11-20 17:00,2025-12-05 17:00,2025-12-05 17:00,0,60,100
CN.SEB3.6760,IMPACT - D-LINE STEEL SPRAY FIREPROOFING SFRM2 - SEB3 - L3-CEILING - GL 25-28- INSPECT SURFACE PREP ADDITIONAL STEEL,Complete,SEB - 3,,SUEN-3 - 25-28,L4 - SUP Roof - FAB Roof,DS/AD INTERIORS,CONSTRUCTION,ROLLING PLAINS,Fireproofing,,,2024-04-25 07:00,2024-05-03 17:00,2024-04-25 07:00,2024-04-30 17:00,2025-11-20 17:00,2025-11-20 17:00,2025-06-13 08:00,2025-06-13 08:00,0,60,100
CN.SEB3.6770,IMPACT - INSPECT & SURFACE PREP ADDITIONAL AD STEEL FOR INTUMESCENT - SEB3 - GL 25-28 - D-E - L3 CEILING,Complete,SEB - 3,East Support Building,SUEN-3 - 25-28,L4 - SUP Roof - FAB Roof,DS/AD INTERIORS,CONSTRUCTION,ROLLING PLAINS,Waterproofing - Preferred,JAMES LIVELY,,2024-05-14 07:00,2024-05-28 17:00,2024-05-14 07:00,2024-05-23 17:00,2025-11-20 17:00,2025-11-20 17:00,2025-06-13 08:00,2025-06-13 08:00,0,80,100
CN.SEB3.6780,INSTALL FRAMING FOR IMP - GL 25-28 - E LINE (AD AREA),Complete,SEB - 3,East Support Building,SUEN-3 - 25-28,DS/AD,,CONSTRUCTION,BERG,Waterproofing - Preferred,JAMES LIVELY,,2024-05-06 07:00,2024-05-07 17:00,2024-05-06 07:00,2024-05-14 17:00,2025-11-20 17:00,2025-11-20 17:00,2025-11-21 07:00,2025-11-21 07:00,0,20,100
CN.SEB3.6790,IMPACT - SECAI MEP AND IRON WORK INTERFERANCE [F56] [F58] - SEB3 - GL 25-28 - C-D - L3 CEILING,Complete,SEB - 3,East Support Building,SUEN-3 - 25-28,L4 - SUP Roof - FAB Roof,DS/AD INTERIORS,CONSTRUCTION,ROLLING PLAINS,Waterproofing - Preferred,JAMES LIVELY,,2024-05-16 07:00,2024-05-21 17:00,2024-05-07 07:00,2024-05-21 17:00,2025-11-20 17:00,2025-11-20 17:00,2025-12-05 17:00,2025-12-05 17:00,0,40,100
CN.SEB3.6800,REMAINING FRAMING AND 1ST LAYER DRYWALL EXTERIOR install & inspect - STAIR #19 - 26/D - ALL LEVELS(),Complete,SEB - 3,East Support Building,SUEN-3 - 25-28,INTERIOR STAIR TOWER - STAIR #19 (CLEAN ROOM) - DE-SCOPED,,CONSTRUCTION,BERG,INSULATED METAL PANELS,JAMES LIVELY,INTERIORS,2025-08-29 07:00,2025-09-02 17:00,2025-06-27 07:00,2025-06-27 17:00,2025-11-20 17:00,2025-11-20 17:00,2025-12-03 07:00,2025-12-03 07:00,0,30,100
CN.SEB3.6820,CURE TOPPING SLAB - GL 26-28 - C-A - L4 ROOF,Complete,SEB - 3,East Support Building,SUEN-3 - 25-28,L4 - SUP Roof - FAB Roof,,CONSTRUCTION,BAKER,TOPPING,JAMES LIVELY,,2024-11-19 07:00,2024-11-22 17:00,2024-11-19 07:00,2024-11-22 17:00,2025-11-20 17:00,2025-11-20 17:00,2025-12-05 17:00,2025-12-05 17:00,0,30,100
CN.SEB3.6870,INSTALL INSULATED METAL PANEL MODULES - GL 26-27 - D LINE (AD AREA),Complete,SEB - 3,,SUEN-3 - 25-28,EXTERIOR SKIN,,CONSTRUCTION,KOVACH,INSULATED METAL PANELS,,,2024-06-29 07:00,2024-07-01 17:00,2024-06-21 07:00,2024-06-25 17:00,2025-11-20 17:00,2025-11-20 17:00,2025-12-05 17:00,2025-12-05 17:00,0,30,100
CN.SEB55120,IMPACT - SECAI PRIORITIES CHANGED TO START GL 24- SOUTH - SEB3 - GL 25-28 - D LINE - L2,Complete,SEB - 3,West Support Building,SUEN-5 - 31-33,L2 - SubFab Level,DS/AD INTERIORS,CONSTRUCTION,BERG,DRYWALL,FIZ DATA CENTER,INTERIORS,2024-06-03 07:00,2024-06-10 17:00,2024-06-03 07:00,2024-06-11 17:00,2025-11-20 17:00,2025-11-20 17:00,2025-11-20 07:00,2025-11-20 07:00,0,50,100
CN.SEA5.9935,CURE - AD STEEL PAINT FIREPROOFING IFRM - SEB3 - GL 25-28 - C-E - L2 CEILING,Complete,SEB - 3,,SUEN-3 - 25-28,DS/AD,,CONSTRUCTION,ROLLING PLAINS,Fireproofing,,,2024-07-23 07:00,2024-08-11 17:00,2024-07-23 07:00,2024-08-08 17:00,2025-11-20 17:00,2025-11-20 17:00,2025-12-05 17:00,2025-12-05 17:00,0,180,100
CN.SEB3R.4840,INSTALL WALL PROTECTION - T/L MAINTENANCE ROOM - GL 27-28 - C-D - L2,Not Started,SEB - 3,East Support Building,SUEN-3 - 25-28,L2 - SubFab Level,DS/AD INTERIORS,CONSTRUCTION,BERNCO,TBD Architectural Finishes,JAMES LEE,INTERIORS,2025-11-21 07:00,2025-11-25 17:00,,,2025-11-21 07:00,2025-11-25 17:00,2025-12-03 07:00,2025-12-05 17:00,30,30,0
CN.SEB3R.4850,INSTALL WALL PROTECTION - STAIR 19 - GL 25-26 - C-D - L3,Not Started,SEB - 3,East Support Building,SUEN-3 - 25-28,L3 / Waffle Slab Level,DS/AD INTERIORS,CONSTRUCTION,BERNCO,TBD Architectural Finishes,JAMES LEE,INTERIORS,2025-11-21 07:00,2025-11-25 17:00,,,2025-11-21 07:00,2025-11-25 17:00,2025-12-03 07:00,2025-12-05 17:00,30,30,0
CN.SEA5.10265,DS STEEL PAINT FIREPROOFING IFRM - SEB3 - GL 25-28 - C-D - L2 CEILING,Complete,SEB - 3,,SUEN-3 - 25-28,DS/AD,,CONSTRUCTION,ROLLING PLAINS,Fireproofing,,,2024-11-08 07:00,2024-11-18 17:00,2024-10-03 07:00,2024-10-07 17:00,2025-11-20 17:00,2025-11-20 17:00,2025-12-05 17:00,2025-12-05 17:00,0,60,100
CN.SEB3R.4860,INSTALL GOAL POSTS - 7A WAFER I/O - SEB3 - GL 25-28 - C-A - L1,Active,SEB - 3,East Support Building,SUEN-3 - 25-28,L1 - Fndn Slab,WAFER I/O RM,CONSTRUCTION,CHERRY COATING,DRYWALL,AMBER CARO,INTERIORS,2024-09-13 07:00,2024-09-20 17:00,2024-09-13 07:00,,2025-12-04 07:00,2025-12-04 07:00,2025-11-25 17:00,2025-11-25 17:00,0,50,0
CN.AB.AR.7360,REMAINING DRYWALL & FINISHES -WAFER I/O RM - SEB3 - GL 25-28 - C-A - L3,Not Started,SEB - 3,East Support Building,SUEN-3 - 25-28,L3 / Waffle Slab Level,WAFER I/O RM,CONSTRUCTION,BERG,DRYWALL,AMBER CARO,INTERIORS,2025-12-05 07:00,2025-12-11 17:00,,,2025-12-05 07:00,2025-12-11 17:00,2025-12-01 07:00,2025-12-05 17:00,50,50,0
CN.SEB3R.4870,IMPACT - SHOP DRAWINGS APPROVAL & FABRICATION - 7A WAFER I/O - SEB3 - GL 25-28 - C-A - L1,Complete,SEB - 3,East Support Building,SUEN-3 - 25-28,L1 - Fndn Slab,WAFER I/O RM,CONSTRUCTION,CHERRY COATING,DRYWALL,AMBER CARO,INTERIORS,2024-09-06 07:00,2024-10-18 17:00,2024-09-03 07:00,2024-09-12 17:00,2025-11-20 17:00,2025-11-20 17:00,2025-11-25 17:00,2025-11-25 17:00,0,250,100
CN.SEB3R.4880,IMPACT - ALUMINIUM SLIDING DOOR -SHOP DRAWINGS & FAB - GOAL POSTS - 7A WAFER I/O - SEB3 - GL 25-28 - C-A - L1,Active,SEB - 3,East Support Building,SUEN-3 - 25-28,L1 - Fndn Slab,WAFER I/O RM,CONSTRUCTION,CHERRY COATING,DRYWALL,AMBER CARO,INTERIORS,2024-09-13 07:00,2024-09-20 17:00,2024-09-13 07:00,,2025-11-21 07:00,2025-11-24 17:00,2025-11-17 07:00,2025-11-18 17:00,20,50,0
CN.SEB3.6930,IMPACT - WATERPROOFING DELAYED DUE TO MEP MATERIAL- GL 24-28 - C-A - L4 ROOF,Complete,SEB - 3,East Support Building,SUEN-3 - 25-28,L4 - SUP Roof - FAB Roof,,CONSTRUCTION,BRAZOS,TOPPING,,SOMD / Roofing / Waterproofing,2024-11-04 07:00,2024-11-04 17:00,2024-11-05 07:00,2024-11-09 17:00,2025-11-20 17:00,2025-11-20 17:00,2025-12-05 17:00,2025-12-05 17:00,0,10,100
CN.SEB55400,FINISH REMAINING DRYWALL & FINISHES - SEB3 - GL 25-28 - T/L MAINTAINANCE RM 23 - L2,Not Started,SEB - 3,West Support Building,SUEN-3 - 25-28,L2 - SubFab Level,DS/AD INTERIORS,CONSTRUCTION,FINISH PAINT,TBD Architectural Finishes,FIZ DATA CENTER,INTERIORS,2025-11-21 07:00,2025-11-21 17:00,,,2025-11-21 07:00,2025-11-21 17:00,2025-12-05 07:00,2025-12-05 17:00,10,10,0
CN.SEB55410,IMPACT - MC DEAN CABLE TRAY IN THE WAY & SECAI DS/AD OPENING - SEB3 - GL 25-28 - T/L MAINTAINANCE RM 23 - L2,Active,SEB - 3,West Support Building,SUEN-3 - 25-28,L2 - SubFab Level,DS/AD INTERIORS,CONSTRUCTION,FINISH PAINT,TBD Architectural Finishes,FIZ DATA CENTER,INTERIORS,2024-12-02 07:00,2024-12-09 17:00,2024-12-02 07:00,,2025-11-21 07:00,2025-11-21 07:00,2025-12-04 17:00,2025-12-04 17:00,0,50,0
CN.AB.AR.8600,REMAINING DRYWALL & FINISHES -BATTERY ROOM 2 - SEB3 - GL 25-28 - C-A - L3,Complete,SEB - 3,East Support Building,SUEN-3 - 25-28,L3 / Waffle Slab Level,WAFER I/O RM,CONSTRUCTION,BERG,DRYWALL,AMBER CARO,INTERIORS,2025-09-03 07:00,2025-09-04 17:00,2025-09-03 07:00,2025-09-04 17:00,2025-11-20 17:00,2025-11-20 17:00,2025-12-05 17:00,2025-12-05 17:00,0,20,100
CN.AB.AR.8610,IMPACT - SECAI OVERHEAD MEP MATERIAL IN THE WAY -BATTERY ROOM 2 - SEB3 - GL 25-28 - C-A - L3,Complete,SEB - 3,East Support Building,SUEN-3 - 25-28,L3 / Waffle Slab Level,WAFER I/O RM,CONSTRUCTION,BERG,DRYWALL,AMBER CARO,INTERIORS,2025-01-27 07:00,2025-01-31 17:00,2025-01-25 07:00,2025-09-01 07:00,2025-11-20 17:00,2025-11-20 17:00,2025-12-05 07:00,2025-12-05 07:00,0,50,100
CN.A1.UG.1250,PH1- UNDERGROUND PLUMBING SEB4,Complete,SEB - 4,East Support Building,SUEN-4 - 28-31,L1 - Fndn Slab,,CONSTRUCTION,,Underground Plumbing - Cobb,ANDREA SOLIS,,2022-11-03 07:00,2022-11-06 17:00,2022-11-03 07:00,2022-11-08 09:00,2025-11-20 17:00,2025-11-20 17:00,2025-06-13 08:00,2025-06-13 08:00,0,40,100
CN.A1.UG.1260,PH1- UNDERGROUND ELECTRICAL SEB4,Complete,SEB - 4,East Support Building,SUEN-4 - 28-31,L1 - Fndn Slab,,CONSTRUCTION,,Underground Electrical - (By Owner),ANDREA SOLIS,,2022-11-05 08:00,2022-11-10 08:00,2022-11-05 08:00,2022-11-11 09:00,2025-11-20 17:00,2025-11-20 17:00,2025-06-13 08:00,2025-06-13 08:00,0,40,100
CN.SEB4.1000,PH1- SUP - EXCAVATE PIER CAPS - SEB4,Complete,SEB - 4,East Support Building,SUEN-4 - 28-31,L1 - Fndn Slab,,CONSTRUCTION,,Excavate CIP,ANDREA SOLIS,,2022-10-31 09:00,2022-11-03 13:00,2022-10-31 09:00,2022-11-02 13:00,2025-11-20 17:00,2025-11-20 17:00,2025-06-13 08:00,2025-06-13 08:00,0,24,100
CN.SEB4.1010,PH1-FRP GRADE BEAM - SEB4,Complete,SEB - 4,East Support Building,SUEN-4 - 28-31,L1 - Fndn Slab,,CONSTRUCTION,,Pour Concrete,ANDREA SOLIS,,2022-11-11 09:00,2022-11-15 09:00,2022-11-11 09:00,2022-11-17 11:00,2025-11-20 17:00,2025-11-20 17:00,2025-06-13 08:00,2025-06-13 08:00,0,40,100
CN.SEB4.1020,PH1-BLACK BASE (NOW RAT SLAB) - SEB4,Complete,SEB - 4,East Support Building,SUEN-4 - 28-31,L1 - Fndn Slab,,CONSTRUCTION,,RAT SLAB,JAMES LEE,,2023-02-20 15:00,2023-02-24 09:00,2023-01-27 13:00,2023-01-31 17:00,2025-11-20 17:00,2025-11-20 17:00,2025-06-13 08:00,2025-06-13 08:00,0,24,100
CN.SEB4.1030,PH1-CURE PIER CAPS - SEB4,Complete,SEB - 4,East Support Building,SUEN-4 - 28-31,L1 - Fndn Slab,,CONSTRUCTION,,Concrete Cure,ANDREA SOLIS,,2022-11-17 11:00,2022-11-17 11:00,2022-11-17 11:00,2022-11-17 11:00,2025-11-20 17:00,2025-11-20 17:00,2025-06-13 08:00,2025-06-13 08:00,0,0,100
CN.SEB4.1060,PH1- FRP SLAB - SEB-4-L2,Complete,SEB - 4,East Support Building,SUEN-4 - 28-31,L2 - SubFab Level,,CONSTRUCTION,,SOMD,CONCRETE,,2023-09-11 15:00,2023-09-14 11:00,2023-09-11 15:00,2023-09-14 11:00,2025-11-20 17:00,2025-11-20 17:00,2025-11-13 07:00,2025-11-13 07:00,0,16,100
CN.SEB4.1080,PH1- FRP SLAB - SEB-4-L3,Complete,SEB - 4,East Support Building,SUEN-4 - 28-31,L3 / Waffle Slab Level,,CONSTRUCTION,,SOMD,CONCRETE,,2023-09-25 07:00,2023-09-26 13:00,2023-09-19 07:00,2023-09-21 13:00,2025-11-20 17:00,2025-11-20 17:00,2025-10-16 07:00,2025-10-16 07:00,0,16,100
CN.SEB4.1110,PH1- FRP SLAB - SEB-4-ROOF,Complete,SEB - 4,East Support Building,SUEN-4 - 28-31,L4 - SUP Roof - FAB Roof,,CONSTRUCTION,,SOMD,CONCRETE,SOMD / Roofing / Waterproofing,2023-10-03 07:00,2023-10-05 11:00,2023-09-14 07:00,2023-09-18 17:00,2025-11-20 17:00,2025-11-20 17:00,2025-10-16 07:00,2025-10-16 07:00,0,24,100
CN.SEB4.1070,PH1- CURE SOMD - SEB-4-L2,Complete,SEB - 4,East Support Building,SUEN-4 - 28-31,L2 - SubFab Level,,CONSTRUCTION,,Concrete Cure,JAMES LEE,,2023-09-14 13:00,2023-09-21 09:00,2023-09-14 13:00,2023-09-16 21:00,2025-11-20 17:00,2025-11-20 17:00,2025-11-13 07:00,2025-11-13 07:00,0,56,100
CN.SEB4.1100,PH1- CURE SOMD - SEB-4-L3,Complete,SEB - 4,East Support Building,SUEN-4 - 28-31,L3 / Waffle Slab Level,,CONSTRUCTION,,Concrete Cure,JAMES LEE,,2023-09-22 07:00,2023-09-24 11:00,2023-09-21 20:44,2023-09-22 20:44,2025-11-20 17:00,2025-11-20 17:00,2025-11-10 07:00,2025-11-10 07:00,0,24,100
CN.SEB4.1130,PH1- CURE SOMD - SEB-4-ROOF,Complete,SEB - 4,East Support Building,SUEN-4 - 28-31,L4 - SUP Roof - FAB Roof,,CONSTRUCTION,,Concrete Cure,JAMES LEE,SOMD / Roofing / Waterproofing,2023-10-06 11:00,2023-10-08 15:00,2023-09-18 19:25,2023-09-22 00:00,2025-11-20 17:00,2025-11-20 17:00,2025-10-16 07:00,2025-10-16 07:00,0,24,100
CN.SEB4.1090,PH1- 1st FLOOR SLAB - SEB-4-L1,Complete,SEB - 4,East Support Building,SUEN-4 - 28-31,L1 - Fndn Slab,,CONSTRUCTION,,Pour Concrete,JAMES LEE,,2023-02-27 07:00,2023-03-03 17:00,2023-02-20 07:00,2023-02-23 07:00,2025-11-20 17:00,2025-11-20 17:00,2025-06-13 08:00,2025-06-13 08:00,0,40,100
CN.SEB4.1050,TIER 1 ERECT PRECAST COLUMNS & BEAMS - SEB4,Complete,SEB - 4,East Support Building,SUEN-4 - 28-31,L3 / Waffle Slab Level,,CONSTRUCTION,,"SUP EAST A,B",SEAN MONK,,2023-05-26 11:00,2023-06-03 17:00,2023-05-26 11:00,2023-06-26 15:00,2025-11-20 17:00,2025-11-20 17:00,2025-06-13 08:00,2025-06-13 08:00,0,56,100
CN.SEB4.1140,PH1-ROOF LAYER PARAPET(FRAMING & SHEATHING RIP) - SEB4 - GL 28-31 - L4 - C-A- SUP ROOF,Complete,SEB - 4,East Support Building,SUEN-4 - 28-31,L4 - SUP Roof - FAB Roof,,CONSTRUCTION,,FAB Subfab and Parapets,JAMES LIVELY,SOMD / Roofing / Waterproofing,2023-11-12 08:00,2023-11-13 14:00,2023-11-12 08:00,2023-11-13 15:00,2025-11-20 17:00,2025-11-20 17:00,2025-10-16 07:00,2025-10-16 07:00,0,16,100
CN.SEB4.1210,FRP TOPPING SLAB - GL 28-31 - C-A - L4 ROOF,Complete,SEB - 4,East Support Building,SUEN-4 - 28-31,L4 - SUP Roof - FAB Roof,,CONSTRUCTION,BAKER,TOPPING,JAMES LIVELY,,2024-12-05 07:00,2024-12-10 17:00,2024-12-05 07:00,2024-12-07 17:00,2025-11-20 17:00,2025-11-20 17:00,2025-12-05 17:00,2025-12-05 17:00,0,40,100
CN.SEB4.1170,PH1 - CLADDING STEEL INTERIOR GL 28-31 - D LINE (AD AREA),Complete,SEB - 4,East Support Building,SUEN-4 - 28-31,EXTERIOR SKIN,,CONSTRUCTION,,INSULATED METAL PANELS,JAMES LIVELY,,2024-02-26 07:00,2024-03-01 17:00,2024-02-26 07:00,2024-03-14 00:00,2025-11-20 17:00,2025-11-20 17:00,2025-11-21 07:00,2025-11-21 07:00,0,50,100
CN.SEB4.1200,INSTALL INSULATED METAL PANEL MODULES - GL 28-31 - C LINE (DS AREA),Complete,SEB - 4,East Support Building,SUEN-4 - 28-31,EXTERIOR SKIN,,CONSTRUCTION,KOVACH,INSULATED METAL PANELS,JAMES LIVELY,,2024-05-24 07:00,2024-05-28 17:00,2024-05-23 07:00,2024-05-30 17:00,2025-11-20 17:00,2025-11-20 17:00,2025-12-05 17:00,2025-12-05 17:00,0,40,100
CN.SEB4.1150,PH1 - CLADDING STEEL  - SEB-4 A LINE [SUP EXTERIOR WALL] UPTO L3,Complete,SEB - 4,East Support Building,SUEN-4 - 28-31,EXTERIOR SKIN,,CONSTRUCTION,,INSULATED METAL PANELS,JAMES LIVELY,,2023-10-30 09:00,2023-11-06 15:00,2023-10-23 09:00,2023-10-28 15:00,2025-11-20 17:00,2025-11-20 17:00,2025-09-30 07:00,2025-09-30 07:00,0,56,100
CN.SEB4.1180,INSTALL INSULATED METAL PANEL MODULES - GL 28-31 - A LINE [SUP EXTERIOR WALL],Complete,SEB - 4,East Support Building,SUEN-4 - 28-31,EXTERIOR SKIN,,CONSTRUCTION,KOVACH,INSULATED METAL PANELS,JAMES LIVELY,,2024-05-24 07:00,2024-06-02 17:00,2024-05-20 07:00,2024-05-29 17:00,2025-11-20 17:00,2025-11-20 17:00,2025-09-30 07:00,2025-09-30 07:00,0,90,100
CN.SEB4.1120,PH1- AD STEEL FRAME INSTALL - SEB-4 fab side,Complete,SEB - 4,East Support Building,SUEN-4 - 28-31,DS/AD,,CONSTRUCTION,,Steel Erection,SEAN MONK,,2023-09-05 07:00,2023-09-08 17:00,2023-09-05 07:00,2023-09-08 17:00,2025-11-20 17:00,2025-11-20 17:00,2025-06-13 08:00,2025-06-13 08:00,0,40,100
CN.AB.AR.2680,METAL STUD FRAMING (2hr) - SEB4 - GL 28-31 - L3 - C-A - WAFER I/0 ROOM,Complete,SEB - 4,East Support Building,SUEN-4 - 28-31,L3 / Waffle Slab Level,WAFER I/O RM,CONSTRUCTION,BERG,TBD Architectural Finishes,AMBER CARO,INTERIORS,2024-03-28 11:00,2024-04-03 11:00,2024-01-24 00:00,2024-01-31 00:00,2025-11-20 17:00,2025-11-20 17:00,2025-11-10 07:00,2025-11-10 07:00,0,40,100
CN.AB.AR.4080,MEP ROUGH IN & INSPECTION (by SECAI) - WAFER I/O ROOM - SEB4 - GL 28-31 - C-A - L3,Complete,SEB - 4,East Support Building,SUEN-4 - 28-31,L3 / Waffle Slab Level,WAFER I/O RM,CONSTRUCTION,SECAI,Owner & Design Team,AMBER CARO,,2024-04-22 07:00,2024-04-26 17:00,2024-04-22 07:00,2024-05-08 17:00,2025-11-20 17:00,2025-11-20 17:00,2025-12-01 07:00,2025-12-01 07:00,0,50,100
CN.AB.AR.4090,TAPE & FINISH DRYWALL - RETICLE RM  - SEB4 - GL 28-31 - C-A  - L3,Complete,SEB - 4,East Support Building,SUEN-4 - 28-31,L3 / Waffle Slab Level,RETICLE RM,CONSTRUCTION,CHERRY COATING,DRYWALL,AMBER CARO,INTERIORS,2024-08-02 07:00,2024-08-09 17:00,2024-05-01 07:00,2024-12-10 17:00,2025-11-20 17:00,2025-11-20 17:00,2025-12-05 17:00,2025-12-05 17:00,0,50,100
CN.AB.AR.4100,FINISH PAINT - WAFER I/O ROOM - SEB4 - GL 28-31 - C-A - L3,Not Started,SEB - 4,East Support Building,SUEN-4 - 28-31,L3 / Waffle Slab Level,WAFER I/O RM,CONSTRUCTION,FINISH PAINT,TBD Architectural Finishes,JAMES LEE,INTERIORS,2025-11-21 07:00,2025-11-21 17:00,,,2025-11-21 07:00,2025-11-21 17:00,2025-12-05 07:00,2025-12-05 17:00,10,10,0
CN.SEB4.1240,DS STEEL SPRAY FIREPROOFING SFRM - SEB4 - GL 28-31 - D LINE,Complete,SEB - 4,East Support Building,SUEN-4 - 28-31,L4 - SUP Roof - FAB Roof,DS/AD INTERIORS,CONSTRUCTION,ROLLING PLAINS,Fireproofing,HOON WOO,,2024-05-31 07:00,2024-06-04 17:00,2024-05-31 07:00,2024-06-04 17:00,2025-11-20 17:00,2025-11-20 17:00,2025-12-05 17:00,2025-12-05 17:00,0,30,100
CN.SEB4.1260,PH1- DECKING GL 27 - 28 - SEB-4-ROOF,Complete,SEB - 4,East Support Building,SUEN-4 - 28-31,L4 - SUP Roof - FAB Roof,,CONSTRUCTION,,Decking & Detail,SEAN MONK,SOMD / Roofing / Waterproofing,2023-08-24 07:00,2023-08-24 15:00,2023-08-24 07:00,2023-09-11 07:00,2025-11-20 17:00,2025-11-20 17:00,2025-10-16 07:00,2025-10-16 07:00,0,8,100
CN.SEB4.1270,PH1- DECKING GL 27 - 28 - SEB-4-L3,Complete,SEB - 4,East Support Building,SUEN-4 - 28-31,L3 / Waffle Slab Level,,CONSTRUCTION,,Decking & Detail,SEAN MONK,,2023-09-08 09:00,2023-09-09 15:00,2023-09-08 09:00,2023-09-09 16:00,2025-11-20 17:00,2025-11-20 17:00,2025-10-16 07:00,2025-10-16 07:00,0,16,100
CN.SEB4.1280,PH1- DECKING GL 27 - 28 - SEB-4-L2,Complete,SEB - 4,East Support Building,SUEN-4 - 28-31,L2 - SubFab Level,,CONSTRUCTION,,Decking & Detail,SEAN MONK,,2023-09-08 09:00,2023-09-09 15:00,2023-09-08 09:00,2023-09-09 16:00,2025-11-20 17:00,2025-11-20 17:00,2025-11-10 07:00,2025-11-10 07:00,0,16,100
CN.SEA3.1320,PH1-CIP WALL (DS)- SEB-4,Complete,SEB - 4,East Support Building,SUEN-4 - 28-31,L4 - SUP Roof - FAB Roof,,CONSTRUCTION,,CIP WALL,CONCRETE,SOMD / Roofing / Waterproofing,2023-10-30 07:00,2023-11-03 11:00,2023-11-04 08:00,2023-11-08 11:00,2025-11-20 17:00,2025-11-20 17:00,2025-11-17 07:00,2025-11-17 07:00,0,24,100
CN.SEB4.1340,PH1- TOPPING SLAB w TRENCH & ANGLE EMBEDS- SEB-4-L1,Complete,SEB - 4,East Support Building,SUEN-4 - 28-31,L1 - Fndn Slab,,CONSTRUCTION,,TOPPING,CONCRETE,SOMD / Roofing / Waterproofing,2023-10-03 07:00,2023-10-05 11:00,2023-10-03 07:00,2023-10-06 11:00,2025-11-20 17:00,2025-11-20 17:00,2025-11-13 07:00,2025-11-13 07:00,0,24,100
CN.SEB4.1350,PH1- DS/AD DECKING & DETAILING GL 27 - 30 SEB-4 L6,Complete,SEB - 4,East Support Building,SUEN-4 - 28-31,DS/AD,,CONSTRUCTION,,Steel Erection,SEAN MONK,,2023-10-22 13:00,2023-10-28 13:00,2023-10-22 13:00,2023-11-02 13:00,2025-11-20 17:00,2025-11-20 17:00,2025-06-13 08:00,2025-06-13 08:00,0,40,100
CN.SEB4.1360,PH1- DS/AD FRP SLAB - DS/AD - SEB4 - GL 28-31 - C-E - L4/E,Complete,SEB - 4,East Support Building,SUEN-4 - 28-31,DS/AD,,CONSTRUCTION,,SOMD,CONCRETE,,2023-12-17 15:00,2023-12-21 15:00,2023-12-17 15:00,2023-12-18 16:00,2025-11-20 17:00,2025-11-20 17:00,2025-06-13 08:00,2025-06-13 08:00,0,40,100
CN.SEB4.1370,AD WATERPROOFING - SEB4 - GL 28-31 - D-E - L4/E,Complete,SEB - 4,East Support Building,SUEN-4 - 28-31,DS/AD,,CONSTRUCTION,BRAZOS,TOPPING,JAMES LIVELY,,2024-07-15 07:00,2024-07-29 17:00,2024-07-08 07:00,2024-07-22 17:00,2025-11-20 17:00,2025-11-20 17:00,2025-11-21 07:00,2025-11-21 07:00,0,110,100
CN.SEB4.1380,AD TOPPING SLAB - SEB4 - GL 28-31 - D-E - L4/E,Complete,SEB - 4,East Support Building,SUEN-4 - 28-31,DS/AD,,CONSTRUCTION,BAKER,TOPPING,CONCRETE,,2024-08-08 07:00,2024-08-13 17:00,2024-07-23 07:00,2024-07-25 17:00,2025-11-20 17:00,2025-11-20 17:00,2025-11-21 07:00,2025-11-21 07:00,0,40,100
TIER 24.1052,TIER 2 GROUT PRECAST COLUMNS & BEAMS - SEB4,Complete,SEB - 4,East Support Building,SUEN-4 - 28-31,L4 - SUP Roof - FAB Roof,,CONSTRUCTION,,"SUP EAST A,B",SEAN MONK,,2023-08-10 09:00,2023-08-14 09:00,2023-07-30 09:00,2023-07-31 11:00,2025-11-20 17:00,2025-11-20 17:00,2025-06-13 08:00,2025-06-13 08:00,0,40,100
CN.SEB4.1390,PH1- DECKING GL 28 - 29 - SEB-4-L2,Complete,SEB - 4,East Support Building,SUEN-4 - 28-31,L2 - SubFab Level,,CONSTRUCTION,,Decking & Detail,SEAN MONK,,2023-09-09 08:00,2023-09-10 14:00,2023-09-09 08:00,2023-09-10 16:00,2025-11-20 17:00,2025-11-20 17:00,2025-11-13 07:00,2025-11-13 07:00,0,16,100
CN.SEB4.1400,PH1- DECKING GL 29 - 30 - SEB-4-L2,Complete,SEB - 4,East Support Building,SUEN-4 - 28-31,L2 - SubFab Level,,CONSTRUCTION,,Decking & Detail,SEAN MONK,,2023-09-10 08:00,2023-09-11 14:00,2023-09-10 08:00,2023-09-11 15:00,2025-11-20 17:00,2025-11-20 17:00,2025-11-13 07:00,2025-11-13 07:00,0,16,100
CN.SEB4.1410,PH1- DECKING GL 28 - 29 - SEB-4-L3,Complete,SEB - 4,East Support Building,SUEN-4 - 28-31,L3 / Waffle Slab Level,,CONSTRUCTION,,Decking & Detail,SEAN MONK,,2023-09-06 13:00,2023-09-08 09:00,2023-09-06 13:00,2023-09-08 09:00,2025-11-20 17:00,2025-11-20 17:00,2025-10-16 07:00,2025-10-16 07:00,0,16,100
CN.SEB4.1420,PH1- DECKING GL 29 - 30 - SEB-4-L3,Complete,SEB - 4,East Support Building,SUEN-4 - 28-31,L3 / Waffle Slab Level,,CONSTRUCTION,,Decking & Detail,SEAN MONK,,2023-09-05 07:00,2023-09-06 13:00,2023-09-05 07:00,2023-09-06 13:00,2025-11-20 17:00,2025-11-20 17:00,2025-10-16 07:00,2025-10-16 07:00,0,16,100
CN.SEB4.1430,PH1- DECKING GL 28 - 29 - SEB-4-ROOF,Complete,SEB - 4,East Support Building,SUEN-4 - 28-31,L4 - SUP Roof - FAB Roof,,CONSTRUCTION,,Decking & Detail,SEAN MONK,SOMD / Roofing / Waterproofing,2023-08-24 08:00,2023-08-25 14:00,2023-08-24 08:00,2023-09-12 07:00,2025-11-20 17:00,2025-11-20 17:00,2025-10-16 07:00,2025-10-16 07:00,0,16,100
CN.SEB4.1440,PH1- DECKING GL 29 - 30 - SEB-4-ROOF,Complete,SEB - 4,East Support Building,SUEN-4 - 28-31,L4 - SUP Roof - FAB Roof,,CONSTRUCTION,,Decking & Detail,SEAN MONK,SOMD / Roofing / Waterproofing,2023-08-25 15:00,2023-08-26 13:00,2023-08-25 15:00,2023-09-13 15:00,2025-11-20 17:00,2025-11-20 17:00,2025-10-16 07:00,2025-10-16 07:00,0,8,100
CN.SEB4.1450,PH1- DS/AD DETAILING & DECKING  - SEB4 - GL 27-30 - C-E - DS/AD L4 & L4/E,Complete,SEB - 4,East Support Building,SUEN-4 - 28-31,DS/AD,,CONSTRUCTION,,Decking & Detail,SEAN MONK,,2023-12-11 07:00,2023-12-16 15:00,2023-12-11 07:00,2023-12-16 16:00,2025-11-20 17:00,2025-11-20 17:00,2025-06-13 08:00,2025-06-13 08:00,0,48,100
CN.AB.AR.4400,DRYWALL 2 SIDE - RETICLE RM - SEB4 - GL 28-31 - C-A - L3,Complete,SEB - 4,East Support Building,SUEN-4 - 28-31,L3 / Waffle Slab Level,RETICLE RM,CONSTRUCTION,BERG,DRYWALL,AMBER CARO,INTERIORS,2024-04-30 07:00,2024-05-10 17:00,2024-04-30 07:00,2024-08-01 17:00,2025-11-20 17:00,2025-11-20 17:00,2025-12-01 07:00,2025-12-01 07:00,0,70,100
CN.AB.AR.4410,DRYWALL & INSULATION (1 side) (INT) - RETICLE RM - SEB4 - GL 28-31 - C-A - L3,Complete,SEB - 4,East Support Building,SUEN-4 - 28-31,L3 / Waffle Slab Level,RETICLE RM,CONSTRUCTION,BERG,DRYWALL,AMBER CARO,INTERIORS,2024-04-08 07:00,2024-04-15 17:00,2024-02-01 07:00,2024-07-23 17:00,2025-11-20 17:00,2025-11-20 17:00,2025-12-01 07:00,2025-12-01 07:00,0,40,100
CN.SEB4.1470,PH1- DS STEEL FRAME INSTALL - SEB-4 Comeback Sup Side,Complete,SEB - 4,East Support Building,SUEN-4 - 28-31,DS/AD,,CONSTRUCTION,,Steel Erection,SEAN MONK,,2023-09-19 13:00,2023-09-23 15:00,2023-09-11 13:00,2023-09-15 16:00,2025-11-20 17:00,2025-11-20 17:00,2025-06-13 08:00,2025-06-13 08:00,0,32,100
CN.SEB4.1480,PH1- EXTERIOR CURBS - SEB-4-L1,Complete,SEB - 4,East Support Building,SUEN-4 - 28-31,L1 - Fndn Slab,,CONSTRUCTION,,Pour Concrete,JAMES LEE,SOMD / Roofing / Waterproofing,2023-09-26 07:00,2023-10-01 15:00,2023-09-26 07:00,2023-10-02 17:00,2025-11-20 17:00,2025-11-20 17:00,2025-09-30 07:00,2025-09-30 07:00,0,48,100
CN.SEB4.1490,PH1- MEP PADS - SEB-4-L1 - PR RM,Complete,SEB - 4,East Support Building,SUEN-4 - 28-31,L1 - Fndn Slab,,CONSTRUCTION,,Pour Concrete,JAMES LEE,SOMD / Roofing / Waterproofing,2023-10-30 07:00,2023-11-05 15:00,2023-10-08 08:00,2023-10-11 17:00,2025-11-20 17:00,2025-11-20 17:00,2025-11-13 07:00,2025-11-13 07:00,0,48,100
CN.SEB4.2410,METAL STUD FRAMING (2hr) - SEB4 - GL 28-31 - L1 C-A - PR RM,Complete,SEB - 4,East Support Building,SUEN-4 - 28-31,L1 - Fndn Slab,PR RM,CONSTRUCTION,BERG,TBD Architectural Finishes,AMBER CARO,INTERIORS,2023-12-04 07:00,2023-12-09 15:00,2023-12-04 07:00,2023-12-29 13:00,2025-11-20 17:00,2025-11-20 17:00,2025-11-13 07:00,2025-11-13 07:00,0,48,100
CN.SEB4.3870,MEP ROUGH IN & INSPECTION (by SECAI) - SEB4 - GL 28-31 - L1 C-A PR RM,Complete,SEB - 4,East Support Building,SUEN-4 - 28-31,L1 - Fndn Slab,PR RM,CONSTRUCTION,,Owner & Design Team,AMBER CARO,,2024-01-02 09:00,2024-01-07 08:00,2024-01-02 07:00,2024-01-07 10:00,2025-11-20 17:00,2025-11-20 17:00,2025-12-01 07:00,2025-12-01 07:00,0,40,100
CN.SEB4.3880,TAPE & FINISH DRYWALL - SEB4 - GL 28-31 - L1 C-A  PR RM,Complete,SEB - 4,East Support Building,SUEN-4 - 28-31,L1 - Fndn Slab,PR RM,CONSTRUCTION,,DRYWALL,AMBER CARO,INTERIORS,2024-01-26 07:00,2024-01-29 17:00,2024-01-18 07:00,2024-01-20 11:00,2025-11-20 17:00,2025-11-20 17:00,2025-12-01 07:00,2025-12-01 07:00,0,40,100
CN.SEB4.3890,FINISH PAINT - PR ROOM - SEB4 - GL 28-31 - C-A - L1,Not Started,SEB - 4,East Support Building,SUEN-4 - 28-31,L1 - Fndn Slab,PR RM,CONSTRUCTION,FINISH PAINT,TBD Architectural Finishes,JAMES LEE,INTERIORS,2025-12-11 07:00,2025-12-16 17:00,,,2025-12-11 07:00,2025-12-16 17:00,2025-12-01 07:00,2025-12-04 17:00,40,40,0
CN.SEB41241,INSTALL ELEVATOR STEEL - SEB4 - GL 28-31 - ALL LEVELS C-A -ELEVATOR 19,Complete,SEB - 4,East Support Building,SUEN-4 - 28-31,,ELEVATOR,CONSTRUCTION,W&W,TBD Architectural Finishes,JAMES LIVELY,INTERIORS,2024-09-16 07:00,2024-10-21 17:00,2024-08-30 07:00,2024-10-08 17:00,2025-11-20 17:00,2025-11-20 17:00,2025-12-02 07:00,2025-12-02 07:00,0,210,100
CN.SEB4.4340,DRYWALL 2 SIDE - SEB4 - GL 28-31 - L1 C-A PR RM,Complete,SEB - 4,East Support Building,SUEN-4 - 28-31,L1 - Fndn Slab,PR RM,CONSTRUCTION,,DRYWALL,AMBER CARO,INTERIORS,2024-01-22 07:00,2024-01-25 17:00,2024-01-15 07:00,2024-01-17 17:00,2025-11-20 17:00,2025-11-20 17:00,2025-12-01 07:00,2025-12-01 07:00,0,40,100
CN.SEB4.4350,DRYWALL & INSULATION (1 side) (INT) - SEB4 - GL 28-31 - L1 C-A PR RM,Complete,SEB - 4,East Support Building,SUEN-4 - 28-31,L1 - Fndn Slab,PR RM,CONSTRUCTION,,DRYWALL,AMBER CARO,INTERIORS,2024-01-07 10:00,2024-01-13 12:00,2024-01-07 10:00,2024-01-11 11:00,2025-11-20 17:00,2025-11-20 17:00,2025-12-01 07:00,2025-12-01 07:00,0,40,100
CN.SEB4.4680,FLOOR STRIPING PAINT - PR ROOM - SEB4 - GL 28-31 - C-A - L1,Not Started,SEB - 4,East Support Building,SUEN-4 - 28-31,L1 - Fndn Slab,PR RM,CONSTRUCTION,FLOOR STRIPING PAINT,TBD Architectural Finishes,JAMES LEE,INTERIORS,2025-12-17 07:00,2025-12-17 17:00,,,2025-12-17 07:00,2025-12-17 17:00,2025-12-05 07:00,2025-12-05 17:00,10,10,0
CN.SEB44810,MEP ROUGH IN & INSPECTION (BY SECAI) - ELECTRICAL ROOM 3 NORTH - SEB4 - GL 28-31 - C-A - L2,Complete,SEB - 4,East Support Building,SUEN-4 - 28-31,L2 - SubFab Level,Electric RM 3,CONSTRUCTION,SECAI,TBD Architectural Finishes,AMBER CARO,,2024-08-01 07:00,2024-08-08 17:00,2024-08-01 07:00,2024-08-06 17:00,2025-11-20 17:00,2025-11-20 17:00,2025-11-25 07:00,2025-11-25 07:00,0,50,100
CN.SEB44840,TAPE & FINISH DRYWALL - ELECTRICAL ROOM 3 NORTH - SEB4 - GL 28-31 - C-A - L2,Complete,SEB - 4,East Support Building,SUEN-4 - 28-31,L2 - SubFab Level,Electric RM 3,CONSTRUCTION,CHERRY COATING,DRYWALL,AMBER CARO,INTERIORS,2025-06-16 07:00,2025-06-20 17:00,2025-06-16 07:00,2025-06-20 17:00,2025-11-20 17:00,2025-11-20 17:00,2025-11-25 07:00,2025-11-25 07:00,0,50,100
CN.SEB44880,INSTALL WALL PROTECTION - ELEVATOR 19 - GL 28-29 - C-D - L2,Not Started,SEB - 4,East Support Building,SUEN-4 - 28-31,L2 - SubFab Level,DS/AD INTERIORS,CONSTRUCTION,BERNCO,TBD Architectural Finishes,JAMES LEE,INTERIORS,2025-11-21 07:00,2025-11-25 17:00,,,2025-11-21 07:00,2025-11-25 17:00,2025-12-03 07:00,2025-12-05 17:00,30,30,0
CN.SEB44860,FINISH PAINT - ELECTRICAL ROOM 3 NORTH - SEB4 - GL 28-31 - C-A - L2,Not Started,SEB - 4,East Support Building,SUEN-4 - 28-31,L2 - SubFab Level,Electric RM 3,CONSTRUCTION,FINISH PAINT,TBD Architectural Finishes,JAMES LEE,INTERIORS,2025-11-21 07:00,2025-11-25 17:00,,,2025-11-21 07:00,2025-11-25 17:00,2025-11-25 07:00,2025-12-01 17:00,30,30,0
CN.SEB44830,DRYWALL 2 SIDE - ELECTRICAL ROOM 3 NORTH - SEB4 - GL C-D/ 27-30 - C-A - L2,Complete,SEB - 4,East Support Building,SUEN-4 - 28-31,L2 - SubFab Level,Electric RM 3,CONSTRUCTION,BERG,DRYWALL,AMBER CARO,INTERIORS,2025-06-10 07:00,2025-06-16 17:00,2025-06-10 07:00,2025-06-16 17:00,2025-11-20 17:00,2025-11-20 17:00,2025-11-25 07:00,2025-11-25 07:00,0,50,100
CN.SEB44820,DRYWALL & INSULATION (1 side) - SEB4 - GL 28-31 - L2 C-A ELECTRICAL ROOM 3 NORTH [LEAVEOUT FOR REMEDITATION],Complete,SEB - 4,East Support Building,SUEN-4 - 28-31,L2 - SubFab Level,Electric RM 3,CONSTRUCTION,,DRYWALL,AMBER CARO,INTERIORS,2024-03-28 09:00,2024-04-03 09:00,2024-03-18 07:00,2024-04-12 17:00,2025-11-20 17:00,2025-11-20 17:00,2025-11-25 07:00,2025-11-25 07:00,0,40,100
CN.SEB44890,FLOOR STRIPING - ELECTRICAL ROOM 3 NORTH - SEB4 - GL 28-31 - C-A - L2,Not Started,SEB - 4,East Support Building,SUEN-4 - 28-31,L2 - SubFab Level,Electric RM 3,CONSTRUCTION,FLOOR STRIPING PAINT,TBD Architectural Finishes,JAMES LEE,INTERIORS,2025-11-26 07:00,2025-12-03 17:00,,,2025-11-26 07:00,2025-12-03 17:00,2025-12-02 07:00,2025-12-05 17:00,40,40,0
CN.SEB4190,PH1- INSTALL ELEVATOR STEEL - ELEVATOR 01,Complete,SEB - 4,East Support Building,FIZ 2 / SUWS 5  (GL6-1) - GL J - N - DATA CENTER 1,,ELEVATOR,CONSTRUCTION,W&W,TBD Architectural Finishes,AMBER CARO,INTERIORS,2024-07-01 07:00,2024-08-01 17:00,2024-05-23 07:00,2025-05-19 17:00,2025-11-20 17:00,2025-11-20 17:00,2025-12-01 07:00,2025-12-01 07:00,0,210,100
CN.SEB4.190,PH1- INSTALL ELEVATOR STEEL - ELEVATOR 01B [WORK STOPPED FOR REDESIGN],Complete,SEB - 4,East Support Building,FIZ 2 / SUWS 5  (GL6-1) - GL J - N - DATA CENTER 1,,ELEVATOR,CONSTRUCTION,W&W,TBD Architectural Finishes,AMBER CARO,INTERIORS,2024-07-15 07:00,2024-08-13 17:00,2024-06-17 07:00,2024-06-25 17:00,2025-11-20 17:00,2025-11-20 17:00,2025-12-01 07:00,2025-12-01 07:00,0,210,100
CN.SEB4.1500,IMPACT - DRB-01 ADDITIONAL BEAMS BETWEEN FAB AND AD GL 28 - 31 ROOF,Complete,SEB - 4,,SUEN-4 - 28-31,DS/AD,,CONSTRUCTION,,Steel Erection,,,2023-10-30 07:00,2023-11-02 13:00,2023-10-30 07:00,2023-11-02 13:00,2025-11-20 17:00,2025-11-20 17:00,2025-06-13 08:00,2025-06-13 08:00,0,16,100
CN.SEB4.4690,PH1 - CLADDING STEEL  EXTERIOR - SEB4 - GL 28-31 - C LINE  (DS AREA) (27~30),Complete,SEB - 4,East Support Building,SUEN-4 - 28-31,EXTERIOR SKIN,,CONSTRUCTION,,INSULATED METAL PANELS,JAMES LIVELY,,2024-02-20 08:00,2024-02-29 10:00,2024-02-16 08:00,2024-02-25 14:00,2025-11-20 17:00,2025-11-20 17:00,2025-11-17 07:00,2025-11-17 07:00,0,72,100
EMB1005,IMPACT - Missing Precast Embeds GL C-29 East Face Level 2P TR083 SEQ 5401,Complete,SEB - 4,East Support Building,SUEN-4 - 28-31,L2 - SubFab Level,,CONSTRUCTION,,Steel Erection,SEAN MONK,,2023-10-30 07:00,2023-11-02 13:00,2023-09-13 07:00,2023-09-16 13:00,2025-11-20 17:00,2025-11-20 17:00,2025-10-16 07:00,2025-10-16 07:00,0,16,100
EMB6000,IMPACT - Missing Precast Embeds B-29 East Face and West Face Level 2P SEQ 5401,Complete,SEB - 4,East Support Building,SUEN-4 - 28-31,L2 - SubFab Level,,CONSTRUCTION,,Steel Erection,SEAN MONK,,2023-09-16 08:00,2023-09-17 14:00,2023-09-09 08:00,2023-09-10 16:00,2025-11-20 17:00,2025-11-20 17:00,2025-10-16 07:00,2025-10-16 07:00,0,16,100
CN.SEB4.4700,PH1- DS/AD DECKING GL 27 - 30 DS/AD SEB-4 L2,Complete,SEB - 4,East Support Building,SUEN-4 - 28-31,DS/AD,,CONSTRUCTION,,Steel Erection,SEAN MONK,,2023-10-16 07:00,2023-10-22 11:00,2023-10-16 07:00,2023-10-22 09:00,2025-11-20 17:00,2025-11-20 17:00,2025-11-13 07:00,2025-11-13 07:00,0,64,100
CN.SEB4.4710,PH1- DS/AD FRP SLAB - SEB-4 L2,Complete,SEB - 4,East Support Building,SUEN-4 - 28-31,DS/AD,,CONSTRUCTION,,SOMD,CONCRETE,,2023-11-06 09:00,2023-11-10 09:00,2023-10-27 09:00,2023-10-28 09:00,2025-11-20 17:00,2025-11-20 17:00,2025-11-20 07:00,2025-11-20 07:00,0,40,100
CN.SEB4.4720,DS/AD STEEL SPRAY FIREPROOFING SFRM - SEB4 - GL 28-31 - C-E L1 CEILING,Complete,SEB - 4,East Support Building,SUEN-4 - 28-31,DS/AD,,CONSTRUCTION,,Fireproofing,HOON WOO,,2023-11-13 07:00,2023-11-18 15:00,2023-11-13 07:00,2023-11-17 11:00,2025-11-20 17:00,2025-11-20 17:00,2025-11-20 07:00,2025-11-20 07:00,0,48,100
CN.SEB4.1001,METAL STUD FRAMING (2hr) - SEB4 - GL 28-31 - L1 D LINE,Complete,SEB - 4,West Support Building,SUEN-4 - 28-31,L1 - Fndn Slab,DS/AD INTERIORS,CONSTRUCTION,BERG,TBD Architectural Finishes,FIZ DATA CENTER,INTERIORS,2023-11-08 07:00,2023-11-10 11:00,2023-11-08 07:00,2023-11-10 11:00,2025-11-20 17:00,2025-11-20 17:00,2025-11-13 07:00,2025-11-13 07:00,0,24,100
CN.SEB4.1081,TAPE & FINISH DRYWALL - SEB4 - GL 28-31 - L1 D LINE,Complete,SEB - 4,West Support Building,SUEN-4 - 28-31,L1 - Fndn Slab,DS/AD INTERIORS,CONSTRUCTION,,DRYWALL,FIZ DATA CENTER,INTERIORS,2024-02-09 08:00,2024-02-13 08:00,2024-02-09 08:00,2024-03-07 00:00,2025-11-20 17:00,2025-11-20 17:00,2025-12-01 17:00,2025-12-01 17:00,0,40,100
CN.SEB4.1101,PRIMER & PAINT DRYWALL -  GL 28-31 - D LINE - L1,Not Started,SEB - 4,West Support Building,SUEN-4 - 28-31,L1 - Fndn Slab,DS/AD INTERIORS,CONSTRUCTION,FINISH PAINT,TBD Architectural Finishes,,INTERIORS,2025-11-21 07:00,2025-11-21 17:00,,,2025-11-21 07:00,2025-11-21 17:00,2025-12-01 17:00,2025-12-02 17:00,10,10,0
CN.SEB4.1061,DRYWALL 2 SIDE- SEB4 - SEB4 - GL 28-31 - L1 D LINE,Complete,SEB - 4,West Support Building,SUEN-4 - 28-31,L1 - Fndn Slab,DS/AD INTERIORS,CONSTRUCTION,,DRYWALL,FIZ DATA CENTER,INTERIORS,2024-02-08 07:00,2024-02-11 17:00,2024-02-01 07:00,2024-02-03 11:00,2025-11-20 17:00,2025-11-20 17:00,2025-12-01 17:00,2025-12-01 17:00,0,40,100
CN.SEB4.1041,DRYWALL & INSULATION (1 side) (INT) - SEB4 - GL 28-31 - L1 D LINE(Waiting On Stair Install),Complete,SEB - 4,West Support Building,SUEN-4 - 28-31,L1 - Fndn Slab,DS/AD INTERIORS,CONSTRUCTION,,DRYWALL,FIZ DATA CENTER,INTERIORS,2023-12-11 07:00,2023-12-14 11:00,2023-12-11 07:00,2023-12-14 11:00,2025-11-20 17:00,2025-11-20 17:00,2025-12-01 17:00,2025-12-01 17:00,0,24,100
CN.SEB4.1011,REMEDY - DEMO DRYWALL (2hr) - SEB4 - GL 28-31 - D LINE - L2,Complete,SEB - 4,West Support Building,SUEN-4 - 28-31,L2 - SubFab Level,DS/AD INTERIORS,CONSTRUCTION,BERG,TBD Architectural Finishes,FIZ DATA CENTER,INTERIORS,2024-06-10 07:00,2024-06-18 17:00,2024-05-23 07:00,2024-05-28 17:00,2025-11-20 17:00,2025-11-20 17:00,2025-11-20 07:00,2025-11-20 07:00,0,60,100
CN.SEB4.1091,REMEDY - TAPE & FINISH DRYWALL - SEB4 - GL 28-31 - D LINE - L2,Complete,SEB - 4,West Support Building,SUEN-4 - 28-31,L2 - SubFab Level,DS/AD INTERIORS,CONSTRUCTION,CHERRY COATING,DRYWALL,FIZ DATA CENTER,INTERIORS,2024-08-23 07:00,2024-08-27 17:00,2024-08-16 07:00,2024-08-19 17:00,2025-11-20 17:00,2025-11-20 17:00,2025-11-24 07:00,2025-11-24 07:00,0,30,100
CN.SEB4.1111,FINISH PAINT - SEB4 - GL 28-31 - D LINE - L2,Not Started,SEB - 4,West Support Building,SUEN-4 - 28-31,L2 - SubFab Level,DS/AD INTERIORS,CONSTRUCTION,FINISH PAINT,TBD Architectural Finishes,FIZ DATA CENTER,INTERIORS,2025-11-21 07:00,2025-11-24 17:00,,,2025-11-21 07:00,2025-11-24 17:00,2025-12-04 07:00,2025-12-05 17:00,20,20,0
CN.SEB4.1051,REMEDY - FRAME & DRYWALL (INT) - SEB4 - GL 28-31 - D LINE - L2,Complete,SEB - 4,West Support Building,SUEN-4 - 28-31,L2 - SubFab Level,DS/AD INTERIORS,CONSTRUCTION,BERG,DRYWALL,FIZ DATA CENTER,INTERIORS,2024-07-22 07:00,2024-07-30 17:00,2024-07-22 07:00,2024-08-12 17:00,2025-11-20 17:00,2025-11-20 17:00,2025-11-24 07:00,2025-11-24 07:00,0,70,100
CN.SEB4.4730,PH1 -WELD CLIPS - CLADDING STEEL - SEB4 - GL 28-31 - C LINE (DS AREA),Complete,SEB - 4,East Support Building,SUEN-4 - 28-31,EXTERIOR SKIN,,CONSTRUCTION,,INSULATED METAL PANELS,JAMES LIVELY,,2023-10-19 07:00,2023-10-20 09:00,2023-10-19 07:00,2023-10-20 09:00,2025-11-20 17:00,2025-11-20 17:00,2025-11-17 07:00,2025-11-17 07:00,0,12,100
CN.SEB4.1460,IMPACT - DS STEEL BEAM STIFFNER CONNECTION FIXES L4 GL 28-31,Complete,SEB - 4,,SUEN-4 - 28-31,DS/AD,,CONSTRUCTION,,Steel Erection,,,2023-11-13 07:00,2023-11-17 17:00,2023-11-10 07:00,2023-11-20 11:00,2025-11-20 17:00,2025-11-20 17:00,2025-06-13 08:00,2025-06-13 08:00,0,40,100
CN.SEB4.1141,METAL STUD FRAMING (2hr) - SEB4 - GL 28-31 - L3 - D LINE,Complete,SEB - 4,West Support Building,SUEN-4 - 28-31,L3 / Waffle Slab Level,DS/AD INTERIORS,CONSTRUCTION,BERG,TBD Architectural Finishes,FIZ DATA CENTER,INTERIORS,2024-03-25 07:00,2024-03-28 17:00,2024-03-25 07:00,2024-03-29 17:00,2025-11-20 17:00,2025-11-20 17:00,2025-06-13 08:00,2025-06-13 08:00,0,40,100
CN.SEB4.1191,TAPE & FINISH DRYWALL - SEB4 - GL 28-31 - D LINE - L3,Complete,SEB - 4,West Support Building,SUEN-4 - 28-31,L3 / Waffle Slab Level,DS/AD INTERIORS,CONSTRUCTION,CHERRY COATING,DRYWALL,FIZ DATA CENTER,INTERIORS,2024-06-21 07:00,2024-06-27 17:00,2024-06-21 07:00,2024-06-25 17:00,2025-11-20 17:00,2025-11-20 17:00,2025-06-13 08:00,2025-06-13 08:00,0,40,100
CN.SEB4.1201,D/S SGP Wall Turnover - SEB4 - GL 28-31 - D LINE - L3,Complete,SEB - 4,West Support Building,SUEN-4 - 28-31,L3 / Waffle Slab Level,DS/AD INTERIORS,CONSTRUCTION,SECAI,TBD Architectural Finishes,FIZ DATA CENTER,INTERIORS,2024-06-25 07:00,2024-06-25 17:00,2024-06-25 07:00,2024-06-25 17:00,2025-11-20 17:00,2025-11-20 17:00,2025-06-13 08:00,2025-06-13 08:00,0,10,100
CN.SEB4.1181,DRYWALL 2 SIDE - SEB4 - GL 28-31 - D LINE - L3,Complete,SEB - 4,West Support Building,SUEN-4 - 28-31,L3 / Waffle Slab Level,DS/AD INTERIORS,CONSTRUCTION,BERG,DRYWALL,FIZ DATA CENTER,INTERIORS,2024-05-17 07:00,2024-05-23 17:00,2024-04-29 07:00,2024-06-20 17:00,2025-11-20 17:00,2025-11-20 17:00,2025-06-13 08:00,2025-06-13 08:00,0,40,100
CN.SEB4.1171,DRYWALL & INSULATION (1st layer) (INT) - SEB4 - GL 28-31 - L3 - D LINE,Complete,SEB - 4,West Support Building,SUEN-4 - 28-31,L3 / Waffle Slab Level,DS/AD INTERIORS,CONSTRUCTION,,DRYWALL,FIZ DATA CENTER,INTERIORS,2024-03-25 08:00,2024-03-29 08:00,2024-03-25 08:00,2024-03-29 09:00,2025-11-20 17:00,2025-11-20 17:00,2025-06-13 08:00,2025-06-13 08:00,0,40,100
CN.SEB4.6000,WATERPROOFING AT PEDASTALS - SEB4 - GL 28-31 - C-A - L4 ROOF,Complete,SEB - 4,East Support Building,SUEN-4 - 28-31,L4 - SUP Roof - FAB Roof,,CONSTRUCTION,BRAZOS,TOPPING,,SOMD / Roofing / Waterproofing,2024-06-17 07:00,2024-06-17 17:00,2024-02-26 07:00,2024-02-26 17:00,2025-11-20 17:00,2025-11-20 17:00,2025-12-05 17:00,2025-12-05 17:00,0,10,100
CN.SEB4.6010,FRP PEDASTALS - SEB4 - GL 28-31 - C-A - L4 ROOF,Complete,SEB - 4,East Support Building,SUEN-4 - 28-31,L4 - SUP Roof - FAB Roof,,CONSTRUCTION,BAKER,TOPPING,,SOMD / Roofing / Waterproofing,2024-06-17 07:00,2024-06-17 17:00,2024-02-27 07:00,2024-02-27 17:00,2025-11-20 17:00,2025-11-20 17:00,2025-12-05 17:00,2025-12-05 17:00,0,10,100
CN.SEB4.6020,STRIP PEDSTALS & WORK ON SCRUBBER PAD - SEB4 - GL 28-31 - C-A - L4 ROOF,Complete,SEB - 4,East Support Building,SUEN-4 - 28-31,L4 - SUP Roof - FAB Roof,,CONSTRUCTION,BAKER,TOPPING,,SOMD / Roofing / Waterproofing,2024-06-18 07:00,2024-06-18 17:00,2024-02-28 07:00,2024-02-28 17:00,2025-11-20 17:00,2025-11-20 17:00,2025-12-05 17:00,2025-12-05 17:00,0,10,100
CN.SEB4.6030,FINISH FORM & INSPECT - SEB4 - GL 28-31 - L4 - C-A - ROOF,Complete,SEB - 4,East Support Building,SUEN-4 - 28-31,L4 - SUP Roof - FAB Roof,,CONSTRUCTION,,Roofing,,SOMD / Roofing / Waterproofing,2023-12-11 07:00,2023-12-11 15:00,2023-11-17 13:00,2023-11-18 16:00,2025-11-20 17:00,2025-11-20 17:00,2025-10-16 07:00,2025-10-16 07:00,0,8,100
CN.SEB4.6040,PLACE SCRUBBER PAD - SEB4 - GL 28-31 - L4 - C-A - ROOF,Complete,SEB - 4,East Support Building,SUEN-4 - 28-31,L4 - SUP Roof - FAB Roof,,CONSTRUCTION,,Roofing,,SOMD / Roofing / Waterproofing,2023-12-11 15:00,2023-12-12 13:00,2023-11-21 10:55,2023-11-22 17:00,2025-11-20 17:00,2025-11-20 17:00,2025-10-16 07:00,2025-10-16 07:00,0,8,100
CN.SEB4.6050,STRIP FORMS - SEB4 - GL 28-31 - L4 - C-A - ROOF,Complete,SEB - 4,East Support Building,SUEN-4 - 28-31,L4 - SUP Roof - FAB Roof,,CONSTRUCTION,,Roofing,,SOMD / Roofing / Waterproofing,2023-12-12 13:00,2023-12-14 11:00,2023-11-27 13:00,2023-11-28 17:00,2025-11-20 17:00,2025-11-20 17:00,2025-12-05 17:00,2025-12-05 17:00,0,8,100
CN.SEB4.6060,STRIP FORMS & SHORT PATCHING - SEB4 - GL 28-31 - L4 - C-A - ROOF,Complete,SEB - 4,East Support Building,SUEN-4 - 28-31,L4 - SUP Roof - FAB Roof,,CONSTRUCTION,,Roofing,,SOMD / Roofing / Waterproofing,2023-12-14 11:00,2023-12-15 09:00,2023-11-28 08:09,2023-11-28 17:00,2025-11-20 17:00,2025-11-20 17:00,2025-12-05 17:00,2025-12-05 17:00,0,8,100
CN.SEB4.6070,CONTINUE PATCHING & INSPECT - SEB4 - GL 28-31 - L4 - C-A - ROOF,Complete,SEB - 4,East Support Building,SUEN-4 - 28-31,L4 - SUP Roof - FAB Roof,,CONSTRUCTION,,Roofing,,SOMD / Roofing / Waterproofing,2023-12-15 09:00,2023-12-15 17:00,2023-11-30 11:05,2023-12-01 17:00,2025-11-20 17:00,2025-11-20 17:00,2025-12-05 17:00,2025-12-05 17:00,0,8,100
CN.SEB4.6080,INSTALL PRIMER - GL 28-31 - C-A - L4 ROOF,Complete,SEB - 4,East Support Building,SUEN-4 - 28-31,L4 - SUP Roof - FAB Roof,,CONSTRUCTION,BRAZOS,TOPPING,,SOMD / Roofing / Waterproofing,2024-11-01 07:00,2024-11-01 17:00,2024-10-21 07:00,2024-10-21 17:00,2025-11-20 17:00,2025-11-20 17:00,2025-12-05 17:00,2025-12-05 17:00,0,10,100
CN.SEB4.6110,INSPECT PRIMER - GL 28-31 - C-A - L4 ROOF,Complete,SEB - 4,East Support Building,SUEN-4 - 28-31,L4 - SUP Roof - FAB Roof,,CONSTRUCTION,BRAZOS,TOPPING,,SOMD / Roofing / Waterproofing,2024-10-22 07:00,2024-10-22 17:00,2024-10-22 07:00,2024-10-22 17:00,2025-11-20 17:00,2025-11-20 17:00,2025-12-05 17:00,2025-12-05 17:00,0,10,100
CN.SEB4.6130,INSTALL BASE COAT - GL 28-31 - C-A - L4 ROOF,Complete,SEB - 4,East Support Building,SUEN-4 - 28-31,L4 - SUP Roof - FAB Roof,,CONSTRUCTION,BRAZOS,TOPPING,,SOMD / Roofing / Waterproofing,2024-10-24 07:00,2024-10-24 17:00,2024-10-24 07:00,2024-10-24 17:00,2025-11-20 17:00,2025-11-20 17:00,2025-12-05 17:00,2025-12-05 17:00,0,10,100
CN.SEB4.6140,INSPECT BASE COAT - GL 28-31 - C-A - L4 ROOF,Complete,SEB - 4,East Support Building,SUEN-4 - 28-31,L4 - SUP Roof - FAB Roof,,CONSTRUCTION,BRAZOS,TOPPING,,SOMD / Roofing / Waterproofing,2024-10-24 07:00,2024-10-24 17:00,2024-10-24 07:00,2024-10-24 17:00,2025-11-20 17:00,2025-11-20 17:00,2025-12-05 17:00,2025-12-05 17:00,0,10,100
CN.SEB4.6150,INSTALL TOP COAT - GL 28-31 - C-A - L4 ROOF,Complete,SEB - 4,East Support Building,SUEN-4 - 28-31,L4 - SUP Roof - FAB Roof,,CONSTRUCTION,BRAZOS,TOPPING,,SOMD / Roofing / Waterproofing,2024-10-25 07:00,2024-10-28 17:00,2024-10-25 07:00,2024-10-26 17:00,2025-11-20 17:00,2025-11-20 17:00,2025-12-05 17:00,2025-12-05 17:00,0,20,100
CN.SEB4.6160,INSPECT TOP COAT - GL 28-31 - C-A - L4 ROOF,Complete,SEB - 4,East Support Building,SUEN-4 - 28-31,L4 - SUP Roof - FAB Roof,,CONSTRUCTION,BRAZOS,TOPPING,,SOMD / Roofing / Waterproofing,2024-10-28 07:00,2024-10-28 17:00,2024-10-28 07:00,2024-10-28 17:00,2025-11-20 17:00,2025-11-20 17:00,2025-12-05 17:00,2025-12-05 17:00,0,10,100
CN.SEB4.6170,INSPECT TOP COAT CRICKET - GL 28-31 - C-A - L4 ROOF,Complete,SEB - 4,East Support Building,SUEN-4 - 28-31,L4 - SUP Roof - FAB Roof,,CONSTRUCTION,BRAZOS,TOPPING,,SOMD / Roofing / Waterproofing,2024-12-05 07:00,2024-12-05 17:00,2024-12-05 07:00,2024-12-05 17:00,2025-11-20 17:00,2025-11-20 17:00,2025-12-05 17:00,2025-12-05 17:00,0,10,100
CN.SEB4.1121,INSTALL DRYWALL & FIRE CAULKING (SHAFT LINER) SHAFT - ELEVATOR 19 - ALL LEVELS,Complete,SEB - 4,East Support Building,SUEN-4 - 28-31,,ELEVATOR,CONSTRUCTION,BERG,DRYWALL,JAMES LIVELY,INTERIORS,2025-01-20 07:00,2025-02-04 17:00,2025-01-20 07:00,2025-08-15 17:00,2025-11-20 17:00,2025-11-20 17:00,2025-12-02 07:00,2025-12-02 07:00,0,120,100
CN.SEB4.6220,GROUT & PATCH - SEB4 - GL 28-31 - L3 - C-A,Complete,SEB - 4,,SUEN-4 - 28-31,L3 / Waffle Slab Level,WAFER I/O RM,CONSTRUCTION,,TBD Architectural Finishes,,,2024-02-08 07:00,2024-02-09 13:00,2024-02-08 07:00,2024-02-09 13:00,2025-11-20 17:00,2025-11-20 17:00,2025-12-01 07:00,2025-12-01 07:00,0,16,100
CN.SEB4.6230,"PRIME, PATCH & TOPCOAT PRECAST BEAMS - WAFER I/O ROOM - SEB4 - GL 28-31 - C-A - L3",Complete,SEB - 4,,SUEN-4 - 28-31,L3 / Waffle Slab Level,WAFER I/O RM,CONSTRUCTION,CHERRY COATING,TBD Architectural Finishes,,,2024-07-15 07:00,2024-07-23 17:00,2024-07-15 07:00,2024-07-25 17:00,2025-11-20 17:00,2025-11-20 17:00,2025-12-01 07:00,2025-12-01 07:00,0,70,100
CN.SEB4.4740,PH1- DS/AD DETAILING GL 27 - 30 DS/AD SEB-4 L2-L3,Complete,SEB - 4,,SUEN-4 - 28-31,DS/AD,,CONSTRUCTION,,Steel Erection,,,2023-09-18 08:00,2023-09-23 08:00,2023-09-18 08:00,2023-09-22 16:00,2025-11-20 17:00,2025-11-20 17:00,2025-11-13 07:00,2025-11-13 07:00,0,40,100
CN.SEB4.1510,PH1- DS/AD FRP SLAB - DS/AD SEB-4 L6,Complete,SEB - 4,,SUEN-4 - 28-31,DS/AD,,CONSTRUCTION,,SOMD,,,2023-11-02 13:00,2023-11-04 17:00,2023-11-02 13:00,2023-11-05 10:00,2025-11-20 17:00,2025-11-20 17:00,2025-06-13 08:00,2025-06-13 08:00,0,24,100
CN.SEB4.1530,CURE FRP SLAB - SEB-4 GL 28-31 - L6,Complete,SEB - 4,,SUEN-4 - 28-31,DS/AD,,CONSTRUCTION,,SOMD,,,2023-11-05 10:00,2023-11-07 14:00,2023-11-05 10:00,2023-11-07 15:00,2025-11-20 17:00,2025-11-20 17:00,2025-06-13 08:00,2025-06-13 08:00,0,24,100
CN.SEB4.4750,PH1- DS/AD DECKING DS/AD - SEB4 - GL 28-31 - C-E L3,Complete,SEB - 4,,SUEN-4 - 28-31,DS/AD,,CONSTRUCTION,,Steel Erection,,,2023-12-28 11:00,2024-01-03 10:00,2023-12-28 11:00,2024-01-02 15:00,2025-11-20 17:00,2025-11-20 17:00,2025-12-05 17:00,2025-12-05 17:00,0,24,100
CN.SEB4.4760,PH1- DS/AD FRP SLAB - SEB4 - GL 28-31 - C-E L3,Complete,SEB - 4,,SUEN-4 - 28-31,DS/AD,,CONSTRUCTION,,SOMD,,,2024-01-03 07:00,2024-01-04 13:00,2024-01-02 14:00,2024-01-05 10:00,2025-11-20 17:00,2025-11-20 17:00,2025-12-05 17:00,2025-12-05 17:00,0,16,100
CN.SEB4.1160,"REMAINING CLADDING STEEL INSTALLATION, DETAILING & INSPECTION - SEB4 A LINE [SUP EXTERIOR WALL]",Complete,SEB - 4,,SUEN-4 - 28-31,EXTERIOR SKIN,,CONSTRUCTION,,INSULATED METAL PANELS,,,2024-03-07 08:00,2024-03-09 08:00,2024-03-07 08:00,2024-03-15 11:00,2025-11-20 17:00,2025-11-20 17:00,2025-09-30 07:00,2025-09-30 07:00,0,20,100
CN.SEB4.1220,INSTALL INSULATED METAL PANEL MODULES - GL 28-31 - D LINE (AD AREA),Complete,SEB - 4,,SUEN-4 - 28-31,EXTERIOR SKIN,,CONSTRUCTION,KOVACH,INSULATED METAL PANELS,,,2024-05-26 07:00,2024-06-01 17:00,2024-05-14 07:00,2024-06-03 17:00,2025-11-20 17:00,2025-11-20 17:00,2025-11-21 07:00,2025-11-21 07:00,0,60,100
CN.SEB5.4700,IMPACT : EXCAVATION FOR SECAI FOR UNDERGROUND PIPING GL 21-30,Complete,SEB - 4,,SUEN-2 - 22-25,EXTERIOR SKIN,,CONSTRUCTION,,INSULATED METAL PANELS,,,2024-01-22 07:00,2024-02-01 09:00,2024-01-07 07:00,2024-01-13 16:00,2025-11-20 17:00,2025-11-20 17:00,2025-09-30 07:00,2025-09-30 07:00,0,102,100
CN.SEB4.4770,AD STEEL PAINT FIREPROOFING IFRM - SEB4 - GL 28-31 - C-E - L2-CEILING,Complete,SEB - 4,,SUEN-4 - 28-31,DS/AD,,CONSTRUCTION,ROLLING PLAINS,Fireproofing,,,2024-07-15 07:00,2024-07-22 17:00,2024-07-15 07:00,2024-07-22 17:00,2025-11-20 17:00,2025-11-20 17:00,2025-12-05 17:00,2025-12-05 17:00,0,60,100
CN.SEB4.1540,KNEE WALL -SEB4 - GL 28-32 - L4 - C-E -DS/AD L4,Complete,SEB - 4,,SUEN-4 - 28-31,DS/AD,,CONSTRUCTION,,Cast-in Place Concrete - Baker Concrete,,,2024-02-05 09:00,2024-02-09 11:00,2024-02-03 09:00,2024-02-05 17:00,2025-11-20 17:00,2025-11-20 17:00,2025-10-16 07:00,2025-10-16 07:00,0,32,100
CN.SEB4.4780,D-LINE STEEL SPRAY FIREPROOFING SFRM2 - SEB4 - L3-CEILING - GL 28-31,Complete,SEB - 4,,SUEN-4 - 28-31,L4 - SUP Roof - FAB Roof,DS/AD INTERIORS,CONSTRUCTION,ROLLING PLAINS,Fireproofing,,,2024-04-24 07:00,2024-04-30 17:00,2024-04-24 07:00,2024-04-29 17:00,2025-11-20 17:00,2025-11-20 17:00,2025-06-13 08:00,2025-06-13 08:00,0,50,100
CN.SEB4.6310,IMPACT [S.TIA-109] - W&W STEP DOWN 90% - GL 28 & 29 A-C,Complete,SEB - 4,,SUEN-4 - 28-31,DS/AD,,CONSTRUCTION,,Steel Erection,,,2023-10-30 07:00,2023-11-02 13:00,2023-11-07 07:00,2023-11-22 13:00,2025-11-20 17:00,2025-11-20 17:00,2025-06-13 08:00,2025-06-13 08:00,0,16,100
EMB6110,IMPACT [S.TIA-16] - NOTIFY SECAI OF MISSING EMBEDS - C-29 SEQ 4701 - L3A,Complete,SEB - 4,East Support Building,SUEN-4 - 28-31,L2 - SubFab Level,,CONSTRUCTION,SECAI,Steel Erection,SEAN MONK,,2023-10-30 07:00,2023-11-02 13:00,2023-09-16 07:00,2023-09-18 17:00,2025-11-20 17:00,2025-11-20 17:00,2025-10-16 07:00,2025-10-16 07:00,0,16,100
CN.SEB4.6320,IMPACT - REWORK ADDED DBA's - FRP SLAB - DS/AD - SEB4 - GL 28-31 - C-E - L4/E,Complete,SEB - 4,East Support Building,SUEN-4 - 28-31,DS/AD,,CONSTRUCTION,,SOMD,CONCRETE,,2024-01-23 13:00,2024-01-25 17:00,2023-12-16 13:00,2024-01-21 17:00,2025-11-20 17:00,2025-11-20 17:00,2025-06-13 08:00,2025-06-13 08:00,0,24,100
CN.SEB4.6330,DCC BEAM (STEEL STRUCTURE) - SEB4 - GL 28-31 - L3 D LINE,Complete,SEB - 4,West Support Building,SUEN-4 - 28-31,L3 / Waffle Slab Level,DS/AD INTERIORS,CONSTRUCTION,,TBD Architectural Finishes,FIZ DATA CENTER,INTERIORS,2024-01-25 08:00,2024-02-01 10:00,2024-01-25 08:00,2024-02-02 14:00,2025-11-20 17:00,2025-11-20 17:00,2025-06-13 08:00,2025-06-13 08:00,0,72,100
CN.SEB4.6340,TEMPORARY SCAFFOLD PLATFORM - SEB4 - GL 28-31 - L3 D LINE,Complete,SEB - 4,West Support Building,SUEN-4 - 28-31,L3 / Waffle Slab Level,DS/AD INTERIORS,CONSTRUCTION,,TBD Architectural Finishes,FIZ DATA CENTER,INTERIORS,2024-03-12 07:00,2024-03-20 15:00,2024-03-12 07:00,2024-03-15 17:00,2025-11-20 17:00,2025-11-20 17:00,2025-06-13 08:00,2025-06-13 08:00,0,48,100
CN.SEB4.6350,MEP IN WALL ROUGH INS  SEB4 - GL 28-31 - L3 - D LINE,Complete,SEB - 4,West Support Building,SUEN-4 - 28-31,L3 / Waffle Slab Level,DS/AD INTERIORS,CONSTRUCTION,SECAI,TBD Architectural Finishes,FIZ DATA CENTER,INTERIORS,2024-04-22 07:00,2024-04-23 17:00,2024-04-22 07:00,2024-04-26 17:00,2025-11-20 17:00,2025-11-20 17:00,2025-06-13 08:00,2025-06-13 08:00,0,20,100
CN.SEB4.6360,Drywall Clips & AMTS Installs Support Beams - SEB4 - GL 28-31 - D LINE L4,Complete,SEB - 4,,SUEN-4 - 28-31,L4 - SUP Roof - FAB Roof,DS/AD INTERIORS,CONSTRUCTION,SECAI,Fireproofing,,,2024-03-25 07:00,2024-04-03 09:00,2024-03-16 07:00,2024-03-27 17:00,2025-11-20 17:00,2025-11-20 17:00,2025-06-13 08:00,2025-06-13 08:00,0,72,100
CN.SEB4.6370,DS STEEL SPRAY SFRM - SEB4 - GL 28-31 - C-D - L3 CEILING,Active,SEB - 4,,SUEN-4 - 28-31,L4 - SUP Roof - FAB Roof,DS/AD INTERIORS,CONSTRUCTION,ROLLING PLAINS,Fireproofing,,,2024-05-28 07:00,2024-06-04 17:00,2024-05-28 07:00,,2025-12-02 07:00,2025-12-02 07:00,2025-12-05 17:00,2025-12-05 17:00,0,50,100
CN.SEB4.6380,AD STEEL APPLY INTUMESCENT - SEB4 - GL 28-31 - D-E - L3 CEILING,Complete,SEB - 4,,SUEN-4 - 28-31,L4 - SUP Roof - FAB Roof,DS/AD INTERIORS,CONSTRUCTION,ROLLING PLAINS,Fireproofing,,,2024-06-18 07:00,2024-06-25 17:00,2024-06-14 07:00,2024-06-18 17:00,2025-11-20 17:00,2025-11-20 17:00,2025-06-13 08:00,2025-06-13 08:00,0,50,100
CN.SEB4.6490,DS SPRAY FIREPROOFING SFRM C-D (READY MEP DUCT) - SEB4 - GL 28-31 - D LINE L4&L5 CEILING,Complete,SEB - 4,East Support Building,SUEN-4 - 28-31,L4 - SUP Roof - FAB Roof,DS/AD INTERIORS,CONSTRUCTION,,Fireproofing,HOON WOO,,2024-02-24 08:00,2024-02-27 10:00,2024-02-24 08:00,2024-02-28 09:00,2025-11-20 17:00,2025-11-20 17:00,2025-12-05 17:00,2025-12-05 17:00,0,32,100
CN.SEB4.6510,IMPACT [ES18] - RE-INSTALL CLADDING STEEL GL28-29 - SEB-4 A LINE [SUP EXTERIOR WALL] UPTO L3,Complete,SEB - 4,East Support Building,SUEN-4 - 28-31,EXTERIOR SKIN,,CONSTRUCTION,,INSULATED METAL PANELS,JAMES LIVELY,,2024-03-09 08:00,2024-03-11 12:00,2024-03-09 08:00,2024-03-15 15:00,2025-11-20 17:00,2025-11-20 17:00,2025-09-30 07:00,2025-09-30 07:00,0,24,100
CN.SEB4.6580,"PRIME, PATCH & TOPCOAT PRECAST COLUMNS - WAFER I/O ROOM - SEB4 - GL 28-31 - C-A - L3",Complete,SEB - 4,,SUEN-4 - 28-31,L3 / Waffle Slab Level,WAFER I/O RM,CONSTRUCTION,CHERRY COATING,TBD Architectural Finishes,,,2024-07-15 07:00,2024-07-23 17:00,2024-07-15 07:00,2024-07-25 17:00,2025-11-20 17:00,2025-11-20 17:00,2025-12-05 17:00,2025-12-05 17:00,0,70,100
CN.SEB4.6590,INSTALL BASE COAT CRICKET - GL 28-31 - C-A - L4 ROOF,Complete,SEB - 4,East Support Building,SUEN-4 - 28-31,L4 - SUP Roof - FAB Roof,,CONSTRUCTION,BRAZOS,TOPPING,,SOMD / Roofing / Waterproofing,2024-11-25 07:00,2024-11-25 17:00,2024-11-25 07:00,2024-11-25 17:00,2025-11-20 17:00,2025-11-20 17:00,2025-12-05 17:00,2025-12-05 17:00,0,10,100
CN.SEB4.6600,INSPECT BASE COAT CRICKET - GL 28-31 - C-A - L4 ROOF,Complete,SEB - 4,East Support Building,SUEN-4 - 28-31,L4 - SUP Roof - FAB Roof,,CONSTRUCTION,BRAZOS,TOPPING,,SOMD / Roofing / Waterproofing,2024-11-26 07:00,2024-11-26 17:00,2024-11-26 07:00,2024-11-26 17:00,2025-11-20 17:00,2025-11-20 17:00,2025-12-05 17:00,2025-12-05 17:00,0,10,100
CN.SEB4.6610,INSTALL TOP COAT CRICKET - GL 28-31 - C-A - L4 ROOF,Complete,SEB - 4,East Support Building,SUEN-4 - 28-31,L4 - SUP Roof - FAB Roof,,CONSTRUCTION,BRAZOS,TOPPING,,SOMD / Roofing / Waterproofing,2024-12-02 07:00,2024-12-03 17:00,2024-12-02 07:00,2024-12-04 17:00,2025-11-20 17:00,2025-11-20 17:00,2025-12-05 17:00,2025-12-05 17:00,0,20,100
CN.SEB4.6620,INSTALL CRICKET - GL 28-31 - C-A - L4 ROOF,Complete,SEB - 4,East Support Building,SUEN-4 - 28-31,L4 - SUP Roof - FAB Roof,,CONSTRUCTION,BRAZOS,TOPPING,,SOMD / Roofing / Waterproofing,2024-10-29 07:00,2024-11-01 17:00,2024-10-29 07:00,2024-11-01 17:00,2025-11-20 17:00,2025-11-20 17:00,2025-12-05 17:00,2025-12-05 17:00,0,30,100
CN.SEB4.6630,INSPECT CRICKET - GL 28-31 - C-A - L4 ROOF,Complete,SEB - 4,East Support Building,SUEN-4 - 28-31,L4 - SUP Roof - FAB Roof,,CONSTRUCTION,BRAZOS,TOPPING,,SOMD / Roofing / Waterproofing,2024-11-04 07:00,2024-11-04 17:00,2024-11-02 07:00,2024-11-02 17:00,2025-11-20 17:00,2025-11-20 17:00,2025-12-05 17:00,2025-12-05 17:00,0,10,100
CN.SEB4.6640,INSTALL PRIMER CRICKET - GL 28-31 - C-A - L4 ROOF,Complete,SEB - 4,East Support Building,SUEN-4 - 28-31,L4 - SUP Roof - FAB Roof,,CONSTRUCTION,BRAZOS,TOPPING,,SOMD / Roofing / Waterproofing,2024-11-04 07:00,2024-11-04 17:00,2024-11-04 07:00,2024-11-04 17:00,2025-11-20 17:00,2025-11-20 17:00,2025-12-05 17:00,2025-12-05 17:00,0,10,100
CN.SEB4.6650,INSPECT PRIMER CRICKET - GL 28-31 - C-A - L4 ROOF,Complete,SEB - 4,East Support Building,SUEN-4 - 28-31,L4 - SUP Roof - FAB Roof,,CONSTRUCTION,BRAZOS,TOPPING,,SOMD / Roofing / Waterproofing,2024-11-05 07:00,2024-11-05 17:00,2024-11-05 07:00,2024-11-23 17:00,2025-11-20 17:00,2025-11-20 17:00,2025-12-05 17:00,2025-12-05 17:00,0,10,100
CN.SEB4.6660,IMPACT - D-LINE STEEL SPRAY FIREPROOFING SFRM2 - SEB4 - L3-CEILING - GL 28-31,Complete,SEB - 4,,SUEN-4 - 28-31,L4 - SUP Roof - FAB Roof,DS/AD INTERIORS,CONSTRUCTION,ROLLING PLAINS,Fireproofing,,,2024-04-25 07:00,2024-05-03 17:00,2024-04-25 07:00,2024-04-30 17:00,2025-11-20 17:00,2025-11-20 17:00,2025-06-13 08:00,2025-06-13 08:00,0,60,100
CN.SEB4.6680,IMPACT - INSPECT & SURFACE PREP ADDITIONAL AD STEEL FOR INTUMESCENT - SEB4 - GL 28-31 - D-E - L3 CEILING,Complete,SEB - 4,,SUEN-4 - 28-31,L4 - SUP Roof - FAB Roof,DS/AD INTERIORS,CONSTRUCTION,ROLLING PLAINS,Fireproofing,,,2024-05-23 07:00,2024-06-10 17:00,2024-05-23 07:00,2024-06-13 17:00,2025-11-20 17:00,2025-11-20 17:00,2025-06-13 08:00,2025-06-13 08:00,0,100,100
CN.SEB4.8920,CURE TOPPING SLAB (OAC/MECH PAD SIDE) - GL 28-31 - C-A - L4 ROOF,Complete,SEB - 4,East Support Building,SUEN-4 - 28-31,L4 - SUP Roof - FAB Roof,,CONSTRUCTION,BAKER,TOPPING,JAMES LIVELY,,2024-12-09 07:00,2024-12-12 17:00,2024-12-07 07:00,2024-12-10 17:00,2025-11-20 17:00,2025-11-20 17:00,2025-12-05 17:00,2025-12-05 17:00,0,30,100
CN.SEB4.8930,CURE - AD STEEL PAINT FIREPROOFING IFRM - SEB4 - GL 28-31 - C-E - L2-CEILING,Complete,SEB - 4,,SUEN-4 - 28-31,DS/AD,,CONSTRUCTION,ROLLING PLAINS,Fireproofing,,,2024-09-06 07:00,2024-09-25 17:00,2024-07-23 07:00,2024-08-13 17:00,2025-11-20 17:00,2025-11-20 17:00,2025-12-05 17:00,2025-12-05 17:00,0,180,100
CN.SEB55140,INSTALL WALL PROTECTION - DUCT SHAFT - GL 29-30 - C-D - L2,Not Started,SEB - 4,East Support Building,SUEN-4 - 28-31,L2 - SubFab Level,DS/AD INTERIORS,CONSTRUCTION,BERNCO,TBD Architectural Finishes,JAMES LEE,INTERIORS,2025-11-21 07:00,2025-11-25 17:00,,,2025-11-21 07:00,2025-11-25 17:00,2025-12-03 07:00,2025-12-05 17:00,30,30,0
CN.SEB55150,IMPACT - SECAI SCAFFOLD BLOCKING ACCESS / NOTIFIED SECAI & AWAIT REMOVAL - L4 - ELEVATOR 19,Complete,SEB - 4,East Support Building,SUEN-4 - 28-31,,ELEVATOR,CONSTRUCTION,W&W,TBD Architectural Finishes,JAMES LIVELY,INTERIORS,2024-07-01 07:00,2024-07-09 17:00,2024-06-24 07:00,2024-08-03 17:00,2025-11-20 17:00,2025-11-20 17:00,2025-12-02 07:00,2025-12-02 07:00,0,50,100
CN.SEB55160,IMPACT - WW INSTALL REVISED ROOF SUPPORT STEEL - L4 - ELEVATOR 19,Complete,SEB - 4,East Support Building,SUEN-4 - 28-31,,ELEVATOR,CONSTRUCTION,W&W,TBD Architectural Finishes,JAMES LIVELY,INTERIORS,2024-08-12 07:00,2024-08-26 17:00,2024-08-05 07:00,2024-08-29 17:00,2025-11-20 17:00,2025-11-20 17:00,2025-12-02 07:00,2025-12-02 07:00,0,90,100
CN.SEB4.8940,IMPACT - COMPLETE INSTALL ELEVATOR STEEL - ELEVATOR 01B,Complete,SEB - 4,East Support Building,FIZ 2 / SUWS 5  (GL6-1) - GL J - N - DATA CENTER 1,,ELEVATOR,CONSTRUCTION,W&W,TBD Architectural Finishes,AMBER CARO,INTERIORS,2024-11-14 07:00,2024-12-02 17:00,2024-11-14 07:00,2024-11-27 07:00,2025-11-20 17:00,2025-11-20 17:00,2025-12-01 07:00,2025-12-01 07:00,0,100,100
CN.SEB4.8950,IMPACT - SECAI COORDINATING NEW DESIGN FOR SHIFTED STEEL / YATES AWAITING FINAL DESIGN & DIRECTION - ELEVATOR 01B,Complete,SEB - 4,East Support Building,FIZ 2 / SUWS 5  (GL6-1) - GL J - N - DATA CENTER 1,,ELEVATOR,CONSTRUCTION,W&W,TBD Architectural Finishes,AMBER CARO,INTERIORS,2024-07-15 07:00,2024-07-26 17:00,2024-06-26 07:00,2024-09-11 17:00,2025-11-20 17:00,2025-11-20 17:00,2025-12-01 07:00,2025-12-01 07:00,0,100,100
CN.AB.AR.7070,INSTALL GOAL POSTS - WAFER I/O ROOM - SEB4 - GL 28-31 - C-A - L3,Complete,SEB - 4,East Support Building,SUEN-4 - 28-31,L3 / Waffle Slab Level,WAFER I/O RM,CONSTRUCTION,CHERRY COATING,DRYWALL,AMBER CARO,INTERIORS,2024-08-16 07:00,2024-08-23 17:00,2024-07-17 07:00,2024-07-25 17:00,2025-11-20 17:00,2025-11-20 17:00,2025-12-05 17:00,2025-12-05 17:00,0,50,100
CN.SEB4.8970,IMPACT - PENDING ACCESS TO AREA - SEB4 - GL 28-31 - C-D - L3 CEILING,Active,SEB - 4,,SUEN-4 - 28-31,L4 - SUP Roof - FAB Roof,DS/AD INTERIORS,CONSTRUCTION,ROLLING PLAINS,Fireproofing,,,2024-05-28 07:00,2024-06-04 17:00,2024-05-28 07:00,,2025-11-21 07:00,2025-11-24 17:00,2025-12-01 07:00,2025-12-02 17:00,20,50,100
CN.SEB55200,INSTALL GOAL POSTS - 5D ELECTRICAL RM 3 SEB4 - GL 29 - C-B - L2,Complete,SEB - 4,East Support Building,SUEN-4 - 28-31,L2 - SubFab Level,Electric RM 3,CONSTRUCTION,CHERRY COATING,DRYWALL,AMBER CARO,INTERIORS,2024-09-27 07:00,2024-10-08 17:00,2024-08-22 07:00,2024-08-29 17:00,2025-11-20 17:00,2025-11-20 17:00,2025-11-25 07:00,2025-11-25 07:00,0,70,100
CN.SEB4.8980,IMPACT - SECAI ISSUES SWO / AWAIT SWO TO BE LIFTED - ELEVATOR 01B,Complete,SEB - 4,East Support Building,FIZ 2 / SUWS 5  (GL6-1) - GL J - N - DATA CENTER 1,,ELEVATOR,CONSTRUCTION,W&W,TBD Architectural Finishes,AMBER CARO,INTERIORS,2024-07-15 07:00,2024-08-12 17:00,2024-07-17 07:00,2024-09-25 17:00,2025-11-20 17:00,2025-11-20 17:00,2025-12-01 07:00,2025-12-01 07:00,0,200,100
CN.SEB4.9010,IMPACT - COMPLETE SHAFT SLAB EDGE CHIPPING/REPAIRS FOR STEEL DESIGN CHANGE - ELEVATOR 01B,Complete,SEB - 4,East Support Building,FIZ 2 / SUWS 5  (GL6-1) - GL J - N - DATA CENTER 1,,ELEVATOR,CONSTRUCTION,W&W,TBD Architectural Finishes,AMBER CARO,INTERIORS,2024-10-04 07:00,2024-10-11 17:00,2024-09-17 07:00,2024-09-27 17:00,2025-11-20 17:00,2025-11-20 17:00,2025-12-01 07:00,2025-12-01 07:00,0,50,100
CN.SEB4.9020,INSTALL FRAMING/DRYWALL/TAPE+FLOAT - ELEVATOR 19 - Lvl 3 only remaining,Active,SEB - 4,East Support Building,SUEN-4 - 28-31,,ELEVATOR,CONSTRUCTION,BERG,DRYWALL,JAMES LIVELY,INTERIORS,2025-01-20 07:00,2025-02-04 17:00,2024-12-23 07:00,,2025-12-08 07:00,2025-12-10 17:00,2025-12-03 07:00,2025-12-05 17:00,30,120,0
CN.SEB55310,IMPACT - Y_RFI 1494 - AWAIT APPROVAL OF PROPOSED CONNECTION FOR EMBED AT WRONG LOCATION - ELEVATOR 19,Complete,SEB - 4,East Support Building,SUEN-4 - 28-31,,ELEVATOR,CONSTRUCTION,W&W,TBD Architectural Finishes,JAMES LIVELY,INTERIORS,2024-09-16 07:00,2024-10-01 17:00,2024-08-30 07:00,2024-09-19 17:00,2025-11-20 17:00,2025-11-20 17:00,2025-12-02 07:00,2025-12-02 07:00,0,100,100
CN.SEB4.9030,SECAI - INSTALL ELEVATOR DOOR JAMBS - ELEVATOR 19 - WAITING FOR SCHEDULE - (9/13 ETA turnover),Complete,SEB - 4,East Support Building,SUEN-4 - 28-31,,ELEVATOR,CONSTRUCTION,W&W,DRYWALL,JAMES LIVELY,INTERIORS,2025-09-04 07:00,2025-09-17 17:00,2025-08-13 11:51,2025-08-18 17:00,2025-11-20 17:00,2025-11-20 17:00,2025-12-03 07:00,2025-12-03 07:00,0,100,100
CN.SEB4.9040,INSTALL DRYWALL & FIRE CAULKING - DOOR FRONTS - ELEVATOR 19,Complete,SEB - 4,East Support Building,SUEN-4 - 28-31,,ELEVATOR,CONSTRUCTION,W&W,DRYWALL,JAMES LIVELY,INTERIORS,2025-09-18 07:00,2025-10-09 17:00,2025-08-20 07:00,2025-08-29 17:00,2025-11-20 17:00,2025-11-20 17:00,2025-12-03 07:00,2025-12-03 07:00,0,160,100
CN.SEB4.9050,INSTALL PERMANENT DOOR & FRAME - MECHANICAL ROOM - FAB116526A - ELEVATOR 19,Not Started,SEB - 4,East Support Building,SUEN-4 - 28-31,,ELEVATOR,CONSTRUCTION,W&W,DRYWALL,JAMES LIVELY,INTERIORS,2025-12-09 07:00,2025-12-10 17:00,,,2025-12-09 07:00,2025-12-10 17:00,2025-12-04 07:00,2025-12-05 17:00,20,20,0
CN.SEB4.9070,TAPE & FLOAT - SHAFT & DOOR FRONTS  - ELEVATOR 19,Complete,SEB - 4,East Support Building,SUEN-4 - 28-31,,ELEVATOR,CONSTRUCTION,W&W,DRYWALL,JAMES LIVELY,INTERIORS,2025-09-02 07:00,2025-09-08 17:00,2025-09-02 07:00,2025-09-05 17:00,2025-11-20 17:00,2025-11-20 17:00,2025-12-05 17:00,2025-12-05 17:00,0,50,100
CN.SEB4.9080,IMPACT - CCD 484 FOR STEEL SHIFT DUE TO BASEPLATE RELOCATION - ELEVATOR 01B,Complete,SEB - 4,East Support Building,FIZ 2 / SUWS 5  (GL6-1) - GL J - N - DATA CENTER 1,,ELEVATOR,CONSTRUCTION,W&W,TBD Architectural Finishes,AMBER CARO,INTERIORS,2024-10-01 07:00,2024-10-03 17:00,2024-10-01 07:00,2024-10-17 17:00,2025-11-20 17:00,2025-11-20 17:00,2025-12-01 07:00,2025-12-01 07:00,0,20,100
CN.SEB4.9090,INSTALL PERMANENT DOOR & FRAME - MAN DOOR - FAB126502F - ELEVATOR 19,Not Started,SEB - 4,East Support Building,SUEN-4 - 28-31,,ELEVATOR,CONSTRUCTION,W&W,DRYWALL,JAMES LIVELY,INTERIORS,2025-11-21 07:00,2025-11-24 17:00,,,2025-11-21 07:00,2025-11-24 17:00,2025-12-04 07:00,2025-12-05 17:00,20,20,0
CN.SEB4.9100,IMPACT - L2 & L3 DRYWALL LOCATION RFI 1584 - ELEVATOR 19,Complete,SEB - 4,East Support Building,SUEN-4 - 28-31,,ELEVATOR,CONSTRUCTION,BERG,DRYWALL,JAMES LIVELY,INTERIORS,2024-10-21 07:00,2024-11-08 17:00,2024-10-21 07:00,2024-10-29 17:00,2025-11-20 17:00,2025-11-20 17:00,2025-12-02 07:00,2025-12-02 07:00,0,120,100
CN.SEB4.9110,IMPACT - SLAB DEMO L3 -SBMT 728 - ELEVATOR 01B,Complete,SEB - 4,East Support Building,FIZ 2 / SUWS 5  (GL6-1) - GL J - N - DATA CENTER 1,,ELEVATOR,CONSTRUCTION,W&W,TBD Architectural Finishes,AMBER CARO,INTERIORS,2024-10-14 07:00,2024-10-29 17:00,2024-10-14 07:00,2024-11-13 07:00,2025-11-20 17:00,2025-11-20 17:00,2025-12-01 07:00,2025-12-01 07:00,0,100,100
CN.SEB4.9120,IMPACT - POUR BACK L3 SLAB NOTCH L - ELEVATOR 01B,Complete,SEB - 4,East Support Building,FIZ 2 / SUWS 5  (GL6-1) - GL J - N - DATA CENTER 1,,ELEVATOR,CONSTRUCTION,W&W,TBD Architectural Finishes,AMBER CARO,INTERIORS,2024-12-02 07:00,2024-12-03 17:00,2024-12-02 07:00,2024-12-02 17:00,2025-11-20 17:00,2025-11-20 17:00,2025-12-01 07:00,2025-12-01 07:00,0,20,100
CN.SEB4.9130,IMPACT - MEP MATERIAL IN THE WAY DELAYING WATERPROOFING - GL 28-31 - C-A - L4 ROOF,Complete,SEB - 4,East Support Building,SUEN-4 - 28-31,L4 - SUP Roof - FAB Roof,,CONSTRUCTION,BRAZOS,TOPPING,,SOMD / Roofing / Waterproofing,2024-11-05 07:00,2024-11-05 17:00,2024-11-05 07:00,2024-11-22 17:00,2025-11-20 17:00,2025-11-20 17:00,2025-12-05 17:00,2025-12-05 17:00,0,10,100
CN.AB.AR.7777,IMPACT - RELOCATE A -LINE DRYWALL - RETICLE RM - SEB4 - GL 28-31 - C-A - L3,Complete,SEB - 4,East Support Building,SUEN-4 - 28-31,L3 / Waffle Slab Level,RETICLE RM,CONSTRUCTION,CHERRY COATING,DRYWALL,AMBER CARO,INTERIORS,2024-11-25 07:00,2024-12-03 17:00,2024-11-25 07:00,2024-12-07 17:00,2025-11-20 17:00,2025-11-20 17:00,2025-12-01 07:00,2025-12-01 07:00,0,50,100
CN.SEB4.9140,IMPACT - MEP DUCTS IN THE WAY SHAFT LINER - ELEVATOR 19 - ALL LEVELS,Active,SEB - 4,East Support Building,SUEN-4 - 28-31,,ELEVATOR,CONSTRUCTION,BERG,DRYWALL,JAMES LIVELY,INTERIORS,2024-11-18 07:00,2024-12-09 17:00,2025-02-25 07:00,,2025-11-21 07:00,2025-11-24 17:00,2025-11-18 07:00,2025-11-19 17:00,20,120,100
CN.SEB4.9150,IMPACT-SHAFT LINER COATING CCD 516 & MOCK UP APPROVAL - ELEVATOR 19 - ALL LEVELS,Complete,SEB - 4,East Support Building,SUEN-4 - 28-31,,ELEVATOR,CONSTRUCTION,BERG,DRYWALL,JAMES LIVELY,INTERIORS,2024-11-18 07:00,2024-12-09 17:00,2024-10-25 07:00,2024-12-12 17:00,2025-11-20 17:00,2025-11-20 17:00,2025-12-02 07:00,2025-12-02 07:00,0,120,100
CN.SEB55360,IMPACT - TEMP DUCT PENETRATING WALL - ELECTRICAL ROOM 3 NORTH - SEB4 - GL 28-31 - C-A - L2,Complete,SEB - 4,East Support Building,SUEN-4 - 28-31,L2 - SubFab Level,Electric RM 3,CONSTRUCTION,BERG,DRYWALL,AMBER CARO,INTERIORS,2024-12-03 07:00,2024-12-10 17:00,2024-12-03 07:00,2025-06-12 07:00,2025-11-20 17:00,2025-11-20 17:00,2025-11-25 07:00,2025-11-25 07:00,0,50,100
CN.SEB4.9160,Waterproofing - GL 31-32 - C-A - L4 ROOF- Breeze way,Complete,SEB - 4,East Support Building,SUEN-5 - 31-33,L4 - SUP Roof - FAB Roof,,CONSTRUCTION,BAKER,TOPPING,JAMES LIVELY,,2024-12-05 07:00,2024-12-20 17:00,2024-12-02 07:00,2024-12-12 17:00,2025-11-20 17:00,2025-11-20 17:00,2025-12-05 17:00,2025-12-05 17:00,0,100,100
CN.SEB4.9170,FRP TOPPING SLAB - 31-32 - C-A - L4 ROOF- Breeze way,Complete,SEB - 4,East Support Building,SUEN-5 - 31-33,L4 - SUP Roof - FAB Roof,,CONSTRUCTION,BAKER,TOPPING,JAMES LIVELY,,2024-12-13 07:00,2024-12-16 17:00,2024-12-13 07:00,2024-12-16 17:00,2025-11-20 17:00,2025-11-20 17:00,2025-12-05 17:00,2025-12-05 17:00,0,20,100
CN.SEB55420,IMPACT - SECAI WALL OPENING IMPENDING DRYWALL - ELECTRICAL ROOM 3 NORTH - SEB4 - GL 28-31 - C-A - L2,Complete,SEB - 4,East Support Building,SUEN-4 - 28-31,L2 - SubFab Level,Electric RM 3,CONSTRUCTION,BERG,DRYWALL,AMBER CARO,INTERIORS,2024-12-03 07:00,2024-12-10 17:00,2025-01-06 07:00,2025-06-16 07:00,2025-11-20 17:00,2025-11-20 17:00,2025-11-25 07:00,2025-11-25 07:00,0,50,100
CN.SEB4.9180,"IMPACT - L3 BEAMS DESIGN ERROR, RELOCATION IOCC APPROVAL & FABRICATION - ELEVATOR 19",Complete,SEB - 4,East Support Building,SUEN-4 - 28-31,,ELEVATOR,CONSTRUCTION,BERG,DRYWALL,JAMES LIVELY,INTERIORS,2025-01-20 07:00,2025-02-04 17:00,2025-02-03 07:00,2025-03-31 14:00,2025-11-20 17:00,2025-11-20 17:00,2025-12-02 07:00,2025-12-02 07:00,0,120,100
CN.SEB4.9190,"IMPACT - L3 BEAMS DESIGN ERROR, BEAMS RELOCATION - ELEVATOR 19",Complete,SEB - 4,East Support Building,SUEN-4 - 28-31,,ELEVATOR,CONSTRUCTION,BERG,DRYWALL,JAMES LIVELY,INTERIORS,2025-04-23 07:00,2025-05-08 17:00,2025-04-02 07:00,2025-04-09 17:00,2025-11-20 17:00,2025-11-20 17:00,2025-12-02 07:00,2025-12-02 07:00,0,120,100
CN.SEB4.9200,IMPACT - SCAFFOLDS IN THE WAY - ELEVATOR 19 - ALL LEVELS,Complete,SEB - 4,East Support Building,SUEN-4 - 28-31,,ELEVATOR,CONSTRUCTION,BERG,DRYWALL,JAMES LIVELY,INTERIORS,2024-11-18 07:00,2024-12-09 17:00,2024-11-11 00:00,2024-12-14 17:00,2025-11-20 17:00,2025-11-20 17:00,2025-12-03 07:00,2025-12-03 07:00,0,120,100
CN.A1.UG.1270,PH1- UNDERGROUND PLUMBING SEB5,Complete,SEB - 5,East Support Building,SUEN-5 - 31-33,L1 - Fndn Slab,,CONSTRUCTION,,Underground Plumbing - Cobb,ANDREA SOLIS,,2022-11-29 15:00,2022-12-03 15:00,2022-11-29 15:00,2022-12-03 16:00,2025-11-20 17:00,2025-11-20 17:00,2025-06-13 08:00,2025-06-13 08:00,0,40,100
CN.A1.UG.1280,PH1- UNDERGROUND ELECTRICAL SEB5,Complete,SEB - 5,East Support Building,SUEN-5 - 31-33,L1 - Fndn Slab,,CONSTRUCTION,,Underground Electrical - (By Owner),ANDREA SOLIS,,2022-12-02 09:00,2022-12-06 09:00,2022-12-02 09:00,2022-12-08 11:00,2025-11-20 17:00,2025-11-20 17:00,2025-06-13 08:00,2025-06-13 08:00,0,40,100
CN.SEB5.1000,PH1- SUP - EXCAVATE PIER CAPS - SEB5,Complete,SEB - 5,East Support Building,SUEN-5 - 31-33,L1 - Fndn Slab,,CONSTRUCTION,,Excavate CIP,ANDREA SOLIS,,2022-11-23 11:00,2022-11-28 15:00,2022-11-23 11:00,2022-11-29 15:00,2025-11-20 17:00,2025-11-20 17:00,2025-06-13 08:00,2025-06-13 08:00,0,24,100
CN.SEB5.1010,PH1-FRP GRADE BEAM - SEB5,Complete,SEB - 5,East Support Building,SUEN-5 - 31-33,L1 - Fndn Slab,,CONSTRUCTION,,Pour Concrete,ANDREA SOLIS,,2022-12-06 07:00,2022-12-10 17:00,2022-12-06 07:00,2022-12-12 09:00,2025-11-20 17:00,2025-11-20 17:00,2025-06-13 08:00,2025-06-13 08:00,0,40,100
CN.SEB5.1020,PH1-BLACK BASE (NOW RAT SLAB) - SEB5,Complete,SEB - 5,East Support Building,SUEN-5 - 31-33,L1 - Fndn Slab,,CONSTRUCTION,,RAT SLAB,JAMES LEE,,2023-02-24 09:00,2023-02-26 13:00,2023-01-23 14:37,2023-01-27 17:00,2025-11-20 17:00,2025-11-20 17:00,2025-06-13 08:00,2025-06-13 08:00,0,24,100
CN.SEB5.1030,PH1-CURE PIER CAPS - SEB5,Complete,SEB - 5,East Support Building,SUEN-5 - 31-33,L1 - Fndn Slab,,CONSTRUCTION,,Concrete Cure,ANDREA SOLIS,,2023-01-23 11:00,2023-01-23 11:00,2022-12-13 07:00,2022-12-13 17:00,2025-11-20 17:00,2025-11-20 17:00,2025-06-13 08:00,2025-06-13 08:00,0,0,100
CN.SEB5.1060,PH1- FRP SLAB - SEB-5-L2,Complete,SEB - 5,East Support Building,SUEN-5 - 31-33,L2 - SubFab Level,,CONSTRUCTION,,SOMD,CONCRETE,,2023-10-16 07:00,2023-10-17 13:00,2023-10-16 07:00,2023-10-19 13:00,2025-11-20 17:00,2025-11-20 17:00,2025-11-10 07:00,2025-11-10 07:00,0,16,100
CN.SEB5.1080,PH1- FRP - SEA5 - GL 31-33 - L3 - C-A,Complete,SEB - 5,East Support Building,SUEN-5 - 31-33,L3 / Waffle Slab Level,,CONSTRUCTION,,SOMD,CONCRETE,,2023-12-11 08:00,2023-12-12 14:00,2023-12-11 08:00,2023-12-12 14:00,2025-11-20 17:00,2025-11-20 17:00,2025-11-10 07:00,2025-11-10 07:00,0,16,100
CN.SEB5.1110,PH1- FRP SLAB - SEB-5-ROOF,Complete,SEB - 5,East Support Building,SUEN-5 - 31-33,L4 - SUP Roof - FAB Roof,,CONSTRUCTION,,SOMD,CONCRETE,SOMD / Roofing / Waterproofing,2023-10-06 09:00,2023-10-07 15:00,2023-09-21 09:00,2023-09-22 17:00,2025-11-20 17:00,2025-11-20 17:00,2025-10-16 07:00,2025-10-16 07:00,0,16,100
CN.SEB5.1070,PH1- CURE SOMD - SEB-5-L2,Complete,SEB - 5,East Support Building,SUEN-5 - 31-33,L2 - SubFab Level,,CONSTRUCTION,,Concrete Cure,JAMES LEE,,2023-10-20 07:00,2023-10-22 11:00,2023-10-19 20:44,2023-10-22 20:44,2025-11-20 17:00,2025-11-20 17:00,2025-11-19 07:00,2025-11-19 07:00,0,24,100
CN.SEB5.1100,PH1- CURE SOMD - SEA5 - GL 31-33 - L3 - C-A,Complete,SEB - 5,East Support Building,SUEN-5 - 31-33,L3 / Waffle Slab Level,,CONSTRUCTION,,Concrete Cure,JAMES LEE,,2023-12-15 07:00,2023-12-17 11:00,2023-12-15 07:00,2023-12-17 14:00,2025-11-20 17:00,2025-11-20 17:00,2025-11-10 07:00,2025-11-10 07:00,0,24,100
CN.SEB5.1130,PH1- CURE SOMD - SEB-5-ROOF,Complete,SEB - 5,East Support Building,SUEN-5 - 31-33,L4 - SUP Roof - FAB Roof,,CONSTRUCTION,,Concrete Cure,JAMES LEE,SOMD / Roofing / Waterproofing,2023-10-08 08:00,2023-10-10 12:00,2023-09-22 21:21,2023-09-24 21:00,2025-11-20 17:00,2025-11-20 17:00,2025-10-16 07:00,2025-10-16 07:00,0,24,100
CN.SEB5.1090,PH1- 1st FLOOR SLAB - SEB-5-L1,Complete,SEB - 5,East Support Building,SUEN-5 - 31-33,L1 - Fndn Slab,,CONSTRUCTION,,Pour Concrete,JAMES LEE,,2023-03-04 08:00,2023-03-08 08:00,2023-02-15 08:00,2023-02-17 17:00,2025-11-20 17:00,2025-11-20 17:00,2025-06-13 08:00,2025-06-13 08:00,0,40,100
CN.SEB5.1050,TIER 1 ERECT PRECAST COLUMNS & BEAMS - SEB5,Complete,SEB - 5,East Support Building,SUEN-5 - 31-33,L3 / Waffle Slab Level,,CONSTRUCTION,,"SUP EAST A,B",SEAN MONK,,2023-06-20 13:00,2023-06-27 09:00,2023-06-20 13:00,2023-06-29 11:00,2025-11-20 17:00,2025-11-20 17:00,2025-06-13 08:00,2025-06-13 08:00,0,56,100
CN.SEB5.1180,PH1 - CLADDING STEEL INTERIOR GL 31-33 - D LINE (AD AREA),Complete,SEB - 5,East Support Building,SUEN-5 - 31-33,EXTERIOR SKIN,,CONSTRUCTION,,INSULATED METAL PANELS,JAMES LIVELY,,2024-03-18 07:00,2024-03-25 13:00,2024-03-18 07:00,2024-03-22 00:00,2025-11-20 17:00,2025-11-20 17:00,2025-11-21 07:00,2025-11-21 07:00,0,46,100
CN.SEB5.1150,PH1 - CLADDING STEEL  - SEA-5 A LINE [SUP EXTERIOR WALL],Complete,SEB - 5,East Support Building,SUEN-5 - 31-33,EXTERIOR SKIN,,CONSTRUCTION,,INSULATED METAL PANELS,JAMES LIVELY,,2023-10-27 11:00,2023-11-03 17:00,2023-10-23 11:00,2023-10-28 17:00,2025-11-20 17:00,2025-11-20 17:00,2025-09-30 07:00,2025-09-30 07:00,0,56,100
CN.SEB5.1170,INSTALL INSULATED METAL PANEL MODULES - GL 31-32 - A LINE [SUP EXTERIOR WALL] (32~33 PENDING CONNECTION ISSUE),Complete,SEB - 5,East Support Building,SUEN-5 - 31-33,EXTERIOR SKIN,,CONSTRUCTION,KOVACH,INSULATED METAL PANELS,JAMES LIVELY,,2024-06-07 07:00,2024-06-16 17:00,2024-05-30 07:00,2024-06-05 17:00,2025-11-20 17:00,2025-11-20 17:00,2025-09-30 07:00,2025-09-30 07:00,0,90,100
CN.SEB5.1120,PH1- AD STEEL FRAME INSTALL - SEB-5 fab side,Complete,SEB - 5,East Support Building,SUEN-5 - 31-33,DS/AD,,CONSTRUCTION,,Steel Erection,SEAN MONK,,2023-08-21 07:00,2023-08-26 15:00,2023-08-17 15:00,2023-08-24 11:00,2025-11-20 17:00,2025-11-20 17:00,2025-06-13 08:00,2025-06-13 08:00,0,48,100
DL.ALL.EG.1000,F01B.01 - ADDENDUM 1 - ENGINEERING DELAY,Complete,SEB - 5,East Support Building,SUEN-5 - 31-33,L4 - SUP Roof - FAB Roof,,CONSTRUCTION,,Cast-in Place Concrete - Baker Concrete,ANDREA SOLIS,,2022-05-27 08:00,2022-05-27 08:00,2022-05-27 08:00,2022-05-27 08:00,,,,,0,0,100
DL.ALL.EG.1010,"OWNER DELAY - GRADING & ACCESS ROADS FOR PIERS, per APPENDIX """"D"""" (F01B.01)",Complete,SEB - 5,East Support Building,SUEN-5 - 31-33,L4 - SUP Roof - FAB Roof,,CONSTRUCTION,,Cast-in Place Concrete - Baker Concrete,ANDREA SOLIS,,2022-06-02 08:00,2022-07-27 16:00,2022-06-02 08:00,2022-07-27 16:00,2025-11-20 17:00,2025-11-20 17:00,2025-06-13 08:00,2025-06-13 08:00,0,548,100
CN.AB.AR.2770,METAL STUD FRAMING (2hr) - SEA5 - GL 31-33 - L3 - C-A RETICLE ROOM,Complete,SEB - 5,East Support Building,SUEN-5 - 31-33,L3 / Waffle Slab Level,RETICLE RM,CONSTRUCTION,BERG,TBD Architectural Finishes,AMBER CARO,INTERIORS,2024-03-26 11:00,2024-03-30 11:00,2024-03-04 00:00,2024-03-11 00:00,2025-11-20 17:00,2025-11-20 17:00,2025-11-10 07:00,2025-11-10 07:00,0,40,100
CN.AB.AR.4150,MEP ROUGH IN & INSPECTION (by SECAI) - RETICLE ROOM - SEB5 - GL 31-33 - C-A - L3,Complete,SEB - 5,East Support Building,SUEN-5 - 31-33,L3 / Waffle Slab Level,RETICLE RM,CONSTRUCTION,SECAI,Owner & Design Team,AMBER CARO,,2024-05-02 07:00,2024-05-09 17:00,2024-05-02 07:00,2024-05-07 17:00,2025-11-20 17:00,2025-11-20 17:00,2025-12-01 07:00,2025-12-01 07:00,0,50,100
CN.AB.AR.4160,TAPE & FINISH DRYWALL - RETICLE ROOM - SEB5 - GL 31-33 - C-A - L3,Complete,SEB - 5,East Support Building,SUEN-5 - 31-33,L3 / Waffle Slab Level,RETICLE RM,CONSTRUCTION,CHERRY COATING,DRYWALL,AMBER CARO,INTERIORS,2025-04-24 07:00,2025-04-25 17:00,2025-04-24 07:00,2025-04-25 17:00,2025-11-20 17:00,2025-11-20 17:00,2025-12-01 07:00,2025-12-01 07:00,0,20,100
CN.AB.AR.4170,FINISH PAINT - RETICLE ROOM - SEB5 - GL 31-33 - C-A - L3,Not Started,SEB - 5,East Support Building,SUEN-5 - 31-33,L3 / Waffle Slab Level,RETICLE RM,CONSTRUCTION,FINISH PAINT,TBD Architectural Finishes,JAMES LEE,INTERIORS,2025-11-21 07:00,2025-12-01 17:00,,,2025-11-21 07:00,2025-12-01 17:00,2025-12-01 07:00,2025-12-05 17:00,50,50,0
CN.SEB5.1251,DS/AD STEEL SPRAY FIREPROOFING SFRM - SEB5 - GL 31-33 - D LINE - L4/E,Complete,SEB - 5,East Support Building,SUEN-5 - 31-33,L4 - SUP Roof - FAB Roof,DS/AD INTERIORS,CONSTRUCTION,ROLLING PLAINS,Fireproofing,HOON WOO,,2024-06-27 07:00,2024-07-01 17:00,2024-06-27 07:00,2024-07-01 17:00,2025-11-20 17:00,2025-11-20 17:00,2025-12-05 17:00,2025-12-05 17:00,0,30,100
CN.SEB5.1240,PH1- DECKING GL 30 - 31- SEB-5-ROOF,Complete,SEB - 5,East Support Building,SUEN-5 - 31-33,L4 - SUP Roof - FAB Roof,,CONSTRUCTION,,Decking & Detail,SEAN MONK,SOMD / Roofing / Waterproofing,2023-09-05 15:00,2023-09-07 11:00,2023-09-05 15:00,2023-09-07 11:00,2025-11-20 17:00,2025-11-20 17:00,2025-10-16 07:00,2025-10-16 07:00,0,16,100
CN.SEB5.1250,PH1- DECKING GL 30 - 31 - SEB-5-L3,Complete,SEB - 5,East Support Building,SUEN-5 - 31-33,L3 / Waffle Slab Level,,CONSTRUCTION,,Decking & Detail,SEAN MONK,,2023-09-10 08:00,2023-09-11 14:00,2023-09-10 08:00,2023-09-11 15:00,2025-11-20 17:00,2025-11-20 17:00,2025-11-10 07:00,2025-11-10 07:00,0,16,100
CN.SEB5.1260,PH1- DECKING GL 30 - 31 - SEB-5-L2,Complete,SEB - 5,East Support Building,SUEN-5 - 31-33,L2 - SubFab Level,,CONSTRUCTION,,Decking & Detail,SEAN MONK,,2023-09-05 15:00,2023-09-07 11:00,2023-09-05 15:00,2023-09-07 11:00,2025-11-20 17:00,2025-11-20 17:00,2025-11-10 07:00,2025-11-10 07:00,0,16,100
CN.SEA3.1330,PH1-CIP WALL (DS) - SEA5 - GL 31-33 - L4 - C-A,Complete,SEB - 5,East Support Building,SUEN-5 - 31-33,L4 - SUP Roof - FAB Roof,,CONSTRUCTION,,CIP WALL,CONCRETE,SOMD / Roofing / Waterproofing,2023-11-13 07:00,2023-11-17 09:00,2023-11-12 07:00,2023-11-16 09:00,2025-11-20 17:00,2025-11-20 17:00,2025-10-16 07:00,2025-10-16 07:00,0,32,100
CN.SEB5.1290,PH1- WATERPROOFING - SEB-5-L1,Complete,SEB - 5,East Support Building,SUEN-5 - 31-33,L1 - Fndn Slab,,CONSTRUCTION,,Waterproofing - Preferred,JAMES LIVELY,SOMD / Roofing / Waterproofing,2023-10-16 07:00,2023-10-17 13:00,2023-10-07 07:00,2023-10-08 13:00,2025-11-20 17:00,2025-11-20 17:00,2025-12-01 17:00,2025-12-01 17:00,0,16,100
CN.SEB5.1320,PH1 - TOPPING SLAB w TRENCH & ANGLE EMBEDS- SEB-5-L1,Complete,SEB - 5,East Support Building,SUEN-5 - 31-33,L1 - Fndn Slab,,CONSTRUCTION,,TOPPING,CONCRETE,SOMD / Roofing / Waterproofing,2023-10-14 08:00,2023-10-16 12:00,2023-10-05 08:00,2023-10-06 08:00,2025-11-20 17:00,2025-11-20 17:00,2025-11-10 07:00,2025-11-10 07:00,0,24,100
CN.SEB5.1330,PH1- DS/AD DECKING & DETAILING GL 30 - 33 DS/AD SEB-5 - L6,Complete,SEB - 5,East Support Building,SUEN-5 - 31-33,DS/AD,,CONSTRUCTION,,Decking & Detail,SEAN MONK,,2023-10-22 08:00,2023-10-28 16:00,2023-10-22 08:00,2023-11-01 17:00,2025-11-20 17:00,2025-11-20 17:00,2025-06-13 08:00,2025-06-13 08:00,0,48,100
CN.SEB5.1340,PH1- DS/AD FRP SLAB - DS/AD - SEA5 - GL 31-33 - C-E -L4/E,Complete,SEB - 5,East Support Building,SUEN-5 - 31-33,DS/AD,,CONSTRUCTION,,SOMD,CONCRETE,,2023-12-16 15:00,2023-12-20 15:00,2023-12-16 15:00,2023-12-18 08:00,2025-11-20 17:00,2025-11-20 17:00,2025-06-13 08:00,2025-06-13 08:00,0,40,100
CN.SEB5.1350,AD WATERPROOFING - SEB5 - GL 31-33 - D-E - L4/E [LEAVEOUT 32.5~33 - PENDING DESIGN],Complete,SEB - 5,East Support Building,SUEN-5 - 31-33,DS/AD,,CONSTRUCTION,BRAZOS,TOPPING,SEAN MONK,,2024-07-15 07:00,2024-07-29 17:00,2024-07-08 07:00,2024-07-22 17:00,2025-11-20 17:00,2025-11-20 17:00,2025-11-21 07:00,2025-11-21 07:00,0,110,100
CN.SEB5.1360,AD TOPPING SLAB - SEB5 - GL 31-33 - D-E - L4/E [LEAVEOUT 32.5~33 - PENDING DESIGN],Complete,SEB - 5,East Support Building,SUEN-5 - 31-33,DS/AD,,CONSTRUCTION,BAKER,SOMD,CONCRETE,,2024-08-08 07:00,2024-08-13 17:00,2024-07-23 07:00,2024-07-25 17:00,2025-11-20 17:00,2025-11-20 17:00,2025-11-21 07:00,2025-11-21 07:00,0,40,100
TIER 25.1051,TIER 2 GROUT PRECAST COLUMNS & BEAMS - SEB5,Complete,SEB - 5,East Support Building,SUEN-5 - 31-33,L4 - SUP Roof - FAB Roof,,CONSTRUCTION,,"SUP EAST A,B",SEAN MONK,,2023-08-15 11:00,2023-08-19 11:00,2023-08-01 11:00,2023-08-02 12:00,2025-11-20 17:00,2025-11-20 17:00,2025-06-13 08:00,2025-06-13 08:00,0,40,100
CN.SEB5.1370,PH1- DECKING GL 31 - 32 - SEB-5-L2,Complete,SEB - 5,East Support Building,SUEN-5 - 31-33,L2 - SubFab Level,,CONSTRUCTION,,Decking & Detail,SEAN MONK,,2023-09-06 13:00,2023-09-08 09:00,2023-09-06 13:00,2023-09-08 09:00,2025-11-20 17:00,2025-11-20 17:00,2025-11-10 07:00,2025-11-10 07:00,0,16,100
CN.SEB5.1380,PH1- DECKING GL 32 - 33 - SEB-5-L2,Complete,SEB - 5,East Support Building,SUEN-5 - 31-33,L2 - SubFab Level,,CONSTRUCTION,,Decking & Detail,SEAN MONK,,2023-09-06 13:00,2023-09-08 09:00,2023-09-06 13:00,2023-09-08 09:00,2025-11-20 17:00,2025-11-20 17:00,2025-11-10 07:00,2025-11-10 07:00,0,16,100
CN.SEB5.1390,PH1- DECKING GL 31 - 32 - SEB-5-L3,Complete,SEB - 5,East Support Building,SUEN-5 - 31-33,L3 / Waffle Slab Level,,CONSTRUCTION,,Decking & Detail,SEAN MONK,,2023-09-08 09:00,2023-09-09 15:00,2023-09-08 09:00,2023-09-09 16:00,2025-11-20 17:00,2025-11-20 17:00,2025-11-10 07:00,2025-11-10 07:00,0,16,100
CN.SEB5.1400,PH1- DECKING GL 32 - 33 - SEB-5-L3,Complete,SEB - 5,East Support Building,SUEN-5 - 31-33,L3 / Waffle Slab Level,,CONSTRUCTION,,Decking & Detail,SEAN MONK,,2023-09-06 13:00,2023-09-08 09:00,2023-09-06 13:00,2023-09-08 09:00,2025-11-20 17:00,2025-11-20 17:00,2025-11-10 07:00,2025-11-10 07:00,0,16,100
CN.SEB5.1410,PH1- DECKING GL 31 - 32 - SEB-5-ROOF,Complete,SEB - 5,East Support Building,SUEN-5 - 31-33,L4 - SUP Roof - FAB Roof,,CONSTRUCTION,,Decking & Detail,SEAN MONK,SOMD / Roofing / Waterproofing,2023-09-07 11:00,2023-09-08 17:00,2023-09-07 11:00,2023-09-08 17:00,2025-11-20 17:00,2025-11-20 17:00,2025-10-16 07:00,2025-10-16 07:00,0,16,100
CN.SEB5.1420,PH1- DECKING GL 32 - 33 - SEB-5-ROOF,Complete,SEB - 5,East Support Building,SUEN-5 - 31-33,L4 - SUP Roof - FAB Roof,,CONSTRUCTION,,Decking & Detail,SEAN MONK,SOMD / Roofing / Waterproofing,2023-09-09 08:00,2023-09-10 14:00,2023-09-09 08:00,2023-09-10 16:00,2025-11-20 17:00,2025-11-20 17:00,2025-10-16 07:00,2025-10-16 07:00,0,16,100
CN.SEB5.1430,PH1- DS/AD DECKING & DETAILING - SEA5 - GL 31-33 - C-E DS/AD L4 &L4/E,Complete,SEB - 5,East Support Building,SUEN-5 - 31-33,DS/AD,,CONSTRUCTION,,Decking & Detail,SEAN MONK,,2023-12-11 07:00,2023-12-16 15:00,2023-12-11 07:00,2023-12-16 16:00,2025-11-20 17:00,2025-11-20 17:00,2025-06-13 08:00,2025-06-13 08:00,0,48,100
CN.AB.AR.4420,DRYWALL 2 SIDE - RETICLE ROOM - SEB5 - GL 31-33 - C-A - L3 (Impacted by Temp Opening by SECAI),Complete,SEB - 5,East Support Building,SUEN-5 - 31-33,L3 / Waffle Slab Level,RETICLE RM,CONSTRUCTION,BERG,DRYWALL,AMBER CARO,INTERIORS,2024-11-04 07:00,2024-11-14 17:00,2024-05-09 07:00,2024-09-16 07:00,2025-11-20 17:00,2025-11-20 17:00,2025-12-01 07:00,2025-12-01 07:00,0,70,100
CN.AB.AR.4430,DRYWALL & INSULATION (1 side) (INT) - RETICLE ROOM - SEB5 - GL 31-33 - C-A - L3,Complete,SEB - 5,East Support Building,SUEN-5 - 31-33,L3 / Waffle Slab Level,RETICLE RM,CONSTRUCTION,BERG,DRYWALL,AMBER CARO,INTERIORS,2024-04-05 15:00,2024-04-15 15:00,2024-03-11 07:00,2024-05-08 17:00,2025-11-20 17:00,2025-11-20 17:00,2025-12-01 07:00,2025-12-01 07:00,0,40,100
CN.SWB5.1510,PH1- ERECT STEEL - SE PENTHOUSE - MCC ROOF ROOF,Complete,SEB - 5,East Support Building,SOUTH EAST PENTHOUSE,L4 - SUP Roof - FAB Roof,,CONSTRUCTION,,Steel Erection,SEAN MONK,,2023-12-28 07:00,2024-01-12 13:00,2023-12-28 07:00,2024-01-21 14:00,2025-11-20 17:00,2025-11-20 17:00,2025-10-16 07:00,2025-10-16 07:00,0,96,100
CN.SWB5.1650,PH1- INSTALL DECKING & STUDS - SE PENTHOUSE - MCC ROOF ROOF,Complete,SEB - 5,East Support Building,SOUTH EAST PENTHOUSE,L5 - SUP L5,,CONSTRUCTION,,Decking & Detail,SEAN MONK,,2024-02-12 07:00,2024-02-16 15:00,2024-02-12 07:00,2024-02-16 15:00,2025-11-20 17:00,2025-11-20 17:00,2025-12-02 07:00,2025-12-02 07:00,0,48,100
CN.SWB5.1660,PH1- FRP SLAB ON DECK - SE PENTHOUSE - MCC ROOF ROOF,Complete,SEB - 5,East Support Building,SOUTH EAST PENTHOUSE,L5 - SUP L5,,CONSTRUCTION,,Pour Concrete,CONCRETE,,2024-02-17 08:00,2024-02-19 12:00,2024-02-17 08:00,2024-02-18 15:00,2025-11-20 17:00,2025-11-20 17:00,2025-12-02 07:00,2025-12-02 07:00,0,24,100
CN.SWB5.1670,INSTALL FIRESTOP - EDGE OF SLAB & PARAPET - SE PENTHOUSE - MCC ROOF,Complete,SEB - 5,East Support Building,SOUTH EAST PENTHOUSE,L6 - PENTHOUSE / DS ROOF,,CONSTRUCTION,BERG,Steel Erection,SEAN MONK,,2025-11-05 07:00,2025-11-05 17:00,2025-10-09 07:00,2025-10-09 17:00,2025-11-20 17:00,2025-11-20 17:00,2025-12-05 17:00,2025-12-05 17:00,0,10,100
CN.SWB5.1680,PH1- INSTALL WATERPROOFING - SE PENTHOUSE MCC ROOF,Complete,SEB - 5,East Support Building,SOUTH EAST PENTHOUSE,L6 - PENTHOUSE / DS ROOF,,CONSTRUCTION,BRAZOS,TOPPING,SEAN MONK,,2025-11-06 07:00,2025-11-06 17:00,2025-10-09 07:00,2025-10-09 17:00,2025-11-20 17:00,2025-11-20 17:00,2025-12-05 17:00,2025-12-05 17:00,0,10,100
CN.SWB5.1690,PH1- INSTALL ROOFING - SE PENTHOUSE - MCC ROOF ROOF,Complete,SEB - 5,East Support Building,SOUTH EAST PENTHOUSE,L6 - PENTHOUSE / DS ROOF,,CONSTRUCTION,BRAZOS,TOPPING,SEAN MONK,,2025-11-07 07:00,2025-11-10 17:00,2025-10-09 07:00,2025-10-09 17:00,2025-11-20 17:00,2025-11-20 17:00,2025-12-05 17:00,2025-12-05 17:00,0,20,100
CN.SWB5.1700,IMPACT [S.TIA-17 / E.TIA-8] - FRP SLAB LEAVEOUT - SE PENTHOUSE - GL 3-3.2 - L4/C,Complete,SEB - 5,East Support Building,SOUTH EAST PENTHOUSE,L4 - SUP Roof - FAB Roof,,CONSTRUCTION,BAKER,TOPPING,CONCRETE,,2024-05-13 07:00,2024-05-14 17:00,2024-04-12 07:00,2024-04-17 17:00,2025-11-20 17:00,2025-11-20 17:00,2025-12-05 17:00,2025-12-05 17:00,0,20,100
CN.SWB5.1710,PH1- INSTALL HSS CLADDING STEEL - SE PENTHOUSE - MCC ROOF ROOF,Complete,SEB - 5,East Support Building,SOUTH EAST PENTHOUSE,L4 - SUP Roof - FAB Roof,,CONSTRUCTION,,INSULATED METAL PANELS,SEAN MONK,,2024-04-15 07:00,2024-05-02 11:00,2024-03-08 00:00,2024-03-29 00:00,2025-11-20 17:00,2025-11-20 17:00,2025-11-17 07:00,2025-11-17 07:00,0,124,100
CN.SWB5.1720,IMPACT - SECAI DEMO TEMP DOOR FRAMES - RE-INSTALL DOOR FRAMES & DOORS - MCC/ IO ROOM - SE PENTHOUSE,Active,SEB - 5,East Support Building,SOUTH EAST PENTHOUSE,L4 - SUP Roof - FAB Roof,,CONSTRUCTION,DOORS AND HARDWARE,TBD Architectural Finishes,SEAN MONK,,2024-10-10 07:00,2024-10-11 17:00,2024-09-26 07:00,,2025-11-21 07:00,2025-11-21 17:00,2025-12-02 07:00,2025-12-02 17:00,10,20,100
CN.SWB5.1730,PH1- INSTALL INSULATED METAL PANELS - SE PENTHOUSE - SOUTH - GL 3/2.6 - A-D,Complete,SEB - 5,East Support Building,SOUTH EAST PENTHOUSE,EXTERIOR SKIN,,CONSTRUCTION,KOVACH,INSULATED METAL PANELS,SEAN MONK,,2024-08-27 07:00,2024-09-01 17:00,2024-08-16 07:00,2024-08-22 17:00,2025-11-20 17:00,2025-11-20 17:00,2025-12-03 07:00,2025-12-03 07:00,0,60,100
CN.SWB5.1740,PH1- INSTALL EXTERIOR DOORS / LOUVERS - SE PENTHOUSE - MCC ROOF ROOF,Not Started,SEB - 5,East Support Building,SOUTH EAST PENTHOUSE,EXTERIOR SKIN,,CONSTRUCTION,DOORS AND HARDWARE,TBD Architectural Finishes,SEAN MONK,,2025-11-24 07:00,2025-11-26 17:00,,,2025-11-24 07:00,2025-11-26 17:00,2025-12-03 07:00,2025-12-05 17:00,30,30,0
CN.SWB5.1750,PH1- INSTALL EXTERIOR STEEL ACCESS STAIRS / RAMPS - SE PENTHOUSE - STAIR 69/70/71/78,Not Started,SEB - 5,East Support Building,SOUTH EAST PENTHOUSE,EXTERIOR SKIN,,CONSTRUCTION,PATRIOT,TBD Architectural Finishes,SEAN MONK,,2025-11-24 07:00,2025-11-26 17:00,,,2025-11-24 07:00,2025-11-26 17:00,2025-12-03 07:00,2025-12-05 17:00,30,30,0
CN.SWB5.1760,INSTALL INTERIOR METAL STUD FRAMING - SE PENTHOUSE - GL 3-5 C-D,Complete,SEB - 5,East Support Building,SOUTH EAST PENTHOUSE,L4 - SUP Roof - FAB Roof,,CONSTRUCTION,BERG,TBD Architectural Finishes,SEAN MONK,,2024-06-03 07:00,2024-06-10 17:00,2024-05-28 07:00,2024-06-03 17:00,2025-11-20 17:00,2025-11-20 17:00,2025-12-02 07:00,2025-12-02 07:00,0,50,100
CN.SWB5.1770,PH1- INSTALL INTERIOR DRYWALL - SE PENTHOUSE - GL 3-5 C-D,Complete,SEB - 5,East Support Building,SOUTH EAST PENTHOUSE,L4 - SUP Roof - FAB Roof,,CONSTRUCTION,BERG,DRYWALL,SEAN MONK,,2024-06-04 07:00,2024-06-10 17:00,2024-06-04 07:00,2024-07-31 17:00,2025-11-20 17:00,2025-11-20 17:00,2025-12-05 17:00,2025-12-05 17:00,0,40,100
CN.SWB5.2050,PH1- INSTALL DECKING - SE PENTHOUSE - MCC ROOF ROOF,Complete,SEB - 5,East Support Building,SOUTH EAST PENTHOUSE,L4 - SUP Roof - FAB Roof,,CONSTRUCTION,,Decking & Detail,SEAN MONK,,2024-02-12 07:00,2024-02-13 13:00,2024-02-12 07:00,2024-02-16 13:00,2025-11-20 17:00,2025-11-20 17:00,2025-10-16 07:00,2025-10-16 07:00,0,16,100
CN.AB1.ST.1540,PH1- FIRE PROOFING - SFRM INFILL STEEL - SEA5 - GL 31-33 - L3 - C-A,Complete,SEB - 5,South Areas (Team A - Gridlines 3-17),SUEN-5 - 31-33,L3 / Waffle Slab Level,,CONSTRUCTION,,Fireproofing,AMBER CARO,,2024-02-19 07:00,2024-02-23 17:00,2024-02-19 07:00,2024-02-23 17:00,2025-11-20 17:00,2025-11-20 17:00,2025-11-10 07:00,2025-11-10 07:00,0,40,100
CN.SWB5.2110,PH1- FRP STRUCTURAL SLAB SOMD - SE PENTHOUSE - L4/G,Complete,SEB - 5,East Support Building,SOUTH EAST PENTHOUSE,L4 - SUP Roof - FAB Roof,,CONSTRUCTION,BAKER,SOMD,CONCRETE,,2024-04-15 07:00,2024-04-16 13:00,2024-04-12 07:00,2024-04-17 17:00,2025-11-20 17:00,2025-11-20 17:00,2025-11-17 07:00,2025-11-17 07:00,0,16,100
CN.SEB5.1450,PH1- DS STEEL FRAME INSTALL - SEB-5 Comeback Sup Side,Complete,SEB - 5,East Support Building,SUEN-5 - 31-33,DS/AD,,CONSTRUCTION,,Steel Erection,SEAN MONK,,2023-08-31 11:00,2023-09-06 09:00,2023-08-24 11:00,2023-09-02 09:00,2025-11-20 17:00,2025-11-20 17:00,2025-06-13 08:00,2025-06-13 08:00,0,48,100
CN.SEB5.1460,PH1- EXTERIOR CURBS - SEB-5-L1,Complete,SEB - 5,East Support Building,SUEN-5 - 31-33,L1 - Fndn Slab,,CONSTRUCTION,,Pour Concrete,JAMES LEE,SOMD / Roofing / Waterproofing,2023-10-09 07:00,2023-10-12 17:00,2023-10-02 07:00,2023-10-05 17:00,2025-11-20 17:00,2025-11-20 17:00,2025-09-30 07:00,2025-09-30 07:00,0,40,100
CN.SEB5.1470,PH1- MEP PADS - SEA5 - GL 31-33 - L1 - C-A,Complete,SEB - 5,East Support Building,SUEN-5 - 31-33,L1 - Fndn Slab,,CONSTRUCTION,,Pour Concrete,JAMES LEE,SOMD / Roofing / Waterproofing,2023-11-20 07:00,2023-11-22 11:00,2023-11-20 07:00,2023-11-22 11:00,2025-11-20 17:00,2025-11-20 17:00,2025-11-10 07:00,2025-11-10 07:00,0,24,100
CN.SEB5.1241,PH1- INSTALL ELEVATOR STEEL - SEB-5- ELEVATOR 18 - L1 GL 31-32 B-C,Complete,SEB - 5,West Support Building,SUEN-5 - 31-33,L1 - Fndn Slab,ELEVATOR,CONSTRUCTION,W&W,INSULATED METAL PANELS,JAMES LIVELY,INTERIORS,2024-02-26 15:00,2024-04-01 15:00,2024-02-19 07:00,2024-05-13 17:00,2025-11-20 17:00,2025-11-20 17:00,2025-11-10 07:00,2025-11-10 07:00,0,210,100
CN.SEB5.3580,INSTALL WALL PROTECTION - ELEVATOR MECH RM 18 - GL 31-32 - C-D - L1,Not Started,SEB - 5,East Support Building,SUEN-5 - 31-33,L1 - Fndn Slab,ELEVATOR,CONSTRUCTION,BERNCO,TBD Architectural Finishes,JAMES LEE,INTERIORS,2025-11-21 07:00,2025-11-25 17:00,,,2025-11-21 07:00,2025-11-25 17:00,2025-11-24 07:00,2025-11-26 17:00,30,30,0
CN.SEB5.4250,DRYWALL & INSULATION (1 side) - SEB-5 - L1 only,Complete,SEB - 5,East Support Building,SUEN-5 - 31-33,L1 - Fndn Slab,,CONSTRUCTION,,DRYWALL,AMBER CARO,INTERIORS,2023-10-16 07:00,2023-10-19 17:00,2023-10-16 07:00,2023-10-20 17:00,2025-11-20 17:00,2025-11-20 17:00,2025-12-01 17:00,2025-12-01 17:00,0,40,100
CN.SEB5.4640,FLOOR STRIPING - SEB5 - GL 31-33 - C-A - L1,Not Started,SEB - 5,East Support Building,SUEN-5 - 31-33,L1 - Fndn Slab,,CONSTRUCTION,FLOOR STRIPING PAINT,TBD Architectural Finishes,JAMES LEE,INTERIORS,2025-12-01 07:00,2025-12-05 17:00,,,2025-12-01 07:00,2025-12-05 17:00,2025-12-01 07:00,2025-12-05 17:00,50,50,0
CN.SEB54671,H FRAME FOR ROLL UP DOOR - SEB5 - GL 31-33 - C-A - L1,Not Started,SEB - 5,East Support Building,SUEN-5 - 31-33,L1 - Fndn Slab,,CONSTRUCTION,PATRIOT,TBD Architectural Finishes,AMBER CARO,INTERIORS,2025-11-21 07:00,2025-11-21 17:00,,,2025-11-21 07:00,2025-11-21 17:00,2025-12-05 07:00,2025-12-05 17:00,10,10,0
CN.SEB5.4670,INSTALL ROLL UP DOORS (MEP ROUGH IN NOT INCLUDED) - SEA5 - GL 31-33 - C-A - L1,Not Started,SEB - 5,East Support Building,SUEN-5 - 31-33,EXTERIOR SKIN,,CONSTRUCTION,PATRIOT,TBD Architectural Finishes,AMBER CARO,INTERIORS,2025-11-26 07:00,2025-11-26 17:00,,,2025-11-26 07:00,2025-11-26 17:00,2025-11-26 07:00,2025-11-26 17:00,10,10,0
CN.SEB5R.2680,METAL STUD FRAMING (2hr) - SEA5 - GL 31-33 - L2 - C-A - BATTERY ROOM 4,Complete,SEB - 5,East Support Building,SUEN-5 - 31-33,L2 - SubFab Level,BATT RM 4,CONSTRUCTION,BERG,TBD Architectural Finishes,AMBER CARO,INTERIORS,2023-11-07 10:00,2023-11-12 08:00,2023-11-07 10:00,2023-11-11 11:00,2025-11-20 17:00,2025-11-20 17:00,2025-11-19 07:00,2025-11-19 07:00,0,48,100
CN.SEB5R.4080,MEP ROUGH IN & INSPECTION (by SECAI) - SEA5 - GL 31-33 - L2 - C-A - BATTERY ROOM 4,Complete,SEB - 5,East Support Building,SUEN-5 - 31-33,L2 - SubFab Level,BATT RM 4,CONSTRUCTION,,Owner & Design Team,AMBER CARO,,2023-11-16 07:00,2023-11-19 17:00,2023-11-16 07:00,2023-11-20 11:00,2025-11-20 17:00,2025-11-20 17:00,2025-12-05 17:00,2025-12-05 17:00,0,40,100
CN.SEB5R.4090,TAPE & FINISH DRYWALL - SEA5 - GL 31-33 - L2 - C-A - BATTERY ROOM 4,Complete,SEB - 5,East Support Building,SUEN-5 - 31-33,L2 - SubFab Level,BATT RM 4,CONSTRUCTION,,DRYWALL,AMBER CARO,INTERIORS,2024-04-01 07:00,2024-04-05 17:00,2024-03-30 07:00,2024-04-04 17:00,2025-11-20 17:00,2025-11-20 17:00,2025-12-05 17:00,2025-12-05 17:00,0,50,100
CN.SEB5R.4140,INSTALL WALL PROTECTION - ELEVATOR HALL 18 - GL 32-33 - C-D - L2,Not Started,SEB - 5,East Support Building,SUEN-5 - 31-33,L2 - SubFab Level,ELEVATOR,CONSTRUCTION,BERNCO,TBD Architectural Finishes,JAMES LEE,INTERIORS,2025-11-21 07:00,2025-11-25 17:00,,,2025-11-21 07:00,2025-11-25 17:00,2025-12-03 07:00,2025-12-05 17:00,30,30,0
CN.SEB5R.4100,FINISH PAINT - BATTERY ROOM 4 - SEB5 - GL 31-33 - C-A - L2,Not Started,SEB - 5,East Support Building,SUEN-5 - 31-33,L2 - SubFab Level,BATT RM 4,CONSTRUCTION,FINISH PAINT,TBD Architectural Finishes,JAMES LEE,INTERIORS,2025-11-21 07:00,2025-11-21 17:00,,,2025-11-21 07:00,2025-11-21 17:00,2025-12-05 07:00,2025-12-05 17:00,10,10,0
CN.SEB5R.4400,DRYWALL 2 SIDE - SEA5 - GL 31-33 - L2 - C-A - BATTERY ROOM 4 [AWAITING SPRAYPAINT TO CLOSE-IN WALL],Complete,SEB - 5,East Support Building,SUEN-5 - 31-33,L2 - SubFab Level,BATT RM 4,CONSTRUCTION,ROLLING PLAINS,DRYWALL,AMBER CARO,INTERIORS,2024-03-25 07:00,2024-03-29 17:00,2024-03-25 07:00,2024-03-29 17:00,2025-11-20 17:00,2025-11-20 17:00,2025-12-05 17:00,2025-12-05 17:00,0,50,100
CN.SEB5R.4410,DRYWALL & INSULATION (1 side) (INT) - SEA5 - GL 31-33 - L2 - C-A - BATTERY ROOM 4,Complete,SEB - 5,East Support Building,SUEN-5 - 31-33,L2 - SubFab Level,BATT RM 4,CONSTRUCTION,,DRYWALL,AMBER CARO,INTERIORS,2023-11-27 07:00,2023-12-01 17:00,2023-11-27 07:00,2023-12-01 17:00,2025-11-20 17:00,2025-11-20 17:00,2025-12-05 17:00,2025-12-05 17:00,0,40,100
CN.SEB54890,FLOOR STRIPING - BATTERY ROOM 4 - SEB5 - GL 31-33 - C-A - L2,Not Started,SEB - 5,East Support Building,SUEN-5 - 31-33,L2 - SubFab Level,BATT RM 4,CONSTRUCTION,FLOOR STRIPING PAINT,TBD Architectural Finishes,JAMES LEE,INTERIORS,2025-11-21 07:00,2025-11-21 17:00,,,2025-11-21 07:00,2025-11-21 17:00,2025-12-05 07:00,2025-12-05 17:00,10,10,0
CN.SEB5.1230,IMPACT - DRB-01 ADDITIONAL BEAMS BETWEEN FAB AND AD SEA5 GL 31 - 33,Complete,SEB - 5,,SUEN-5 - 31-33,DS/AD,,CONSTRUCTION,,Decking & Detail,,,2023-11-20 07:00,2023-11-22 11:00,2023-11-20 07:00,2023-11-22 11:00,2025-11-20 17:00,2025-11-20 17:00,2025-06-13 08:00,2025-06-13 08:00,0,24,100
CN.SEB5.4680,PH1 - CLADDING STEEL  EXTERIOR - SEA5 - GL 31-33 - C LINE (DS AREA),Complete,SEB - 5,East Support Building,SUEN-5 - 31-33,EXTERIOR SKIN,,CONSTRUCTION,,INSULATED METAL PANELS,JAMES LIVELY,,2024-03-07 07:00,2024-03-20 09:00,2024-03-07 07:00,2024-03-29 00:00,2025-11-20 17:00,2025-11-20 17:00,2025-11-17 07:00,2025-11-17 07:00,0,62,100
CN.SEB5.1001,METAL STUD FRAMING (2hr) - SEA5 - GL 31-33 - L1 - D LINE - DSAD,Complete,SEB - 5,West Support Building,SUEN-5 - 31-33,L1 - Fndn Slab,DS/AD INTERIORS,CONSTRUCTION,BERG,TBD Architectural Finishes,FIZ DATA CENTER,INTERIORS,2023-11-08 07:00,2023-11-12 15:00,2023-11-08 07:00,2023-11-11 09:00,2025-11-20 17:00,2025-11-20 17:00,2025-11-13 07:00,2025-11-13 07:00,0,48,100
CN.SEB5.1181,TAPE & FINISH DRYWALL - SEA5 - GL 31-33 - L1 - D LINE,Complete,SEB - 5,West Support Building,SUEN-5 - 31-33,L1 - Fndn Slab,DS/AD INTERIORS,CONSTRUCTION,,DRYWALL,FIZ DATA CENTER,INTERIORS,2024-01-26 07:00,2024-01-29 17:00,2023-11-22 07:00,2023-11-28 11:00,2025-11-20 17:00,2025-11-20 17:00,2025-12-01 17:00,2025-12-01 17:00,0,40,100
CN.SEB5.1191,PRIMER & PAINT DRYWALL -  GL 31-33 - D LINE - L1,Not Started,SEB - 5,West Support Building,SUEN-5 - 31-33,L1 - Fndn Slab,DS/AD INTERIORS,CONSTRUCTION,FINISH PAINT,TBD Architectural Finishes,FIZ DATA CENTER,INTERIORS,2025-11-21 07:00,2025-11-21 07:00,,,2025-11-21 07:00,2025-11-21 07:00,2025-12-01 17:00,2025-12-01 17:00,0,0,0
CN.SEB5.1171,DRYWALL 2 SIDE - SEA5 - GL 31-33 - L1 - D LINE,Complete,SEB - 5,West Support Building,SUEN-5 - 31-33,L1 - Fndn Slab,DS/AD INTERIORS,CONSTRUCTION,,DRYWALL,FIZ DATA CENTER,INTERIORS,2024-01-22 07:00,2024-01-25 17:00,2023-11-18 07:00,2023-11-22 17:00,2025-11-20 17:00,2025-11-20 17:00,2025-12-01 17:00,2025-12-01 17:00,0,40,100
CN.SEB5.1151,DRYWALL & INSULATION (1 side) (INT) - SEA5 - GL 31-33 - L1 - D LINE,Complete,SEB - 5,West Support Building,SUEN-5 - 31-33,L1 - Fndn Slab,DS/AD INTERIORS,CONSTRUCTION,,DRYWALL,FIZ DATA CENTER,INTERIORS,2023-11-14 09:00,2023-11-19 17:00,2023-11-14 09:00,2023-11-17 11:00,2025-11-20 17:00,2025-11-20 17:00,2025-11-24 07:00,2025-11-24 07:00,0,48,100
CN.SEB5.1011,REMEDY - DEMO DRYWALL (2hr) - SEB5 - GL 31-33 - D LINE - L2,Complete,SEB - 5,West Support Building,SUEN-5 - 31-33,L2 - SubFab Level,DS/AD INTERIORS,CONSTRUCTION,BERG,TBD Architectural Finishes,FIZ DATA CENTER,INTERIORS,2024-06-17 07:00,2024-06-25 17:00,2024-04-23 12:55,2024-04-25 17:00,2025-11-20 17:00,2025-11-20 17:00,2025-11-20 07:00,2025-11-20 07:00,0,60,100
CN.SEB5.1061,REMEDY - TAPE & FINISH DRYWALL - SEB5 - GL 31-33 - D LINE - L2,Complete,SEB - 5,West Support Building,SUEN-5 - 31-33,L2 - SubFab Level,DS/AD INTERIORS,CONSTRUCTION,CHERRY COATING,DRYWALL,FIZ DATA CENTER,INTERIORS,2024-08-16 07:00,2024-08-20 17:00,2024-08-16 07:00,2024-08-19 17:00,2025-11-20 17:00,2025-11-20 17:00,2025-12-05 17:00,2025-12-05 17:00,0,30,100
CN.SEB5.1071,FINISH PAINT - SEB5 - GL 31-33 - D LINE - L2,Not Started,SEB - 5,West Support Building,SUEN-5 - 31-33,L2 - SubFab Level,DS/AD INTERIORS,CONSTRUCTION,FINISH PAINT,TBD Architectural Finishes,FIZ DATA CENTER,INTERIORS,2025-11-21 07:00,2025-11-21 07:00,,,2025-11-21 07:00,2025-11-21 07:00,2025-12-05 17:00,2025-12-05 17:00,0,0,0
CN.SEB5.1041,REMEDY - FRAME & DRYWALL (INT)- SEB5 - GL 31-33 - D LINE - L2,Complete,SEB - 5,West Support Building,SUEN-5 - 31-33,L2 - SubFab Level,DS/AD INTERIORS,CONSTRUCTION,BERG,DRYWALL,FIZ DATA CENTER,INTERIORS,2024-07-22 07:00,2024-07-30 17:00,2024-07-22 07:00,2024-08-12 17:00,2025-11-20 17:00,2025-11-20 17:00,2025-11-24 07:00,2025-11-24 07:00,0,70,100
CN.SEB5.4690,PH1 -WELD CLIPS - CLADDING STEEL - SEA5 - GL 31-33 - C LINE (DS AREA),Complete,SEB - 5,East Support Building,SUEN-5 - 31-33,EXTERIOR SKIN,,CONSTRUCTION,,INSULATED METAL PANELS,JAMES LIVELY,,2023-10-11 07:00,2023-10-12 09:00,2023-10-11 07:00,2023-10-12 09:00,2025-11-20 17:00,2025-11-20 17:00,2025-11-17 07:00,2025-11-17 07:00,0,12,100
CN.SEB5.1440,IMPACT - DS STEEL BEAM STIFFNER CONNECTION FIXES - SEA5 - GL 31-33 - L4 - C-E,Complete,SEB - 5,,SUEN-5 - 31-33,DS/AD,,CONSTRUCTION,,Decking & Detail,,,2023-11-14 07:00,2023-11-18 17:00,2023-11-14 07:00,2023-11-26 07:00,2025-11-20 17:00,2025-11-20 17:00,2025-06-13 08:00,2025-06-13 08:00,0,40,100
CN.SEB5.4740,PH1- DS/AD DECKING & DETAILING GL 31-33 DS/AD SEB-5 L2,Complete,SEB - 5,East Support Building,SUEN-5 - 31-33,DS/AD,,CONSTRUCTION,,Decking & Detail,SEAN MONK,,2023-09-22 09:00,2023-09-29 13:00,2023-09-21 09:00,2023-10-18 11:00,2025-11-20 17:00,2025-11-20 17:00,2025-09-30 07:00,2025-09-30 07:00,0,64,100
CN.SEB5.4750,PH1- DS/AD FRP SLAB - SEB-5 GL 31 - 33 - L2,Complete,SEB - 5,East Support Building,SUEN-5 - 31-33,DS/AD,,CONSTRUCTION,,SOMD,CONCRETE,,2023-11-03 11:00,2023-11-08 09:00,2023-10-27 11:00,2023-10-28 13:00,2025-11-20 17:00,2025-11-20 17:00,2025-11-13 07:00,2025-11-13 07:00,0,48,100
CN.SEB5.4760,DS/AD STEEL SPRAY FIREPROOFING SFRM - SEA5 - GL 31-33 - C-E - L1 CEILING,Complete,SEB - 5,East Support Building,SUEN-5 - 31-33,DS/AD,,CONSTRUCTION,,Fireproofing,HOON WOO,,2023-11-14 07:00,2023-11-19 15:00,2023-11-14 07:00,2023-11-18 11:00,2025-11-20 17:00,2025-11-20 17:00,2025-11-24 07:00,2025-11-24 07:00,0,48,100
CN.SEB5.1081,METAL STUD FRAMING (2hr) - SEA5 - GL 31-33 - L3 - D LINE,Complete,SEB - 5,West Support Building,SUEN-5 - 31-33,L3 / Waffle Slab Level,DS/AD INTERIORS,CONSTRUCTION,BERG,TBD Architectural Finishes,FIZ DATA CENTER,INTERIORS,2024-03-25 08:00,2024-03-29 08:00,2024-03-25 08:00,2024-03-30 09:00,2025-11-20 17:00,2025-11-20 17:00,2025-06-13 08:00,2025-06-13 08:00,0,40,100
CN.SEB5.1121,TAPE & FINISH DRYWALL - SEB5 - GL 31-33 - D LINE - L3,Complete,SEB - 5,West Support Building,SUEN-5 - 31-33,L3 / Waffle Slab Level,DS/AD INTERIORS,CONSTRUCTION,CHERRY COATING,DRYWALL,FIZ DATA CENTER,INTERIORS,2024-06-10 07:00,2024-06-14 17:00,2024-06-10 07:00,2024-06-14 17:00,2025-11-20 17:00,2025-11-20 17:00,2025-06-13 08:00,2025-06-13 08:00,0,40,100
CN.SEB5.1131,D/S SGP Wall Turnover - SEB5 - GL 31-33 - D LINE - L3,Complete,SEB - 5,West Support Building,SUEN-5 - 31-33,L3 / Waffle Slab Level,DS/AD INTERIORS,CONSTRUCTION,SECAI,TBD Architectural Finishes,FIZ DATA CENTER,INTERIORS,2024-06-17 07:00,2024-06-17 17:00,2024-06-15 07:00,2024-06-15 17:00,2025-11-20 17:00,2025-11-20 17:00,2025-06-13 08:00,2025-06-13 08:00,0,10,100
CN.SEB5.1111,DRYWALL 2 SIDE - SEB5 - GL 31-33 - D LINE - L3,Complete,SEB - 5,West Support Building,SUEN-5 - 31-33,L3 / Waffle Slab Level,DS/AD INTERIORS,CONSTRUCTION,BERG,DRYWALL,FIZ DATA CENTER,INTERIORS,2024-05-23 07:00,2024-05-30 17:00,2024-04-25 07:00,2024-06-03 17:00,2025-11-20 17:00,2025-11-20 17:00,2025-06-13 08:00,2025-06-13 08:00,0,40,100
CN.SEB5.1101,DRYWALL & INSULATION (1 side) (INT) - SEA5 - GL 31-33 - L3 - D LINE,Complete,SEB - 5,West Support Building,SUEN-5 - 31-33,L3 / Waffle Slab Level,DS/AD INTERIORS,CONSTRUCTION,,DRYWALL,FIZ DATA CENTER,INTERIORS,2024-03-28 07:00,2024-03-31 17:00,2024-03-28 07:00,2024-03-30 11:00,2025-11-20 17:00,2025-11-20 17:00,2025-06-13 08:00,2025-06-13 08:00,0,40,100
CN.SEB5.6000,WATERPROOFING AT PEDASTALS - SEB5 - GL 31-33 - L4 - C-A - L4 ROOF,Complete,SEB - 5,East Support Building,SUEN-5 - 31-33,L4 - SUP Roof - FAB Roof,,CONSTRUCTION,BRAZOS,TOPPING,,SOMD / Roofing / Waterproofing,2024-06-07 07:00,2024-06-07 17:00,2023-12-04 07:00,2023-12-04 17:00,2025-11-20 17:00,2025-11-20 17:00,2025-10-16 07:00,2025-10-16 07:00,0,10,100
CN.SEB5.6010,FRP PEDASTALS - SEB5 - GL 31-33 - C-A - L4 ROOF,Complete,SEB - 5,East Support Building,SUEN-5 - 31-33,L4 - SUP Roof - FAB Roof,,CONSTRUCTION,BAKER,TOPPING,,SOMD / Roofing / Waterproofing,2024-06-10 07:00,2024-06-10 17:00,2023-12-05 07:00,2023-12-05 17:00,2025-11-20 17:00,2025-11-20 17:00,2025-10-16 07:00,2025-10-16 07:00,0,10,100
CN.SEB5.6030,STRIP PEDASTALS - SEB5 - GL 31-33 - C-A - L4 ROOF,Complete,SEB - 5,East Support Building,SUEN-5 - 31-33,L4 - SUP Roof - FAB Roof,,CONSTRUCTION,BAKER,TOPPING,,SOMD / Roofing / Waterproofing,2024-06-10 07:00,2024-06-10 17:00,2023-12-06 07:00,2023-12-06 17:00,2025-11-20 17:00,2025-11-20 17:00,2025-10-16 07:00,2025-10-16 07:00,0,10,100
CN.SEB5.6040,PATCHING & INSPECT - SEB5 - GL 31-33 - C-A - L4 ROOF,Complete,SEB - 5,East Support Building,SUEN-5 - 31-33,L4 - SUP Roof - FAB Roof,,CONSTRUCTION,BAKER,TOPPING,,SOMD / Roofing / Waterproofing,2024-06-11 07:00,2024-06-11 17:00,2023-12-07 07:00,2023-12-07 17:00,2025-11-20 17:00,2025-11-20 17:00,2025-10-16 07:00,2025-10-16 07:00,0,10,100
CN.SEB5.1141,FRAMING & DRYWALL - ELEVATOR 18 (MK MARLOW) - LEVEL 1&2,Complete,SEB - 5,West Support Building,SUEN-5 - 31-33,L1 - Fndn Slab,ELEVATOR,CONSTRUCTION,BERG,DRYWALL,JAMES LIVELY,INTERIORS,2024-07-01 07:00,2024-08-01 17:00,2024-07-03 07:00,2024-08-26 17:00,2025-11-20 17:00,2025-11-20 17:00,2025-11-24 07:00,2025-11-24 07:00,0,210,100
CN.SEB5.4780,IMPACT - E32 FORM SAVER ELEVATION HEI FIX (SECAI) - GL 32 DS/AD SEB-5 - C-E L3,Complete,SEB - 5,East Support Building,SUEN-5 - 31-33,DS/AD,,CONSTRUCTION,,Decking & Detail,SEAN MONK,,2023-09-22 09:00,2023-09-29 13:00,2023-08-08 09:00,2023-12-22 11:00,2025-11-20 17:00,2025-11-20 17:00,2025-12-05 17:00,2025-12-05 17:00,0,64,100
CN.SEB5.6220,GROUT & PATCH - SEA5 - GL 31-33 - L3 - C-A,Complete,SEB - 5,,SUEN-5 - 31-33,L3 / Waffle Slab Level,RETICLE RM,CONSTRUCTION,,TBD Architectural Finishes,,,2024-03-27 13:00,2024-03-29 09:00,2024-03-27 13:00,2024-03-29 09:00,2025-11-20 17:00,2025-11-20 17:00,2025-12-01 07:00,2025-12-01 07:00,0,16,100
CN.SEB5.6230,"PRIME, PATCH & TOPCOAT PRECAST BEAMS - RETICLE ROOM - SEB5 - GL 31-33 - C-A - L3",Complete,SEB - 5,,SUEN-5 - 31-33,L3 / Waffle Slab Level,RETICLE RM,CONSTRUCTION,CHERRY COATING,TBD Architectural Finishes,,,2024-07-22 07:00,2024-07-30 17:00,2024-07-20 07:00,2024-07-27 17:00,2025-11-20 17:00,2025-11-20 17:00,2025-12-01 07:00,2025-12-01 07:00,0,70,100
CN.SEB5.1480,PH1- DS/AD FRP SLAB - DS/AD SEB-5- L6,Complete,SEB - 5,,SUEN-5 - 31-33,DS/AD,,CONSTRUCTION,,SOMD,,,2023-10-30 07:00,2023-11-03 11:00,2023-11-02 13:00,2023-11-05 10:00,2025-11-20 17:00,2025-11-20 17:00,2025-06-13 08:00,2025-06-13 08:00,0,24,100
CN.SEB5.1490,CURE FRP SLAB - SEB-5 GL 31-33 - L6,Complete,SEB - 5,,SUEN-5 - 31-33,DS/AD,,CONSTRUCTION,,SOMD,,,2023-11-06 07:00,2023-11-08 11:00,2023-11-06 07:00,2023-11-08 11:00,2025-11-20 17:00,2025-11-20 17:00,2025-06-13 08:00,2025-06-13 08:00,0,24,100
CN.SEB5.4770,PH1- DS/AD DECKING - SEA5 - GL 31-33 - C-E DS/AD SEB-5 L3,Complete,SEB - 5,,SUEN-5 - 31-33,DS/AD,,CONSTRUCTION,,Decking & Detail,,,2023-12-28 07:00,2024-01-02 13:00,2023-12-28 07:00,2024-01-02 11:00,2025-11-20 17:00,2025-11-20 17:00,2025-12-05 17:00,2025-12-05 17:00,0,24,100
CN.SEB5.4790,PH1- DS/AD FRP SLAB - SEA5 - GL 31-33 - C-E L3,Complete,SEB - 5,,SUEN-5 - 31-33,DS/AD,,CONSTRUCTION,,SOMD,,,2024-01-02 11:00,2024-01-07 10:00,2024-01-02 11:00,2024-01-05 14:00,2025-11-20 17:00,2025-11-20 17:00,2025-12-05 17:00,2025-12-05 17:00,0,40,100
CN.SEB5.1190,DETAIL & INSPECT CLADDING STEEL - SEB-5 A LINE [SUP EXTERIOR WALL],Complete,SEB - 5,,SUEN-5 - 31-33,EXTERIOR SKIN,,CONSTRUCTION,,INSULATED METAL PANELS,,,2024-03-12 11:00,2024-03-23 17:00,2024-03-12 11:00,2024-03-15 12:00,2025-11-20 17:00,2025-11-20 17:00,2025-09-30 07:00,2025-09-30 07:00,0,56,100
CN.SEB5.6250,IMPACT [S.TIA-110] - BAKER REWORK #6 FLUTE REBAR - SEA5 - GL 31-33 - L3 - C-A,Complete,SEB - 5,East Support Building,SUEN-5 - 31-33,DS/AD,,CONSTRUCTION,,SOMD,CONCRETE,,2023-12-04 07:00,2023-12-08 17:00,2023-11-14 07:00,2023-12-28 11:00,2025-11-20 17:00,2025-11-20 17:00,2025-12-05 17:00,2025-12-05 17:00,0,40,100
CN.SEB5.4800,AD STEEL PAINT FIREPROOFING IFRM - SEA5 - GL 31-33 - C-E - L2-CEILING,Complete,SEB - 5,,SUEN-5 - 31-33,DS/AD,,CONSTRUCTION,ROLLING PLAINS,TBD Architectural Finishes,,,2024-07-15 07:00,2024-07-22 17:00,2024-07-15 07:00,2024-07-24 17:00,2025-11-20 17:00,2025-11-20 17:00,2025-12-05 17:00,2025-12-05 17:00,0,60,100
CN.SEB5.6260,IMPACT [S.TIA-117] - PENTHOUSE ELEVATION ISSUE - SEB5 GL 31-33 - A-C - ROOF,Complete,SEB - 5,East Support Building,SUEN-5 - 31-33,L4 - SUP Roof - FAB Roof,,CONSTRUCTION,,Concrete Cure,JAMES LEE,SOMD / Roofing / Waterproofing,2023-10-08 08:00,2023-11-05 08:00,2023-11-16 16:00,2023-12-29 09:00,2025-11-20 17:00,2025-11-20 17:00,2025-10-16 07:00,2025-10-16 07:00,0,240,100
CN.SEB5.1500,KNEE WALL -SEB5 - GL 31-33 - L4 - C-E -DS/AD,Complete,SEB - 5,,SUEN-5 - 31-33,DS/AD,,CONSTRUCTION,,Cast-in Place Concrete - Baker Concrete,,,2024-02-01 07:00,2024-02-04 09:00,2024-02-01 07:00,2024-02-03 12:00,2025-11-20 17:00,2025-11-20 17:00,2025-10-16 07:00,2025-10-16 07:00,0,32,100
CN.SEB5.1510,IMPACT - STARCON L4E STUBS COLUMNS SEA5 - GL 27-33 - L4E,Complete,SEB - 5,,SUEN-5 - 31-33,DS/AD,,CONSTRUCTION,,Decking & Detail,,,2023-11-30 07:00,2023-12-03 17:00,2023-11-29 08:00,2023-12-05 11:00,2025-11-20 17:00,2025-11-20 17:00,2025-06-13 08:00,2025-06-13 08:00,0,40,100
CN.SEB5.4810,D-LINE STEEL SPRAY FIREPROOFING SFRM2 - SEB5 - L3-CEILING - GL 31-33,Complete,SEB - 5,,SUEN-5 - 31-33,L4 - SUP Roof - FAB Roof,DS/AD INTERIORS,CONSTRUCTION,ROLLING PLAINS,Fireproofing,,,2024-04-30 07:00,2024-05-07 17:00,2024-04-30 07:00,2024-05-02 17:00,2025-11-20 17:00,2025-11-20 17:00,2025-06-13 08:00,2025-06-13 08:00,0,50,100
CN.SEB5.4830,IMPACT SCAFFOLD CCD APROVAL BY SECAI,Complete,SEB - 5,,SUEN-5 - 31-33,DS/AD,,CONSTRUCTION,,Fireproofing,,,2023-12-04 08:00,2023-12-19 14:00,2023-12-03 08:00,2024-01-12 16:00,2025-11-20 17:00,2025-11-20 17:00,2025-12-05 17:00,2025-12-05 17:00,0,136,100
IMPACT.SWB5.6200,IMPACT - PENTHOUSE ELEVATION ISSUE - SWB5 GL 31-33 - L-N - ROOF,Complete,SEB - 5,East Support Building,SUWN-5 - 30-33,L4 - SUP Roof - FAB Roof,,CONSTRUCTION,,Concrete Cure,JAMES LEE,SOMD / Roofing / Waterproofing,2023-10-08 08:00,2023-11-05 08:00,2023-11-16 16:00,2023-12-29 09:00,2025-11-20 17:00,2025-11-20 17:00,2025-11-17 07:00,2025-11-17 07:00,0,240,100
CN.SEB5.6270,DCC BEAM (STEEL STRUCTURE) - SEA5 - GL 31-33 - L3 - D LINE,Complete,SEB - 5,West Support Building,SUEN-5 - 31-33,L3 / Waffle Slab Level,DS/AD INTERIORS,CONSTRUCTION,,TBD Architectural Finishes,FIZ DATA CENTER,INTERIORS,2024-01-22 07:00,2024-01-26 15:00,2024-01-22 07:00,2024-01-26 15:00,2025-11-20 17:00,2025-11-20 17:00,2025-06-13 08:00,2025-06-13 08:00,0,48,100
CN.SEB5.6280,TEMPORARY SCAFFOLD PLATFORM - SEA5 - GL 31-33 - L3,Complete,SEB - 5,West Support Building,SUEN-5 - 31-33,L3 / Waffle Slab Level,DS/AD INTERIORS,CONSTRUCTION,,TBD Architectural Finishes,FIZ DATA CENTER,INTERIORS,2024-03-17 07:00,2024-03-23 15:00,2024-03-16 08:00,2024-03-20 09:00,2025-11-20 17:00,2025-11-20 17:00,2025-06-13 08:00,2025-06-13 08:00,0,48,100
CN.SEB5.6290,IMPACT - REWORK ADDED DBA's - FRP SLAB - DS/AD - SEA5 - GL 31-33 - C-E - L4 & L4/E,Complete,SEB - 5,East Support Building,SUEN-5 - 31-33,DS/AD,,CONSTRUCTION,,SOMD,CONCRETE,,2024-01-22 07:00,2024-01-24 11:00,2024-01-08 07:00,2024-01-11 14:00,2025-11-20 17:00,2025-11-20 17:00,2025-10-16 07:00,2025-10-16 07:00,0,24,100
CN.SEB5.6300,INSTALL INSULATED METAL PANEL MODULES - GL 31-33 - E LINE (AD AREA),Complete,SEB - 5,East Support Building,SUEN-5 - 31-33,DS/AD,,CONSTRUCTION,KOVACH,INSULATED METAL PANELS,CONCRETE,,2024-08-28 07:00,2024-08-29 17:00,2024-08-28 07:00,2024-09-03 17:00,2025-11-20 17:00,2025-11-20 17:00,2025-11-21 07:00,2025-11-21 07:00,0,20,100
CN.SEB5.6310,Drywall Clips & AMTS Installs Support Beams - SEB5 - GL 31-33 - D LINE - L4,Complete,SEB - 5,,SUEN-5 - 31-33,L4 - SUP Roof - FAB Roof,DS/AD INTERIORS,CONSTRUCTION,SECAI,Fireproofing,,,2024-03-25 07:00,2024-04-03 09:00,2024-03-21 07:00,2024-04-08 17:00,2025-11-20 17:00,2025-11-20 17:00,2025-06-13 08:00,2025-06-13 08:00,0,72,100
CN.SEB5.6320,DS STEEL SPRAY SFRM - SEB5 - GL 31-33 - C-D - L3 CEILING,Complete,SEB - 5,,SUEN-5 - 31-33,L4 - SUP Roof - FAB Roof,DS/AD INTERIORS,CONSTRUCTION,ROLLING PLAINS,Fireproofing,,,2024-05-28 07:00,2024-06-04 17:00,2024-05-28 07:00,2024-06-07 17:00,2025-12-02 07:00,2025-12-02 07:00,2025-12-05 17:00,2025-12-05 17:00,0,50,100
CN.SEB5.6330,ADD FLANGE EXTENSIONS/ CUT GRATING SEA5 - GL 31-33 - D LINE - L3,Complete,SEB - 5,,SUEN-5 - 31-33,L3 / Waffle Slab Level,DS/AD INTERIORS,CONSTRUCTION,,Fireproofing,,,2024-03-19 08:00,2024-03-23 12:00,2024-03-19 08:00,2024-03-21 12:00,2025-11-20 17:00,2025-11-20 17:00,2025-06-13 08:00,2025-06-13 08:00,0,24,100
CN.SEB5.6340,AD STEEL APPLY INTUMESCENT - SEB5 - GL 31-33 - D-E - L3 CEILING,Complete,SEB - 5,,SUEN-5 - 31-33,L4 - SUP Roof - FAB Roof,DS/AD INTERIORS,CONSTRUCTION,ROLLING PLAINS,Fireproofing,,,2024-06-14 07:00,2024-06-21 17:00,2024-06-14 07:00,2024-06-18 17:00,2025-11-20 17:00,2025-11-20 17:00,2025-06-13 08:00,2025-06-13 08:00,0,50,100
CN.SEB5.6350,MEP IN WALL ROUGH INS  SEA5 - GL 31-33 - L3 - D LINE,Complete,SEB - 5,West Support Building,SUEN-5 - 31-33,L3 / Waffle Slab Level,DS/AD INTERIORS,CONSTRUCTION,SECAI,TBD Architectural Finishes,FIZ DATA CENTER,INTERIORS,2024-04-23 07:00,2024-04-24 17:00,2024-04-23 07:00,2024-04-24 17:00,2025-11-20 17:00,2025-11-20 17:00,2025-06-13 08:00,2025-06-13 08:00,0,20,100
CN.SEB5.6460,DS SPRAY FIREPROOFING SFRM (READY MEP DUCT) - SEB5 - GL 31-33 - C-D - L4&L5 CEILING,Complete,SEB - 5,East Support Building,SUEN-5 - 31-33,L4 - SUP Roof - FAB Roof,DS/AD INTERIORS,CONSTRUCTION,ROLLING PLAINS,Fireproofing,HOON WOO,,2024-08-23 07:00,2024-08-29 17:00,2024-06-19 07:00,2024-06-28 17:00,2025-11-20 17:00,2025-11-20 17:00,2025-12-05 17:00,2025-12-05 17:00,0,50,100
CN.SEB5.6470,LOADING DOCK - LOADING DOCK RETAINING WALLS EXCAVATION & FRP - SEB5 - GL 28-33 A-LINE,Complete,SEB - 5,East Support Building,SUEN-5 - 31-33,L1 - Fndn Slab,,CONSTRUCTION,BAKER,TBD Architectural Finishes,JAMES LEE,INTERIORS,2025-02-10 07:00,2025-02-27 17:00,2025-01-20 07:00,2025-02-03 17:00,2025-11-20 17:00,2025-11-20 17:00,2025-10-15 07:00,2025-10-15 07:00,0,140,100
CN.SEA4.6480,IMPACT - STARCON L4E STUBS COLUMNS SEA5 - GL 9-6 - L4E,Complete,SEB - 5,,SUES-4 - 9-6,DS/AD,,CONSTRUCTION,,Decking & Detail,,,2023-11-30 07:00,2023-12-03 17:00,2023-11-29 08:00,2023-12-05 11:00,2025-11-20 17:00,2025-11-20 17:00,2025-06-13 08:00,2025-06-13 08:00,0,40,100
CN.SEB5.6510,INSTALL RAISED ACCESS FLOORING - I/O FAB146502 - SUE - L4- NE PH,Not Started,SEB - 5,East Support Building,SUEN-5 - 31-33,L4 - SUP Roof - FAB Roof,,CONSTRUCTION,SELECT PREFAB,TOPPING,JAMES LEE,INTERIORS,2025-12-01 07:00,2025-12-03 17:00,,,2025-12-01 07:00,2025-12-03 17:00,2025-11-26 07:00,2025-12-02 17:00,30,30,0
CN.SEB5.6520,INSTALL RAISED ACCESS FLOORING - I/O FAB126512 - SUE - L2 - GL B/33,Complete,SEB - 5,East Support Building,SUEN-5 - 31-33,L2 - SubFab Level,I/O 1,CONSTRUCTION,SELECT PREFAB,TBD Architectural Finishes,JAMES LEE,INTERIORS,2025-02-17 07:00,2025-02-26 17:00,2025-02-17 07:00,2025-02-20 17:00,2025-11-20 17:00,2025-11-20 17:00,2025-11-21 07:00,2025-11-21 07:00,0,80,100
CN.SEB5.6540,IMPACT [S11] - ELEVATOR 18 CASING CUT DOWN - SEB-5 - L1 GL 31-32 B-C,Complete,SEB - 5,West Support Building,ELEVATORS,L1 - Fndn Slab,ELEVATOR,PRE - CON / BUYOUT / IMPACTS,,INSULATED METAL PANELS,JAMES LIVELY,INTERIORS,2024-02-16 14:00,2024-02-21 16:00,2024-01-22 14:00,2024-03-08 16:00,2025-11-20 17:00,2025-11-20 17:00,2025-11-10 07:00,2025-11-10 07:00,0,32,100
CN.SEB5.6550,IMPACT [S.TIA-19] - ELEVATOR 18 HSS SPLICE CONNECTION - SEB-4,Complete,SEB - 5,East Support Building,ELEVATORS,L1 - Fndn Slab,ELEVATOR,PRE - CON / BUYOUT / IMPACTS,,TBD Architectural Finishes,AMBER CARO,INTERIORS,2024-04-16 11:00,2024-04-17 17:00,2023-10-31 00:00,2023-11-25 00:00,2025-11-20 17:00,2025-11-20 17:00,2025-11-10 07:00,2025-11-10 07:00,0,16,100
CN.SWB5.6810,IMPACT [S.TIA-17 / E.TIA-8] - SECAI/STARCON MEP PIPE RACK CRANE INTERFERANCE - SE PENTHOUSE - MCC ROOF ROOF,Complete,SEB - 5,East Support Building,SOUTH EAST PENTHOUSE,L4 - SUP Roof - FAB Roof,,CONSTRUCTION,,TOPPING,CONCRETE,,2024-02-26 07:00,2024-03-05 17:00,2024-02-14 07:00,2024-03-07 00:00,2025-11-20 17:00,2025-11-20 17:00,2025-11-17 07:00,2025-11-17 07:00,0,70,100
CN.SEB5.6560,INSTALL ELEVATOR HSS STEEL DOOR OPENINGS - ELEVATOR 18 - Expected finish 5/9,Complete,SEB - 5,East Support Building,SUEN-5 - 31-33,,ELEVATOR,CONSTRUCTION,W&W,DRYWALL,AMBER CARO,INTERIORS,2025-05-07 07:00,2025-05-19 17:00,2025-04-28 07:00,2025-05-16 17:00,2025-11-20 17:00,2025-11-20 17:00,2025-12-01 07:00,2025-12-01 07:00,0,90,100
CN.SEB5.6610,"PRIME, PATCH & TOPCOAT PRECAST COLUMNS - RETICLE ROOM - SEB5 - GL 31-33 - C-A - L3",Complete,SEB - 5,,SUEN-5 - 31-33,L3 / Waffle Slab Level,RETICLE RM,CONSTRUCTION,CHERRY COATING,TBD Architectural Finishes,,,2024-06-20 07:00,2024-06-24 17:00,2024-07-20 07:00,2024-07-27 17:00,2025-11-20 17:00,2025-11-20 17:00,2025-12-05 17:00,2025-12-05 17:00,0,30,100
CN.SEB5.6670,IMPACT - D-LINE STEEL SPRAY FIREPROOFING SFRM2 - SEB5 - L3-CEILING - GL 31-33,Complete,SEB - 5,,SUEN-5 - 31-33,L4 - SUP Roof - FAB Roof,DS/AD INTERIORS,CONSTRUCTION,ROLLING PLAINS,Fireproofing,,,2024-04-25 07:00,2024-05-03 17:00,2024-04-25 07:00,2024-04-30 17:00,2025-11-20 17:00,2025-11-20 17:00,2025-06-13 08:00,2025-06-13 08:00,0,60,100
CN.SEB5.6123,STEEL SPRAY FIREPROOFING SFRM - SEB5 - GL 31-33 - L5-L6,Complete,SEB - 5,,NORTH EAST PENTHOUSE,L5 - SUP L5,,CONSTRUCTION,ROLLING PLAINS,TBD Architectural Finishes,,,2024-08-29 07:00,2024-09-13 17:00,2024-06-10 07:00,2024-08-20 17:00,2025-11-20 17:00,2025-11-20 17:00,2025-11-17 07:00,2025-11-17 07:00,0,100,100
CN.SEA5.8030,STEEL SPRAY FIREPROOFING SFRM - SEA5 - GL 3-6 - L5-L6,Complete,SEB - 5,,SOUTH EAST PENTHOUSE,L5 - SUP L5,,CONSTRUCTION,ROLLING PLAINS,TBD Architectural Finishes,,,2024-04-22 07:00,2024-05-07 17:00,2024-04-22 07:00,2024-05-02 17:00,2025-11-20 17:00,2025-11-20 17:00,2025-12-02 07:00,2025-12-02 07:00,0,110,100
CN.SEA5.8040,STEEL SPRAY FIREPROOFING SFRM - SWB5 - GL 3-6 - L5-L6,Complete,SEB - 5,,NORTH WEST PENTHOUSE,L5 - SUP L5,,CONSTRUCTION,ROLLING PLAINS,TBD Architectural Finishes,,,2024-08-09 07:00,2024-08-22 17:00,2024-08-05 07:00,2024-08-11 17:00,2025-11-20 17:00,2025-11-20 17:00,2025-11-18 07:00,2025-11-18 07:00,0,80,100
CN.SEA5.8050,STEEL SPRAY FIREPROOFING SFRM (PREP & LATHE included) - SWA5 - SW PENTHOUSE - GL 3-6 - L5-L6,Complete,SEB - 5,,SOUTH WEST PENTHOUSE,L5 - SUP L5,,CONSTRUCTION,ROLLING PLAINS,TBD Architectural Finishes,,,2024-06-03 07:00,2024-06-17 17:00,2024-05-28 07:00,2024-06-08 17:00,2025-11-20 17:00,2025-11-20 17:00,2025-12-04 07:00,2025-12-04 07:00,0,90,100
CN.SEB5.8870,IMPACT - INSPECT & SURFACE PREP ADDITIONAL AD STEEL FOR INTUMESCENT - SEB5 - GL 31-33 - D-E - L3 CEILING,Complete,SEB - 5,,SUEN-5 - 31-33,L4 - SUP Roof - FAB Roof,DS/AD INTERIORS,CONSTRUCTION,ROLLING PLAINS,Fireproofing,,,2024-05-23 07:00,2024-06-10 17:00,2024-05-23 07:00,2024-06-13 07:00,2025-11-20 17:00,2025-11-20 17:00,2025-06-13 08:00,2025-06-13 08:00,0,100,100
CN.SEB5.8880,INSTALL FRAMING FOR IMP - GL 31-33 - E LINE (AD AREA),Complete,SEB - 5,East Support Building,SUEN-5 - 31-33,DS/AD,,CONSTRUCTION,BERG,INSULATED METAL PANELS,CONCRETE,,2024-05-02 07:00,2024-05-03 17:00,2024-05-06 07:00,2024-05-14 17:00,2025-11-20 17:00,2025-11-20 17:00,2025-11-21 07:00,2025-11-21 07:00,0,20,100
CN.SWB5.8910,PH1- INSTALL EXTERIOR STEEL ACCESS STAIRS / RAMPS - SE PENTHOUSE - ROOF - STAIR 77,Not Started,SEB - 5,East Support Building,SOUTH EAST PENTHOUSE,EXTERIOR SKIN,,CONSTRUCTION,PATRIOT,TBD Architectural Finishes,SEAN MONK,,2025-11-24 07:00,2025-11-26 17:00,,,2025-11-24 07:00,2025-11-26 17:00,2025-12-03 07:00,2025-12-05 17:00,30,30,0
CN.SWB5.8920,PH1- INSTALL EXTERIOR STEEL ACCESS STAIRS / RAMPS - SE PENTHOUSE - STAIR R11/R12/R17,Complete,SEB - 5,East Support Building,INTERIOR STAIRS,EXTERIOR SKIN,,CONSTRUCTION,PATRIOT,TBD Architectural Finishes,SEAN MONK,,2025-10-17 07:00,2025-10-21 17:00,2025-10-17 07:00,2025-10-21 17:00,2025-11-21 17:00,2025-11-21 17:00,2025-12-05 17:00,2025-12-05 17:00,0,30,100
CN.SWB5.8950,PH1- INSTALL INSULATED METAL PANELS - SE PENTHOUSE - GL 5 - A-C [LAST COLUMN OF IMP AT A/5 PENDING RFI RESPONSE],Complete,SEB - 5,East Support Building,SOUTH EAST PENTHOUSE,EXTERIOR SKIN,,CONSTRUCTION,KOVACH,INSULATED METAL PANELS,SEAN MONK,,2024-07-05 07:00,2024-07-08 17:00,2024-07-02 07:00,2024-07-09 17:00,2025-11-20 17:00,2025-11-20 17:00,2025-12-02 07:00,2025-12-02 07:00,0,40,100
CN.SEA5.8090,INSTALL TEMP STAIR & TEMP SCISSOR LIFT PLATFORM - SWA5 - GL 3-6 - L5-L6,Complete,SEB - 5,,SOUTH WEST PENTHOUSE,L5 - SUP L5,,CONSTRUCTION,ROLLING PLAINS,TBD Architectural Finishes,,,2024-05-24 07:00,2024-05-28 17:00,2024-05-23 07:00,2024-05-27 17:00,2025-11-20 17:00,2025-11-20 17:00,2025-12-04 07:00,2025-12-04 07:00,0,20,100
CN.SEB5.8920,IMPACT - IDENTIFY ISSUE WITH PANEL CONNECTION AT A32 / PREP & SUBMIT RFI - GL 32-33 - A LINE [SUP EXTERIOR WALL],Complete,SEB - 5,East Support Building,SUEN-5 - 31-33,EXTERIOR SKIN,,CONSTRUCTION,KOVACH,INSULATED METAL PANELS,JAMES LIVELY,,2024-06-07 07:00,2024-06-13 17:00,2024-06-06 07:00,2024-06-14 17:00,2025-11-20 17:00,2025-11-20 17:00,2025-09-30 07:00,2025-09-30 07:00,0,40,100
CN.SEB5.8930,IMPACT - SECAI REVIEW & APPROVE CONNECTION REPAIR PROCEDURE AT A32 - GL 32-33 - A LINE [SUP EXTERIOR WALL],Complete,SEB - 5,East Support Building,SUEN-5 - 31-33,EXTERIOR SKIN,,CONSTRUCTION,KOVACH,INSULATED METAL PANELS,JAMES LIVELY,,2024-08-13 07:00,2024-08-26 17:00,2024-06-17 07:00,2024-07-15 17:00,2025-11-20 17:00,2025-11-20 17:00,2025-09-30 07:00,2025-09-30 07:00,0,80,100
CN.SEB5.8940,IMPACT - PATRIOT COMPLETE CONNECTION REPAIR AT A32 - GL 32-33 - A LINE [SUP EXTERIOR WALL],Complete,SEB - 5,East Support Building,SUEN-5 - 31-33,EXTERIOR SKIN,,CONSTRUCTION,KOVACH,INSULATED METAL PANELS,JAMES LIVELY,,2024-08-27 07:00,2024-08-30 17:00,2024-07-22 07:00,2024-07-30 17:00,2025-11-20 17:00,2025-11-20 17:00,2025-09-30 07:00,2025-09-30 07:00,0,40,100
CN.SEB5.8950,IMPACT - INSTALL INSULATED METAL PANEL MODULES - GL 32-33 - A LINE [SUP EXTERIOR WALL],Complete,SEB - 5,East Support Building,SUEN-5 - 31-33,EXTERIOR SKIN,,CONSTRUCTION,KOVACH,INSULATED METAL PANELS,JAMES LIVELY,,2024-09-01 07:00,2024-09-08 17:00,2024-08-05 07:00,2024-08-13 17:00,2025-11-20 17:00,2025-11-20 17:00,2025-09-30 07:00,2025-09-30 07:00,0,60,100
CN.SEB5.8970,CURE - AD STEEL PAINT FIREPROOFING IFRM - SEA5 - GL 31-33 - C-E - L2-CEILING,Complete,SEB - 5,,SUEN-5 - 31-33,DS/AD,,CONSTRUCTION,ROLLING PLAINS,TBD Architectural Finishes,,,2024-08-11 07:00,2024-08-30 17:00,2024-07-24 07:00,2024-08-08 17:00,2025-11-20 17:00,2025-11-20 17:00,2025-12-05 17:00,2025-12-05 17:00,0,180,100
CN.SEB5.8980,IMPACT - Y_SBMT 0627 - PREP & SUBMIT REPAIR PROCEDURE FOR E LINE WALL - GL 29-33 - E LINE (AD AREA),Complete,SEB - 5,East Support Building,SUEN-5 - 31-33,DS/AD,,CONSTRUCTION,BERG,INSULATED METAL PANELS,CONCRETE,,2024-06-14 07:00,2024-06-20 17:00,2024-06-10 07:00,2024-06-12 17:00,2025-11-20 17:00,2025-11-20 17:00,2025-11-21 07:00,2025-11-21 07:00,0,40,100
CN.SEB5.8990,IMPACT - Y_SBMT 0627 - SECAI REVIEW & REPAIR PROCEDURE FOR E LINE WALL - GL 29-33 - E LINE (AD AREA),Complete,SEB - 5,East Support Building,SUEN-5 - 31-33,DS/AD,,CONSTRUCTION,BERG,INSULATED METAL PANELS,CONCRETE,,2024-06-17 07:00,2024-06-28 17:00,2024-06-13 07:00,2024-06-28 17:00,2025-11-20 17:00,2025-11-20 17:00,2025-11-21 07:00,2025-11-21 07:00,0,80,100
CN.SEB5.9000,IMPACT - FRAMING CORRECTIONS & INSPECTIONS - GL 29-33 - E LINE (AD AREA),Complete,SEB - 5,East Support Building,SUEN-5 - 31-33,DS/AD,,CONSTRUCTION,BERG,INSULATED METAL PANELS,CONCRETE,,2024-08-28 07:00,2024-08-29 17:00,2024-08-28 07:00,2024-08-28 17:00,2025-11-20 17:00,2025-11-20 17:00,2025-11-21 07:00,2025-11-21 07:00,0,20,100
CN.SEB5.9010,IMPACT - BAKER PERFORM REPAIR AT E LINE WALL - GL 29-33 - E LINE (AD AREA),Complete,SEB - 5,East Support Building,SUEN-5 - 31-33,DS/AD,,CONSTRUCTION,BERG,INSULATED METAL PANELS,CONCRETE,,2024-08-30 07:00,2024-09-05 17:00,2024-08-19 07:00,2024-08-27 17:00,2025-11-20 17:00,2025-11-20 17:00,2025-11-21 07:00,2025-11-21 07:00,0,40,100
CN.SWB5.9370,IMPACT - CCD XXX - COMPLETE WELD CONNECTION FIX - SE PENTHOUSE - NORTH - GL 5 - A LINE,Complete,SEB - 5,East Support Building,SOUTH EAST PENTHOUSE,EXTERIOR SKIN,,CONSTRUCTION,KOVACH,INSULATED METAL PANELS,SEAN MONK,,2024-09-13 07:00,2024-09-15 17:00,2024-08-19 07:00,2024-08-22 17:00,2025-11-20 17:00,2025-11-20 17:00,2025-12-02 07:00,2025-12-02 07:00,0,30,100
CN.SWB5.9380,IMPACT - CCD XXX - ALPHA PAINT CLADDING STEEL - SE PENTHOUSE - NORTH - GL 5 - A LINE,Complete,SEB - 5,East Support Building,SOUTH EAST PENTHOUSE,EXTERIOR SKIN,,CONSTRUCTION,KOVACH,INSULATED METAL PANELS,SEAN MONK,,2024-09-16 07:00,2024-09-17 17:00,2024-08-23 07:00,2024-08-26 17:00,2025-11-20 17:00,2025-11-20 17:00,2025-12-02 07:00,2025-12-02 07:00,0,20,100
CN.SWB5.9390,IMPACT - REMAINING INSTALL INSULATED METAL PANELS - SE PENTHOUSE - NORTH - GL 5 - A LINE,Complete,SEB - 5,East Support Building,SOUTH EAST PENTHOUSE,EXTERIOR SKIN,,CONSTRUCTION,KOVACH,INSULATED METAL PANELS,SEAN MONK,,2024-09-26 11:00,2024-09-28 11:00,2024-09-03 11:00,2024-09-06 11:00,2025-11-20 17:00,2025-11-20 17:00,2025-12-02 07:00,2025-12-02 07:00,0,20,100
CN.SWB5.9420,IMPACT - REMAINING INSTALL INSULATED METAL PANELS - SE PENTHOUSE - SOUTH - GL 3 - A LINE,Complete,SEB - 5,East Support Building,SOUTH EAST PENTHOUSE,EXTERIOR SKIN,,CONSTRUCTION,KOVACH,INSULATED METAL PANELS,SEAN MONK,,2024-09-13 07:00,2024-09-14 17:00,2024-09-03 07:00,2024-09-06 17:00,2025-11-20 17:00,2025-11-20 17:00,2025-12-05 07:00,2025-12-05 07:00,0,20,100
CN.SWB5.9430,IMPACT - WATERPROOF AT PARAPET WALL FOR IMP INSTALL - SE PENTHOUSE - NORTH - GL 5 - A LINE,Complete,SEB - 5,East Support Building,SOUTH EAST PENTHOUSE,EXTERIOR SKIN,,CONSTRUCTION,KOVACH,INSULATED METAL PANELS,SEAN MONK,,2024-09-24 11:00,2024-09-26 11:00,2024-08-27 11:00,2024-08-30 11:00,2025-11-20 17:00,2025-11-20 17:00,2025-12-02 07:00,2025-12-02 07:00,0,20,100
CN.SWB5.9440,IMPACT - WATERPROOF AT PARAPET WALL FOR IMP INSTALL - SE PENTHOUSE - SOUTH - GL 3 - A LINE,Complete,SEB - 5,East Support Building,SOUTH EAST PENTHOUSE,EXTERIOR SKIN,,CONSTRUCTION,KOVACH,INSULATED METAL PANELS,SEAN MONK,,2024-09-25 07:00,2024-09-26 17:00,2024-08-27 07:00,2024-08-30 17:00,2025-11-20 17:00,2025-11-20 17:00,2025-12-05 07:00,2025-12-05 07:00,0,20,100
CN.SEB5.9020,IMPACT - AD WATERPROOFING - SEB5 - GL 32.5-33 - D-E - L4/E,Complete,SEB - 5,East Support Building,SUEN-5 - 31-33,DS/AD,,CONSTRUCTION,BRAZOS,TOPPING,SEAN MONK,,2025-01-20 07:00,2025-02-03 17:00,2025-01-18 07:00,2025-02-03 17:00,2025-11-20 17:00,2025-11-20 17:00,2025-12-05 17:00,2025-12-05 17:00,0,110,100
CN.SEB5.9030,IMPACT - AD TOPPING SLAB - SEB5 - GL 32.5-33 - D-E - L4/E,Complete,SEB - 5,East Support Building,SUEN-5 - 31-33,DS/AD,,CONSTRUCTION,BAKER,SOMD,CONCRETE,,2025-02-03 07:00,2025-02-05 17:00,2025-02-03 07:00,2025-02-04 17:00,2025-11-20 17:00,2025-11-20 17:00,2025-12-05 17:00,2025-12-05 17:00,0,30,100
CN.SEB5.9040,IMPACT - AWAIT DESIGN FROM SECAI FOR REVISED PARAPET WALL - GL 32.5-33 - D-E & J-K - L4/E,Complete,SEB - 5,East Support Building,SUEN-5 - 31-33,DS/AD,,CONSTRUCTION,BRAZOS,TOPPING,SEAN MONK,,2024-07-15 07:00,2024-08-05 17:00,2024-06-07 07:00,2024-12-28 14:00,2025-11-20 17:00,2025-11-20 17:00,2025-12-05 17:00,2025-12-05 17:00,0,160,100
CN.SEB5.9050,IMPACT - REMEDY - SCAFFOLD INSTALL - SEB5 - GL 31-33 - D LINE - L2,Complete,SEB - 5,West Support Building,SUEN-5 - 31-33,L2 - SubFab Level,DS/AD INTERIORS,CONSTRUCTION,BERG,DRYWALL,FIZ DATA CENTER,INTERIORS,2024-07-08 07:00,2024-07-12 17:00,2024-07-08 07:00,2024-07-19 17:00,2025-11-20 17:00,2025-11-20 17:00,2025-11-20 07:00,2025-11-20 07:00,0,40,100
CN.SEB5.9060,IMPACT - REMEDY - SCAFFOLD INSTALL - SEB5 - GL 28-31 - D LINE - L2,Complete,SEB - 5,West Support Building,SUEN-4 - 28-31,L2 - SubFab Level,DS/AD INTERIORS,CONSTRUCTION,BERG,DRYWALL,FIZ DATA CENTER,INTERIORS,2024-07-08 07:00,2024-07-12 17:00,2024-07-08 07:00,2024-07-12 17:00,2025-11-20 17:00,2025-11-20 17:00,2025-11-20 07:00,2025-11-20 07:00,0,40,100
CN.SEB5.9070,IMPACT - REMEDY - SCAFFOLD INSTALL - SEB5 - GL 25-28 - D LINE - L2,Complete,SEB - 5,West Support Building,SUEN-3 - 25-28,L2 - SubFab Level,DS/AD INTERIORS,CONSTRUCTION,BERG,DRYWALL,FIZ DATA CENTER,INTERIORS,2024-07-08 07:00,2024-07-12 17:00,2024-07-08 07:00,2024-07-17 17:00,2025-11-20 17:00,2025-11-20 17:00,2025-11-20 07:00,2025-11-20 07:00,0,40,100
CN.SEB5.9080,IMPACT - SECAI PENDING WALL INSPECTION - ELEVATOR 18 - SEB5 - GL 31-33 - C-A - L1,Complete,SEB - 5,West Support Building,SUEN-5 - 31-33,,ELEVATOR,CONSTRUCTION,BERG,DRYWALL,JAMES LIVELY,INTERIORS,2024-07-01 07:00,2024-07-15 17:00,2024-07-05 07:00,2024-08-22 17:00,2025-11-20 17:00,2025-11-20 17:00,2025-11-24 07:00,2025-11-24 07:00,0,80,100
CN.SEB5.9090,INSTALL GOAL POSTS - ELEVATOR 18 HALLWAY - SEB5 - GL 31-33 - B-C - L3,Complete,SEB - 5,East Support Building,SUWN-5 - 30-33,L3 / Waffle Slab Level,ELEVATOR,CONSTRUCTION,BERG,DRYWALL,AMBER CARO,INTERIORS,2024-08-09 07:00,2024-08-20 17:00,2024-07-17 07:00,2024-07-23 17:00,2025-11-20 17:00,2025-11-20 17:00,2025-12-01 07:00,2025-12-01 07:00,0,70,100
CN.SEB55190,INSTALL GOAL POSTS - 6A AIRLOCK & PR ROOM - SEB5 - GL 31-33 - C-A - L1,Complete,SEB - 5,East Support Building,SUEN-5 - 31-33,L1 - Fndn Slab,,CONSTRUCTION,PATRIOT,TBD Architectural Finishes,AMBER CARO,INTERIORS,2024-09-20 07:00,2024-09-27 17:00,2024-09-17 07:00,2024-09-23 17:00,2025-11-20 17:00,2025-11-20 17:00,2025-12-01 17:00,2025-12-01 17:00,0,50,100
CN.SEB5.9100,INSTALL GOAL POSTS - 5D ELEVATOR 18 HALL WAY - SWB5 - GL 31-33 - B-C - L2,Complete,SEB - 5,East Support Building,SUEN-5 - 31-33,L2 - SubFab Level,ELEVATOR,CONSTRUCTION,BERG,DRYWALL,AMBER CARO,INTERIORS,2024-08-23 07:00,2024-08-30 17:00,2024-08-23 07:00,2024-08-29 17:00,2025-11-20 17:00,2025-11-20 17:00,2025-12-01 17:00,2025-12-01 17:00,0,60,100
CN.SEB5.9200,INSTALL FRAMING & DRYWALL - ELEVATOR 18 (MK MARLOW) - LEVEL 3 (SOUTH WALL FIX INCLUDED),Complete,SEB - 5,West Support Building,SUEN-5 - 31-33,L1 - Fndn Slab,ELEVATOR,CONSTRUCTION,BERG,DRYWALL,JAMES LIVELY,INTERIORS,2024-09-06 07:00,2024-09-17 17:00,2024-08-28 07:00,2024-10-03 17:00,2025-11-20 17:00,2025-11-20 17:00,2025-12-01 07:00,2025-12-01 07:00,0,70,100
CN.SEB55300,IMPACT - DUCT WORK IN THE WAY - 6A AIRLOCK & PR ROOM - SEB5 - GL 31-33 - C-A - L1,Complete,SEB - 5,East Support Building,SUEN-5 - 31-33,L1 - Fndn Slab,,CONSTRUCTION,PATRIOT,TBD Architectural Finishes,AMBER CARO,INTERIORS,2024-09-20 07:00,2024-09-27 17:00,2024-07-08 07:00,2024-09-16 17:00,2025-11-20 17:00,2025-11-20 17:00,2025-12-01 17:00,2025-12-01 17:00,0,50,100
CN.SEB5.9300,PREP & INSTALL INSTALL PERMANENT DOOR & FRAME - MECHANICAL ROOM - FAB116514A - ELEVATOR 18,Active,SEB - 5,East Support Building,SUEN-5 - 31-33,,ELEVATOR,CONSTRUCTION,W&W,DRYWALL,AMBER CARO,INTERIORS,2024-10-01 07:00,2024-10-25 17:00,2024-10-01 07:00,,2025-11-21 07:00,2025-11-21 07:00,2025-12-05 17:00,2025-12-05 17:00,0,150,100
CN.SEB5.9310,"FINAL TURNOVER - DOOR FRONTS, MECHANICAL ROOM (WITH PERM DOOR) - ELEVATOR 18",Not Started,SEB - 5,East Support Building,SUEN-5 - 31-33,,ELEVATOR,CONSTRUCTION,W&W,DRYWALL,AMBER CARO,INTERIORS,2025-12-01 17:00,2025-12-01 17:00,,,2025-12-01 17:00,2025-12-01 17:00,2025-12-05 17:00,2025-12-05 17:00,0,0,0
CN.SEB5.9320,"COMPLETE REMAINING FRAMING, DRYWALL, FIRE CAULKING - DOOR FRONTS - ELEVATOR 18",Complete,SEB - 5,East Support Building,SUEN-5 - 31-33,,ELEVATOR,CONSTRUCTION,W&W,DRYWALL,AMBER CARO,INTERIORS,2025-06-18 07:00,2025-07-21 17:00,2025-06-05 07:00,2025-07-31 17:00,2025-11-20 17:00,2025-11-20 17:00,2025-12-01 07:00,2025-12-01 07:00,0,230,100
CN.SEB5.9330,INTERIOR SHAFT & TAPE & FLOAT - SHAFT & DOOR FRONTS  - ELEVATOR 18,Active,SEB - 5,East Support Building,SUEN-5 - 31-33,,ELEVATOR,CONSTRUCTION,W&W,DRYWALL,AMBER CARO,INTERIORS,2025-09-04 07:00,2025-09-17 17:00,2025-08-25 07:00,,2025-11-21 07:00,2025-12-01 17:00,2025-12-01 07:00,2025-12-05 17:00,50,100,0
CN.SEB5.9350,LOADING DOCK - BACK FILL & FINE GRATING - SEB5 - GL 28-33 A-LINE,Complete,SEB - 5,East Support Building,SUEN-5 - 31-33,L1 - Fndn Slab,,CONSTRUCTION,BAKER,TBD Architectural Finishes,JAMES LEE,INTERIORS,2025-03-10 07:00,2025-03-12 17:00,2025-02-13 11:31,2025-03-01 16:00,2025-11-20 17:00,2025-11-20 17:00,2025-10-15 07:00,2025-10-15 07:00,0,30,100
CN.SWB5.10240,INSTALL SCAFFOLD TO DEMO DRYWALL - SE PENTHOUSE - GL 3-5 A,Complete,SEB - 5,East Support Building,SOUTH EAST PENTHOUSE,L4 - SUP Roof - FAB Roof,,CONSTRUCTION,BERG,DRYWALL,SEAN MONK,,2024-10-04 07:00,2024-10-04 17:00,2024-10-03 07:00,2024-10-14 17:00,2025-11-20 17:00,2025-11-20 17:00,2025-12-02 07:00,2025-12-02 07:00,0,10,100
CN.SWB5.10250,"DEMO A LINE TEMP DRYWALL, CLEANUP & REMOVE SCAFFOLD - SE PENTHOUSE - GL 3-5 A",Complete,SEB - 5,East Support Building,SOUTH EAST PENTHOUSE,L4 - SUP Roof - FAB Roof,,CONSTRUCTION,BERG,DRYWALL,SEAN MONK,,2024-10-15 07:00,2024-10-18 17:00,2024-10-15 07:00,2024-10-18 17:00,2025-11-20 17:00,2025-11-20 17:00,2025-12-02 07:00,2025-12-02 07:00,0,30,100
CN.SWB5.10260,REMAINING INTERIOR GL 5 WALL TAPE & FLOAT - IO ROOM / SE PENTHOUSE - GL 5,Complete,SEB - 5,East Support Building,SOUTH EAST PENTHOUSE,L4 - SUP Roof - FAB Roof,,CONSTRUCTION,BERG,DRYWALL,SEAN MONK,,2025-01-02 07:00,2025-01-02 17:00,2025-01-02 07:00,2025-01-02 17:00,2025-11-20 17:00,2025-11-20 17:00,2025-12-05 17:00,2025-12-05 17:00,0,10,100
CN.SWB5.10270,REMAINING COLUMN WRAP FRAMING & DRYWALL - MCC ROOM / SE PENTHOUSE - GL 3-4,Complete,SEB - 5,East Support Building,SOUTH EAST PENTHOUSE,L4 - SUP Roof - FAB Roof,,CONSTRUCTION,BERG,DRYWALL,SEAN MONK,,2024-10-21 07:00,2024-10-22 17:00,2024-10-21 07:00,2025-01-06 17:00,2025-11-21 07:00,2025-11-21 07:00,2025-12-02 07:00,2025-12-02 07:00,0,20,100
CN.SWB5.10280,INSTALL BENT PLATE EDGE OF SLAB - SE PENTHOUSE  - MCC RM - GL A/ 3-5,Complete,SEB - 5,East Support Building,SOUTH EAST PENTHOUSE,L4 - SUP Roof - FAB Roof,,CONSTRUCTION,BERG,Steel Erection,SEAN MONK,,2025-03-03 07:00,2025-03-04 17:00,2025-03-03 07:00,2025-03-07 17:00,2025-11-20 17:00,2025-11-20 17:00,2025-12-05 07:00,2025-12-05 07:00,0,20,100
CN.SWB5.10290,IMPACT - SECAI/ GREENBERRY PIPE SLEEVING NEEDED - SE PENTHOUSE - MCC ROOF- L6,Complete,SEB - 5,East Support Building,SOUTH EAST PENTHOUSE,L6 - PENTHOUSE / DS ROOF,,CONSTRUCTION,,Pour Concrete,CONCRETE,,2024-02-17 08:00,2024-02-19 12:00,2024-09-17 08:00,2024-10-30 17:00,2025-11-20 17:00,2025-11-20 17:00,2025-12-05 17:00,2025-12-05 17:00,0,24,100
CN.SWB5.10300,IMPACT - EXTERIORS CORNERS NEED SADDLE INSTALL - SE PENTHOUSE - MCC ROOF,Complete,SEB - 5,East Support Building,SOUTH EAST PENTHOUSE,L6 - PENTHOUSE / DS ROOF,,CONSTRUCTION,,Pour Concrete,CONCRETE,,2025-10-09 07:00,2025-10-13 17:00,2025-10-09 07:00,2025-10-09 17:00,2025-11-20 17:00,2025-11-20 17:00,2025-12-05 17:00,2025-12-05 17:00,0,50,100
CN.SWB5.10310,IMPACT - TEMP WALL DEMO PRICING - SE PENTHOUSE - GL 3-5 A,Complete,SEB - 5,East Support Building,SOUTH EAST PENTHOUSE,L4 - SUP Roof - FAB Roof,,CONSTRUCTION,BERG,TBD Architectural Finishes,SEAN MONK,,2024-10-04 07:00,2024-10-04 17:00,2024-10-02 07:00,2024-10-09 17:00,2025-11-20 17:00,2025-11-20 17:00,2025-12-02 07:00,2025-12-02 07:00,0,10,100
CN.SWB5.10320,IMPACT - TEMP WALL DEMO CCD APPROVAL - SE PENTHOUSE - GL 3-5 A,Complete,SEB - 5,East Support Building,SOUTH EAST PENTHOUSE,L4 - SUP Roof - FAB Roof,,CONSTRUCTION,BERG,TBD Architectural Finishes,SEAN MONK,,2024-10-14 07:00,2024-10-14 17:00,2024-10-14 07:00,2024-10-14 17:00,2025-11-20 17:00,2025-11-20 17:00,2025-12-02 07:00,2025-12-02 07:00,0,10,100
CN.SWB5.10330,"INSULATION, FIRESTOP & INSPECTIONS - SE PENTHOUSE - MCC RM - GL A/ 3-5",Not Started,SEB - 5,East Support Building,SOUTH EAST PENTHOUSE,L4 - SUP Roof - FAB Roof,,CONSTRUCTION,BERG,Steel Erection,SEAN MONK,,2025-11-21 07:00,2025-11-21 17:00,,,2025-11-21 07:00,2025-11-21 17:00,2025-12-05 07:00,2025-12-05 17:00,10,10,0
CN.SWB5.10640,IMPACT - SECURITY ROUGH IN NOT COMPLETE - MCC ROOM / SE PENTHOUSE - GL 3-4,Active,SEB - 5,East Support Building,SOUTH EAST PENTHOUSE,L4 - SUP Roof - FAB Roof,,CONSTRUCTION,BERG,DRYWALL,SEAN MONK,,2024-10-21 07:00,2024-10-22 17:00,2024-10-21 07:00,,2025-11-21 07:00,2025-11-24 17:00,2025-12-02 07:00,2025-12-03 17:00,20,20,0
CN.SEB5.9360,INSTALL & INSPECT PARAPET  - GL 32.5-33 - D-E & J-K - L4/E,Complete,SEB - 5,East Support Building,SUEN-5 - 31-33,DS/AD,,CONSTRUCTION,BRAZOS,TOPPING,SEAN MONK,,2025-01-13 07:00,2025-01-17 17:00,2025-01-13 07:00,2025-01-17 17:00,2025-11-20 17:00,2025-11-20 17:00,2025-12-05 17:00,2025-12-05 17:00,0,50,100
CN.AB.AR.8360,FINISH DRYWALL & FINISHES- AIRLOCK 18 - SEB5 - GL 31-33 - C-A - L3 SECAI TOOK OVER FOR ACCELERATION,Complete,SEB - 5,East Support Building,SUEN-5 - 31-33,L3 / Waffle Slab Level,AIRLOCKS & VESTABLES,CONSTRUCTION,ALK,TBD Architectural Finishes,AMBER CARO,INTERIORS,2025-01-22 07:00,2025-01-28 17:00,2025-01-22 07:00,2025-06-06 17:00,2025-11-20 17:00,2025-11-20 17:00,2025-12-05 17:00,2025-12-05 17:00,0,50,100
CN.AB.AR.8430,FINISH DRYWALL & FINISHES- VESTIUBLE 18 - SEB5 - GL 31-33 - C-A - L3 SECAI TOOK OVER FOR ACCELERATION,Complete,SEB - 5,East Support Building,SUEN-5 - 31-33,L3 / Waffle Slab Level,AIRLOCKS & VESTABLES,CONSTRUCTION,ALK,TBD Architectural Finishes,AMBER CARO,INTERIORS,2025-02-10 07:00,2025-02-18 17:00,2025-02-04 07:00,2025-06-06 17:00,2025-11-20 17:00,2025-11-20 17:00,2025-12-05 17:00,2025-12-05 17:00,0,70,100
CN.AB.AR.8510,IMPACT - AD/DS OPENING PENDING CAT WALK- AIRLOCK 18 - SEB5 - GL 31-33 - C-A - L3 SECAI TOOK OVER FOR ACCELERATION,Complete,SEB - 5,East Support Building,SUEN-5 - 31-33,L3 / Waffle Slab Level,AIRLOCKS & VESTABLES,CONSTRUCTION,ALK,TBD Architectural Finishes,AMBER CARO,INTERIORS,2025-01-22 07:00,2025-01-28 17:00,2025-01-22 07:00,2025-06-06 07:00,2025-11-20 17:00,2025-11-20 17:00,2025-12-05 17:00,2025-12-05 17:00,0,50,100
CN.SEB5.9380,ALPHA PRIMER AND TOUCH UP GOAL POST - ELEVATOR 18,Complete,SEB - 5,East Support Building,SUEN-5 - 31-33,,ELEVATOR,CONSTRUCTION,W&W,DRYWALL,AMBER CARO,INTERIORS,2025-05-14 07:00,2025-06-05 17:00,2025-05-14 07:00,2025-06-03 17:00,2025-11-20 17:00,2025-11-20 17:00,2025-12-01 07:00,2025-12-01 07:00,0,160,100
CN.SEB5.9390,CUTTING SLAB - ELEVATOR 18,Complete,SEB - 5,East Support Building,SUEN-5 - 31-33,,ELEVATOR,CONSTRUCTION,W&W,DRYWALL,AMBER CARO,INTERIORS,2025-05-13 07:00,2025-05-19 17:00,2025-05-12 07:00,2025-05-14 17:00,2025-11-20 17:00,2025-11-20 17:00,2025-12-05 17:00,2025-12-05 17:00,0,50,100
CN.SEB5.9420,"COMPLETE REMAINING FRAMING, DRYWALL, FIRE CAULKING - SHAFT & DOOR FRONTS - ELEVATOR 01B -",Complete,SEB - 5,East Support Building,SUEN-5 - 31-33,,ELEVATOR,CONSTRUCTION,W&W,DRYWALL,AMBER CARO,INTERIORS,2025-06-13 07:00,2025-07-10 17:00,2025-06-19 07:00,2025-08-01 17:00,2025-11-20 17:00,2025-11-20 17:00,2025-12-05 17:00,2025-12-05 17:00,0,190,100
CN.SEB5.9410,ALPHA PRIMER AND TOUCH UP - ELEVATOR 01B,Complete,SEB - 5,East Support Building,SUEN-5 - 31-33,,ELEVATOR,CONSTRUCTION,W&W,DRYWALL,AMBER CARO,INTERIORS,2025-05-05 07:00,2025-05-27 17:00,2025-04-24 07:00,2025-05-26 07:00,2025-11-20 17:00,2025-11-20 17:00,2025-12-05 17:00,2025-12-05 17:00,0,160,100
CN.SEB5.9440,ALPHA PRIMER AND TOUCH UP C CHANNEL EDGE ARMOUR - ELEVATOR 18 SECAI TOOK OVER,Complete,SEB - 5,East Support Building,SUEN-5 - 31-33,,ELEVATOR,CONSTRUCTION,W&W,DRYWALL,AMBER CARO,INTERIORS,2025-08-08 07:00,2025-08-18 17:00,2025-08-08 07:00,2025-08-08 17:00,2025-11-20 17:00,2025-11-20 17:00,2025-12-05 17:00,2025-12-05 17:00,0,70,100
OW.AL.1000,"OWNER - GRADING & ACCESS ROADS FOR PIERS, per APPENDIX """"D""""",Complete,OWNER CONSTRUCTION,Drilled Piers,Pier Drilling (TBD - NOVATED CONTRACT),Drilled Piers,,CONSTRUCTION,,Drilled Shaft Subcontractor - AH Beck,ANDREA SOLIS,,2022-05-02 08:00,2022-05-26 16:00,2022-05-02 08:00,2022-06-01 16:00,2025-11-20 17:00,2025-11-20 17:00,2025-06-13 08:00,2025-06-13 08:00,0,248,100
OW.AL.1010,"OWNER & CITY of GODLEY - DEEP WELL FOR TEMP WATER, per APPENDIX """"D""""",Complete,OWNER CONSTRUCTION,Drilled Piers,Pier Drilling (TBD - NOVATED CONTRACT),Drilled Piers,,CONSTRUCTION,,Drilled Shaft Subcontractor - AH Beck,ANDREA SOLIS,,2022-07-01 08:00,2022-07-26 08:00,2022-07-01 08:00,2022-07-30 16:00,2025-11-20 17:00,2025-11-20 17:00,2025-06-13 08:00,2025-06-13 08:00,0,240,100
OW.AL.1020,"OWNER - SUPPLY SITE UTILITIES, per APPENDIX """"D""""",Complete,OWNER CONSTRUCTION,Drilled Piers,Pier Drilling (TBD - NOVATED CONTRACT),Drilled Piers,,CONSTRUCTION,,Drilled Shaft Subcontractor - AH Beck,ANDREA SOLIS,,2022-07-01 08:00,2022-07-26 08:00,2022-07-01 08:00,2022-07-30 16:00,2025-11-20 17:00,2025-11-20 17:00,2025-06-13 08:00,2025-06-13 08:00,0,240,100
OW.AL.1030,"OWNER - GRADING & ACCESS ROADS FOR PRECAST & STEEL ERECTION, per APPENDIX """"D""""",Complete,OWNER CONSTRUCTION,Drilled Piers,Pier Drilling (TBD - NOVATED CONTRACT),Drilled Piers,,CONSTRUCTION,,Drilled Shaft Subcontractor - AH Beck,ANDREA SOLIS,,2022-08-01 08:00,2022-08-26 14:00,2022-08-01 08:00,2022-09-01 16:00,2025-11-20 17:00,2025-11-20 17:00,2025-06-13 08:00,2025-06-13 08:00,0,256,100
OW.AL.1040,"OWNER - ELECTRICAL GROUNDING, per FO2",Complete,OWNER CONSTRUCTION,Drilled Piers,Pier Drilling (TBD - NOVATED CONTRACT),Drilled Piers,,CONSTRUCTION,,Underground Electrical - (By Owner),ANDREA SOLIS,,2022-07-01 08:00,2022-07-27 14:00,2022-07-01 08:00,2022-08-01 16:00,2025-11-20 17:00,2025-11-20 17:00,2025-06-13 08:00,2025-06-13 08:00,0,256,100
OW.AL.1050,OWNER - TEMPORARY POWER FOR FAB 1F (480v MAIN),Complete,OWNER CONSTRUCTION,Drilled Piers,Pier Drilling (TBD - NOVATED CONTRACT),Drilled Piers,,CONSTRUCTION,,Drilled Shaft Subcontractor - AH Beck,ANDREA SOLIS,,2022-08-01 08:00,2022-08-25 16:00,2022-08-01 08:00,2022-08-31 16:00,2025-11-20 17:00,2025-11-20 17:00,2025-06-13 08:00,2025-06-13 08:00,0,248,100
OW.AL.1070,OWNER - SUBGRADE ELEVATION CORRECTION - FIZ PIERS EXCAVATION,Complete,OWNER CONSTRUCTION,Key Milestones,Pier Drilling (TBD - NOVATED CONTRACT),Milestones,,CONSTRUCTION,,Drilled Shaft Subcontractor - AH Beck,ANDREA SOLIS,,2022-05-27 08:00,2022-06-01 08:00,2022-06-30 08:00,2022-07-11 16:00,2025-11-20 17:00,2025-11-20 17:00,2025-06-13 08:00,2025-06-13 08:00,0,40,100
OW.AL.1080,"OWNER - EXCAVATION DELAY - SOUTH PITS - A1, A2, B1, B2",Complete,OWNER CONSTRUCTION,Drilled Piers,Pier Drilling (TBD - NOVATED CONTRACT),Drilled Piers,,CONSTRUCTION,,Drilled Shaft Subcontractor - AH Beck,ANDREA SOLIS,,2022-05-02 08:00,2022-05-26 16:00,2022-07-05 08:00,2022-07-26 16:00,2025-11-20 17:00,2025-11-20 17:00,2025-06-13 08:00,2025-06-13 08:00,0,248,100
OW.AL.1090,"OWNER - EXCAVATION DELAY - SOUTH PITS - A3, A4, B3, B4",Complete,OWNER CONSTRUCTION,Drilled Piers,Pier Drilling (TBD - NOVATED CONTRACT),Drilled Piers,,CONSTRUCTION,,Drilled Shaft Subcontractor - AH Beck,ANDREA SOLIS,,2022-05-02 08:00,2022-05-26 16:00,2022-07-27 08:00,2022-09-12 16:00,2025-11-20 17:00,2025-11-20 17:00,2025-06-13 08:00,2025-06-13 08:00,0,248,100
MS.ALL.TU.1160,OWNER - FIZ ON HOLD - OWNER REDESIGN,Complete,PRE CONSTRUCTION,Key Milestones,STEEL,Milestones,,PRE - CON / BUYOUT / IMPACTS,,Key Milestones,SEAN MONK,,2022-10-10 07:00,2022-10-10 07:00,2022-10-10 07:00,2022-10-10 07:00,2025-11-20 17:00,2025-11-20 17:00,2025-06-13 08:00,2025-06-13 08:00,0,0,100
A100,PH1 - EXPECTED RELEASE OF CLADDING STEEL,Complete,PRE CONSTRUCTION,Data Center (Gridlines 1-3),ENCLOSURE,EXTERIOR SKIN,,PRE - CON / BUYOUT / IMPACTS,,INSULATED METAL PANELS,JAMES LIVELY,,2022-10-10 07:00,2022-10-10 07:00,2022-10-10 07:00,2022-10-10 07:00,2025-11-20 17:00,2025-11-20 17:00,2025-06-13 08:00,2025-06-13 08:00,0,0,100
A200,PH1 - ENGINEERING & SHOPS PREPERATION - CLADDING STEEL,Complete,PRE CONSTRUCTION,Data Center (Gridlines 1-3),ENCLOSURE,EXTERIOR SKIN,,PRE - CON / BUYOUT / IMPACTS,,INSULATED METAL PANELS,JAMES LIVELY,,2022-10-10 07:00,2023-01-24 09:00,2022-10-10 07:00,2023-01-04 09:00,2025-11-20 17:00,2025-11-20 17:00,2025-06-13 08:00,2025-06-13 08:00,0,872,100
A300,PH1 - FABRICATION & MATERIAL DELIVERY - CLADDING STEEL,Complete,PRE CONSTRUCTION,Data Center (Gridlines 1-3),ENCLOSURE,EXTERIOR SKIN,,PRE - CON / BUYOUT / IMPACTS,,INSULATED METAL PANELS,JAMES LIVELY,,2023-03-04 08:00,2023-04-29 16:00,2023-03-04 08:00,2023-07-10 09:00,2025-11-20 17:00,2025-11-20 17:00,2025-06-13 08:00,2025-06-13 08:00,0,518,100
A101,PH1-EXPECTED RELEASE OF SUP - TYPE A - FLUID APPLIED ROOFING MEMBRANE,Complete,PRE CONSTRUCTION,West Support Building,ENCLOSURE,L4 - SUP Roof - FAB Roof,,PRE - CON / BUYOUT / IMPACTS,,Roofing,JAMES LIVELY,,2022-10-10 07:00,2022-10-10 07:00,2022-10-10 07:00,2022-10-10 07:00,2025-11-20 17:00,2025-11-20 17:00,2025-11-10 07:00,2025-11-10 07:00,0,0,100
A310,PH1- PROD DATA - SUBMITTAL & APPROVALS - SUP - TYPE A - FLUID APPLIED ROOFING MEMBRANE,Complete,PRE CONSTRUCTION,West Support Building,ENCLOSURE,L4 - SUP Roof - FAB Roof,,PRE - CON / BUYOUT / IMPACTS,,Roofing,JAMES LIVELY,,2022-10-10 07:00,2022-11-01 17:00,2022-10-10 07:00,2022-11-07 15:00,2025-11-20 17:00,2025-11-20 17:00,2025-11-10 07:00,2025-11-10 07:00,0,200,100
A320,PH1-MATERIAL DELIVERY - SUP - TYPE A - FLUID APPLIED ROOFING MEMBRANE,Complete,PRE CONSTRUCTION,West Support Building,ENCLOSURE,L4 - SUP Roof - FAB Roof,,PRE - CON / BUYOUT / IMPACTS,,Roofing,JAMES LIVELY,,2022-11-05 14:00,2023-01-30 10:00,2022-11-05 14:00,2023-03-03 17:00,2025-11-20 17:00,2025-11-20 17:00,2025-11-10 07:00,2025-11-10 07:00,0,696,100
A102,PH1-EXPECTED RELEASE OF FAB - ROOF DECK,Complete,PRE CONSTRUCTION,South Areas (Team A - Gridlines 3-17),STEEL,L4 - SUP Roof - FAB Roof,,PRE - CON / BUYOUT / IMPACTS,,Steel Fabricator - W&W,SEAN MONK,,2022-10-10 07:00,2022-10-10 07:00,2022-10-10 07:00,2022-10-10 07:00,2025-11-20 17:00,2025-11-20 17:00,2025-06-13 08:00,2025-06-13 08:00,0,0,100
A330,PH1-SUBMITTAL & SHOPS & APPROVALS - ROOF DECKING - FAB,Complete,PRE CONSTRUCTION,South Areas (Team A - Gridlines 3-17),STEEL,L4 - SUP Roof - FAB Roof,,PRE - CON / BUYOUT / IMPACTS,,Steel Fabricator - W&W,SEAN MONK,,2022-10-10 07:00,2022-10-28 17:00,2022-10-10 07:00,2022-11-01 13:00,2025-11-20 17:00,2025-11-20 17:00,2025-06-13 08:00,2025-06-13 08:00,0,160,100
A340,PH1-MATERIAL DELIVERY - ROOF DECKING - FAB,Complete,PRE CONSTRUCTION,South Areas (Team A - Gridlines 3-17),STEEL,L4 - SUP Roof - FAB Roof,,PRE - CON / BUYOUT / IMPACTS,,Steel Fabricator - W&W,SEAN MONK,,2023-01-31 07:00,2023-04-29 17:00,2022-12-27 07:00,2023-04-01 16:00,2025-11-20 17:00,2025-11-20 17:00,2025-06-13 08:00,2025-06-13 08:00,0,800,100
MS.ALL.MS.5180,17 TRUSS DELIVERY - (w&w provided),Complete,PRE CONSTRUCTION,,STEEL,FABRICATE / DELIVER,,PRE - CON / BUYOUT / IMPACTS,,Steel Fabricator - W&W,SEAN MONK,,2022-10-27 07:00,2022-10-27 15:00,2022-10-26 08:00,2022-10-26 16:00,2025-11-20 17:00,2025-11-20 17:00,2025-06-13 08:00,2025-06-13 08:00,0,8,100
MS.ALL.MS.5210,16 TRUSS DELIVERY - (w&w provided),Complete,PRE CONSTRUCTION,,STEEL,FABRICATE / DELIVER,,PRE - CON / BUYOUT / IMPACTS,,Steel Fabricator - W&W,SEAN MONK,,2022-10-28 08:00,2022-10-31 10:00,2022-10-28 08:00,2022-10-31 16:00,2025-11-20 17:00,2025-11-20 17:00,2025-06-13 08:00,2025-06-13 08:00,0,32,100
MS.ALL.MS.5250,15 TRUSS DELIVERY - (w&w provided),Complete,PRE CONSTRUCTION,,STEEL,FABRICATE / DELIVER,,PRE - CON / BUYOUT / IMPACTS,,Steel Fabricator - W&W,SEAN MONK,,2022-11-17 07:00,2022-11-17 15:00,2022-11-16 08:00,2022-11-16 16:00,2025-11-20 17:00,2025-11-20 17:00,2025-06-13 08:00,2025-06-13 08:00,0,8,100
MS.ALL.MS.5270,18 FIRST & FINAL TRUSS DELIVERY - (w&w provided),Complete,PRE CONSTRUCTION,,STEEL,FABRICATE / DELIVER,,PRE - CON / BUYOUT / IMPACTS,,Steel Fabricator - W&W,SEAN MONK,,2022-11-04 08:00,2022-11-11 12:00,2022-11-04 08:00,2022-11-11 16:00,2025-11-20 17:00,2025-11-20 17:00,2025-06-13 08:00,2025-06-13 08:00,0,64,100
MS.ALL.MS.5300,14 TRUSS DELIVERY - (w&w provided),Complete,PRE CONSTRUCTION,,STEEL,FABRICATE / DELIVER,,PRE - CON / BUYOUT / IMPACTS,,Steel Fabricator - W&W,SEAN MONK,,2022-11-21 08:00,2022-11-21 16:00,2022-11-21 08:00,2022-11-21 16:00,2025-11-20 17:00,2025-11-20 17:00,2025-06-13 08:00,2025-06-13 08:00,0,8,100
SECAI1000,19 TRUSS DELIVERY - (w&w provided),Complete,PRE CONSTRUCTION,,STEEL,FABRICATE / DELIVER,,PRE - CON / BUYOUT / IMPACTS,,Steel Fabricator - W&W,SEAN MONK,,2022-12-27 08:00,2022-12-30 12:00,2022-12-21 08:00,2022-12-23 16:00,2025-11-20 17:00,2025-11-20 17:00,2025-06-13 08:00,2025-06-13 08:00,0,24,100
SECAI1010,13 TRUSS DELIVERY - (w&w provided),Complete,PRE CONSTRUCTION,,STEEL,FABRICATE / DELIVER,,PRE - CON / BUYOUT / IMPACTS,,Steel Fabricator - W&W,SEAN MONK,,2022-12-08 07:00,2022-12-08 15:00,2022-12-05 08:00,2022-12-05 16:00,2025-11-20 17:00,2025-11-20 17:00,2025-06-13 08:00,2025-06-13 08:00,0,8,100
SECAI1020,12 TRUSS DELIVERY - (w&w provided),Complete,PRE CONSTRUCTION,,STEEL,FABRICATE / DELIVER,,PRE - CON / BUYOUT / IMPACTS,,Steel Fabricator - W&W,SEAN MONK,,2022-12-27 08:00,2022-12-27 16:00,2022-12-14 08:00,2022-12-14 16:00,2025-11-20 17:00,2025-11-20 17:00,2025-06-13 08:00,2025-06-13 08:00,0,8,100
SECAI1030,11 TRUSS DELIVERY - (w&w provided),Complete,PRE CONSTRUCTION,,STEEL,FABRICATE / DELIVER,,PRE - CON / BUYOUT / IMPACTS,,Steel Fabricator - W&W,SEAN MONK,,2023-01-05 08:00,2023-01-05 16:00,2022-12-23 08:00,2022-12-23 16:00,2025-11-20 17:00,2025-11-20 17:00,2025-06-13 08:00,2025-06-13 08:00,0,8,100
SECAI1040,10 TRUSS DELIVERY - (w&w provided),Complete,PRE CONSTRUCTION,,STEEL,FABRICATE / DELIVER,,PRE - CON / BUYOUT / IMPACTS,,Steel Fabricator - W&W,SEAN MONK,,2023-01-17 08:00,2023-01-17 16:00,2023-01-17 08:00,2023-01-17 16:00,2025-11-20 17:00,2025-11-20 17:00,2025-06-13 08:00,2025-06-13 08:00,0,8,100
SECAI1050,9 TRUSS DELIVERY - (secai assumption),Complete,PRE CONSTRUCTION,,STEEL,FABRICATE / DELIVER,,PRE - CON / BUYOUT / IMPACTS,,Steel Fabricator - W&W,SEAN MONK,,2023-01-26 08:00,2023-01-26 16:00,2023-01-26 08:00,2023-01-26 16:00,2025-11-20 17:00,2025-11-20 17:00,2025-06-13 08:00,2025-06-13 08:00,0,8,100
SECAI1060,8 TRUSS DELIVERY - (secai assumption),Complete,PRE CONSTRUCTION,,STEEL,FABRICATE / DELIVER,,PRE - CON / BUYOUT / IMPACTS,,Steel Fabricator - W&W,SEAN MONK,,2023-02-20 08:00,2023-02-20 16:00,2023-02-03 12:18,2023-02-04 12:00,2025-11-20 17:00,2025-11-20 17:00,2025-11-03 07:00,2025-11-03 07:00,0,8,100
SECAI1070,7 TRUSS DELIVERY - (secai assumption),Complete,PRE CONSTRUCTION,,STEEL,FABRICATE / DELIVER,,PRE - CON / BUYOUT / IMPACTS,,Steel Fabricator - W&W,SEAN MONK,,2023-02-20 08:00,2023-02-20 16:00,2023-02-13 08:00,2023-02-13 16:00,2025-11-20 17:00,2025-11-20 17:00,2025-11-03 07:00,2025-11-03 07:00,0,8,100
SECAI1080,6 TRUSS DELIVERY - (secai assumption),Complete,PRE CONSTRUCTION,,STEEL,FABRICATE / DELIVER,,PRE - CON / BUYOUT / IMPACTS,,Steel Fabricator - W&W,SEAN MONK,,2023-02-27 08:00,2023-02-27 16:00,2023-02-27 08:00,2023-02-27 16:00,2025-11-20 17:00,2025-11-20 17:00,2025-11-03 07:00,2025-11-03 07:00,0,8,100
SECAI1090,5 TRUSS DELIVERY - (secai assumption),Complete,PRE CONSTRUCTION,,STEEL,FABRICATE / DELIVER,,PRE - CON / BUYOUT / IMPACTS,,Steel Fabricator - W&W,SEAN MONK,,2023-03-03 08:00,2023-03-03 16:00,2023-03-03 08:00,2023-03-03 16:00,2025-11-20 17:00,2025-11-20 17:00,2025-11-03 07:00,2025-11-03 07:00,0,8,100
SECAI1100,4 TRUSS DELIVERY - (secai assumption),Complete,PRE CONSTRUCTION,,STEEL,FABRICATE / DELIVER,,PRE - CON / BUYOUT / IMPACTS,,Steel Fabricator - W&W,SEAN MONK,,2023-03-11 08:00,2023-03-11 16:00,2023-03-11 08:00,2023-03-11 16:00,2025-11-20 17:00,2025-11-20 17:00,2025-11-03 07:00,2025-11-03 07:00,0,8,100
SECAI1110,3 TRUSS DELIVERY - (secai assumption),Complete,PRE CONSTRUCTION,,STEEL,FABRICATE / DELIVER,,PRE - CON / BUYOUT / IMPACTS,,Steel Fabricator - W&W,SEAN MONK,,2023-04-10 08:00,2023-04-10 16:00,2023-04-10 08:00,2023-04-10 16:00,2025-11-20 17:00,2025-11-20 17:00,2025-11-03 07:00,2025-11-03 07:00,0,8,100
SECAI1120,32 TRUSS DELIVERY - (secai assumption),Complete,PRE CONSTRUCTION,,STEEL,FABRICATE / DELIVER,,PRE - CON / BUYOUT / IMPACTS,,Steel Fabricator - W&W,SEAN MONK,,2023-04-13 08:00,2023-04-13 16:00,2023-04-13 08:00,2023-04-13 16:00,2025-11-20 17:00,2025-11-20 17:00,2025-11-03 07:00,2025-11-03 07:00,0,8,100
FIZ1000,FIZ STEEL - DWG ISSUANCE - (Delayed to 11/3 - On Hold),Complete,PRE CONSTRUCTION,Data Center (Gridlines 1-3),STEEL,L1 - Fndn Slab,,PRE - CON / BUYOUT / IMPACTS,,Steel Fabricator - W&W,SEAN MONK,,2022-10-21 07:00,2022-10-21 07:00,2022-11-03 07:00,2022-11-03 07:00,2025-11-20 17:00,2025-11-20 17:00,2025-06-13 08:00,2025-06-13 08:00,0,0,100
FIZ1010,FIZ STEEL - PREP SHOP DWG & SUBMISSION,Complete,PRE CONSTRUCTION,Data Center (Gridlines 1-3),STEEL,L1 - Fndn Slab,,PRE - CON / BUYOUT / IMPACTS,,Steel Fabricator - W&W,SEAN MONK,,2022-10-21 07:00,2022-11-14 13:00,2022-12-02 07:00,2022-12-13 13:00,2025-11-20 17:00,2025-11-20 17:00,2025-06-13 08:00,2025-06-13 08:00,0,216,100
FIZ1020,FIZ STEEL - SHOP DWGS REVIEW & APPROVAL,Complete,PRE CONSTRUCTION,Data Center (Gridlines 1-3),STEEL,L1 - Fndn Slab,,PRE - CON / BUYOUT / IMPACTS,,Steel Fabricator - W&W,SEAN MONK,,2022-12-27 07:00,2023-01-10 17:00,2022-12-13 07:00,2023-01-26 12:00,2025-11-20 17:00,2025-11-20 17:00,2025-06-13 08:00,2025-06-13 08:00,0,120,100
FIZ1030,IMPACT [S.TIA-90] - FIZ STEEL - RFI 465/ 551 - SCRUB/ FABRICATION/ DELIVER,Complete,PRE CONSTRUCTION,Data Center (Gridlines 1-3),STEEL,L1 - Fndn Slab,,PRE - CON / BUYOUT / IMPACTS,,Steel Fabricator - W&W,SEAN MONK,,2023-02-20 07:00,2023-03-28 13:00,2023-02-09 07:00,2023-03-31 17:00,2025-11-20 17:00,2025-11-20 17:00,2025-06-13 08:00,2025-06-13 08:00,0,336,100
PC.PRE1010,RESOLVE E&J DESIGN ISSUES & RELEASE FOR FAB @ 17 & 16,Complete,PRE CONSTRUCTION,,PRECAST,PRECAST,,PRE - CON / BUYOUT / IMPACTS,,Precast Fabrication,SEAN MONK,,2022-10-14 08:00,2022-10-18 08:00,2022-10-14 08:00,2022-10-20 17:00,2025-11-20 17:00,2025-11-20 17:00,2025-06-13 08:00,2025-06-13 08:00,0,40,100
PC.PRE1020,FABRICATE PRECAST COLUMNS E 16 & 17 Lower,Complete,PRE CONSTRUCTION,,PRECAST,PRECAST,,PRE - CON / BUYOUT / IMPACTS,,Precast Fabrication,SEAN MONK,,2022-10-17 08:00,2022-10-22 16:00,2022-10-17 08:00,2022-10-24 17:00,2025-11-20 17:00,2025-11-20 17:00,2025-06-13 08:00,2025-06-13 08:00,0,48,100
PC.PRE1040,REFABRICATE & DELIVER J 17 &18 PRECAST COLUMNS (Rework Stirrups issue),Complete,PRE CONSTRUCTION,,PRECAST,PRECAST,,PRE - CON / BUYOUT / IMPACTS,,Precast Fabrication,SEAN MONK,,2022-11-08 08:00,2022-11-13 08:00,2022-11-08 08:00,2022-11-14 17:00,2025-11-20 17:00,2025-11-20 17:00,2025-06-13 08:00,2025-06-13 08:00,0,40,100
PC.PRE1030,Precast Columns G 17/18 - Resolve Alignment Issue,Complete,PRE CONSTRUCTION,,PRECAST,PRECAST,,PRE - CON / BUYOUT / IMPACTS,,Precast Fabrication,SEAN MONK,,2022-10-17 08:00,2022-10-27 16:00,2022-10-17 08:00,2022-10-31 17:00,2025-11-20 17:00,2025-11-20 17:00,2025-06-13 08:00,2025-06-13 08:00,0,88,100
PC.PRE1050,FABRICATE DELIVER TIER 1 PRECAST MEMBERS - SEB2 8-24 (SECAI provided),Complete,PRE CONSTRUCTION,,SUP Bldg FABRICATION,SUE LOWER,,PRE - CON / BUYOUT / IMPACTS,,Precast Fabrication,SEAN MONK,,2022-10-17 08:00,2022-12-04 08:00,2022-12-01 08:00,2023-04-17 10:00,2025-11-20 17:00,2025-11-20 17:00,2025-06-13 08:00,2025-06-13 08:00,0,400,100
PC.PRE1060,FABRICATE DELIVER TIER 1 PRECAST MEMBERS - SWA2 (14-11) / SWB1 (20-23) (SECAI provided),Complete,PRE CONSTRUCTION,,SUP Bldg FABRICATION,SUW LOWER,,PRE - CON / BUYOUT / IMPACTS,,Precast Fabrication,SEAN MONK,,2023-02-27 08:00,2023-03-18 14:00,2023-02-13 08:00,2023-05-11 17:00,2025-11-20 17:00,2025-11-20 17:00,2025-06-13 08:00,2025-06-13 08:00,0,176,100
PC.PRE1070,FABRICATE DELIVER TIER 2 ROOF MEMBER - SEA4 - 9-6 (SECAI provided),Complete,PRE CONSTRUCTION,,SUP Bldg FABRICATION,SUE UPPER,,PRE - CON / BUYOUT / IMPACTS,,Precast Fabrication,SEAN MONK,,2023-05-11 11:00,2023-05-15 11:00,2023-05-11 11:00,2023-07-08 16:00,2025-11-20 17:00,2025-11-20 17:00,2025-06-13 08:00,2025-06-13 08:00,0,40,100
PC.PRE1080,FABRICATE DELIVER TIER 2 ROOF MEMBER - SWB3 (26-29) (SECAI provided),Complete,PRE CONSTRUCTION,,SUP Bldg FABRICATION,SUW UPPER,,PRE - CON / BUYOUT / IMPACTS,,Precast Fabrication,SEAN MONK,,2023-07-18 13:00,2023-07-22 15:00,2023-07-11 13:00,2023-07-27 09:00,2025-11-20 17:00,2025-11-20 17:00,2025-06-13 08:00,2025-06-13 08:00,0,32,100
PC.PRE1090,FABRICATE PRECAST COLUMNS E 16 & 17 Upper,Complete,PRE CONSTRUCTION,,PRECAST,PRECAST,,PRE - CON / BUYOUT / IMPACTS,,Precast Fabrication,SEAN MONK,,2022-10-25 08:00,2022-10-29 10:00,2022-10-25 08:00,2022-10-28 17:00,2025-11-20 17:00,2025-11-20 17:00,2025-06-13 08:00,2025-06-13 08:00,0,32,100
WW.PRE1130,21 TRUSS DELIVERY - (w&w provided),Complete,PRE CONSTRUCTION,,STEEL,FABRICATE / DELIVER,,PRE - CON / BUYOUT / IMPACTS,,Steel Fabricator - W&W,SEAN MONK,,2023-01-12 08:00,2023-01-12 16:00,2022-12-21 08:00,2022-12-21 16:00,2025-11-20 17:00,2025-11-20 17:00,2025-11-03 07:00,2025-11-03 07:00,0,8,100
SECAI1031,22 TRUSS DELIVERY - (w&w provided),Complete,PRE CONSTRUCTION,,STEEL,FABRICATE / DELIVER,,PRE - CON / BUYOUT / IMPACTS,,Steel Fabricator - W&W,SEAN MONK,,2023-01-20 08:00,2023-01-20 16:00,2022-12-30 08:00,2022-12-30 16:00,2025-11-20 17:00,2025-11-20 17:00,2025-11-03 07:00,2025-11-03 07:00,0,8,100
SECAI1141,23 TRUSS DELIVERY - (w&w provided),Complete,PRE CONSTRUCTION,,STEEL,FABRICATE / DELIVER,,PRE - CON / BUYOUT / IMPACTS,,Steel Fabricator - W&W,SEAN MONK,,2023-01-28 08:00,2023-01-28 16:00,2023-01-07 08:00,2023-01-07 16:00,2025-11-20 17:00,2025-11-20 17:00,2025-11-03 07:00,2025-11-03 07:00,0,8,100
SECAI1151,24 TRUSS DELIVERY - (secai assumption),Complete,PRE CONSTRUCTION,,STEEL,FABRICATE / DELIVER,,PRE - CON / BUYOUT / IMPACTS,,Steel Fabricator - W&W,SEAN MONK,,2023-01-17 08:00,2023-01-17 16:00,2023-01-17 08:00,2023-01-17 16:00,2025-11-20 17:00,2025-11-20 17:00,2025-11-03 07:00,2025-11-03 07:00,0,8,100
SECAI1161,25 TRUSS DELIVERY - (secai assumption),Complete,PRE CONSTRUCTION,,STEEL,FABRICATE / DELIVER,,PRE - CON / BUYOUT / IMPACTS,,Steel Fabricator - W&W,SEAN MONK,,2023-01-26 08:00,2023-01-26 16:00,2023-01-26 08:00,2023-01-26 16:00,2025-11-20 17:00,2025-11-20 17:00,2025-11-03 07:00,2025-11-03 07:00,0,8,100
SECAI1171,26 TRUSS DELIVERY - (secai assumption),Complete,PRE CONSTRUCTION,,STEEL,FABRICATE / DELIVER,,PRE - CON / BUYOUT / IMPACTS,,Steel Fabricator - W&W,SEAN MONK,,2023-02-20 08:00,2023-02-20 16:00,2023-02-11 12:00,2023-02-11 14:00,2025-11-20 17:00,2025-11-20 17:00,2025-11-03 07:00,2025-11-03 07:00,0,8,100
SECAI1181,27 TRUSS DELIVERY - (secai assumption),Complete,PRE CONSTRUCTION,,STEEL,FABRICATE / DELIVER,,PRE - CON / BUYOUT / IMPACTS,,Steel Fabricator - W&W,SEAN MONK,,2023-02-20 08:00,2023-02-20 16:00,2023-02-13 08:00,2023-02-13 16:00,2025-11-20 17:00,2025-11-20 17:00,2025-11-03 07:00,2025-11-03 07:00,0,8,100
SECAI1191,28 TRUSS DELIVERY - (secai assumption),Complete,PRE CONSTRUCTION,,STEEL,FABRICATE / DELIVER,,PRE - CON / BUYOUT / IMPACTS,,Steel Fabricator - W&W,SEAN MONK,,2023-02-27 08:00,2023-02-27 16:00,2023-02-27 08:00,2023-02-27 16:00,2025-11-20 17:00,2025-11-20 17:00,2025-11-03 07:00,2025-11-03 07:00,0,8,100
SECAI1201,29 TRUSS DELIVERY - (secai assumption),Complete,PRE CONSTRUCTION,,STEEL,FABRICATE / DELIVER,,PRE - CON / BUYOUT / IMPACTS,,Steel Fabricator - W&W,SEAN MONK,,2023-04-10 08:00,2023-04-10 16:00,2023-04-10 08:00,2023-04-10 16:00,2025-11-20 17:00,2025-11-20 17:00,2025-11-03 07:00,2025-11-03 07:00,0,8,100
SECAI1211,30 TRUSS DELIVERY - (secai assumption),Complete,PRE CONSTRUCTION,,STEEL,FABRICATE / DELIVER,,PRE - CON / BUYOUT / IMPACTS,,Steel Fabricator - W&W,SEAN MONK,,2023-04-11 08:00,2023-04-11 16:00,2023-04-11 08:00,2023-04-11 16:00,2025-11-20 17:00,2025-11-20 17:00,2025-11-03 07:00,2025-11-03 07:00,0,8,100
SECAI1221,31 TRUSS DELIVERY - (secai assumption),Complete,PRE CONSTRUCTION,,STEEL,FABRICATE / DELIVER,,PRE - CON / BUYOUT / IMPACTS,,Steel Fabricator - W&W,SEAN MONK,,2023-04-12 08:00,2023-04-12 16:00,2023-04-12 08:00,2023-04-12 16:00,2025-11-20 17:00,2025-11-20 17:00,2025-11-03 07:00,2025-11-03 07:00,0,8,100
SECAI1231,20 TRUSS DELIVERY - (w&w provided),Complete,PRE CONSTRUCTION,,STEEL,FABRICATE / DELIVER,,PRE - CON / BUYOUT / IMPACTS,,Steel Fabricator - W&W,SEAN MONK,,2023-01-05 08:00,2023-01-05 16:00,2023-01-05 08:00,2023-01-05 16:00,2025-11-20 17:00,2025-11-20 17:00,2025-11-03 07:00,2025-11-03 07:00,0,8,100
SECAI1241,33 TRUSS DELIVERY - (secai assumption),Complete,PRE CONSTRUCTION,,STEEL,FABRICATE / DELIVER,,PRE - CON / BUYOUT / IMPACTS,,Steel Fabricator - W&W,SEAN MONK,,2023-04-14 08:00,2023-04-14 16:00,2023-04-14 08:00,2023-04-14 16:00,2025-11-20 17:00,2025-11-20 17:00,2025-11-03 07:00,2025-11-03 07:00,0,8,100
DECKSUP1031,PH1-SUBMITTAL & SHOPS SUBMITTED - INFILL STEEL - SUP,Complete,PRE CONSTRUCTION,South Areas (Team A - Gridlines 3-17),STEEL,L4 - SUP Roof - FAB Roof,,PRE - CON / BUYOUT / IMPACTS,,Steel Fabricator - W&W,SEAN MONK,,2023-02-20 07:00,2023-03-09 17:00,2023-02-08 07:00,2023-03-10 17:00,2025-11-20 17:00,2025-11-20 17:00,2025-06-13 08:00,2025-06-13 08:00,0,160,100
DECKSUP1034,PH1-MATERIAL DELIVERY - FABRICATION - INFILL STEEL- SUP,Complete,PRE CONSTRUCTION,South Areas (Team A - Gridlines 3-17),STEEL,L4 - SUP Roof - FAB Roof,,PRE - CON / BUYOUT / IMPACTS,,Steel Fabricator - W&W,SEAN MONK,,2023-03-06 15:00,2023-03-26 17:00,2023-03-06 15:00,2023-04-01 16:00,2025-11-20 17:00,2025-11-20 17:00,2025-06-13 08:00,2025-06-13 08:00,0,192,100
PC.DES1160,RE-DESIGN - PRECAST COLUMNS - C&L-LINE & SUE & SUW,Complete,PRE CONSTRUCTION,,PRECAST,PRECAST,,PRE - CON / BUYOUT / IMPACTS,,Precast Fabrication,SEAN MONK,,2022-11-08 08:00,2022-11-22 08:00,2022-11-08 08:00,2022-12-02 17:00,2025-11-20 17:00,2025-11-20 17:00,2025-06-13 08:00,2025-06-13 08:00,0,120,100
PC.DES1170,EMBEDS SHOP DWG SUBMIT & APPROVAL - PRECAST COLUMNS - C&L-LINE & SUE & SUW,Complete,PRE CONSTRUCTION,,SUP Bldg FABRICATION,SUBMITTALS & RFI'S,,PRE - CON / BUYOUT / IMPACTS,,Precast Fabrication,SEAN MONK,,2022-12-13 08:00,2022-12-30 08:00,2022-11-17 08:00,2022-12-02 17:00,2025-11-20 17:00,2025-11-20 17:00,2025-06-13 08:00,2025-06-13 08:00,0,120,100
PC.DES1180,FABRICATE DELIVER - PRECAST COLUMNS - C-LINE / SUE 8-25 INITIAL,Complete,PRE CONSTRUCTION,,SUP Bldg FABRICATION,FABRICATE / DELIVER,,PRE - CON / BUYOUT / IMPACTS,,Precast Fabrication,SEAN MONK,,2023-01-10 08:00,2023-01-19 10:00,2022-12-28 08:00,2023-01-16 07:00,2025-11-20 17:00,2025-11-20 17:00,2025-06-13 08:00,2025-06-13 08:00,0,72,100
PC.DES1190,FABRICATE DELIVER - PRECAST MEMBERS - SWA1 - 20-14 (SECAI provided),Complete,PRE CONSTRUCTION,,SUP Bldg FABRICATION,FABRICATE / DELIVER,,PRE - CON / BUYOUT / IMPACTS,,Precast Fabrication,SEAN MONK,,2023-03-16 07:00,2023-03-25 13:00,2023-01-20 08:00,2023-05-01 15:00,2025-11-20 17:00,2025-11-20 17:00,2025-06-13 08:00,2025-06-13 08:00,0,96,100
SOV.DEL.1230,STOP WORK SLAB ON VOID - Shop Dwgs & As-Built verify & EOR Approval,Complete,PRE CONSTRUCTION,South Areas (Team A - Gridlines 3-17),CONCRETE SLABS,L1 - Fndn Slab,,PRE - CON / BUYOUT / IMPACTS,,Pour Concrete,ANDREA SOLIS,,2022-11-30 07:00,2022-12-10 13:00,2022-11-30 07:00,2022-12-27 15:00,2025-11-20 17:00,2025-11-20 17:00,2025-06-13 08:00,2025-06-13 08:00,0,96,100
PC.RFI765,"PRECAST COLUMN - Repair/ Load Test - Recast - (GL15 - E,J,F,G,H) - (Delivery impacted by Base Plate)",Complete,PRE CONSTRUCTION,North Areas (Team B -Gridlines 17-33),PRECAST,PRECAST,,PRE - CON / BUYOUT / IMPACTS,,Precast Fabrication,SEAN MONK,,2022-12-01 07:00,2022-12-09 17:00,2022-12-01 07:00,2022-12-12 11:00,2025-11-20 17:00,2025-11-20 17:00,2025-06-13 08:00,2025-06-13 08:00,0,80,100
PC.DES1200,SPLICE RFI APPROVAL - PRECAST COLUMNS - C&L-LINE & SUE & SUW,Complete,PRE CONSTRUCTION,,PRECAST,PRECAST,,PRE - CON / BUYOUT / IMPACTS,,Precast Fabrication,SEAN MONK,,2022-12-06 08:00,2022-12-11 08:00,2022-12-06 08:00,2022-12-12 17:00,2025-11-20 17:00,2025-11-20 17:00,2025-06-13 08:00,2025-06-13 08:00,0,40,100
PC.DEL.1100,EOR Approval to Set & Cure Strength Delay - Column Wrong Orientation Due to Lack of IFC/ Shop Dwgs,Complete,PRE CONSTRUCTION,,PRECAST,PRECAST,,PRE - CON / BUYOUT / IMPACTS,,Precast Fabrication,SEAN MONK,,2022-11-08 08:00,2022-11-13 08:00,2022-11-15 08:00,2022-11-29 17:00,2025-11-20 17:00,2025-11-20 17:00,2025-06-13 08:00,2025-06-13 08:00,0,40,100
PC.DEL.1110,16 Line Columns not Fabricated yet,Complete,PRE CONSTRUCTION,,PRECAST,PRECAST,,PRE - CON / BUYOUT / IMPACTS,,Precast Fabrication,SEAN MONK,,2022-11-08 08:00,2022-11-12 10:00,2022-11-08 08:00,2022-11-11 16:00,2025-11-20 17:00,2025-11-20 17:00,2025-06-13 08:00,2025-06-13 08:00,0,32,100
STL.DEL.370,HILTI DECKING FASTENERS -SUBMITTAL #136 WAITING ON APPROVAL - FAB,Complete,PRE CONSTRUCTION,South Areas (Team A - Gridlines 3-17),STEEL,L4 - SUP Roof - FAB Roof,,PRE - CON / BUYOUT / IMPACTS,,Steel Fabricator - W&W,SEAN MONK,,2022-10-10 07:00,2022-10-28 17:00,2022-11-03 07:00,2022-12-06 13:00,2025-11-20 17:00,2025-11-20 17:00,2025-06-13 08:00,2025-06-13 08:00,0,160,100
STL.DEL.380,HILTI DECKING FASTENERS -MATERIAL DELIVERY - LEAD TIME - FAB,Complete,PRE CONSTRUCTION,South Areas (Team A - Gridlines 3-17),STEEL,L4 - SUP Roof - FAB Roof,,PRE - CON / BUYOUT / IMPACTS,,Steel Fabricator - W&W,SEAN MONK,,2022-12-06 15:00,2023-01-01 17:00,2022-12-06 15:00,2023-01-07 12:00,2025-11-20 17:00,2025-11-20 17:00,2025-06-13 08:00,2025-06-13 08:00,0,192,100
PC.DEL.1130,F03B.02 IFC PACKAGE Receipt (Revisions caused delays in fabrication of precast),Complete,PRE CONSTRUCTION,Support Building Overall,SUP Bldg FABRICATION,DRAWING PACKAGES,,PRE - CON / BUYOUT / IMPACTS,,Precast Fabrication,SEAN MONK,,2022-12-06 08:00,2022-12-06 16:00,2022-12-06 08:00,2022-12-06 16:00,2025-11-20 17:00,2025-11-20 17:00,2025-06-13 08:00,2025-06-13 08:00,0,8,100
FIZ1040,FIZ STEEL - RFI Approval F03.02 IFC RELEASE,Complete,PRE CONSTRUCTION,Data Center (Gridlines 1-3),STEEL,L1 - Fndn Slab,,PRE - CON / BUYOUT / IMPACTS,,Steel Fabricator - W&W,SEAN MONK,,2022-10-21 07:00,2022-11-07 17:00,2022-11-03 07:00,2022-12-02 13:00,2025-11-20 17:00,2025-11-20 17:00,2025-06-13 08:00,2025-06-13 08:00,0,160,100
SUB.30.1000,Submittal A2 Foundation Shop Drawings,Complete,PRE CONSTRUCTION,,Submittal 30 (A2 Foundation Shop Drawings),L1 - Fndn Slab,,PRE - CON / BUYOUT / IMPACTS,,Cast-in Place Concrete - Baker Concrete,ANDREA SOLIS,,2022-12-06 08:00,2022-12-20 08:00,2022-10-11 08:00,2022-10-25 16:00,2025-11-20 17:00,2025-11-20 17:00,2025-06-13 08:00,2025-06-13 08:00,0,120,100
SUB.30.1010,Submittal A2 Foundation Shop Drawings Rivised & Resubmitted,Complete,PRE CONSTRUCTION,,Submittal 30 (A2 Foundation Shop Drawings),L1 - Fndn Slab,,PRE - CON / BUYOUT / IMPACTS,,Cast-in Place Concrete - Baker Concrete,ANDREA SOLIS,,2022-12-06 08:00,2022-12-20 08:00,2022-10-25 08:00,2022-11-07 16:00,2025-11-20 17:00,2025-11-20 17:00,2025-06-13 08:00,2025-06-13 08:00,0,120,100
DS.SECAI.1030,F03B.01 IFC,Complete,PRE CONSTRUCTION,,F03B,DRAWING PACKAGES,,DESIGN,,Owner & Design Team,DONGSOO,,2022-12-06 08:00,2022-12-06 08:00,2022-10-06 08:00,2022-10-06 08:00,2025-11-20 17:00,2025-11-20 17:00,2025-06-13 08:00,2025-06-13 08:00,0,0,100
SUB.30.1020,Submittal A2 Foundation Shop Drawings Rivised & Resubmitt,Complete,PRE CONSTRUCTION,,Submittal 30 (A2 Foundation Shop Drawings),L1 - Fndn Slab,,PRE - CON / BUYOUT / IMPACTS,,Cast-in Place Concrete - Baker Concrete,ANDREA SOLIS,,2022-12-06 08:00,2022-12-20 08:00,2022-12-07 08:00,2022-12-22 12:00,2025-11-20 17:00,2025-11-20 17:00,2025-06-13 08:00,2025-06-13 08:00,0,120,100
DS.SECAI.1040,F03B.02 IFC,Complete,PRE CONSTRUCTION,,F03B,DRAWING PACKAGES,,DESIGN,,Owner & Design Team,DONGSOO,,2022-12-02 17:00,2022-12-02 17:00,2022-12-02 17:00,2022-12-02 17:00,2025-11-20 17:00,2025-11-20 17:00,2025-11-10 07:00,2025-11-10 07:00,0,0,100
SUB.20.1030,Submittal F8 Reinforcement Foundation Shop Drawings,Complete,PRE CONSTRUCTION,,Submittal 20 (F8 Foundation Reinforcment Shop Drawings),L1 - Fndn Slab,,PRE - CON / BUYOUT / IMPACTS,,Cast-in Place Concrete - Baker Concrete,ANDREA SOLIS,,2022-12-06 08:00,2022-12-20 08:00,2022-09-22 08:00,2022-11-07 08:00,2025-11-20 17:00,2025-11-20 17:00,2025-06-13 08:00,2025-06-13 08:00,0,120,100
SUB.20.1040,Submittal F8 Reinforcement Foundation Shop Drawings Revise & Resubmit,Complete,PRE CONSTRUCTION,,Submittal 20 (F8 Foundation Reinforcment Shop Drawings),L1 - Fndn Slab,,PRE - CON / BUYOUT / IMPACTS,,Cast-in Place Concrete - Baker Concrete,ANDREA SOLIS,,2022-12-06 08:00,2022-12-20 08:00,2022-12-07 08:00,2022-12-22 12:00,2025-11-20 17:00,2025-11-20 17:00,2025-06-13 08:00,2025-06-13 08:00,0,120,100
SUB.25.1050,Submittal A1 Foundation Reinforcment Shop Drawings,Complete,PRE CONSTRUCTION,,Submittal 25 (A1 Foundation Reinforcment Shop Drawings),L1 - Fndn Slab,,PRE - CON / BUYOUT / IMPACTS,,Cast-in Place Concrete - Baker Concrete,ANDREA SOLIS,,2022-12-06 08:00,2022-12-20 08:00,2022-09-22 08:00,2022-11-07 16:00,2025-11-20 17:00,2025-11-20 17:00,2025-06-13 08:00,2025-06-13 08:00,0,120,100
SUB.25.1060,Submittal A1 Foundation Reinforcment Shop Drawings Revise & Resubmit,Complete,PRE CONSTRUCTION,,Submittal 25 (A1 Foundation Reinforcment Shop Drawings),L1 - Fndn Slab,,PRE - CON / BUYOUT / IMPACTS,,Cast-in Place Concrete - Baker Concrete,ANDREA SOLIS,,2022-12-06 08:00,2022-12-20 08:00,2022-12-07 08:00,2022-12-22 12:00,2025-11-20 17:00,2025-11-20 17:00,2025-06-13 08:00,2025-06-13 08:00,0,120,100
SUB.20.1050,Review New Drawing Packages & Prepare Submittal,Complete,PRE CONSTRUCTION,,Submittal 20 (F8 Foundation Reinforcment Shop Drawings),L1 - Fndn Slab,,PRE - CON / BUYOUT / IMPACTS,,Cast-in Place Concrete - Baker Concrete,ANDREA SOLIS,,2022-12-06 08:00,2023-01-03 08:00,2022-11-07 08:00,2022-12-07 13:00,2025-11-20 17:00,2025-11-20 17:00,2025-06-13 08:00,2025-06-13 08:00,0,200,100
SUB.30.1030,Review New Drawing Packages & Prepare Submittal,Complete,PRE CONSTRUCTION,,Submittal 30 (A2 Foundation Shop Drawings),L1 - Fndn Slab,,PRE - CON / BUYOUT / IMPACTS,,Cast-in Place Concrete - Baker Concrete,ANDREA SOLIS,,2022-12-06 08:00,2023-01-03 08:00,2022-11-07 08:00,2022-12-07 13:00,2025-11-20 17:00,2025-11-20 17:00,2025-06-13 08:00,2025-06-13 08:00,0,200,100
SUB.25.1070,Review New Drawing Packages & Prepare Submittal,Complete,PRE CONSTRUCTION,,Submittal 25 (A1 Foundation Reinforcment Shop Drawings),L1 - Fndn Slab,,PRE - CON / BUYOUT / IMPACTS,,Cast-in Place Concrete - Baker Concrete,ANDREA SOLIS,,2022-12-06 08:00,2023-01-03 08:00,2022-11-07 08:00,2022-12-07 13:00,2025-11-20 17:00,2025-11-20 17:00,2025-06-13 08:00,2025-06-13 08:00,0,200,100
SUB.31.1080,Submittal A3 Foundation Shop Drawings,Complete,PRE CONSTRUCTION,,Submittal 31 (A3 Foundation Shop Drawings),L1 - Fndn Slab,,PRE - CON / BUYOUT / IMPACTS,,Cast-in Place Concrete - Baker Concrete,ANDREA SOLIS,,2022-12-06 08:00,2022-12-20 08:00,2022-10-11 08:00,2022-11-07 16:00,2025-11-20 17:00,2025-11-20 17:00,2025-06-13 08:00,2025-06-13 08:00,0,120,100
SUB.31.1090,Review New Drawing Packages & Prepare Submittal,Complete,PRE CONSTRUCTION,,Submittal 31 (A3 Foundation Shop Drawings),L1 - Fndn Slab,,PRE - CON / BUYOUT / IMPACTS,,Cast-in Place Concrete - Baker Concrete,ANDREA SOLIS,,2022-12-06 08:00,2023-01-03 08:00,2022-11-07 08:00,2022-12-07 13:00,2025-11-20 17:00,2025-11-20 17:00,2025-06-13 08:00,2025-06-13 08:00,0,200,100
SUB.31.1100,Submittal A3 Foundation Shop Drawings Revise & Resubmitt,Complete,PRE CONSTRUCTION,,Submittal 31 (A3 Foundation Shop Drawings),L1 - Fndn Slab,,PRE - CON / BUYOUT / IMPACTS,,Cast-in Place Concrete - Baker Concrete,ANDREA SOLIS,,2023-01-07 13:00,2023-01-21 13:00,2022-12-07 08:00,2022-12-22 12:00,2025-11-20 17:00,2025-11-20 17:00,2025-06-13 08:00,2025-06-13 08:00,0,120,100
SUB.31.1110,Submittal F1 Foundation Shop Drawings,Complete,PRE CONSTRUCTION,,Submittal 32 (F1 Foundation Shop Drawings),L1 - Fndn Slab,,PRE - CON / BUYOUT / IMPACTS,,Cast-in Place Concrete - Baker Concrete,ANDREA SOLIS,,2022-12-06 08:00,2022-12-20 08:00,2022-10-11 08:00,2022-11-03 16:00,2025-11-20 17:00,2025-11-20 17:00,2025-06-13 08:00,2025-06-13 08:00,0,120,100
SUB.31.1120,Review New Drawing Packages & Prepare Submittal,Complete,PRE CONSTRUCTION,,Submittal 32 (F1 Foundation Shop Drawings),L1 - Fndn Slab,,PRE - CON / BUYOUT / IMPACTS,,Cast-in Place Concrete - Baker Concrete,ANDREA SOLIS,,2022-12-06 08:00,2022-12-11 08:00,2022-11-07 08:00,2022-12-12 10:00,2025-11-20 17:00,2025-11-20 17:00,2025-06-13 08:00,2025-06-13 08:00,0,40,100
INT.P1.Stairs.1100,Execute Subcontract - Stairs,Complete,PRE CONSTRUCTION,Support Building Overall,Stairs,GL 33 STAIRS 5 & 18,,PRE - CON / BUYOUT / IMPACTS,,STAIRS,JAMES LIVELY,INTERIORS,2023-04-18 15:00,2023-05-06 09:00,2023-02-14 15:00,2023-02-15 15:00,2025-11-20 17:00,2025-11-20 17:00,2025-06-13 08:00,2025-06-13 08:00,0,144,100
INT.P1.MISC Steel.1110,FABRICATION - Misc. Steel - TRENCH ANGLES,Complete,PRE CONSTRUCTION,Support Building Overall,Misc. Steel,MISC. STEEL,,PRE - CON / BUYOUT / IMPACTS,,MISC. Steel,JAMES LIVELY,INTERIORS,2023-05-26 07:00,2023-06-09 13:00,2023-05-26 07:00,2023-08-31 17:00,2025-11-20 17:00,2025-11-20 17:00,2025-09-29 07:00,2025-09-29 07:00,0,106,100
INT.P1.DH&HW.1120,Execute Subcontract / NTP - Doors & Hardware - INTERIOR - TEMPORARY,Complete,PRE CONSTRUCTION,Support Building Overall,Doors & Hardware - INTERIOR,DOORS & HARDWARE INTERIOR,,PRE - CON / BUYOUT / IMPACTS,,DOORS & HARDWARE - INTERIOR,AMBER CARO,INTERIORS,2023-05-08 07:00,2023-05-14 12:00,2023-04-24 09:00,2023-06-24 16:00,2025-11-20 17:00,2025-11-20 17:00,2025-11-19 07:00,2025-11-19 07:00,0,55,100
INT.P1.Gypsum.1130,LOI - Execute Subcontract - Gypsum,Complete,PRE CONSTRUCTION,Support Building Overall,Gypsum,FRAMING/ DRYWALL GYPSUM,,PRE - CON / BUYOUT / IMPACTS,,DRYWALL,AMBER CARO,INTERIORS,2023-05-23 07:00,2023-05-28 15:00,2023-05-23 07:00,2023-05-30 17:00,2025-11-20 17:00,2025-11-20 17:00,2025-11-03 07:00,2025-11-03 07:00,0,48,100
INT.P1.EXP.1160,Execute Subcontract - Expasion Control,Complete,PRE CONSTRUCTION,Support Building Overall,Expansion Control,EXPANSION CONTROL,,PRE - CON / BUYOUT / IMPACTS,,Expansion Control,JAMES LIVELY,INTERIORS,2023-04-24 07:00,2023-05-02 17:00,2023-04-24 07:00,2023-07-03 17:00,2025-11-20 17:00,2025-11-20 17:00,2025-12-05 17:00,2025-12-05 17:00,0,80,100
INT.P1.FP.1170,Execute Subcontract - Fireproofing,Complete,PRE CONSTRUCTION,Support Building Overall,Fireproofing,FIREPROOFING,,PRE - CON / BUYOUT / IMPACTS,,Fireproofing,HOON WOO,INTERIORS,2023-04-20 09:00,2023-04-29 09:00,2023-04-07 14:00,2023-04-14 17:00,2025-11-20 17:00,2025-11-20 17:00,2025-06-13 08:00,2025-06-13 08:00,0,80,100
INT.P1.CRC.1180,Execute Subcontract - CRC,Complete,PRE CONSTRUCTION,Support Building Overall,CRC,CHEMICAL RESISTANT COATINGS,,PRE - CON / BUYOUT / IMPACTS,,FLOOR COATING,HOON WOO,INTERIORS,2023-05-23 15:00,2023-06-12 09:00,2023-06-12 11:00,2023-07-07 11:00,2025-11-20 17:00,2025-11-20 17:00,2025-11-24 07:00,2025-11-24 07:00,0,144,100
INT.P2.MW.1250,Execute Subcontract - COUNTERTOPS,Complete,PRE CONSTRUCTION,Support Building Overall,COUNTERTOPS,MILLWORK,,PRE - CON / BUYOUT / IMPACTS,,TBD Architectural Finishes,JAMES LEE,INTERIORS,2024-01-22 07:00,2024-01-25 17:00,2023-12-12 07:00,2023-12-21 17:00,2025-11-20 17:00,2025-11-20 17:00,2025-11-20 07:00,2025-11-20 07:00,0,40,100
INT.P2.Tile.1270,Execute Subcontract - Tiling,Complete,PRE CONSTRUCTION,Support Building Overall,Tiling,TILING,,PRE - CON / BUYOUT / IMPACTS,,FLOORING,JAMES LEE,INTERIORS,2024-01-22 07:00,2024-02-05 11:00,2023-12-22 07:00,2024-01-05 17:00,2025-11-20 17:00,2025-11-20 17:00,2025-11-20 07:00,2025-11-20 07:00,0,144,100
INT.P2.Floor.1290,Execute Subcontract - RAISED ACCESS Flooring,Complete,PRE CONSTRUCTION,Support Building Overall,RAISED ACCESS FLOORING,FLOORING,,PRE - CON / BUYOUT / IMPACTS,,FLOORING,JAMES LEE,INTERIORS,2023-10-30 16:00,2023-11-03 12:00,2023-10-09 16:00,2023-10-10 12:00,2025-11-20 17:00,2025-11-20 17:00,2025-12-05 07:00,2025-12-05 07:00,0,16,100
INT.P2.Toilet.1300,Execute Subcontract - Toilet Accessories,Complete,PRE CONSTRUCTION,Support Building Overall,Toilet Accessories - DIV10,TOILET ACCESSORIES,,PRE - CON / BUYOUT / IMPACTS,,FIXTURES & WALL PROTECTION,JAMES LEE,INTERIORS,2023-10-03 07:00,2023-10-04 13:00,2023-09-25 10:09,2023-09-28 13:00,2025-11-20 17:00,2025-11-20 17:00,2025-11-20 07:00,2025-11-20 07:00,0,16,100
INT.P2.WDP.1320,Execute Subcontract - Wall / Door Protection,Complete,PRE CONSTRUCTION,Support Building Overall,Wall / Door Protection - DIV10,WALL & DOOR PROTECTION,,PRE - CON / BUYOUT / IMPACTS,,DOORS & HARDWARE - INTERIOR,JAMES LEE,INTERIORS,2023-11-11 15:00,2023-11-13 11:00,2023-10-17 15:00,2023-10-19 12:00,2025-11-20 17:00,2025-11-20 17:00,2025-11-24 07:00,2025-11-24 07:00,0,16,100
INT.P1.Stairs.1110,Subcontractor Submit Shop Drawings / Product Data - Stairs,Complete,PRE CONSTRUCTION,Support Building Overall,Stairs,GL 33 STAIRS 5 & 18,,PRE - CON / BUYOUT / IMPACTS,,STAIRS,JAMES LIVELY,INTERIORS,2023-05-09 15:00,2023-06-23 11:00,2023-02-15 15:00,2023-04-11 13:00,2025-11-20 17:00,2025-11-20 17:00,2025-06-13 08:00,2025-06-13 08:00,0,356,100
INT.P1.MISC Steel.1120,Subcontractor Submit Shop Drawings / Product Data - Misc. Steel,Complete,PRE CONSTRUCTION,Support Building Overall,Misc. Steel,MISC. STEEL,,PRE - CON / BUYOUT / IMPACTS,,MISC. Steel,JAMES LIVELY,INTERIORS,2022-12-27 07:00,2022-12-29 13:00,2022-12-27 07:00,2023-01-10 17:00,2025-11-20 17:00,2025-11-20 17:00,2025-09-29 07:00,2025-09-29 07:00,0,16,100
INT.P1.DH&HW.1130,Subcontractor Submit Shop Drawings / Product Data - Doors & Hardware - INTERIOR,Complete,PRE CONSTRUCTION,Support Building Overall,Doors & Hardware - INTERIOR,DOORS & HARDWARE INTERIOR,,PRE - CON / BUYOUT / IMPACTS,,DOORS & HARDWARE - INTERIOR,AMBER CARO,INTERIORS,2023-08-01 13:00,2023-08-12 09:00,2023-07-03 13:00,2023-09-13 09:00,2025-11-20 17:00,2025-11-20 17:00,2025-12-05 17:00,2025-12-05 17:00,0,96,100
INT.P1.Gypsum.1140,Subcontractor Submit Shop Drawings / Product Data - Gypsum,Complete,PRE CONSTRUCTION,Support Building Overall,Gypsum,FRAMING/ DRYWALL GYPSUM,,PRE - CON / BUYOUT / IMPACTS,,DRYWALL,AMBER CARO,INTERIORS,2023-06-02 07:00,2023-06-12 13:00,2023-06-02 07:00,2023-06-22 11:00,2025-11-20 17:00,2025-11-20 17:00,2025-11-03 07:00,2025-11-03 07:00,0,96,100
INT.P1.INS.1160,Subcontractor Submit Shop Drawings / Product Data - Insulation,Complete,PRE CONSTRUCTION,Support Building Overall,Insulation,INSULATION,,PRE - CON / BUYOUT / IMPACTS,,Insulation,AMBER CARO,INTERIORS,2023-04-11 13:00,2023-04-22 09:00,2023-04-11 13:00,2023-05-26 09:00,2025-11-20 17:00,2025-11-20 17:00,2025-11-03 07:00,2025-11-03 07:00,0,96,100
INT.P1.EXP.1170,Subcontractor Submit Shop Drawings / Product Data - Expansion Control,Complete,PRE CONSTRUCTION,Support Building Overall,Expansion Control,EXPANSION CONTROL,,PRE - CON / BUYOUT / IMPACTS,,Expansion Control,JAMES LIVELY,INTERIORS,2023-08-01 13:00,2023-08-12 09:00,2023-07-03 12:55,2023-07-17 13:00,2025-11-20 17:00,2025-11-20 17:00,2025-12-05 17:00,2025-12-05 17:00,0,96,100
INT.P1.FP.1180,Subcontractor Submittals (Safety equip) - Fireproofing,Complete,PRE CONSTRUCTION,Support Building Overall,Fireproofing,FIREPROOFING,,PRE - CON / BUYOUT / IMPACTS,,Fireproofing,HOON WOO,INTERIORS,2023-04-25 13:00,2023-05-07 09:00,2023-04-15 08:00,2023-06-09 17:00,2025-11-20 17:00,2025-11-20 17:00,2025-06-13 08:00,2025-06-13 08:00,0,96,100
INT.P1.CRC.1190,Subcontractor Submit Shop Drawings / Product Data - CRC,Complete,PRE CONSTRUCTION,Support Building Overall,CRC,CHEMICAL RESISTANT COATINGS,,PRE - CON / BUYOUT / IMPACTS,,FLOOR COATING,HOON WOO,INTERIORS,2023-06-16 15:00,2023-06-27 11:00,2023-06-16 15:00,2023-08-29 13:00,2025-11-20 17:00,2025-11-20 17:00,2025-11-24 07:00,2025-11-24 07:00,0,96,100
INT.P2.MW.1260,Subcontractor Submit Shop Drawings / Product Data - COUNTERTOPS[Change of MATERIAL],Complete,PRE CONSTRUCTION,Support Building Overall,COUNTERTOPS,MILLWORK,,PRE - CON / BUYOUT / IMPACTS,,TBD Architectural Finishes,JAMES LEE,INTERIORS,2023-10-09 07:00,2023-10-13 15:00,2023-09-30 12:00,2023-10-10 17:00,2025-11-20 17:00,2025-11-20 17:00,2025-11-20 07:00,2025-11-20 07:00,0,48,100
INT.P2.Tile.1280,Subcontractor Submit Shop Drawings / Product Data - Tiling,Complete,PRE CONSTRUCTION,Support Building Overall,Tiling,TILING,,PRE - CON / BUYOUT / IMPACTS,,FLOORING,JAMES LEE,INTERIORS,2023-09-05 07:00,2023-09-15 13:00,2023-08-28 07:00,2023-10-06 17:00,2025-11-20 17:00,2025-11-20 17:00,2025-11-20 07:00,2025-11-20 07:00,0,96,100
INT.P2.Floor.1300,Subcontractor Submit Shop Drawings / Product Data - RAISED ACCESS Flooring,Complete,PRE CONSTRUCTION,Support Building Overall,RAISED ACCESS FLOORING,FLOORING,,PRE - CON / BUYOUT / IMPACTS,,FLOORING,JAMES LEE,INTERIORS,2023-08-28 07:00,2023-09-08 13:00,2023-07-20 09:00,2023-08-22 17:00,2025-11-20 17:00,2025-11-20 17:00,2025-12-05 07:00,2025-12-05 07:00,0,96,100
INT.P2.Toilet.1310,Subcontractor Submit Shop Drawings / Product Data - Toilet Accessories,Complete,PRE CONSTRUCTION,Support Building Overall,Toilet Accessories - DIV10,TOILET ACCESSORIES,,PRE - CON / BUYOUT / IMPACTS,,FIXTURES & WALL PROTECTION,JAMES LEE,INTERIORS,2023-08-28 07:00,2023-09-08 13:00,2023-08-28 07:00,2023-09-22 17:00,2025-11-20 17:00,2025-11-20 17:00,2025-11-20 07:00,2025-11-20 07:00,0,96,100
INT.P2.WDP.1330,Subcontractor Submit Shop Drawings / Product Data - Wall / Door Protection,Complete,PRE CONSTRUCTION,Support Building Overall,Wall / Door Protection - DIV10,WALL & DOOR PROTECTION,,PRE - CON / BUYOUT / IMPACTS,,DOORS & HARDWARE - INTERIOR,JAMES LEE,INTERIORS,2023-10-02 07:00,2023-10-06 15:00,2023-09-11 07:00,2023-09-23 16:00,2025-11-20 17:00,2025-11-20 17:00,2025-11-24 07:00,2025-11-24 07:00,0,48,100
INT.P1.Stairs.1120,Jacobs Review / Approve shop Drawings - Stairs,Complete,PRE CONSTRUCTION,Support Building Overall,Stairs,GL 33 STAIRS 5 & 18,,PRE - CON / BUYOUT / IMPACTS,,STAIRS,JAMES LIVELY,INTERIORS,2023-04-11 13:00,2023-04-25 14:00,2023-04-11 13:00,2023-04-29 09:00,2025-11-20 17:00,2025-11-20 17:00,2025-06-13 08:00,2025-06-13 08:00,0,131,100
INT.P1.MISC Steel.1130,Jacobs Review / Approve shop Drawings - Misc. Steel,Complete,PRE CONSTRUCTION,Support Building Overall,Misc. Steel,MISC. STEEL,,PRE - CON / BUYOUT / IMPACTS,,MISC. Steel,JAMES LIVELY,INTERIORS,2023-01-12 07:00,2023-01-22 13:00,2023-01-12 07:00,2023-01-24 17:00,2025-11-20 17:00,2025-11-20 17:00,2025-09-29 07:00,2025-09-29 07:00,0,96,100
INT.P1.DH&HW.1140,IMPACT - SECAI / Jacobs Review / Approve shop Drawings - Doors & Hardware - INTERIOR,Complete,PRE CONSTRUCTION,Support Building Overall,Doors & Hardware - INTERIOR,DOORS & HARDWARE INTERIOR,,PRE - CON / BUYOUT / IMPACTS,,DOORS & HARDWARE - INTERIOR,AMBER CARO,INTERIORS,2023-10-09 07:00,2023-10-18 14:00,2023-09-14 07:00,2024-01-18 17:00,2025-11-20 17:00,2025-11-20 17:00,2025-12-05 17:00,2025-12-05 17:00,0,96,100
INT.P1.Gypsum.1150,Jacobs Review / Approve shop Drawings - Gypsum,Complete,PRE CONSTRUCTION,Support Building Overall,Gypsum,FRAMING/ DRYWALL GYPSUM,,PRE - CON / BUYOUT / IMPACTS,,DRYWALL,AMBER CARO,INTERIORS,2023-06-22 11:00,2023-07-02 17:00,2023-06-22 11:00,2023-07-10 09:00,2025-11-20 17:00,2025-11-20 17:00,2025-11-03 07:00,2025-11-03 07:00,0,96,100
INT.P1.INS.1170,Jacobs Review / Approve shop Drawings - Insulation,Complete,PRE CONSTRUCTION,Support Building Overall,Insulation,INSULATION,,PRE - CON / BUYOUT / IMPACTS,,Insulation,AMBER CARO,INTERIORS,2023-06-19 07:00,2023-06-30 13:00,2023-06-19 07:00,2023-07-01 16:00,2025-11-20 17:00,2025-11-20 17:00,2025-11-03 07:00,2025-11-03 07:00,0,96,100
INT.P1.EXP.1180,Jacobs Review / Approve shop Drawings - Expansion Control,Complete,PRE CONSTRUCTION,Support Building Overall,Expansion Control,EXPANSION CONTROL,,PRE - CON / BUYOUT / IMPACTS,,Expansion Control,JAMES LIVELY,INTERIORS,2023-08-14 13:00,2023-08-25 09:00,2023-07-18 07:00,2023-07-29 16:00,2025-11-20 17:00,2025-11-20 17:00,2025-12-05 17:00,2025-12-05 17:00,0,96,100
INT.P1.FP.1190,Jacobs Review / Approve shop Drawings - Fireproofing,Complete,PRE CONSTRUCTION,Support Building Overall,Fireproofing,FIREPROOFING,,PRE - CON / BUYOUT / IMPACTS,,Fireproofing,HOON WOO,INTERIORS,2023-05-01 07:00,2023-05-12 13:00,2023-04-17 07:00,2023-05-25 13:00,2025-11-20 17:00,2025-11-20 17:00,2025-06-13 08:00,2025-06-13 08:00,0,96,100
INT.P1.CRC.1200,Jacobs Review / Approve shop Drawings - CRC,Complete,PRE CONSTRUCTION,Support Building Overall,CRC,CHEMICAL RESISTANT COATINGS,,PRE - CON / BUYOUT / IMPACTS,,FLOOR COATING,HOON WOO,INTERIORS,2023-08-28 07:00,2023-09-02 15:00,2023-08-28 07:00,2023-09-01 17:00,2025-11-20 17:00,2025-11-20 17:00,2025-11-24 07:00,2025-11-24 07:00,0,48,100
INT.P2.Tile.1290,Jacobs Review / Approve Shop Drawings - Tiling,Complete,PRE CONSTRUCTION,Support Building Overall,Tiling,TILING,,PRE - CON / BUYOUT / IMPACTS,,FLOORING,JAMES LEE,INTERIORS,2023-10-21 08:00,2023-11-03 14:00,2023-10-14 08:00,2023-11-20 15:00,2025-11-20 17:00,2025-11-20 17:00,2025-11-20 07:00,2025-11-20 07:00,0,96,100
INT.P2.Floor.1310,Jacobs Review / Approve Shop Drawings - RAISED ACCESS Flooring,Complete,PRE CONSTRUCTION,Support Building Overall,RAISED ACCESS FLOORING,FLOORING,,PRE - CON / BUYOUT / IMPACTS,,FLOORING,JAMES LEE,INTERIORS,2023-08-28 07:00,2023-09-08 13:00,2023-08-28 07:00,2023-09-15 16:00,2025-11-20 17:00,2025-11-20 17:00,2025-12-05 07:00,2025-12-05 07:00,0,96,100
INT.P2.Toilet.1320,Jacobs Review / Approve Shop Drawings - Toilet Accessories,Complete,PRE CONSTRUCTION,Support Building Overall,Toilet Accessories - DIV10,TOILET ACCESSORIES,,PRE - CON / BUYOUT / IMPACTS,,FIXTURES & WALL PROTECTION,JAMES LEE,INTERIORS,2023-10-16 07:00,2023-10-20 15:00,2023-10-02 08:25,2023-10-07 16:00,2025-11-20 17:00,2025-11-20 17:00,2025-11-20 07:00,2025-11-20 07:00,0,48,100
INT.P2.WDP.1340,Jacobs Review / Approve Shop Drawings - Wall,Complete,PRE CONSTRUCTION,Support Building Overall,Wall / Door Protection - DIV10,WALL & DOOR PROTECTION,,PRE - CON / BUYOUT / IMPACTS,,DOORS & HARDWARE - INTERIOR,JAMES LEE,INTERIORS,2023-10-09 07:00,2023-10-18 14:00,2023-09-25 07:00,2023-12-15 11:00,2025-11-20 17:00,2025-11-20 17:00,2025-11-24 07:00,2025-11-24 07:00,0,96,100
INT.P1.Stairs.1130,Fabrication / Lead time - Stairs,Complete,PRE CONSTRUCTION,Support Building Overall,Stairs,GL 33 STAIRS 5 & 18,,PRE - CON / BUYOUT / IMPACTS,,STAIRS,JAMES LIVELY,INTERIORS,2023-04-29 09:00,2023-06-30 08:00,2023-04-29 09:00,2023-08-29 17:00,2025-11-20 17:00,2025-11-20 17:00,2025-06-13 08:00,2025-06-13 08:00,0,509,100
INT.P1.MISC Steel.1140,Fabrication / Lead time - Misc. Steel,Complete,PRE CONSTRUCTION,Support Building Overall,Misc. Steel,MISC. STEEL,,PRE - CON / BUYOUT / IMPACTS,,MISC. Steel,JAMES LIVELY,INTERIORS,2023-02-27 07:00,2023-03-03 17:00,2023-02-27 07:00,2023-03-03 17:00,2025-11-20 17:00,2025-11-20 17:00,2025-09-29 07:00,2025-09-29 07:00,0,40,100
INT.P1.DH&HW.1150,Fabrication / Lead time - Doors & Hardware - INTERIOR TEMPORARY,Complete,PRE CONSTRUCTION,Support Building Overall,Doors & Hardware - INTERIOR,DOORS & HARDWARE INTERIOR,,PRE - CON / BUYOUT / IMPACTS,,DOORS & HARDWARE - INTERIOR,AMBER CARO,INTERIORS,2023-10-09 07:00,2023-10-25 10:30,2023-10-02 07:00,2023-10-30 15:00,2025-11-20 17:00,2025-11-20 17:00,2025-11-10 07:00,2025-11-10 07:00,0,153,100
INT.P1.Gypsum.1160,Fabrication / Lead time - Gypsum,Complete,PRE CONSTRUCTION,Support Building Overall,Gypsum,FRAMING/ DRYWALL GYPSUM,,PRE - CON / BUYOUT / IMPACTS,,DRYWALL,AMBER CARO,INTERIORS,2023-07-10 09:00,2023-07-14 09:00,2023-07-10 09:00,2023-07-14 09:00,2025-11-20 17:00,2025-11-20 17:00,2025-11-03 07:00,2025-11-03 07:00,0,40,100
INT.P1.INS.1180,Fabrication / Lead time - Insulation,Complete,PRE CONSTRUCTION,Support Building Overall,Insulation,INSULATION,,PRE - CON / BUYOUT / IMPACTS,,Insulation,AMBER CARO,INTERIORS,2023-07-03 07:00,2023-07-08 17:00,2023-07-03 07:00,2023-07-10 09:00,2025-11-20 17:00,2025-11-20 17:00,2025-11-03 07:00,2025-11-03 07:00,0,40,100
INT.P1.EXP.1190,Fabrication / Lead time - Expansion Control,Complete,PRE CONSTRUCTION,Support Building Overall,Expansion Control,EXPANSION CONTROL,,PRE - CON / BUYOUT / IMPACTS,,Expansion Control,JAMES LIVELY,INTERIORS,2023-10-07 08:00,2023-10-16 14:00,2023-09-16 08:00,2023-09-29 17:00,2025-11-20 17:00,2025-11-20 17:00,2025-12-05 17:00,2025-12-05 17:00,0,96,100
INT.P1.FP.1200,Fabrication / Lead time - Fireproofing,Complete,PRE CONSTRUCTION,Support Building Overall,Fireproofing,FIREPROOFING,,PRE - CON / BUYOUT / IMPACTS,,Fireproofing,HOON WOO,INTERIORS,2023-05-23 07:00,2023-06-03 17:00,2023-05-23 07:00,2023-05-30 17:00,2025-11-20 17:00,2025-11-20 17:00,2025-06-13 08:00,2025-06-13 08:00,0,80,100
INT.P1.CRC.1210,MOCKUP APPROVAL - CRC /CRC 2,Complete,PRE CONSTRUCTION,Support Building Overall,CRC,CHEMICAL RESISTANT COATINGS,,PRE - CON / BUYOUT / IMPACTS,,FLOOR COATING,HOON WOO,INTERIORS,2023-10-09 07:00,2023-10-10 13:00,2023-09-28 07:00,2023-09-29 13:00,2025-11-20 17:00,2025-11-20 17:00,2025-11-24 07:00,2025-11-24 07:00,0,16,100
INT.P2.MW.1280,"FABRICATION / LEADTIME - COUNTERTOPS - 2 WEEKS MATERIAL, 3 WEEKS FABRICATION",Complete,PRE CONSTRUCTION,Support Building Overall,COUNTERTOPS,MILLWORK,,PRE - CON / BUYOUT / IMPACTS,,TBD Architectural Finishes,JAMES LEE,INTERIORS,2025-08-18 07:00,2025-09-19 17:00,2025-08-18 07:00,2025-09-24 17:00,2025-11-20 17:00,2025-11-20 17:00,2025-11-20 07:00,2025-11-20 07:00,0,240,100
INT.P2.Tile.1300,Fabrication / Lead time - Tiling,Complete,PRE CONSTRUCTION,Support Building Overall,Tiling,TILING,,PRE - CON / BUYOUT / IMPACTS,,FLOORING,JAMES LEE,INTERIORS,2024-03-18 07:00,2024-04-15 17:00,2024-03-18 07:00,2024-04-30 17:00,2025-11-20 17:00,2025-11-20 17:00,2025-11-20 07:00,2025-11-20 07:00,0,180,100
INT.P2.Floor.1320,Fabrication / Lead time - RAISED ACCESS Flooring,Complete,PRE CONSTRUCTION,Support Building Overall,RAISED ACCESS FLOORING,FLOORING,,PRE - CON / BUYOUT / IMPACTS,,FLOORING,JAMES LEE,INTERIORS,2023-11-27 16:00,2024-01-13 09:00,2023-10-11 16:00,2023-12-15 08:00,2025-11-20 17:00,2025-11-20 17:00,2025-12-05 07:00,2025-12-05 07:00,0,320,100
INT.P2.Toilet.1330,Fabrication / Lead time - Toilet Accessories,Complete,PRE CONSTRUCTION,Support Building Overall,Toilet Accessories - DIV10,TOILET ACCESSORIES,,PRE - CON / BUYOUT / IMPACTS,,FIXTURES & WALL PROTECTION,JAMES LEE,INTERIORS,2023-12-18 07:00,2024-02-07 13:00,2023-11-29 07:00,2024-03-30 17:00,2025-11-20 17:00,2025-11-20 17:00,2025-11-20 07:00,2025-11-20 07:00,0,326,100
INT.P2.WDP.1350,FABRICATION / LEADTIME - WALL PROTECTION,Complete,PRE CONSTRUCTION,Support Building Overall,Wall / Door Protection - DIV10,WALL & DOOR PROTECTION,,PRE - CON / BUYOUT / IMPACTS,SECAI,DOORS & HARDWARE - INTERIOR,JAMES LEE,INTERIORS,2025-03-13 07:00,2025-05-01 17:00,2025-02-17 07:00,2025-09-12 17:00,2025-11-20 17:00,2025-11-20 17:00,2025-11-24 07:00,2025-11-24 07:00,0,360,100
PC.PRE1100,IFR F03B DWG ISSUED,Complete,PRE CONSTRUCTION,,SUP Bldg FABRICATION,DRAWING PACKAGES,,PRE - CON / BUYOUT / IMPACTS,,Precast Fabrication,SEAN MONK,,2022-10-17 17:00,2022-10-17 17:00,2022-07-05 17:00,2022-07-05 17:00,2025-11-20 17:00,2025-11-20 17:00,2025-06-13 08:00,2025-06-13 08:00,0,0,100
PC.DES1220,SCRUB READY FOR FABRICATION - PRECAST COLUMNS - C-LINE / SUE 8-25,Complete,PRE CONSTRUCTION,,SUP Bldg FABRICATION,SUBMITTALS & RFI'S,,PRE - CON / BUYOUT / IMPACTS,,Precast Fabrication,SEAN MONK,,2022-12-27 08:00,2023-01-03 16:00,2022-12-16 08:00,2022-12-27 17:00,2025-11-20 17:00,2025-11-20 17:00,2025-06-13 08:00,2025-06-13 08:00,0,48,100
PC.PRE1110,TINDAL SUBMITTAL#1 ISSUED FOR APPROVAL - Rejected,Complete,PRE CONSTRUCTION,,SUP Bldg FABRICATION,SUBMITTALS & RFI'S,,PRE - CON / BUYOUT / IMPACTS,,Precast Fabrication,SEAN MONK,,2022-10-17 08:00,2022-11-05 08:00,2022-07-06 08:00,2022-08-10 17:00,2025-11-20 17:00,2025-11-20 17:00,2025-06-13 08:00,2025-06-13 08:00,0,160,100
PC.PRE1120,IFC F03B DWG ISSUED,Complete,PRE CONSTRUCTION,,SUP Bldg FABRICATION,DRAWING PACKAGES,,PRE - CON / BUYOUT / IMPACTS,,Precast Fabrication,SEAN MONK,,2022-10-17 17:00,2022-10-17 17:00,2022-08-11 17:00,2022-08-11 17:00,2025-11-20 17:00,2025-11-20 17:00,2025-06-13 08:00,2025-06-13 08:00,0,0,100
PC.PRE1130,TINDAL SUBMITTAL#2 ISSUED FOR APPROVAL - Rejected,Complete,PRE CONSTRUCTION,,SUP Bldg FABRICATION,SUBMITTALS & RFI'S,,PRE - CON / BUYOUT / IMPACTS,,Precast Fabrication,SEAN MONK,,2022-10-17 08:00,2022-11-05 08:00,2022-08-12 08:00,2022-09-19 17:00,2025-11-20 17:00,2025-11-20 17:00,2025-06-13 08:00,2025-06-13 08:00,0,160,100
PC.PRE1140,SECAI DIRECTIVE TO TINDAL PARTIAL ISSUED FOR FABRICATION START,Complete,PRE CONSTRUCTION,,SUP Bldg FABRICATION,SUBMITTALS & RFI'S,,PRE - CON / BUYOUT / IMPACTS,,Precast Fabrication,SEAN MONK,,2022-10-17 17:00,2022-10-17 17:00,2022-09-20 17:00,2022-09-20 17:00,2025-11-20 17:00,2025-11-20 17:00,2025-06-13 08:00,2025-06-13 08:00,0,0,100
PC.PRE1150,IFR F03B.01 DWG ISSUED,Complete,PRE CONSTRUCTION,,SUP Bldg FABRICATION,DRAWING PACKAGES,,PRE - CON / BUYOUT / IMPACTS,,Precast Fabrication,SEAN MONK,,2022-10-17 17:00,2022-10-17 17:00,2022-09-21 17:00,2022-09-21 17:00,2025-11-20 17:00,2025-11-20 17:00,2025-06-13 08:00,2025-06-13 08:00,0,0,100
PC.PRE1160,IFC F03B.01 DWG ISSUED,Complete,PRE CONSTRUCTION,,SUP Bldg FABRICATION,DRAWING PACKAGES,,PRE - CON / BUYOUT / IMPACTS,,Precast Fabrication,SEAN MONK,,2022-10-17 17:00,2022-10-17 17:00,2022-10-06 17:00,2022-10-06 17:00,2025-11-20 17:00,2025-11-20 17:00,2025-06-13 08:00,2025-06-13 08:00,0,0,100
PC.PRE1170,IMPACT [S.TIA-89] - RFI 488 SECAI ISSUED - Embed Design Change,Complete,PRE CONSTRUCTION,,SUP Bldg FABRICATION,SUBMITTALS & RFI'S,,PRE - CON / BUYOUT / IMPACTS,,Precast Fabrication,SEAN MONK,,2022-10-17 17:00,2022-10-17 17:00,2022-11-02 17:00,2022-11-02 17:00,2025-11-20 17:00,2025-11-20 17:00,2025-06-13 08:00,2025-06-13 08:00,0,0,100
PC.PRE1180,IFR F03B.02 DWG ISSUED,Complete,PRE CONSTRUCTION,,SUP Bldg FABRICATION,DRAWING PACKAGES,,PRE - CON / BUYOUT / IMPACTS,,Precast Fabrication,SEAN MONK,,2022-10-17 17:00,2022-10-17 17:00,2022-11-03 17:00,2022-11-03 17:00,2025-11-20 17:00,2025-11-20 17:00,2025-06-13 08:00,2025-06-13 08:00,0,0,100
PC.PRE1190,IMPACT [S.TIA-89] - RFI 488 JACOBS RESPONDS - Embed Design Change,Complete,PRE CONSTRUCTION,,SUP Bldg FABRICATION,SUBMITTALS & RFI'S,,PRE - CON / BUYOUT / IMPACTS,,Precast Fabrication,SEAN MONK,,2022-10-17 17:00,2022-10-17 17:00,2022-11-17 17:00,2022-11-17 17:00,2025-11-20 17:00,2025-11-20 17:00,2025-06-13 08:00,2025-06-13 08:00,0,0,100
PC.PRE1200,YATES DELAY NOTICE ISSUED - Requesting C&L Columns to be part of SUP bldg,Complete,PRE CONSTRUCTION,,SUP Bldg FABRICATION,SUBMITTALS & RFI'S,,PRE - CON / BUYOUT / IMPACTS,,Precast Fabrication,SEAN MONK,,2022-10-17 17:00,2022-10-17 17:00,2022-11-10 17:00,2022-11-10 17:00,2025-11-20 17:00,2025-11-20 17:00,2025-06-13 08:00,2025-06-13 08:00,0,0,100
PC.PRE1210,TINDAL SUBMITTAL#1 ISSUED FOR APPROVAL - REVISED RESUBMITTED,Complete,PRE CONSTRUCTION,,SUP Bldg FABRICATION,SUBMITTALS & RFI'S,,PRE - CON / BUYOUT / IMPACTS,,Precast Fabrication,SEAN MONK,,2022-10-17 08:00,2022-11-23 08:00,2022-11-18 08:00,2022-12-15 17:00,2025-11-20 17:00,2025-11-20 17:00,2025-06-13 08:00,2025-06-13 08:00,0,320,100
PC.PRE1220,TINDAL SUBMITTAL#2 ISSUED FOR APPROVAL - REVISED RESUBMITTED,Complete,PRE CONSTRUCTION,,SUP Bldg FABRICATION,SUBMITTALS & RFI'S,,PRE - CON / BUYOUT / IMPACTS,,Precast Fabrication,SEAN MONK,,2022-10-17 08:00,2022-11-23 08:00,2022-12-07 08:00,2023-02-03 17:00,2025-11-20 17:00,2025-11-20 17:00,2025-06-13 08:00,2025-06-13 08:00,0,320,100
PC.WAF1220,OFFSITE WAFFLE COATING MOBILIZE SETUP,Complete,PRE CONSTRUCTION,,PRECAST,L3 / Waffle Slab Level,,PRE - CON / BUYOUT / IMPACTS,,TBD Architectural Finishes,AMBER CARO,,2022-12-29 08:00,2023-01-01 12:00,2022-12-29 08:00,2023-01-03 17:00,2025-11-20 17:00,2025-11-20 17:00,2025-06-13 08:00,2025-06-13 08:00,0,24,100
PC.WAF1230,WAFFLE COATING MOCK UP SPRAY,Complete,PRE CONSTRUCTION,,PRECAST,L3 / Waffle Slab Level,,PRE - CON / BUYOUT / IMPACTS,,TBD Architectural Finishes,AMBER CARO,,2023-01-04 08:00,2023-01-06 12:00,2023-01-04 08:00,2023-01-06 17:00,2025-11-20 17:00,2025-11-20 17:00,2025-06-13 08:00,2025-06-13 08:00,0,24,100
PC.WAF1240,OWNER APPROVE WAFFLE MOCKUP OPTION,Complete,PRE CONSTRUCTION,,PRECAST,L3 / Waffle Slab Level,,PRE - CON / BUYOUT / IMPACTS,,Precast Fabrication,AMBER CARO,,2023-01-09 08:00,2023-01-09 16:00,2023-01-09 08:00,2023-01-10 08:00,2025-11-20 17:00,2025-11-20 17:00,2025-06-13 08:00,2025-06-13 08:00,0,8,100
SUB.31.1130,Submit RFI 230 - SECAI,Complete,PRE CONSTRUCTION,,"RFI 230 Wall Type at Main Stairs #1,2,3,4,19,20,21,22",SUBMITTALS & RFI'S,,PRE - CON / BUYOUT / IMPACTS,,STAIRS,JAMES LIVELY,,2022-11-28 07:00,2022-11-28 07:00,2022-11-23 07:00,2022-11-23 07:00,2025-11-20 17:00,2025-11-20 17:00,2025-06-13 08:00,2025-06-13 08:00,0,0,100
SUB.31.1140,Recieve RFI 230 Response,Complete,PRE CONSTRUCTION,,"RFI 230 Wall Type at Main Stairs #1,2,3,4,19,20,21,22",SUBMITTALS & RFI'S,,PRE - CON / BUYOUT / IMPACTS,,STAIRS,JAMES LIVELY,,2023-01-31 07:00,2023-01-31 07:00,2023-01-05 07:00,2023-01-05 07:00,2025-11-20 17:00,2025-11-20 17:00,2025-06-13 08:00,2025-06-13 08:00,0,0,100
DS.SECAI.1050,F04.01 IFR,Complete,PRE CONSTRUCTION,,F04,DRAWING PACKAGES,,DESIGN,,Owner & Design Team,DONGSOO,,2022-12-27 07:00,2022-12-27 07:00,2022-11-08 07:00,2022-11-08 07:00,2025-11-20 17:00,2025-11-20 17:00,2025-06-13 08:00,2025-06-13 08:00,0,0,100
DS.SECAI.1060,F04.01 IFC,Complete,PRE CONSTRUCTION,,F04,DRAWING PACKAGES,,DESIGN,,Owner & Design Team,DONGSOO,,2022-12-16 08:00,2022-12-16 08:00,2022-12-16 08:00,2022-12-16 08:00,2025-11-20 17:00,2025-11-20 17:00,2025-12-05 17:00,2025-12-05 17:00,0,0,100
SUB.31.1150,RFI Response Period,Complete,PRE CONSTRUCTION,,"RFI 230 Wall Type at Main Stairs #1,2,3,4,19,20,21,22",SUBMITTALS & RFI'S,,PRE - CON / BUYOUT / IMPACTS,,STAIRS,JAMES LIVELY,,2022-12-27 08:00,2023-01-12 08:00,2022-11-23 08:00,2023-01-05 07:00,2025-11-20 17:00,2025-11-20 17:00,2025-06-13 08:00,2025-06-13 08:00,0,120,100
DSAD1000,DS/AD STEEL - PREP SHOP DWG & SUBMISSION,Complete,PRE CONSTRUCTION,Data Center (Gridlines 1-3),STEEL,L1 - Fndn Slab,,PRE - CON / BUYOUT / IMPACTS,,Steel Fabricator - W&W,SEAN MONK,,2022-10-21 07:00,2022-11-14 13:00,2022-12-13 07:00,2023-01-06 11:00,2025-11-20 17:00,2025-11-20 17:00,2025-06-13 08:00,2025-06-13 08:00,0,216,100
DSAD1010,DS/AD STEEL - SHOP DWGS REVIEW & APPROVAL - Re- issued for Approval - Redesign Connection pkg,Complete,PRE CONSTRUCTION,Data Center (Gridlines 1-3),STEEL,L1 - Fndn Slab,,PRE - CON / BUYOUT / IMPACTS,,Steel Fabricator - W&W,SEAN MONK,,2023-01-06 09:00,2023-01-15 09:00,2023-01-06 09:00,2023-03-21 17:00,2025-11-20 17:00,2025-11-20 17:00,2025-06-13 08:00,2025-06-13 08:00,0,80,100
DSAD1020,DS/AD STEEL - SCRUB - FABRICATION/ DELIVER,Complete,PRE CONSTRUCTION,Data Center (Gridlines 1-3),STEEL,L1 - Fndn Slab,,PRE - CON / BUYOUT / IMPACTS,,Steel Fabricator - W&W,SEAN MONK,,2023-02-25 08:00,2023-04-08 12:00,2023-02-24 08:00,2023-05-01 17:00,2025-11-20 17:00,2025-11-20 17:00,2025-06-13 08:00,2025-06-13 08:00,0,384,100
SOV.DEL.1240,"Pit #7 HOLD - Elevator Design (E10,F10,E11,F11)",Complete,PRE CONSTRUCTION,South Areas (Team A - Gridlines 3-17),CONCRETE SLABS,L1 - Fndn Slab,,PRE - CON / BUYOUT / IMPACTS,,Pour Concrete,ANDREA SOLIS,,2023-01-05 07:00,2023-01-13 17:00,2023-01-05 07:00,2023-01-27 11:00,2025-11-20 17:00,2025-11-20 17:00,2025-06-13 08:00,2025-06-13 08:00,0,80,100
PC.WAF1250,RAKERS FOR WAFFLES SLABS - FABRICATION / DEL (SECAI Assmp 15 per week),Complete,PRE CONSTRUCTION,,PRECAST,L3 / Waffle Slab Level,,PRE - CON / BUYOUT / IMPACTS,,Precast Fabrication,SEAN MONK,,2023-01-31 08:00,2023-04-04 14:00,2023-01-30 08:00,2023-04-28 17:00,2025-11-20 17:00,2025-11-20 17:00,2025-06-13 08:00,2025-06-13 08:00,0,576,100
FIZ1050,IMPACT [S.TIA-90] - FIZ STEEL - RFI 465 - BASE PLATE- ISSUED FOR APPROVAL,Complete,PRE CONSTRUCTION,Data Center (Gridlines 1-3),STEEL,L1 - Fndn Slab,,PRE - CON / BUYOUT / IMPACTS,,Steel Fabricator - W&W,SEAN MONK,,2023-02-02 12:00,2023-02-06 12:00,2023-01-27 12:00,2023-02-09 17:00,2025-11-20 17:00,2025-11-20 17:00,2025-06-13 08:00,2025-06-13 08:00,0,40,100
DECKSUP1030,IMPACT [S.TIA-93] - SLAB EDGE - RFI 452 - SHOP DWG SECAI APPROVAL,Complete,PRE CONSTRUCTION,Data Center (Gridlines 1-3),STEEL,L4 - SUP Roof - FAB Roof,,PRE - CON / BUYOUT / IMPACTS,,Steel Fabricator - W&W,SEAN MONK,,2023-03-06 09:00,2023-03-14 09:00,2023-03-06 09:00,2023-03-20 09:00,2025-11-20 17:00,2025-11-20 17:00,2025-06-13 08:00,2025-06-13 08:00,0,80,100
DECKSUP1040,IMPACT [S.TIA-93] - SLAB EDGE - RFI 452 - FABRICATION,Complete,PRE CONSTRUCTION,Data Center (Gridlines 1-3),STEEL,L4 - SUP Roof - FAB Roof,,PRE - CON / BUYOUT / IMPACTS,,Steel Fabricator - W&W,SEAN MONK,,2023-03-07 15:00,2023-03-16 15:00,2023-03-07 15:00,2023-04-03 15:00,2025-11-20 17:00,2025-11-20 17:00,2025-06-13 08:00,2025-06-13 08:00,0,80,100
INT.P1.Stairs.1140,PH1- METAL STAIR 21 Fab / Deliver - SEA-2,Complete,PRE CONSTRUCTION,East Support Building,Stairs,GL 33 STAIRS 5 & 18,,PRE - CON / BUYOUT / IMPACTS,,STAIRS,JAMES LIVELY,INTERIORS,2023-04-29 09:00,2023-05-04 09:00,2023-04-29 09:00,2023-08-15 15:00,2025-11-20 17:00,2025-11-20 17:00,2025-06-13 08:00,2025-06-13 08:00,0,40,100
INT.P1.Stairs.1160,PH1- METAL STAIR 22 Fab / Deliver - SEA-4,Complete,PRE CONSTRUCTION,East Support Building,Stairs,GL 33 STAIRS 5 & 18,,PRE - CON / BUYOUT / IMPACTS,,STAIRS,JAMES LIVELY,INTERIORS,2023-04-29 09:00,2023-05-04 09:00,2023-04-29 09:00,2023-07-21 17:00,2025-11-20 17:00,2025-11-20 17:00,2025-11-10 07:00,2025-11-10 07:00,0,40,100
INT.P1.Stairs.1170,PH1- METAL STAIR 20 Fab / Deliver - SEB-1,Complete,PRE CONSTRUCTION,East Support Building,Stairs,GL 33 STAIRS 5 & 18,,PRE - CON / BUYOUT / IMPACTS,,STAIRS,JAMES LIVELY,INTERIORS,2023-04-29 09:00,2023-05-18 09:00,2023-04-29 09:00,2023-07-21 17:00,2025-11-20 17:00,2025-11-20 17:00,2025-11-10 07:00,2025-11-10 07:00,0,160,100
INT.P1.Stairs.1180,PH1- METAL STAIR 19 Fab / Deliver - SEB-3,Complete,PRE CONSTRUCTION,East Support Building,Stairs,GL 33 STAIRS 5 & 18,,PRE - CON / BUYOUT / IMPACTS,,STAIRS,JAMES LIVELY,INTERIORS,2023-06-19 07:00,2023-07-14 09:00,2023-06-19 07:00,2023-07-22 16:00,2025-11-20 17:00,2025-11-20 17:00,2025-11-21 07:00,2025-11-21 07:00,0,212,100
INT.P1.Stairs.1190,PH1- METAL STAIR 2 Fab / Deliver - SWA-3,Complete,PRE CONSTRUCTION,West Support Building,Stairs,GL 33 STAIRS 5 & 18,,PRE - CON / BUYOUT / IMPACTS,,STAIRS,JAMES LIVELY,INTERIORS,2023-08-28 07:00,2023-09-29 17:00,2023-08-28 07:00,2023-10-13 17:00,2025-11-20 17:00,2025-11-20 17:00,2025-11-12 07:00,2025-11-12 07:00,0,280,100
INT.P1.Stairs.1200,PH1- METAL STAIR 3 Fab / Deliver - SWB-1,Complete,PRE CONSTRUCTION,West Support Building,Stairs,GL 33 STAIRS 5 & 18,,PRE - CON / BUYOUT / IMPACTS,,STAIRS,JAMES LIVELY,INTERIORS,2023-04-29 09:00,2023-05-04 09:00,2023-04-29 09:00,2023-08-11 13:00,2025-11-20 17:00,2025-11-20 17:00,2025-11-03 07:00,2025-11-03 07:00,0,40,100
INT.P1.Stairs.1210,PH1- METAL STAIR 4 Fab / Deliver - SWB-3,Complete,PRE CONSTRUCTION,West Support Building,Stairs,GL 33 STAIRS 5 & 18,,PRE - CON / BUYOUT / IMPACTS,,STAIRS,JAMES LIVELY,INTERIORS,2023-08-28 07:00,2023-09-09 11:00,2023-08-14 07:00,2023-09-29 17:00,2025-11-20 17:00,2025-11-20 17:00,2025-11-17 07:00,2025-11-17 07:00,0,104,100
DS.SECAI.1070,F03B.03 IFC,Complete,PRE CONSTRUCTION,,F03B,DRAWING PACKAGES,,DESIGN,,Owner & Design Team,,,2023-02-27 08:00,2023-02-27 08:00,2023-02-27 08:00,2023-02-27 08:00,2025-11-20 17:00,2025-11-20 17:00,2025-06-13 08:00,2025-06-13 08:00,0,0,100
DS.SECAI.1080,F04.02 IFC,Complete,PRE CONSTRUCTION,,F04,DRAWING PACKAGES,,DESIGN,,Owner & Design Team,DONGSOO,,2022-12-16 08:00,2022-12-16 08:00,2022-12-16 08:00,2022-12-16 08:00,2025-11-20 17:00,2025-11-20 17:00,2025-06-13 08:00,2025-06-13 08:00,0,0,100
DS.SECAI.1090,F05.01B IFC,Complete,PRE CONSTRUCTION,,F05,DRAWING PACKAGES,,DESIGN,,Owner & Design Team,DONGSOO,,2023-01-10 16:00,2023-01-10 16:00,2023-01-10 16:00,2023-01-10 16:00,2025-11-20 17:00,2025-11-20 17:00,2025-12-05 17:00,2025-12-05 17:00,0,0,100
DS.SECAI.1100,F05.03B IFC,Complete,PRE CONSTRUCTION,,F05,DRAWING PACKAGES,,DESIGN,,Owner & Design Team,DONGSOO,,2023-01-10 16:00,2023-01-10 16:00,2023-01-10 16:00,2023-01-10 16:00,2025-11-20 17:00,2025-11-20 17:00,2025-12-05 17:00,2025-12-05 17:00,0,0,100
DS.SECAI.1110,F05.04 IFC,Complete,PRE CONSTRUCTION,,F05,DRAWING PACKAGES,,DESIGN,,Owner & Design Team,DONGSOO,,2023-01-10 16:00,2023-01-10 16:00,2023-01-10 16:00,2023-01-10 16:00,2025-11-20 17:00,2025-11-20 17:00,2025-12-05 17:00,2025-12-05 17:00,0,0,100
DS.SECAI.1120,F05.05 IFC,Complete,PRE CONSTRUCTION,,F05,DRAWING PACKAGES,,DESIGN,,Owner & Design Team,DONGSOO,,2023-02-20 08:00,2023-02-20 08:00,2023-02-06 08:00,2023-02-06 08:00,2025-11-20 17:00,2025-11-20 17:00,2025-06-13 08:00,2025-06-13 08:00,0,0,100
DS.SECAI.1130,F05.06 IFC,Complete,PRE CONSTRUCTION,,F05,DRAWING PACKAGES,,DESIGN,,Owner & Design Team,DONGSOO,,2023-05-08 08:00,2023-05-08 08:00,2023-05-02 20:00,2023-05-02 20:00,2025-11-20 17:00,2025-11-20 17:00,2025-11-03 07:00,2025-11-03 07:00,0,0,100
DS.SECAI.1140,EXT Door Schedule,Complete,PRE CONSTRUCTION,,Schedules,DRAWING PACKAGES,,DESIGN,,DOORS & HARDWARE - INTERIOR,DONGSOO,,2023-02-20 08:00,2023-02-20 08:00,2023-01-30 08:00,2023-01-30 08:00,2025-11-20 17:00,2025-11-20 17:00,2025-11-25 07:00,2025-11-25 07:00,0,0,100
DS.SECAI.1150,INT Door Schedule,Complete,PRE CONSTRUCTION,,Schedules,DRAWING PACKAGES,,DESIGN,,DOORS & HARDWARE - INTERIOR,DONGSOO,,2023-02-20 08:00,2023-02-20 08:00,2023-01-30 08:00,2023-01-30 08:00,2025-11-20 17:00,2025-11-20 17:00,2025-11-10 07:00,2025-11-10 07:00,0,0,100
DS.SECAI.1160,INT Material Schedule,Complete,PRE CONSTRUCTION,,Schedules,DRAWING PACKAGES,,DESIGN,,Owner & Design Team,DONGSOO,,2023-02-20 08:00,2023-02-20 08:00,2023-01-30 08:00,2023-01-30 08:00,2025-11-20 17:00,2025-11-20 17:00,2025-11-03 07:00,2025-11-03 07:00,0,0,100
A370,PH1 - SHOP DWGS SECAI APPROVAL - CLADDING STEEL,Complete,PRE CONSTRUCTION,Data Center (Gridlines 1-3),ENCLOSURE,EXTERIOR SKIN,,PRE - CON / BUYOUT / IMPACTS,,INSULATED METAL PANELS,JAMES LIVELY,,2022-10-10 07:00,2022-10-18 17:00,2023-01-05 07:00,2023-03-03 17:00,2025-11-20 17:00,2025-11-20 17:00,2025-06-13 08:00,2025-06-13 08:00,0,80,100
IMP1000,PH1 - EXPECTED RELEASE OF IMP PANELS,Complete,PRE CONSTRUCTION,Data Center (Gridlines 1-3),ENCLOSURE,EXTERIOR SKIN,,PRE - CON / BUYOUT / IMPACTS,,INSULATED METAL PANELS,JAMES LIVELY,,2022-10-10 07:00,2022-10-10 07:00,2022-10-10 07:00,2022-10-10 07:00,2025-11-20 17:00,2025-11-20 17:00,2025-06-13 08:00,2025-06-13 08:00,0,0,100
IMP1010,PH1 - ENGINEERING & SHOPS OF IMP PANELS - PREPERATION,Complete,PRE CONSTRUCTION,Data Center (Gridlines 1-3),ENCLOSURE,EXTERIOR SKIN,,PRE - CON / BUYOUT / IMPACTS,,INSULATED METAL PANELS,JAMES LIVELY,,2022-10-10 07:00,2023-01-24 09:00,2022-10-10 07:00,2023-01-23 11:00,2025-11-20 17:00,2025-11-20 17:00,2025-06-13 08:00,2025-06-13 08:00,0,872,100
IMP1030,PH1 - FABRICATION & MATERIAL DELIVERY - IMP PANELS,Complete,PRE CONSTRUCTION,Data Center (Gridlines 1-3),ENCLOSURE,EXTERIOR SKIN,,PRE - CON / BUYOUT / IMPACTS,,INSULATED METAL PANELS,JAMES LIVELY,,2023-03-04 08:00,2023-04-20 08:00,2023-03-04 08:00,2023-07-10 09:00,2025-11-20 17:00,2025-11-20 17:00,2025-08-26 07:00,2025-08-26 07:00,0,430,100
IMP1020,PH1 - ENGINEERING & SHOPS OF IMP PANELS - SECAI APPROVAL,Complete,PRE CONSTRUCTION,Data Center (Gridlines 1-3),ENCLOSURE,EXTERIOR SKIN,,PRE - CON / BUYOUT / IMPACTS,,INSULATED METAL PANELS,JAMES LIVELY,,2022-10-10 07:00,2022-10-18 17:00,2023-01-24 07:00,2023-03-03 17:00,2025-11-20 17:00,2025-11-20 17:00,2025-06-13 08:00,2025-06-13 08:00,0,80,100
PC.PRE1230,SUE/SUW ROOF REDESIGN - GIRDER & BEAMS - RELEASE IFC (due to mech eqpmt changes),Complete,PRE CONSTRUCTION,,SUP Bldg FABRICATION,SUBMITTALS & RFI'S,,PRE - CON / BUYOUT / IMPACTS,,Precast Fabrication,SEAN MONK,,2023-02-20 08:00,2023-03-03 13:00,2023-01-31 08:30,2023-02-17 16:00,2025-11-20 17:00,2025-11-20 17:00,2025-06-13 08:00,2025-06-13 08:00,0,95,100
PC.PRE1240,TINDAL SHOP DWGS PREPERATION - SUE/SUW ROOF REDESIGN,Complete,PRE CONSTRUCTION,,SUP Bldg FABRICATION,SUBMITTALS & RFI'S,,PRE - CON / BUYOUT / IMPACTS,,Precast Fabrication,SEAN MONK,,2023-02-20 08:00,2023-03-08 12:00,2023-02-17 08:00,2023-03-10 17:00,2025-11-20 17:00,2025-11-20 17:00,2025-06-13 08:00,2025-06-13 08:00,0,144,100
PC.PRE1250,SECAI/JACOBS REVIEW APPROVAL OF SHOPS - SUE/SUW ROOF REDESIGN,Complete,PRE CONSTRUCTION,,SUP Bldg FABRICATION,SUBMITTALS & RFI'S,,PRE - CON / BUYOUT / IMPACTS,,Precast Fabrication,SEAN MONK,,2023-03-13 08:00,2023-03-18 08:00,2023-03-13 08:00,2023-03-17 17:00,2025-11-20 17:00,2025-11-20 17:00,2025-06-13 08:00,2025-06-13 08:00,0,40,100
PC.PRE1260,SCRUB / SHOP TICKETS - SUE/SUW ROOF REDESIGN,Complete,PRE CONSTRUCTION,,SUP Bldg FABRICATION,SUBMITTALS & RFI'S,,PRE - CON / BUYOUT / IMPACTS,,Precast Fabrication,SEAN MONK,,2023-03-20 08:00,2023-03-24 08:00,2023-03-20 08:00,2023-03-31 17:00,2025-11-20 17:00,2025-11-20 17:00,2025-06-13 08:00,2025-06-13 08:00,0,40,100
PC.PRE1270,FABRICATE DELIVER TIER 2 ROOF MEMBER - SEA1 - 18-15 (SECAI provided),Complete,PRE CONSTRUCTION,,SUP Bldg FABRICATION,SUE UPPER,,PRE - CON / BUYOUT / IMPACTS,,Precast Fabrication,SEAN MONK,,2023-05-08 07:00,2023-05-19 13:00,2023-05-01 07:00,2023-06-22 11:00,2025-11-20 17:00,2025-11-20 17:00,2025-06-13 08:00,2025-06-13 08:00,0,96,100
PC.PRE1280,FABRICATE DELIVER TIER 2 ROOF MEMBER - SWA1 - (19 -14) (SECAI provided),Complete,PRE CONSTRUCTION,,SUP Bldg FABRICATION,SUW UPPER,,PRE - CON / BUYOUT / IMPACTS,,Precast Fabrication,SEAN MONK,,2023-05-20 08:00,2023-05-30 08:00,2023-05-20 08:00,2023-07-06 13:00,2025-11-20 17:00,2025-11-20 17:00,2025-06-13 08:00,2025-06-13 08:00,0,80,100
PC.FIZ1290,FIZ PRECAST COLUMN & BEAMS SHOP DWG - DETAIL PREPERATION - ERIKSSON,Complete,PRE CONSTRUCTION,,PRECAST,PRECAST,,PRE - CON / BUYOUT / IMPACTS,,Precast Fabrication,SEAN MONK,,2023-02-20 08:00,2023-03-06 08:00,2023-01-31 09:21,2023-03-03 17:00,2025-11-20 17:00,2025-11-20 17:00,2025-06-13 08:00,2025-06-13 08:00,0,120,100
PC.FIZ1300,FIZ PRECAST COLUMN & BEAMS SHOP DWG - SECAI / JACOBS APPROVAL,Complete,PRE CONSTRUCTION,,PRECAST,PRECAST,,PRE - CON / BUYOUT / IMPACTS,,Precast Fabrication,SEAN MONK,,2023-02-20 08:00,2023-03-02 08:00,2023-02-06 08:00,2023-03-10 17:00,2025-11-20 17:00,2025-11-20 17:00,2025-06-13 08:00,2025-06-13 08:00,0,80,100
PC.FIZ1310,FIZ PRECAST COLUMN & BEAMS SHOP DWG - FABRICATION DELIVERY (Recast J3),Complete,PRE CONSTRUCTION,,PRECAST,PRECAST,,PRE - CON / BUYOUT / IMPACTS,,Precast Fabrication,SEAN MONK,,2023-03-13 08:00,2023-03-27 14:00,2023-03-13 08:00,2023-03-31 17:00,2025-11-20 17:00,2025-11-20 17:00,2025-06-13 08:00,2025-06-13 08:00,0,136,100
FIZ1070,FIZ STEEL - FIZ ROOF & TIER 2 STEEL REDESIGN,Complete,PRE CONSTRUCTION,Data Center (Gridlines 1-3),STEEL,L1 - Fndn Slab,,PRE - CON / BUYOUT / IMPACTS,,Steel Fabricator - W&W,SEAN MONK,,2023-02-02 12:00,2023-02-06 12:00,2023-02-13 07:00,2023-03-28 15:00,2025-11-20 17:00,2025-11-20 17:00,2025-06-13 08:00,2025-06-13 08:00,0,40,100
DECKSUP1032,PH1- FABRICATION / DELIVERY - DECKING - SUP,Complete,PRE CONSTRUCTION,South Areas (Team A - Gridlines 3-17),STEEL,L4 - SUP Roof - FAB Roof,,PRE - CON / BUYOUT / IMPACTS,,Steel Fabricator - W&W,SEAN MONK,,2023-02-23 07:00,2023-03-24 17:00,2023-01-16 07:00,2023-03-03 17:00,2025-11-20 17:00,2025-11-20 17:00,2025-06-13 08:00,2025-06-13 08:00,0,280,100
DECKSUP1033,PH1-SUBMITTAL & SHOPS & APPROVALS - DECKING - SUP,Complete,PRE CONSTRUCTION,South Areas (Team A - Gridlines 3-17),STEEL,L4 - SUP Roof - FAB Roof,,PRE - CON / BUYOUT / IMPACTS,,Steel Fabricator - W&W,SEAN MONK,,2022-12-29 07:00,2023-01-16 17:00,2022-11-30 07:00,2022-12-16 17:00,2025-11-20 17:00,2025-11-20 17:00,2025-06-13 08:00,2025-06-13 08:00,0,160,100
INT.P1.1110,RFA for RFP SECAI Approval - P1,Complete,PRE CONSTRUCTION,Support Building Overall,Expansion Control,EXPANSION CONTROL,,PRE - CON / BUYOUT / IMPACTS,,Expansion Control,JAMES LIVELY,INTERIORS,2022-12-27 07:00,2022-12-27 07:00,2022-12-13 07:00,2022-12-13 07:00,2025-11-20 17:00,2025-11-20 17:00,2025-12-05 17:00,2025-12-05 17:00,0,0,100
INT.P1.1120,Design Drawings / Specifications F05.04 - P1,Complete,PRE CONSTRUCTION,Support Building Overall,Expansion Control,EXPANSION CONTROL,,PRE - CON / BUYOUT / IMPACTS,,Expansion Control,JAMES LIVELY,INTERIORS,2022-12-27 07:00,2022-12-27 07:00,2022-12-13 07:00,2022-12-13 07:00,2025-11-20 17:00,2025-11-20 17:00,2025-12-05 17:00,2025-12-05 17:00,0,0,100
INT.P1.1130,Consolidated Drawing Set (From Jacobs) - P1,Complete,PRE CONSTRUCTION,Support Building Overall,Expansion Control,EXPANSION CONTROL,,PRE - CON / BUYOUT / IMPACTS,,Expansion Control,JAMES LIVELY,INTERIORS,2022-12-13 07:00,2022-12-13 15:00,2022-12-13 07:00,2022-12-15 15:00,2025-11-20 17:00,2025-11-20 17:00,2025-12-05 17:00,2025-12-05 17:00,0,8,100
INT.P1.1140,Consolidated Set from Yates (If Jacobs Does Not Supply) - P1,Complete,PRE CONSTRUCTION,Support Building Overall,Expansion Control,EXPANSION CONTROL,,PRE - CON / BUYOUT / IMPACTS,,Expansion Control,JAMES LIVELY,INTERIORS,2022-12-29 13:00,2022-12-30 11:00,2022-12-29 13:00,2022-12-30 11:00,2025-11-20 17:00,2025-11-20 17:00,2025-12-05 17:00,2025-12-05 17:00,0,8,100
INT.P1.1150,Consolidated Architectural Set Approval (SECAI / SAMOO if provided by Yates) - P1,Complete,PRE CONSTRUCTION,Support Building Overall,Expansion Control,EXPANSION CONTROL,,PRE - CON / BUYOUT / IMPACTS,,Expansion Control,JAMES LIVELY,INTERIORS,2022-12-30 11:00,2023-01-05 11:00,2022-12-30 11:00,2023-01-06 11:00,2025-11-20 17:00,2025-11-20 17:00,2025-12-05 17:00,2025-12-05 17:00,0,40,100
INT.P1.1160,Review of Consolidated Set / Updates to Bid Form / Scope Checklist - P1,Complete,PRE CONSTRUCTION,Support Building Overall,Expansion Control,EXPANSION CONTROL,,PRE - CON / BUYOUT / IMPACTS,,Expansion Control,JAMES LIVELY,INTERIORS,2023-01-06 11:00,2023-01-08 15:00,2023-01-06 11:00,2023-01-09 17:00,2025-11-20 17:00,2025-11-20 17:00,2025-12-05 17:00,2025-12-05 17:00,0,24,100
INT.P1.1180,Bid Packages Issued to Subcontractors - P1,Complete,PRE CONSTRUCTION,Support Building Overall,Expansion Control,EXPANSION CONTROL,,PRE - CON / BUYOUT / IMPACTS,,Expansion Control,JAMES LIVELY,INTERIORS,2023-03-02 11:00,2023-03-04 15:00,2023-03-02 11:00,2023-03-04 16:00,2025-11-20 17:00,2025-11-20 17:00,2025-12-05 17:00,2025-12-05 17:00,0,24,100
INT.P1.1190,BIDDING OUT PKGS - P1,Complete,PRE CONSTRUCTION,Support Building Overall,Expansion Control,EXPANSION CONTROL,,PRE - CON / BUYOUT / IMPACTS,,Expansion Control,JAMES LIVELY,INTERIORS,2023-03-06 07:00,2023-03-18 17:00,2023-03-06 07:00,2023-03-20 17:00,2025-11-20 17:00,2025-11-20 17:00,2025-12-05 17:00,2025-12-05 17:00,0,120,100
INT.P1.1200,BID LEVELING / RECOMMEND TO SECAI - P1,Complete,PRE CONSTRUCTION,Support Building Overall,Expansion Control,EXPANSION CONTROL,,PRE - CON / BUYOUT / IMPACTS,,Expansion Control,JAMES LIVELY,INTERIORS,2023-03-27 07:00,2023-03-31 17:00,2023-03-27 07:00,2023-03-31 17:00,2025-11-20 17:00,2025-11-20 17:00,2025-12-05 17:00,2025-12-05 17:00,0,40,100
INT.P1.1210,SECAI / SAS REVIEW & PROCUREMENT PROCESSING - P1,Complete,PRE CONSTRUCTION,Support Building Overall,Expansion Control,EXPANSION CONTROL,,PRE - CON / BUYOUT / IMPACTS,,Expansion Control,JAMES LIVELY,INTERIORS,2023-04-01 08:00,2023-04-18 08:00,2023-04-01 08:00,2023-04-22 16:00,2025-11-20 17:00,2025-11-20 17:00,2025-12-05 17:00,2025-12-05 17:00,0,160,100
INT.P1.1170,RESPONSES TO RFIs FROM SECAI - P1,Complete,PRE CONSTRUCTION,Support Building Overall,Expansion Control,EXPANSION CONTROL,,PRE - CON / BUYOUT / IMPACTS,,Expansion Control,JAMES LIVELY,INTERIORS,2023-01-06 11:00,2023-01-08 15:00,2023-01-06 11:00,2023-03-02 11:00,2025-11-20 17:00,2025-11-20 17:00,2025-12-05 17:00,2025-12-05 17:00,0,24,100
INT.P1.1220,RFA for RFP SECAI Approval - P1,Complete,PRE CONSTRUCTION,Support Building Overall,Fireproofing,FIREPROOFING,,PRE - CON / BUYOUT / IMPACTS,,Fireproofing,HOON WOO,INTERIORS,2022-12-27 07:00,2022-12-27 07:00,2022-12-13 07:00,2022-12-13 07:00,2025-11-20 17:00,2025-11-20 17:00,2025-06-13 08:00,2025-06-13 08:00,0,0,100
INT.P1.1230,Design Drawings / Specifications F05.04 - P1,Complete,PRE CONSTRUCTION,Support Building Overall,Fireproofing,FIREPROOFING,,PRE - CON / BUYOUT / IMPACTS,,Fireproofing,HOON WOO,INTERIORS,2022-12-27 07:00,2022-12-27 07:00,2022-12-13 07:00,2022-12-13 07:00,2025-11-20 17:00,2025-11-20 17:00,2025-06-13 08:00,2025-06-13 08:00,0,0,100
INT.P1.1240,Consolidated Drawing Set (From Jacobs) - P1,Complete,PRE CONSTRUCTION,Support Building Overall,Fireproofing,FIREPROOFING,,PRE - CON / BUYOUT / IMPACTS,,Fireproofing,HOON WOO,INTERIORS,2022-12-13 07:00,2022-12-13 15:00,2022-12-13 07:00,2022-12-15 15:00,2025-11-20 17:00,2025-11-20 17:00,2025-06-13 08:00,2025-06-13 08:00,0,8,100
INT.P1.1250,Consolidated Set from Yates (If Jacobs Does Not Supply) - P1,Complete,PRE CONSTRUCTION,Support Building Overall,Fireproofing,FIREPROOFING,,PRE - CON / BUYOUT / IMPACTS,,Fireproofing,HOON WOO,INTERIORS,2022-12-29 13:00,2022-12-30 11:00,2022-12-15 13:00,2022-12-16 11:00,2025-11-20 17:00,2025-11-20 17:00,2025-06-13 08:00,2025-06-13 08:00,0,8,100
INT.P1.1260,Consolidated Architectural Set Approval (SECAI / SAMOO if provided by Yates) - P1,Complete,PRE CONSTRUCTION,Support Building Overall,Fireproofing,FIREPROOFING,,PRE - CON / BUYOUT / IMPACTS,,Fireproofing,HOON WOO,INTERIORS,2022-12-30 11:00,2023-01-05 11:00,2022-12-16 11:00,2022-12-21 11:00,2025-11-20 17:00,2025-11-20 17:00,2025-06-13 08:00,2025-06-13 08:00,0,40,100
INT.P1.1270,Review of Consolidated Set / Updates to Bid Form / Scope Checklist - P1,Complete,PRE CONSTRUCTION,Support Building Overall,Fireproofing,FIREPROOFING,,PRE - CON / BUYOUT / IMPACTS,,Fireproofing,HOON WOO,INTERIORS,2023-01-06 11:00,2023-01-08 15:00,2022-12-21 11:00,2023-02-17 17:00,2025-11-20 17:00,2025-11-20 17:00,2025-06-13 08:00,2025-06-13 08:00,0,24,100
INT.P1.1290,Bid Packages Issued to Subcontractors - P1,Complete,PRE CONSTRUCTION,Support Building Overall,Fireproofing,FIREPROOFING,,PRE - CON / BUYOUT / IMPACTS,,Fireproofing,HOON WOO,INTERIORS,2023-02-20 07:00,2023-02-23 11:00,2023-02-20 07:00,2023-02-22 11:00,2025-11-20 17:00,2025-11-20 17:00,2025-06-13 08:00,2025-06-13 08:00,0,24,100
INT.P1.1300,BIDDING OUT PKGS - P1,Complete,PRE CONSTRUCTION,Support Building Overall,Fireproofing,FIREPROOFING,,PRE - CON / BUYOUT / IMPACTS,,Fireproofing,HOON WOO,INTERIORS,2023-03-02 11:00,2023-03-14 11:00,2023-02-24 11:00,2023-03-14 13:00,2025-11-20 17:00,2025-11-20 17:00,2025-06-13 08:00,2025-06-13 08:00,0,120,100
INT.P1.1310,BID LEVELING / RECOMMEND TO SECAI - P1,Complete,PRE CONSTRUCTION,Support Building Overall,Fireproofing,FIREPROOFING,,PRE - CON / BUYOUT / IMPACTS,,Fireproofing,HOON WOO,INTERIORS,2023-03-14 13:00,2023-03-23 13:00,2023-03-14 13:00,2023-03-24 15:00,2025-11-20 17:00,2025-11-20 17:00,2025-06-13 08:00,2025-06-13 08:00,0,80,100
INT.P1.1320,SECAI / SAS REVIEW & PROCUREMENT PROCESSING - P1,Complete,PRE CONSTRUCTION,Support Building Overall,Fireproofing,FIREPROOFING,,PRE - CON / BUYOUT / IMPACTS,,Fireproofing,HOON WOO,INTERIORS,2023-04-10 07:00,2023-04-17 17:00,2023-03-24 15:00,2023-04-06 17:00,2025-11-20 17:00,2025-11-20 17:00,2025-06-13 08:00,2025-06-13 08:00,0,80,100
INT.P1.1280,RESPONSES TO RFIs FROM SECAI - P1,Complete,PRE CONSTRUCTION,Support Building Overall,Fireproofing,FIREPROOFING,,PRE - CON / BUYOUT / IMPACTS,,Fireproofing,HOON WOO,INTERIORS,2023-01-06 11:00,2023-01-08 15:00,2022-12-21 11:00,2023-02-20 07:00,2025-11-20 17:00,2025-11-20 17:00,2025-06-13 08:00,2025-06-13 08:00,0,24,100
INT.P1.1330,RFA for RFP SECAI Approval - P1,Complete,PRE CONSTRUCTION,Support Building Overall,Gypsum,FRAMING/ DRYWALL GYPSUM,,PRE - CON / BUYOUT / IMPACTS,,DRYWALL,AMBER CARO,INTERIORS,2023-02-27 07:00,2023-02-27 07:00,2023-02-27 07:00,2023-02-27 07:00,2025-11-20 17:00,2025-11-20 17:00,2025-11-03 07:00,2025-11-03 07:00,0,0,100
INT.P1.1340,Design Drawings / Specifications F05.04 - P1,Complete,PRE CONSTRUCTION,Support Building Overall,Gypsum,FRAMING/ DRYWALL GYPSUM,,PRE - CON / BUYOUT / IMPACTS,,DRYWALL,AMBER CARO,INTERIORS,2023-02-27 07:00,2023-02-27 07:00,2023-02-27 07:00,2023-02-27 07:00,2025-11-20 17:00,2025-11-20 17:00,2025-11-03 07:00,2025-11-03 07:00,0,0,100
INT.P1.1350,Consolidated Drawing Set (From Jacobs) - P1,Complete,PRE CONSTRUCTION,Support Building Overall,Gypsum,FRAMING/ DRYWALL GYPSUM,,PRE - CON / BUYOUT / IMPACTS,,DRYWALL,AMBER CARO,INTERIORS,2023-02-27 07:00,2023-02-27 15:00,2023-02-27 07:00,2023-02-27 15:00,2025-11-20 17:00,2025-11-20 17:00,2025-11-03 07:00,2025-11-03 07:00,0,8,100
INT.P1.1360,Consolidated Set from Yates (If Jacobs Does Not Supply) - P1,Complete,PRE CONSTRUCTION,Support Building Overall,Gypsum,FRAMING/ DRYWALL GYPSUM,,PRE - CON / BUYOUT / IMPACTS,,DRYWALL,AMBER CARO,INTERIORS,2023-02-20 15:00,2023-02-21 13:00,2023-01-09 15:00,2023-01-10 13:00,2025-11-20 17:00,2025-11-20 17:00,2025-11-03 07:00,2025-11-03 07:00,0,8,100
INT.P1.1370,Consolidated Architectural Set Approval (SECAI / SAMOO if provided by Yates) - P1,Complete,PRE CONSTRUCTION,Support Building Overall,Gypsum,FRAMING/ DRYWALL GYPSUM,,PRE - CON / BUYOUT / IMPACTS,,DRYWALL,AMBER CARO,INTERIORS,2023-02-21 13:00,2023-02-26 13:00,2023-01-10 13:00,2023-01-16 15:00,2025-11-20 17:00,2025-11-20 17:00,2025-11-03 07:00,2025-11-03 07:00,0,40,100
INT.P1.1380,Review of Consolidated Set / Updates to Bid Form / Scope Checklist - P1,Complete,PRE CONSTRUCTION,Support Building Overall,Gypsum,FRAMING/ DRYWALL GYPSUM,,PRE - CON / BUYOUT / IMPACTS,,DRYWALL,AMBER CARO,INTERIORS,2023-02-27 15:00,2023-03-03 09:00,2023-01-17 15:00,2023-01-20 09:00,2025-11-20 17:00,2025-11-20 17:00,2025-11-03 07:00,2025-11-03 07:00,0,24,100
INT.P1.1400,Bid Packages Issued to Subcontractors - P1,Complete,PRE CONSTRUCTION,Support Building Overall,Gypsum,FRAMING/ DRYWALL GYPSUM,,PRE - CON / BUYOUT / IMPACTS,,DRYWALL,AMBER CARO,INTERIORS,2023-01-26 07:00,2023-01-28 11:00,2023-01-26 07:00,2023-01-28 12:00,2025-11-20 17:00,2025-11-20 17:00,2025-11-03 07:00,2025-11-03 07:00,0,24,100
INT.P1.1410,BIDDING OUT PKGS - P1,Complete,PRE CONSTRUCTION,Support Building Overall,Gypsum,FRAMING/ DRYWALL GYPSUM,,PRE - CON / BUYOUT / IMPACTS,,DRYWALL,AMBER CARO,INTERIORS,2023-03-09 09:00,2023-03-22 09:00,2023-01-30 09:00,2023-02-17 13:00,2025-11-20 17:00,2025-11-20 17:00,2025-11-03 07:00,2025-11-03 07:00,0,120,100
INT.P1.1420,BID LEVELING / RECOMMEND TO SECAI - P1,Complete,PRE CONSTRUCTION,Support Building Overall,Gypsum,FRAMING/ DRYWALL GYPSUM,,PRE - CON / BUYOUT / IMPACTS,,DRYWALL,AMBER CARO,INTERIORS,2023-03-17 07:00,2023-03-24 17:00,2023-02-17 07:00,2023-03-14 13:00,2025-11-20 17:00,2025-11-20 17:00,2025-11-03 07:00,2025-11-03 07:00,0,80,100
INT.P1.1430,SECAI / SAS REVIEW & PROCUREMENT PROCESSING - P1,Complete,PRE CONSTRUCTION,Support Building Overall,Gypsum,FRAMING/ DRYWALL GYPSUM,,PRE - CON / BUYOUT / IMPACTS,,DRYWALL,AMBER CARO,INTERIORS,2023-03-14 13:00,2023-04-01 13:00,2023-03-14 13:00,2023-04-04 13:00,2025-11-20 17:00,2025-11-20 17:00,2025-11-03 07:00,2025-11-03 07:00,0,160,100
INT.P1.1390,RESPONSES TO RFIs FROM SECAI - P1,Complete,PRE CONSTRUCTION,Support Building Overall,Gypsum,FRAMING/ DRYWALL GYPSUM,,PRE - CON / BUYOUT / IMPACTS,,DRYWALL,AMBER CARO,INTERIORS,2023-01-23 09:00,2023-01-26 13:00,2023-01-23 09:00,2023-01-26 13:00,2025-11-20 17:00,2025-11-20 17:00,2025-11-03 07:00,2025-11-03 07:00,0,24,100
INT.P1.1440,RFA for RFP SECAI Approval - P1,Complete,PRE CONSTRUCTION,Support Building Overall,Doors & Hardware - INTERIOR,DOORS & HARDWARE INTERIOR,,PRE - CON / BUYOUT / IMPACTS,,DOORS & HARDWARE - INTERIOR,AMBER CARO,INTERIORS,2023-02-20 07:00,2023-02-20 07:00,2023-01-14 14:22,2023-01-15 00:00,2025-11-20 17:00,2025-11-20 17:00,2025-11-10 07:00,2025-11-10 07:00,0,0,100
INT.P1.1450,Design Drawings / Specifications F05.04 - P1,Complete,PRE CONSTRUCTION,Support Building Overall,Doors & Hardware - INTERIOR,DOORS & HARDWARE INTERIOR,,PRE - CON / BUYOUT / IMPACTS,,DOORS & HARDWARE - INTERIOR,AMBER CARO,INTERIORS,2023-02-20 07:00,2023-02-20 07:00,2023-01-16 12:00,2023-01-17 11:00,2025-11-20 17:00,2025-11-20 17:00,2025-11-10 07:00,2025-11-10 07:00,0,0,100
INT.P1.1460,Consolidated Drawing Set (From Jacobs) - P1,Complete,PRE CONSTRUCTION,Support Building Overall,Doors & Hardware - INTERIOR,DOORS & HARDWARE INTERIOR,,PRE - CON / BUYOUT / IMPACTS,,DOORS & HARDWARE - INTERIOR,AMBER CARO,INTERIORS,2023-02-20 07:00,2023-02-20 15:00,2023-01-17 16:00,2023-01-18 00:00,2025-11-20 17:00,2025-11-20 17:00,2025-11-10 07:00,2025-11-10 07:00,0,8,100
INT.P1.1470,Consolidated Set from Yates (If Jacobs Does Not Supply) - P1,Complete,PRE CONSTRUCTION,Support Building Overall,Doors & Hardware - INTERIOR,DOORS & HARDWARE INTERIOR,,PRE - CON / BUYOUT / IMPACTS,,DOORS & HARDWARE - INTERIOR,AMBER CARO,INTERIORS,2023-02-20 15:00,2023-02-21 13:00,2023-01-19 07:00,2023-01-19 17:00,2025-11-20 17:00,2025-11-20 17:00,2025-11-10 07:00,2025-11-10 07:00,0,8,100
INT.P1.1480,Consolidated Architectural Set Approval (SECAI / SAMOO if provided by Yates) - P1,Complete,PRE CONSTRUCTION,Support Building Overall,Doors & Hardware - INTERIOR,DOORS & HARDWARE INTERIOR,,PRE - CON / BUYOUT / IMPACTS,,DOORS & HARDWARE - INTERIOR,AMBER CARO,INTERIORS,2023-02-21 13:00,2023-02-26 13:00,2023-01-20 11:00,2023-01-24 17:00,2025-11-20 17:00,2025-11-20 17:00,2025-11-10 07:00,2025-11-10 07:00,0,40,100
INT.P1.1490,Review of Consolidated Set / Updates to Bid Form / Scope Checklist - P1,Complete,PRE CONSTRUCTION,Support Building Overall,Doors & Hardware - INTERIOR,DOORS & HARDWARE INTERIOR,,PRE - CON / BUYOUT / IMPACTS,,DOORS & HARDWARE - INTERIOR,AMBER CARO,INTERIORS,2023-02-27 15:00,2023-03-03 09:00,2023-01-24 15:30,2023-01-27 17:00,2025-11-20 17:00,2025-11-20 17:00,2025-11-10 07:00,2025-11-10 07:00,0,24,100
INT.P1.1510,Bid Packages Issued to Subcontractors - P1,Complete,PRE CONSTRUCTION,Support Building Overall,Doors & Hardware - INTERIOR,DOORS & HARDWARE INTERIOR,,PRE - CON / BUYOUT / IMPACTS,,DOORS & HARDWARE - INTERIOR,AMBER CARO,INTERIORS,2023-03-06 15:00,2023-03-09 09:00,2023-01-31 07:00,2023-02-02 17:00,2025-11-20 17:00,2025-11-20 17:00,2025-11-10 07:00,2025-11-10 07:00,0,24,100
INT.P1.1520,BIDDING OUT PKGS - P1,Complete,PRE CONSTRUCTION,Support Building Overall,Doors & Hardware - INTERIOR,DOORS & HARDWARE INTERIOR,,PRE - CON / BUYOUT / IMPACTS,,DOORS & HARDWARE - INTERIOR,AMBER CARO,INTERIORS,2023-03-09 09:00,2023-03-22 09:00,2023-02-02 15:00,2023-03-10 11:00,2025-11-20 17:00,2025-11-20 17:00,2025-11-10 07:00,2025-11-10 07:00,0,120,100
INT.P1.1530,BID LEVELING / RECOMMEND TO SECAI - P1,Complete,PRE CONSTRUCTION,Support Building Overall,Doors & Hardware - INTERIOR,DOORS & HARDWARE INTERIOR,,PRE - CON / BUYOUT / IMPACTS,,DOORS & HARDWARE - INTERIOR,AMBER CARO,INTERIORS,2023-03-10 11:00,2023-03-19 11:00,2023-03-10 11:00,2023-03-28 17:00,2025-11-20 17:00,2025-11-20 17:00,2025-11-10 07:00,2025-11-10 07:00,0,80,100
INT.P1.1540,SECAI / SAS REVIEW & PROCUREMENT PROCESSING - P1,Complete,PRE CONSTRUCTION,Support Building Overall,Doors & Hardware - INTERIOR,DOORS & HARDWARE INTERIOR,,PRE - CON / BUYOUT / IMPACTS,,DOORS & HARDWARE - INTERIOR,AMBER CARO,INTERIORS,2023-03-30 07:00,2023-04-03 15:00,2023-03-30 07:00,2023-04-04 17:00,2025-11-20 17:00,2025-11-20 17:00,2025-11-19 07:00,2025-11-19 07:00,0,48,100
INT.P1.1500,RESPONSES TO RFIs FROM SECAI - P1,Complete,PRE CONSTRUCTION,Support Building Overall,Doors & Hardware - INTERIOR,DOORS & HARDWARE INTERIOR,,PRE - CON / BUYOUT / IMPACTS,,DOORS & HARDWARE - INTERIOR,AMBER CARO,INTERIORS,2023-03-03 09:00,2023-03-05 13:00,2023-01-27 15:00,2023-01-31 09:00,2025-11-20 17:00,2025-11-20 17:00,2025-11-10 07:00,2025-11-10 07:00,0,24,100
INT.P1.1550,RFA for RFP SECAI Approval - P1,Complete,PRE CONSTRUCTION,Support Building Overall,Doors & Hardware - EXTERIOR,DOORS & HARDWARE EXTERIOR,,PRE - CON / BUYOUT / IMPACTS,,DOORS & HARDWARE - EXTERIOR,AMBER CARO,INTERIORS,2023-02-20 07:00,2023-02-20 07:00,2023-02-20 07:00,2023-02-20 07:00,2025-11-20 17:00,2025-11-20 17:00,2025-11-25 07:00,2025-11-25 07:00,0,0,100
INT.P1.DH&HW.1160,Execute Subcontract/ NTP - Doors & Hardware - PERMANENT,Complete,PRE CONSTRUCTION,Support Building Overall,Doors & Hardware - EXTERIOR,DOORS & HARDWARE EXTERIOR,,PRE - CON / BUYOUT / IMPACTS,,DOORS & HARDWARE - EXTERIOR,AMBER CARO,INTERIORS,2023-08-01 13:00,2023-08-05 13:00,2023-06-08 07:00,2023-06-24 11:00,2025-11-20 17:00,2025-11-20 17:00,2025-11-25 07:00,2025-11-25 07:00,0,40,100
INT.P1.DH&HW.1170,Subcontractor Submit Shop Drawings / Product Data - Doors & Hardware - PERMANENT,Complete,PRE CONSTRUCTION,Support Building Overall,Doors & Hardware - EXTERIOR,DOORS & HARDWARE EXTERIOR,,PRE - CON / BUYOUT / IMPACTS,,DOORS & HARDWARE - EXTERIOR,AMBER CARO,INTERIORS,2023-08-05 14:00,2023-08-16 10:00,2023-07-03 14:00,2023-10-03 17:00,2025-11-20 17:00,2025-11-20 17:00,2025-11-25 07:00,2025-11-25 07:00,0,96,100
INT.P1.DH&HW.1180,Jacobs Review / Approve shop Drawings - Doors & Hardware - PERMANENT,Complete,PRE CONSTRUCTION,Support Building Overall,Doors & Hardware - EXTERIOR,DOORS & HARDWARE EXTERIOR,,PRE - CON / BUYOUT / IMPACTS,,DOORS & HARDWARE - EXTERIOR,AMBER CARO,INTERIORS,2023-10-02 07:00,2023-10-11 13:00,2023-10-04 07:00,2023-10-09 16:00,2025-11-20 17:00,2025-11-20 17:00,2025-11-25 07:00,2025-11-25 07:00,0,96,100
INT.P1.DH&HW.1190,Fabrication / Lead time - Doors & Hardware Exterior - PERMANENT,Complete,PRE CONSTRUCTION,Support Building Overall,Doors & Hardware - EXTERIOR,DOORS & HARDWARE EXTERIOR,,PRE - CON / BUYOUT / IMPACTS,,DOORS & HARDWARE - EXTERIOR,AMBER CARO,INTERIORS,2023-10-09 07:00,2023-11-21 11:00,2023-10-10 07:00,2024-02-25 17:00,2025-11-20 17:00,2025-11-20 17:00,2025-11-25 07:00,2025-11-25 07:00,0,384,100
INT.P1.1560,Design Drawings / Specifications F05.04 - P1,Complete,PRE CONSTRUCTION,Support Building Overall,Doors & Hardware - EXTERIOR,DOORS & HARDWARE EXTERIOR,,PRE - CON / BUYOUT / IMPACTS,,DOORS & HARDWARE - EXTERIOR,AMBER CARO,INTERIORS,2023-02-20 07:00,2023-02-20 07:00,2023-02-20 07:00,2023-02-20 07:00,2025-11-20 17:00,2025-11-20 17:00,2025-11-25 07:00,2025-11-25 07:00,0,0,100
INT.P1.1570,Consolidated Drawing Set (From Jacobs) - P1,Complete,PRE CONSTRUCTION,Support Building Overall,Doors & Hardware - EXTERIOR,DOORS & HARDWARE EXTERIOR,,PRE - CON / BUYOUT / IMPACTS,,DOORS & HARDWARE - EXTERIOR,AMBER CARO,INTERIORS,2023-02-20 07:00,2023-02-20 15:00,2023-02-20 07:00,2023-02-20 15:00,2025-11-20 17:00,2025-11-20 17:00,2025-11-25 07:00,2025-11-25 07:00,0,8,100
INT.P1.1580,Consolidated Set from Yates (If Jacobs Does Not Supply) - P1,Complete,PRE CONSTRUCTION,Support Building Overall,Doors & Hardware - EXTERIOR,DOORS & HARDWARE EXTERIOR,,PRE - CON / BUYOUT / IMPACTS,,DOORS & HARDWARE - EXTERIOR,AMBER CARO,INTERIORS,2023-02-20 15:00,2023-02-21 13:00,2023-02-20 15:00,2023-02-21 13:00,2025-11-20 17:00,2025-11-20 17:00,2025-11-25 07:00,2025-11-25 07:00,0,8,100
INT.P1.1590,Consolidated Architectural Set Approval (SECAI / SAMOO if provided by Yates) - P1,Complete,PRE CONSTRUCTION,Support Building Overall,Doors & Hardware - EXTERIOR,DOORS & HARDWARE EXTERIOR,,PRE - CON / BUYOUT / IMPACTS,,DOORS & HARDWARE - EXTERIOR,AMBER CARO,INTERIORS,2023-02-21 13:00,2023-02-26 13:00,2023-02-21 13:00,2023-02-22 00:00,2025-11-20 17:00,2025-11-20 17:00,2025-11-25 07:00,2025-11-25 07:00,0,40,100
INT.P1.1600,Review of Consolidated Set / Updates to Bid Form / Scope Checklist - P1,Complete,PRE CONSTRUCTION,Support Building Overall,Doors & Hardware - EXTERIOR,DOORS & HARDWARE EXTERIOR,,PRE - CON / BUYOUT / IMPACTS,,DOORS & HARDWARE - EXTERIOR,AMBER CARO,INTERIORS,2023-02-27 15:00,2023-03-03 09:00,2023-02-20 14:00,2023-02-21 00:00,2025-11-20 17:00,2025-11-20 17:00,2025-11-25 07:00,2025-11-25 07:00,0,24,100
INT.P1.1620,Bid Packages Issued to Subcontractors - P1,Complete,PRE CONSTRUCTION,Support Building Overall,Doors & Hardware - EXTERIOR,DOORS & HARDWARE EXTERIOR,,PRE - CON / BUYOUT / IMPACTS,,DOORS & HARDWARE - EXTERIOR,AMBER CARO,INTERIORS,2023-03-06 15:00,2023-03-09 09:00,2023-02-20 07:00,2023-02-21 17:00,2025-11-20 17:00,2025-11-20 17:00,2025-11-25 07:00,2025-11-25 07:00,0,24,100
INT.P1.1630,BIDDING OUT PKGS - P1,Complete,PRE CONSTRUCTION,Support Building Overall,Doors & Hardware - EXTERIOR,DOORS & HARDWARE EXTERIOR,,PRE - CON / BUYOUT / IMPACTS,,DOORS & HARDWARE - EXTERIOR,AMBER CARO,INTERIORS,2023-02-27 07:00,2023-03-11 17:00,2023-02-23 07:00,2023-02-27 07:00,2025-11-20 17:00,2025-11-20 17:00,2025-11-25 07:00,2025-11-25 07:00,0,120,100
INT.P1.1640,BID LEVELING / RECOMMEND TO SECAI - P1,Complete,PRE CONSTRUCTION,Support Building Overall,Doors & Hardware - EXTERIOR,DOORS & HARDWARE EXTERIOR,,PRE - CON / BUYOUT / IMPACTS,,DOORS & HARDWARE - EXTERIOR,AMBER CARO,INTERIORS,2023-02-27 07:00,2023-03-07 17:00,2023-02-20 07:00,2023-02-20 15:00,2025-11-20 17:00,2025-11-20 17:00,2025-11-25 07:00,2025-11-25 07:00,0,80,100
INT.P1.1650,SECAI / SAS REVIEW & PROCUREMENT PROCESSING - P1,Complete,PRE CONSTRUCTION,Support Building Overall,Doors & Hardware - EXTERIOR,DOORS & HARDWARE EXTERIOR,,PRE - CON / BUYOUT / IMPACTS,,DOORS & HARDWARE - EXTERIOR,AMBER CARO,INTERIORS,2023-03-09 09:00,2023-03-26 09:00,2023-02-20 09:00,2023-03-14 13:00,2025-11-20 17:00,2025-11-20 17:00,2025-11-25 07:00,2025-11-25 07:00,0,160,100
INT.P1.1610,RESPONSES TO RFIs FROM SECAI - P1,Complete,PRE CONSTRUCTION,Support Building Overall,Doors & Hardware - EXTERIOR,DOORS & HARDWARE EXTERIOR,,PRE - CON / BUYOUT / IMPACTS,,DOORS & HARDWARE - EXTERIOR,AMBER CARO,INTERIORS,2023-03-03 09:00,2023-03-05 13:00,2023-02-21 16:00,2023-02-22 00:00,2025-11-20 17:00,2025-11-20 17:00,2025-11-25 07:00,2025-11-25 07:00,0,24,100
INT.P1.1660,RFA for RFP SECAI Approval - P1,Complete,PRE CONSTRUCTION,Support Building Overall,Doors & Hardware - OVERHEAD,DOORS & HARDWARE OVERHEAD,,PRE - CON / BUYOUT / IMPACTS,,DOORS & HARDWARE - OVERHEAD,AMBER CARO,INTERIORS,2023-01-03 07:00,2023-01-03 07:00,2023-01-03 07:00,2023-01-03 17:00,2025-11-20 17:00,2025-11-20 17:00,2025-11-21 07:00,2025-11-21 07:00,0,0,100
INT.P1.DH&HW.1200,Execute RFA - Doors & Hardware - OVERHEAD,Complete,PRE CONSTRUCTION,Support Building Overall,Doors & Hardware - OVERHEAD,DOORS & HARDWARE OVERHEAD,,PRE - CON / BUYOUT / IMPACTS,,DOORS & HARDWARE - OVERHEAD,AMBER CARO,INTERIORS,2023-08-28 07:00,2023-09-06 17:00,2023-08-28 07:00,2023-10-20 13:00,2025-11-20 17:00,2025-11-20 17:00,2025-11-21 07:00,2025-11-21 07:00,0,80,100
INT.P1.DH&HW.1210,Subcontractor Submit Shop Drawings / Product Data - Doors & Hardware - OVERHEAD,Complete,PRE CONSTRUCTION,Support Building Overall,Doors & Hardware - OVERHEAD,DOORS & HARDWARE OVERHEAD,,PRE - CON / BUYOUT / IMPACTS,,DOORS & HARDWARE - OVERHEAD,AMBER CARO,INTERIORS,2023-10-17 13:00,2023-10-29 09:00,2023-09-14 14:51,2023-09-26 17:00,2025-11-20 17:00,2025-11-20 17:00,2025-11-21 07:00,2025-11-21 07:00,0,96,100
INT.P1.DH&HW.1220,Jacobs Review / Approve shop Drawings - Doors & Hardware - OVERHEAD,Complete,PRE CONSTRUCTION,Support Building Overall,Doors & Hardware - OVERHEAD,DOORS & HARDWARE OVERHEAD,,PRE - CON / BUYOUT / IMPACTS,,DOORS & HARDWARE - OVERHEAD,AMBER CARO,INTERIORS,2023-11-02 13:00,2023-11-12 09:00,2023-09-28 07:00,2023-10-10 13:00,2025-11-20 17:00,2025-11-20 17:00,2025-11-21 07:00,2025-11-21 07:00,0,96,100
INT.P1.DH&HW.1230,Fabrication / Lead time - Doors & Hardware - OVERHEAD,Complete,PRE CONSTRUCTION,Support Building Overall,Doors & Hardware - OVERHEAD,DOORS & HARDWARE OVERHEAD,,PRE - CON / BUYOUT / IMPACTS,,DOORS & HARDWARE - OVERHEAD,AMBER CARO,INTERIORS,2023-11-27 07:00,2023-12-16 15:00,2023-11-18 07:00,2023-12-22 11:00,2025-11-20 17:00,2025-11-20 17:00,2025-11-26 07:00,2025-11-26 07:00,0,168,100
INT.P1.1670,Design Drawings / Specifications F05.04 - P1,Complete,PRE CONSTRUCTION,Support Building Overall,Doors & Hardware - OVERHEAD,DOORS & HARDWARE OVERHEAD,,PRE - CON / BUYOUT / IMPACTS,,DOORS & HARDWARE - OVERHEAD,AMBER CARO,INTERIORS,2023-01-04 07:00,2023-01-04 07:00,2023-01-04 07:00,2023-01-04 07:00,2025-11-20 17:00,2025-11-20 17:00,2025-11-21 07:00,2025-11-21 07:00,0,0,100
INT.P1.1680,Consolidated Drawing Set (From Jacobs) - P1,Complete,PRE CONSTRUCTION,Support Building Overall,Doors & Hardware - OVERHEAD,DOORS & HARDWARE OVERHEAD,,PRE - CON / BUYOUT / IMPACTS,,DOORS & HARDWARE - OVERHEAD,AMBER CARO,INTERIORS,2023-01-04 08:00,2023-01-04 16:00,2023-01-04 08:00,2023-01-04 16:00,2025-11-20 17:00,2025-11-20 17:00,2025-11-21 07:00,2025-11-21 07:00,0,8,100
INT.P1.1690,Consolidated Set from Yates (If Jacobs Does Not Supply) - P1,Complete,PRE CONSTRUCTION,Support Building Overall,Doors & Hardware - OVERHEAD,DOORS & HARDWARE OVERHEAD,,PRE - CON / BUYOUT / IMPACTS,,DOORS & HARDWARE - OVERHEAD,AMBER CARO,INTERIORS,2023-01-05 16:00,2023-01-06 14:00,2023-01-05 16:00,2023-01-06 14:00,2025-11-20 17:00,2025-11-20 17:00,2025-11-21 07:00,2025-11-21 07:00,0,8,100
INT.P1.1700,Consolidated Architectural Set Approval (SECAI / SAMOO if provided by Yates) - P1,Complete,PRE CONSTRUCTION,Support Building Overall,Doors & Hardware - OVERHEAD,DOORS & HARDWARE OVERHEAD,,PRE - CON / BUYOUT / IMPACTS,,DOORS & HARDWARE - OVERHEAD,AMBER CARO,INTERIORS,2023-01-09 14:00,2023-01-14 14:00,2023-01-09 14:00,2023-01-14 15:00,2025-11-20 17:00,2025-11-20 17:00,2025-11-21 07:00,2025-11-21 07:00,0,40,100
INT.P1.1710,Review of Consolidated Set / Updates to Bid Form / Scope Checklist - P1,Complete,PRE CONSTRUCTION,Support Building Overall,Doors & Hardware - OVERHEAD,DOORS & HARDWARE OVERHEAD,,PRE - CON / BUYOUT / IMPACTS,,DOORS & HARDWARE - OVERHEAD,AMBER CARO,INTERIORS,2023-01-16 16:00,2023-01-20 10:00,2023-01-16 16:00,2023-01-20 10:00,2025-11-20 17:00,2025-11-20 17:00,2025-11-21 07:00,2025-11-21 07:00,0,24,100
INT.P1.1730,Bid Packages Issued to Subcontractors - P1,Complete,PRE CONSTRUCTION,Support Building Overall,Doors & Hardware - OVERHEAD,DOORS & HARDWARE OVERHEAD,,PRE - CON / BUYOUT / IMPACTS,,DOORS & HARDWARE - OVERHEAD,AMBER CARO,INTERIORS,2023-01-23 15:00,2023-01-27 09:00,2023-01-23 15:00,2023-01-27 09:00,2025-11-20 17:00,2025-11-20 17:00,2025-11-21 07:00,2025-11-21 07:00,0,24,100
INT.P1.1740,BIDDING OUT PKGS - P1,Complete,PRE CONSTRUCTION,Support Building Overall,Doors & Hardware - OVERHEAD,DOORS & HARDWARE OVERHEAD,,PRE - CON / BUYOUT / IMPACTS,,DOORS & HARDWARE - OVERHEAD,AMBER CARO,INTERIORS,2023-01-27 10:00,2023-02-09 10:00,2023-01-27 10:00,2023-02-08 15:00,2025-11-20 17:00,2025-11-20 17:00,2025-11-21 07:00,2025-11-21 07:00,0,120,100
INT.P1.1750,BID LEVELING / RECOMMEND TO SECAI - P1,Complete,PRE CONSTRUCTION,Support Building Overall,Doors & Hardware - OVERHEAD,DOORS & HARDWARE OVERHEAD,,PRE - CON / BUYOUT / IMPACTS,,DOORS & HARDWARE - OVERHEAD,AMBER CARO,INTERIORS,2023-02-13 14:00,2023-02-23 14:00,2023-02-09 09:00,2023-02-24 17:00,2025-11-20 17:00,2025-11-20 17:00,2025-11-21 07:00,2025-11-21 07:00,0,80,100
INT.P1.1760,SECAI / SAS REVIEW & PROCUREMENT PROCESSING - P1,Complete,PRE CONSTRUCTION,Support Building Overall,Doors & Hardware - OVERHEAD,DOORS & HARDWARE OVERHEAD,,PRE - CON / BUYOUT / IMPACTS,,DOORS & HARDWARE - OVERHEAD,AMBER CARO,INTERIORS,2023-03-09 09:00,2023-03-26 09:00,2023-02-24 09:00,2023-05-20 16:00,2025-11-20 17:00,2025-11-20 17:00,2025-11-21 07:00,2025-11-21 07:00,0,160,100
INT.P1.1720,RESPONSES TO RFIs FROM SECAI - P1,Complete,PRE CONSTRUCTION,Support Building Overall,Doors & Hardware - OVERHEAD,DOORS & HARDWARE OVERHEAD,,PRE - CON / BUYOUT / IMPACTS,,DOORS & HARDWARE - OVERHEAD,AMBER CARO,INTERIORS,2023-01-20 10:00,2023-01-22 14:00,2023-01-20 10:00,2023-01-23 16:00,2025-11-20 17:00,2025-11-20 17:00,2025-11-21 07:00,2025-11-21 07:00,0,24,100
INT.P1.1770,RFA for RFP SECAI Approval - P1,Complete,PRE CONSTRUCTION,Support Building Overall,Stairs,GL 33 STAIRS 5 & 18,,PRE - CON / BUYOUT / IMPACTS,,STAIRS,JAMES LIVELY,INTERIORS,2022-12-27 07:00,2022-12-27 07:00,2022-12-13 07:00,2022-12-13 07:00,2025-11-20 17:00,2025-11-20 17:00,2025-06-13 08:00,2025-06-13 08:00,0,0,100
INT.P1.1780,Design Drawings / Specifications F05.04 - P1,Complete,PRE CONSTRUCTION,Support Building Overall,Stairs,GL 33 STAIRS 5 & 18,,PRE - CON / BUYOUT / IMPACTS,,STAIRS,JAMES LIVELY,INTERIORS,2022-12-27 07:00,2022-12-27 07:00,2022-12-13 07:00,2022-12-13 07:00,2025-11-20 17:00,2025-11-20 17:00,2025-06-13 08:00,2025-06-13 08:00,0,0,100
INT.P1.1790,Consolidated Drawing Set (From Jacobs) - P1,Complete,PRE CONSTRUCTION,Support Building Overall,Stairs,GL 33 STAIRS 5 & 18,,PRE - CON / BUYOUT / IMPACTS,,STAIRS,JAMES LIVELY,INTERIORS,2022-12-13 07:00,2022-12-13 15:00,2022-12-13 07:00,2022-12-15 15:00,2025-11-20 17:00,2025-11-20 17:00,2025-06-13 08:00,2025-06-13 08:00,0,8,100
INT.P1.1800,Consolidated Set from Yates (If Jacobs Does Not Supply) - P1,Complete,PRE CONSTRUCTION,Support Building Overall,Stairs,GL 33 STAIRS 5 & 18,,PRE - CON / BUYOUT / IMPACTS,,STAIRS,JAMES LIVELY,INTERIORS,2022-12-29 13:00,2022-12-30 11:00,2022-12-15 13:00,2022-12-16 11:00,2025-11-20 17:00,2025-11-20 17:00,2025-06-13 08:00,2025-06-13 08:00,0,8,100
INT.P1.1810,Consolidated Architectural Set Approval (SECAI / SAMOO if provided by Yates) - P1,Complete,PRE CONSTRUCTION,Support Building Overall,Stairs,GL 33 STAIRS 5 & 18,,PRE - CON / BUYOUT / IMPACTS,,STAIRS,JAMES LIVELY,INTERIORS,2022-12-30 11:00,2023-01-05 11:00,2022-12-16 11:00,2022-12-21 11:00,2025-11-20 17:00,2025-11-20 17:00,2025-06-13 08:00,2025-06-13 08:00,0,40,100
INT.P1.1820,Review of Consolidated Set / Updates to Bid Form / Scope Checklist - P1,Complete,PRE CONSTRUCTION,Support Building Overall,Stairs,GL 33 STAIRS 5 & 18,,PRE - CON / BUYOUT / IMPACTS,,STAIRS,JAMES LIVELY,INTERIORS,2023-01-06 11:00,2023-01-08 15:00,2022-12-21 11:00,2022-12-22 17:00,2025-11-20 17:00,2025-11-20 17:00,2025-06-13 08:00,2025-06-13 08:00,0,24,100
INT.P1.1840,Bid Packages Issued to Subcontractors - P1,Complete,PRE CONSTRUCTION,Support Building Overall,Stairs,GL 33 STAIRS 5 & 18,,PRE - CON / BUYOUT / IMPACTS,,STAIRS,JAMES LIVELY,INTERIORS,2023-02-27 07:00,2023-03-02 11:00,2023-01-02 07:00,2023-01-06 11:00,2025-11-20 17:00,2025-11-20 17:00,2025-06-13 08:00,2025-06-13 08:00,0,24,100
INT.P1.1850,BIDDING OUT PKGS - P1,Complete,PRE CONSTRUCTION,Support Building Overall,Stairs,GL 33 STAIRS 5 & 18,,PRE - CON / BUYOUT / IMPACTS,,STAIRS,JAMES LIVELY,INTERIORS,2023-03-02 11:00,2023-03-14 11:00,2023-01-06 11:00,2023-01-27 15:00,2025-11-20 17:00,2025-11-20 17:00,2025-06-13 08:00,2025-06-13 08:00,0,120,100
INT.P1.1860,BID LEVELING / RECOMMEND TO SECAI - P1,Complete,PRE CONSTRUCTION,Support Building Overall,Stairs,GL 33 STAIRS 5 & 18,,PRE - CON / BUYOUT / IMPACTS,,STAIRS,JAMES LIVELY,INTERIORS,2023-03-17 15:00,2023-03-25 15:00,2023-01-27 15:00,2023-02-10 09:00,2025-11-20 17:00,2025-11-20 17:00,2025-06-13 08:00,2025-06-13 08:00,0,80,100
INT.P1.1870,SECAI / SAS REVIEW & PROCUREMENT PROCESSING - P1,Complete,PRE CONSTRUCTION,Support Building Overall,Stairs,GL 33 STAIRS 5 & 18,,PRE - CON / BUYOUT / IMPACTS,,STAIRS,JAMES LIVELY,INTERIORS,2023-03-28 09:00,2023-04-15 09:00,2023-02-10 09:00,2023-02-14 15:00,2025-11-20 17:00,2025-11-20 17:00,2025-06-13 08:00,2025-06-13 08:00,0,160,100
INT.P1.1830,RESPONSES TO RFIs FROM SECAI - P1,Complete,PRE CONSTRUCTION,Support Building Overall,Stairs,GL 33 STAIRS 5 & 18,,PRE - CON / BUYOUT / IMPACTS,,STAIRS,JAMES LIVELY,INTERIORS,2023-01-06 11:00,2023-01-08 15:00,2022-12-21 11:00,2022-12-30 17:00,2025-11-20 17:00,2025-11-20 17:00,2025-06-13 08:00,2025-06-13 08:00,0,24,100
INT.P1.1880,RFA for RFP SECAI Approval - P1,Complete,PRE CONSTRUCTION,Support Building Overall,Misc. Steel,MISC. STEEL,,PRE - CON / BUYOUT / IMPACTS,,MISC. Steel,JAMES LIVELY,INTERIORS,2022-12-27 07:00,2022-12-27 07:00,2022-12-13 07:00,2022-12-13 07:00,2025-11-20 17:00,2025-11-20 17:00,2025-09-29 07:00,2025-09-29 07:00,0,0,100
INT.P1.1890,Design Drawings / Specifications F05.04 - P1,Complete,PRE CONSTRUCTION,Support Building Overall,Misc. Steel,MISC. STEEL,,PRE - CON / BUYOUT / IMPACTS,,MISC. Steel,JAMES LIVELY,INTERIORS,2022-12-27 07:00,2022-12-27 07:00,2022-12-13 07:00,2022-12-13 07:00,2025-11-20 17:00,2025-11-20 17:00,2025-09-29 07:00,2025-09-29 07:00,0,0,100
INT.P1.1900,Consolidated Drawing Set (From Jacobs) - P1,Complete,PRE CONSTRUCTION,Support Building Overall,Misc. Steel,MISC. STEEL,,PRE - CON / BUYOUT / IMPACTS,,MISC. Steel,JAMES LIVELY,INTERIORS,2022-12-13 07:00,2022-12-13 15:00,2022-12-13 07:00,2022-12-15 15:00,2025-11-20 17:00,2025-11-20 17:00,2025-09-29 07:00,2025-09-29 07:00,0,8,100
INT.P1.1910,Consolidated Set from Yates (If Jacobs Does Not Supply) - P1,Complete,PRE CONSTRUCTION,Support Building Overall,Misc. Steel,MISC. STEEL,,PRE - CON / BUYOUT / IMPACTS,,MISC. Steel,JAMES LIVELY,INTERIORS,2022-12-29 13:00,2022-12-30 11:00,2022-12-15 13:00,2022-12-16 11:00,2025-11-20 17:00,2025-11-20 17:00,2025-09-29 07:00,2025-09-29 07:00,0,8,100
INT.P1.1920,Consolidated Architectural Set Approval (SECAI / SAMOO if provided by Yates) - P1,Complete,PRE CONSTRUCTION,Support Building Overall,Misc. Steel,MISC. STEEL,,PRE - CON / BUYOUT / IMPACTS,,MISC. Steel,JAMES LIVELY,INTERIORS,2022-12-30 11:00,2023-01-05 11:00,2022-12-16 11:00,2022-12-21 11:00,2025-11-20 17:00,2025-11-20 17:00,2025-09-29 07:00,2025-09-29 07:00,0,40,100
INT.P1.1930,Review of Consolidated Set / Updates to Bid Form / Scope Checklist - P1,Complete,PRE CONSTRUCTION,Support Building Overall,Misc. Steel,MISC. STEEL,,PRE - CON / BUYOUT / IMPACTS,,MISC. Steel,JAMES LIVELY,INTERIORS,2023-01-06 11:00,2023-01-08 15:00,2022-12-21 11:00,2022-12-22 17:00,2025-11-20 17:00,2025-11-20 17:00,2025-09-29 07:00,2025-09-29 07:00,0,24,100
INT.P1.1950,Bid Packages Issued to Subcontractors - P1,Complete,PRE CONSTRUCTION,Support Building Overall,Misc. Steel,MISC. STEEL,,PRE - CON / BUYOUT / IMPACTS,,MISC. Steel,JAMES LIVELY,INTERIORS,2023-03-04 08:00,2023-03-06 12:00,2023-03-04 08:00,2023-03-07 13:00,2025-11-20 17:00,2025-11-20 17:00,2025-09-29 07:00,2025-09-29 07:00,0,24,100
INT.P1.1960,BIDDING OUT PKGS - P1,Complete,PRE CONSTRUCTION,Support Building Overall,Misc. Steel,MISC. STEEL,,PRE - CON / BUYOUT / IMPACTS,,MISC. Steel,JAMES LIVELY,INTERIORS,2023-03-07 13:00,2023-03-20 13:00,2023-03-07 13:00,2023-03-23 09:00,2025-11-20 17:00,2025-11-20 17:00,2025-09-29 07:00,2025-09-29 07:00,0,120,100
INT.P1.1970,BID LEVELING / RECOMMEND TO SECAI - P1,Complete,PRE CONSTRUCTION,Support Building Overall,Misc. Steel,MISC. STEEL,,PRE - CON / BUYOUT / IMPACTS,,MISC. Steel,JAMES LIVELY,INTERIORS,2023-03-23 09:00,2023-04-01 09:00,2023-03-23 09:00,2023-04-03 15:00,2025-11-20 17:00,2025-11-20 17:00,2025-09-29 07:00,2025-09-29 07:00,0,80,100
INT.P1.1980,SECAI / SAS REVIEW & PROCUREMENT PROCESSING - P1,Complete,PRE CONSTRUCTION,Support Building Overall,Misc. Steel,MISC. STEEL,,PRE - CON / BUYOUT / IMPACTS,,MISC. Steel,JAMES LIVELY,INTERIORS,2023-04-03 15:00,2023-04-21 15:00,2023-04-03 15:00,2023-05-25 17:00,2025-11-20 17:00,2025-11-20 17:00,2025-09-29 07:00,2025-09-29 07:00,0,160,100
INT.P1.1940,RESPONSES TO RFIs FROM SECAI - P1,Complete,PRE CONSTRUCTION,Support Building Overall,Misc. Steel,MISC. STEEL,,PRE - CON / BUYOUT / IMPACTS,,MISC. Steel,JAMES LIVELY,INTERIORS,2023-01-06 11:00,2023-01-08 15:00,2022-12-21 11:00,2023-03-03 17:00,2025-11-20 17:00,2025-11-20 17:00,2025-09-29 07:00,2025-09-29 07:00,0,24,100
INT.P1.2210,RFA for RFP SECAI Approval - P1,Complete,PRE CONSTRUCTION,Support Building Overall,CRC,CHEMICAL RESISTANT COATINGS,,PRE - CON / BUYOUT / IMPACTS,,FLOOR COATING,HOON WOO,INTERIORS,2023-02-20 07:00,2023-02-20 07:00,2023-02-01 23:36,2023-02-02 17:00,2025-11-20 17:00,2025-11-20 17:00,2025-11-24 07:00,2025-11-24 07:00,0,0,100
INT.P1.2220,Design Drawings / Specifications F05.04 - P1,Complete,PRE CONSTRUCTION,Support Building Overall,CRC,CHEMICAL RESISTANT COATINGS,,PRE - CON / BUYOUT / IMPACTS,,FLOOR COATING,HOON WOO,INTERIORS,2023-02-20 07:00,2023-02-20 07:00,2023-02-04 01:39,2023-02-04 16:00,2025-11-20 17:00,2025-11-20 17:00,2025-11-24 07:00,2025-11-24 07:00,0,0,100
INT.P1.2230,Consolidated Drawing Set (From Jacobs) - P1,Complete,PRE CONSTRUCTION,Support Building Overall,CRC,CHEMICAL RESISTANT COATINGS,,PRE - CON / BUYOUT / IMPACTS,,FLOOR COATING,HOON WOO,INTERIORS,2023-02-20 07:00,2023-02-20 15:00,2023-02-06 07:00,2023-02-06 17:00,2025-11-20 17:00,2025-11-20 17:00,2025-11-24 07:00,2025-11-24 07:00,0,8,100
INT.P1.2240,Consolidated Set from Yates (If Jacobs Does Not Supply) - P1,Complete,PRE CONSTRUCTION,Support Building Overall,CRC,CHEMICAL RESISTANT COATINGS,,PRE - CON / BUYOUT / IMPACTS,,FLOOR COATING,HOON WOO,INTERIORS,2023-02-20 15:00,2023-02-21 13:00,2023-02-07 07:00,2023-02-07 17:00,2025-11-20 17:00,2025-11-20 17:00,2025-11-24 07:00,2025-11-24 07:00,0,8,100
INT.P1.2250,Consolidated Architectural Set Approval (SECAI / SAMOO if provided by Yates) - P1,Complete,PRE CONSTRUCTION,Support Building Overall,CRC,CHEMICAL RESISTANT COATINGS,,PRE - CON / BUYOUT / IMPACTS,,FLOOR COATING,HOON WOO,INTERIORS,2023-02-21 13:00,2023-02-26 13:00,2023-02-08 09:00,2023-02-08 17:00,2025-11-20 17:00,2025-11-20 17:00,2025-11-24 07:00,2025-11-24 07:00,0,40,100
INT.P1.2260,Review of Consolidated Set / Updates to Bid Form / Scope Checklist - P1,Complete,PRE CONSTRUCTION,Support Building Overall,CRC,CHEMICAL RESISTANT COATINGS,,PRE - CON / BUYOUT / IMPACTS,,FLOOR COATING,HOON WOO,INTERIORS,2023-02-27 15:00,2023-03-03 09:00,2023-02-09 07:22,2023-02-11 16:00,2025-11-20 17:00,2025-11-20 17:00,2025-11-24 07:00,2025-11-24 07:00,0,24,100
INT.P1.2280,Bid Packages Issued to Subcontractors - P1,Complete,PRE CONSTRUCTION,Support Building Overall,CRC,CHEMICAL RESISTANT COATINGS,,PRE - CON / BUYOUT / IMPACTS,,FLOOR COATING,HOON WOO,INTERIORS,2023-02-27 07:00,2023-03-02 11:00,2023-02-20 07:00,2023-02-21 11:00,2025-11-20 17:00,2025-11-20 17:00,2025-11-24 07:00,2025-11-24 07:00,0,24,100
INT.P1.2290,BIDDING OUT PKGS - P1,Complete,PRE CONSTRUCTION,Support Building Overall,CRC,CHEMICAL RESISTANT COATINGS,,PRE - CON / BUYOUT / IMPACTS,,FLOOR COATING,HOON WOO,INTERIORS,2023-03-02 11:00,2023-03-14 11:00,2023-02-21 11:00,2023-03-31 17:00,2025-11-20 17:00,2025-11-20 17:00,2025-11-24 07:00,2025-11-24 07:00,0,120,100
INT.P1.2300,BID LEVELING / RECOMMEND TO SECAI - P1,Complete,PRE CONSTRUCTION,Support Building Overall,CRC,CHEMICAL RESISTANT COATINGS,,PRE - CON / BUYOUT / IMPACTS,,FLOOR COATING,HOON WOO,INTERIORS,2023-04-01 08:00,2023-04-10 08:00,2023-04-01 08:00,2023-04-11 13:00,2025-11-20 17:00,2025-11-20 17:00,2025-11-24 07:00,2025-11-24 07:00,0,80,100
INT.P1.2310,SECAI / SAS REVIEW & PROCUREMENT PROCESSING - P1,Complete,PRE CONSTRUCTION,Support Building Overall,CRC,CHEMICAL RESISTANT COATINGS,,PRE - CON / BUYOUT / IMPACTS,,FLOOR COATING,HOON WOO,INTERIORS,2023-04-11 13:00,2023-04-20 13:00,2023-04-11 13:00,2023-06-10 08:00,2025-11-20 17:00,2025-11-20 17:00,2025-11-24 07:00,2025-11-24 07:00,0,80,100
INT.P1.2270,RESPONSES TO RFIs FROM SECAI - P1,Complete,PRE CONSTRUCTION,Support Building Overall,CRC,CHEMICAL RESISTANT COATINGS,,PRE - CON / BUYOUT / IMPACTS,,FLOOR COATING,HOON WOO,INTERIORS,2023-03-03 09:00,2023-03-05 13:00,2023-02-13 13:50,2023-02-18 16:00,2025-11-20 17:00,2025-11-20 17:00,2025-11-24 07:00,2025-11-24 07:00,0,24,100
A400,PH1-EXPECTED RELEASE OF FAB - TYPE B - PVC ROOFING,Complete,PRE CONSTRUCTION,West Support Building,ENCLOSURE,L4 - SUP Roof - FAB Roof,,PRE - CON / BUYOUT / IMPACTS,,Roofing,JAMES LIVELY,,2022-10-10 07:00,2022-10-10 07:00,2022-10-10 07:00,2022-10-10 07:00,2025-11-20 17:00,2025-11-20 17:00,2025-11-10 07:00,2025-11-10 07:00,0,0,100
A410,PH1- PROD DATA SUBMITTAL & APPROVALS - FAB - TYPE B - PVC ROOFING,Complete,PRE CONSTRUCTION,West Support Building,ENCLOSURE,L4 - SUP Roof - FAB Roof,,PRE - CON / BUYOUT / IMPACTS,,Roofing,JAMES LIVELY,,2022-10-10 07:00,2022-11-01 17:00,2022-10-10 07:00,2023-01-25 15:00,2025-11-20 17:00,2025-11-20 17:00,2025-11-10 07:00,2025-11-10 07:00,0,200,100
A420,PH1 - SHOP DWGS & APPROVAL MATERIAL DELIVERY - FAB - TYPE B - PVC ROOFING,Complete,PRE CONSTRUCTION,West Support Building,ENCLOSURE,L4 - SUP Roof - FAB Roof,,PRE - CON / BUYOUT / IMPACTS,,Roofing,JAMES LIVELY,,2023-02-20 07:00,2023-03-09 17:00,2023-01-26 07:00,2023-03-08 11:00,2025-11-20 17:00,2025-11-20 17:00,2025-11-10 07:00,2025-11-10 07:00,0,160,100
INT.P2.1300,RFA for RFP SECAI Approval - P2,Complete,PRE CONSTRUCTION,Support Building Overall,COUNTERTOPS,MILLWORK,,PRE - CON / BUYOUT / IMPACTS,,TBD Architectural Finishes,JAMES LEE,INTERIORS,2023-03-13 07:00,2023-04-18 17:00,2023-03-13 07:00,2023-07-31 15:00,2025-11-20 17:00,2025-11-20 17:00,2025-11-20 07:00,2025-11-20 07:00,0,340,100
INT.P2.1320,Bid Packages Issued to Subcontractors - P2,Complete,PRE CONSTRUCTION,Support Building Overall,COUNTERTOPS,MILLWORK,,PRE - CON / BUYOUT / IMPACTS,,TBD Architectural Finishes,JAMES LEE,INTERIORS,2023-08-31 11:00,2023-09-02 15:00,2023-08-04 13:00,2023-08-08 17:00,2025-11-20 17:00,2025-11-20 17:00,2025-11-20 07:00,2025-11-20 07:00,0,24,100
INT.P2.1330,BIDDING OUT PKGS - P2,Complete,PRE CONSTRUCTION,Support Building Overall,COUNTERTOPS,MILLWORK,,PRE - CON / BUYOUT / IMPACTS,,TBD Architectural Finishes,JAMES LEE,INTERIORS,2023-09-05 07:00,2023-09-08 17:00,2023-08-10 07:00,2023-08-14 11:00,2025-11-20 17:00,2025-11-20 17:00,2025-11-20 07:00,2025-11-20 07:00,0,40,100
INT.P2.1340,BID LEVELING / RECOMMEND TO SECAI - P2,Complete,PRE CONSTRUCTION,Support Building Overall,COUNTERTOPS,MILLWORK,,PRE - CON / BUYOUT / IMPACTS,,TBD Architectural Finishes,JAMES LEE,INTERIORS,2023-09-09 08:00,2023-09-14 08:00,2023-08-15 08:30,2023-08-21 15:00,2025-11-20 17:00,2025-11-20 17:00,2025-11-20 07:00,2025-11-20 07:00,0,40,100
INT.P2.1350,SECAI / SAS REVIEW & PROCUREMENT PROCESSING - P2,Complete,PRE CONSTRUCTION,Support Building Overall,COUNTERTOPS,MILLWORK,,PRE - CON / BUYOUT / IMPACTS,,TBD Architectural Finishes,JAMES LEE,INTERIORS,2023-09-15 09:00,2023-09-24 09:00,2023-08-21 15:00,2023-08-29 17:00,2025-11-20 17:00,2025-11-20 17:00,2025-11-20 07:00,2025-11-20 07:00,0,80,100
INT.P2.1310,RESPONSES TO RFIs FROM SECAI - P2,Complete,PRE CONSTRUCTION,Support Building Overall,COUNTERTOPS,MILLWORK,,PRE - CON / BUYOUT / IMPACTS,,TBD Architectural Finishes,JAMES LEE,,2023-08-28 07:00,2023-08-31 11:00,2023-08-01 07:55,2023-08-03 17:00,2025-11-20 17:00,2025-11-20 17:00,2025-11-20 07:00,2025-11-20 07:00,0,24,100
INT.P2.1420,RFA for RFP SECAI Approval - P2,Complete,PRE CONSTRUCTION,Support Building Overall,Tiling,TILING,,PRE - CON / BUYOUT / IMPACTS,,FLOORING,JAMES LEE,INTERIORS,2023-02-27 07:00,2023-03-30 17:00,2023-01-23 07:00,2023-02-04 17:00,2025-11-20 17:00,2025-11-20 17:00,2025-11-20 07:00,2025-11-20 07:00,0,290,100
INT.P2.1440,Bid Packages Issued to Subcontractors - P2,Complete,PRE CONSTRUCTION,Support Building Overall,Tiling,TILING,,PRE - CON / BUYOUT / IMPACTS,,FLOORING,JAMES LEE,INTERIORS,2023-04-10 13:00,2023-04-12 17:00,2023-02-09 15:00,2023-02-13 11:00,2025-11-20 17:00,2025-11-20 17:00,2025-11-20 07:00,2025-11-20 07:00,0,24,100
INT.P2.1450,BIDDING OUT PKGS - P2,Complete,PRE CONSTRUCTION,Support Building Overall,Tiling,TILING,,PRE - CON / BUYOUT / IMPACTS,,FLOORING,JAMES LEE,INTERIORS,2023-08-21 07:00,2023-08-24 11:00,2023-07-14 13:40,2023-07-21 17:00,2025-11-20 17:00,2025-11-20 17:00,2025-11-20 07:00,2025-11-20 07:00,0,24,100
INT.P2.1460,BID LEVELING / RECOMMEND TO SECAI - P2,Complete,PRE CONSTRUCTION,Support Building Overall,Tiling,TILING,,PRE - CON / BUYOUT / IMPACTS,,FLOORING,JAMES LEE,INTERIORS,2023-08-24 11:00,2023-09-02 11:00,2023-07-21 12:00,2023-08-08 17:00,2025-11-20 17:00,2025-11-20 17:00,2025-11-20 07:00,2025-11-20 07:00,0,80,100
INT.P2.1470,SECAI / SAS REVIEW & PROCUREMENT PROCESSING - P2,Complete,PRE CONSTRUCTION,Support Building Overall,Tiling,TILING,,PRE - CON / BUYOUT / IMPACTS,,FLOORING,JAMES LEE,INTERIORS,2023-10-16 07:00,2023-10-19 17:00,2023-08-14 12:00,2023-08-19 16:00,2025-11-20 17:00,2025-11-20 17:00,2025-11-20 07:00,2025-11-20 07:00,0,40,100
INT.P2.1430,RESPONSES TO RFIs FROM SECAI - P2,Complete,PRE CONSTRUCTION,Support Building Overall,Tiling,TILING,,PRE - CON / BUYOUT / IMPACTS,,FLOORING,JAMES LEE,,2023-04-07 07:00,2023-04-09 11:00,2023-02-04 14:00,2023-02-08 13:00,2025-11-20 17:00,2025-11-20 17:00,2025-11-20 07:00,2025-11-20 07:00,0,24,100
INT.P2.1540,RFA for RFP SECAI Approval - P2,Complete,PRE CONSTRUCTION,Support Building Overall,RAISED ACCESS FLOORING,FLOORING,,PRE - CON / BUYOUT / IMPACTS,,FLOORING,JAMES LEE,INTERIORS,2023-02-27 07:00,2023-03-30 17:00,2023-01-12 16:00,2023-02-03 17:00,2025-11-20 17:00,2025-11-20 17:00,2025-12-05 07:00,2025-12-05 07:00,0,290,100
INT.P2.1560,Bid Packages Issued to Subcontractors - P2,Complete,PRE CONSTRUCTION,Support Building Overall,RAISED ACCESS FLOORING,FLOORING,,PRE - CON / BUYOUT / IMPACTS,,FLOORING,JAMES LEE,INTERIORS,2023-04-10 13:00,2023-04-12 17:00,2023-02-09 15:00,2023-02-14 17:00,2025-11-20 17:00,2025-11-20 17:00,2025-12-05 07:00,2025-12-05 07:00,0,24,100
INT.P2.1570,BIDDING OUT PKGS - P2,Complete,PRE CONSTRUCTION,Support Building Overall,RAISED ACCESS FLOORING,FLOORING,,PRE - CON / BUYOUT / IMPACTS,,FLOORING,JAMES LEE,INTERIORS,2023-04-13 07:00,2023-04-25 17:00,2023-02-13 15:00,2023-03-13 15:00,2025-11-20 17:00,2025-11-20 17:00,2025-12-05 07:00,2025-12-05 07:00,0,120,100
INT.P2.1580,BID LEVELING / RECOMMEND TO SECAI - P2,Complete,PRE CONSTRUCTION,Support Building Overall,RAISED ACCESS FLOORING,FLOORING,,PRE - CON / BUYOUT / IMPACTS,,FLOORING,JAMES LEE,INTERIORS,2023-03-13 15:00,2023-03-23 13:00,2023-03-13 15:00,2023-03-31 11:00,2025-11-20 17:00,2025-11-20 17:00,2025-12-05 07:00,2025-12-05 07:00,0,88,100
INT.P2.1590,SECAI / SAS REVIEW & PROCUREMENT PROCESSING - P2,Complete,PRE CONSTRUCTION,Support Building Overall,RAISED ACCESS FLOORING,FLOORING,,PRE - CON / BUYOUT / IMPACTS,,FLOORING,JAMES LEE,INTERIORS,2023-03-31 11:00,2023-04-17 11:00,2023-03-31 11:00,2023-07-18 10:00,2025-11-20 17:00,2025-11-20 17:00,2025-12-05 07:00,2025-12-05 07:00,0,160,100
INT.P2.1550,RESPONSES TO RFIs FROM SECAI - P2,Complete,PRE CONSTRUCTION,Support Building Overall,RAISED ACCESS FLOORING,FLOORING,,PRE - CON / BUYOUT / IMPACTS,,FLOORING,JAMES LEE,INTERIORS,2023-04-07 07:00,2023-04-09 11:00,2023-02-04 14:00,2023-02-08 17:00,2025-11-20 17:00,2025-11-20 17:00,2025-12-05 07:00,2025-12-05 07:00,0,24,100
INT.P2.1600,RFA for RFP SECAI Approval - P2,Complete,PRE CONSTRUCTION,Support Building Overall,Toilet Accessories - DIV10,TOILET ACCESSORIES,,PRE - CON / BUYOUT / IMPACTS,,FIXTURES & WALL PROTECTION,JAMES LEE,INTERIORS,2023-02-27 07:00,2023-03-30 17:00,2023-01-24 07:00,2023-02-02 17:00,2025-11-20 17:00,2025-11-20 17:00,2025-11-20 07:00,2025-11-20 07:00,0,290,100
INT.P2.1620,Bid Packages Issued to Subcontractors - P2,Complete,PRE CONSTRUCTION,Support Building Overall,Toilet Accessories - DIV10,TOILET ACCESSORIES,,PRE - CON / BUYOUT / IMPACTS,,FIXTURES & WALL PROTECTION,JAMES LEE,INTERIORS,2023-04-10 13:00,2023-04-12 17:00,2023-02-14 13:00,2023-02-18 16:00,2025-11-20 17:00,2025-11-20 17:00,2025-11-20 07:00,2025-11-20 07:00,0,24,100
INT.P2.1630,BIDDING OUT PKGS - P2,Complete,PRE CONSTRUCTION,Support Building Overall,Toilet Accessories - DIV10,TOILET ACCESSORIES,,PRE - CON / BUYOUT / IMPACTS,,FIXTURES & WALL PROTECTION,JAMES LEE,INTERIORS,2023-04-13 07:00,2023-04-25 17:00,2023-02-17 12:30,2023-03-14 13:00,2025-11-20 17:00,2025-11-20 17:00,2025-11-20 07:00,2025-11-20 07:00,0,120,100
INT.P2.1640,BID LEVELING / RECOMMEND TO SECAI - P2,Complete,PRE CONSTRUCTION,Support Building Overall,Toilet Accessories - DIV10,TOILET ACCESSORIES,,PRE - CON / BUYOUT / IMPACTS,,FIXTURES & WALL PROTECTION,JAMES LEE,INTERIORS,2023-03-27 07:00,2023-04-04 17:00,2023-03-27 07:00,2023-07-22 09:00,2025-11-20 17:00,2025-11-20 17:00,2025-11-20 07:00,2025-11-20 07:00,0,80,100
INT.P2.1650,SECAI / SAS REVIEW & PROCUREMENT PROCESSING - P2,Complete,PRE CONSTRUCTION,Support Building Overall,Toilet Accessories - DIV10,TOILET ACCESSORIES,,PRE - CON / BUYOUT / IMPACTS,,FIXTURES & WALL PROTECTION,JAMES LEE,INTERIORS,2023-08-28 15:00,2023-09-07 15:00,2023-07-24 07:00,2023-08-07 17:00,2025-11-20 17:00,2025-11-20 17:00,2025-11-20 07:00,2025-11-20 07:00,0,80,100
INT.P2.1610,RESPONSES TO RFIs FROM SECAI - P2,Complete,PRE CONSTRUCTION,Support Building Overall,Toilet Accessories - DIV10,TOILET ACCESSORIES,,PRE - CON / BUYOUT / IMPACTS,,FIXTURES & WALL PROTECTION,JAMES LEE,INTERIORS,2023-04-07 07:00,2023-04-09 11:00,2023-02-10 13:00,2023-02-14 17:00,2025-11-20 17:00,2025-11-20 17:00,2025-11-20 07:00,2025-11-20 07:00,0,24,100
INT.P2.1720,RFA for RFP SECAI Approval - P2,Complete,PRE CONSTRUCTION,Support Building Overall,Wall / Door Protection - DIV10,WALL & DOOR PROTECTION,,PRE - CON / BUYOUT / IMPACTS,,FIXTURES & WALL PROTECTION,JAMES LEE,INTERIORS,2023-08-28 07:00,2023-09-01 17:00,2023-07-14 10:00,2023-07-18 17:00,2025-11-20 17:00,2025-11-20 17:00,2025-11-24 07:00,2025-11-24 07:00,0,40,100
INT.P2.1740,Bid Packages Issued to Subcontractors - P2,Complete,PRE CONSTRUCTION,Support Building Overall,Wall / Door Protection - DIV10,WALL & DOOR PROTECTION,,PRE - CON / BUYOUT / IMPACTS,,FIXTURES & WALL PROTECTION,JAMES LEE,INTERIORS,2023-09-06 13:00,2023-09-08 17:00,2023-07-22 14:00,2023-07-24 17:00,2025-11-20 17:00,2025-11-20 17:00,2025-11-24 07:00,2025-11-24 07:00,0,24,100
INT.P2.1750,BIDDING OUT PKGS - P2,Complete,PRE CONSTRUCTION,Support Building Overall,Wall / Door Protection - DIV10,WALL & DOOR PROTECTION,,PRE - CON / BUYOUT / IMPACTS,,FIXTURES & WALL PROTECTION,JAMES LEE,INTERIORS,2023-09-09 08:00,2023-09-14 08:00,2023-07-25 08:30,2023-07-29 16:00,2025-11-20 17:00,2025-11-20 17:00,2025-11-24 07:00,2025-11-24 07:00,0,40,100
INT.P2.1760,BID LEVELING / RECOMMEND TO SECAI - P2,Complete,PRE CONSTRUCTION,Support Building Overall,Wall / Door Protection - DIV10,WALL & DOOR PROTECTION,,PRE - CON / BUYOUT / IMPACTS,,FIXTURES & WALL PROTECTION,JAMES LEE,INTERIORS,2023-09-15 09:00,2023-09-19 09:00,2023-07-29 15:00,2023-08-04 17:00,2025-11-20 17:00,2025-11-20 17:00,2025-11-24 07:00,2025-11-24 07:00,0,40,100
INT.P2.1770,SECAI / SAS REVIEW & PROCUREMENT PROCESSING - P2,Complete,PRE CONSTRUCTION,Support Building Overall,Wall / Door Protection - DIV10,WALL & DOOR PROTECTION,,PRE - CON / BUYOUT / IMPACTS,,FIXTURES & WALL PROTECTION,JAMES LEE,INTERIORS,2023-09-21 11:00,2023-09-30 11:00,2023-08-04 15:00,2023-08-08 17:00,2025-11-20 17:00,2025-11-20 17:00,2025-11-24 07:00,2025-11-24 07:00,0,80,100
INT.P2.1730,RESPONSES TO RFIs FROM SECAI - P2,Complete,PRE CONSTRUCTION,Support Building Overall,Wall / Door Protection - DIV10,WALL & DOOR PROTECTION,,PRE - CON / BUYOUT / IMPACTS,,FIXTURES & WALL PROTECTION,JAMES LEE,INTERIORS,2023-09-02 08:00,2023-09-05 12:00,2023-07-18 14:30,2023-07-22 16:00,2025-11-20 17:00,2025-11-20 17:00,2025-11-24 07:00,2025-11-24 07:00,0,24,100
FIZ1080,IMPACT - FIZ REDESIGN- FIZ ROOF & TIER 2 RETROFIT STEEL - SHOP DWGS PREP,Complete,PRE CONSTRUCTION,Data Center (Gridlines 1-3),STEEL,L1 - Fndn Slab,,PRE - CON / BUYOUT / IMPACTS,,Steel Fabricator - W&W,SEAN MONK,,2023-03-13 15:00,2023-03-22 15:00,2023-03-29 15:00,2023-04-14 16:00,2025-11-20 17:00,2025-11-20 17:00,2025-06-13 08:00,2025-06-13 08:00,0,80,100
FIZ1090,IMPACT - FIZ REDESIGN- FIZ ROOF & TIER 2 RETROFIT STEEL - SHOP DWGS SECAI APPROVAL,Complete,PRE CONSTRUCTION,Data Center (Gridlines 1-3),STEEL,L1 - Fndn Slab,,PRE - CON / BUYOUT / IMPACTS,,Steel Fabricator - W&W,SEAN MONK,,2023-04-14 16:00,2023-04-18 16:00,2023-04-14 16:00,2023-04-21 08:00,2025-11-20 17:00,2025-11-20 17:00,2025-06-13 08:00,2025-06-13 08:00,0,40,100
FIZ1100,IMPACT - FIZ REDESIGN- FIZ ROOF & TIER 2 RETROFIT STEEL - SCRUB / FABRICATION,Complete,PRE CONSTRUCTION,Data Center (Gridlines 1-3),STEEL,L1 - Fndn Slab,,PRE - CON / BUYOUT / IMPACTS,,Steel Fabricator - W&W,SEAN MONK,,2023-04-21 08:00,2023-05-23 16:00,2023-04-21 08:00,2023-05-30 17:00,2025-11-20 17:00,2025-11-20 17:00,2025-06-13 08:00,2025-06-13 08:00,0,288,100
DECKSUP1050,PH1- SHOPS SECAI APPROVALS - INFILL STEEL - SUP,Complete,PRE CONSTRUCTION,South Areas (Team A - Gridlines 3-17),STEEL,L4 - SUP Roof - FAB Roof,,PRE - CON / BUYOUT / IMPACTS,,Steel Fabricator - W&W,SEAN MONK,,2023-02-20 07:00,2023-03-09 17:00,2023-02-20 07:00,2023-03-14 13:00,2025-11-20 17:00,2025-11-20 17:00,2025-06-13 08:00,2025-06-13 08:00,0,160,100
DECKSUP1060,IMPACT [S.TIA-93] - SLAB EDGE - RFI 452 - SUBMITTED & RESPONSE RECEIVED,Complete,PRE CONSTRUCTION,Data Center (Gridlines 1-3),STEEL,L4 - SUP Roof - FAB Roof,,PRE - CON / BUYOUT / IMPACTS,,Steel Fabricator - W&W,SEAN MONK,,2023-02-20 07:00,2023-02-28 17:00,2023-01-24 07:00,2023-02-16 09:00,2025-11-20 17:00,2025-11-20 17:00,2025-06-13 08:00,2025-06-13 08:00,0,80,100
DECKSUP1070,IMPACT [S.TIA-93] - SLAB EDGE - RFI 452 - SHOP DWG SUBMIT,Complete,PRE CONSTRUCTION,Data Center (Gridlines 1-3),STEEL,L4 - SUP Roof - FAB Roof,,PRE - CON / BUYOUT / IMPACTS,,Steel Fabricator - W&W,SEAN MONK,,2023-02-20 07:00,2023-02-24 17:00,2023-02-17 07:00,2023-03-06 09:00,2025-11-20 17:00,2025-11-20 17:00,2025-06-13 08:00,2025-06-13 08:00,0,40,100
FRP.FAB.1250,CONCRETE MIX DESIGN - SUBMITION TO SECAI - REVISION,Complete,PRE CONSTRUCTION,,CONCRETE SLABS,L1 - Fndn Slab,,PRE - CON / BUYOUT / IMPACTS,,Cast-in Place Concrete - Baker Concrete,,,2023-02-20 08:00,2023-03-02 08:00,2023-02-09 20:44,2023-02-22 16:00,2025-11-20 17:00,2025-11-20 17:00,2025-11-10 07:00,2025-11-10 07:00,0,80,100
FRP.FAB.1260,CONCRETE MIX DESIGN - SECAI APPROVAL,Complete,PRE CONSTRUCTION,,CONCRETE SLABS,L1 - Fndn Slab,,PRE - CON / BUYOUT / IMPACTS,,Cast-in Place Concrete - Baker Concrete,,,2023-02-23 08:00,2023-02-27 08:00,2023-02-23 08:00,2023-02-24 16:00,2025-11-20 17:00,2025-11-20 17:00,2025-11-10 07:00,2025-11-10 07:00,0,40,100
PC.PRE1290,FABRICATE PRECAST COLUMNS & GIRDERS - FAB NORTH - GL 22 - 33,Complete,PRE CONSTRUCTION,,PRECAST,PRECAST,,PRE - CON / BUYOUT / IMPACTS,,Precast Fabrication,SEAN MONK,,2023-02-20 08:00,2023-03-23 08:00,2023-02-20 08:00,2023-04-07 17:00,2025-11-20 17:00,2025-11-20 17:00,2025-06-13 08:00,2025-06-13 08:00,0,280,100
PC.PRE1300,FABRICATE PRECAST COLUMNS & GIRDERS - FAB SOUTH - GL 8 - 4,Complete,PRE CONSTRUCTION,,PRECAST,PRECAST,,PRE - CON / BUYOUT / IMPACTS,,Precast Fabrication,SEAN MONK,,2023-02-20 08:00,2023-03-14 08:00,2023-02-20 08:00,2023-03-31 17:00,2025-11-20 17:00,2025-11-20 17:00,2025-06-13 08:00,2025-06-13 08:00,0,200,100
PC.PRE1310,FABRICATE DELIVER TIER 1 MEMBERS - SEA4 9-6 (SECAI provided),Complete,PRE CONSTRUCTION,,SUP Bldg FABRICATION,SUE LOWER,,PRE - CON / BUYOUT / IMPACTS,,Precast Fabrication,SEAN MONK,,2023-04-21 10:00,2023-04-25 12:00,2023-04-21 10:00,2023-05-02 17:00,2025-11-20 17:00,2025-11-20 17:00,2025-06-13 08:00,2025-06-13 08:00,0,42,100
IMP1040,PH1 - ENGINEERING & SHOPS OF DS/AD CLADDING STEEL - SECAI APPROVAL,Complete,PRE CONSTRUCTION,Data Center (Gridlines 1-3),ENCLOSURE,EXTERIOR SKIN,,PRE - CON / BUYOUT / IMPACTS,,INSULATED METAL PANELS,JAMES LIVELY,,2023-03-30 11:00,2023-04-08 11:00,2023-03-30 11:00,2023-04-11 13:00,2025-11-20 17:00,2025-11-20 17:00,2025-06-13 08:00,2025-06-13 08:00,0,80,100
IMP1050,PH1 - PREP & SUBMIT SHOP DWGS - DS/AD CLADDING STEEL,Complete,PRE CONSTRUCTION,Data Center (Gridlines 1-3),ENCLOSURE,EXTERIOR SKIN,,PRE - CON / BUYOUT / IMPACTS,,INSULATED METAL PANELS,JAMES LIVELY,,2022-10-10 07:00,2022-11-06 17:00,2023-02-22 07:00,2023-03-30 11:00,2025-11-20 17:00,2025-11-20 17:00,2025-06-13 08:00,2025-06-13 08:00,0,240,100
IMP1060,IMPACT [CL 49] - FABRICATION DS/AD CLADDING STEEL EAST EXTERIOR GL 10-34 - projected delay 10/9,Complete,PRE CONSTRUCTION,Data Center (Gridlines 1-3),ENCLOSURE,EXTERIOR SKIN,,PRE - CON / BUYOUT / IMPACTS,,INSULATED METAL PANELS,JAMES LIVELY,,2023-04-11 13:00,2023-05-18 09:00,2023-04-11 13:00,2023-10-12 11:00,2025-11-20 17:00,2025-11-20 17:00,2025-09-04 07:00,2025-09-04 07:00,0,316,100
FRP.TS.1100,IMPACT [1.0] - RFI 1600 YATES REVISE RESUBMIT - TOPPING SLAB - SUBFAB (L2) - A1,Complete,PRE CONSTRUCTION,South Areas (Team A - Gridlines 3-17),CONCRETE SLABS,L1 - Fndn Slab,,PRE - CON / BUYOUT / IMPACTS,,Pour Concrete,JAMES LEE,,2023-03-18 09:00,2023-03-26 09:00,2023-03-08 09:00,2023-04-03 11:00,2025-11-20 17:00,2025-11-20 17:00,2025-06-13 08:00,2025-06-13 08:00,0,80,100
DSAD1030,DS/AD MOCKUP STEEL - SUBMITTAL 1601 > 0691 - FABRICATION,Complete,PRE CONSTRUCTION,Data Center (Gridlines 1-3),STEEL,L1 - Fndn Slab,,PRE - CON / BUYOUT / IMPACTS,,Steel Fabricator - W&W,SEAN MONK,,2023-02-25 08:00,2023-03-06 08:00,2023-02-24 08:00,2023-03-31 17:00,2025-11-20 17:00,2025-11-20 17:00,2025-06-13 08:00,2025-06-13 08:00,0,80,100
FIZ.WEST.1001,FIZ PRECAST COLUMN & BEAMS SHOP DWG - FABRICATION DELIVERY,Complete,PRE CONSTRUCTION,,SUP Bldg FABRICATION,FABRICATE / DELIVER,,PRE - CON / BUYOUT / IMPACTS,,Precast Fabrication,FIZ DATA CENTER,,2023-03-13 07:00,2023-04-03 16:00,2023-03-13 07:00,2023-05-02 17:00,2025-11-20 17:00,2025-11-20 17:00,2025-06-13 08:00,2025-06-13 08:00,0,199,100
FIZ.WEST.1091,"IMPACT - INSTALL STAIRS BASES - ROOF - J-G - procurement delay - DRB#1- Change (Shop Dwg, Fabrication)",Complete,PRE CONSTRUCTION,Data Center (Gridlines 1-3),Stairs,L4 - SUP Roof - FAB Roof,,PRE - CON / BUYOUT / IMPACTS,,INSULATED METAL PANELS,FIZ DATA CENTER,,2023-10-09 07:00,2023-10-12 17:00,2023-10-02 07:00,2024-01-10 17:00,2025-11-20 17:00,2025-11-20 17:00,2025-12-05 17:00,2025-12-05 17:00,0,40,100
FAB.TS.1110,IMPACT [S.TIA-57] - RFI 629 CUT & CAP TIES - TOPPING SLAB - SUBFAB (L2) - A1,Complete,PRE CONSTRUCTION,South Areas (Team A - Gridlines 3-17),CONCRETE SLABS,L1 - Fndn Slab,,PRE - CON / BUYOUT / IMPACTS,,Pour Concrete,JAMES LEE,,2023-03-30 11:00,2023-04-09 11:00,2023-03-30 11:00,2023-05-02 17:00,2025-11-20 17:00,2025-11-20 17:00,2025-06-13 08:00,2025-06-13 08:00,0,90,100
FAB.TS.1120,IMPACT [1.1] - RFI 638/ 1973 - DT FORM SAVER ELEVATION BUST - TOPPING SLAB - SUBFAB (L2) - A1,Complete,PRE CONSTRUCTION,South Areas (Team A - Gridlines 3-17),CONCRETE SLABS,L1 - Fndn Slab,,PRE - CON / BUYOUT / IMPACTS,,Pour Concrete,JAMES LEE,,2023-03-30 11:00,2023-04-09 09:00,2023-03-30 11:00,2023-05-25 13:00,2025-11-20 17:00,2025-11-20 17:00,2025-06-13 08:00,2025-06-13 08:00,0,88,100
FIZ.SOG.1130,IMPACT [S.TIA-87] - RFI 648 - GL E/1 & GL E/2 MISSING STARTERS - L1 - A1,Complete,PRE CONSTRUCTION,South Areas (Team A - Gridlines 3-17),CONCRETE SLABS,L1 - Fndn Slab,,PRE - CON / BUYOUT / IMPACTS,,Pour Concrete,JAMES LEE,,2023-03-13 07:00,2023-03-21 17:00,2023-03-13 07:00,2023-04-18 13:00,2025-11-20 17:00,2025-11-20 17:00,2025-06-13 08:00,2025-06-13 08:00,0,80,100
SUW.SOG.1140,IMPACT [S.TIA-94] - RFI 627/1938 - EXTERIOR CURB ANCHOR BOLT FOR PRECAST @GL23 - SWB2,Complete,PRE CONSTRUCTION,South Areas (Team A - Gridlines 3-17),CONCRETE SLABS,L1 - Fndn Slab,,PRE - CON / BUYOUT / IMPACTS,,Pour Concrete,JAMES LEE,,2023-03-13 07:00,2023-03-21 17:00,2023-03-13 07:00,2023-04-06 15:00,2025-11-20 17:00,2025-11-20 17:00,2025-06-13 08:00,2025-06-13 08:00,0,80,100
PC.SF1260,H-8 CORBEL MISLOCATED - ELEVATED DT SLABS - FABRICATION,Complete,PRE CONSTRUCTION,,PRECAST,PRECAST,,PRE - CON / BUYOUT / IMPACTS,,Precast Fabrication,SEAN MONK,,2023-03-27 08:00,2023-04-06 08:00,2023-03-27 08:00,2023-05-25 17:00,2025-11-20 17:00,2025-11-20 17:00,2025-06-13 08:00,2025-06-13 08:00,0,80,100
PC.FIZ1320,FIZ PRECAST COLUMN GL 3 - J3 RECAST,Complete,PRE CONSTRUCTION,,PRECAST,PRECAST,,PRE - CON / BUYOUT / IMPACTS,,Precast Fabrication,SEAN MONK,,2023-04-03 08:00,2023-04-12 08:00,2023-04-03 08:00,2023-04-17 17:00,2025-11-20 17:00,2025-11-20 17:00,2025-06-13 08:00,2025-06-13 08:00,0,80,100
DELAY.ST.1280,IMPACT - CORESLAB RUST REPAIR DELAY - (only 9 waffles per day - slow),Complete,PRE CONSTRUCTION,South Areas (Team A - Gridlines 3-17),PRECAST,L3 / Waffle Slab Level,,PRE - CON / BUYOUT / IMPACTS,,FAB Waffle Slabs,SEAN MONK,,2023-03-18 09:00,2023-03-26 09:00,2023-03-21 09:00,2023-04-17 13:00,2025-11-20 17:00,2025-11-20 17:00,2025-06-13 08:00,2025-06-13 08:00,0,80,100
FAB.TS.1130,IMPACT [1.2] - RFI 678/ 2070 - GIRDER & FORMSAVER CONFLICT - RAKER TOPPING SLAB - WAFFLE (L3) - A1,Complete,PRE CONSTRUCTION,South Areas (Team A - Gridlines 3-17),CONCRETE SLABS,L1 - Fndn Slab,,PRE - CON / BUYOUT / IMPACTS,,TBD Architectural Finishes,JAMES LEE,,2023-04-06 07:00,2023-04-17 17:00,2023-04-06 07:00,2023-04-18 17:00,2025-11-20 17:00,2025-11-20 17:00,2025-11-17 07:00,2025-11-17 07:00,0,120,100
SUW.SOG.1150,"IMPACT [S.TIA-56] - RFI 628/ 1946 - DOWEL REPAIR PC COLUMNS A21, M13, 15, 18, 20, N17 - (SUW - L1)",Complete,PRE CONSTRUCTION,South Areas (Team A - Gridlines 3-17),CONCRETE SLABS,L1 - Fndn Slab,,PRE - CON / BUYOUT / IMPACTS,,Pour Concrete,JAMES LEE,,2023-03-13 07:00,2023-03-21 17:00,2023-03-17 11:30,2023-05-06 16:00,2025-11-20 17:00,2025-11-20 17:00,2025-06-13 08:00,2025-06-13 08:00,0,80,100
SUE.SOG.1160,IMPACT [S.TIA-88] - RFI 690/2303 - DELAY - ANCHOR BOLT FIX - DS STEEL - SUE 15-16,Complete,PRE CONSTRUCTION,South Areas (Team A - Gridlines 3-17),CONCRETE SLABS,L1 - Fndn Slab,,PRE - CON / BUYOUT / IMPACTS,,Pour Concrete,JAMES LEE,,2023-04-10 07:00,2023-04-16 11:00,2023-04-10 07:00,2023-05-01 17:00,2025-11-20 17:00,2025-11-20 17:00,2025-06-13 08:00,2025-06-13 08:00,0,64,100
PC.PRE1330,FABRICATE DELIVER TIER 1 MEMBERS - SEB4 27-30 (SECAI provided),Complete,PRE CONSTRUCTION,,SUP Bldg FABRICATION,SUE LOWER,,PRE - CON / BUYOUT / IMPACTS,,Precast Fabrication,SEAN MONK,,2023-05-08 15:00,2023-05-12 09:00,2023-05-08 15:00,2023-06-13 13:00,2025-11-20 17:00,2025-11-20 17:00,2025-06-13 08:00,2025-06-13 08:00,0,24,100
PC.PRE1340,FABRICATE DELIVER TIER 1 PRECAST MEMBERS - SEB3 24-27 (SECAI provided),Complete,PRE CONSTRUCTION,,SUP Bldg FABRICATION,SUE LOWER,,PRE - CON / BUYOUT / IMPACTS,,Precast Fabrication,SEAN MONK,,2023-04-17 10:00,2023-04-21 10:00,2023-04-17 10:00,2023-05-09 17:00,2025-11-20 17:00,2025-11-20 17:00,2025-06-13 08:00,2025-06-13 08:00,0,30,100
PC.PRE1350,FABRICATE DELIVER TIER 1 MEMBERS - SEA5 6-3 (SECAI provided),Complete,PRE CONSTRUCTION,,SUP Bldg FABRICATION,SUE LOWER,,PRE - CON / BUYOUT / IMPACTS,,Precast Fabrication,SEAN MONK,,2023-05-23 07:00,2023-05-27 09:00,2023-05-23 07:00,2023-06-15 11:00,2025-11-20 17:00,2025-11-20 17:00,2025-06-13 08:00,2025-06-13 08:00,0,32,100
PC.PRE1360,FABRICATE DELIVER TIER 1 MEMBERS - SEB5 30-33 (SECAI provided),Complete,PRE CONSTRUCTION,,SUP Bldg FABRICATION,SUE LOWER,,PRE - CON / BUYOUT / IMPACTS,,Precast Fabrication,SEAN MONK,,2023-05-27 10:00,2023-06-04 16:00,2023-05-25 10:00,2023-07-26 17:00,2025-11-20 17:00,2025-11-20 17:00,2025-06-13 08:00,2025-06-13 08:00,0,56,100
PC.PRE1370,FABRICATE DELIVER TIER 2 ROOF MEMBER - SEA2 - 15-12 (SECAI provided),Complete,PRE CONSTRUCTION,,SUP Bldg FABRICATION,SUE UPPER,,PRE - CON / BUYOUT / IMPACTS,,Precast Fabrication,SEAN MONK,,2023-05-08 07:00,2023-05-16 09:00,2023-05-02 07:00,2023-06-24 16:00,2025-11-20 17:00,2025-11-20 17:00,2025-06-13 08:00,2025-06-13 08:00,0,72,100
PC.PRE1380,FABRICATE DELIVER TIER 2 ROOF MEMBER - SEA3 - 12-9 (SECAI provided),Complete,PRE CONSTRUCTION,,SUP Bldg FABRICATION,SUE UPPER,,PRE - CON / BUYOUT / IMPACTS,,Precast Fabrication,SEAN MONK,,2023-05-08 15:00,2023-05-13 15:00,2023-05-08 15:00,2023-07-07 11:00,2025-11-20 17:00,2025-11-20 17:00,2025-06-13 08:00,2025-06-13 08:00,0,40,100
PC.PRE1390,FABRICATE DELIVER TIER 2 ROOF MEMBER - SEA5 - 6-3 (SECAI provided),Complete,PRE CONSTRUCTION,,SUP Bldg FABRICATION,SUE UPPER,,PRE - CON / BUYOUT / IMPACTS,,Precast Fabrication,SEAN MONK,,2023-07-07 11:00,2023-07-13 15:00,2023-07-07 11:00,2023-07-10 17:00,2025-11-20 17:00,2025-11-20 17:00,2025-06-13 08:00,2025-06-13 08:00,0,64,100
PC.PRE1400,FABRICATE DELIVER TIER 2 ROOF MEMBER - SEB4 - 27-30 (SECAI provided),Complete,PRE CONSTRUCTION,,SUP Bldg FABRICATION,SUE UPPER,,PRE - CON / BUYOUT / IMPACTS,,Precast Fabrication,SEAN MONK,,2023-07-17 07:00,2023-07-20 11:00,2023-07-13 07:00,2023-07-27 08:00,2025-11-20 17:00,2025-11-20 17:00,2025-06-13 08:00,2025-06-13 08:00,0,24,100
PC.PRE1410,FABRICATE DELIVER TIER 2 ROOF MEMBER - SEB5 - 30-33 (SECAI provided),Complete,PRE CONSTRUCTION,,SUP Bldg FABRICATION,SUE UPPER,,PRE - CON / BUYOUT / IMPACTS,,Precast Fabrication,SEAN MONK,,2023-07-15 08:00,2023-07-20 08:00,2023-07-13 08:00,2023-07-25 13:00,2025-11-20 17:00,2025-11-20 17:00,2025-06-13 08:00,2025-06-13 08:00,0,40,100
PC.PRE1420,FABRICATE DELIVER TIER 2 ROOF MEMBER - SEB1 - 18-21 (SECAI provided),Complete,PRE CONSTRUCTION,,SUP Bldg FABRICATION,SUE UPPER,,PRE - CON / BUYOUT / IMPACTS,,Precast Fabrication,SEAN MONK,,2023-05-09 13:00,2023-05-18 15:00,2023-05-09 13:00,2023-07-07 11:00,2025-11-20 17:00,2025-11-20 17:00,2025-06-13 08:00,2025-06-13 08:00,0,72,100
PC.PRE1430,FABRICATE DELIVER TIER 2 ROOF MEMBER - SEB2 - 21-24 (SECAI provided),Complete,PRE CONSTRUCTION,,SUP Bldg FABRICATION,SUE UPPER,,PRE - CON / BUYOUT / IMPACTS,,Precast Fabrication,SEAN MONK,,2023-05-13 08:00,2023-05-18 08:00,2023-05-13 08:00,2023-07-10 17:00,2025-11-20 17:00,2025-11-20 17:00,2025-06-13 08:00,2025-06-13 08:00,0,40,100
PC.PRE1440,FABRICATE DELIVER TIER 2 ROOF MEMBER - SEB3 - 24-27 (SECAI provided),Complete,PRE CONSTRUCTION,,SUP Bldg FABRICATION,SUE UPPER,,PRE - CON / BUYOUT / IMPACTS,,Precast Fabrication,SEAN MONK,,2023-07-14 09:00,2023-07-16 13:00,2023-07-10 09:00,2023-07-13 15:00,2025-11-20 17:00,2025-11-20 17:00,2025-06-13 08:00,2025-06-13 08:00,0,24,100
PC.PRE1450,FABRICATE DELIVER TIER 1 PRECAST MEMBERS - SWA3 (11-8) (SECAI provided),Complete,PRE CONSTRUCTION,,SUP Bldg FABRICATION,SUW LOWER,,PRE - CON / BUYOUT / IMPACTS,,Precast Fabrication,SEAN MONK,,2023-04-21 07:00,2023-04-24 11:00,2023-04-21 07:00,2023-05-06 16:00,2025-11-20 17:00,2025-11-20 17:00,2025-06-13 08:00,2025-06-13 08:00,0,34,100
PC.PRE1460,FABRICATE DELIVER TIER 1 PRECAST MEMBERS - SWA4 (8-6) (SECAI provided),Complete,PRE CONSTRUCTION,,SUP Bldg FABRICATION,SUW LOWER,,PRE - CON / BUYOUT / IMPACTS,,Precast Fabrication,SEAN MONK,,2023-05-08 15:00,2023-05-14 13:00,2023-05-01 15:00,2023-07-24 17:00,2025-11-20 17:00,2025-11-20 17:00,2025-09-04 07:00,2025-09-04 07:00,0,48,100
PC.PRE1470,FABRICATE DELIVER TIER 1 PRECAST MEMBERS - SWA5 (6-3) (SECAI provided),Complete,PRE CONSTRUCTION,,SUP Bldg FABRICATION,SUW LOWER,,PRE - CON / BUYOUT / IMPACTS,,Precast Fabrication,SEAN MONK,,2023-07-03 07:00,2023-07-10 13:00,2023-06-27 07:00,2023-07-07 11:00,2025-11-20 17:00,2025-11-20 17:00,2025-06-13 08:00,2025-06-13 08:00,0,56,100
PC.PRE1480,FABRICATE DELIVER TIER 1 PRECAST MEMBERS - SWB2 (23-26) (SECAI provided),Complete,PRE CONSTRUCTION,,SUP Bldg FABRICATION,SUW LOWER,,PRE - CON / BUYOUT / IMPACTS,,Precast Fabrication,SEAN MONK,,2023-05-08 15:00,2023-05-15 15:00,2023-05-01 15:00,2023-06-22 11:00,2025-11-20 17:00,2025-11-20 17:00,2025-06-13 08:00,2025-06-13 08:00,0,60,100
PC.PRE1490,FABRICATE DELIVER TIER 1 PRECAST MEMBERS - SWB3 (26-29) (SECAI provided),Complete,PRE CONSTRUCTION,,SUP Bldg FABRICATION,SUW LOWER,,PRE - CON / BUYOUT / IMPACTS,,Precast Fabrication,SEAN MONK,,2023-05-09 13:00,2023-05-15 11:00,2023-05-09 13:00,2023-06-23 17:00,2025-11-20 17:00,2025-11-20 17:00,2025-06-13 08:00,2025-06-13 08:00,0,48,100
PC.PRE1500,FABRICATE DELIVER TIER 1 PRECAST MEMBERS - SWB4 (29-33) (SECAI provided),Complete,PRE CONSTRUCTION,,SUP Bldg FABRICATION,SUW LOWER,,PRE - CON / BUYOUT / IMPACTS,,Precast Fabrication,SEAN MONK,,2023-05-18 11:00,2023-05-26 13:00,2023-05-18 11:00,2023-07-21 17:00,2025-11-20 17:00,2025-11-20 17:00,2025-06-13 08:00,2025-06-13 08:00,0,72,100
PC.PRE1510,FABRICATE DELIVER TIER 2 ROOF MEMBER - SWA3 (11-8) (SECAI provided),Complete,PRE CONSTRUCTION,,SUP Bldg FABRICATION,SUW UPPER,,PRE - CON / BUYOUT / IMPACTS,,Precast Fabrication,SEAN MONK,,2023-07-27 09:00,2023-07-29 13:00,2023-07-27 09:00,2023-07-29 14:00,2025-11-20 17:00,2025-11-20 17:00,2025-06-13 08:00,2025-06-13 08:00,0,24,100
PC.PRE1520,FABRICATE DELIVER TIER 2 ROOF MEMBER - SWA4 (8-6) (SECAI provided),Complete,PRE CONSTRUCTION,,SUP Bldg FABRICATION,SUW UPPER,,PRE - CON / BUYOUT / IMPACTS,,Precast Fabrication,SEAN MONK,,2023-07-29 14:00,2023-07-31 10:00,2023-07-29 14:00,2023-07-31 15:00,2025-11-20 17:00,2025-11-20 17:00,2025-11-12 07:00,2025-11-12 07:00,0,16,100
PC.PRE1530,FABRICATE DELIVER TIER 2 ROOF MEMBER - SWA5 (6-1) (SECAI provided),Complete,PRE CONSTRUCTION,,SUP Bldg FABRICATION,SUW UPPER,,PRE - CON / BUYOUT / IMPACTS,,Precast Fabrication,SEAN MONK,,2023-07-08 10:00,2023-07-12 10:00,2023-07-08 10:00,2023-07-14 10:00,2025-11-20 17:00,2025-11-20 17:00,2025-09-04 07:00,2025-09-04 07:00,0,40,100
PC.PRE1540,FABRICATE DELIVER TIER 2 ROOF MEMBER - SWB1 (20-23) (SECAI provided),Complete,PRE CONSTRUCTION,,SUP Bldg FABRICATION,SUW UPPER,,PRE - CON / BUYOUT / IMPACTS,,Precast Fabrication,SEAN MONK,,2023-07-11 07:00,2023-07-14 09:00,2023-07-07 07:00,2023-07-25 13:00,2025-11-20 17:00,2025-11-20 17:00,2025-06-13 08:00,2025-06-13 08:00,0,32,100
PC.PRE1550,FABRICATE DELIVER TIER 2 ROOF MEMBER - SWB2 (23-26) (SECAI provided),Complete,PRE CONSTRUCTION,,SUP Bldg FABRICATION,SUW UPPER,,PRE - CON / BUYOUT / IMPACTS,,Precast Fabrication,SEAN MONK,,2023-07-14 09:00,2023-07-17 11:00,2023-07-09 09:00,2023-07-26 11:00,2025-11-20 17:00,2025-11-20 17:00,2025-06-13 08:00,2025-06-13 08:00,0,32,100
PC.PRE1560,FABRICATE DELIVER TIER 2 ROOF MEMBER - SWA2 (14-11) (SECAI provided),Complete,PRE CONSTRUCTION,,SUP Bldg FABRICATION,SUW UPPER,,PRE - CON / BUYOUT / IMPACTS,,Precast Fabrication,SEAN MONK,,2023-07-24 07:00,2023-07-27 09:00,2023-07-24 07:00,2023-07-27 09:00,2025-11-20 17:00,2025-11-20 17:00,2025-06-13 08:00,2025-06-13 08:00,0,32,100
PC.PRE1570,FABRICATE DELIVER TIER 2 ROOF MEMBER - SWB4 (29-33) (SECAI provided),Complete,PRE CONSTRUCTION,,SUP Bldg FABRICATION,SUW UPPER,,PRE - CON / BUYOUT / IMPACTS,,Precast Fabrication,SEAN MONK,,2023-07-24 07:00,2023-07-27 09:00,2023-07-11 07:00,2023-07-15 09:00,2025-11-20 17:00,2025-11-20 17:00,2025-06-13 08:00,2025-06-13 08:00,0,32,100
PC.PRE1580,FABRICATE DELIVER TIER 1 PRECAST MEMBERS - SWA5 / FIZ (3-1) (SECAI provided),Complete,PRE CONSTRUCTION,,SUP Bldg FABRICATION,SUW LOWER,,PRE - CON / BUYOUT / IMPACTS,,Precast Fabrication,SEAN MONK,,2023-06-12 07:00,2023-06-15 11:00,2023-06-02 07:00,2023-06-19 15:00,2025-11-20 17:00,2025-11-20 17:00,2025-06-13 08:00,2025-06-13 08:00,0,24,100
PC.NCR.SUE,"TINDAL FABRICATION ERROR FIX - GL 16-19 GIRDERS - RG 540,545,515,516,RB 606",Complete,PRE CONSTRUCTION,,SUP Bldg FABRICATION,FABRICATE / DELIVER,,PRE - CON / BUYOUT / IMPACTS,,Precast Fabrication,SEAN MONK,,2023-01-10 08:00,2023-01-19 10:00,2023-03-17 08:00,2023-05-09 17:00,2025-11-20 17:00,2025-11-20 17:00,2025-06-13 08:00,2025-06-13 08:00,0,72,100
SUW.AB.1160,IMPACT [S.TIA-56] - RFI 628/ 1946 - FABRICATE ANCHOR BOLTS - EXTERIOR CURB - SUWN,Complete,PRE CONSTRUCTION,South Areas (Team A - Gridlines 3-17),CONCRETE SLABS,L1 - Fndn Slab,,PRE - CON / BUYOUT / IMPACTS,,Pour Concrete,JAMES LEE,,2023-03-13 07:00,2023-03-21 17:00,2023-04-07 07:00,2023-05-06 16:00,2025-11-20 17:00,2025-11-20 17:00,2025-06-13 08:00,2025-06-13 08:00,0,80,100
FAB.TS.FIX1,"IMPACT [S.TIA-57] - RFI 1973, 1600, 629/2070 - FIXES - TOPPING SLAB - SUBFAB (L2) - A1",Complete,PRE CONSTRUCTION,South Areas (Team A - Gridlines 3-17),CONCRETE SLABS,L1 - Fndn Slab,,PRE - CON / BUYOUT / IMPACTS,,Pour Concrete,JAMES LEE,,2023-04-13 15:00,2023-04-17 15:00,2023-04-13 15:00,2023-05-09 13:00,2025-11-20 17:00,2025-11-20 17:00,2025-06-13 08:00,2025-06-13 08:00,0,40,100
SUW.SOG.1170,IMPACT [S.TIA-58] - RFI 564/632 - JACKHOLE - WATER FIX - SOUTH PIT - SUW (finish before beam & girders),Complete,PRE CONSTRUCTION,South Areas (Team A - Gridlines 3-17),CONCRETE SLABS,L1 - Fndn Slab,,PRE - CON / BUYOUT / IMPACTS,,Pour Concrete,JAMES LEE,,2023-04-10 07:00,2023-04-18 08:00,2023-02-27 07:00,2023-05-09 13:00,2025-11-20 17:00,2025-11-20 17:00,2025-06-13 08:00,2025-06-13 08:00,0,61,100
INT.P1.Stairs.1230,PH1- METAL STAIR 1 Fab / Deliver - SWA-5,Complete,PRE CONSTRUCTION,West Support Building,Stairs,GL 33 STAIRS 5 & 18,,PRE - CON / BUYOUT / IMPACTS,,STAIRS,JAMES LIVELY,INTERIORS,2023-09-05 07:00,2023-09-29 13:00,2023-08-31 07:00,2023-10-09 17:00,2025-11-20 17:00,2025-11-20 17:00,2025-10-27 09:00,2025-10-27 09:00,0,216,100
FAB.TS.FIX11,IMPACT - LVL 2 DT 'S TOPPING SLAB AND LVL 3 SOMD ELEVATIONS & THICKNESS ISSUE - SUBFAB (L2) - A1,Complete,PRE CONSTRUCTION,South Areas (Team A - Gridlines 3-17),CONCRETE SLABS,L1 - Fndn Slab,,PRE - CON / BUYOUT / IMPACTS,,Pour Concrete,JAMES LEE,,2023-05-09 13:00,2023-05-23 11:00,2023-04-17 13:00,2023-06-10 16:00,2025-11-20 17:00,2025-11-20 17:00,2025-06-13 08:00,2025-06-13 08:00,0,118,100
SUE.SOG.1170,IMPACT [S.TIA-88] - BAKER FIXING/ AUGMENTING ABs - RFI 690/2303 - DS STEEL - SUE 15-16,Complete,PRE CONSTRUCTION,South Areas (Team A - Gridlines 3-17),CONCRETE SLABS,L1 - Fndn Slab,,PRE - CON / BUYOUT / IMPACTS,,Pour Concrete,JAMES LEE,,2023-05-08 07:00,2023-05-13 11:00,2023-05-08 07:00,2023-05-13 12:00,2025-11-20 17:00,2025-11-20 17:00,2025-06-13 08:00,2025-06-13 08:00,0,44,100
DECKSUP1080,RFI 2283 & 2284 - SLAB EDGE BENT PLATE and GRATING - DELAYING WW FABRICATION,Complete,PRE CONSTRUCTION,Data Center (Gridlines 1-3),STEEL,L4 - SUP Roof - FAB Roof,,PRE - CON / BUYOUT / IMPACTS,,Steel Fabricator - W&W,SEAN MONK,,2023-03-07 15:00,2023-03-16 15:00,2023-04-18 15:00,2023-05-12 09:00,2025-11-20 17:00,2025-11-20 17:00,2025-06-13 08:00,2025-06-13 08:00,0,80,100
SUW.SOG.1180,IMPACT [S.TIA-56] - BAKER FIXING ABs - RFI 628/ 1946 - (SUW - L1),Complete,PRE CONSTRUCTION,South Areas (Team A - Gridlines 3-17),CONCRETE SLABS,L1 - Fndn Slab,,PRE - CON / BUYOUT / IMPACTS,,Pour Concrete,JAMES LEE,,2023-05-08 07:00,2023-05-12 09:00,2023-04-27 07:00,2023-05-08 15:00,2025-11-20 17:00,2025-11-20 17:00,2025-06-13 08:00,2025-06-13 08:00,0,32,100
FIZ.SOG.1140,IMPACT [S.TIA-87] - GL E/1 & GL E/2 MISSING STARTERS - BLAST GROUTING & DEWATER - RFI 648 - L1 - A1,Complete,PRE CONSTRUCTION,South Areas (Team A - Gridlines 3-17),CONCRETE SLABS,L1 - Fndn Slab,,PRE - CON / BUYOUT / IMPACTS,,Pour Concrete,JAMES LEE,,2023-03-13 07:00,2023-03-18 15:00,2023-04-19 07:00,2023-05-03 16:00,2025-11-20 17:00,2025-11-20 17:00,2025-06-13 08:00,2025-06-13 08:00,0,48,100
PC.FIZ1330,IMPACT - FIZ PC ERROR - COLUMN TO STEEL CONNECTION REPAIR (RFI 2685),Complete,PRE CONSTRUCTION,,PRECAST,PRECAST,,PRE - CON / BUYOUT / IMPACTS,,Precast Fabrication,SEAN MONK,,2023-05-08 08:00,2023-05-15 12:00,2023-05-08 08:00,2023-06-16 17:00,2025-11-20 17:00,2025-11-20 17:00,2025-06-13 08:00,2025-06-13 08:00,0,64,100
A430,FAB & DELIVERY - CLADDING STEEL - GL 1 FIZ,Complete,PRE CONSTRUCTION,Data Center (Gridlines 1-3),ENCLOSURE,EXTERIOR SKIN,,PRE - CON / BUYOUT / IMPACTS,,INSULATED METAL PANELS,JAMES LIVELY,,2023-03-04 08:00,2023-04-29 16:00,2023-04-19 08:00,2023-05-27 16:00,2025-11-20 17:00,2025-11-20 17:00,2025-11-13 17:00,2025-11-13 17:00,0,518,100
A440,FABRICATION ROOF EDGE ANGLE - FAB,Complete,PRE CONSTRUCTION,West Support Building,ENCLOSURE,L4 - SUP Roof - FAB Roof,,PRE - CON / BUYOUT / IMPACTS,,Roofing,JAMES LIVELY,,2023-02-20 07:00,2023-03-09 17:00,2023-04-21 07:00,2023-05-30 17:00,2025-11-20 17:00,2025-11-20 17:00,2025-11-10 07:00,2025-11-10 07:00,0,160,100
PC.WAF1260,IMPACT - GL 3 DTs NOT CAST - DELIVERY DELAY - (Assumption 2 DTs per day),Complete,PRE CONSTRUCTION,,PRECAST,L3 / Waffle Slab Level,,PRE - CON / BUYOUT / IMPACTS,,Precast Fabrication,SEAN MONK,,2023-01-31 08:00,2023-02-09 08:00,2023-05-08 00:00,2023-05-23 17:00,2025-11-20 17:00,2025-11-20 17:00,2025-06-13 08:00,2025-06-13 08:00,0,80,100
A1380,PH1 - MATERIAL DELIVERY & LAYDOWN SETUP - CLADDING STEEL,Complete,PRE CONSTRUCTION,Data Center (Gridlines 1-3),ENCLOSURE,EXTERIOR SKIN,,PRE - CON / BUYOUT / IMPACTS,,INSULATED METAL PANELS,JAMES LIVELY,,2023-08-28 07:00,2023-09-06 09:00,2023-08-04 07:00,2023-08-16 17:00,2025-11-20 17:00,2025-11-20 17:00,2025-08-26 07:00,2025-08-26 07:00,0,72,100
ELEV20-03,ELEVATOR SUPPORT STEEL - RFI SUBMITTED TO DESIGN TEAM REVIEW,Complete,PRE CONSTRUCTION,,ELEVATORS,L1 - Fndn Slab,,PRE - CON / BUYOUT / IMPACTS,,Steel Erector - W&W,,,2023-07-03 08:00,2023-07-09 08:00,2023-07-03 08:00,2023-07-24 16:00,2025-11-20 17:00,2025-11-20 17:00,2025-09-04 07:00,2025-09-04 07:00,0,40,100
ELEV20-3,ELEVATOR SUPPORT STEEL - SHOP DWG REVIEW APPROVAL (Nuvou reviewing),Complete,PRE CONSTRUCTION,,ELEVATORS,L1 - Fndn Slab,,PRE - CON / BUYOUT / IMPACTS,,Steel Erector - W&W,,,2023-07-27 09:00,2023-07-31 09:00,2023-07-27 09:00,2023-08-04 07:00,2025-11-20 17:00,2025-11-20 17:00,2025-09-04 07:00,2025-09-04 07:00,0,40,100
ELEV2003,IMPACT - ELEVATOR SUPPORT STEEL (Ellis) - SUBMITTAL #306 FABRICATION / DELIVERY - ELEVATOR 20 SEA1 GL 19-16,Complete,PRE CONSTRUCTION,,ELEVATORS,L1 - Fndn Slab,,PRE - CON / BUYOUT / IMPACTS,,Steel Erector - W&W,,,2023-10-02 08:00,2023-11-14 10:00,2023-08-29 08:00,2023-10-02 16:00,2025-11-20 17:00,2025-11-20 17:00,2025-09-04 07:00,2025-09-04 07:00,0,392,100
INT.P1.EXP.1200,Field Measure - Expansion Control,Complete,PRE CONSTRUCTION,Support Building Overall,Expansion Control,EXPANSION CONTROL,,PRE - CON / BUYOUT / IMPACTS,,Expansion Control,JAMES LIVELY,INTERIORS,2023-10-02 07:00,2023-10-05 17:00,2023-09-05 07:00,2023-09-07 17:00,2025-11-20 17:00,2025-11-20 17:00,2025-12-05 17:00,2025-12-05 17:00,0,40,100
ELEV2013,ELEVATOR SUPPORT STEEL - NUVOU DESIGN REVISION,Complete,PRE CONSTRUCTION,,ELEVATORS,L1 - Fndn Slab,,PRE - CON / BUYOUT / IMPACTS,,Steel Erector - W&W,,,2023-08-04 07:00,2023-08-14 13:00,2023-08-04 07:00,2023-08-28 17:00,2025-11-20 17:00,2025-11-20 17:00,2025-09-04 07:00,2025-09-04 07:00,0,96,100
SUWPIT17-20,IMPACT - F03.04 ADDED BRIDGE STEEL SHOP DWG (IFA)- WWAFCO,Complete,PRE CONSTRUCTION,,STEEL,L1 - Fndn Slab,,PRE - CON / BUYOUT / IMPACTS,,Steel Erector - W&W,,,2023-10-09 07:00,2023-10-25 17:30,2023-08-21 07:00,2023-10-16 09:00,2025-11-20 17:00,2025-11-20 17:00,2025-12-01 07:00,2025-12-01 07:00,0,160,100
DRB-001,IMPACTS - DRB-001 DRAWING RELEASE,Complete,PRE CONSTRUCTION,,Schedules,DRAWING PACKAGES,,DESIGN,,Owner & Design Team,DONGSOO,,2023-08-28 08:00,2023-09-02 08:00,2023-08-18 08:00,2023-08-26 10:00,2025-11-20 17:00,2025-11-20 17:00,2025-06-13 08:00,2025-06-13 08:00,0,40,100
SUWPIT17-30,IMPACT - PIT ANCHOR BOLTS/ EMBEDS FABRICATION - DELIVER,Complete,PRE CONSTRUCTION,,STEEL,L1 - Fndn Slab,,PRE - CON / BUYOUT / IMPACTS,,Steel Erector - W&W,,,2023-09-05 07:00,2023-09-12 17:00,2023-08-15 07:00,2023-08-31 09:00,2025-11-20 17:00,2025-11-20 17:00,2025-08-26 07:00,2025-08-26 07:00,0,80,100
DRB-1,IMPACTS - DRB-001 DRAWING - REVIEW & PRICING,Complete,PRE CONSTRUCTION,,Schedules,DRAWING PACKAGES,,DESIGN,,Owner & Design Team,DONGSOO,,2023-08-28 08:00,2023-09-02 08:00,2023-08-27 08:00,2023-09-04 08:00,2025-11-20 17:00,2025-11-20 17:00,2025-06-13 08:00,2025-06-13 08:00,0,40,100
RFI 3470,IMPACT - JACOBS DESIGN COORDINATION ERROR FAB & SUP BLDG ELEVATIONS,Complete,PRE CONSTRUCTION,,STEEL,L4 - SUP Roof - FAB Roof,,PRE - CON / BUYOUT / IMPACTS,,Steel Erector - W&W,,,2023-09-05 07:00,2023-09-08 17:00,2023-07-03 20:44,2023-07-12 09:00,2025-11-20 17:00,2025-11-20 17:00,2025-06-13 08:00,2025-06-13 08:00,0,40,100
DS.SECAI.1170,F03B.04 IFC,Complete,PRE CONSTRUCTION,,F03B,DRAWING PACKAGES,,DESIGN,,Owner & Design Team,,,2023-02-27 08:00,2023-02-27 08:00,2023-04-27 08:00,2023-04-27 08:00,2025-11-20 17:00,2025-11-20 17:00,2025-06-13 08:00,2025-06-13 08:00,0,0,100
SUW.SOG.1190,IMPACT [CL 30] - PIT 3 - JACKHOLE - WATER FIX - SOUTH PIT - SUW,Complete,PRE CONSTRUCTION,South Areas (Team A - Gridlines 3-17),CONCRETE SLABS,L1 - Fndn Slab,,PRE - CON / BUYOUT / IMPACTS,,Pour Concrete,JAMES LEE,,2023-10-02 07:00,2023-10-10 13:00,2023-08-02 07:00,2023-09-30 09:00,2025-11-20 17:00,2025-11-20 17:00,2025-06-13 08:00,2025-06-13 08:00,0,56,100
DRB-11,IMPACTS - DRB-001 - SHOP DRAWING FABRICATION - CLADDING & STEEL,Complete,PRE CONSTRUCTION,,ENCLOSURE,EXTERIOR SKIN,,PRE - CON / BUYOUT / IMPACTS,,INSULATED METAL PANELS,DONGSOO,,2023-09-01 08:00,2023-09-08 12:00,2023-09-05 08:00,2023-10-24 16:00,2025-11-20 17:00,2025-11-20 17:00,2025-06-13 08:00,2025-06-13 08:00,0,64,100
RFI.4079.90,IMPACT [S.TIA-96] - RFI 4079 - CURE SLAB - SHRINKAGE TIME 60 DAYS - SEA-4-ROOF,Complete,PRE CONSTRUCTION,East Support Building,CONCRETE SLABS,L4 - SUP Roof - FAB Roof,,PRE - CON / BUYOUT / IMPACTS,,Pour Concrete,JAMES LEE,SOMD / Roofing / Waterproofing,2023-09-11 07:00,2023-09-24 09:00,2023-08-21 07:00,2023-09-29 16:00,2025-11-20 17:00,2025-11-20 17:00,2025-12-05 17:00,2025-12-05 17:00,0,112,100
RFI.4079.100,IMPACT [S.TIA-97] - RFI 4289 PC OAC PAD DOWEL ISSUE- SEA-4-ROOF,Complete,PRE CONSTRUCTION,East Support Building,CONCRETE SLABS,L4 - SUP Roof - FAB Roof,,PRE - CON / BUYOUT / IMPACTS,,Pour Concrete,JAMES LEE,SOMD / Roofing / Waterproofing,2023-09-11 07:00,2023-09-19 17:00,2023-09-01 07:00,2023-09-15 11:00,2025-11-20 17:00,2025-11-20 17:00,2025-12-04 07:00,2025-12-04 07:00,0,80,100
DRB-21,IMPACTS - DRB-001 - SHOP DRAWING FABRICATION- FOR MOCK UP,Complete,PRE CONSTRUCTION,,ENCLOSURE,EXTERIOR SKIN,,PRE - CON / BUYOUT / IMPACTS,,INSULATED METAL PANELS,,,2023-10-30 08:00,2023-11-06 14:00,2023-10-23 08:00,2023-10-28 16:00,2025-11-20 17:00,2025-11-20 17:00,2025-06-13 08:00,2025-06-13 08:00,0,56,100
IMP1100,IMPACT [CL 49] - FABRICATION DS/AD CLADDING STEEL EAST EXTERIOR GL 1-10 - projected 11/06,Complete,PRE CONSTRUCTION,Data Center (Gridlines 1-3),ENCLOSURE,EXTERIOR SKIN,,PRE - CON / BUYOUT / IMPACTS,,INSULATED METAL PANELS,JAMES LIVELY,,2023-04-11 13:00,2023-05-18 09:00,2023-04-11 13:00,2023-11-06 08:00,2025-11-20 17:00,2025-11-20 17:00,2025-10-29 07:00,2025-10-29 07:00,0,316,100
IMP1110,IMPACT [CL 49] - FABRICATION DS/AD CLADDING STEEL EAST INTERIOR GL 10-20 - projected delay 11/3,Complete,PRE CONSTRUCTION,Data Center (Gridlines 1-3),ENCLOSURE,EXTERIOR SKIN,,PRE - CON / BUYOUT / IMPACTS,,INSULATED METAL PANELS,JAMES LIVELY,,2023-04-11 13:00,2023-05-18 09:00,2023-04-11 13:00,2023-11-03 11:00,2025-11-20 17:00,2025-11-20 17:00,2025-11-21 07:00,2025-11-21 07:00,0,316,100
IMP1120,IMPACT [CL 49] - FABRICATION DS/AD CLADDING STEEL EAST INTERIOR GL 20-34 - projected delay 11/3,Complete,PRE CONSTRUCTION,Data Center (Gridlines 1-3),ENCLOSURE,EXTERIOR SKIN,,PRE - CON / BUYOUT / IMPACTS,,INSULATED METAL PANELS,JAMES LIVELY,,2023-04-11 13:00,2023-05-18 09:00,2023-04-11 13:00,2023-10-26 11:00,2025-11-20 17:00,2025-11-20 17:00,2025-11-21 07:00,2025-11-21 07:00,0,316,100
IMP1130,IMPACT [CL 49] - FABRICATION DS/AD CLADDING STEEL EAST INTERIOR GL 1 -10 - projected delay 11/10,Complete,PRE CONSTRUCTION,Data Center (Gridlines 1-3),ENCLOSURE,EXTERIOR SKIN,,PRE - CON / BUYOUT / IMPACTS,,INSULATED METAL PANELS,JAMES LIVELY,,2023-04-11 13:00,2023-05-18 09:00,2023-04-11 13:00,2023-11-12 00:00,2025-11-20 17:00,2025-11-20 17:00,2025-11-21 07:00,2025-11-21 07:00,0,316,100
IMP1140,IMPACT [CL 49] - FABRICATION DS/AD CLADDING STEEL WEST EXTERIOR GL 10-20 - projected delay 10/20,Complete,PRE CONSTRUCTION,Data Center (Gridlines 1-3),ENCLOSURE,EXTERIOR SKIN,,PRE - CON / BUYOUT / IMPACTS,,INSULATED METAL PANELS,JAMES LIVELY,,2023-04-11 13:00,2023-05-18 09:00,2023-04-11 13:00,2023-10-20 15:00,2025-11-20 17:00,2025-11-20 17:00,2025-06-13 08:00,2025-06-13 08:00,0,316,100
IMP1150,IMPACT [CL 49] - FABRICATION DS/AD CLADDING STEEL WEST EXTERIOR GL 1-10 - projected delay 10/31,Complete,PRE CONSTRUCTION,Data Center (Gridlines 1-3),ENCLOSURE,EXTERIOR SKIN,,PRE - CON / BUYOUT / IMPACTS,,INSULATED METAL PANELS,JAMES LIVELY,,2023-04-11 13:00,2023-05-18 09:00,2023-04-11 13:00,2023-10-30 17:00,2025-11-20 17:00,2025-11-20 17:00,2025-11-25 07:00,2025-11-25 07:00,0,316,100
IMP1160,IMPACT [CL 49] - FABRICATION DS/AD CLADDING STEEL WEST INTERIOR GL 10-20 - projected delay 11/3,Complete,PRE CONSTRUCTION,Data Center (Gridlines 1-3),ENCLOSURE,EXTERIOR SKIN,,PRE - CON / BUYOUT / IMPACTS,,INSULATED METAL PANELS,JAMES LIVELY,,2023-04-11 13:00,2023-05-18 09:00,2023-04-11 13:00,2023-11-03 13:00,2025-11-20 17:00,2025-11-20 17:00,2025-11-21 07:00,2025-11-21 07:00,0,316,100
IMP1170,IMPACT [CL 49] - FABRICATION DS/AD CLADDING STEEL WEST INTERIOR GL 20-34 - projected delay 11/3,Complete,PRE CONSTRUCTION,Data Center (Gridlines 1-3),ENCLOSURE,EXTERIOR SKIN,,PRE - CON / BUYOUT / IMPACTS,,INSULATED METAL PANELS,JAMES LIVELY,,2023-04-11 13:00,2023-05-18 09:00,2023-04-11 13:00,2023-11-03 11:00,2025-11-20 17:00,2025-11-20 17:00,2025-11-21 07:00,2025-11-21 07:00,0,316,100
IMP1180,IMPACT [CL 49] - FABRICATION DS/AD CLADDING STEEL WEST INTERIOR GL 1 -10 - projected delay 11/10,Complete,PRE CONSTRUCTION,Data Center (Gridlines 1-3),ENCLOSURE,EXTERIOR SKIN,,PRE - CON / BUYOUT / IMPACTS,,INSULATED METAL PANELS,JAMES LIVELY,,2023-04-11 13:00,2023-05-18 09:00,2023-04-11 13:00,2023-11-09 11:00,2025-11-20 17:00,2025-11-20 17:00,2025-11-25 07:00,2025-11-25 07:00,0,316,100
IMP1190,IMPACT [CL 49] - FABRICATION DS/AD CLADDING STEEL WEST EXTERIOR GL 20-34 - projected delay 10/28,Complete,PRE CONSTRUCTION,Data Center (Gridlines 1-3),ENCLOSURE,EXTERIOR SKIN,,PRE - CON / BUYOUT / IMPACTS,,INSULATED METAL PANELS,JAMES LIVELY,,2023-04-11 13:00,2023-05-18 09:00,2023-04-11 13:00,2023-10-26 16:00,2025-11-20 17:00,2025-11-20 17:00,2025-11-25 07:00,2025-11-25 07:00,0,316,100
RFI 3470-1,IMPACT - RFI 3470 - GL C & L DS/AD Lvl 4 connection - WW EMBED SURVEY & DETAILING,Complete,PRE CONSTRUCTION,,STEEL,L4 - SUP Roof - FAB Roof,,PRE - CON / BUYOUT / IMPACTS,,Steel Erector - W&W,,,2023-09-05 07:00,2023-09-08 17:00,2023-08-21 07:00,2023-08-31 09:00,2025-11-20 17:00,2025-11-20 17:00,2025-06-13 08:00,2025-06-13 08:00,0,40,100
RFI 3470-11,IMPACT - WAITING ON SECAI DIRECTION TO RELEASE FOR FABRICATION BASED ON DESIGN IN RFI 3470,Complete,PRE CONSTRUCTION,,STEEL,L4 - SUP Roof - FAB Roof,,PRE - CON / BUYOUT / IMPACTS,,Steel Erector - W&W,,,2023-09-05 07:00,2023-09-08 17:00,2023-08-31 07:00,2023-09-05 09:00,2025-11-20 17:00,2025-11-20 17:00,2025-06-13 08:00,2025-06-13 08:00,0,40,100
RFI 3470-21,IMPACT - SECAI SUBMITTED #2015 NEW SOLUTION - WW waiting on SECAI new detail,Complete,PRE CONSTRUCTION,,STEEL,L4 - SUP Roof - FAB Roof,,PRE - CON / BUYOUT / IMPACTS,,Steel Erector - W&W,,,2023-09-05 07:00,2023-09-08 17:00,2023-09-18 07:00,2023-09-25 09:00,2025-11-20 17:00,2025-11-20 17:00,2025-06-13 08:00,2025-06-13 08:00,0,40,100
RFI 3470-31,IMPACT - RFI 4513 SUPERCEDES 3470 - CCD ISSUED,Complete,PRE CONSTRUCTION,,STEEL,L4 - SUP Roof - FAB Roof,,PRE - CON / BUYOUT / IMPACTS,,Steel Erector - W&W,,,2023-10-02 07:00,2023-10-02 15:00,2023-09-26 07:00,2023-10-01 15:00,2025-11-20 17:00,2025-11-20 17:00,2025-06-13 08:00,2025-06-13 08:00,0,8,100
RFI 3470-41,IMPACT - RFI 4513 CCD APPROVED - PLATES FABRICATION,Complete,PRE CONSTRUCTION,,STEEL,L4 - SUP Roof - FAB Roof,,PRE - CON / BUYOUT / IMPACTS,,Steel Erector - W&W,,,2023-10-02 07:00,2023-10-08 17:00,2023-07-31 07:00,2023-10-06 09:00,2025-11-20 17:00,2025-11-20 17:00,2025-06-13 08:00,2025-06-13 08:00,0,70,100
RFI 3480,IMPACT - RFI 3470 WAS CREATED - GL C & L DS/AD Lvl 4 connection,Complete,PRE CONSTRUCTION,,STEEL,L4 - SUP Roof - FAB Roof,,PRE - CON / BUYOUT / IMPACTS,,Steel Erector - W&W,,,2023-09-05 07:00,2023-09-08 17:00,2023-07-12 20:44,2023-07-28 09:00,2025-11-20 17:00,2025-11-20 17:00,2025-06-13 08:00,2025-06-13 08:00,0,40,100
RFI 3490,IMPACT - RFI 3470 - GL C & L DS/AD Lvl 4 connection - WW PRODUCING SHOPS W QUESTIONS,Complete,PRE CONSTRUCTION,,STEEL,L4 - SUP Roof - FAB Roof,,PRE - CON / BUYOUT / IMPACTS,,Steel Erector - W&W,,,2023-09-05 07:00,2023-09-08 17:00,2023-07-31 20:44,2023-08-21 09:00,2025-11-20 17:00,2025-11-20 17:00,2025-06-13 08:00,2025-06-13 08:00,0,40,100
ELEVHSS,IMPACT - HSS ELEVATOR OPENINGS - SHOP DRAWINGS BFA 10/19 - Locations and Size WW and NUVOU coordination',Complete,PRE CONSTRUCTION,,ELEVATORS,L1 - Fndn Slab,,PRE - CON / BUYOUT / IMPACTS,,Steel Erector - W&W,,,2023-10-02 07:00,2023-10-21 09:00,2023-09-15 07:00,2023-11-21 15:00,2025-11-20 17:00,2025-11-20 17:00,2025-10-16 07:00,2025-10-16 07:00,0,192,100
L.DOCK.1000,Yates Submitted Loading Dock Equipment RFA to SECAI,Complete,PRE CONSTRUCTION,West Support Building,CONCRETE SLABS,LOADING DOCK,,PRE - CON / BUYOUT / IMPACTS,,TBD Architectural Finishes,JAMES LIVELY,INTERIORS,2024-01-02 09:00,2024-01-04 16:00,2023-03-01 08:00,2023-03-01 13:00,2025-11-20 17:00,2025-11-20 17:00,2025-08-26 07:00,2025-08-26 07:00,0,24,100
L.DOCK.1010,SECAI SIGNED RFA,Complete,PRE CONSTRUCTION,West Support Building,CONCRETE SLABS,LOADING DOCK,,PRE - CON / BUYOUT / IMPACTS,,TBD Architectural Finishes,JAMES LIVELY,INTERIORS,2024-01-02 09:00,2024-01-04 16:00,2023-03-06 08:00,2023-06-06 13:00,2025-11-20 17:00,2025-11-20 17:00,2025-08-26 07:00,2025-08-26 07:00,0,24,100
L.DOCK.1020,SECAI / SAS Placed YATES on Hold,Complete,PRE CONSTRUCTION,West Support Building,CONCRETE SLABS,LOADING DOCK,,PRE - CON / BUYOUT / IMPACTS,,TBD Architectural Finishes,JAMES LIVELY,INTERIORS,2023-09-16 08:00,2023-09-18 12:00,2023-06-15 08:00,2023-06-28 13:00,2025-11-20 17:00,2025-11-20 17:00,2025-08-26 07:00,2025-08-26 07:00,0,24,100
L.DOCK.1030,SECAI Requested Equipment and Vendor Change,Complete,PRE CONSTRUCTION,West Support Building,CONCRETE SLABS,LOADING DOCK,,PRE - CON / BUYOUT / IMPACTS,,TBD Architectural Finishes,JAMES LIVELY,INTERIORS,2023-09-19 13:00,2023-09-22 17:00,2023-06-29 13:00,2023-06-29 17:00,2025-11-20 17:00,2025-11-20 17:00,2025-08-26 07:00,2025-08-26 07:00,0,24,100
L.DOCK.1040,Yates Resubmitted RFA to SECAI with New Subcontractor and Equipment,Complete,PRE CONSTRUCTION,West Support Building,CONCRETE SLABS,LOADING DOCK,,PRE - CON / BUYOUT / IMPACTS,,TBD Architectural Finishes,JAMES LIVELY,INTERIORS,2023-09-23 08:00,2023-09-25 12:00,2023-06-30 08:00,2023-08-21 13:00,2025-11-20 17:00,2025-11-20 17:00,2025-08-26 07:00,2025-08-26 07:00,0,24,100
L.DOCK.1050,Yates Requested Equipment Clarification,Complete,PRE CONSTRUCTION,West Support Building,CONCRETE SLABS,LOADING DOCK,,PRE - CON / BUYOUT / IMPACTS,,TBD Architectural Finishes,JAMES LIVELY,INTERIORS,2023-09-26 13:00,2023-09-29 17:00,2023-08-22 13:00,2023-08-28 17:00,2025-11-20 17:00,2025-11-20 17:00,2025-08-26 07:00,2025-08-26 07:00,0,24,100
L.DOCK.1060,Yates Submitted RFI to Design Team for Equipment Substitutions,Complete,PRE CONSTRUCTION,West Support Building,CONCRETE SLABS,LOADING DOCK,,PRE - CON / BUYOUT / IMPACTS,,TBD Architectural Finishes,JAMES LIVELY,INTERIORS,2023-09-30 08:00,2023-10-02 12:00,2023-08-29 08:00,2023-08-30 13:00,2025-11-20 17:00,2025-11-20 17:00,2025-08-26 07:00,2025-08-26 07:00,0,24,100
L.DOCK.1070,SECAI and SAS Release Yates to Order Material,Complete,PRE CONSTRUCTION,West Support Building,CONCRETE SLABS,LOADING DOCK,,PRE - CON / BUYOUT / IMPACTS,,TBD Architectural Finishes,JAMES LIVELY,INTERIORS,2023-10-03 13:00,2023-10-05 17:00,2023-08-31 13:00,2023-09-28 17:00,2025-11-20 17:00,2025-11-20 17:00,2025-08-26 07:00,2025-08-26 07:00,0,24,100
L.DOCK.1080,Yates Released Subcontractor to Order Material,Complete,PRE CONSTRUCTION,West Support Building,CONCRETE SLABS,LOADING DOCK,,PRE - CON / BUYOUT / IMPACTS,,TBD Architectural Finishes,JAMES LIVELY,INTERIORS,2023-10-07 08:00,2023-10-09 12:00,2023-09-28 08:00,2023-09-28 13:00,2025-11-20 17:00,2025-11-20 17:00,2025-08-26 07:00,2025-08-26 07:00,0,24,100
L.DOCK.1090,Johnson Equipment - Final Review of Contract Before Placing Order,Complete,PRE CONSTRUCTION,West Support Building,CONCRETE SLABS,LOADING DOCK,,PRE - CON / BUYOUT / IMPACTS,,TBD Architectural Finishes,JAMES LIVELY,INTERIORS,2023-10-10 13:00,2023-10-12 17:00,2023-09-28 13:00,2023-10-09 15:00,2025-11-20 17:00,2025-11-20 17:00,2025-08-26 07:00,2025-08-26 07:00,0,24,100
L.DOCK.1100,Contract Agreement and Material Ordered,Complete,PRE CONSTRUCTION,West Support Building,CONCRETE SLABS,LOADING DOCK,,PRE - CON / BUYOUT / IMPACTS,,TBD Architectural Finishes,JAMES LIVELY,INTERIORS,2023-10-16 07:00,2023-10-16 15:00,2023-10-09 07:00,2023-10-26 15:00,2025-11-20 17:00,2025-11-20 17:00,2025-08-26 07:00,2025-08-26 07:00,0,8,100
L.DOCK.1110,IMPACT - FAB & Delivery - Dock Levelers,Complete,PRE CONSTRUCTION,West Support Building,CONCRETE SLABS,LOADING DOCK,,PRE - CON / BUYOUT / IMPACTS,,TBD Architectural Finishes,JAMES LIVELY,INTERIORS,2023-10-16 15:00,2024-01-17 10:00,2023-10-10 15:00,2024-01-10 15:00,2025-11-20 17:00,2025-11-20 17:00,2025-08-26 07:00,2025-08-26 07:00,0,672,100
L.DOCK.1120,FAB & Delivery - Dock Locks,Complete,PRE CONSTRUCTION,West Support Building,CONCRETE SLABS,LOADING DOCK,,PRE - CON / BUYOUT / IMPACTS,,TBD Architectural Finishes,JAMES LIVELY,INTERIORS,2023-10-16 15:00,2023-11-28 11:00,2023-10-10 15:00,2024-01-10 15:00,2025-11-20 17:00,2025-11-20 17:00,2025-12-04 07:00,2025-12-04 07:00,0,336,100
L.DOCK.1130,FAB & Delivery - Dock Guardians,Complete,PRE CONSTRUCTION,West Support Building,CONCRETE SLABS,LOADING DOCK,,PRE - CON / BUYOUT / IMPACTS,,TBD Architectural Finishes,JAMES LIVELY,INTERIORS,2023-10-16 15:00,2023-10-29 17:00,2023-10-10 15:00,2024-01-10 15:00,2025-11-20 17:00,2025-11-20 17:00,2025-12-04 07:00,2025-12-04 07:00,0,112,100
L.DOCK.1140,IMPACT - FAB & Delivery - Dock Lights,Complete,PRE CONSTRUCTION,West Support Building,CONCRETE SLABS,LOADING DOCK,,PRE - CON / BUYOUT / IMPACTS,,TBD Architectural Finishes,JAMES LIVELY,INTERIORS,2023-10-16 15:00,2023-10-29 17:00,2023-10-10 15:00,2024-01-10 15:00,2025-11-20 17:00,2025-11-20 17:00,2025-12-04 07:00,2025-12-04 07:00,0,112,100
ELEVHSS10,IMPACT [CL 18-60] - ELEVATOR 3 SWA1 GL 18-15 (Ellis) - SUBMITTAL - FABRICATION / DELIVERY,Complete,PRE CONSTRUCTION,,ELEVATORS,L1 - Fndn Slab,,PRE - CON / BUYOUT / IMPACTS,,Steel Erector - W&W,,,2023-10-09 07:00,2023-12-18 09:00,2023-08-31 08:00,2023-11-01 11:00,2025-11-20 17:00,2025-11-20 17:00,2025-11-24 07:00,2025-11-24 07:00,0,392,100
ELEVHSS20,IMPACT [S25] - ELEVATOR 19 (Ellis) - YATES RFI 1275/SECAI RFI 6807 - FABRICATION / DELIVERY,Complete,PRE CONSTRUCTION,,ELEVATORS,L1 - Fndn Slab,,PRE - CON / BUYOUT / IMPACTS,W&W,Steel Erector - W&W,,,2024-05-20 07:00,2024-06-24 17:00,2024-05-03 07:00,2024-06-11 17:00,2025-11-20 17:00,2025-11-20 17:00,2025-12-02 07:00,2025-12-02 07:00,0,200,100
ELEVHSS30,IMPACT - ELEVATOR 2 - SWA5- GL 12-9 (Ellis) FABRICATION / DELIVERY,Complete,PRE CONSTRUCTION,,ELEVATORS,L1 - Fndn Slab,,PRE - CON / BUYOUT / IMPACTS,,Steel Erector - W&W,,,2023-11-21 07:00,2024-01-02 11:00,2023-11-20 07:00,2024-02-21 17:00,2025-11-20 17:00,2025-11-20 17:00,2025-12-02 07:00,2025-12-02 07:00,0,272,100
ELEVHSS40,IMPACT - ELEVATOR 01 SWA5 GL 3-4 BETWEEN L-M - FIZ (Ellis) FABRICATION / DELIVERY,Complete,PRE CONSTRUCTION,,ELEVATORS,L1 - Fndn Slab,,PRE - CON / BUYOUT / IMPACTS,,Steel Erector - W&W,,,2023-11-27 15:00,2024-01-06 08:00,2023-11-20 15:00,2024-01-15 12:00,2025-11-20 17:00,2025-11-20 17:00,2025-12-01 07:00,2025-12-01 07:00,0,272,100
ELEVHSS50,IMPACT - ELEVATOR 22 - SEA5 - GL 3-4 (Ellis) FABRICATION / DELIVERY,Complete,PRE CONSTRUCTION,,ELEVATORS,L1 - Fndn Slab,,PRE - CON / BUYOUT / IMPACTS,,Steel Erector - W&W,,,2023-11-20 07:00,2023-12-29 09:00,2023-11-01 07:00,2023-11-25 09:00,2025-11-20 17:00,2025-11-20 17:00,2025-11-24 07:00,2025-11-24 07:00,0,272,100
ELEVHSS60,IMPACT - ELEVATOR 18 - SEB5 - GL 33 (Ellis) FABRICATION / DELIVERY,Complete,PRE CONSTRUCTION,,ELEVATORS,L1 - Fndn Slab,,PRE - CON / BUYOUT / IMPACTS,,Steel Erector - W&W,,,2023-11-17 07:00,2023-12-21 09:00,2023-10-31 07:00,2023-11-25 09:00,2025-11-20 17:00,2025-11-20 17:00,2025-11-10 07:00,2025-11-10 07:00,0,272,100
ELEVHSS70,IMPACT - ELEVATOR 5 - SWB5 - GL 33 (Ellis) FABRICATION / DELIVERY,Complete,PRE CONSTRUCTION,,ELEVATORS,L1 - Fndn Slab,,PRE - CON / BUYOUT / IMPACTS,,Steel Erector - W&W,,,2023-11-22 07:00,2024-01-03 14:00,2023-11-17 07:00,2024-01-31 17:00,2025-11-20 17:00,2025-11-20 17:00,2025-10-16 07:00,2025-10-16 07:00,0,272,100
CN.SEB1.4990,IMPACT [CL 39] - CURE 90 DAYS FOR TEMP CONSTRUCTION JOINT POUR BACK - SEB-1-ROOF,Complete,PRE CONSTRUCTION,East Support Building,CONCRETE SLABS,L4 - SUP Roof - FAB Roof,,PRE - CON / BUYOUT / IMPACTS,,Concrete Cure,JAMES LEE,SOMD / Roofing / Waterproofing,2023-10-03 07:00,2023-10-05 11:00,2023-09-13 07:00,2023-12-12 17:00,2025-11-20 17:00,2025-11-20 17:00,2025-12-05 17:00,2025-12-05 17:00,0,24,100
PEDESTAL.4320,IMPACT [CL 77] - REBAR CONFLICT OF PEDESTALS W FORMSAVERS FIX - RFI3293 - PEDESTALS - SUW/SUE ROOF,Complete,PRE CONSTRUCTION,East Support Building,CONCRETE SLABS,L4 - SUP Roof - FAB Roof,,PRE - CON / BUYOUT / IMPACTS,,CIP WALL,,SOMD / Roofing / Waterproofing,2023-10-02 08:00,2023-10-02 16:00,2023-09-11 08:00,2023-10-13 16:00,2025-11-20 17:00,2025-11-20 17:00,2025-10-16 07:00,2025-10-16 07:00,0,8,100
FIZ.WEST.2271,IMPACT - GL 3 KNEE WALL MISALIGNMENT FAB EDGE & FIZ EDGE- DESIGN REVISION,Complete,PRE CONSTRUCTION,Data Center (Gridlines 1-3),ENCLOSURE,EXTERIOR SKIN,,PRE - CON / BUYOUT / IMPACTS,,Cast-in Place Concrete - Baker Concrete,FIZ DATA CENTER,,2023-10-09 07:00,2023-10-10 13:00,2023-10-02 07:00,2024-01-07 16:00,2025-11-20 17:00,2025-11-20 17:00,2025-12-04 17:00,2025-12-04 17:00,0,16,100
BEARING PLATE10,IMPACT - DESIGN CHANGE - FABRICATION/ DELIVER - BEARING PLATE - GL 3 - DSAD TO FIZ,Complete,PRE CONSTRUCTION,West Support Building,STEEL,L4 - SUP Roof - FAB Roof,,PRE - CON / BUYOUT / IMPACTS,,Steel Erection,FIZ DATA CENTER,,2023-10-02 07:00,2023-10-03 13:00,2023-09-19 07:00,2023-10-06 13:00,2025-11-20 17:00,2025-11-20 17:00,2025-09-04 07:00,2025-09-04 07:00,0,16,100
SUW.SOG.1200,IMPACT [CL 48-67] - COBB CONTRACT EXECUTION,Complete,PRE CONSTRUCTION,South Areas (Team A - Gridlines 3-17),CONCRETE SLABS,L1 - Fndn Slab,,PRE - CON / BUYOUT / IMPACTS,,Pour Concrete,JAMES LEE,,2023-03-13 07:00,2023-04-12 17:00,2023-08-21 07:00,2023-10-12 13:00,2025-11-20 17:00,2025-11-20 17:00,2025-09-04 07:00,2025-09-04 07:00,0,280,100
RFI2284GRATING,IMPACT [CL 70-72] - RFI 2284 - GRATING EDGE DIMENSION REVISED (CCD - Trade pricing for fix) - L2 SUE,Complete,PRE CONSTRUCTION,,STEEL,L1 - Fndn Slab,,PRE - CON / BUYOUT / IMPACTS,,Steel Erector - W&W,,,2023-10-09 07:00,2023-10-16 17:00,2023-09-11 07:00,2023-11-30 17:00,2025-11-20 17:00,2025-11-20 17:00,2025-06-13 08:00,2025-06-13 08:00,0,80,100
DS.SECAI.1180,F03B.05 IFC,Complete,PRE CONSTRUCTION,,F03B,DRAWING PACKAGES,,DESIGN,,Owner & Design Team,,,2023-02-27 08:00,2023-02-27 08:00,2023-05-04 08:00,2023-05-04 08:00,2025-11-20 17:00,2025-11-20 17:00,2025-06-13 08:00,2025-06-13 08:00,0,0,100
DRB-002,IMPACTS - DRB-002 DRAWING RELEASE,Complete,PRE CONSTRUCTION,,Schedules,DRAWING PACKAGES,,DESIGN,,Owner & Design Team,DONGSOO,,2023-08-28 08:00,2023-09-02 08:00,2023-08-18 08:00,2023-08-26 10:00,2025-11-20 17:00,2025-11-20 17:00,2025-06-13 08:00,2025-06-13 08:00,0,40,100
DRB-003,IMPACTS - DRB-002 DRAWING RELEASE,Complete,PRE CONSTRUCTION,,Schedules,DRAWING PACKAGES,,DESIGN,,Owner & Design Team,DONGSOO,,2023-08-28 08:00,2023-09-02 08:00,2023-09-26 08:00,2023-09-29 10:00,2025-11-20 17:00,2025-11-20 17:00,2025-06-13 08:00,2025-06-13 08:00,0,40,100
ELEVHSS80,IMPACT [CL18-60] - ELEVATOR SUPPORT STEEL (Ellis) - SUBMITTAL - SHOP DRAWING PREP - ELEVATOR 03 SWA1 GL 18-15,Complete,PRE CONSTRUCTION,,ELEVATORS,L1 - Fndn Slab,,PRE - CON / BUYOUT / IMPACTS,,Steel Erector - W&W,,,2023-09-11 07:00,2023-09-15 17:00,2023-07-31 08:00,2023-09-19 16:00,2025-11-20 17:00,2025-11-20 17:00,2025-11-24 07:00,2025-11-24 07:00,0,40,100
ELEVHSS90,IMPACT - ELEVATOR 19 SWA1 GL 28-31(Ellis) - SUBMITTAL - SHOP DRAWING PREP,Complete,PRE CONSTRUCTION,,ELEVATORS,L1 - Fndn Slab,,PRE - CON / BUYOUT / IMPACTS,,Steel Erector - W&W,,,2023-09-29 08:00,2023-10-03 08:00,2023-09-29 08:00,2023-10-26 16:00,2025-11-20 17:00,2025-11-20 17:00,2025-12-02 07:00,2025-12-02 07:00,0,40,100
ELEVHSS100,IMPACT - ELEVATOR 22 SWA5 GL 3-4 (Ellis) - SUBMITTAL - SHOP DRAWING PREP,Complete,PRE CONSTRUCTION,,ELEVATORS,L1 - Fndn Slab,,PRE - CON / BUYOUT / IMPACTS,,Steel Erector - W&W,,,2023-09-29 08:00,2023-10-03 08:00,2023-09-29 08:00,2023-10-13 16:00,2025-11-20 17:00,2025-11-20 17:00,2025-11-24 07:00,2025-11-24 07:00,0,40,100
ELEVHSS110,IMPACT - ELEVATOR 01 SWA5 GL 6-1 FIZ (Ellis) - SUBMITTAL - SHOP DRAWING PREP,Complete,PRE CONSTRUCTION,,ELEVATORS,L1 - Fndn Slab,,PRE - CON / BUYOUT / IMPACTS,,Steel Erector - W&W,,,2023-09-28 08:00,2023-10-02 08:00,2023-10-18 08:00,2023-11-13 16:00,2025-11-20 17:00,2025-11-20 17:00,2025-09-04 07:00,2025-09-04 07:00,0,40,100
ELEVHSS120,IMPACT - ELEVATOR 18 SWA5 GL 33 (Ellis) - SUBMITTAL - SHOP DRAWING PREP,Complete,PRE CONSTRUCTION,,ELEVATORS,L1 - Fndn Slab,,PRE - CON / BUYOUT / IMPACTS,,Steel Erector - W&W,,,2023-10-09 08:00,2023-10-25 10:30,2023-10-11 08:00,2023-10-30 16:00,2025-11-20 17:00,2025-11-20 17:00,2025-11-10 07:00,2025-11-10 07:00,0,152,100
ELEVHSS130,IMPACT - ELEVATOR 5 SWA5 GL 33 (Ellis) - SUBMITTAL - SHOP DRAWING PREP,Complete,PRE CONSTRUCTION,,ELEVATORS,L1 - Fndn Slab,,PRE - CON / BUYOUT / IMPACTS,,Steel Erector - W&W,,,2023-10-09 08:00,2023-10-17 08:00,2023-10-08 08:00,2023-10-23 11:00,2025-11-20 17:00,2025-11-20 17:00,2025-10-16 07:00,2025-10-16 07:00,0,80,100
ELEVHSS140,IMPACT - ELEVATOR 2 SWA5 GL 12-9 (Ellis) - SUBMITTAL - SHOP DRAWING PREP,Complete,PRE CONSTRUCTION,,ELEVATORS,L1 - Fndn Slab,,PRE - CON / BUYOUT / IMPACTS,,Steel Erector - W&W,,,2023-09-28 08:00,2023-10-02 08:00,2023-09-28 08:00,2023-10-26 16:00,2025-11-20 17:00,2025-11-20 17:00,2025-12-02 07:00,2025-12-02 07:00,0,40,100
ELEVHSS150,IMPACT [CL18-60] - ELEVATOR SUPPORT STEEL (Ellis) - SUBMITTAL - SHOP DRAWING APPROVAL - ELEVATOR 03 SWA1 GL 18-15,Complete,PRE CONSTRUCTION,,ELEVATORS,L1 - Fndn Slab,,PRE - CON / BUYOUT / IMPACTS,,Steel Erector - W&W,,,2023-09-10 08:00,2023-09-15 08:00,2023-09-19 08:00,2023-09-28 16:00,2025-11-20 17:00,2025-11-20 17:00,2025-11-24 07:00,2025-11-24 07:00,0,40,100
ELEVHSS160,IMPACT - ELEVATOR 19 SWA1 GL 28-31 (Ellis) - SUBMITTAL - SHOP DRAWING APPROVAL,Complete,PRE CONSTRUCTION,,ELEVATORS,L1 - Fndn Slab,,PRE - CON / BUYOUT / IMPACTS,,Steel Erector - W&W,,,2023-10-24 08:00,2023-11-04 08:00,2023-10-27 08:00,2023-11-02 17:00,2025-11-20 17:00,2025-11-20 17:00,2025-12-02 07:00,2025-12-02 07:00,0,80,100
ELEVHSS170,IMPACT - ELEVATOR 22 SWA5 GL 3-4 (Ellis) - SUBMITTAL - SHOP DRAWING APPROVAL,Complete,PRE CONSTRUCTION,,ELEVATORS,L1 - Fndn Slab,,PRE - CON / BUYOUT / IMPACTS,,Steel Erector - W&W,,,2023-10-09 08:00,2023-10-17 08:00,2023-10-13 08:00,2023-10-31 15:00,2025-11-20 17:00,2025-11-20 17:00,2025-11-24 07:00,2025-11-24 07:00,0,80,100
ELEVHSS180,IMPACT - ELEVATOR 01 SWA5 GL 6-1 FIZ (Ellis) - RESUBMITTAL (11/13) - SHOP DRAWING APPROVAL,Complete,PRE CONSTRUCTION,,ELEVATORS,L1 - Fndn Slab,,PRE - CON / BUYOUT / IMPACTS,,Steel Erector - W&W,,,2023-11-20 07:00,2023-12-02 17:00,2023-11-06 07:00,2023-11-20 15:00,2025-11-20 17:00,2025-11-20 17:00,2025-09-04 07:00,2025-09-04 07:00,0,80,100
ELEVHSS190,IMPACT - ELEVATOR 18 SWA5 GL 33 (Ellis) - SUBMITTAL - SHOP DRAWING APPROVAL,Complete,PRE CONSTRUCTION,,ELEVATORS,L1 - Fndn Slab,,PRE - CON / BUYOUT / IMPACTS,,Steel Erector - W&W,,,2023-10-19 08:00,2023-10-29 08:00,2023-10-11 08:00,2023-10-30 13:00,2025-11-20 17:00,2025-11-20 17:00,2025-11-10 07:00,2025-11-10 07:00,0,80,100
ELEVHSS200,IMPACT - ELEVATOR 5 SWA5 GL 33 (Ellis) - SUBMITTAL - SHOP DRAWING APPROVAL,Complete,PRE CONSTRUCTION,,ELEVATORS,L1 - Fndn Slab,,PRE - CON / BUYOUT / IMPACTS,,Steel Erector - W&W,,,2023-10-24 08:00,2023-11-04 08:00,2023-10-25 08:00,2023-11-16 17:00,2025-11-20 17:00,2025-11-20 17:00,2025-10-16 07:00,2025-10-16 07:00,0,80,100
ELEVHSS210,IMPACT - ELEVATOR 2 SWA5 GL 12-9 (Ellis) - SUBMITTAL - SHOP DRAWING APPROVAL,Complete,PRE CONSTRUCTION,,ELEVATORS,L1 - Fndn Slab,,PRE - CON / BUYOUT / IMPACTS,,Steel Erector - W&W,,,2023-10-24 08:00,2023-11-04 08:00,2023-10-25 08:00,2023-11-17 17:00,2025-11-20 17:00,2025-11-20 17:00,2025-12-02 07:00,2025-12-02 07:00,0,80,100
PEDESTAL.4330,IMPACT - MISSED CONCRETE PEDESTALS - PEDESTALS - SUW/SUE ROOF,Complete,PRE CONSTRUCTION,East Support Building,CONCRETE SLABS,L4 - SUP Roof - FAB Roof,,PRE - CON / BUYOUT / IMPACTS,,CIP WALL,,SOMD / Roofing / Waterproofing,2023-10-21 08:00,2023-10-21 16:00,2023-09-13 08:00,2023-11-17 16:00,2025-11-20 17:00,2025-11-20 17:00,2025-10-16 07:00,2025-10-16 07:00,0,8,100
FIZROOF.1000,IMPACT - ADDED ROOF DRAINS clashing Mech Pads (NEED NEW DESIGN) - FIZ ROOF,Complete,PRE CONSTRUCTION,East Support Building,CONCRETE SLABS,L4 - SUP Roof - FAB Roof,,PRE - CON / BUYOUT / IMPACTS,BAKER,Steel Erector - W&W,,SOMD / Roofing / Waterproofing,2023-10-23 07:00,2023-10-23 15:00,2023-10-13 07:00,2024-03-04 17:00,2025-11-20 17:00,2025-11-20 17:00,2025-12-05 17:00,2025-12-05 17:00,0,8,100
INT.P1.Stairs.1260,IMPACT - METAL STAIR 21 LANDING @ L3 - SEA-2,Complete,PRE CONSTRUCTION,East Support Building,CONCRETE SLABS,L4 - SUP Roof - FAB Roof,,PRE - CON / BUYOUT / IMPACTS,,STAIRS,JAMES LIVELY,INTERIORS,2023-10-16 07:00,2023-10-19 17:00,2023-10-09 07:00,2023-11-14 17:00,2025-11-20 17:00,2025-11-20 17:00,2025-06-13 08:00,2025-06-13 08:00,0,40,100
INT.P1.Gypsum.1170,GL 33 - VIBRATION PAD LEAD TIME,Complete,PRE CONSTRUCTION,Support Building Overall,GRIDLINE 33,FRAMING/ DRYWALL GYPSUM,GL 33 PROCUREMENT ITEMS,PRE - CON / BUYOUT / IMPACTS,,DRYWALL,AMBER CARO,INTERIORS,2023-10-30 07:00,2023-11-02 13:00,2023-10-19 07:00,2023-10-20 13:00,2025-11-20 17:00,2025-11-20 17:00,2025-11-14 07:00,2025-11-14 07:00,0,16,100
INT.P1.Gypsum.1180,GL 33 - STUD LEAD TIME,Complete,PRE CONSTRUCTION,Support Building Overall,GRIDLINE 33,FRAMING/ DRYWALL GYPSUM,GL 33 PROCUREMENT ITEMS,PRE - CON / BUYOUT / IMPACTS,,DRYWALL,AMBER CARO,INTERIORS,2023-10-30 07:00,2023-11-12 09:00,2023-10-27 20:44,2023-11-03 15:00,2025-11-20 17:00,2025-11-20 17:00,2025-11-14 07:00,2025-11-14 07:00,0,112,100
INT.P1.Gypsum.1190,GL 33 - DRYWALL LEAD TIME,Complete,PRE CONSTRUCTION,Support Building Overall,GRIDLINE 33,FRAMING/ DRYWALL GYPSUM,GL 33 PROCUREMENT ITEMS,PRE - CON / BUYOUT / IMPACTS,,DRYWALL,AMBER CARO,INTERIORS,2023-11-27 07:00,2023-12-28 15:00,2023-11-20 20:44,2023-12-01 18:44,2025-11-20 17:00,2025-11-20 17:00,2025-11-14 07:00,2025-11-14 07:00,0,238,100
INT.P1.DH&HW.1240,SECAI DIRECTIVE TO FABRICATE BASED ON SAMOO 6.6 - Doors & Hardware - INTERIOR,Complete,PRE CONSTRUCTION,Support Building Overall,Doors & Hardware - INTERIOR,DOORS & HARDWARE INTERIOR,,PRE - CON / BUYOUT / IMPACTS,,DOORS & HARDWARE - INTERIOR,AMBER CARO,INTERIORS,2023-08-01 13:00,2023-08-12 09:00,2023-09-07 07:00,2023-09-13 09:00,2025-11-20 17:00,2025-11-20 17:00,2025-11-19 07:00,2025-11-19 07:00,0,96,100
INT.P1.DH&HW.1250,C&B OUTREACH MANUFACTURERS - Doors & Hardware - INTERIOR,Complete,PRE CONSTRUCTION,Support Building Overall,Doors & Hardware - INTERIOR,DOORS & HARDWARE INTERIOR,,PRE - CON / BUYOUT / IMPACTS,,DOORS & HARDWARE - INTERIOR,AMBER CARO,INTERIORS,2023-08-01 13:00,2023-08-12 09:00,2023-09-14 07:00,2023-10-12 09:00,2025-11-20 17:00,2025-11-20 17:00,2025-11-19 07:00,2025-11-19 07:00,0,96,100
IMP.DH&HW.1270,IMPACT - FABRICATE / DELIVER AUTOMATIC ALUMINUM DOORS - QA-1/SA-1 - CLEAN ROOMS (14-16 WEEK LEADTIME),Complete,PRE CONSTRUCTION,Support Building Overall,Doors & Hardware - INTERIOR,DOORS & HARDWARE INTERIOR,,PRE - CON / BUYOUT / IMPACTS,SECAI,DOORS & HARDWARE - INTERIOR,AMBER CARO,INTERIORS,2023-11-30 07:00,2024-04-04 17:00,2024-05-23 07:00,2025-03-07 17:00,2025-11-20 17:00,2025-11-20 17:00,2025-12-05 17:00,2025-12-05 17:00,0,800,100
EXT.P1.DH&HW.1270,SECAI DIRECTIVE TO FABRICATE BASED ON SAMOO 6.6 - Doors & Hardware - EXTERIOR,Complete,PRE CONSTRUCTION,Support Building Overall,Doors & Hardware - EXTERIOR,DOORS & HARDWARE EXTERIOR,,PRE - CON / BUYOUT / IMPACTS,,DOORS & HARDWARE - INTERIOR,AMBER CARO,INTERIORS,2023-08-01 13:00,2023-08-12 09:00,2023-09-07 07:00,2023-09-13 09:00,2025-11-20 17:00,2025-11-20 17:00,2025-11-25 07:00,2025-11-25 07:00,0,96,100
SUWPIT17-40,IMPACT - F03.04 SOUTH PIT ADDED PLATFORM STEEL FABRICATION - WWAFCO DWG,Complete,PRE CONSTRUCTION,,STEEL,L1 - Fndn Slab,,PRE - CON / BUYOUT / IMPACTS,,Steel Erector - W&W,,,2023-11-07 07:00,2023-12-05 11:00,2023-10-26 07:00,2023-12-29 10:00,2025-11-20 17:00,2025-11-20 17:00,2025-12-01 07:00,2025-12-01 07:00,0,224,100
SUWPIT17-25,IMPACT - F03.04 ADDED BRIDGE STEEL SHOP DWG (BFA) - WWAFCO,Complete,PRE CONSTRUCTION,,STEEL,L1 - Fndn Slab,,PRE - CON / BUYOUT / IMPACTS,,Steel Erector - W&W,,,2023-10-24 08:12,2023-11-05 13:00,2023-10-17 08:12,2023-10-24 17:00,2025-11-20 17:00,2025-11-20 17:00,2025-12-01 07:00,2025-12-01 07:00,0,94.8,100
PC.FIZ1340,IMPACT - L/18 TO COLUMN AB's - PRECAST FABRICATION ERROR - SUW DS/AD STEEL,Complete,PRE CONSTRUCTION,,PRECAST,PRECAST,,PRE - CON / BUYOUT / IMPACTS,,Precast Fabrication,SEAN MONK,,2023-05-08 08:00,2023-05-15 12:00,2023-09-05 08:00,2023-09-29 17:00,2025-11-20 17:00,2025-11-20 17:00,2025-06-13 08:00,2025-06-13 08:00,0,64,100
ELEVHSS2,IMPACT [CL 69-71] - HSS FRAMING MATERIAL FOR ELEVATOR OPENINGS - FABRICATION / DELIVERY,Complete,PRE CONSTRUCTION,,ELEVATORS,L1 - Fndn Slab,,PRE - CON / BUYOUT / IMPACTS,,Steel Erector - W&W,,,2023-11-27 15:00,2024-01-08 15:00,2023-11-20 15:00,2024-03-18 17:00,2025-11-20 17:00,2025-11-20 17:00,2025-11-14 17:00,2025-11-14 17:00,0,240,100
SOMDP.1000,IMPACT [CL 83-84] - DSAD PENETRATION SUPPORT STEEL FRAMING PROCUREMENT & CCD EXECUTED,Complete,PRE CONSTRUCTION,,STEEL,L1 - Fndn Slab,,PRE - CON / BUYOUT / IMPACTS,,Steel Erector - W&W,,,2023-10-28 08:00,2023-11-03 08:00,2023-09-13 08:00,2024-01-04 10:00,2025-11-20 17:00,2025-11-20 17:00,2025-10-16 07:00,2025-10-16 07:00,0,40,100
RFI2284GRATING10,IMPACT [CL 70-72] - RFI 2284 - GRATING EDGE DIMENSION - Baker & Berg Field Coordinate - L2 SUE,Complete,PRE CONSTRUCTION,,STEEL,L1 - Fndn Slab,,PRE - CON / BUYOUT / IMPACTS,,Steel Erector - W&W,,,2023-12-19 07:00,2023-12-21 11:00,2023-12-01 07:00,2023-12-12 11:00,2025-11-20 17:00,2025-11-20 17:00,2025-06-13 08:00,2025-06-13 08:00,0,24,100
INT.1500,Submittal and Fabrication - VIP ROOM GLASS WINDOW (4 week lead time),Complete,PRE CONSTRUCTION,Support Building Overall,Doors & Hardware - INTERIOR,DOORS & HARDWARE INTERIOR,,PRE - CON / BUYOUT / IMPACTS,SECAI,DOORS & HARDWARE - INTERIOR,AMBER CARO,INTERIORS,2024-01-22 07:00,2024-02-13 09:00,2023-12-20 07:00,2024-09-20 17:00,2025-11-20 17:00,2025-11-20 17:00,2025-12-05 17:00,2025-12-05 17:00,0,162,100
ELEVHSS220,IMPACT - ELEVATOR 01A SWA5 GL 6-1 FIZ (Ellis) - RESUBMITTAL (11/13) - SHOP DRAWING APPROVAL,Complete,PRE CONSTRUCTION,,ELEVATORS,L1 - Fndn Slab,,PRE - CON / BUYOUT / IMPACTS,,Steel Erector - W&W,,,2023-10-18 08:00,2023-10-27 17:00,2023-09-28 08:00,2023-11-20 15:00,2025-11-20 17:00,2025-11-20 17:00,2025-09-04 07:00,2025-09-04 07:00,0,80,100
ELEVHSS230,IMPACT - ELEVATOR 01B SWA5 GL 6-1 FIZ (Ellis) - SUBMITTAL - SHOP DRAWING APPROVAL,Complete,PRE CONSTRUCTION,,ELEVATORS,L1 - Fndn Slab,,PRE - CON / BUYOUT / IMPACTS,,Steel Erector - W&W,,,2023-10-18 08:00,2023-10-27 17:00,2023-10-19 08:00,2023-11-17 10:00,2025-11-20 17:00,2025-11-20 17:00,2025-09-04 07:00,2025-09-04 07:00,0,80,100
ELEVHSS240,IMPACT - ELEVATOR 01A SWA5 - GL 3-4 BETWEEN L-M - FIZ (Ellis) FABRICATION / DELIVERY,Complete,PRE CONSTRUCTION,,ELEVATORS,L1 - Fndn Slab,,PRE - CON / BUYOUT / IMPACTS,,Steel Erector - W&W,,,2023-11-27 15:00,2024-01-06 08:00,2023-11-20 15:00,2024-01-15 09:00,2025-11-20 17:00,2025-11-20 17:00,2025-12-01 07:00,2025-12-01 07:00,0,272,100
ELEVHSS250,IMPACT - ELEVATOR 01B SWA5 GL 3-4 BETWEEN N-M - FIZ (Ellis) FABRICATION / DELIVERY,Complete,PRE CONSTRUCTION,,ELEVATORS,L1 - Fndn Slab,,PRE - CON / BUYOUT / IMPACTS,,Steel Erector - W&W,,,2023-11-22 10:00,2024-01-03 17:00,2023-11-17 10:00,2024-01-31 17:00,2025-11-20 17:00,2025-11-20 17:00,2025-12-01 07:00,2025-12-01 07:00,0,272,100
ELEV20RFI,IMPACT - ELEVATOR 20 - RFI#4244/2318 L4 CONNECTION ISSUE - GROUT JOINT OVERLAPS CONX - SEA1 GL 19-16,Complete,PRE CONSTRUCTION,,ELEVATORS,L1 - Fndn Slab,,PRE - CON / BUYOUT / IMPACTS,,Steel Erector - W&W,,,2023-11-28 08:00,2023-12-01 12:00,2023-11-13 08:00,2023-11-17 16:00,2025-11-20 17:00,2025-11-20 17:00,2025-11-14 17:00,2025-11-14 17:00,0,24,100
SUW.ELEV3,"IMPACT - ELEVATOR 3 PIT - EAST WALL OFF 3"""" - SOUTH PIT - SUW - Baker Fix",Complete,PRE CONSTRUCTION,South Areas (Team A - Gridlines 3-17),CONCRETE SLABS,L1 - Fndn Slab,,PRE - CON / BUYOUT / IMPACTS,,Pour Concrete,JAMES LEE,,2023-11-20 07:00,2023-11-30 13:00,2023-11-06 07:00,2023-11-22 15:00,2025-11-20 17:00,2025-11-20 17:00,2025-09-04 07:00,2025-09-04 07:00,0,56,100
INT.P1.Stairs.1270,PH1- METAL STAIR 18 Fab / Deliver - SEB5,Complete,PRE CONSTRUCTION,West Support Building,Stairs,GL 33 STAIRS 5 & 18,,PRE - CON / BUYOUT / IMPACTS,,STAIRS,JAMES LIVELY,INTERIORS,2023-09-05 07:00,2023-09-29 13:00,2023-10-14 08:00,2023-11-15 12:00,2025-11-20 17:00,2025-11-20 17:00,2025-11-03 07:00,2025-11-03 07:00,0,216,100
INT.P1.Stairs.1280,PH1- METAL STAIR 5 Fab / Deliver - SWB5,Complete,PRE CONSTRUCTION,West Support Building,Stairs,GL 33 STAIRS 5 & 18,,PRE - CON / BUYOUT / IMPACTS,,STAIRS,JAMES LIVELY,INTERIORS,2023-09-05 07:00,2023-09-29 13:00,2023-10-14 08:00,2023-11-15 12:00,2025-11-20 17:00,2025-11-20 17:00,2025-11-03 07:00,2025-11-03 07:00,0,216,100
STOP.WAF.IMP,IMPACT - STOP WORK NOTICE WAFFLE COATING L3 - ALL AREAS,Complete,PRE CONSTRUCTION,,PRECAST,L3 / Waffle Slab Level,,PRE - CON / BUYOUT / IMPACTS,,TBD Architectural Finishes,,,2023-11-13 07:00,2023-11-21 09:00,2023-11-02 07:00,2023-12-01 13:00,2025-11-20 17:00,2025-11-20 17:00,2025-12-05 17:00,2025-12-05 17:00,0,72,100
ELEVHSS260,IMPACT - ELEVATOR 19 SWA1 GL 28-31 (Ellis) - SUBMITTAL - REDESIGN,Complete,PRE CONSTRUCTION,,ELEVATORS,L1 - Fndn Slab,,PRE - CON / BUYOUT / IMPACTS,,Steel Erector - W&W,,,2023-10-24 08:00,2023-11-04 08:00,2023-11-03 08:00,2024-01-05 09:00,2025-11-20 17:00,2025-11-20 17:00,2025-12-02 07:00,2025-12-02 07:00,0,80,100
ELEVHSS270,IMPACT - ELEVATOR 19 SWA1 GL 28-31 (Ellis) - SUBMITTAL - REDESIGN SHOP DRAWING APPROVAL,Complete,PRE CONSTRUCTION,,ELEVATORS,L1 - Fndn Slab,,PRE - CON / BUYOUT / IMPACTS,,Steel Erector - W&W,,,2024-01-24 09:00,2024-02-01 09:00,2024-01-05 09:00,2024-01-18 13:00,2025-11-20 17:00,2025-11-20 17:00,2025-12-02 07:00,2025-12-02 07:00,0,80,100
ELEV20RFI10,IMPACT - ELEVATOR 20 - ADDED STEEL MATERIALS TF1-SMT-SH-2318 - FABRICATION / DELIVERY - SEA1 GL 19-16,Complete,PRE CONSTRUCTION,,ELEVATORS,L1 - Fndn Slab,,PRE - CON / BUYOUT / IMPACTS,,Steel Erector - W&W,,,2024-01-22 07:00,2024-02-02 09:00,2024-01-01 07:00,2024-01-15 17:00,2025-11-20 17:00,2025-11-20 17:00,2025-11-14 17:00,2025-11-14 17:00,0,112,100
INT.P1.DH&HW.1270,Fabrication / Lead time - Exterior Door Frames - PERMANENT,Complete,PRE CONSTRUCTION,Support Building Overall,Doors & Hardware - EXTERIOR,DOORS & HARDWARE EXTERIOR,,PRE - CON / BUYOUT / IMPACTS,,DOORS & HARDWARE - EXTERIOR,AMBER CARO,INTERIORS,2023-10-09 07:00,2023-11-21 11:00,2023-10-10 07:00,2024-02-23 13:00,2025-11-20 17:00,2025-11-20 17:00,2025-11-25 07:00,2025-11-25 07:00,0,384,100
INT.P2.1780,RFA SECAI Approval - P2,Complete,PRE CONSTRUCTION,Support Building Overall,Tiling,TILING,,PRE - CON / BUYOUT / IMPACTS,,FLOORING,JAMES LEE,INTERIORS,2023-11-27 15:00,2024-01-07 16:00,2023-10-19 15:00,2023-12-15 10:00,2025-11-20 17:00,2025-11-20 17:00,2025-11-20 07:00,2025-11-20 07:00,0,290,100
INT.P1.Stairs.1290,DESIGN CHANGE DRB 4 - METAL STAIR 50 - SWB5,Complete,PRE CONSTRUCTION,West Support Building,Stairs,GL 33 STAIRS 5 & 18,,PRE - CON / BUYOUT / IMPACTS,,STAIRS,JAMES LIVELY,INTERIORS,2024-04-22 07:00,2024-04-22 17:00,2023-11-16 07:00,2024-01-09 00:00,2025-11-20 17:00,2025-11-20 17:00,2025-12-04 07:00,2025-12-04 07:00,0,10,100
INT.P1.Stairs.1300,PREP SHOP DRAWINGS - METAL STAIR 50 - SWB5,Complete,PRE CONSTRUCTION,West Support Building,Stairs,GL 33 STAIRS 5 & 18,,PRE - CON / BUYOUT / IMPACTS,,STAIRS,JAMES LIVELY,INTERIORS,2024-04-23 07:00,2024-05-14 17:00,2024-01-10 07:00,2024-01-31 17:00,2025-11-20 17:00,2025-11-20 17:00,2025-12-04 07:00,2025-12-04 07:00,0,140,100
INT.P1.Stairs.1310,APPROVE SHOPE DRAWINGS - METAL STAIR 50 - SWB5,Complete,PRE CONSTRUCTION,West Support Building,Stairs,GL 33 STAIRS 5 & 18,,PRE - CON / BUYOUT / IMPACTS,,STAIRS,JAMES LIVELY,INTERIORS,2024-05-13 07:00,2024-06-06 17:00,2024-02-01 07:00,2024-03-06 17:00,2025-11-20 17:00,2025-11-20 17:00,2025-12-04 07:00,2025-12-04 07:00,0,140,100
INT.P1.Stairs.1320,IMPACT [S24] - FABRICATE AND DELIVERY - METAL STAIR 50 - SWB5,Complete,PRE CONSTRUCTION,West Support Building,Stairs,GL 33 STAIRS 5 & 18,,PRE - CON / BUYOUT / IMPACTS,,STAIRS,JAMES LIVELY,INTERIORS,2024-06-03 07:00,2024-07-19 17:00,2024-03-07 07:00,2024-05-13 17:00,2025-11-20 17:00,2025-11-20 17:00,2025-12-04 07:00,2025-12-04 07:00,0,280,100
SUW.ELEV3.1,IMPACT [C4] - ELEVATOR 3 PIT - L17 CIP COLUMN CLASH (C4) - SOUTH PIT - SUW,Complete,PRE CONSTRUCTION,South Areas (Team A - Gridlines 3-17),CONCRETE SLABS,L1 - Fndn Slab,,PRE - CON / BUYOUT / IMPACTS,,Pour Concrete,JAMES LEE,,2023-11-20 07:00,2023-11-30 13:00,2023-11-08 07:00,2023-12-15 09:00,2025-11-20 17:00,2025-11-20 17:00,2025-11-24 07:00,2025-11-24 07:00,0,56,100
INT.P1.Stairs.1330,IMPACT [C13 / ST3] - DESIGN CHANGE DRB 3 - METAL STAIR 50 - SWB5,Complete,PRE CONSTRUCTION,West Support Building,Stairs,GL 33 STAIRS 5 & 18,,PRE - CON / BUYOUT / IMPACTS,,STAIRS,JAMES LIVELY,INTERIORS,2024-02-05 07:00,2024-02-14 17:00,2023-11-16 07:00,2024-01-09 00:00,2025-11-20 17:00,2025-11-20 17:00,2025-12-04 07:00,2025-12-04 07:00,0,80,100
ELEVHSSALL,IMPACT [S9] - BOLTED HSS CONNECTION AT BOTTOM OF PIT - ALL ELEVATORS,Complete,PRE CONSTRUCTION,,ELEVATORS,L1 - Fndn Slab,,PRE - CON / BUYOUT / IMPACTS,,Steel Erector - W&W,,,2024-01-22 07:00,2024-01-29 17:00,2024-01-16 07:00,2024-03-04 09:00,2025-11-20 17:00,2025-11-20 17:00,2025-10-16 07:00,2025-10-16 07:00,0,80,100
INT.P1.FP.1210,IMPACT - STOP WORK - RAIN WATER INTRUSION - Fireproofing,Complete,PRE CONSTRUCTION,Support Building Overall,Fireproofing,FIREPROOFING,,PRE - CON / BUYOUT / IMPACTS,,Fireproofing,HOON WOO,INTERIORS,2024-02-10 08:00,2024-02-18 08:00,2024-01-31 08:00,2024-02-24 17:00,2025-11-20 17:00,2025-11-20 17:00,2025-06-13 08:00,2025-06-13 08:00,0,80,100
INT.P1.Gypsum.1200,IMPACT - STOP WORK - RAIN WATER INTRUSION - DRYWALL,Complete,PRE CONSTRUCTION,Support Building Overall,Gypsum,FRAMING/ DRYWALL GYPSUM,,PRE - CON / BUYOUT / IMPACTS,,DRYWALL,AMBER CARO,INTERIORS,2024-02-19 07:00,2024-03-18 11:00,2024-01-31 00:00,2024-02-27 00:00,2025-11-20 17:00,2025-11-20 17:00,2025-06-13 08:00,2025-06-13 08:00,0,224,100
INT.P1.Stairs.1340,PH1- METAL STAIR 18 Fab / Deliver - SEB5,Complete,PRE CONSTRUCTION,West Support Building,Stairs,GL 33 STAIRS 5 & 18,,PRE - CON / BUYOUT / IMPACTS,,STAIRS,JAMES LIVELY,INTERIORS,2024-03-25 07:00,2024-04-29 17:00,2024-03-18 07:00,2024-04-01 17:00,2025-11-20 17:00,2025-11-20 17:00,2025-11-03 07:00,2025-11-03 07:00,0,240,100
INT.P1.Stairs.1350,PH1- METAL STAIR 5 Fab / Deliver - SWB5,Complete,PRE CONSTRUCTION,West Support Building,Stairs,GL 33 STAIRS 5 & 18,,PRE - CON / BUYOUT / IMPACTS,,STAIRS,JAMES LIVELY,INTERIORS,2024-03-09 14:00,2024-04-11 14:00,2024-02-16 14:00,2024-02-24 13:00,2025-11-20 17:00,2025-11-20 17:00,2025-11-03 07:00,2025-11-03 07:00,0,240,100
INT.P1.Stairs.1360,IMPACT [F1 / F8 / F12 / F44 / F47 / F49 / F52 / F26 / F36] - METAL STAIR 5 & 18 REDESIGN,Complete,PRE CONSTRUCTION,West Support Building,Stairs,GL 33 STAIRS 5 & 18,,PRE - CON / BUYOUT / IMPACTS,,STAIRS,JAMES LIVELY,INTERIORS,2024-02-05 07:00,2024-02-19 13:00,2023-11-16 07:00,2024-02-10 16:00,2025-11-20 17:00,2025-11-20 17:00,2025-11-03 07:00,2025-11-03 07:00,0,136,100
INT.P1.Stairs.1370,JACOBS REVIEW / APPROVE - SHOP DRAWINGS - STAIR 5 & 18 REDESIGN,Complete,PRE CONSTRUCTION,West Support Building,Stairs,GL 33 STAIRS 5 & 18,,PRE - CON / BUYOUT / IMPACTS,,STAIRS,JAMES LIVELY,INTERIORS,2024-03-04 07:00,2024-03-09 13:00,2024-02-12 07:00,2024-02-16 14:00,2025-11-20 17:00,2025-11-20 17:00,2025-11-03 07:00,2025-11-03 07:00,0,56,100
INT.P1.Stairs.1400,IMPACT [ST15 / ST16] - ON HOLE DRB-004 Drawings - Stairs R41 & R42- Deleated from Yates scope,Complete,PRE CONSTRUCTION,Support Building Overall,Stairs,GL 33 STAIRS 5 & 18,,PRE - CON / BUYOUT / IMPACTS,PATRIOT,STAIRS,JAMES LIVELY,INTERIORS,2024-02-05 07:00,2024-02-20 09:00,2024-01-26 07:00,2024-07-11 17:00,2025-11-20 17:00,2025-11-20 17:00,2025-10-27 09:00,2025-10-27 09:00,0,112,100
ELEVHSS280,IMPACT [S25] - ELEVATOR 19 (Ellis) - YATES RFI 1275/SECAI RFI 6807 - FINAL DESIGN SHOP DRAWING APPROVAL,Complete,PRE CONSTRUCTION,,ELEVATORS,L1 - Fndn Slab,,PRE - CON / BUYOUT / IMPACTS,W&W,Steel Erector - W&W,,,2024-01-25 07:00,2024-02-05 17:00,2024-02-12 07:00,2024-05-02 17:00,2025-11-20 17:00,2025-11-20 17:00,2025-12-02 07:00,2025-12-02 07:00,0,80,100
ELEVHSSALL10,IMPACT [S.TIA-44] - ELEVATOR 2 PIT - 1H PLATFORM - SWA3 - GL 12-9,Complete,PRE CONSTRUCTION,,ELEVATORS,L1 - Fndn Slab,,PRE - CON / BUYOUT / IMPACTS,,Steel Erector - W&W,,,2024-03-04 08:00,2024-04-02 12:00,2024-02-01 07:00,2024-02-14 09:00,2025-11-20 17:00,2025-11-20 17:00,2025-12-02 07:00,2025-12-02 07:00,0,174,100
ELEVHSSALL20,IMPACT - ELEVATOR 3 - TOP CONNECTION RFI 6384 PROCUREMENT - GL 16-17 L-M,Complete,PRE CONSTRUCTION,,ELEVATORS,L1 - Fndn Slab,,PRE - CON / BUYOUT / IMPACTS,,Steel Erector - W&W,,,2024-03-01 09:00,2024-03-22 11:00,2024-02-16 09:00,2024-03-25 14:00,2025-11-20 17:00,2025-11-20 17:00,2025-11-24 07:00,2025-11-24 07:00,0,112,100
STOP.WAF.IMP10,IMPACT - STOP WORK NOTICE WAFFLE COATING - ALL AREAS,Complete,PRE CONSTRUCTION,,PRECAST,L3 / Waffle Slab Level,,PRE - CON / BUYOUT / IMPACTS,,TBD Architectural Finishes,,,2024-02-19 07:00,2024-02-27 17:00,2024-02-15 07:00,2024-02-29 17:00,2025-11-20 17:00,2025-11-20 17:00,2025-12-05 17:00,2025-12-05 17:00,0,80,100
INT.P1.FP.1220,IMPACT - DS TEMPORARY GRATING PLATFORMS - Fireproofing,Complete,PRE CONSTRUCTION,Support Building Overall,Fireproofing,FIREPROOFING,,PRE - CON / BUYOUT / IMPACTS,,Fireproofing,HOON WOO,INTERIORS,2024-02-26 07:00,2024-03-05 17:00,2024-02-22 07:00,2024-02-28 12:00,2025-11-20 17:00,2025-11-20 17:00,2025-06-13 08:00,2025-06-13 08:00,0,80,100
PENET1200,IMPACT - WWSE CONTRACT & MOBILIZE - SOMD PENETRATIONS SUE-SUW,Complete,PRE CONSTRUCTION,,STEEL,FABRICATE / DELIVER,,PRE - CON / BUYOUT / IMPACTS,,Steel Fabricator - W&W,SEAN MONK,,2024-03-04 07:00,2024-03-04 11:00,2024-02-26 07:00,2024-03-11 17:00,2025-11-20 17:00,2025-11-20 17:00,2025-08-26 07:00,2025-08-26 07:00,0,4,100
INT.P1.FP.1230,IMPACT - STOP WORK - RFI # CHANGED SFRM2 MATERIAL - Fireproofing,Complete,PRE CONSTRUCTION,Support Building Overall,Fireproofing,FIREPROOFING,,PRE - CON / BUYOUT / IMPACTS,,Fireproofing,HOON WOO,INTERIORS,2024-02-10 08:00,2024-02-18 08:00,2024-02-13 07:30,2024-02-24 17:00,2025-11-20 17:00,2025-11-20 17:00,2025-06-13 08:00,2025-06-13 08:00,0,80,100
INT.P1.Gypsum.1210,IMPACT - REMEDY - CCD#327 APACHE DRYWALL DEMO #324 MKMarlow Re Install #281/ 307 BERG #314 Apache scaffold,Complete,PRE CONSTRUCTION,Support Building Overall,Gypsum,FRAMING/ DRYWALL GYPSUM,,PRE - CON / BUYOUT / IMPACTS,,DRYWALL,AMBER CARO,INTERIORS,2024-02-19 07:00,2024-03-18 11:00,2024-05-13 00:00,2024-05-28 00:00,2025-11-20 17:00,2025-11-20 17:00,2025-11-13 17:00,2025-11-13 17:00,0,224,100
INT.P2.WDP.1370,FIELD MEASURE FOR WALL PROTECTION - ALL LOCATIONS,Complete,PRE CONSTRUCTION,Support Building Overall,Wall / Door Protection - DIV10,WALL & DOOR PROTECTION,,PRE - CON / BUYOUT / IMPACTS,SECAI,DOORS & HARDWARE - INTERIOR,JAMES LEE,INTERIORS,2025-03-10 07:00,2025-03-13 17:00,2025-02-13 07:00,2025-02-15 17:00,2025-11-20 17:00,2025-11-20 17:00,2025-11-24 07:00,2025-11-24 07:00,0,40,100
IMP.DH&HW.1280,IMPACT - Y_SBMT 0626 - PREP & SUBMIT AUTOMATIC ALUMINUM SLIDING DOOR DA-1 SHOP DRAWINGS,Complete,PRE CONSTRUCTION,Support Building Overall,Doors & Hardware - INTERIOR,DOORS & HARDWARE INTERIOR,,PRE - CON / BUYOUT / IMPACTS,SECAI,DOORS & HARDWARE - INTERIOR,AMBER CARO,INTERIORS,2023-11-30 07:00,2023-12-15 17:00,2024-05-22 07:00,2024-06-11 17:00,2025-11-20 17:00,2025-11-20 17:00,2025-12-05 17:00,2025-12-05 17:00,0,100,100
IMP.DH&HW.1290,IMPACT - Y_SBMT 0626 - SECAI REVIEW AUTOMATIC ALUMINUM SLIDING DOOR - DA-1 SHOP DRAWINGS - REVISE & RESUBMIT,Complete,PRE CONSTRUCTION,Support Building Overall,Doors & Hardware - INTERIOR,DOORS & HARDWARE INTERIOR,,PRE - CON / BUYOUT / IMPACTS,SECAI,DOORS & HARDWARE - INTERIOR,AMBER CARO,INTERIORS,2023-11-30 07:00,2023-12-15 17:00,2024-06-12 07:00,2024-06-20 17:00,2025-11-20 17:00,2025-11-20 17:00,2025-12-05 17:00,2025-12-05 17:00,0,100,100
IMP.DH&HW.1300,IMPACT - Y_SBMT 0626 - Submit Re-Submit AUTOMATIC ALUMINUM SLIDING DOOR - DA-1 SHOP DRAWINGS - R1-R4,Complete,PRE CONSTRUCTION,Support Building Overall,Doors & Hardware - INTERIOR,DOORS & HARDWARE INTERIOR,,PRE - CON / BUYOUT / IMPACTS,SECAI,DOORS & HARDWARE - INTERIOR,AMBER CARO,INTERIORS,2024-06-28 07:00,2024-07-16 17:00,2024-06-21 07:00,2025-04-07 11:00,2025-11-20 17:00,2025-11-20 17:00,2025-12-05 17:00,2025-12-05 17:00,0,100,100
IMP.DH&HW.1310,IMPACT - Y_SBMT 0626 - SECAI REVIEW & APPROVE AUTOMATIC ALUMINUM SLIDING DOOR - DA-1 SHOP DRAWINGS - R1-R4,Complete,PRE CONSTRUCTION,Support Building Overall,Doors & Hardware - INTERIOR,DOORS & HARDWARE INTERIOR,,PRE - CON / BUYOUT / IMPACTS,SECAI,DOORS & HARDWARE - INTERIOR,AMBER CARO,INTERIORS,2025-08-19 11:00,2025-09-03 11:00,2024-10-02 11:00,2025-04-23 11:00,2025-11-20 17:00,2025-11-20 17:00,2025-12-05 17:00,2025-12-05 17:00,0,100,100
IMP.DH&HW.1320,IMPACT - Y_SBMT 0626 - FABRICATE / DELIVER AUTOMATIC ALUMINUM DOORS DA-1 - CLEAN ROOMS (14-16 WEEK LEADTIME),Complete,PRE CONSTRUCTION,Support Building Overall,Doors & Hardware - INTERIOR,DOORS & HARDWARE INTERIOR,,PRE - CON / BUYOUT / IMPACTS,SECAI,DOORS & HARDWARE - INTERIOR,AMBER CARO,INTERIORS,2025-09-03 11:00,2025-10-08 11:00,2024-06-12 11:00,2024-10-04 11:00,2025-11-20 17:00,2025-11-20 17:00,2025-12-05 17:00,2025-12-05 17:00,0,250,100
INT.P1.T&F.1220,IMPACT - REMEDY - APPROVAL CCD #368 REMEDY TAPE & FINISH,Complete,PRE CONSTRUCTION,Support Building Overall,Gypsum,FRAMING/ DRYWALL GYPSUM,,PRE - CON / BUYOUT / IMPACTS,,DRYWALL,AMBER CARO,INTERIORS,2024-02-19 07:00,2024-03-18 11:00,2024-06-11 00:00,2024-07-11 17:00,2025-11-20 17:00,2025-11-20 17:00,2025-10-21 07:00,2025-10-21 07:00,0,224,100
INT.P1.T&F.1230,IMPACT - REMEDY - YATES SUBMIT CCD #368 REMEDY DRYWALL TAPE & FINISH,Complete,PRE CONSTRUCTION,Support Building Overall,Gypsum,FRAMING/ DRYWALL GYPSUM,,PRE - CON / BUYOUT / IMPACTS,,DRYWALL,AMBER CARO,INTERIORS,2024-02-19 07:00,2024-03-18 11:00,2024-06-03 00:00,2024-06-10 07:00,2025-11-20 17:00,2025-11-20 17:00,2025-10-21 07:00,2025-10-21 07:00,0,224,100
L.DOCK.1150,IMPACT - LOADING DOCK- PENDING SECAI TO ACCESS THE AREAS.,Complete,PRE CONSTRUCTION,West Support Building,CONCRETE SLABS,LOADING DOCK,,PRE - CON / BUYOUT / IMPACTS,,TBD Architectural Finishes,JAMES LIVELY,INTERIORS,2024-01-02 09:00,2024-01-04 16:00,2024-08-23 08:00,2024-12-02 08:00,2025-11-20 17:00,2025-11-20 17:00,2025-09-04 07:00,2025-09-04 07:00,0,24,100
INT.P1.DH&HW.1280,INTERIOR OVERHEAD COILING DOORS - CCD Negotiation,Complete,PRE CONSTRUCTION,Support Building Overall,Doors & Hardware - OVERHEAD,DOORS & HARDWARE OVERHEAD,,PRE - CON / BUYOUT / IMPACTS,,DOORS & HARDWARE - OVERHEAD,AMBER CARO,INTERIORS,2023-11-27 07:00,2023-12-16 15:00,2024-11-11 07:00,2024-12-19 11:00,2025-11-20 17:00,2025-11-20 17:00,2025-11-26 07:00,2025-11-26 07:00,0,168,100
INT.P1.DH&HW.1290,INTERIOR OVERHEAD COILING DOORS - SAS Redesign - confirmed 1/6/25,Complete,PRE CONSTRUCTION,Support Building Overall,Doors & Hardware - OVERHEAD,DOORS & HARDWARE OVERHEAD,,PRE - CON / BUYOUT / IMPACTS,,DOORS & HARDWARE - OVERHEAD,AMBER CARO,INTERIORS,2023-11-27 07:00,2023-12-16 15:00,2024-12-18 07:00,2025-01-06 11:00,2025-11-20 17:00,2025-11-20 17:00,2025-11-26 07:00,2025-11-26 07:00,0,168,100
INT.P1.DH&HW.1300,IMPACT - INTERIOR OVERHEAD COILING DOORS - UNDER REDESIGN - Y-1356 -SHOP DWGS R1 -R2 - REVIEW AND APPROVAL,Complete,PRE CONSTRUCTION,Support Building Overall,Doors & Hardware - OVERHEAD,DOORS & HARDWARE OVERHEAD,,PRE - CON / BUYOUT / IMPACTS,,DOORS & HARDWARE - OVERHEAD,AMBER CARO,INTERIORS,2023-11-27 07:00,2023-12-16 15:00,2025-01-13 07:00,2025-05-30 10:00,2025-11-20 17:00,2025-11-20 17:00,2025-11-26 07:00,2025-11-26 07:00,0,168,100
INT.P1.DH&HW.1310,INTERIOR OVERHEAD COILING DOORS - RFI ISSUED / ANWERED,Complete,PRE CONSTRUCTION,Support Building Overall,Doors & Hardware - OVERHEAD,DOORS & HARDWARE OVERHEAD,,PRE - CON / BUYOUT / IMPACTS,,DOORS & HARDWARE - OVERHEAD,AMBER CARO,INTERIORS,2023-11-27 07:00,2023-12-16 15:00,2025-01-06 07:00,2025-01-10 11:00,2025-11-20 17:00,2025-11-20 17:00,2025-11-26 07:00,2025-11-26 07:00,0,168,100
INT.P1.DH&HW.1320,IMPACT - INTERIOR OVERHEAD COILING DOORS - UNDER REDESIGN - FABRICATION LEAD TIME,Complete,PRE CONSTRUCTION,Support Building Overall,Doors & Hardware - OVERHEAD,DOORS & HARDWARE OVERHEAD,,PRE - CON / BUYOUT / IMPACTS,,DOORS & HARDWARE - OVERHEAD,AMBER CARO,INTERIORS,2025-08-20 07:00,2025-09-29 17:00,2025-06-02 07:00,2025-08-08 17:00,2025-11-20 17:00,2025-11-20 17:00,2025-11-26 07:00,2025-11-26 07:00,0,400,100
A1000,DRYWALL SCOPE SUBSTANTIAL COMPLETION,Not Started,Remobilization and Out-of-Sequence Completion List - DD07-10-2025,,,,,,,,,,2025-12-22 17:00,2025-12-22 17:00,,,2025-12-22 17:00,2025-12-22 17:00,2025-12-05 17:00,2025-12-05 17:00,0,0,0
A2000,ALL YATES DOOR FRAME INSPECTION - FAB110110B - turnover frames to SECAI to install,Complete,Remobilization and Out-of-Sequence Completion List - DD07-10-2025,,,,,,,,,,2025-06-20 08:00,2025-07-21 17:00,2025-06-20 08:00,2025-08-28 17:00,2025-11-20 17:00,2025-11-20 17:00,2025-11-11 08:00,2025-11-11 08:00,0,176,100
MS.SECAI.GC,SECAI - CONDITION BUILDING - drives door paint,Complete,Remobilization and Out-of-Sequence Completion List - DD07-10-2025,,,,,,,,,,2025-08-15 08:00,2025-08-15 17:00,2025-08-15 08:00,2025-08-15 17:00,2025-11-20 17:00,2025-11-20 17:00,2025-06-13 08:00,2025-06-13 08:00,0,8,100
FAB1-A1010,DOORS SCOPE SUBSTANTIAL COMPLETION - SCP Panels L1 FIZ driving,Not Started,Remobilization and Out-of-Sequence Completion List - DD07-10-2025,,,,,,,,,,2026-05-15 17:00,2026-05-15 17:00,,,2026-05-15 17:00,2026-05-15 17:00,2025-12-05 17:00,2025-12-05 17:00,0,0,0
IMPACT2 - constraint,IMPACT - RFI 1779/1781/1835 DOOR THRESHOLD AND WP - SHOP DWG - ALL LEVEL 4 EXTERIOR DOORS,Complete,Remobilization and Out-of-Sequence Completion List - DD07-10-2025,,,,,,,,,,2025-06-20 08:00,2025-07-17 17:00,2025-05-27 08:00,2025-09-23 08:00,2025-11-20 17:00,2025-11-20 17:00,2025-11-20 10:00,2025-11-20 10:00,0,160,100
IMPACT1 - constraint,IMPACT - PENDING CLADDING MODIFICATION (DBLE DOORS) & CABINET DOORS,Complete,Remobilization and Out-of-Sequence Completion List - DD07-10-2025,,,,,,,,,,2025-06-20 08:00,2025-07-17 16:00,2025-06-20 08:00,2025-08-22 08:00,2025-11-20 17:00,2025-11-20 17:00,2025-11-03 10:00,2025-11-03 10:00,0,160,100
ZX-4330,Complete Drywall & Inspect - Elevator #22 - FAB1 - 2F,Complete,Elevator 22 - 2F -SUE-FAB1-EL22,,,,,,,,,,2025-08-01 08:00,2025-08-14 17:00,2025-07-16 08:00,2025-07-25 17:00,2025-11-20 17:00,2025-11-20 17:00,2025-12-05 17:00,2025-12-05 17:00,0,80,100
ZX-4340,Complete Fire Caulk & Inspect - Elevator #22 - FAB1 - 2F,Complete,Elevator 22 - 2F -SUE-FAB1-EL22,,,,,,,,,,2025-09-11 08:00,2025-09-12 17:00,2025-09-11 08:00,2025-09-12 17:00,2025-11-20 17:00,2025-11-20 17:00,2025-12-05 17:00,2025-12-05 17:00,0,16,100
ZX-4350,Complete Control Joint & Inspect - Elevator #22 - FAB1 - 2F,Complete,Elevator 22 - 2F -SUE-FAB1-EL22,,,,,,,,,,2025-08-04 08:00,2025-08-05 17:00,2025-07-28 08:00,2025-07-28 17:00,2025-11-20 17:00,2025-11-20 17:00,2025-12-05 17:00,2025-12-05 17:00,0,16,100
1.4,PRIORITY 1 - LEVEL 4,Not Started,LEVEL 4,,,,,,,,,,2025-11-24 17:00,2025-11-24 17:00,,,2025-11-24 17:00,2025-11-24 17:00,2025-12-05 17:00,2025-12-05 17:00,0,0,0
2.4,PRIORITY 2 - LEVEL 4,Not Started,LEVEL 4,,,,,,,,,,2025-11-20 17:00,2025-11-20 17:00,,,2025-11-20 17:00,2025-11-20 17:00,2025-12-05 17:00,2025-12-05 17:00,0,0,0
3.4,PRIORITY 3 - LEVEL 4,Not Started,LEVEL 4,,,,,,,,,,2025-11-20 17:00,2025-11-20 17:00,,,2025-11-20 17:00,2025-11-20 17:00,2025-12-05 17:00,2025-12-05 17:00,0,0,0
4.4,PRIORITY 4 - LEVEL 4,Not Started,LEVEL 4,,,,,,,,,,2025-11-20 17:00,2025-11-20 17:00,,,2025-11-20 17:00,2025-11-20 17:00,2025-12-05 17:00,2025-12-05 17:00,0,0,0
5.4,PRIORITY 5 - LEVEL 4,Not Started,LEVEL 4,,,,,,,,,,2025-11-20 17:00,2025-11-20 17:00,,,2025-11-20 17:00,2025-11-20 17:00,2025-12-05 17:00,2025-12-05 17:00,0,0,0
ZX-11710,Complete Drywall & Inspect - 4F-D/3-33 West Face,Complete,4F-D/3-33 West Face - 4F - SUE,,,,,,,,,,2025-08-25 08:00,2025-09-12 17:00,2025-08-25 08:00,2025-09-08 17:00,2025-11-20 17:00,2025-11-20 17:00,2025-12-05 17:00,2025-12-05 17:00,0,120,100
ZX-11720,Complete Fire Caulk & Inspect - 4F-D/3-33 West Face,Complete,4F-D/3-33 West Face - 4F - SUE,,,,,,,,,,2025-09-04 08:00,2025-09-09 17:00,2025-09-04 08:00,2025-09-09 17:00,2025-11-20 17:00,2025-11-20 17:00,2025-12-05 17:00,2025-12-05 17:00,0,32,100
ZX-11730,Complete Control Joint & Inspect - 4F-D/3-33 West Face,Complete,4F-D/3-33 West Face - 4F - SUE,,,,,,,,,,2025-09-03 08:00,2025-09-08 17:00,2025-09-03 08:00,2025-09-08 17:00,2025-11-20 17:00,2025-11-20 17:00,2025-12-05 17:00,2025-12-05 17:00,0,32,100
ZX-11830,Complete Drywall & Inspect - Duct Shaft - 4F-SUE-FAB146103,Complete,Duct Shaft - 4F -SUE-FAB146103,,,,,,,,,,2025-09-02 08:00,2025-09-08 17:00,2025-09-02 08:00,2025-09-08 17:00,2025-11-20 17:00,2025-11-20 17:00,2025-12-05 17:00,2025-12-05 17:00,0,40,100
ZX-11840,Complete Fire Caulk & Inspect - Duct Shaft - 4F-SUE-FAB146103,Complete,Duct Shaft - 4F -SUE-FAB146103,,,,,,,,,,2025-10-02 08:00,2025-10-03 17:00,2025-10-02 08:00,2025-10-03 17:00,2025-11-20 17:00,2025-11-20 17:00,2025-12-05 17:00,2025-12-05 17:00,0,16,100
ZX-13900,Complete Drywall & Inspect - MCC Rm - 4F-SUE-FAB146106 NON RATED,Complete,MCC Rm - 4F -SUE-FAB146106,,,,,,,,,,2025-06-18 08:00,2025-07-01 17:00,2025-06-10 08:00,2025-09-08 08:00,2025-11-20 17:00,2025-11-20 17:00,2025-11-24 10:00,2025-11-24 10:00,0,80,100
ZX-13920,Complete Control Joint & Inspect - MCC Rm - 4F-SUE-FAB146106,Complete,MCC Rm - 4F -SUE-FAB146106,,,,,,,,,,2025-06-27 08:00,2025-07-01 17:00,2025-06-27 08:00,2025-07-01 16:00,2025-11-20 17:00,2025-11-20 17:00,2025-11-24 10:00,2025-11-24 10:00,0,24,100
FAB146106A-03,INSTALL DOOR FRAMES - FAB146106A,Not Started,MCC Rm - 4F -SUE-FAB146106,,,,,,,,,,2025-11-21 08:00,2025-11-21 17:00,,,2025-11-21 08:00,2025-11-21 17:00,2025-11-24 10:00,2025-11-25 10:00,8,8,0
FAB146106A-04,INSTALL DOOR & HARDWARE - FAB146106A,Not Started,MCC Rm - 4F -SUE-FAB146106,,,,,,,,,,2025-11-24 08:00,2025-11-28 17:00,,,2025-11-24 08:00,2025-11-28 17:00,2025-11-25 10:00,2025-12-02 10:00,40,40,0
FAB146106A-05,PAINT & PROTECT DOORS & FRAMES -  FAB146106A,Not Started,MCC Rm - 4F -SUE-FAB146106,,,,,,,,,,2026-02-16 08:00,2026-02-19 15:00,,,2026-02-16 08:00,2026-02-19 15:00,2025-12-02 10:00,2025-12-05 17:00,30,30,0
FAB146106B-03,INSTALL DOOR FRAMES - FAB146106B,Complete,MCC Rm - 4F -SUE-FAB146106,,,,,,,,,,2025-11-13 08:00,2025-11-13 17:00,2025-11-13 08:00,2025-11-13 17:00,2025-11-20 17:00,2025-11-20 17:00,2025-11-25 10:00,2025-11-25 10:00,0,8,100
FAB146106B-04,INSTALL DOOR & HARDWARE - FAB146106B,Not Started,MCC Rm - 4F -SUE-FAB146106,,,,,,,,,,2025-11-21 08:00,2025-11-27 17:00,,,2025-11-21 08:00,2025-11-27 17:00,2025-11-25 10:00,2025-12-02 10:00,40,40,0
FAB146106B-05,PAINT & PROTECT DOORS & FRAMES -  FAB146106B,Not Started,MCC Rm - 4F -SUE-FAB146106,,,,,,,,,,2026-02-16 08:00,2026-02-19 15:00,,,2026-02-16 08:00,2026-02-19 15:00,2025-12-02 10:00,2025-12-05 17:00,30,30,0
ZX-18870,IMPACT - SCAFFOLD NEEDED BY BERG - MCC Rm - 4F-SUE-FAB146106,Complete,MCC Rm - 4F -SUE-FAB146106,,,,,,,,,,2025-07-01 08:00,2025-07-14 17:00,2025-07-01 08:00,2025-08-29 17:00,2025-11-20 17:00,2025-11-20 17:00,2025-11-24 10:00,2025-11-24 10:00,0,80,100
ZX-13510,Complete Drywall & Inspect - I/O Rm 1-4FSUE-FAB146107 NON RATED WALLS,Complete,I/O Rm 1 - 4F- SUE-FAB146107,,,,,,,,,,2025-06-18 08:00,2025-06-26 17:00,2025-06-10 08:00,2025-06-19 16:00,2025-11-20 17:00,2025-11-20 17:00,2025-11-21 10:00,2025-11-21 10:00,0,56,100
ZX-13530,Complete Control Joint & Inspect - I/O Rm 1-4FSUE-FAB146107,Complete,I/O Rm 1 - 4F- SUE-FAB146107,,,,,,,,,,2025-06-17 08:00,2025-06-18 17:00,2025-06-17 08:00,2025-06-19 16:00,2025-11-20 17:00,2025-11-20 17:00,2025-11-21 10:00,2025-11-21 10:00,0,16,100
FAB146107A-03,INSTALL DOOR FRAMES - FAB146107A,Not Started,I/O Rm 1 - 4F- SUE-FAB146107,,,,,,,,,,2025-12-01 08:00,2025-12-02 17:00,,,2025-12-01 08:00,2025-12-02 17:00,2025-11-21 10:00,2025-11-25 10:00,16,16,0
FAB146107A-04,INSTALL DOOR & HARDWARE - FAB146107A,Not Started,I/O Rm 1 - 4F- SUE-FAB146107,,,,,,,,,,2025-12-03 08:00,2025-12-09 17:00,,,2025-12-03 08:00,2025-12-09 17:00,2025-11-25 10:00,2025-12-02 10:00,40,40,0
FAB146107A-05,PAINT & PROTECT DOORS & FRAMES -  FAB146107A,Not Started,I/O Rm 1 - 4F- SUE-FAB146107,,,,,,,,,,2026-02-16 08:00,2026-02-19 15:00,,,2026-02-16 08:00,2026-02-19 15:00,2025-12-02 10:00,2025-12-05 17:00,30,30,0
FAB146107A-30,IMPACT - SECAI LAYDOWN FOR DOORS AND FRAMES - FAB146107A,Active,I/O Rm 1 - 4F- SUE-FAB146107,,,,,,,,,,2025-07-09 08:00,2025-07-15 17:00,2025-07-09 08:00,,2025-11-21 08:00,2025-11-28 17:00,2025-11-13 10:00,2025-11-21 10:00,48,40,0
ZX-11860,Complete Drywall & Inspect - Elevator #22 - 4F-1FAB-EL22,Complete,Elevator 22 - 4F -SUE-FAB1-EL22,,,,,,,,,,2025-08-01 08:00,2025-08-14 17:00,2025-08-01 08:00,2025-08-08 17:00,2025-11-20 17:00,2025-11-20 17:00,2025-12-05 17:00,2025-12-05 17:00,0,80,100
ZX-11870,Complete Fire Caulk & Inspect - Elevator #22 - 4F-1FAB-EL22,Complete,Elevator 22 - 4F -SUE-FAB1-EL22,,,,,,,,,,2025-09-02 08:00,2025-09-03 17:00,2025-09-02 08:00,2025-09-03 17:00,2025-11-20 17:00,2025-11-20 17:00,2025-12-05 17:00,2025-12-05 17:00,0,16,100
ZX-11880,Complete Control Joint & Inspect - Elevator #22 - 4F-1FAB-EL22,Complete,Elevator 22 - 4F -SUE-FAB1-EL22,,,,,,,,,,2025-09-02 08:00,2025-09-03 17:00,2025-09-02 08:00,2025-09-03 17:00,2025-11-20 17:00,2025-11-20 17:00,2025-12-05 17:00,2025-12-05 17:00,0,16,100
ZX-11980,Complete Drywall & Inspect - Elevator Hall #22 - 4F-FAB146105,Complete,Elevator Hall 22 - 4F -SUE-FAB146105,,,,,,,,,,2025-09-02 08:00,2025-09-08 17:00,2025-09-02 08:00,2025-09-08 17:00,2025-11-20 17:00,2025-11-20 17:00,2025-11-24 10:00,2025-11-24 10:00,0,40,100
ZX-11990,Complete Fire Caulk & Inspect - Elevator Hall #22 - 4F-FAB146105,Complete,Elevator Hall 22 - 4F -SUE-FAB146105,,,,,,,,,,2025-09-08 08:00,2025-09-09 17:00,2025-09-08 08:00,2025-09-09 17:00,2025-11-20 17:00,2025-11-20 17:00,2025-12-05 17:00,2025-12-05 17:00,0,16,100
ZX-12000,Complete Control Joint & Inspect - Elevator Hall #22 - 4F-FAB146105,Complete,Elevator Hall 22 - 4F -SUE-FAB146105,,,,,,,,,,2025-09-29 08:00,2025-09-30 17:00,2025-09-29 08:00,2025-09-30 17:00,2025-11-20 17:00,2025-11-20 17:00,2025-11-24 10:00,2025-11-24 10:00,0,16,100
FAB146105A-01,INSTALL DOOR FRAMES - FAB146105A,Not Started,Elevator Hall 22 - 4F -SUE-FAB146105,,,,,,,,,,2025-12-10 08:00,2025-12-10 17:00,,,2025-12-10 08:00,2025-12-10 17:00,2025-11-21 10:00,2025-11-24 10:00,8,8,0
FAB146105A-04,INSTALL DOOR & HARDWARE - FAB146105A,Not Started,Elevator Hall 22 - 4F -SUE-FAB146105,,,,,,,,,,2025-12-12 08:00,2025-12-18 17:00,,,2025-12-12 08:00,2025-12-18 17:00,2025-11-25 10:00,2025-12-02 10:00,40,40,0
FAB146105A-05,PAINT & PROTECT DOORS & FRAMES -  FAB146105A,Not Started,Elevator Hall 22 - 4F -SUE-FAB146105,,,,,,,,,,2026-02-16 08:00,2026-02-19 15:00,,,2026-02-16 08:00,2026-02-19 15:00,2025-12-02 10:00,2025-12-05 17:00,30,30,0
FAB146105D-03,INSTALL DOOR FRAMES - FAB146105D,Not Started,Elevator Hall 22 - 4F -SUE-FAB146105,,,,,,,,,,2025-11-28 08:00,2025-11-28 17:00,,,2025-11-28 08:00,2025-11-28 17:00,2025-11-24 10:00,2025-11-25 10:00,8,8,0
FAB146105D-04,INSTALL DOOR & HARDWARE - FAB146105D,Not Started,Elevator Hall 22 - 4F -SUE-FAB146105,,,,,,,,,,2025-12-01 08:00,2025-12-05 17:00,,,2025-12-01 08:00,2025-12-05 17:00,2025-11-25 10:00,2025-12-02 10:00,40,40,0
FAB146105D-05,PAINT & PROTECT DOORS & FRAMES - FAB146105D,Not Started,Elevator Hall 22 - 4F -SUE-FAB146105,,,,,,,,,,2026-02-16 08:00,2026-02-19 15:00,,,2026-02-16 08:00,2026-02-19 15:00,2025-12-02 10:00,2025-12-05 17:00,30,30,0
FAB146105D-11,IMPACT - PROCUREMENT - NEW WALL THICKNESS ISSUE - 146105D,Active,Elevator Hall 22 - 4F -SUE-FAB146105,,,,,,,,,,2025-06-09 08:00,2025-08-21 17:00,2025-06-09 08:00,,2025-11-21 08:00,2025-11-27 17:00,2025-11-17 10:00,2025-11-24 10:00,40,432,0
FAB146109B-01,INSTALL DOOR FRAMES - FAB146109B,Not Started,Elevator Hall 22 - 4F -SUE-FAB146105,,,,,,,,,,2025-12-10 08:00,2025-12-10 17:00,,,2025-12-10 08:00,2025-12-10 17:00,2025-11-21 10:00,2025-11-24 10:00,8,8,0
FAB146109B-04,INSTALL DOOR & HARDWARE - FAB146109B,Not Started,Elevator Hall 22 - 4F -SUE-FAB146105,,,,,,,,,,2025-12-12 08:00,2025-12-18 17:00,,,2025-12-12 08:00,2025-12-18 17:00,2025-11-25 10:00,2025-12-02 10:00,40,40,0
FAB146109C-01,INSTALL DOOR FRAMES - FAB146109C,Not Started,Elevator Hall 22 - 4F -SUE-FAB146105,,,,,,,,,,2025-12-10 08:00,2025-12-10 17:00,,,2025-12-10 08:00,2025-12-10 17:00,2025-11-21 10:00,2025-11-24 10:00,8,8,0
FAB146109C-04,INSTALL DOOR & HARDWARE - FAB146109C,Not Started,Elevator Hall 22 - 4F -SUE-FAB146105,,,,,,,,,,2025-12-12 08:00,2025-12-18 17:00,,,2025-12-12 08:00,2025-12-18 17:00,2025-11-25 10:00,2025-12-02 10:00,40,40,0
FAB146110B-02,INSTALL DOOR FRAMES - FAB146110B,Not Started,Elevator Hall 22 - 4F -SUE-FAB146105,,,,,,,,,,2025-12-10 08:00,2025-12-10 17:00,,,2025-12-10 08:00,2025-12-10 17:00,2025-11-21 10:00,2025-11-24 10:00,8,8,0
FAB146110B-04,INSTALL DOOR & HARDWARE - FAB146110B,Not Started,Elevator Hall 22 - 4F -SUE-FAB146105,,,,,,,,,,2025-12-12 08:00,2025-12-18 17:00,,,2025-12-12 08:00,2025-12-18 17:00,2025-11-25 10:00,2025-12-02 10:00,40,40,0
FAB146109B-05,PAINT & PROTECT DOORS & FRAMES -  FAB146109B,Not Started,Elevator Hall 22 - 4F -SUE-FAB146105,,,,,,,,,,2026-02-16 08:00,2026-02-19 15:00,,,2026-02-16 08:00,2026-02-19 15:00,2025-12-02 10:00,2025-12-05 17:00,30,30,0
FAB146109C-05,PAINT & PROTECT DOORS & FRAMES -  FAB146109C,Not Started,Elevator Hall 22 - 4F -SUE-FAB146105,,,,,,,,,,2026-02-16 08:00,2026-02-19 15:00,,,2026-02-16 08:00,2026-02-19 15:00,2025-12-02 10:00,2025-12-05 17:00,30,30,0
FAB146110B-05,PAINT & PROTECT DOORS & FRAMES -  FAB146110B,Not Started,Elevator Hall 22 - 4F -SUE-FAB146105,,,,,,,,,,2026-02-16 08:00,2026-02-19 15:00,,,2026-02-16 08:00,2026-02-19 15:00,2025-12-02 10:00,2025-12-05 17:00,30,30,0
ZX-12010,Complete Drywall & Inspect - Duct Shaft - 4F-SUE-FAB146101,Complete,Duct Shaft - 4F -SUE-FAB146101,,,,,,,,,,2025-07-28 08:00,2025-08-08 17:00,2025-07-28 08:00,2025-08-08 17:00,2025-11-20 17:00,2025-11-20 17:00,2025-11-25 10:00,2025-11-25 10:00,0,80,100
ZX-12020,Complete Fire Caulk & Inspect - Duct Shaft - 4F-SUE-FAB146101,Complete,Duct Shaft - 4F -SUE-FAB146101,,,,,,,,,,2025-10-02 08:00,2025-10-03 17:00,2025-10-02 08:00,2025-10-03 17:00,2025-11-20 17:00,2025-11-20 17:00,2025-12-05 17:00,2025-12-05 17:00,0,16,100
ZX-12030,Complete Control Joint & Inspect - Duct Shaft - 4F-SUE-FAB146101,Complete,Duct Shaft - 4F -SUE-FAB146101,,,,,,,,,,2025-09-05 08:00,2025-09-08 17:00,2025-09-05 08:00,2025-09-08 17:00,2025-11-20 17:00,2025-11-20 17:00,2025-11-25 10:00,2025-11-25 10:00,0,16,100
FAB146101A-01,IMPACT - INSTALL/REWORK DRYWALL FRAMING AROUND DOORS - FAB146101A,Complete,Duct Shaft - 4F -SUE-FAB146101,,,,,,,,,,2025-05-07 08:00,2025-05-15 17:00,2025-05-07 08:00,2025-05-07 17:00,2025-11-20 17:00,2025-11-20 17:00,2025-11-25 10:00,2025-11-25 10:00,0,56,100
FAB146101A-02,SECAI ROUGH IN/SECURITY -  FAB146101A,Complete,Duct Shaft - 4F -SUE-FAB146101,,,,,,,,,,2025-05-07 08:00,2025-05-07 17:00,2025-05-07 08:00,2025-05-07 17:00,2025-11-20 17:00,2025-11-20 17:00,2025-11-25 10:00,2025-11-25 10:00,0,8,100
FAB146101A-03,INSTALL DOOR FRAMES - FAB146101A,Complete,Duct Shaft - 4F -SUE-FAB146101,,,,,,,,,,2025-08-18 13:00,2025-08-19 12:00,2025-05-07 00:00,2025-05-07 16:00,2025-11-20 17:00,2025-11-20 17:00,2025-11-25 10:00,2025-11-25 10:00,0,8,100
FAB146101A-04,INSTALL DOOR & HARDWARE - FAB146101A,Active,Duct Shaft - 4F -SUE-FAB146101,,,,,,,,,,2025-11-10 08:00,2025-11-14 17:00,2025-11-10 08:00,,2025-11-21 08:00,2025-11-27 17:00,2025-11-25 10:00,2025-12-02 10:00,40,40,0
FAB146101A-05,PAINT & PROTECT DOORS & FRAMES -  FAB146101A,Not Started,Duct Shaft - 4F -SUE-FAB146101,,,,,,,,,,2026-02-16 08:00,2026-02-19 15:00,,,2026-02-16 08:00,2026-02-19 15:00,2025-12-02 10:00,2025-12-05 17:00,30,30,0
FAB146101B-01,IMPACT - INSTALL/REWORK DRYWALL FRAMING AROUND DOORS - FAB146101B,Complete,Duct Shaft - 4F -SUE-FAB146101,,,,,,,,,,2025-05-07 08:00,2025-05-15 17:00,2025-05-07 08:00,2025-05-07 17:00,2025-11-20 17:00,2025-11-20 17:00,2025-11-25 10:00,2025-11-25 10:00,0,56,100
FAB146101B-02,SECAI ROUGH IN/SECURITY -  FAB146101B,Complete,Duct Shaft - 4F -SUE-FAB146101,,,,,,,,,,2025-05-07 08:00,2025-05-07 17:00,2025-05-07 08:00,2025-05-07 17:00,2025-11-20 17:00,2025-11-20 17:00,2025-11-25 10:00,2025-11-25 10:00,0,8,100
FAB146101B-03,INSTALL DOOR FRAMES - FAB146101B,Complete,Duct Shaft - 4F -SUE-FAB146101,,,,,,,,,,2025-08-18 13:00,2025-08-19 12:00,2025-05-07 00:00,2025-05-07 16:00,2025-11-20 17:00,2025-11-20 17:00,2025-11-25 10:00,2025-11-25 10:00,0,8,100
FAB146101B-04,INSTALL DOOR & HARDWARE - FAB146101B,Active,Duct Shaft - 4F -SUE-FAB146101,,,,,,,,,,2025-11-10 08:00,2025-11-14 17:00,2025-11-10 08:00,,2025-11-21 08:00,2025-11-27 17:00,2025-11-25 10:00,2025-12-02 10:00,40,40,0
FAB146101B-05,PAINT & PROTECT DOORS & FRAMES -  FAB146101B,Not Started,Duct Shaft - 4F -SUE-FAB146101,,,,,,,,,,2026-02-16 08:00,2026-02-19 15:00,,,2026-02-16 08:00,2026-02-19 15:00,2025-12-02 10:00,2025-12-05 17:00,30,30,0
ZX-12310,Complete Drywall & CATCHUP Inspect - Fire Alarm 22 - 4F-FAB146102,Complete,Fire Alarm 22 - 4F -SUE-FAB146102,,,,,,,,,,2025-05-16 08:00,2025-05-26 17:00,2025-05-16 08:00,2025-06-16 16:00,2025-11-20 17:00,2025-11-20 17:00,2025-11-25 10:00,2025-11-25 10:00,0,56,100
ZX-12320,Complete Fire Caulk & Inspect - Fire Alarm 22 - 4F-FAB146102,Complete,Fire Alarm 22 - 4F -SUE-FAB146102,,,,,,,,,,2025-06-27 08:00,2025-06-30 17:00,2025-06-27 08:00,2025-06-30 16:00,2025-11-20 17:00,2025-11-20 17:00,2025-12-05 17:00,2025-12-05 17:00,0,16,100
ZX-12330,Complete Control Joint & Inspect - Fire Alarm 22 - 4F-FAB146102,Complete,Fire Alarm 22 - 4F -SUE-FAB146102,,,,,,,,,,2025-06-27 08:00,2025-06-30 17:00,2025-06-11 08:00,2025-06-13 16:00,2025-11-20 17:00,2025-11-20 17:00,2025-11-25 10:00,2025-11-25 10:00,0,16,100
FAB146102A-03,INSTALL DOOR FRAMES - FAB146102A,Complete,Fire Alarm 22 - 4F -SUE-FAB146102,,,,,,,,,,2025-09-12 08:00,2025-09-12 17:00,2025-09-12 08:00,2025-09-12 17:00,2025-11-20 17:00,2025-11-20 17:00,2025-11-25 10:00,2025-11-25 10:00,0,8,100
FAB146102A-04,INSTALL DOOR & HARDWARE - FAB146102A,Not Started,Fire Alarm 22 - 4F -SUE-FAB146102,,,,,,,,,,2025-11-21 08:00,2025-11-27 17:00,,,2025-11-21 08:00,2025-11-27 17:00,2025-11-25 10:00,2025-12-02 10:00,40,40,0
FAB146102A-05,PAINT & PROTECT DOORS & FRAMES -  FAB146102A,Not Started,Fire Alarm 22 - 4F -SUE-FAB146102,,,,,,,,,,2026-02-16 08:00,2026-02-19 15:00,,,2026-02-16 08:00,2026-02-19 15:00,2025-12-02 10:00,2025-12-05 17:00,30,30,0
ZX-12610,Complete Drywall & Inspect - IT/Security 22 - 4F-TR-FAB146103,Complete,IT/Security 22 - 4F -SUE-TR-FAB146103,,,,,,,,,,2025-05-16 08:00,2025-05-26 17:00,2025-05-16 08:00,2025-06-30 16:00,2025-11-20 17:00,2025-11-20 17:00,2025-11-25 10:00,2025-11-25 10:00,0,56,100
ZX-12620,Complete Fire Caulk & Inspect - IT/Security 22 - 4F-TR-FAB146103,Complete,IT/Security 22 - 4F -SUE-TR-FAB146103,,,,,,,,,,2025-09-05 08:00,2025-09-08 17:00,2025-09-05 08:00,2025-09-08 17:00,2025-11-20 17:00,2025-11-20 17:00,2025-12-05 17:00,2025-12-05 17:00,0,16,100
ZX-12630,Complete Control Joint & Inspect - IT/Security 22 - 4F-TR-FAB146103,Complete,IT/Security 22 - 4F -SUE-TR-FAB146103,,,,,,,,,,2025-06-27 08:00,2025-06-30 17:00,2025-06-27 08:00,2025-07-01 16:00,2025-11-20 17:00,2025-11-20 17:00,2025-11-25 10:00,2025-11-25 10:00,0,16,100
TR-FAB146103A-03,INSTALL DOOR FRAMES - TR - FAB146103A,Complete,IT/Security 22 - 4F -SUE-TR-FAB146103,,,,,,,,,,2025-06-27 08:00,2025-06-27 17:00,2025-06-27 08:00,2025-06-27 17:00,2025-11-20 17:00,2025-11-20 17:00,2025-11-25 10:00,2025-11-25 10:00,0,8,100
TR-FAB146103A-02,SECAI ROUGH IN/SECURITY -  TR - FAB146103A,Complete,IT/Security 22 - 4F -SUE-TR-FAB146103,,,,,,,,,,2025-06-27 08:00,2025-06-27 17:00,2025-06-27 08:00,2025-06-27 17:00,2025-11-20 17:00,2025-11-20 17:00,2025-11-25 10:00,2025-11-25 10:00,0,8,100
TR-FAB146103A-04,INSTALL DOOR & HARDWARE - TR - FAB146103A,Not Started,IT/Security 22 - 4F -SUE-TR-FAB146103,,,,,,,,,,2025-11-21 08:00,2025-11-27 17:00,,,2025-11-21 08:00,2025-11-27 17:00,2025-11-25 10:00,2025-12-02 10:00,40,40,0
TR-FAB146103A-05,PAINT & PROTECT DOORS & FRAMES -  TR - FAB146103A,Not Started,IT/Security 22 - 4F -SUE-TR-FAB146103,,,,,,,,,,2026-02-16 08:00,2026-02-19 15:00,,,2026-02-16 08:00,2026-02-19 15:00,2025-12-02 10:00,2025-12-05 17:00,30,30,0
ZX-17870,IMPACT - RAISED ACCESS FLR - IT/Security 22 - 4F-TR-FAB146103,Complete,IT/Security 22 - 4F -SUE-TR-FAB146103,,,,,,,,,,2025-05-28 08:00,2025-05-29 17:00,2025-05-28 08:00,2025-08-25 08:00,2025-11-20 17:00,2025-11-20 17:00,2025-11-25 10:00,2025-11-25 10:00,0,16,100
ZX-11950,Complete Drywall & Inspect - Duct Shaft - 4F-SUE-FAB146302,Complete,Duct Shaft - 4F -SUE-FAB146302,,,,,,,,,,2025-09-29 08:00,2025-09-30 17:00,2025-09-29 08:00,2025-09-30 17:00,2025-11-20 17:00,2025-11-20 17:00,2025-11-24 10:00,2025-11-24 10:00,0,16,100
ZX-11960,Complete Fire Caulk & Inspect - Duct Shaft - 4F-SUE-FAB146302,Complete,Duct Shaft - 4F -SUE-FAB146302,,,,,,,,,,2025-10-02 08:00,2025-10-03 17:00,2025-10-02 08:00,2025-10-03 17:00,2025-11-20 17:00,2025-11-20 17:00,2025-12-05 17:00,2025-12-05 17:00,0,16,100
FAB142101D-03,INSTALL DOOR FRAMES - FAB142101D,Not Started,Duct Shaft - 4F -SUE-FAB146302,,,,,,,,,,2025-11-21 08:00,2025-11-21 17:00,,,2025-11-21 08:00,2025-11-21 17:00,2025-11-24 10:00,2025-11-25 10:00,8,8,0
FAB142101D-04,INSTALL DOOR & HARDWARE - FAB142101D,Not Started,Duct Shaft - 4F -SUE-FAB146302,,,,,,,,,,2025-11-24 08:00,2025-11-28 17:00,,,2025-11-24 08:00,2025-11-28 17:00,2025-11-25 10:00,2025-12-02 10:00,40,40,0
FAB142101D-05,PAINT & PROTECT DOORS & FRAMES -  FAB142101D,Not Started,Duct Shaft - 4F -SUE-FAB146302,,,,,,,,,,2026-02-16 08:00,2026-02-19 15:00,,,2026-02-16 08:00,2026-02-19 15:00,2025-12-02 10:00,2025-12-05 17:00,30,30,0
FAB142101E-03,INSTALL DOOR FRAMES - FAB142101E,Not Started,Duct Shaft - 4F -SUE-FAB146302,,,,,,,,,,2025-11-21 08:00,2025-11-21 17:00,,,2025-11-21 08:00,2025-11-21 17:00,2025-11-24 10:00,2025-11-25 10:00,8,8,0
FAB142101E-04,INSTALL DOOR & HARDWARE - FAB142101E,Not Started,Duct Shaft - 4F -SUE-FAB146302,,,,,,,,,,2025-11-24 08:00,2025-11-28 17:00,,,2025-11-24 08:00,2025-11-28 17:00,2025-11-25 10:00,2025-12-02 10:00,40,40,0
FAB142101E-05,PAINT & PROTECT DOORS & FRAMES -  FAB142101E,Not Started,Duct Shaft - 4F -SUE-FAB146302,,,,,,,,,,2026-02-16 08:00,2026-02-19 15:00,,,2026-02-16 08:00,2026-02-19 15:00,2025-12-02 10:00,2025-12-05 17:00,30,30,0
FAB142101F-03,INSTALL DOOR FRAMES - FAB142101F,Not Started,Duct Shaft - 4F -SUE-FAB146302,,,,,,,,,,2025-11-21 08:00,2025-11-21 17:00,,,2025-11-21 08:00,2025-11-21 17:00,2025-11-24 10:00,2025-11-25 10:00,8,8,0
FAB142101F-04,INSTALL DOOR & HARDWARE - FAB142101F,Not Started,Duct Shaft - 4F -SUE-FAB146302,,,,,,,,,,2025-11-24 08:00,2025-11-28 17:00,,,2025-11-24 08:00,2025-11-28 17:00,2025-11-25 10:00,2025-12-02 10:00,40,40,0
FAB142101F-05,PAINT & PROTECT DOORS & FRAMES -  FAB142101F,Not Started,Duct Shaft - 4F -SUE-FAB146302,,,,,,,,,,2026-02-16 08:00,2026-02-19 15:00,,,2026-02-16 08:00,2026-02-19 15:00,2025-12-02 10:00,2025-12-05 17:00,30,30,0
ZX-12100,Complete Drywall & Inspect - 4F-Vestibule @ ST20-SUE-FAB146303,Complete,4F-Vestibule @ ST20 - 4F -SUE-FAB146303,,,,,,,,,,2025-07-18 08:00,2025-07-31 17:00,2025-07-18 08:00,2025-08-08 17:00,2025-11-20 17:00,2025-11-20 17:00,2025-11-24 10:00,2025-11-24 10:00,0,80,100
ZX-12110,Complete Fire Caulk & Inspect - 4F-Vestibule @ ST20-SUE-FAB146303,Complete,4F-Vestibule @ ST20 - 4F -SUE-FAB146303,,,,,,,,,,2025-10-06 08:00,2025-10-06 17:00,2025-10-06 08:00,2025-10-07 08:00,2025-11-20 17:00,2025-11-20 17:00,2025-12-05 17:00,2025-12-05 17:00,0,8,100
ZX-12120,Complete Control Joint & Inspect - 4F-Vestibule @ ST20-SUE-FAB146303,Complete,4F-Vestibule @ ST20 - 4F -SUE-FAB146303,,,,,,,,,,2025-08-07 08:00,2025-08-08 17:00,2025-08-07 08:00,2025-08-08 17:00,2025-11-20 17:00,2025-11-20 17:00,2025-11-24 10:00,2025-11-24 10:00,0,16,100
FAB146303A-01,INSTALL DOOR FRAMES - FAB146303A,Not Started,4F-Vestibule @ ST20 - 4F -SUE-FAB146303,,,,,,,,,,2025-12-10 08:00,2025-12-11 17:00,,,2025-12-10 08:00,2025-12-11 17:00,2025-11-20 10:00,2025-11-24 10:00,16,16,0
FAB146303A-04,INSTALL DOOR & HARDWARE - FAB146303A,Not Started,4F-Vestibule @ ST20 - 4F -SUE-FAB146303,,,,,,,,,,2025-12-15 08:00,2025-12-19 17:00,,,2025-12-15 08:00,2025-12-19 17:00,2025-11-25 10:00,2025-12-02 10:00,40,40,0
FAB146303A-05,PAINT & PROTECT DOORS & FRAMES -  FAB146303A,Not Started,4F-Vestibule @ ST20 - 4F -SUE-FAB146303,,,,,,,,,,2026-02-16 08:00,2026-02-19 15:00,,,2026-02-16 08:00,2026-02-19 15:00,2025-12-02 10:00,2025-12-05 17:00,30,30,0
FAB146303B-03,INSTALL DOOR FRAMES - FAB146303B,Not Started,4F-Vestibule @ ST20 - 4F -SUE-FAB146303,,,,,,,,,,2025-11-21 08:00,2025-11-21 17:00,,,2025-11-21 08:00,2025-11-21 17:00,2025-11-24 10:00,2025-11-25 10:00,8,8,0
FAB146303B-04,INSTALL DOOR & HARDWARE - FAB146303B,Not Started,4F-Vestibule @ ST20 - 4F -SUE-FAB146303,,,,,,,,,,2025-11-24 08:00,2025-11-28 17:00,,,2025-11-24 08:00,2025-11-28 17:00,2025-11-25 10:00,2025-12-02 10:00,40,40,0
FAB146303B-05,PAINT & PROTECT DOORS & FRAMES -  FAB146303B,Not Started,4F-Vestibule @ ST20 - 4F -SUE-FAB146303,,,,,,,,,,2026-02-16 08:00,2026-02-19 15:00,,,2026-02-16 08:00,2026-02-19 15:00,2025-12-02 10:00,2025-12-05 17:00,30,30,0
FAB146303C-03,INSTALL DOOR FRAMES - FAB146303C,Not Started,4F-Vestibule @ ST20 - 4F -SUE-FAB146303,,,,,,,,,,2025-11-21 08:00,2025-11-21 17:00,,,2025-11-21 08:00,2025-11-21 17:00,2025-11-24 10:00,2025-11-25 10:00,8,8,0
FAB146303C-04,INSTALL DOOR & HARDWARE - FAB146303C,Not Started,4F-Vestibule @ ST20 - 4F -SUE-FAB146303,,,,,,,,,,2025-11-24 08:00,2025-11-28 17:00,,,2025-11-24 08:00,2025-11-28 17:00,2025-11-25 10:00,2025-12-02 10:00,40,40,0
FAB146303C-05,PAINT & PROTECT DOORS & FRAMES -  FAB146303C,Not Started,4F-Vestibule @ ST20 - 4F -SUE-FAB146303,,,,,,,,,,2026-02-16 08:00,2026-02-19 15:00,,,2026-02-16 08:00,2026-02-19 15:00,2025-12-02 10:00,2025-12-05 17:00,30,30,0
FAB146303B-11,IMPACT - PROCUREMENT - REORDERED DOORS (JAMB DEPTH ISSUE),Complete,4F-Vestibule @ ST20 - 4F -SUE-FAB146303,,,,,,,,,,2025-06-09 08:00,2025-08-12 17:00,2025-06-09 08:00,2025-07-14 17:00,2025-11-20 17:00,2025-11-20 17:00,2025-11-24 10:00,2025-11-24 10:00,0,376,100
ZX-12400,Complete Drywall & Inspect - Duct Shaft - 4F-SUE-FAB146402,Complete,Duct Shaft - 4F -SUE-FAB146402,,,,,,,,,,2025-09-01 08:00,2025-09-12 17:00,2025-09-01 08:00,2025-09-09 17:00,2025-11-20 17:00,2025-11-20 17:00,2025-12-05 17:00,2025-12-05 17:00,0,80,100
ZX-12410,Complete Fire Caulk & Inspect - Duct Shaft - 4F-SUE-FAB146402,Complete,Duct Shaft - 4F -SUE-FAB146402,,,,,,,,,,2025-10-02 08:00,2025-10-03 17:00,2025-10-02 08:00,2025-10-03 17:00,2025-11-20 17:00,2025-11-20 17:00,2025-12-05 17:00,2025-12-05 17:00,0,16,100
ZX-12700,Complete Drywall & Inspect - IT/Security 18 - 4F-SUE-FAB146508,Complete,IT/Security 18 - 4F -SUE-FAB146508,,,,,,,,,,2025-09-29 08:00,2025-09-30 17:00,2025-09-29 08:00,2025-09-30 17:00,2025-11-20 17:00,2025-11-20 17:00,2025-12-05 17:00,2025-12-05 17:00,0,16,100
ZX-12710,Complete Fire Caulk & Inspect - IT/Security 18 - 4F-SUE-FAB146508,Complete,IT/Security 18 - 4F -SUE-FAB146508,,,,,,,,,,2025-10-02 08:00,2025-10-03 17:00,2025-10-02 08:00,2025-10-03 17:00,2025-11-20 17:00,2025-11-20 17:00,2025-12-05 17:00,2025-12-05 17:00,0,16,100
ZX-12720,Complete Control Joint & Inspect - IT/Security 18 - 4F-SUE-FAB146508,Complete,IT/Security 18 - 4F -SUE-FAB146508,,,,,,,,,,2025-10-10 08:00,2025-10-13 17:00,2025-10-10 08:00,2025-10-13 17:00,2025-11-20 17:00,2025-11-20 17:00,2025-12-05 17:00,2025-12-05 17:00,0,16,100
TR-FAB146508A-01,IMPACT - INSTALL/REWORK DRYWALL FRAMING AROUND DOORS - TR - FAB146508A,Complete,IT/Security 18 - 4F -SUE-FAB146508,,,,,,,,,,2025-09-29 08:00,2025-09-30 17:00,2025-09-29 08:00,2025-09-30 17:00,2025-11-20 17:00,2025-11-20 17:00,2025-11-25 10:00,2025-11-25 10:00,0,16,100
TR-FAB146508A-02,SECAI ROUGH IN/SECURITY -  TR - FAB146508A,Complete,IT/Security 18 - 4F -SUE-FAB146508,,,,,,,,,,2025-09-30 08:00,2025-09-30 17:00,2025-09-30 08:00,2025-09-30 17:00,2025-11-20 17:00,2025-11-20 17:00,2025-11-25 10:00,2025-11-25 10:00,0,8,100
TR-FAB146508A-03,INSTALL DOOR FRAMES - TR - FAB146508A,Complete,IT/Security 18 - 4F -SUE-FAB146508,,,,,,,,,,2025-09-30 08:00,2025-09-30 17:00,2025-09-30 08:00,2025-09-30 17:00,2025-11-20 17:00,2025-11-20 17:00,2025-11-25 10:00,2025-11-25 10:00,0,8,100
TR-FAB146508A-04,INSTALL DOOR & HARDWARE - TR - FAB146508A,Not Started,IT/Security 18 - 4F -SUE-FAB146508,,,,,,,,,,2025-11-21 08:00,2025-11-27 17:00,,,2025-11-21 08:00,2025-11-27 17:00,2025-11-25 10:00,2025-12-02 10:00,40,40,0
TR-FAB146508A-05,PAINT & PROTECT DOORS & FRAMES -  TR - FAB146508A,Not Started,IT/Security 18 - 4F -SUE-FAB146508,,,,,,,,,,2026-02-16 08:00,2026-02-19 15:00,,,2026-02-16 08:00,2026-02-19 15:00,2025-12-02 10:00,2025-12-05 17:00,30,30,0
ZX-11920,Complete Drywall & Inspect - Fire Alarm 18 - 4F-FAB146506,Complete,Fire Alarm 18 - 4F -SUE-FAB146506,,,,,,,,,,2025-06-26 08:00,2025-07-04 17:00,2025-06-10 08:00,2025-06-16 16:00,2025-11-20 17:00,2025-11-20 17:00,2025-11-25 10:00,2025-11-25 10:00,0,56,100
ZX-11930,Complete Fire Caulk & Inspect - Fire Alarm 18 - 4F-FAB146506,Complete,Fire Alarm 18 - 4F -SUE-FAB146506,,,,,,,,,,2025-10-03 08:00,2025-10-06 17:00,2025-10-03 08:00,2025-10-06 17:00,2025-11-20 17:00,2025-11-20 17:00,2025-12-05 17:00,2025-12-05 17:00,0,16,100
ZX-11940,Complete Control Joint & Inspect - Fire Alarm 18 - 4F-FAB146506,Complete,Fire Alarm 18 - 4F -SUE-FAB146506,,,,,,,,,,2025-07-08 08:00,2025-07-09 17:00,2025-06-13 08:00,2025-06-16 16:00,2025-11-20 17:00,2025-11-20 17:00,2025-11-25 10:00,2025-11-25 10:00,0,16,100
FAB146506A-01,IMPACT - INSTALL/REWORK DRYWALL FRAMING AROUND DOORS - FAB146506A,Complete,Fire Alarm 18 - 4F -SUE-FAB146506,,,,,,,,,,2025-09-03 08:00,2025-09-04 17:00,2025-09-03 08:00,2025-09-04 17:00,2025-11-20 17:00,2025-11-20 17:00,2025-11-25 10:00,2025-11-25 10:00,0,16,100
FAB146506A-02,SECAI ROUGH IN/SECURITY - FAB146506A,Complete,Fire Alarm 18 - 4F -SUE-FAB146506,,,,,,,,,,2025-09-04 08:00,2025-09-04 17:00,2025-09-04 08:00,2025-09-04 17:00,2025-11-20 17:00,2025-11-20 17:00,2025-11-25 10:00,2025-11-25 10:00,0,8,100
FAB146506A-03,INSTALL DOOR FRAMES - FAB146506A,Complete,Fire Alarm 18 - 4F -SUE-FAB146506,,,,,,,,,,2025-09-05 08:00,2025-09-05 17:00,2025-09-05 08:00,2025-09-05 17:00,2025-11-20 17:00,2025-11-20 17:00,2025-11-25 10:00,2025-11-25 10:00,0,8,100
FAB146506A-04,INSTALL DOOR & HARDWARE - FAB146506A,Not Started,Fire Alarm 18 - 4F -SUE-FAB146506,,,,,,,,,,2025-11-21 08:00,2025-11-27 17:00,,,2025-11-21 08:00,2025-11-27 17:00,2025-11-25 10:00,2025-12-02 10:00,40,40,0
FAB146506A-05,PAINT & PROTECT DOORS & FRAMES - FAB146506A,Not Started,Fire Alarm 18 - 4F -SUE-FAB146506,,,,,,,,,,2026-02-16 08:00,2026-02-19 15:00,,,2026-02-16 08:00,2026-02-19 15:00,2025-12-02 10:00,2025-12-05 17:00,30,30,0
FAB146506A-11,IMPACT - PROCUREMENT - Reordered doors (Wall Thickness and Door Swing Design Changes),Complete,Fire Alarm 18 - 4F -SUE-FAB146506,,,,,,,,,,2025-06-20 08:00,2025-08-14 17:00,2025-06-20 08:00,2025-07-14 17:00,2025-11-20 17:00,2025-11-20 17:00,2025-11-25 10:00,2025-11-25 10:00,0,320,100
ZX-12160,Complete Drywall & Inspect - Elevator Hall #18 - 4F-SUE-FAB146507,Complete,Elevator Hall 18 - 4F -SUE-FAB146507,,,,,,,,,,2025-06-30 08:00,2025-07-08 17:00,2025-06-10 08:00,2025-06-30 16:00,2025-11-20 17:00,2025-11-20 17:00,2025-11-25 10:00,2025-11-25 10:00,0,56,100
ZX-12170,Complete Fire Caulk & Inspect - Elevator Hall #18 - 4F-SUE-FAB146507,Not Started,Elevator Hall 18 - 4F -SUE-FAB146507,,,,,,,,,,2025-11-21 08:00,2025-11-24 17:00,,,2025-11-21 08:00,2025-11-24 17:00,2025-12-04 08:00,2025-12-05 17:00,16,16,0
ZX-12180,Complete Control Joint & Inspect - Elevator Hall #18 - 4F-SUE-FAB146507,Complete,Elevator Hall 18 - 4F -SUE-FAB146507,,,,,,,,,,2025-06-30 08:00,2025-07-01 17:00,2025-06-30 08:00,2025-07-01 16:00,2025-11-20 17:00,2025-11-20 17:00,2025-11-25 10:00,2025-11-25 10:00,0,16,100
FAB146507A-01,INSTALL DOOR FRAMES - FAB146507A,Complete,Elevator Hall 18 - 4F -SUE-FAB146507,,,,,,,,,,2025-07-23 08:00,2025-07-23 17:00,2025-07-23 08:00,2025-07-23 17:00,2025-11-20 17:00,2025-11-20 17:00,2025-11-20 10:00,2025-11-20 10:00,0,8,100
FAB146507A-02,SECAI ROUGH IN/SECURITY -  FAB146507A,Complete,Elevator Hall 18 - 4F -SUE-FAB146507,,,,,,,,,,2025-07-23 08:00,2025-07-23 17:00,2025-07-23 08:00,2025-07-23 17:00,2025-11-20 17:00,2025-11-20 17:00,2025-11-20 10:00,2025-11-20 10:00,0,8,100
FAB146507A-07,DOOR FRAME PAINT & 1ST COAT - FAB146507A,Not Started,Elevator Hall 18 - 4F -SUE-FAB146507,,,,,,,,,,2026-02-16 08:00,2026-02-18 17:00,,,2026-02-16 08:00,2026-02-18 17:00,2025-11-20 10:00,2025-11-25 10:00,24,24,0
FAB146507A-04,INSTALL DOOR & HARDWARE - FAB146507A,Not Started,Elevator Hall 18 - 4F -SUE-FAB146507,,,,,,,,,,2026-02-19 08:00,2026-02-25 17:00,,,2026-02-19 08:00,2026-02-25 17:00,2025-11-25 10:00,2025-12-02 10:00,40,40,0
FAB146507A-05,PAINT & PROTECT DOORS & FRAMES -  FAB146507A,Not Started,Elevator Hall 18 - 4F -SUE-FAB146507,,,,,,,,,,2026-02-26 08:00,2026-03-03 15:00,,,2026-02-26 08:00,2026-03-03 15:00,2025-12-02 10:00,2025-12-05 17:00,30,30,0
FAB146507B-01,INSTALL DOOR FRAMES - FAB146507B,Not Started,Elevator Hall 18 - 4F -SUE-FAB146507,,,,,,,,,,2025-12-01 08:00,2025-12-01 17:00,,,2025-12-01 08:00,2025-12-01 17:00,2025-11-21 10:00,2025-11-24 10:00,8,8,0
FAB146507B-04,INSTALL DOOR & HARDWARE - FAB146507B,Not Started,Elevator Hall 18 - 4F -SUE-FAB146507,,,,,,,,,,2025-12-03 08:00,2025-12-09 17:00,,,2025-12-03 08:00,2025-12-09 17:00,2025-11-25 10:00,2025-12-02 10:00,40,40,0
FAB146507B-05,PAINT & PROTECT DOORS & FRAMES -  FAB146507B,Not Started,Elevator Hall 18 - 4F -SUE-FAB146507,,,,,,,,,,2026-02-16 08:00,2026-02-19 15:00,,,2026-02-16 08:00,2026-02-19 15:00,2025-12-02 10:00,2025-12-05 17:00,30,30,0
FAB146507C-01,IMPACT - INSTALL/REWORK DRYWALL FRAMING AROUND DOORS - FAB146507C,Complete,Elevator Hall 18 - 4F -SUE-FAB146507,,,,,,,,,,2025-07-09 08:00,2025-07-10 17:00,2025-07-09 08:00,2025-07-10 17:00,2025-11-20 17:00,2025-11-20 17:00,2025-11-25 10:00,2025-11-25 10:00,0,16,100
FAB146507C-02,SECAI ROUGH IN/SECURITY - FAB146507C,Complete,Elevator Hall 18 - 4F -SUE-FAB146507,,,,,,,,,,2025-07-11 08:00,2025-07-11 17:00,2025-07-11 08:00,2025-07-11 17:00,2025-11-20 17:00,2025-11-20 17:00,2025-11-25 10:00,2025-11-25 10:00,0,8,100
FAB146507C-03,INSTALL DOOR FRAMES - FAB146507C,Complete,Elevator Hall 18 - 4F -SUE-FAB146507,,,,,,,,,,2025-07-11 08:00,2025-07-11 17:00,2025-07-11 08:00,2025-07-11 17:00,2025-11-20 17:00,2025-11-20 17:00,2025-11-25 10:00,2025-11-25 10:00,0,8,100
FAB146507C-04,INSTALL DOOR & HARDWARE - FAB146507C,Active,Elevator Hall 18 - 4F -SUE-FAB146507,,,,,,,,,,2025-11-18 08:00,2025-11-24 17:00,2025-11-18 08:00,,2025-11-21 08:00,2025-11-27 17:00,2025-11-25 10:00,2025-12-02 10:00,40,40,0
FAB146507C-05,PAINT & PROTECT DOORS & FRAMES -  FAB146507C,Not Started,Elevator Hall 18 - 4F -SUE-FAB146507,,,,,,,,,,2026-02-16 08:00,2026-02-19 15:00,,,2026-02-16 08:00,2026-02-19 15:00,2025-12-02 10:00,2025-12-05 17:00,30,30,0
FAB146507A-00,IMPACT OPENING REVIEW - FAB146507A,Complete,Elevator Hall 18 - 4F -SUE-FAB146507,,,,,,,,,,2025-06-20 08:00,2025-07-10 17:00,2025-06-20 08:00,2025-07-18 17:00,2025-11-20 17:00,2025-11-20 17:00,2025-11-20 10:00,2025-11-20 10:00,0,120,100
FAB146507B-00,IMPACT OPENING REVIEW - FAB146507B,Active,Elevator Hall 18 - 4F -SUE-FAB146507,,,,,,,,,,2025-06-20 08:00,2025-07-10 17:00,2025-06-20 08:00,,2025-11-21 08:00,2025-11-28 17:00,2025-11-13 10:00,2025-11-21 10:00,48,120,0
ZX-12460,Complete Drywall & Inspect - Elevator #18 - 4F-1FAB-EL18,Complete,Elevator 18 - 4F -SUE-FAB1-EL18,,,,,,,,,,2025-07-18 08:00,2025-07-28 17:00,2025-07-18 08:00,2025-07-28 17:00,2025-11-20 17:00,2025-11-20 17:00,2025-11-24 10:00,2025-11-24 10:00,0,56,100
ZX-12470,Complete Fire Caulk & Inspect - Elevator #18 - 4F-1FAB-EL18,Complete,Elevator 18 - 4F -SUE-FAB1-EL18,,,,,,,,,,2025-08-15 08:00,2025-08-18 17:00,2025-08-15 08:00,2025-08-18 17:00,2025-11-20 17:00,2025-11-20 17:00,2025-12-05 17:00,2025-12-05 17:00,0,16,100
ZX-12480,Complete Control Joint & Inspect - Elevator #18 - 4F-1FAB-EL18,Complete,Elevator 18 - 4F -SUE-FAB1-EL18,,,,,,,,,,2025-07-25 08:00,2025-07-28 17:00,2025-07-25 08:00,2025-07-28 17:00,2025-11-20 17:00,2025-11-20 17:00,2025-11-24 10:00,2025-11-24 10:00,0,16,100
ZX-12760,Complete Drywall & Inspect - NE Breezway-4F,Complete,NE Breezway - 4F - SUE,,,,,,,,,,2025-09-04 08:00,2025-09-16 17:00,2025-09-04 08:00,2025-09-11 17:00,2025-11-20 17:00,2025-11-20 17:00,2025-12-05 17:00,2025-12-05 17:00,0,72,100
ZX-12770,Complete Fire Caulk & Inspect - NE Breezway-4F,Complete,NE Breezway - 4F - SUE,,,,,,,,,,2025-09-10 08:00,2025-09-11 17:00,2025-09-10 08:00,2025-09-11 17:00,2025-11-20 17:00,2025-11-20 17:00,2025-12-05 17:00,2025-12-05 17:00,0,16,100
ZX-11890,Complete Drywall & Inspect - I/O Rm 2 - 4F-SUE-FAB146502,Complete,I/O Rm 2 - 4F -SUE-FAB146502,,,,,,,,,,2025-05-29 08:00,2025-06-06 17:00,2025-05-14 08:00,2025-05-19 16:00,2025-11-20 17:00,2025-11-20 17:00,2025-12-05 17:00,2025-12-05 17:00,0,56,100
ZX-11900,Complete Fire Caulk & Inspect - I/O Rm 2 - 4F-SUE-FAB146502 NON RATED WALLS,Complete,I/O Rm 2 - 4F -SUE-FAB146502,,,,,,,,,,2025-05-29 08:00,2025-05-30 17:00,2025-05-19 08:00,2025-05-19 16:00,2025-11-20 17:00,2025-11-20 17:00,2025-12-05 17:00,2025-12-05 17:00,0,16,100
ZX-11910,Complete Control Joint & Inspect - I/O Rm 2 - 4F-SUE-FAB146502,Complete,I/O Rm 2 - 4F -SUE-FAB146502,,,,,,,,,,2025-06-09 08:00,2025-06-10 17:00,2025-05-19 08:00,2025-05-21 16:00,2025-11-20 17:00,2025-11-20 17:00,2025-12-05 17:00,2025-12-05 17:00,0,16,100
FAB146502A-03,INSTALL DOOR FRAMES - FAB146502A,Not Started,I/O Rm 2 - 4F -SUE-FAB146502,,,,,,,,,,2025-12-10 08:00,2025-12-10 17:00,,,2025-12-10 08:00,2025-12-10 17:00,2025-11-24 10:00,2025-11-25 10:00,8,8,0
FAB146502A-04,INSTALL DOOR & HARDWARE - FAB146502A,Not Started,I/O Rm 2 - 4F -SUE-FAB146502,,,,,,,,,,2025-12-11 08:00,2025-12-17 17:00,,,2025-12-11 08:00,2025-12-17 17:00,2025-11-25 10:00,2025-12-02 10:00,40,40,0
FAB146502A-05,PAINT & PROTECT DOORS & FRAMES -  FAB146502A,Not Started,I/O Rm 2 - 4F -SUE-FAB146502,,,,,,,,,,2026-02-16 08:00,2026-02-19 15:00,,,2026-02-16 08:00,2026-02-19 15:00,2025-12-02 10:00,2025-12-05 17:00,30,30,0
FAB146502A-08,IMPACT - SECAI MEP TRADE OBSTRUCTION - FAB146502A,Active,I/O Rm 2 - 4F -SUE-FAB146502,,,,,,,,,,2025-06-24 08:00,2025-07-02 17:00,2025-06-02 08:00,,2025-11-21 08:00,2025-11-27 17:00,2025-11-17 10:00,2025-11-24 10:00,40,56,0
ZX-12070,Complete Drywall & Inspect - MCC Rm 2 - 4F-SUE-FAB146503 NON RATED WALLS,Complete,MCC Rm 2 - 4F -SUE-FAB146503,,,,,,,,,,2025-06-12 08:00,2025-06-23 17:00,2025-05-23 08:00,2025-05-28 16:00,2025-11-20 17:00,2025-11-20 17:00,2025-11-24 10:00,2025-11-24 10:00,0,64,100
ZX-12090,Complete Control Joint & Inspect - MCC Rm 2 - 4F-SUE-FAB146503,Complete,MCC Rm 2 - 4F -SUE-FAB146503,,,,,,,,,,2025-06-24 08:00,2025-06-25 17:00,2025-05-29 08:00,2025-06-03 16:00,2025-11-20 17:00,2025-11-20 17:00,2025-11-24 10:00,2025-11-24 10:00,0,16,100
FAB146503A-01,INSTALL DOOR FRAMES - FAB146503A,Not Started,MCC Rm 2 - 4F -SUE-FAB146503,,,,,,,,,,2025-12-10 08:00,2025-12-10 17:00,,,2025-12-10 08:00,2025-12-10 17:00,2025-11-21 10:00,2025-11-24 10:00,8,8,0
FAB146503A-04,INSTALL DOOR & HARDWARE - FAB146503A,Not Started,MCC Rm 2 - 4F -SUE-FAB146503,,,,,,,,,,2025-12-12 08:00,2025-12-18 17:00,,,2025-12-12 08:00,2025-12-18 17:00,2025-11-25 10:00,2025-12-02 10:00,40,40,0
FAB146503A-05,PAINT & PROTECT DOORS & FRAMES -  FAB146503A,Not Started,MCC Rm 2 - 4F -SUE-FAB146503,,,,,,,,,,2026-02-16 08:00,2026-02-19 15:00,,,2026-02-16 08:00,2026-02-19 15:00,2025-12-02 10:00,2025-12-05 17:00,30,30,0
FAB146503B-03,INSTALL DOOR FRAMES - FAB146503B,Not Started,MCC Rm 2 - 4F -SUE-FAB146503,,,,,,,,,,2025-11-21 08:00,2025-11-21 17:00,,,2025-11-21 08:00,2025-11-21 17:00,2025-11-24 10:00,2025-11-25 10:00,8,8,0
FAB146503B-04,INSTALL DOOR & HARDWARE - FAB146503B,Not Started,MCC Rm 2 - 4F -SUE-FAB146503,,,,,,,,,,2025-11-24 08:00,2025-11-28 17:00,,,2025-11-24 08:00,2025-11-28 17:00,2025-11-25 10:00,2025-12-02 10:00,40,40,0
FAB146503B-05,PAINT & PROTECT DOORS & FRAMES - FAB146503B,Not Started,MCC Rm 2 - 4F -SUE-FAB146503,,,,,,,,,,2026-02-16 08:00,2026-02-19 15:00,,,2026-02-16 08:00,2026-02-19 15:00,2025-12-02 10:00,2025-12-05 17:00,30,30,0
ZX-18670,Complete Drywall & Inspect CATCH-UP - MCC Rm 2 - 4F-SUE-FAB146503,Complete,MCC Rm 2 - 4F -SUE-FAB146503,,,,,,,,,,2025-06-13 08:00,2025-06-23 17:00,2025-06-13 08:00,2025-06-27 16:00,2025-11-20 17:00,2025-11-20 17:00,2025-12-05 17:00,2025-12-05 17:00,0,56,100
ZX-12370,Complete Drywall & Inspect - 4F-D-G/33,Complete,4F-D-G/33 - 4F - SUE,,,,,,,,,,2025-06-06 08:00,2025-06-19 17:00,2025-05-26 08:00,2025-05-29 16:00,2025-11-20 17:00,2025-11-20 17:00,2025-11-21 10:00,2025-11-21 10:00,0,80,100
ZX-12380,Complete Fire Caulk & Inspect - 4F-D-G/33,Complete,4F-D-G/33 - 4F - SUE,,,,,,,,,,2025-06-13 08:00,2025-06-19 17:00,2025-06-13 08:00,2025-06-16 16:00,2025-11-20 17:00,2025-11-20 17:00,2025-12-05 17:00,2025-12-05 17:00,0,40,100
ZX-12390,Complete Control Joint & Inspect - 4F-D-G/33,Complete,4F-D-G/33 - 4F - SUE,,,,,,,,,,2025-06-06 08:00,2025-06-09 17:00,2025-05-30 08:00,2025-06-02 16:00,2025-11-20 17:00,2025-11-20 17:00,2025-11-21 10:00,2025-11-21 10:00,0,16,100
ZX-12670,Complete Drywall & Inspect - 4F-G.3-K/33,Complete,4F-G.3-K/33 - 4F - SUW,,,,,,,,,,2025-09-25 08:00,2025-09-29 17:00,2025-09-25 08:00,2025-09-29 17:00,2025-11-20 17:00,2025-11-20 17:00,2025-12-05 17:00,2025-12-05 17:00,0,24,100
ZX-12680,Complete Fire Caulk & Inspect - 4F-G.3-K/33,Complete,4F-G.3-K/33 - 4F - SUW,,,,,,,,,,2025-10-03 08:00,2025-10-07 17:00,2025-10-03 08:00,2025-10-06 17:00,2025-11-20 17:00,2025-11-20 17:00,2025-12-05 17:00,2025-12-05 17:00,0,24,100
ZX-12690,Complete Control Joint & Inspect - 4F-G.3-K/33,Complete,4F-G.3-K/33 - 4F - SUW,,,,,,,,,,2025-09-26 08:00,2025-09-30 17:00,2025-09-26 08:00,2025-09-30 17:00,2025-11-20 17:00,2025-11-20 17:00,2025-12-05 17:00,2025-12-05 17:00,0,24,100
ZX-12220,Complete Drywall & Inspect - 4F-K/33-3,Complete,4F-K/33-3 - 4F - SUW,,,,,,,,,,2025-07-09 08:00,2025-07-29 17:00,2025-06-23 08:00,2025-06-30 16:00,2025-11-20 17:00,2025-11-20 17:00,2025-12-05 17:00,2025-12-05 17:00,0,120,100
ZX-12230,Complete Fire Caulk & Inspect - 4F-K/33-3,Complete,4F-K/33-3 - 4F - SUW,,,,,,,,,,2025-07-30 08:00,2025-08-04 17:00,2025-06-30 08:00,2025-07-01 16:00,2025-11-20 17:00,2025-11-20 17:00,2025-12-05 17:00,2025-12-05 17:00,0,32,100
ZX-12240,Complete Control Joint & Inspect - 4F-K/33-3,Complete,4F-K/33-3 - 4F - SUW,,,,,,,,,,2025-06-27 08:00,2025-07-02 17:00,2025-06-27 08:00,2025-06-30 16:00,2025-11-20 17:00,2025-11-20 17:00,2025-12-05 17:00,2025-12-05 17:00,0,32,100
ZX-12520,Complete Drywall & Inspect - IT/Security 5 - 4F-SUW-FAB140503,Complete,IT/Security 5 - 4F -SUW-FAB140503,,,,,,,,,,2025-05-27 08:00,2025-05-28 17:00,2025-05-27 08:00,2025-05-28 16:00,2025-11-20 17:00,2025-11-20 17:00,2025-11-24 10:00,2025-11-24 10:00,0,16,100
ZX-12530,Complete Fire Caulk & Inspect - IT/Security 5 - 4F-SUW-FAB140503,Complete,IT/Security 5 - 4F -SUW-FAB140503,,,,,,,,,,2025-09-05 08:00,2025-09-08 17:00,2025-09-05 08:00,2025-09-08 17:00,2025-11-20 17:00,2025-11-20 17:00,2025-11-25 10:00,2025-11-25 10:00,0,16,100
ZX-12540,Complete Control Joint & Inspect - IT/Security 5 - 4F-SUW-FAB140503,Complete,IT/Security 5 - 4F -SUW-FAB140503,,,,,,,,,,2025-06-17 08:00,2025-06-18 17:00,2025-06-17 08:00,2025-06-19 16:00,2025-11-20 17:00,2025-11-20 17:00,2025-11-24 10:00,2025-11-24 10:00,0,16,100
TR-FAB140503A-01,IMPACT - INSTALL/REWORK DRYWALL FRAMING AROUND DOORS - TR - FAB140503A,Complete,IT/Security 5 - 4F -SUW-FAB140503,,,,,,,,,,2025-05-01 08:00,2025-05-02 17:00,2025-05-01 08:00,2025-05-02 17:00,2025-11-20 17:00,2025-11-20 17:00,2025-11-25 10:00,2025-11-25 10:00,0,16,100
TR-FAB140503A-02,SECAI ROUGH IN/SECURITY -  TR - FAB140503A,Complete,IT/Security 5 - 4F -SUW-FAB140503,,,,,,,,,,2025-05-05 08:00,2025-05-05 17:00,2025-05-05 08:00,2025-05-05 17:00,2025-11-20 17:00,2025-11-20 17:00,2025-11-25 10:00,2025-11-25 10:00,0,8,100
TR-FAB140503A-03,INSTALL DOOR FRAMES - TR - FAB140503A,Complete,IT/Security 5 - 4F -SUW-FAB140503,,,,,,,,,,2025-05-05 08:00,2025-05-05 17:00,2025-05-05 08:00,2025-05-05 17:00,2025-11-20 17:00,2025-11-20 17:00,2025-11-25 10:00,2025-11-25 10:00,0,8,100
TR-FAB140503A-04,INSTALL DOOR & HARDWARE - TR - FAB140503A,Not Started,IT/Security 5 - 4F -SUW-FAB140503,,,,,,,,,,2025-11-21 08:00,2025-11-27 17:00,,,2025-11-21 08:00,2025-11-27 17:00,2025-11-25 10:00,2025-12-02 10:00,40,40,0
TR-FAB140503A-05,PAINT & PROTECT DOORS & FRAMES -  TR - FAB140503A,Not Started,IT/Security 5 - 4F -SUW-FAB140503,,,,,,,,,,2026-02-16 08:00,2026-02-19 15:00,,,2026-02-16 08:00,2026-02-19 15:00,2025-12-02 10:00,2025-12-05 17:00,30,30,0
ZX-17880,IMPACT - SECAI SCAFFOLD - IT/Security 5 - 4F-SUW-FAB140503,Complete,IT/Security 5 - 4F -SUW-FAB140503,,,,,,,,,,2025-06-10 08:00,2025-06-16 17:00,2025-06-10 08:00,2025-06-12 16:00,2025-11-20 17:00,2025-11-20 17:00,2025-11-24 10:00,2025-11-24 10:00,0,40,100
ZX-18880,IMPACT - SECAI RAISED ACCES FLOOR PREVENTING INSTALL - IT/Security 5 - 4F-SUW-FAB140503,Complete,IT/Security 5 - 4F -SUW-FAB140503,,,,,,,,,,2025-06-27 08:00,2025-07-10 17:00,2025-06-27 08:00,2025-09-05 17:00,2025-11-20 17:00,2025-11-20 17:00,2025-11-25 10:00,2025-11-25 10:00,0,80,100
ZX-12820,Complete Drywall & Inspect - Fire Alarm 5 - 4F-FAB140507,Complete,Fire Alarm 5 - 4F -SUW-FAB140507,,,,,,,,,,2025-05-16 08:00,2025-05-19 17:00,2025-05-16 08:00,2025-05-21 16:00,2025-11-20 17:00,2025-11-20 17:00,2025-11-24 10:00,2025-11-24 10:00,0,16,100
ZX-12830,Complete Fire Caulk & Inspect - Fire Alarm 5 - 4F-FAB140507 NON RATED WALLS,Complete,Fire Alarm 5 - 4F -SUW-FAB140507,,,,,,,,,,2025-05-20 08:00,2025-05-21 17:00,2025-05-20 08:00,2025-05-21 16:00,2025-11-20 17:00,2025-11-20 17:00,2025-12-05 17:00,2025-12-05 17:00,0,16,100
ZX-12840,Complete Control Joint & Inspect - Fire Alarm 5 - 4F-FAB140507,Complete,Fire Alarm 5 - 4F -SUW-FAB140507,,,,,,,,,,2025-05-20 08:00,2025-05-21 17:00,2025-05-19 08:00,2025-05-22 16:00,2025-11-20 17:00,2025-11-20 17:00,2025-11-24 10:00,2025-11-24 10:00,0,16,100
FAB140507A-03,INSTALL DOOR FRAMES - FAB140507A,Complete,Fire Alarm 5 - 4F -SUW-FAB140507,,,,,,,,,,2025-06-20 08:00,2025-06-27 17:00,2025-06-11 08:00,2025-06-12 16:00,2025-11-20 17:00,2025-11-20 17:00,2025-11-25 10:00,2025-11-25 10:00,0,48,100
FAB140507A-02,SECAI ROUGH IN/SECURITY - FAB140507A,Complete,Fire Alarm 5 - 4F -SUW-FAB140507,,,,,,,,,,2025-06-20 08:00,2025-06-20 17:00,2025-06-10 08:00,2025-06-11 16:00,2025-11-20 17:00,2025-11-20 17:00,2025-11-25 10:00,2025-11-25 10:00,0,8,100
FAB140507A-04,INSTALL DOOR & HARDWARE - FAB140507A,Not Started,Fire Alarm 5 - 4F -SUW-FAB140507,,,,,,,,,,2025-11-21 08:00,2025-11-27 17:00,,,2025-11-21 08:00,2025-11-27 17:00,2025-11-25 10:00,2025-12-02 10:00,40,40,0
FAB140507A-05,PAINT & PROTECT DOORS & FRAMES -  FAB140507A,Not Started,Fire Alarm 5 - 4F -SUW-FAB140507,,,,,,,,,,2026-02-16 08:00,2026-02-19 15:00,,,2026-02-16 08:00,2026-02-19 15:00,2025-12-02 10:00,2025-12-05 17:00,30,30,0
ZX-17760,IMPACT SECAI MEP OPENING AT CJ - Fire Alarm 5 - 4F-FAB140507,Complete,Fire Alarm 5 - 4F -SUW-FAB140507,,,,,,,,,,2025-05-20 08:00,2025-05-21 17:00,2025-05-19 08:00,2025-05-22 16:00,2025-11-20 17:00,2025-11-20 17:00,2025-11-24 10:00,2025-11-24 10:00,0,16,100
ZX-12040,Complete Drywall & Inspect - Elevator Hall #05 - 4F-SUW-FAB140508,Complete,Elevator Hall 5 - 4F -SUW-FAB140508,,,,,,,,,,2025-09-01 08:00,2025-09-05 17:00,2025-09-01 08:00,2025-09-05 17:00,2025-11-20 17:00,2025-11-20 17:00,2025-12-05 17:00,2025-12-05 17:00,0,40,100
ZX-12050,Complete Fire Caulk & Inspect - Elevator Hall #05 - 4F-SUW-FAB140508,Complete,Elevator Hall 5 - 4F -SUW-FAB140508,,,,,,,,,,2025-10-27 08:00,2025-10-28 17:00,2025-10-27 08:00,2025-10-28 17:00,2025-11-20 17:00,2025-11-20 17:00,2025-12-05 17:00,2025-12-05 17:00,0,16,100
ZX-12060,Complete Control Joint & Inspect - Elevator Hall #05 - 4F-SUW-FAB140508,Complete,Elevator Hall 5 - 4F -SUW-FAB140508,,,,,,,,,,2025-09-29 08:00,2025-09-30 17:00,2025-09-29 08:00,2025-09-30 17:00,2025-11-20 17:00,2025-11-20 17:00,2025-12-05 17:00,2025-12-05 17:00,0,16,100
FAB140508A-01,INSTALL DOOR FRAMES - FAB140508A,Not Started,Elevator Hall 5 - 4F -SUW-FAB140508,,,,,,,,,,2025-12-01 08:00,2025-12-01 17:00,,,2025-12-01 08:00,2025-12-01 17:00,2025-11-21 10:00,2025-11-24 10:00,8,8,0
FAB140508A-04,INSTALL DOOR & HARDWARE - FAB140508A,Not Started,Elevator Hall 5 - 4F -SUW-FAB140508,,,,,,,,,,2025-12-03 08:00,2025-12-09 17:00,,,2025-12-03 08:00,2025-12-09 17:00,2025-11-25 10:00,2025-12-02 10:00,40,40,0
FAB140508A-05,PAINT & PROTECT DOORS & FRAMES -  FAB140508A,Not Started,Elevator Hall 5 - 4F -SUW-FAB140508,,,,,,,,,,2026-02-16 08:00,2026-02-19 15:00,,,2026-02-16 08:00,2026-02-19 15:00,2025-12-02 10:00,2025-12-05 17:00,30,30,0
FAB140508B-01,INSTALL DOOR FRAMES - FAB140508B,Complete,Elevator Hall 5 - 4F -SUW-FAB140508,,,,,,,,,,2025-07-11 08:00,2025-07-11 17:00,2025-07-11 08:00,2025-07-11 17:00,2025-11-20 17:00,2025-11-20 17:00,2025-11-25 10:00,2025-11-25 10:00,0,8,100
FAB140508B-02,SECAI ROUGH IN/SECURITY -  FAB140508B,Complete,Elevator Hall 5 - 4F -SUW-FAB140508,,,,,,,,,,2025-07-11 08:00,2025-07-11 17:00,2025-07-11 08:00,2025-07-11 17:00,2025-11-20 17:00,2025-11-20 17:00,2025-11-25 10:00,2025-11-25 10:00,0,8,100
FAB140508B-04,INSTALL DOOR & HARDWARE - FAB140508B,Not Started,Elevator Hall 5 - 4F -SUW-FAB140508,,,,,,,,,,2025-11-21 08:00,2025-11-27 17:00,,,2025-11-21 08:00,2025-11-27 17:00,2025-11-25 10:00,2025-12-02 10:00,40,40,0
FAB140508B-05,PAINT & PROTECT DOORS & FRAMES -  FAB140508B,Not Started,Elevator Hall 5 - 4F -SUW-FAB140508,,,,,,,,,,2026-02-16 08:00,2026-02-19 15:00,,,2026-02-16 08:00,2026-02-19 15:00,2025-12-02 10:00,2025-12-05 17:00,30,30,0
FAB140508A-00,IMPACT OPENING REVIEW- FAB140508A,Active,Elevator Hall 5 - 4F -SUW-FAB140508,,,,,,,,,,2025-06-20 08:00,2025-07-10 17:00,2025-06-20 08:00,,2025-11-21 08:00,2025-11-28 17:00,2025-11-13 10:00,2025-11-21 10:00,48,120,0
FAB140508B-00,IMPACT OPENING REVIEW - FAB140508B,Complete,Elevator Hall 5 - 4F -SUW-FAB140508,,,,,,,,,,2025-06-20 08:00,2025-07-10 17:00,2025-06-20 08:00,2025-07-10 17:00,2025-11-20 17:00,2025-11-20 17:00,2025-11-25 10:00,2025-11-25 10:00,0,120,100
ZX-12340,Complete Drywall & Inspect - Elevator #05 - 4F-1FAB-EL5,Complete,Elevator 5 - 4F -SUW-FAB1-EL05,,,,,,,,,,2025-09-29 08:00,2025-09-30 17:00,2025-09-29 08:00,2025-09-30 17:00,2025-11-20 17:00,2025-11-20 17:00,2025-12-05 17:00,2025-12-05 17:00,0,16,100
ZX-12350,Complete Fire Caulk & Inspect - Elevator #05 - 4F-1FAB-EL5,Complete,Elevator 5 - 4F -SUW-FAB1-EL05,,,,,,,,,,2025-09-29 08:00,2025-09-30 17:00,2025-09-29 08:00,2025-09-30 17:00,2025-11-20 17:00,2025-11-20 17:00,2025-12-05 17:00,2025-12-05 17:00,0,16,100
ZX-12360,Complete Control Joint & Inspect - Elevator #05 - 4F-1FAB-EL5,Complete,Elevator 5 - 4F -SUW-FAB1-EL05,,,,,,,,,,2025-09-26 08:00,2025-09-30 17:00,2025-09-26 08:00,2025-09-30 17:00,2025-11-20 17:00,2025-11-20 17:00,2025-12-05 17:00,2025-12-05 17:00,0,24,100
ZX-12640,Complete Drywall & Inspect - NW Breezway 4F,Complete,NW Breezway - 4F - SUW,,,,,,,,,,2025-10-01 08:00,2025-10-14 17:00,2025-10-01 08:00,2025-10-13 17:00,2025-11-20 17:00,2025-11-20 17:00,2025-12-05 17:00,2025-12-05 17:00,0,80,100
ZX-12660,Complete Control Joint & Inspect - NW Breezway 4F,Complete,NW Breezway - 4F - SUW,,,,,,,,,,2025-10-10 08:00,2025-10-13 17:00,2025-10-10 08:00,2025-10-13 17:00,2025-11-20 17:00,2025-11-20 17:00,2025-12-05 17:00,2025-12-05 17:00,0,16,100
ZX-16390,PENDING RFI CONFRIMATION - NW Breezway 4F PENDING PRICING APPROVAL,Complete,NW Breezway - 4F - SUW,,,,,,,,,,2025-05-06 08:00,2025-05-26 17:00,2025-05-06 08:00,2025-06-13 16:00,2025-11-20 17:00,2025-11-20 17:00,2025-11-17 07:00,2025-11-17 07:00,0,120,100
ZX-18820,RFI -NW Breezway 4F PENDING PRICING APPROVAL,Complete,NW Breezway - 4F - SUW,,,,,,,,,,2025-05-06 08:00,2025-05-14 17:00,2025-06-16 08:00,2025-10-01 08:00,2025-11-20 17:00,2025-11-20 17:00,2025-12-05 17:00,2025-12-05 17:00,0,56,100
ZX-12130,Complete Drywall & Inspect - I/O Rm 2 - 4F-SUW-FAB140501 NON RATED WALLS,Complete,I/O Rm 2 - 4F - SUW-FAB140501,,,,,,,,,,2025-06-13 08:00,2025-06-23 17:00,2025-06-13 08:00,2025-06-19 16:00,2025-11-20 17:00,2025-11-20 17:00,2025-11-24 10:00,2025-11-24 10:00,0,56,100
ZX-12150,Complete Control Joint & Inspect - I/O Rm 2 - 4F-SUW-FAB140501,Complete,I/O Rm 2 - 4F - SUW-FAB140501,,,,,,,,,,2025-08-07 08:00,2025-08-08 17:00,2025-08-07 08:00,2025-08-08 17:00,2025-11-20 17:00,2025-11-20 17:00,2025-11-24 10:00,2025-11-24 10:00,0,16,100
FAB140501A-03,INSTALL DOOR FRAMES - FAB140501A,Not Started,I/O Rm 2 - 4F - SUW-FAB140501,,,,,,,,,,2025-12-10 08:00,2025-12-10 17:00,,,2025-12-10 08:00,2025-12-10 17:00,2025-11-24 10:00,2025-11-25 10:00,8,8,0
FAB140501A-04,INSTALL DOOR & HARDWARE - FAB140501A,Not Started,I/O Rm 2 - 4F - SUW-FAB140501,,,,,,,,,,2025-12-11 08:00,2025-12-17 17:00,,,2025-12-11 08:00,2025-12-17 17:00,2025-11-25 10:00,2025-12-02 10:00,40,40,0
FAB140501A-05,PAINT & PROTECT DOORS & FRAMES -  FAB140501A,Not Started,I/O Rm 2 - 4F - SUW-FAB140501,,,,,,,,,,2026-02-16 08:00,2026-02-19 15:00,,,2026-02-16 08:00,2026-02-19 15:00,2025-12-02 10:00,2025-12-05 17:00,30,30,0
ZX-18230,IMPACT - MEP OPENING SECAI - I/O Rm 2 - 4F-SUW-FAB140501,Complete,I/O Rm 2 - 4F - SUW-FAB140501,,,,,,,,,,2025-06-16 08:00,2025-06-24 17:00,2025-06-02 08:00,2025-06-13 16:00,2025-11-20 17:00,2025-11-20 17:00,2025-11-24 10:00,2025-11-24 10:00,0,56,100
ZX-18770,IMPACT - SECAI MEP WORK - Control Joint & Inspect-I/O Rm 2 - 4F-SUW-FAB140501,Complete,I/O Rm 2 - 4F - SUW-FAB140501,,,,,,,,,,2025-06-20 08:00,2025-06-26 17:00,2025-06-20 08:00,2025-08-06 17:00,2025-11-20 17:00,2025-11-20 17:00,2025-11-24 10:00,2025-11-24 10:00,0,40,100
ZX-12430,Complete Drywall & Inspect - MCC Rm 2 - 4F-SUW-FAB140509 NON RATED WALLS,Complete,MCC Rm 2 - 4F -SUW-FAB140509,,,,,,,,,,2025-06-10 08:00,2025-06-19 17:00,2025-06-10 08:00,2025-08-01 17:00,2025-11-20 17:00,2025-11-20 17:00,2025-11-21 10:00,2025-11-21 10:00,0,64,100
ZX-12450,Complete Control Joint & Inspect - MCC Rm 2 - 4F-SUW-FAB140509,Complete,MCC Rm 2 - 4F -SUW-FAB140509,,,,,,,,,,2025-09-03 08:00,2025-09-08 17:00,2025-09-03 08:00,2025-09-08 17:00,2025-11-20 17:00,2025-11-20 17:00,2025-11-21 10:00,2025-11-21 10:00,0,32,100
FAB140509A-01,INSTALL DOOR FRAMES - FAB140509A,Not Started,MCC Rm 2 - 4F -SUW-FAB140509,,,,,,,,,,2025-11-21 08:00,2025-11-21 17:00,,,2025-11-21 08:00,2025-11-21 17:00,2025-11-24 10:00,2025-11-25 10:00,8,8,0
FAB140509A-04,INSTALL DOOR & HARDWARE - FAB140509A,Not Started,MCC Rm 2 - 4F -SUW-FAB140509,,,,,,,,,,2025-11-24 08:00,2025-11-28 17:00,,,2025-11-24 08:00,2025-11-28 17:00,2025-11-25 10:00,2025-12-02 10:00,40,40,0
FAB140509A-05,PAINT & PROTECT DOORS & FRAMES -  FAB140509A,Not Started,MCC Rm 2 - 4F -SUW-FAB140509,,,,,,,,,,2026-02-16 08:00,2026-02-19 15:00,,,2026-02-16 08:00,2026-02-19 15:00,2025-12-02 10:00,2025-12-05 17:00,30,30,0
FAB140509B-01,INSTALL DOOR FRAMES - FAB140509B,Not Started,MCC Rm 2 - 4F -SUW-FAB140509,,,,,,,,,,2025-12-10 08:00,2025-12-10 17:00,,,2025-12-10 08:00,2025-12-10 17:00,2025-11-21 10:00,2025-11-24 10:00,8,8,0
FAB140509B-04,INSTALL DOOR & HARDWARE - FAB140509B,Not Started,MCC Rm 2 - 4F -SUW-FAB140509,,,,,,,,,,2025-12-12 08:00,2025-12-18 17:00,,,2025-12-12 08:00,2025-12-18 17:00,2025-11-25 10:00,2025-12-02 10:00,40,40,0
FAB140509B-05,PAINT & PROTECT DOORS & FRAMES -  FAB140509B,Not Started,MCC Rm 2 - 4F -SUW-FAB140509,,,,,,,,,,2026-02-16 08:00,2026-02-19 15:00,,,2026-02-16 08:00,2026-02-19 15:00,2025-12-02 10:00,2025-12-05 17:00,30,30,0
ZX-18680,IMPACT - SECAI MEP SCAFFOLD - MCC Rm 2 - 4F-SUW-FAB140509,Complete,MCC Rm 2 - 4F -SUW-FAB140509,,,,,,,,,,2025-06-13 08:00,2025-06-26 17:00,2025-06-13 08:00,2025-07-28 08:00,2025-11-20 17:00,2025-11-20 17:00,2025-11-21 10:00,2025-11-21 10:00,0,80,100
ZX-12730,SECAI TOOK OVER FOR DESIGN ISSUES - Complete Drywall & Inspect - Rated Chase West - 4F-SUW-FAB140510,Complete,Rated Chase West - 4F -SUW-FAB140510,,,,,,,,,,2025-08-04 08:00,2025-08-15 17:00,2025-08-15 08:00,2025-08-15 17:00,2025-11-20 17:00,2025-11-20 17:00,2025-11-24 10:00,2025-11-24 10:00,0,80,100
ZX-12740,SECAI TOOK OVER FOR DESIGN ISSUES - Complete Fire Caulk & Inspect - Rated Chase West - 4F-SUW-FAB140510,Complete,Rated Chase West - 4F -SUW-FAB140510,,,,,,,,,,2025-08-14 08:00,2025-08-15 17:00,2025-08-15 08:00,2025-08-15 17:00,2025-11-20 17:00,2025-11-20 17:00,2025-12-05 17:00,2025-12-05 17:00,0,16,100
ZX-12750,SECAI TOOK OVER FOR DESIGN ISSUES - Complete Control Joint & Inspect - Rated Chase West - 4F-SUW-FAB140510,Complete,Rated Chase West - 4F -SUW-FAB140510,,,,,,,,,,2025-08-15 08:00,2025-08-18 17:00,2025-08-15 08:00,2025-08-15 17:00,2025-11-20 17:00,2025-11-20 17:00,2025-11-24 10:00,2025-11-24 10:00,0,16,100
FAB140510A-03,INSTALL DOOR FRAMES - FAB140510A,Not Started,Rated Chase West - 4F -SUW-FAB140510,,,,,,,,,,2025-11-21 08:00,2025-11-21 17:00,,,2025-11-21 08:00,2025-11-21 17:00,2025-11-24 10:00,2025-11-25 10:00,8,8,0
FAB140510A-04,INSTALL DOOR & HARDWARE - FAB140510A,Not Started,Rated Chase West - 4F -SUW-FAB140510,,,,,,,,,,2025-11-24 08:00,2025-11-28 17:00,,,2025-11-24 08:00,2025-11-28 17:00,2025-11-25 10:00,2025-12-02 10:00,40,40,0
FAB140510A-05,PAINT & PROTECT DOORS & FRAMES -  FAB140510A,Not Started,Rated Chase West - 4F -SUW-FAB140510,,,,,,,,,,2026-02-16 08:00,2026-02-19 15:00,,,2026-02-16 08:00,2026-02-19 15:00,2025-12-02 10:00,2025-12-05 17:00,30,30,0
ZX-12280,Complete Drywall & Inspect - Duct Shaft - 4F-SUW-FAB140502 (MK MARLOW),Complete,Duct Shaft - 4F -SUW-FAB140502,,,,,,,,,,2025-09-02 08:00,2025-09-08 17:00,2025-09-02 08:00,2025-09-08 17:00,2025-11-20 17:00,2025-11-20 17:00,2025-11-24 10:00,2025-11-24 10:00,0,40,100
ZX-12290,Complete Fire Caulk & Inspect - Duct Shaft - 4F-SUW-FAB140502,Complete,Duct Shaft - 4F -SUW-FAB140502,,,,,,,,,,2025-10-06 08:00,2025-10-07 17:00,2025-10-06 08:00,2025-10-07 17:00,2025-11-20 17:00,2025-11-20 17:00,2025-12-05 17:00,2025-12-05 17:00,0,16,100
FAB140502A-03,INSTALL DOOR FRAMES - FAB140502A,Not Started,Duct Shaft - 4F -SUW-FAB140502,,,,,,,,,,2025-11-21 08:00,2025-11-21 17:00,,,2025-11-21 08:00,2025-11-21 17:00,2025-11-24 10:00,2025-11-25 10:00,8,8,0
FAB140502A-04,INSTALL DOOR & HARDWARE - FAB140502A,Not Started,Duct Shaft - 4F -SUW-FAB140502,,,,,,,,,,2025-11-24 08:00,2025-11-28 17:00,,,2025-11-24 08:00,2025-11-28 17:00,2025-11-25 10:00,2025-12-02 10:00,40,40,0
FAB140502A-05,PAINT & PROTECT DOORS & FRAMES -  FAB140502A,Not Started,Duct Shaft - 4F -SUW-FAB140502,,,,,,,,,,2026-02-16 08:00,2026-02-19 15:00,,,2026-02-16 08:00,2026-02-19 15:00,2025-12-02 10:00,2025-12-05 17:00,30,30,0
FAB142101B-03,INSTALL DOOR FRAMES - FAB142101B,Not Started,Duct Shaft - 4F -SUW-FAB140502,,,,,,,,,,2025-11-21 08:00,2025-11-21 17:00,,,2025-11-21 08:00,2025-11-21 17:00,2025-11-24 10:00,2025-11-25 10:00,8,8,0
FAB142101B-04,INSTALL DOOR & HARDWARE - FAB142101B,Not Started,Duct Shaft - 4F -SUW-FAB140502,,,,,,,,,,2025-11-24 08:00,2025-11-28 17:00,,,2025-11-24 08:00,2025-11-28 17:00,2025-11-25 10:00,2025-12-02 10:00,40,40,0
FAB142101B-05,PAINT & PROTECT DOORS & FRAMES -  FAB142101B,Not Started,Duct Shaft - 4F -SUW-FAB140502,,,,,,,,,,2026-02-16 08:00,2026-02-19 15:00,,,2026-02-16 08:00,2026-02-19 15:00,2025-12-02 10:00,2025-12-05 17:00,30,30,0
FAB142101C-03,INSTALL DOOR FRAMES - FAB142101C,Not Started,Duct Shaft - 4F -SUW-FAB140502,,,,,,,,,,2025-11-21 08:00,2025-11-21 17:00,,,2025-11-21 08:00,2025-11-21 17:00,2025-11-24 10:00,2025-11-25 10:00,8,8,0
FAB142101C -04,INSTALL DOOR & HARDWARE - FAB142101C,Not Started,Duct Shaft - 4F -SUW-FAB140502,,,,,,,,,,2025-11-24 08:00,2025-11-28 17:00,,,2025-11-24 08:00,2025-11-28 17:00,2025-11-25 10:00,2025-12-02 10:00,40,40,0
FAB142101C-05,PAINT & PROTECT DOORS & FRAMES -  FAB142101C,Not Started,Duct Shaft - 4F -SUW-FAB140502,,,,,,,,,,2026-02-16 08:00,2026-02-19 15:00,,,2026-02-16 08:00,2026-02-19 15:00,2025-12-02 10:00,2025-12-05 17:00,30,30,0
ZX-19020,IMPACT - WAITING ON PRICING FOR EJ - Duct Shaft - 4F-SUW-FAB140502 (MK MARLOW),Complete,Duct Shaft - 4F -SUW-FAB140502,,,,,,,,,,2025-06-27 08:00,2025-07-03 17:00,2025-06-27 08:00,2025-09-01 17:00,2025-11-20 17:00,2025-11-20 17:00,2025-11-24 10:00,2025-11-24 10:00,0,40,100
ZX-12580,Complete Drywall & Inspect - Vestibule 3 - 4F-SUW-FAB140303,Complete,Vestibule 3 - 4F -SUW-FAB140303,,,,,,,,,,2025-06-19 08:00,2025-06-27 17:00,2025-06-10 08:00,2025-08-08 17:00,2025-11-20 17:00,2025-11-20 17:00,2025-12-05 17:00,2025-12-05 17:00,0,56,100
ZX-12590,Complete Fire Caulk & Inspect - Vestibule 3 - 4F-SUW-FAB140303,Complete,Vestibule 3 - 4F -SUW-FAB140303,,,,,,,,,,2025-09-04 08:00,2025-09-05 17:00,2025-09-04 08:00,2025-09-05 17:00,2025-11-20 17:00,2025-11-20 17:00,2025-12-05 17:00,2025-12-05 17:00,0,16,100
ZX-12600,Complete Control Joint & Inspect - Vestibule #03 - 4F-SUW-FAB140303,Complete,Vestibule 3 - 4F -SUW-FAB140303,,,,,,,,,,2025-08-07 08:00,2025-08-08 17:00,2025-08-07 08:00,2025-08-08 17:00,2025-11-20 17:00,2025-11-20 17:00,2025-12-05 17:00,2025-12-05 17:00,0,16,100
FAB140303A-01,INSTALL DOOR FRAMES - FAB140303A,Not Started,Vestibule 3 - 4F -SUW-FAB140303,,,,,,,,,,2025-12-10 08:00,2025-12-10 17:00,,,2025-12-10 08:00,2025-12-10 17:00,2025-11-21 10:00,2025-11-24 10:00,8,8,0
FAB140303A-04,INSTALL DOOR & HARDWARE - FAB140303A,Not Started,Vestibule 3 - 4F -SUW-FAB140303,,,,,,,,,,2025-12-12 08:00,2025-12-18 17:00,,,2025-12-12 08:00,2025-12-18 17:00,2025-11-25 10:00,2025-12-02 10:00,40,40,0
FAB140303A-05,PAINT & PROTECT DOORS & FRAMES - FAB140303A,Not Started,Vestibule 3 - 4F -SUW-FAB140303,,,,,,,,,,2026-02-16 08:00,2026-02-19 15:00,,,2026-02-16 08:00,2026-02-19 15:00,2025-12-02 10:00,2025-12-05 17:00,30,30,0
FAB140303B-01,INSTALL DOOR FRAMES - FAB140303B,Complete,Vestibule 3 - 4F -SUW-FAB140303,,,,,,,,,,2025-07-03 08:00,2025-07-03 17:00,2025-05-22 08:00,2025-05-22 16:00,2025-11-20 17:00,2025-11-20 17:00,2025-11-25 10:00,2025-11-25 10:00,0,8,100
FAB140303B-04,INSTALL DOOR & HARDWARE - FAB140303B,Active,Vestibule 3 - 4F -SUW-FAB140303,,,,,,,,,,2025-09-10 08:00,2025-09-16 17:00,2025-09-10 08:00,,2025-11-21 08:00,2025-11-27 17:00,2025-11-25 10:00,2025-12-02 10:00,40,40,0
FAB140303B-05,PAINT & PROTECT DOORS & FRAMES - FAB140303B,Not Started,Vestibule 3 - 4F -SUW-FAB140303,,,,,,,,,,2026-02-16 08:00,2026-02-19 15:00,,,2026-02-16 08:00,2026-02-19 15:00,2025-12-02 10:00,2025-12-05 17:00,30,30,0
FAB140303C-01,INSTALL DOOR FRAMES - FAB140303C,Complete,Vestibule 3 - 4F -SUW-FAB140303,,,,,,,,,,2025-07-03 08:00,2025-07-03 17:00,2025-05-22 08:00,2025-05-22 16:00,2025-11-20 17:00,2025-11-20 17:00,2025-12-05 17:00,2025-12-05 17:00,0,8,100
FAB140303C-04,INSTALL DOOR & HARDWARE - FAB140303C,Not Started,Vestibule 3 - 4F -SUW-FAB140303,,,,,,,,,,2025-12-01 08:00,2025-12-05 17:00,,,2025-12-01 08:00,2025-12-05 17:00,2025-11-25 10:00,2025-12-02 10:00,40,40,0
FAB140303C-05,PAINT & PROTECT DOORS & FRAMES  - FAB140303C,Not Started,Vestibule 3 - 4F -SUW-FAB140303,,,,,,,,,,2026-02-16 08:00,2026-02-19 15:00,,,2026-02-16 08:00,2026-02-19 15:00,2025-12-02 10:00,2025-12-05 17:00,30,30,0
ZX-12880,Complete Drywall & Inspect - Voc CTR Rm - 4F-SUW-FAB140301,Complete,Voc CTR Rm - 4F -SUW-FAB140301,,,,,,,,,,2025-06-23 08:00,2025-07-01 17:00,2025-05-15 08:00,2025-05-19 16:00,2025-11-20 17:00,2025-11-20 17:00,2025-11-25 10:00,2025-11-25 10:00,0,56,100
ZX-12890,Complete Fire Caulk & Inspect - Voc CTR Rm - 4F-SUW-FAB140301,Complete,Voc CTR Rm - 4F -SUW-FAB140301,,,,,,,,,,2025-09-04 08:00,2025-09-05 17:00,2025-09-04 08:00,2025-09-05 17:00,2025-11-20 17:00,2025-11-20 17:00,2025-12-05 17:00,2025-12-05 17:00,0,16,100
ZX-12900,Complete Control Joint & Inspect - Voc CTR Rm - 4F-SUW-FAB140301,Complete,Voc CTR Rm - 4F -SUW-FAB140301,,,,,,,,,,2025-07-02 08:00,2025-07-03 17:00,2025-05-19 08:00,2025-05-21 16:00,2025-11-20 17:00,2025-11-20 17:00,2025-11-25 10:00,2025-11-25 10:00,0,16,100
FAB140301A-01,INSTALL DOOR FRAMES - FAB140301A,Not Started,Voc CTR Rm - 4F -SUW-FAB140301,,,,,,,,,,2025-12-10 08:00,2025-12-10 17:00,,,2025-12-10 08:00,2025-12-10 17:00,2025-11-21 10:00,2025-11-24 10:00,8,8,0
FAB140301A-04,INSTALL DOOR & HARDWARE - FAB140301A,Not Started,Voc CTR Rm - 4F -SUW-FAB140301,,,,,,,,,,2025-12-12 08:00,2025-12-18 17:00,,,2025-12-12 08:00,2025-12-18 17:00,2025-11-25 10:00,2025-12-02 10:00,40,40,0
FAB140301A-05,PAINT & PROTECT DOORS & FRAMES -  FAB140301A,Not Started,Voc CTR Rm - 4F -SUW-FAB140301,,,,,,,,,,2026-02-16 08:00,2026-02-19 15:00,,,2026-02-16 08:00,2026-02-19 15:00,2025-12-02 10:00,2025-12-05 17:00,30,30,0
ZX-12250,Complete Drywall & Inspect - Duct Shaft - 4F-SUW-FAB140201 (MK MARLOW),Complete,Duct Shaft - 4F -SUW-FAB140201,,,,,,,,,,2025-09-02 08:00,2025-09-08 17:00,2025-09-02 08:00,2025-09-08 17:00,2025-11-20 17:00,2025-11-20 17:00,2025-11-24 10:00,2025-11-24 10:00,0,40,100
ZX-12260,Complete Fire Caulk & Inspect - Duct Shaft - 4F-SUW-FAB140201 (MK MARLOW),Complete,Duct Shaft - 4F -SUW-FAB140201,,,,,,,,,,2025-10-06 08:00,2025-10-07 17:00,2025-10-06 08:00,2025-10-07 17:00,2025-11-20 17:00,2025-11-20 17:00,2025-12-05 17:00,2025-12-05 17:00,0,16,100
FAB140201A-01,IMPACT - INSTALL/REWORK DRYWALL FRAMING AROUND DOORS - FAB140201A,Complete,Duct Shaft - 4F -SUW-FAB140201,,,,,,,,,,2025-07-30 08:00,2025-08-07 17:00,2025-07-11 08:00,2025-07-11 17:00,2025-11-20 17:00,2025-11-20 17:00,2025-11-25 10:00,2025-11-25 10:00,0,56,100
FAB140201A-02,SECAI ROUGH IN/SECURITY -  FAB140201A,Complete,Duct Shaft - 4F -SUW-FAB140201,,,,,,,,,,2025-08-08 08:00,2025-08-08 17:00,2025-07-11 08:00,2025-07-11 17:00,2025-11-20 17:00,2025-11-20 17:00,2025-11-25 10:00,2025-11-25 10:00,0,8,100
FAB140201A-03,INSTALL DOOR FRAMES - FAB140201A,Complete,Duct Shaft - 4F -SUW-FAB140201,,,,,,,,,,2025-08-11 08:00,2025-08-11 17:00,2025-07-11 08:00,2025-07-11 17:00,2025-11-20 17:00,2025-11-20 17:00,2025-11-25 10:00,2025-11-25 10:00,0,8,100
FAB140201A-04,INSTALL DOOR & HARDWARE - FAB140201A,Not Started,Duct Shaft - 4F -SUW-FAB140201,,,,,,,,,,2025-11-21 08:00,2025-11-27 17:00,,,2025-11-21 08:00,2025-11-27 17:00,2025-11-25 10:00,2025-12-02 10:00,40,40,0
FAB140201A-05,PAINT & PROTECT DOORS & FRAMES -  FAB140201A,Not Started,Duct Shaft - 4F -SUW-FAB140201,,,,,,,,,,2026-02-16 08:00,2026-02-19 15:00,,,2026-02-16 08:00,2026-02-19 15:00,2025-12-02 10:00,2025-12-05 17:00,30,30,0
FAB142101A-03,INSTALL DOOR FRAMES - FAB142101A,Not Started,Duct Shaft - 4F -SUW-FAB140201,,,,,,,,,,2025-11-21 08:00,2025-11-21 17:00,,,2025-11-21 08:00,2025-11-21 17:00,2025-11-24 10:00,2025-11-25 10:00,8,8,0
FAB142101A-04,INSTALL DOOR & HARDWARE - FAB142101A,Not Started,Duct Shaft - 4F -SUW-FAB140201,,,,,,,,,,2025-11-24 08:00,2025-11-28 17:00,,,2025-11-24 08:00,2025-11-28 17:00,2025-11-25 10:00,2025-12-02 10:00,40,40,0
FAB142101A-05,PAINT & PROTECT DOORS & FRAMES -  FAB142101A,Not Started,Duct Shaft - 4F -SUW-FAB140201,,,,,,,,,,2026-02-16 08:00,2026-02-19 15:00,,,2026-02-16 08:00,2026-02-19 15:00,2025-12-02 10:00,2025-12-05 17:00,30,30,0
ZX-19060,IMPACT - WAITING FOR EJ PRICING - Duct Shaft - 4F-SUW-FAB140201 (MK MARLOW),Complete,Duct Shaft - 4F -SUW-FAB140201,,,,,,,,,,2025-06-27 08:00,2025-07-10 17:00,2025-06-27 08:00,2025-09-01 17:00,2025-11-20 17:00,2025-11-20 17:00,2025-11-24 10:00,2025-11-24 10:00,0,80,100
ZX-12550,Complete Drywall & Inspect - IT/Security 1 - 4F-SUW-FAB140105,Complete,IT/Security 1 - 4F -SUW-FAB140105,,,,,,,,,,2025-06-16 08:00,2025-06-17 17:00,2025-06-02 08:00,2025-06-04 16:00,2025-11-20 17:00,2025-11-20 17:00,2025-11-25 10:00,2025-11-25 10:00,0,16,100
ZX-12560,Complete Fire Caulk & Inspect - IT/Security 1 - 4F-SUW-FAB140105,Complete,IT/Security 1 - 4F -SUW-FAB140105,,,,,,,,,,2025-05-27 08:00,2025-05-28 17:00,2025-05-27 08:00,2025-05-30 16:00,2025-11-20 17:00,2025-11-20 17:00,2025-12-05 17:00,2025-12-05 17:00,0,16,100
ZX-12570,Complete Control Joint & Inspect - IT/Security 1 - 4F-SUW-FAB140105,Complete,IT/Security 1 - 4F -SUW-FAB140105,,,,,,,,,,2025-06-10 08:00,2025-06-16 17:00,2025-06-10 08:00,2025-09-08 08:00,2025-11-20 17:00,2025-11-20 17:00,2025-11-25 10:00,2025-11-25 10:00,0,40,100
TR-FAB140105A-03,INSTALL DOOR FRAMES - TR - FAB140105A,Complete,IT/Security 1 - 4F -SUW-FAB140105,,,,,,,,,,2025-07-03 08:00,2025-07-11 17:00,2025-07-03 08:00,2025-07-03 17:00,2025-11-20 17:00,2025-11-20 17:00,2025-11-25 10:00,2025-11-25 10:00,0,56,100
TR-FAB140105A-02,SECAI ROUGH IN/SECURITY -  TR - FAB140105A,Complete,IT/Security 1 - 4F -SUW-FAB140105,,,,,,,,,,2025-07-03 08:00,2025-07-03 17:00,2025-07-03 08:00,2025-07-03 17:00,2025-11-20 17:00,2025-11-20 17:00,2025-11-25 10:00,2025-11-25 10:00,0,8,100
TR-FAB140105A-04,INSTALL DOOR & HARDWARE - TR - FAB140105A,Not Started,IT/Security 1 - 4F -SUW-FAB140105,,,,,,,,,,2025-11-21 08:00,2025-11-27 17:00,,,2025-11-21 08:00,2025-11-27 17:00,2025-11-25 10:00,2025-12-02 10:00,40,40,0
TR-FAB140105A-05,PAINT & PROTECT DOORS & FRAMES -  TR - FAB140105A,Not Started,IT/Security 1 - 4F -SUW-FAB140105,,,,,,,,,,2026-02-16 08:00,2026-02-19 15:00,,,2026-02-16 08:00,2026-02-19 15:00,2025-12-02 10:00,2025-12-05 17:00,30,30,0
ZX-18690,IMPACT BERG SCAFFOLD NEEDED- IT/Security 1 - 4F-SUW-FAB140105,Complete,IT/Security 1 - 4F -SUW-FAB140105,,,,,,,,,,2025-06-13 08:00,2025-06-26 17:00,2025-06-13 08:00,2025-09-05 17:00,2025-11-20 17:00,2025-11-20 17:00,2025-11-25 10:00,2025-11-25 10:00,0,80,100
ZX-12850,Complete Drywall & Inspect - Fire Alarm 1 - 4F-SUW-FAB140103,Complete,Fire Alarm 1 - 4F -SUW-FAB140103,,,,,,,,,,2025-06-10 08:00,2025-06-18 17:00,2025-06-10 08:00,2025-06-16 16:00,2025-11-20 17:00,2025-11-20 17:00,2025-11-24 10:00,2025-11-24 10:00,0,56,100
ZX-12860,Complete Fire Caulk & Inspect - Fire Alarm 1 - 4F-SUW-FAB140103,Complete,Fire Alarm 1 - 4F -SUW-FAB140103,,,,,,,,,,2025-06-18 08:00,2025-06-19 17:00,2025-06-18 08:00,2025-06-19 16:00,2025-11-20 17:00,2025-11-20 17:00,2025-12-05 17:00,2025-12-05 17:00,0,16,100
ZX-12870,Complete Control Joint & Inspect - Fire Alarm 1 - 4F-SUW-FAB140103,Complete,Fire Alarm 1 - 4F -SUW-FAB140103,,,,,,,,,,2025-06-16 08:00,2025-06-17 17:00,2025-06-16 08:00,2025-06-18 16:00,2025-11-20 17:00,2025-11-20 17:00,2025-11-24 10:00,2025-11-24 10:00,0,16,100
FAB140103A-03,INSTALL DOOR FRAMES - FAB140103A,Not Started,Fire Alarm 1 - 4F -SUW-FAB140103,,,,,,,,,,2025-11-21 08:00,2025-11-21 17:00,,,2025-11-21 08:00,2025-11-21 17:00,2025-11-24 10:00,2025-11-25 10:00,8,8,0
FAB140103A-04,INSTALL DOOR & HARDWARE - FAB140103A,Not Started,Fire Alarm 1 - 4F -SUW-FAB140103,,,,,,,,,,2025-11-24 08:00,2025-11-28 17:00,,,2025-11-24 08:00,2025-11-28 17:00,2025-11-25 10:00,2025-12-02 10:00,40,40,0
FAB140103A-05,PAINT & PROTECT DOORS & FRAMES -  FAB140103A,Not Started,Fire Alarm 1 - 4F -SUW-FAB140103,,,,,,,,,,2026-02-16 08:00,2026-02-19 15:00,,,2026-02-16 08:00,2026-02-19 15:00,2025-12-02 10:00,2025-12-05 17:00,30,30,0
FAB140103A-11,IMPACT - PROCUREMENT - REORDERED DOORS (JAMB DEPTH ISSUE),Complete,Fire Alarm 1 - 4F -SUW-FAB140103,,,,,,,,,,2025-06-20 08:00,2025-08-14 17:00,2025-06-20 08:00,2025-06-30 17:00,2025-11-20 17:00,2025-11-20 17:00,2025-11-24 10:00,2025-11-24 10:00,0,320,100
ZX-12190,Complete Drywall & Inspect - Elevator Hall #01 - 4F-SUW-FAB140101,Complete,Elevator Hall 1 - 4F -SUW-FAB140101,,,,,,,,,,2025-09-04 08:00,2025-09-08 17:00,2025-09-04 08:00,2025-09-08 17:00,2025-11-20 17:00,2025-11-20 17:00,2025-11-25 10:00,2025-11-25 10:00,0,24,100
ZX-12200,Complete Fire Caulk & Inspect - Elevator Hall #01 - 4F-SUW-FAB140101,Not Started,Elevator Hall 1 - 4F -SUW-FAB140101,,,,,,,,,,2025-11-21 08:00,2025-11-21 17:00,,,2025-11-21 08:00,2025-11-21 17:00,2025-12-05 08:00,2025-12-05 17:00,8,8,0
ZX-12210,Complete Control Joint & Inspect - Elevator Hall #01 - 4F-SUW-FAB140101,Complete,Elevator Hall 1 - 4F -SUW-FAB140101,,,,,,,,,,2025-09-08 08:00,2025-09-09 17:00,2025-09-08 08:00,2025-09-09 17:00,2025-11-20 17:00,2025-11-20 17:00,2025-11-25 10:00,2025-11-25 10:00,0,16,100
FAB140101A-01,INSTALL DOOR FRAMES - FAB140101A,Not Started,Elevator Hall 1 - 4F -SUW-FAB140101,,,,,,,,,,2025-12-10 08:00,2025-12-10 17:00,,,2025-12-10 08:00,2025-12-10 17:00,2025-11-21 10:00,2025-11-24 10:00,8,8,0
FAB140101A-04,INSTALL DOOR & HARDWARE - FAB140101A,Not Started,Elevator Hall 1 - 4F -SUW-FAB140101,,,,,,,,,,2025-12-12 08:00,2025-12-18 17:00,,,2025-12-12 08:00,2025-12-18 17:00,2025-11-25 10:00,2025-12-02 10:00,40,40,0
FAB140101A-05,PAINT & PROTECT DOORS & FRAMES -  FAB140101A,Not Started,Elevator Hall 1 - 4F -SUW-FAB140101,,,,,,,,,,2026-02-16 08:00,2026-02-19 15:00,,,2026-02-16 08:00,2026-02-19 15:00,2025-12-02 10:00,2025-12-05 17:00,30,30,0
FAB140101B-01,INSTALL DOOR FRAMES - FAB140101B,Not Started,Elevator Hall 1 - 4F -SUW-FAB140101,,,,,,,,,,2025-12-10 08:00,2025-12-10 17:00,,,2025-12-10 08:00,2025-12-10 17:00,2025-11-21 10:00,2025-11-24 10:00,8,8,0
FAB140101B-04,INSTALL DOOR & HARDWARE - FAB140101B,Not Started,Elevator Hall 1 - 4F -SUW-FAB140101,,,,,,,,,,2025-12-12 08:00,2025-12-18 17:00,,,2025-12-12 08:00,2025-12-18 17:00,2025-11-25 10:00,2025-12-02 10:00,40,40,0
FAB140101B-05,PAINT & PROTECT DOORS & FRAMES -  FAB140101B,Not Started,Elevator Hall 1 - 4F -SUW-FAB140101,,,,,,,,,,2026-02-16 08:00,2026-02-19 15:00,,,2026-02-16 08:00,2026-02-19 15:00,2025-12-02 10:00,2025-12-05 17:00,30,30,0
ZX-18240,IMPACT - SECAI DEMO RAMP - Elevator Hall #01 - 4F-SUW-FAB140101,Complete,Elevator Hall 1 - 4F -SUW-FAB140101,,,,,,,,,,2025-06-16 08:00,2025-06-18 17:00,2025-05-12 08:00,2025-09-08 08:00,2025-11-20 17:00,2025-11-20 17:00,2025-11-25 10:00,2025-11-25 10:00,0,24,100
FAB140601C-01,INSTALL DOOR FRAMES - FAB140601C,Not Started,Elevator Hall 1 - 4F -SUW-FAB140101,,,,,,,,,,2025-12-10 08:00,2025-12-10 17:00,,,2025-12-10 08:00,2025-12-10 17:00,2025-11-21 10:00,2025-11-24 10:00,8,8,0
FAB140601C-04,INSTALL DOOR & HARDWARE - FAB140601C,Not Started,Elevator Hall 1 - 4F -SUW-FAB140101,,,,,,,,,,2025-12-12 08:00,2025-12-18 17:00,,,2025-12-12 08:00,2025-12-18 17:00,2025-11-25 10:00,2025-12-02 10:00,40,40,0
FAB140601C-05,PAINT & PROTECT DOORS & FRAMES -  FAB140601C,Not Started,Elevator Hall 1 - 4F -SUW-FAB140101,,,,,,,,,,2026-02-16 08:00,2026-02-19 15:00,,,2026-02-16 08:00,2026-02-19 15:00,2025-12-02 10:00,2025-12-05 17:00,30,30,0
FAB140601B-01,INSTALL DOOR FRAMES - FAB140601B,Not Started,Elevator Hall 1 - 4F -SUW-FAB140101,,,,,,,,,,2025-12-10 08:00,2025-12-10 17:00,,,2025-12-10 08:00,2025-12-10 17:00,2025-11-21 10:00,2025-11-24 10:00,8,8,0
FAB140601B-04,INSTALL DOOR & HARDWARE - FAB140601B,Not Started,Elevator Hall 1 - 4F -SUW-FAB140101,,,,,,,,,,2025-12-12 08:00,2025-12-18 17:00,,,2025-12-12 08:00,2025-12-18 17:00,2025-11-25 10:00,2025-12-02 10:00,40,40,0
FAB140601B-05,PAINT & PROTECT DOORS & FRAMES -  FAB140601B,Not Started,Elevator Hall 1 - 4F -SUW-FAB140101,,,,,,,,,,2026-02-16 08:00,2026-02-19 15:00,,,2026-02-16 08:00,2026-02-19 15:00,2025-12-02 10:00,2025-12-05 17:00,30,30,0
ZX-12490,SECAI TOOK OVER FOR ACCELERATION - Drywall & Inspect - Elevator #01 - 4F-1FAB-EL,Complete,Elevator 1 - 4F -SUW-FAB1-EL01,,,,,,,,,,2025-09-09 08:00,2025-09-19 17:00,2025-09-19 08:00,2025-09-19 17:00,2025-11-20 17:00,2025-11-20 17:00,2025-12-05 17:00,2025-12-05 17:00,0,72,100
ZX-12500,SECAI TOOK OVER FOR ACCELERATION - Fire Caulk & Inspect - Elevator #01 - 4F-1FAB-EL,Complete,Elevator 1 - 4F -SUW-FAB1-EL01,,,,,,,,,,2025-09-18 08:00,2025-09-19 17:00,2025-09-19 08:00,2025-09-19 17:00,2025-11-20 17:00,2025-11-20 17:00,2025-12-05 17:00,2025-12-05 17:00,0,16,100
ZX-12510,SECAI TOOK OVER FOR ACCELERATION - Control Joint & Inspect - Elevator #01 - 4F-1FAB-EL,Complete,Elevator 1 - 4F -SUW-FAB1-EL01,,,,,,,,,,2025-09-18 08:00,2025-09-19 17:00,2025-09-19 08:00,2025-09-19 17:00,2025-11-20 17:00,2025-11-20 17:00,2025-12-05 17:00,2025-12-05 17:00,0,16,100
ZX-16600,IMPACT - Complete Drywall & Inspect - Elevator #01 - 4F-1FAB-EL - ELEVATOR TEAM TOOK OVER,Complete,Elevator 1 - 4F -SUW-FAB1-EL01,,,,,,,,,,2025-05-05 08:00,2025-05-23 17:00,2025-05-05 08:00,2025-09-15 17:00,2025-11-20 17:00,2025-11-20 17:00,2025-12-05 17:00,2025-12-05 17:00,0,120,100
ZX-12790,Complete Drywall & Inspect - Elevator #1B - 4F-1FAB-EL1B (Only missing FRONT by MK MARLOW),Complete,Elevator 1B-4F-1FAB-EL1B,,,,,,,,,,2025-05-16 08:00,2025-05-29 17:00,2025-05-16 08:00,2025-08-01 08:00,2025-11-20 17:00,2025-11-20 17:00,2025-12-05 17:00,2025-12-05 17:00,0,80,100
ZX-12800,Complete Fire Caulk & Inspect - Elevator #01B - 4F-1FAB-EL1B,Complete,Elevator 1B-4F-1FAB-EL1B,,,,,,,,,,2025-08-01 08:00,2025-08-01 17:00,2025-08-01 08:00,2025-08-01 17:00,2025-11-20 17:00,2025-11-20 17:00,2025-12-05 17:00,2025-12-05 17:00,0,8,100
ZX-12810,Complete Control Joint & Inspect - Elevator #1B - 4F-1FAB-EL1B,Complete,Elevator 1B-4F-1FAB-EL1B,,,,,,,,,,2025-07-28 08:00,2025-07-29 17:00,2025-07-28 08:00,2025-08-01 17:00,2025-11-20 17:00,2025-11-20 17:00,2025-12-05 17:00,2025-12-05 17:00,0,16,100
ZX-18250,RFI ELEVATOR FRONT - DESIGN - Elevator #1B - 4F-1FAB-EL1B,Complete,Elevator 1B-4F-1FAB-EL1B,,,,,,,,,,2025-05-16 08:00,2025-05-29 17:00,2025-05-19 08:00,2025-06-13 16:00,2025-11-20 17:00,2025-11-20 17:00,2025-12-05 17:00,2025-12-05 17:00,0,80,100
ZX-13030,Complete Drywall & Inspect - MCC Rm - 4F-SUW-FAB140106,Complete,MCC Rm - 4F -SUW-FAB140106,,,,,,,,,,2025-05-13 08:00,2025-05-15 17:00,2025-05-13 08:00,2025-05-15 16:00,2025-11-20 17:00,2025-11-20 17:00,2025-11-25 10:00,2025-11-25 10:00,0,24,100
ZX-13040,Complete Fire Caulk & Inspect - MCC Rm - 4F-SUW-FAB140106,Complete,MCC Rm - 4F -SUW-FAB140106,,,,,,,,,,2025-10-27 08:00,2025-10-29 17:00,2025-10-27 08:00,2025-10-29 17:00,2025-11-20 17:00,2025-11-20 17:00,2025-12-05 17:00,2025-12-05 17:00,0,24,100
ZX-13050,Complete Control Joint & Inspect - MCC Rm - 4F-SUW-FAB140106,Complete,MCC Rm - 4F -SUW-FAB140106,,,,,,,,,,2025-09-03 08:00,2025-09-05 17:00,2025-09-03 08:00,2025-09-05 17:00,2025-11-20 17:00,2025-11-20 17:00,2025-11-25 10:00,2025-11-25 10:00,0,24,100
FAB140106A-01,IMPACT - INSTALL/REWORK DRYWALL FRAMING AROUND DOORS - FAB140106A,Complete,MCC Rm - 4F -SUW-FAB140106,,,,,,,,,,2025-09-08 08:00,2025-09-09 17:00,2025-09-08 08:00,2025-09-09 17:00,2025-11-20 17:00,2025-11-20 17:00,2025-11-25 10:00,2025-11-25 10:00,0,16,100
FAB140106A-02,SECAI ROUGH IN/SECURITY -  FAB140106A,Complete,MCC Rm - 4F -SUW-FAB140106,,,,,,,,,,2025-09-11 08:00,2025-09-11 17:00,2025-09-11 08:00,2025-09-11 17:00,2025-11-20 17:00,2025-11-20 17:00,2025-11-25 10:00,2025-11-25 10:00,0,8,100
FAB140106A-03,INSTALL DOOR FRAMES - FAB140106A,Complete,MCC Rm - 4F -SUW-FAB140106,,,,,,,,,,2025-09-11 08:00,2025-09-11 17:00,2025-09-11 08:00,2025-09-11 17:00,2025-11-20 17:00,2025-11-20 17:00,2025-11-25 10:00,2025-11-25 10:00,0,8,100
FAB140106A-04,INSTALL DOOR & HARDWARE - FAB140106A,Active,MCC Rm - 4F -SUW-FAB140106,,,,,,,,,,2025-11-19 08:00,2025-11-25 17:00,2025-11-19 08:00,,2025-11-21 08:00,2025-11-27 17:00,2025-11-25 10:00,2025-12-02 10:00,40,40,0
FAB140106A-05,PAINT & PROTECT DOORS & FRAMES -  FAB140106A,Not Started,MCC Rm - 4F -SUW-FAB140106,,,,,,,,,,2026-02-16 08:00,2026-02-19 15:00,,,2026-02-16 08:00,2026-02-19 15:00,2025-12-02 10:00,2025-12-05 17:00,30,30,0
FAB140106B-01,INSTALL DOOR FRAMES - FAB140106B,Not Started,MCC Rm - 4F -SUW-FAB140106,,,,,,,,,,2025-12-10 08:00,2025-12-10 17:00,,,2025-12-10 08:00,2025-12-10 17:00,2025-11-21 10:00,2025-11-24 10:00,8,8,0
FAB140106B-04,INSTALL DOOR & HARDWARE - FAB140106B,Not Started,MCC Rm - 4F -SUW-FAB140106,,,,,,,,,,2025-12-12 08:00,2025-12-18 17:00,,,2025-12-12 08:00,2025-12-18 17:00,2025-11-25 10:00,2025-12-02 10:00,40,40,0
FAB140106B-05,PAINT & PROTECT DOORS & FRAMES -  FAB140106B,Not Started,MCC Rm - 4F -SUW-FAB140106,,,,,,,,,,2026-02-16 08:00,2026-02-19 15:00,,,2026-02-16 08:00,2026-02-19 15:00,2025-12-02 10:00,2025-12-05 17:00,30,30,0
ZX-18260,IMPACT - SECAI MEP workstation in the way - MCC Rm - 4F-SUW-FAB140106,Complete,MCC Rm - 4F -SUW-FAB140106,,,,,,,,,,2025-05-13 08:00,2025-05-15 17:00,2025-05-16 08:00,2025-09-30 17:00,2025-11-20 17:00,2025-11-20 17:00,2025-12-05 17:00,2025-12-05 17:00,0,24,100
FAB140106A-40,IMPACT - SECAI LAYDOWN FOR DOORS AND FRAMES - FAB140106A,Complete,MCC Rm - 4F -SUW-FAB140106,,,,,,,,,,2025-07-09 08:00,2025-07-15 17:00,2025-07-09 08:00,2025-09-08 17:00,2025-11-20 17:00,2025-11-20 17:00,2025-11-25 10:00,2025-11-25 10:00,0,40,100
ZX-13330,Complete Drywall & Inspect - I/O Rm - 4F-SUW-FAB140109 NON RATED WALLS,Complete,I/O Rm - 4F -SUW-FAB140109,,,,,,,,,,2025-06-11 08:00,2025-06-16 17:00,2025-06-11 08:00,2025-06-16 16:00,2025-11-20 17:00,2025-11-20 17:00,2025-11-24 10:00,2025-11-24 10:00,0,32,100
ZX-13350,Complete Control Joint & Inspect - I/O Rm - 4F-SUW-FAB140109,Complete,I/O Rm - 4F -SUW-FAB140109,,,,,,,,,,2025-06-13 08:00,2025-06-16 17:00,2025-06-13 08:00,2025-06-16 16:00,2025-11-20 17:00,2025-11-20 17:00,2025-11-24 10:00,2025-11-24 10:00,0,16,100
FAB140109A-01,INSTALL DOOR FRAMES - FAB140109A,Complete,I/O Rm - 4F -SUW-FAB140109,,,,,,,,,,2025-09-08 08:00,2025-09-08 17:00,2025-09-08 08:00,2025-09-08 17:00,2025-11-20 17:00,2025-11-20 17:00,2025-11-25 10:00,2025-11-25 10:00,0,8,100
FAB140109A-04,INSTALL DOOR & HARDWARE - FAB140109A,Active,I/O Rm - 4F -SUW-FAB140109,,,,,,,,,,2025-09-10 08:00,2025-09-16 17:00,2025-09-10 08:00,,2025-11-21 08:00,2025-11-27 17:00,2025-11-25 10:00,2025-12-02 10:00,40,40,0
FAB140109A-05,PAINT & PROTECT DOORS & FRAMES -  FAB140109A,Not Started,I/O Rm - 4F -SUW-FAB140109,,,,,,,,,,2026-02-16 08:00,2026-02-19 15:00,,,2026-02-16 08:00,2026-02-19 15:00,2025-12-02 10:00,2025-12-05 17:00,30,30,0
ZX-18780,Catch-up & Inspect - I/O Rm - 4F-SUW-FAB140109,Complete,I/O Rm - 4F -SUW-FAB140109,,,,,,,,,,2025-07-28 08:00,2025-08-12 17:00,2025-07-28 08:00,2025-08-08 17:00,2025-11-20 17:00,2025-11-20 17:00,2025-12-05 17:00,2025-12-05 17:00,0,96,100
FAB140109A-30,IMPACT - SECAI LAYDOWN FOR DOORS AND FRAMES - FAB140109A,Complete,I/O Rm - 4F -SUW-FAB140109,,,,,,,,,,2025-07-09 08:00,2025-07-15 17:00,2025-07-09 08:00,2025-09-04 17:00,2025-11-20 17:00,2025-11-20 17:00,2025-11-25 10:00,2025-11-25 10:00,0,40,100
ZX-13630,Complete Drywall & Inspect - Duct Shaft - 4F-SUW-FAB140104 (MK MARLOW),Complete,Duct Shaft - 4F -SUW-FAB140104,,,,,,,,,,2025-09-02 08:00,2025-09-08 17:00,2025-09-02 08:00,2025-09-08 17:00,2025-11-20 17:00,2025-11-20 17:00,2025-11-24 10:00,2025-11-24 10:00,0,40,100
ZX-13640,Complete Fire Caulk & Inspect - Duct Shaft - 4F-SUW-FAB140104,Complete,Duct Shaft - 4F -SUW-FAB140104,,,,,,,,,,2025-10-03 08:00,2025-10-06 17:00,2025-10-03 08:00,2025-10-06 17:00,2025-11-20 17:00,2025-11-20 17:00,2025-12-05 17:00,2025-12-05 17:00,0,16,100
FAB140104A-01,IMPACT - INSTALL/REWORK DRYWALL FRAMING AROUND DOORS - FAB140104A,Complete,Duct Shaft - 4F -SUW-FAB140104,,,,,,,,,,2025-05-01 08:00,2025-05-09 17:00,2025-05-01 08:00,2025-05-06 17:00,2025-11-20 17:00,2025-11-20 17:00,2025-11-25 10:00,2025-11-25 10:00,0,56,100
FAB140104A-02,SECAI ROUGH IN/SECURITY -  FAB140104A,Complete,Duct Shaft - 4F -SUW-FAB140104,,,,,,,,,,2025-05-06 08:00,2025-05-06 17:00,2025-05-06 08:00,2025-05-06 17:00,2025-11-20 17:00,2025-11-20 17:00,2025-11-25 10:00,2025-11-25 10:00,0,8,100
FAB140104A-03,INSTALL DOOR FRAMES - FAB140104A,Complete,Duct Shaft - 4F -SUW-FAB140104,,,,,,,,,,2025-09-11 08:00,2025-09-11 17:00,2025-05-06 00:00,2025-05-06 16:00,2025-11-20 17:00,2025-11-20 17:00,2025-11-25 10:00,2025-11-25 10:00,0,8,100
FAB140104A-04,INSTALL DOOR & HARDWARE - FAB140104A,Active,Duct Shaft - 4F -SUW-FAB140104,,,,,,,,,,2025-11-10 08:00,2025-11-14 17:00,2025-11-10 08:00,,2025-11-21 08:00,2025-11-27 17:00,2025-11-25 10:00,2025-12-02 10:00,40,40,0
FAB140104A-05,PAINT & PROTECT DOORS & FRAMES -  FAB140104A,Not Started,Duct Shaft - 4F -SUW-FAB140104,,,,,,,,,,2026-02-16 08:00,2026-02-19 15:00,,,2026-02-16 08:00,2026-02-19 15:00,2025-12-02 10:00,2025-12-05 17:00,30,30,0
FAB140104B-03,INSTALL DOOR FRAMES - FAB140104BB,Not Started,Duct Shaft - 4F -SUW-FAB140104,,,,,,,,,,2025-11-21 08:00,2025-11-21 17:00,,,2025-11-21 08:00,2025-11-21 17:00,2025-11-24 10:00,2025-11-25 10:00,8,8,0
FAB140104B-04,INSTALL DOOR & HARDWARE - FAB140104BB,Not Started,Duct Shaft - 4F -SUW-FAB140104,,,,,,,,,,2025-11-24 08:00,2025-11-28 17:00,,,2025-11-24 08:00,2025-11-28 17:00,2025-11-25 10:00,2025-12-02 10:00,40,40,0
FAB140104B-05,PAINT & PROTECT DOORS & FRAMES -  FAB140104B,Not Started,Duct Shaft - 4F -SUW-FAB140104,,,,,,,,,,2026-02-16 08:00,2026-02-19 15:00,,,2026-02-16 08:00,2026-02-19 15:00,2025-12-02 10:00,2025-12-05 17:00,30,30,0
ZX-12970,Complete Drywall & Inspect - Elevator Machine - 5F-FAB140110,Complete,Elevator Machine - 4F -SUW-FAB140110,,,,,,,,,,2025-09-04 08:00,2025-09-05 17:00,2025-09-04 08:00,2025-09-05 17:00,2025-11-20 17:00,2025-11-20 17:00,2025-11-24 10:00,2025-11-24 10:00,0,16,100
ZX-12980,Complete Fire Caulk & Inspect - Elevator Machine - 5F-FAB140110,Complete,Elevator Machine - 4F -SUW-FAB140110,,,,,,,,,,2025-10-10 08:00,2025-10-13 17:00,2025-10-10 08:00,2025-10-13 17:00,2025-11-20 17:00,2025-11-20 17:00,2025-12-05 17:00,2025-12-05 17:00,0,16,100
ZX-12990,Complete Control Joint & Inspect - Elevator Machine - 5F-FAB140110,Complete,Elevator Machine - 4F -SUW-FAB140110,,,,,,,,,,2025-09-04 08:00,2025-09-05 17:00,2025-09-04 08:00,2025-09-05 17:00,2025-11-20 17:00,2025-11-20 17:00,2025-11-24 10:00,2025-11-24 10:00,0,16,100
FAB140110A-03,INSTALL DOOR FRAMES - FAB140110A,Not Started,Elevator Machine - 4F -SUW-FAB140110,,,,,,,,,,2025-11-21 08:00,2025-11-21 17:00,,,2025-11-21 08:00,2025-11-21 17:00,2025-11-24 10:00,2025-11-25 10:00,8,8,0
FAB140110A-04,INSTALL DOOR & HARDWARE - FAB140110A,Not Started,Elevator Machine - 4F -SUW-FAB140110,,,,,,,,,,2025-11-24 08:00,2025-11-28 17:00,,,2025-11-24 08:00,2025-11-28 17:00,2025-11-25 10:00,2025-12-02 10:00,40,40,0
FAB140110A-05,PAINT & PROTECT DOORS & FRAMES -  FAB140110A,Not Started,Elevator Machine - 4F -SUW-FAB140110,,,,,,,,,,2026-02-16 08:00,2026-02-19 15:00,,,2026-02-16 08:00,2026-02-19 15:00,2025-12-02 10:00,2025-12-05 17:00,30,30,0
ZX-13540,Complete Drywall & Inspect - 4F-D-G/3 North Face,Complete,4F-D-G/3 North Face - 4F - SUE,,,,,,,,,,2025-09-04 08:00,2025-09-08 17:00,2025-09-04 08:00,2025-09-08 17:00,2025-11-20 17:00,2025-11-20 17:00,2025-12-05 17:00,2025-12-05 17:00,0,24,100
ZX-13550,Complete Fire Caulk & Inspect - 4F-D-G/3 North Face,Complete,4F-D-G/3 North Face - 4F - SUE,,,,,,,,,,2025-09-08 08:00,2025-09-09 17:00,2025-09-08 08:00,2025-09-09 17:00,2025-11-20 17:00,2025-11-20 17:00,2025-12-05 17:00,2025-12-05 17:00,0,16,100
ZX-13560,Complete Control Joint & Inspect - 4F-D-G/3 North Face,Complete,4F-D-G/3 North Face - 4F - SUE,,,,,,,,,,2025-09-05 08:00,2025-09-08 17:00,2025-09-05 08:00,2025-09-08 17:00,2025-11-20 17:00,2025-11-20 17:00,2025-12-05 17:00,2025-12-05 17:00,0,16,100
ZX-16750,Complete Drywall & Inspect - Stair #03 SUW- 4F- FAB1-ST03,Complete,Stair 3 - 4F -SUW-FAB1-ST03,,,,,,,,,,2025-05-13 08:00,2025-05-26 17:00,2025-05-13 08:00,2025-10-03 08:00,2025-11-20 17:00,2025-11-20 17:00,2025-11-21 08:00,2025-11-21 08:00,0,80,100
ZX-16760,Complete Fire Caulk & Inspect - Stair #03 SUW- 4F- FAB1-ST03,Complete,Stair 3 - 4F -SUW-FAB1-ST03,,,,,,,,,,2025-10-02 08:00,2025-10-03 17:00,2025-10-02 08:00,2025-10-03 17:00,2025-11-20 17:00,2025-11-20 17:00,2025-12-05 17:00,2025-12-05 17:00,0,16,100
ZX-16770,Complete Control Joint & Inspect - Stair #03 SUW- 4F- FAB1-ST03,Complete,Stair 3 - 4F -SUW-FAB1-ST03,,,,,,,,,,2025-06-09 08:00,2025-06-10 17:00,2025-06-09 08:00,2025-06-10 17:00,2025-11-20 17:00,2025-11-20 17:00,2025-11-21 08:00,2025-11-21 08:00,0,16,100
ZX-16780,Complete Drywall CEILING & Inspect - Stair #03 SUW- 4F- FAB1-ST03,Complete,Stair 3 - 4F -SUW-FAB1-ST03,,,,,,,,,,2025-09-29 08:00,2025-10-03 17:00,2025-09-29 08:00,2025-10-03 17:00,2025-11-20 17:00,2025-11-20 17:00,2025-12-05 17:00,2025-12-05 17:00,0,40,100
ZX-17560,IMPACT RFI Drywall CEILING - Stair #03,Complete,Stair 3 - 4F -SUW-FAB1-ST03,,,,,,,,,,2025-06-16 08:00,2025-06-20 17:00,2025-06-16 08:00,2025-06-18 16:00,2025-11-20 17:00,2025-11-20 17:00,2025-12-05 17:00,2025-12-05 17:00,0,40,100
ZX-18020,IMPACT - ONGOING WORK INSIDE CHASE - Stair #03 SUW- 4F- FAB1-ST03,Complete,Stair 3 - 4F -SUW-FAB1-ST03,,,,,,,,,,2025-05-13 08:00,2025-05-26 17:00,2025-05-13 08:00,2025-09-26 17:00,2025-11-20 17:00,2025-11-20 17:00,2025-11-21 08:00,2025-11-21 08:00,0,80,100
ZX-18510,IMPACT - SECAI ISSUED STOP WORK NOTICE,Complete,Stair 3 - 4F -SUW-FAB1-ST03,,,,,,,,,,2025-06-12 08:00,2025-06-25 17:00,2025-06-12 08:00,2025-09-26 17:00,2025-11-20 17:00,2025-11-20 17:00,2025-11-21 08:00,2025-11-21 08:00,0,80,100
FAB140401A-03,INSTALL DOOR FRAMES - FAB140401A,Not Started,Stair 3 - 4F -SUW-FAB1-ST03,,,,,,,,,,2025-11-21 08:00,2025-11-21 17:00,,,2025-11-21 08:00,2025-11-21 17:00,2025-11-21 08:00,2025-11-21 17:00,8,8,0
FAB140401A-04,INSTALL DOOR & HARDWARE - FAB140401A,Not Started,Stair 3 - 4F -SUW-FAB1-ST03,,,,,,,,,,2025-11-24 08:00,2025-11-28 17:00,,,2025-11-24 08:00,2025-11-28 17:00,2025-11-24 08:00,2025-11-28 17:00,40,40,0
FAB140401A-05,PAINT & PROTECT DOORS & FRAMES -  FAB140401A,Not Started,Stair 3 - 4F -SUW-FAB1-ST03,,,,,,,,,,2026-02-16 08:00,2026-02-20 17:00,,,2026-02-16 08:00,2026-02-20 17:00,2025-12-01 08:00,2025-12-05 17:00,40,40,0
ZX-16970,Complete Drywall & Inspect - Stair #20 SUE- 4F- FAB1-ST20,Complete,Stair 20 - 4F-SUE-FAB1-ST20,,,,,,,,,,2025-05-13 08:00,2025-05-26 17:00,2025-05-13 08:00,2025-09-30 08:00,2025-11-20 17:00,2025-11-20 17:00,2025-11-21 08:00,2025-11-21 08:00,0,80,100
ZX-16980,Complete Fire Caulk & Inspect - Stair #20 SUE- 4F- FAB1-ST20,Complete,Stair 20 - 4F-SUE-FAB1-ST20,,,,,,,,,,2025-10-03 08:00,2025-10-06 17:00,2025-10-03 08:00,2025-10-06 17:00,2025-11-20 17:00,2025-11-20 17:00,2025-12-05 17:00,2025-12-05 17:00,0,16,100
ZX-16990,Complete Control Joint & Inspect - Stair #20 SUE- 4F- FAB1-ST20,Complete,Stair 20 - 4F-SUE-FAB1-ST20,,,,,,,,,,2025-09-29 08:00,2025-09-30 17:00,2025-09-29 08:00,2025-09-30 17:00,2025-11-20 17:00,2025-11-20 17:00,2025-11-21 08:00,2025-11-21 08:00,0,16,100
ZX-17000,Complete Drywall CEILING & Inspect - Stair #20 SUE- 4F- FAB1-ST20,Complete,Stair 20 - 4F-SUE-FAB1-ST20,,,,,,,,,,2025-09-29 08:00,2025-10-03 17:00,2025-09-29 08:00,2025-10-03 17:00,2025-11-20 17:00,2025-11-20 17:00,2025-12-05 17:00,2025-12-05 17:00,0,40,100
ZX-17570,IMPACT RFI Drywall CEILING - Stair #20,Complete,Stair 20 - 4F-SUE-FAB1-ST20,,,,,,,,,,2025-06-16 08:00,2025-06-20 17:00,2025-06-16 08:00,2025-06-19 16:00,2025-11-20 17:00,2025-11-20 17:00,2025-12-05 17:00,2025-12-05 17:00,0,40,100
ZX-18030,IMPACT - ONGOING WORK INSIDE CHASE - Stair #20 SUE- 4F- FAB1-ST20,Complete,Stair 20 - 4F-SUE-FAB1-ST20,,,,,,,,,,2025-05-13 08:00,2025-05-26 17:00,2025-05-13 08:00,2025-09-26 17:00,2025-11-20 17:00,2025-11-20 17:00,2025-11-21 08:00,2025-11-21 08:00,0,80,100
FAB1-ST20D-03,INSTALL DOOR FRAMES - FAB1-ST20D,Not Started,Stair 20 - 4F-SUE-FAB1-ST20,,,,,,,,,,2025-11-21 08:00,2025-11-21 17:00,,,2025-11-21 08:00,2025-11-21 17:00,2025-11-21 08:00,2025-11-21 17:00,8,8,0
FAB1-ST20D-04,INSTALL DOOR & HARDWARE - FAB1-ST20D,Not Started,Stair 20 - 4F-SUE-FAB1-ST20,,,,,,,,,,2025-11-24 08:00,2025-11-28 17:00,,,2025-11-24 08:00,2025-11-28 17:00,2025-11-24 08:00,2025-11-28 17:00,40,40,0
FAB1-ST20D-05,PAINT & PROTECT DOORS & FRAMES - FAB1-ST20D,Not Started,Stair 20 - 4F-SUE-FAB1-ST20,,,,,,,,,,2026-02-16 08:00,2026-02-20 17:00,,,2026-02-16 08:00,2026-02-20 17:00,2025-12-01 08:00,2025-12-05 17:00,40,40,0
ZX-18560,Complete Drywall & Inspect - MCC Rm - 4F-SUW-FAB140106,Complete,TRUSS AREA VESTIBULE - 4F -FIZ-FAB142102 (LVL 4G),,,,,,,,,,2025-05-13 08:00,2025-05-15 17:00,2025-05-13 08:00,2025-05-15 16:00,2025-11-20 17:00,2025-11-20 17:00,2025-11-17 10:00,2025-11-17 10:00,0,24,100
ZX-18570,Complete Fire Caulk & Inspect - MCC Rm - 4F-SUW-FAB140106,Complete,TRUSS AREA VESTIBULE - 4F -FIZ-FAB142102 (LVL 4G),,,,,,,,,,2025-06-27 08:00,2025-07-01 17:00,2025-06-27 08:00,2025-06-30 16:00,2025-11-20 17:00,2025-11-20 17:00,2025-12-05 17:00,2025-12-05 17:00,0,24,100
ZX-18580,Complete Control Joint & Inspect - MCC Rm - 4F-SUW-FAB140106,Complete,TRUSS AREA VESTIBULE - 4F -FIZ-FAB142102 (LVL 4G),,,,,,,,,,2025-05-15 08:00,2025-05-19 17:00,2025-05-15 08:00,2025-05-16 16:00,2025-11-20 17:00,2025-11-20 17:00,2025-11-17 10:00,2025-11-17 10:00,0,24,100
FAB142102A-03,INSTALL DOOR FRAMES - FAB142102A,Not Started,TRUSS AREA VESTIBULE - 4F -FIZ-FAB142102 (LVL 4G),,,,,,,,,,2025-11-21 08:00,2025-11-21 17:00,,,2025-11-21 08:00,2025-11-21 17:00,2025-11-17 10:00,2025-11-18 10:00,8,8,0
FAB142102A-04,INSTALL DOOR & HARDWARE - FAB142102A,Not Started,TRUSS AREA VESTIBULE - 4F -FIZ-FAB142102 (LVL 4G),,,,,,,,,,2025-11-24 08:00,2025-11-28 17:00,,,2025-11-24 08:00,2025-11-28 17:00,2025-11-18 10:00,2025-11-25 10:00,40,40,0
FAB142102A-05,PAINT & PROTECT DOORS & FRAMES -  FAB142102A,Not Started,TRUSS AREA VESTIBULE - 4F -FIZ-FAB142102 (LVL 4G),,,,,,,,,,2026-02-16 08:00,2026-02-19 15:00,,,2026-02-16 08:00,2026-02-19 15:00,2025-12-02 10:00,2025-12-05 17:00,30,30,0
FAB145101C-02,INSTALL DOOR FRAMES - FAB145101C,Complete,TRUSS AREA VESTIBULE - 4F -FIZ-FAB142102 (LVL 4G),,,,,,,,,,2025-06-27 08:00,2025-06-30 17:00,2025-06-30 08:00,2025-06-30 16:00,2025-11-20 17:00,2025-11-20 17:00,2025-11-25 10:00,2025-11-25 10:00,0,16,100
FAB145101C-04,INSTALL DOOR & HARDWARE - FAB145101C,Not Started,TRUSS AREA VESTIBULE - 4F -FIZ-FAB142102 (LVL 4G),,,,,,,,,,2025-11-21 08:00,2025-11-27 17:00,,,2025-11-21 08:00,2025-11-27 17:00,2025-11-25 10:00,2025-12-02 10:00,40,40,0
FAB145101C-01,IMPACT - PATRIOT CLADDING HEADER FIX - FAB145101C,Complete,TRUSS AREA VESTIBULE - 4F -FIZ-FAB142102 (LVL 4G),,,,,,,,,,2025-06-02 09:51,2025-06-06 17:00,2025-06-02 09:51,2025-06-06 16:00,2025-11-20 17:00,2025-11-20 17:00,2025-11-25 10:00,2025-11-25 10:00,0,38.15,100
FAB145101C-03,SECAI ROUGH IN FRAME - FAB145101C,Complete,TRUSS AREA VESTIBULE - 4F -FIZ-FAB142102 (LVL 4G),,,,,,,,,,2025-07-10 08:00,2025-07-10 17:00,2025-06-30 08:00,2025-06-30 16:00,2025-11-20 17:00,2025-11-20 17:00,2025-11-25 10:00,2025-11-25 10:00,0,8,100
FAB145101C-05,PAINT & PROTECT DOORS & FRAMES -  FAB145101C,Not Started,TRUSS AREA VESTIBULE - 4F -FIZ-FAB142102 (LVL 4G),,,,,,,,,,2026-02-16 08:00,2026-02-19 15:00,,,2026-02-16 08:00,2026-02-19 15:00,2025-12-02 10:00,2025-12-05 17:00,30,30,0
FAB166101A-04,INSTALL DOOR & HARDWARE - FAB166101A,Not Started,Mechanical Penthouse - 6F - FIZ-FAB166101,,,,,,,,,,2025-12-12 08:00,2025-12-18 17:00,,,2025-12-12 08:00,2025-12-18 17:00,2025-11-25 08:00,2025-12-01 17:00,40,40,0
FAB166101A-05,PAINT & PROTECT DOORS & FRAMES -  FAB166101A,Not Started,Mechanical Penthouse - 6F - FIZ-FAB166101,,,,,,,,,,2026-02-16 08:00,2026-02-19 17:00,,,2026-02-16 08:00,2026-02-19 17:00,2025-12-02 08:00,2025-12-05 17:00,32,32,0
FAB166101A-03,INSTALL DOOR FRAMES - FAB166101A,Not Started,Mechanical Penthouse - 6F - FIZ-FAB166101,,,,,,,,,,2025-12-10 08:00,2025-12-10 17:00,,,2025-12-10 08:00,2025-12-10 17:00,2025-11-21 08:00,2025-11-21 17:00,8,8,0
1.3,PRIORITY 1 - LEVEL 3,Not Started,LEVEL 3,,,,,,,,,,2025-11-20 17:00,2025-11-20 17:00,,,2025-11-20 17:00,2025-11-20 17:00,2025-12-05 17:00,2025-12-05 17:00,0,0,0
2.3,PRIORITY 2 - LEVEL 3,Not Started,LEVEL 3,,,,,,,,,,2025-11-24 17:00,2025-11-24 17:00,,,2025-11-24 17:00,2025-11-24 17:00,2025-12-05 17:00,2025-12-05 17:00,0,0,0
3.3,PRIORITY 3 - LEVEL 3,Not Started,LEVEL 3,,,,,,,,,,2025-12-10 17:00,2025-12-10 17:00,,,2025-12-10 17:00,2025-12-10 17:00,2025-12-05 17:00,2025-12-05 17:00,0,0,0
4.3,PRIORITY 4 - LEVEL 3,Not Started,LEVEL 3,,,,,,,,,,2025-11-24 17:00,2025-11-24 17:00,,,2025-11-24 17:00,2025-11-24 17:00,2025-12-05 17:00,2025-12-05 17:00,0,0,0
ZX-1120,Complete Drywall & Inspect - Airlock #1-Airlock 1 - 3F-FAB130110,Complete,Air Lock 1 - 3F -SUW-FAB130110,,,,,,,,,,2025-05-05 08:00,2025-05-08 17:00,2025-05-05 08:00,2025-05-08 16:00,2025-11-20 17:00,2025-11-20 17:00,2025-12-05 17:00,2025-12-05 17:00,0,32,100
ZX-1130,Complete Fire Caulk & Inspect - Airlock #01- 3F-FAB130110,Complete,Air Lock 1 - 3F -SUW-FAB130110,,,,,,,,,,2025-07-07 08:00,2025-07-11 17:00,2025-07-07 08:00,2025-07-08 17:00,2025-11-20 17:00,2025-11-20 17:00,2025-12-05 17:00,2025-12-05 17:00,0,40,100
ZX-1140,Complete Control Joint & Inspect - Airlock #01 - 3F-FAB130110,Complete,Air Lock 1 - 3F -SUW-FAB130110,,,,,,,,,,2025-05-16 08:00,2025-05-20 12:00,2025-05-16 08:00,2025-05-21 12:00,2025-11-20 17:00,2025-11-20 17:00,2025-12-05 17:00,2025-12-05 17:00,0,20,100
ZX-1180,Complete Drywall & Inspect - Airlock #5-Airlock 5 - 3F-FAB130505,Complete,Air Lock 5 - 3F -SUW-FAB130505,,,,,,,,,,2025-05-05 08:00,2025-05-13 17:00,2025-05-05 08:00,2025-05-19 16:00,2025-11-20 17:00,2025-11-20 17:00,2025-11-24 10:00,2025-11-24 10:00,0,56,100
ZX-1190,Complete Fire Caulk & Inspect. - Airlock #5-Airlock 5 - 3F-FAB130505,Complete,Air Lock 5 - 3F -SUW-FAB130505,,,,,,,,,,2025-06-18 10:00,2025-06-30 10:00,2025-05-30 08:00,2025-06-06 16:00,2025-11-20 17:00,2025-11-20 17:00,2025-12-05 17:00,2025-12-05 17:00,0,64,100
ZX-1200,Complete Control Joint & Inspect - Airlock #05 - 3F-FAB130505,Complete,Air Lock 5 - 3F -SUW-FAB130505,,,,,,,,,,2025-05-20 08:00,2025-05-22 12:00,2025-05-20 08:00,2025-05-21 12:00,2025-11-20 17:00,2025-11-20 17:00,2025-11-24 10:00,2025-11-24 10:00,0,20,100
ZX-17350,IMPACT - SECAI DENIAL OF ACCEL COST FOR BERG - Complete Drywall & Inspect - Airlock #5-Airlock 5 - 3F-FAB130505,Complete,Air Lock 5 - 3F -SUW-FAB130505,,,,,,,,,,2025-05-05 08:00,2025-05-13 17:00,2025-05-12 08:00,2025-05-16 16:00,2025-11-20 17:00,2025-11-20 17:00,2025-11-24 10:00,2025-11-24 10:00,0,56,100
FAB130505A-03,INSTALL DOOR FRAMES - FAB130505A,Complete,Air Lock 5 - 3F -SUW-FAB130505,,,,,,,,,,2025-06-13 08:00,2025-06-23 17:00,2025-01-20 08:00,2025-01-20 16:00,2025-11-20 17:00,2025-11-20 17:00,2025-11-27 08:00,2025-11-27 08:00,0,56,100
FAB130505A-02,SECAI ROUGH IN/SECURITY - FAB130505A,Complete,Air Lock 5 - 3F -SUW-FAB130505,,,,,,,,,,2025-06-24 08:00,2025-06-24 17:00,2025-01-20 08:00,2025-01-20 16:00,2025-11-20 17:00,2025-11-20 17:00,2025-11-27 08:00,2025-11-27 08:00,0,8,100
FAB130505A-04,INSTALL DOOR & HARDWARE - FAB130505A,Active,Air Lock 5 - 3F -SUW-FAB130505,,,,,,,,,,2025-06-13 08:00,2025-06-19 17:00,2025-06-13 08:00,,2025-11-21 08:00,2025-11-27 17:00,2025-11-27 08:00,2025-12-03 17:00,40,40,0
FAB130505A-05,PAINT & PROTECT DOORS & FRAMES -  FAB130505A,Not Started,Air Lock 5 - 3F -SUW-FAB130505,,,,,,,,,,2026-02-16 08:00,2026-02-17 17:00,,,2026-02-16 08:00,2026-02-17 17:00,2025-12-04 08:00,2025-12-05 17:00,16,16,0
FAB130505C-01,IMPACT - INSTALL/REWORK DRYWALL FRAMING AROUND DOORS - FAB136102C,Complete,Air Lock 5 - 3F -SUW-FAB130505,,,,,,,,,,2025-07-29 08:00,2025-08-06 17:00,2025-07-29 08:00,2025-08-06 17:00,2025-11-20 17:00,2025-11-20 17:00,2025-11-25 10:00,2025-11-25 10:00,0,56,100
FAB130505C-02,SECAI ROUGH IN/SECURITY - FAB130505C,Complete,Air Lock 5 - 3F -SUW-FAB130505,,,,,,,,,,2025-08-06 08:00,2025-08-06 17:00,2025-08-06 08:00,2025-08-06 17:00,2025-11-20 17:00,2025-11-20 17:00,2025-11-25 10:00,2025-11-25 10:00,0,8,100
FAB130505C-03,INSTALL DOOR FRAMES - FAB130505C,Complete,Air Lock 5 - 3F -SUW-FAB130505,,,,,,,,,,2025-08-06 08:00,2025-08-06 17:00,2025-08-06 08:00,2025-08-06 17:00,2025-11-20 17:00,2025-11-20 17:00,2025-11-25 10:00,2025-11-25 10:00,0,8,100
FAB130505C-04,INSTALL DOOR & HARDWARE - FAB130505C,Not Started,Air Lock 5 - 3F -SUW-FAB130505,,,,,,,,,,2025-11-21 08:00,2025-11-27 17:00,,,2025-11-21 08:00,2025-11-27 17:00,2025-11-25 10:00,2025-12-02 10:00,40,40,0
FAB130505C-05,PAINT & PROTECT DOORS & FRAMES -  FAB130505C,Not Started,Air Lock 5 - 3F -SUW-FAB130505,,,,,,,,,,2026-02-16 08:00,2026-02-19 15:00,,,2026-02-16 08:00,2026-02-19 15:00,2025-12-02 10:00,2025-12-05 17:00,30,30,0
ZX-1210,Complete Drywall & Inspect - Vestibule #22 - 3F-FAB136108,Complete,Vestibule 22 - 3F -SUE-FAB136108,,,,,,,,,,2025-09-23 08:00,2025-09-25 17:00,2025-09-23 08:00,2025-09-25 17:00,2025-11-20 17:00,2025-11-20 17:00,2025-12-05 17:00,2025-12-05 17:00,0,24,100
ZX-1220,Complete Fire Caulk & Inspect - Vestibule #22 - 3F-FAB136108,Complete,Vestibule 22 - 3F -SUE-FAB136108,,,,,,,,,,2025-08-01 08:00,2025-08-04 17:00,2025-08-01 08:00,2025-08-04 17:00,2025-11-20 17:00,2025-11-20 17:00,2025-12-05 17:00,2025-12-05 17:00,0,16,100
ZX-1230,Complete Control Joint & Inspect - Vestibule #22 - 3F-FAB136108,Complete,Vestibule 22 - 3F -SUE-FAB136108,,,,,,,,,,2025-09-25 08:00,2025-09-26 17:00,2025-09-25 08:00,2025-09-26 17:00,2025-11-20 17:00,2025-11-20 17:00,2025-12-05 17:00,2025-12-05 17:00,0,16,100
ZX-16430,IMPACT - SECAI DENIAL OF ACCEL COST FOR BERG - Complete Drywall & Inspect - Vestibule #22 - 3F-FAB136108,Complete,Vestibule 22 - 3F -SUE-FAB136108,,,,,,,,,,2025-05-05 08:00,2025-05-30 17:00,2025-05-05 08:00,2025-05-18 16:00,2025-11-20 17:00,2025-11-20 17:00,2025-12-05 17:00,2025-12-05 17:00,0,160,100
FAB136108B-02,SECAI ROUGH IN/SECURITY - FAB136108B,Complete,Vestibule 22 - 3F -SUE-FAB136108,,,,,,,,,,2025-06-06 08:00,2025-06-06 17:00,2025-01-24 08:00,2025-01-24 13:00,2025-11-20 17:00,2025-11-20 17:00,2025-11-25 10:00,2025-11-25 10:00,0,8,100
FAB136108B-03,INSTALL DOOR FRAMES - FAB136108B,Complete,Vestibule 22 - 3F -SUE-FAB136108,,,,,,,,,,2025-06-02 08:00,2025-06-02 17:00,2025-01-24 08:00,2025-01-24 16:00,2025-11-20 17:00,2025-11-20 17:00,2025-11-24 08:00,2025-11-24 08:00,0,8,100
FAB136108B-04,INSTALL DOOR & HARDWARE - FAB136108B,Active,Vestibule 22 - 3F -SUE-FAB136108,,,,,,,,,,2025-05-07 08:00,2025-05-13 17:00,2025-05-07 08:00,,2025-11-21 08:00,2025-11-27 17:00,2025-11-25 10:00,2025-12-02 10:00,40,40,0
FAB136108B-05,PAINT & PROTECT DOORS & FRAMES -  FAB136108B,Not Started,Vestibule 22 - 3F -SUE-FAB136108,,,,,,,,,,2026-02-16 08:00,2026-02-19 15:00,,,2026-02-16 08:00,2026-02-19 15:00,2025-12-02 10:00,2025-12-05 17:00,30,30,0
FAB136108C-02,SECAI ROUGH IN/SECURITY - FAB136108C,Complete,Vestibule 22 - 3F -SUE-FAB136108,,,,,,,,,,2025-06-06 08:00,2025-06-06 17:00,2025-02-13 08:00,2025-02-13 15:00,2025-11-20 17:00,2025-11-20 17:00,2025-11-25 10:00,2025-11-25 10:00,0,8,100
FAB136108C-03,INSTALL DOOR FRAMES - FAB136108C,Complete,Vestibule 22 - 3F -SUE-FAB136108,,,,,,,,,,2025-06-09 13:00,2025-06-10 12:00,2025-02-13 00:00,2025-02-13 12:00,2025-11-20 17:00,2025-11-20 17:00,2025-11-25 10:00,2025-11-25 10:00,0,8,100
FAB136108C-04,INSTALL DOOR & HARDWARE - FAB136108C,Active,Vestibule 22 - 3F -SUE-FAB136108,,,,,,,,,,2025-06-11 08:00,2025-06-17 17:00,2025-06-11 08:00,,2025-11-21 08:00,2025-11-27 17:00,2025-11-25 10:00,2025-12-02 10:00,40,40,0
FAB136108C-05,PAINT & PROTECT DOORS & FRAMES -  FAB136108C,Not Started,Vestibule 22 - 3F -SUE-FAB136108,,,,,,,,,,2026-02-16 08:00,2026-02-19 15:00,,,2026-02-16 08:00,2026-02-19 15:00,2025-12-02 10:00,2025-12-05 17:00,30,30,0
ZX-1240,Complete Drywall & Inspect - Elevator Hall #22 - 3F-FAB136107,Complete,Elevator Hall 22 - 3F -SUE-FAB136107,,,,,,,,,,2025-08-07 10:00,2025-08-18 10:00,2025-08-07 10:00,2025-08-18 10:00,2025-11-20 17:00,2025-11-20 17:00,2025-12-04 08:00,2025-12-04 08:00,0,56,100
ZX-1250,Complete Fire Caulk & Inspect - Elevator Hall #22 - 3F-FAB136107,Not Started,Elevator Hall 22 - 3F -SUE-FAB136107,,,,,,,,,,2025-11-21 08:00,2025-11-24 17:00,,,2025-11-21 08:00,2025-11-24 17:00,2025-12-04 08:00,2025-12-05 17:00,16,16,0
ZX-1260,Complete Control Joint & Inspect - Elevator Hall #22 - 3F-FAB136107,Not Started,Elevator Hall 22 - 3F -SUE-FAB136107,,,,,,,,,,2025-11-21 08:00,2025-11-21 08:00,,,2025-11-21 08:00,2025-11-21 08:00,2025-12-05 17:00,2025-12-05 17:00,0,0,0
FAB136107A-03,INSTALL DOOR FRAMES - FAB136107A,Complete,Elevator Hall 22 - 3F -SUE-FAB136107,,,,,,,,,,2025-07-23 13:00,2025-07-24 12:00,2025-01-08 12:00,2025-01-08 12:00,2025-11-20 17:00,2025-11-20 17:00,2025-11-25 10:00,2025-11-25 10:00,0,8,100
FAB136107A-04,INSTALL DOOR & HARDWARE - FAB136107A,Not Started,Elevator Hall 22 - 3F -SUE-FAB136107,,,,,,,,,,2025-11-21 08:00,2025-11-27 17:00,,,2025-11-21 08:00,2025-11-27 17:00,2025-11-25 10:00,2025-12-02 10:00,40,40,0
FAB136107A-05,PAINT & PROTECT DOORS & FRAMES -  FAB136107A,Not Started,Elevator Hall 22 - 3F -SUE-FAB136107,,,,,,,,,,2026-02-16 08:00,2026-02-19 15:00,,,2026-02-16 08:00,2026-02-19 15:00,2025-12-02 10:00,2025-12-05 17:00,30,30,0
FAB136107C-03,INSTALL DOOR FRAMES - FAB136107C,Complete,Elevator Hall 22 - 3F -SUE-FAB136107,,,,,,,,,,2025-09-25 10:00,2025-10-06 10:00,2025-07-22 10:00,2025-07-23 10:00,2025-11-20 17:00,2025-11-20 17:00,2025-11-25 10:00,2025-11-25 10:00,0,56,100
FAB136107C-04,INSTALL DOOR & HARDWARE - FAB136107C,Not Started,Elevator Hall 22 - 3F -SUE-FAB136107,,,,,,,,,,2025-11-21 08:00,2025-11-27 17:00,,,2025-11-21 08:00,2025-11-27 17:00,2025-11-25 10:00,2025-12-02 10:00,40,40,0
FAB136107C-05,PAINT & PROTECT DOORS & FRAMES -  FAB136107C,Not Started,Elevator Hall 22 - 3F -SUE-FAB136107,,,,,,,,,,2026-02-16 08:00,2026-02-19 15:00,,,2026-02-16 08:00,2026-02-19 15:00,2025-12-02 10:00,2025-12-05 17:00,30,30,0
FAB136107D-01,IMPACT - INSTALL/REWORK DRYWALL FRAMING AROUND DOORS - FAB136107D,Complete,Elevator Hall 22 - 3F -SUE-FAB136107,,,,,,,,,,2025-09-22 10:00,2025-10-01 10:00,2025-03-27 10:00,2025-04-04 10:00,2025-11-20 17:00,2025-11-20 17:00,2025-11-25 10:00,2025-11-25 10:00,0,56,100
FAB136107D-02,SECAI ROUGH IN/SECURITY - FAB136107D,Complete,Elevator Hall 22 - 3F -SUE-FAB136107,,,,,,,,,,2025-10-01 10:00,2025-10-02 10:00,2025-04-04 10:00,2025-04-04 10:00,2025-11-20 17:00,2025-11-20 17:00,2025-12-05 17:00,2025-12-05 17:00,0,0,100
FAB136107D-03,INSTALL DOOR FRAMES - FAB136107D,Complete,Elevator Hall 22 - 3F -SUE-FAB136107,,,,,,,,,,2025-07-23 13:00,2025-07-24 12:00,2025-04-04 00:00,2025-04-04 12:00,2025-11-20 17:00,2025-11-20 17:00,2025-11-25 10:00,2025-11-25 10:00,0,8,100
FAB136107D-04,INSTALL DOOR & HARDWARE - FAB136107D,Not Started,Elevator Hall 22 - 3F -SUE-FAB136107,,,,,,,,,,2025-11-21 08:00,2025-11-27 17:00,,,2025-11-21 08:00,2025-11-27 17:00,2025-11-25 10:00,2025-12-02 10:00,40,40,0
FAB136107D-05,PAINT & PROTECT DOORS & FRAMES -  FAB136107D,Not Started,Elevator Hall 22 - 3F -SUE-FAB136107,,,,,,,,,,2026-02-16 08:00,2026-02-19 15:00,,,2026-02-16 08:00,2026-02-19 15:00,2025-12-02 10:00,2025-12-05 17:00,30,30,0
FAB136107C-11,IMPACT - SECAI - ADDED FIRE RATED DOORS (CONCEPT FRAMES INC) - Design changed installed,Complete,Elevator Hall 22 - 3F -SUE-FAB136107,,,,,,,,,,2025-07-25 08:00,2025-08-01 17:00,2025-07-09 11:35,2025-07-17 15:00,2025-11-20 17:00,2025-11-20 17:00,2025-11-25 10:00,2025-11-25 10:00,0,48,100
ZX-1270,Complete Drywall & Inspect - Clean Vestibule #21 - 3F- FAB136203,Complete,Clean Vestibule 21 - 3F -SUE-FAB136203,,,,,,,,,,2025-06-10 08:00,2025-06-10 08:00,2025-05-26 08:00,2025-05-27 15:00,2025-11-20 17:00,2025-11-20 17:00,2025-11-25 10:00,2025-11-25 10:00,0,0,100
ZX-1280,Complete Fire Caulk & Inspect - Clean Vestibule #21 - 3F- FAB136203,Complete,Clean Vestibule 21 - 3F -SUE-FAB136203,,,,,,,,,,2025-07-18 08:00,2025-07-21 17:00,2025-07-18 08:00,2025-07-21 17:00,2025-11-20 17:00,2025-11-20 17:00,2025-12-05 17:00,2025-12-05 17:00,0,16,100
ZX-1290,Complete Control Joint & Inspect - Clean Vestibule #21 - 3F- FAB136203,Complete,Clean Vestibule 21 - 3F -SUE-FAB136203,,,,,,,,,,2025-06-10 08:00,2025-06-11 17:00,2025-05-28 08:00,2025-05-28 16:00,2025-11-20 17:00,2025-11-20 17:00,2025-11-25 10:00,2025-11-25 10:00,0,16,100
ZX-16620,IMPACT - MEP OPENING - Complete Drywall & Inspect - Clean Vestibule #21 - 3F- FAB136203,Complete,Clean Vestibule 21 - 3F -SUE-FAB136203,,,,,,,,,,2025-05-05 08:00,2025-05-05 08:00,2025-05-05 08:00,2025-06-19 16:00,2025-11-20 17:00,2025-11-20 17:00,2025-11-25 10:00,2025-11-25 10:00,0,0,100
FAB136203A-03,INSTALL DOOR FRAMES - FAB136203A,Complete,Clean Vestibule 21 - 3F -SUE-FAB136203,,,,,,,,,,2025-06-11 13:00,2025-06-12 12:00,2025-01-17 00:00,2025-01-17 12:00,2025-11-20 17:00,2025-11-20 17:00,2025-11-25 10:00,2025-11-25 10:00,0,8,100
FAB136203A-04,INSTALL DOOR & HARDWARE - FAB136203A,Not Started,Clean Vestibule 21 - 3F -SUE-FAB136203,,,,,,,,,,2025-11-21 08:00,2025-11-27 17:00,,,2025-11-21 08:00,2025-11-27 17:00,2025-11-25 10:00,2025-12-02 10:00,40,40,0
FAB136203A-05,PAINT & PROTECT DOORS & FRAMES -  FAB136203A,Not Started,Clean Vestibule 21 - 3F -SUE-FAB136203,,,,,,,,,,2026-02-16 08:00,2026-02-19 15:00,,,2026-02-16 08:00,2026-02-19 15:00,2025-12-02 10:00,2025-12-05 17:00,30,30,0
FAB136203B-03,INSTALL DOOR FRAMES - FAB136203B,Complete,Clean Vestibule 21 - 3F -SUE-FAB136203,,,,,,,,,,2025-06-11 13:00,2025-06-12 12:00,2025-01-23 00:00,2025-01-23 12:00,2025-11-20 17:00,2025-11-20 17:00,2025-11-27 08:00,2025-11-27 08:00,0,8,100
FAB136203B-04,INSTALL DOOR & HARDWARE - FAB136203B,Active,Clean Vestibule 21 - 3F -SUE-FAB136203,,,,,,,,,,2025-06-19 08:00,2025-06-25 17:00,2025-06-19 08:00,,2025-11-21 08:00,2025-11-27 17:00,2025-11-27 08:00,2025-12-03 17:00,40,40,0
FAB136203B-05,PAINT & PROTECT DOORS & FRAMES -  FAB136203B,Not Started,Clean Vestibule 21 - 3F -SUE-FAB136203,,,,,,,,,,2026-02-16 08:00,2026-02-17 17:00,,,2026-02-16 08:00,2026-02-17 17:00,2025-12-04 08:00,2025-12-05 17:00,16,16,0
ZX-18180,IMPACT - DRYWALL for mep opening - Clean Vestibule #21 - 3F- FAB136203,Complete,Clean Vestibule 21 - 3F -SUE-FAB136203,,,,,,,,,,2025-06-20 08:00,2025-06-23 17:00,2025-06-19 08:00,2025-06-20 16:00,2025-11-20 17:00,2025-11-20 17:00,2025-12-05 17:00,2025-12-05 17:00,0,16,100
ZX-1300,SECAI TURNOVER FOR ACELERATION - Complete Drywall & Inspect - Elevator Hall #20 - 3F-FAB136311,Complete,Elevator Hall 20 - 3F -SUE-FAB136311,,,,,,,,,,2025-08-12 08:00,2025-08-20 17:00,2025-07-18 08:00,2025-07-18 17:00,2025-11-20 17:00,2025-11-20 17:00,2025-11-25 10:00,2025-11-25 10:00,0,56,100
ZX-1310,SECAI TURNOVER FOR ACELERATION - Complete Fire Caulk & Inspect - Elevator Hall #20 - 3F-FAB136311,Complete,Elevator Hall 20 - 3F -SUE-FAB136311,,,,,,,,,,2025-07-18 08:00,2025-07-21 17:00,2025-07-18 08:00,2025-07-18 17:00,2025-11-20 17:00,2025-11-20 17:00,2025-12-05 17:00,2025-12-05 17:00,0,16,100
ZX-1320,SECAI TURNOVER FOR ACELERATION - Complete Control Joint & Inspect - Elevator Hall #20 - 3F-FAB136311,Complete,Elevator Hall 20 - 3F -SUE-FAB136311,,,,,,,,,,2025-07-18 08:00,2025-07-21 17:00,2025-07-18 08:00,2025-07-18 17:00,2025-11-20 17:00,2025-11-20 17:00,2025-11-25 10:00,2025-11-25 10:00,0,16,100
FAB136311A-03,INSTALL DOOR FRAMES - FAB136311A,Complete,Elevator Hall 20 - 3F -SUE-FAB136311,,,,,,,,,,2025-10-20 08:00,2025-10-20 17:00,2025-10-20 08:00,2025-10-20 17:00,2025-11-20 17:00,2025-11-20 17:00,2025-11-25 10:00,2025-11-25 10:00,0,8,100
FAB136311A-04,INSTALL DOOR & HARDWARE - FAB136311A,Not Started,Elevator Hall 20 - 3F -SUE-FAB136311,,,,,,,,,,2025-11-21 08:00,2025-11-27 17:00,,,2025-11-21 08:00,2025-11-27 17:00,2025-11-25 10:00,2025-12-02 10:00,40,40,0
FAB136311A-05,PAINT & PROTECT DOORS & FRAMES - FAB136311A,Not Started,Elevator Hall 20 - 3F -SUE-FAB136311,,,,,,,,,,2026-02-16 08:00,2026-02-19 15:00,,,2026-02-16 08:00,2026-02-19 15:00,2025-12-02 10:00,2025-12-05 17:00,30,30,0
FAB136311B-01,INSTALL DOOR FRAMES - FAB136311B,Complete,Elevator Hall 20 - 3F -SUE-FAB136311,,,,,,,,,,2025-09-29 08:00,2025-09-29 17:00,2025-09-29 08:00,2025-09-29 17:00,2025-11-20 17:00,2025-11-20 17:00,2025-11-25 10:00,2025-11-25 10:00,0,8,100
FAB136311B-04,INSTALL DOOR & HARDWARE - FAB136311B,Not Started,Elevator Hall 20 - 3F -SUE-FAB136311,,,,,,,,,,2025-11-21 08:00,2025-11-27 17:00,,,2025-11-21 08:00,2025-11-27 17:00,2025-11-25 10:00,2025-12-02 10:00,40,40,0
FAB136311B-05,PAINT & PROTECT DOORS & FRAMES  - FAB136311B,Not Started,Elevator Hall 20 - 3F -SUE-FAB136311,,,,,,,,,,2026-02-16 08:00,2026-02-19 15:00,,,2026-02-16 08:00,2026-02-19 15:00,2025-12-02 10:00,2025-12-05 17:00,30,30,0
ZX-18420,IMPACT - SECAI GENERATOR PREVENTING COMPLETION - Elevator Hall #20 - 3F-FAB136311,Complete,Elevator Hall 20 - 3F -SUE-FAB136311,,,,,,,,,,2025-06-10 08:00,2025-06-23 17:00,2025-06-10 08:00,2025-07-18 17:00,2025-11-20 17:00,2025-11-20 17:00,2025-11-25 10:00,2025-11-25 10:00,0,80,100
ZX-1330,Complete Drywall & Inspect - Vestibule #20 - 3F-FAB136310,Complete,Vestibule 20 - 3F -SUE-FAB136310,,,,,,,,,,2025-05-05 08:00,2025-05-07 17:00,2025-05-05 08:00,2025-05-13 08:00,2025-11-20 17:00,2025-11-20 17:00,2025-11-25 10:00,2025-11-25 10:00,0,24,100
ZX-1340,Complete Fire Caulk & Inspect - Vestibule #20 - 3F-FAB136310,Complete,Vestibule 20 - 3F -SUE-FAB136310,,,,,,,,,,2025-06-06 08:00,2025-06-18 17:00,2025-06-05 08:00,2025-09-30 08:00,2025-11-20 17:00,2025-11-20 17:00,2025-12-05 17:00,2025-12-05 17:00,0,72,100
ZX-1350,Complete Control Joint & Inspect - Vestibule #20 - 3F-FAB136310,Complete,Vestibule 20 - 3F -SUE-FAB136310,,,,,,,,,,2025-05-19 08:00,2025-05-20 17:00,2025-05-19 08:00,2025-05-22 16:00,2025-11-20 17:00,2025-11-20 17:00,2025-11-25 10:00,2025-11-25 10:00,0,16,100
ZX-17340,IMPACT - SECAI DENIAL OF ACCEL COST FOR BERG - Vestibule #20 - 3F-FAB136310,Complete,Vestibule 20 - 3F -SUE-FAB136310,,,,,,,,,,2025-05-08 08:00,2025-06-03 17:00,2025-05-08 08:00,2025-05-16 16:00,2025-11-20 17:00,2025-11-20 17:00,2025-11-25 10:00,2025-11-25 10:00,0,152,100
FAB136310C-03,INSTALL DOOR FRAMES - FAB136310C,Complete,Vestibule 20 - 3F -SUE-FAB136310,,,,,,,,,,2025-05-27 08:00,2025-06-04 17:00,2025-01-15 08:00,2025-01-15 16:00,2025-11-20 17:00,2025-11-20 17:00,2025-11-27 08:00,2025-11-27 08:00,0,56,100
FAB136310C-02,SECAI ROUGH IN/SECURITY - FAB136310C,Complete,Vestibule 20 - 3F -SUE-FAB136310,,,,,,,,,,2025-01-15 08:00,2025-01-15 17:00,2025-01-15 08:00,2025-01-15 16:00,2025-11-20 17:00,2025-11-20 17:00,2025-11-27 08:00,2025-11-27 08:00,0,8,100
FAB136310C-04,INSTALL DOOR & HARDWARE - FAB136310C,Active,Vestibule 20 - 3F -SUE-FAB136310,,,,,,,,,,2025-04-01 08:00,2025-04-07 17:00,2025-04-01 08:00,,2025-11-21 08:00,2025-11-27 17:00,2025-11-27 08:00,2025-12-03 17:00,40,40,0
FAB136310C-05,PAINT & PROTECT DOORS & FRAMES -  FAB136310C,Not Started,Vestibule 20 - 3F -SUE-FAB136310,,,,,,,,,,2026-02-16 08:00,2026-02-17 17:00,,,2026-02-16 08:00,2026-02-17 17:00,2025-12-04 08:00,2025-12-05 17:00,16,16,0
FAB136310D-03,INSTALL DOOR FRAMES - FAB136310D,Complete,Vestibule 20 - 3F -SUE-FAB136310,,,,,,,,,,2025-01-24 08:00,2025-02-27 17:00,2025-01-27 08:00,2025-01-27 16:00,2025-11-20 17:00,2025-11-20 17:00,2025-11-25 10:00,2025-11-25 10:00,0,200,100
FAB136310D-02,SECAI ROUGH IN/SECURITY - FAB136310D,Complete,Vestibule 20 - 3F -SUE-FAB136310,,,,,,,,,,2025-06-05 08:00,2025-06-05 17:00,2025-01-27 08:00,2025-01-27 16:00,2025-11-20 17:00,2025-11-20 17:00,2025-11-25 10:00,2025-11-25 10:00,0,8,100
FAB136310D-04,INSTALL DOOR & HARDWARE - FAB136310D,Not Started,Vestibule 20 - 3F -SUE-FAB136310,,,,,,,,,,2025-11-21 08:00,2025-11-27 17:00,,,2025-11-21 08:00,2025-11-27 17:00,2025-11-25 10:00,2025-12-02 10:00,40,40,0
FAB136310D-05,PAINT & PROTECT DOORS & FRAMES -  FAB136310D,Not Started,Vestibule 20 - 3F -SUE-FAB136310,,,,,,,,,,2026-02-16 08:00,2026-02-19 15:00,,,2026-02-16 08:00,2026-02-19 15:00,2025-12-02 10:00,2025-12-05 17:00,30,30,0
ZX-1360,SECAI TOOK OVER FOR ACCELERATION - Complete Drywall & Inspect - Clean Vestibule #19 - 3F-FAB136406,Complete,Clean Vestibule 19 - 3F -SUE-FAB136406,,,,,,,,,,2025-10-21 08:00,2025-10-22 17:00,2025-10-22 08:00,2025-10-22 17:00,2025-11-20 17:00,2025-11-20 17:00,2025-11-24 10:00,2025-11-24 10:00,0,16,100
ZX-1370,SECAI TOOK OVER FOR ACCELERATION - Complete Fire Caulk & Inspect - Clean Vestibule #19 - 3F-FAB136406,Complete,Clean Vestibule 19 - 3F -SUE-FAB136406,,,,,,,,,,2025-10-21 08:00,2025-10-22 17:00,2025-10-22 08:00,2025-10-22 17:00,2025-11-20 17:00,2025-11-20 17:00,2025-12-05 17:00,2025-12-05 17:00,0,16,100
ZX-1380,SECAI TOOK OVER FOR ACCELERATION - Complete Control Joint & Inspect - Clean Vestibule #19 - 3F-FAB136406,Complete,Clean Vestibule 19 - 3F -SUE-FAB136406,,,,,,,,,,2025-10-21 08:00,2025-10-22 17:00,2025-10-22 08:00,2025-10-22 17:00,2025-11-20 17:00,2025-11-20 17:00,2025-11-24 10:00,2025-11-24 10:00,0,16,100
ZX-16340,IMPACT - SECAI MEP SCAFFOLDING-Clean Vestibule #19 - 3F-FAB136406,Complete,Clean Vestibule 19 - 3F -SUE-FAB136406,,,,,,,,,,2025-05-05 08:00,2025-05-23 17:00,2025-05-05 08:00,2025-10-22 17:00,2025-11-20 17:00,2025-11-20 17:00,2025-11-24 08:00,2025-11-24 08:00,0,120,100
FAB136406A-03,INSTALL DOOR FRAMES - FAB136406A,Not Started,Clean Vestibule 19 - 3F -SUE-FAB136406,,,,,,,,,,2025-11-28 08:00,2025-11-28 17:00,,,2025-11-28 08:00,2025-11-28 17:00,2025-11-24 10:00,2025-11-25 10:00,8,8,0
FAB136406A-04,INSTALL DOOR & HARDWARE - FAB136406A,Not Started,Clean Vestibule 19 - 3F -SUE-FAB136406,,,,,,,,,,2025-12-01 08:00,2025-12-05 17:00,,,2025-12-01 08:00,2025-12-05 17:00,2025-11-25 10:00,2025-12-02 10:00,40,40,0
FAB136406A-05,PAINT & PROTECT DOORS & FRAMES -  FAB136406A,Not Started,Clean Vestibule 19 - 3F -SUE-FAB136406,,,,,,,,,,2026-02-16 08:00,2026-02-19 15:00,,,2026-02-16 08:00,2026-02-19 15:00,2025-12-02 10:00,2025-12-05 17:00,30,30,0
FAB136406B-03,INSTALL DOOR FRAMES  - FAB136406B,Not Started,Clean Vestibule 19 - 3F -SUE-FAB136406,,,,,,,,,,2025-11-28 08:00,2025-11-28 17:00,,,2025-11-28 08:00,2025-11-28 17:00,2025-11-24 10:00,2025-11-25 10:00,8,8,0
FAB136406B-04,INSTALL DOOR & HARDWARE - FAB136406B,Not Started,Clean Vestibule 19 - 3F -SUE-FAB136406,,,,,,,,,,2025-12-01 08:00,2025-12-05 17:00,,,2025-12-01 08:00,2025-12-05 17:00,2025-11-25 10:00,2025-12-02 10:00,40,40,0
FAB136406B-05,PAINT & PROTECT DOORS & FRAMES -  FAB136406B,Not Started,Clean Vestibule 19 - 3F -SUE-FAB136406,,,,,,,,,,2026-02-16 08:00,2026-02-19 15:00,,,2026-02-16 08:00,2026-02-19 15:00,2025-12-02 10:00,2025-12-05 17:00,30,30,0
FAB136406C-03,INSTALL DOOR FRAMES  - FAB136406C,Complete,Clean Vestibule 19 - 3F -SUE-FAB136406,,,,,,,,,,2025-01-27 08:00,2025-01-27 17:00,2025-01-27 08:00,2025-01-27 17:00,2025-11-20 17:00,2025-11-20 17:00,2025-11-25 10:00,2025-11-25 10:00,0,8,100
FAB136406C-02,SECAI ROUGH IN/SECURITY - FAB136406C,Complete,Clean Vestibule 19 - 3F -SUE-FAB136406,,,,,,,,,,2025-01-27 08:00,2025-01-27 17:00,2025-01-27 08:00,2025-01-27 17:00,2025-11-20 17:00,2025-11-20 17:00,2025-11-25 10:00,2025-11-25 10:00,0,8,100
FAB136406C-04,INSTALL DOOR & HARDWARE - FAB136406C,Not Started,Clean Vestibule 19 - 3F -SUE-FAB136406,,,,,,,,,,2025-11-21 08:00,2025-11-27 17:00,,,2025-11-21 08:00,2025-11-27 17:00,2025-11-25 10:00,2025-12-02 10:00,40,40,0
FAB136406C-05,PAINT & PROTECT DOORS & FRAMES -  FAB136406C,Not Started,Clean Vestibule 19 - 3F -SUE-FAB136406,,,,,,,,,,2026-02-16 08:00,2026-02-19 15:00,,,2026-02-16 08:00,2026-02-19 15:00,2025-12-02 10:00,2025-12-05 17:00,30,30,0
ZX-18600,IMPACT PAINT CONTAINMENT - Clean Vestibule #19 - 3F-FAB136406,Complete,Clean Vestibule 19 - 3F -SUE-FAB136406,,,,,,,,,,2025-06-13 08:00,2025-06-26 17:00,2025-06-13 08:00,2025-07-30 17:00,2025-11-20 17:00,2025-11-20 17:00,2025-11-24 10:00,2025-11-24 10:00,0,80,100
ZX-1390,SECAI TOOK OVER FOR ACCELERATION - Complete Drywall & Inspect - Clean Vestibule #19 - 3F-FAB136407,Complete,Clean Vestibule 19 - 3F -SUE-FAB136407,,,,,,,,,,2025-10-22 08:00,2025-10-22 17:00,2025-10-22 08:00,2025-10-22 17:00,2025-11-20 17:00,2025-11-20 17:00,2025-11-25 10:00,2025-11-25 10:00,0,8,100
ZX-1400,SECAI TOOK OVER FOR ACCELERATION - Complete Fire Caulk & Inspect - Clean Vestibule #19 - 3F-FAB136407,Complete,Clean Vestibule 19 - 3F -SUE-FAB136407,,,,,,,,,,2025-10-21 08:00,2025-10-22 17:00,2025-10-22 08:00,2025-10-22 17:00,2025-11-20 17:00,2025-11-20 17:00,2025-11-25 10:00,2025-11-25 10:00,0,16,100
ZX-1410,SECAI TOOK OVER FOR ACCELERATION - Complete Control Joint & Inspect - Clean Vestibule #19 - 3F-FAB136407,Complete,Clean Vestibule 19 - 3F -SUE-FAB136407,,,,,,,,,,2025-10-21 08:00,2025-10-22 17:00,2025-10-22 08:00,2025-10-22 17:00,2025-11-20 17:00,2025-11-20 17:00,2025-11-25 10:00,2025-11-25 10:00,0,16,100
ZX-16300,IMPACT - SECAI MEP SCAFFOLDING-Clean Vestibule #19 - 3F-FAB136407,Complete,Clean Vestibule 19 - 3F -SUE-FAB136407,,,,,,,,,,2025-05-05 08:00,2025-05-16 17:00,2025-05-05 08:00,2025-10-22 17:00,2025-11-20 17:00,2025-11-20 17:00,2025-11-25 10:00,2025-11-25 10:00,0,80,100
FAB136407A-03,INSTALL DOOR FRAMES - FAB136407A,Complete,Clean Vestibule 19 - 3F -SUE-FAB136407,,,,,,,,,,2025-06-10 08:00,2025-06-18 17:00,2025-05-23 08:00,2025-05-23 08:00,2025-11-20 17:00,2025-11-20 17:00,2025-11-25 10:00,2025-11-25 10:00,0,56,100
FAB136407A-02,SECAI ROUGH IN/SECURITY - FAB136407A,Complete,Clean Vestibule 19 - 3F -SUE-FAB136407,,,,,,,,,,2025-05-21 08:00,2025-05-21 17:00,2025-05-21 08:00,2025-05-23 16:00,2025-11-20 17:00,2025-11-20 17:00,2025-11-25 10:00,2025-11-25 10:00,0,8,100
FAB136407A-04,INSTALL DOOR & HARDWARE - FAB136407A,Not Started,Clean Vestibule 19 - 3F -SUE-FAB136407,,,,,,,,,,2025-11-21 08:00,2025-11-27 17:00,,,2025-11-21 08:00,2025-11-27 17:00,2025-11-25 10:00,2025-12-02 10:00,40,40,0
FAB136407A-05,PAINT & PROTECT DOORS & FRAMES - FAB136407A,Not Started,Clean Vestibule 19 - 3F -SUE-FAB136407,,,,,,,,,,2026-02-16 08:00,2026-02-19 15:00,,,2026-02-16 08:00,2026-02-19 15:00,2025-12-02 10:00,2025-12-05 17:00,30,30,0
FAB136407B-03,INSTALL DOOR FRAMES - FAB136407B,Complete,Clean Vestibule 19 - 3F -SUE-FAB136407,,,,,,,,,,2025-06-10 08:00,2025-06-18 17:00,2025-05-12 08:00,2025-05-13 16:00,2025-11-20 17:00,2025-11-20 17:00,2025-11-25 10:00,2025-11-25 10:00,0,56,100
FAB136407B-02,SECAI ROUGH IN/SECURITY - FAB136407B,Complete,Clean Vestibule 19 - 3F -SUE-FAB136407,,,,,,,,,,2025-05-12 08:00,2025-05-12 17:00,2025-05-12 08:00,2025-05-12 16:00,2025-11-20 17:00,2025-11-20 17:00,2025-11-25 10:00,2025-11-25 10:00,0,8,100
FAB136407B-04,INSTALL DOOR & HARDWARE - FAB136407B,Not Started,Clean Vestibule 19 - 3F -SUE-FAB136407,,,,,,,,,,2025-11-21 08:00,2025-11-27 17:00,,,2025-11-21 08:00,2025-11-27 17:00,2025-11-25 10:00,2025-12-02 10:00,40,40,0
FAB136407B-05,PAINT & PROTECT DOORS & FRAMES - FAB136407B,Not Started,Clean Vestibule 19 - 3F -SUE-FAB136407,,,,,,,,,,2026-02-16 08:00,2026-02-19 15:00,,,2026-02-16 08:00,2026-02-19 15:00,2025-12-02 10:00,2025-12-05 17:00,30,30,0
ZX-1450,Complete Drywall & Inspect - Wafer I/O Entrance - 3F-FAB136501,Complete,Wafer I/O Entrance - 3F -SUE-FAB136501,,,,,,,,,,2025-06-10 08:00,2025-06-23 17:00,2025-06-02 08:00,2025-06-10 16:00,2025-11-20 17:00,2025-11-20 17:00,2025-12-05 17:00,2025-12-05 17:00,0,80,100
ZX-1460,Complete Fire Caulk & Inspect - Wafer I/O Entrance - 3F-FAB136501,Complete,Wafer I/O Entrance - 3F -SUE-FAB136501,,,,,,,,,,2025-09-16 08:00,2025-09-17 17:00,2025-09-16 08:00,2025-09-17 17:00,2025-11-20 17:00,2025-11-20 17:00,2025-12-05 17:00,2025-12-05 17:00,0,16,100
ZX-1470,Complete Control Joint & Inspect - Wafer I/O Entrance - 3F-FAB136501,Complete,Wafer I/O Entrance - 3F -SUE-FAB136501,,,,,,,,,,2025-09-16 08:00,2025-09-17 17:00,2025-09-16 08:00,2025-09-17 17:00,2025-11-20 17:00,2025-11-20 17:00,2025-12-05 17:00,2025-12-05 17:00,0,16,100
FAB136502C-04,INSTALL DOOR & HARDWARE - FAB136502C,Not Started,Wafer I/O Entrance - 3F -SUE-FAB136501,,,,,,,,,,2025-11-21 08:00,2025-11-27 17:00,,,2025-11-21 08:00,2025-11-27 17:00,2025-11-25 10:00,2025-12-02 10:00,40,40,0
FAB136502C-05,PAINT & PROTECT DOORS & FRAMES -  FAB136502C,Not Started,Wafer I/O Entrance - 3F -SUE-FAB136501,,,,,,,,,,2026-02-16 08:00,2026-02-19 15:00,,,2026-02-16 08:00,2026-02-19 15:00,2025-12-02 10:00,2025-12-05 17:00,30,30,0
FAB136502C-03,INSTALL DOOR FRAMES - FAB136502C,Complete,Wafer I/O Entrance - 3F -SUE-FAB136501,,,,,,,,,,2025-10-20 08:00,2025-10-20 17:00,2025-10-20 08:00,2025-10-20 17:00,2025-11-20 17:00,2025-11-20 17:00,2025-11-25 10:00,2025-11-25 10:00,0,8,100
FAB136502B-04,INSTALL DOOR & HARDWARE - FAB136502B,Not Started,Wafer I/O Entrance - 3F -SUE-FAB136501,,,,,,,,,,2025-12-01 08:00,2025-12-05 17:00,,,2025-12-01 08:00,2025-12-05 17:00,2025-11-25 10:00,2025-12-02 10:00,40,40,0
FAB136502B-05,PAINT & PROTECT DOORS & FRAMES -  FAB136502B,Not Started,Wafer I/O Entrance - 3F -SUE-FAB136501,,,,,,,,,,2026-02-16 08:00,2026-02-19 15:00,,,2026-02-16 08:00,2026-02-19 15:00,2025-12-02 10:00,2025-12-05 17:00,30,30,0
FAB136502B-03,INSTALL DOOR FRAME BY SECAI - FAB136502B - HANDED OVER ON 10/01,Active,Wafer I/O Entrance - 3F -SUE-FAB136501,,,,,,,,,,2025-10-01 08:00,2025-10-01 17:00,2025-10-01 08:00,,2025-11-21 08:00,2025-11-28 17:00,2025-11-17 10:00,2025-11-25 10:00,48,8,0
ZX-18910,IMPACT - Elevator #19 WORK ONGOING - Wafer I/O Entrance - 3F-FAB136501,Complete,Wafer I/O Entrance - 3F -SUE-FAB136501,,,,,,,,,,2025-06-27 08:00,2025-07-17 17:00,2025-06-27 08:00,2025-09-15 17:00,2025-11-20 17:00,2025-11-20 17:00,2025-12-05 17:00,2025-12-05 17:00,0,120,100
FAB136502C-8,IMPACT - WELDING REQUIRED ON FRAME - FAB136502C,Complete,Wafer I/O Entrance - 3F -SUE-FAB136501,,,,,,,,,,2025-07-03 08:00,2025-07-10 17:00,2025-07-03 08:00,2025-10-20 17:00,2025-11-20 17:00,2025-11-20 17:00,2025-11-25 10:00,2025-11-25 10:00,0,48,100
ZX-1480,Complete Drywall & Inspect - Vestibule #18 - 3F-FAB136505,Complete,Vestibule 18 - 3F -SUE-FAB136505,,,,,,,,,,2025-05-05 08:00,2025-05-09 17:00,2025-05-05 08:00,2025-05-14 16:00,2025-11-20 17:00,2025-11-20 17:00,2025-11-17 10:00,2025-11-17 10:00,0,40,100
ZX-1490,Complete Fire Caulk & Inspect - Vestibule #18 - 3F-FAB136505,Complete,Vestibule 18 - 3F -SUE-FAB136505,,,,,,,,,,2025-07-18 08:00,2025-07-28 17:00,2025-07-18 08:00,2025-07-23 17:00,2025-11-20 17:00,2025-11-20 17:00,2025-12-05 17:00,2025-12-05 17:00,0,56,100
ZX-1500,Complete Control Joint & Inspect - Vestibule #18 - 3F-FAB136505,Complete,Vestibule 18 - 3F -SUE-FAB136505,,,,,,,,,,2025-05-13 08:00,2025-05-14 17:00,2025-05-08 08:00,2025-05-16 16:00,2025-11-20 17:00,2025-11-20 17:00,2025-11-17 10:00,2025-11-17 10:00,0,16,100
FAB136505A-03,INSTALL DOOR FRAMES - FAB136505A,Complete,Vestibule 18 - 3F -SUE-FAB136505,,,,,,,,,,2025-05-27 08:00,2025-06-04 17:00,2025-01-14 08:00,2025-01-17 16:00,2025-11-20 17:00,2025-11-20 17:00,2025-11-17 10:00,2025-11-17 10:00,0,56,100
FAB136505A-02,SECAI ROUGH IN/SECURITY - FAB136505A,Complete,Vestibule 18 - 3F -SUE-FAB136505,,,,,,,,,,2025-06-05 08:00,2025-06-05 17:00,2025-01-14 08:00,2025-01-15 16:00,2025-11-20 17:00,2025-11-20 17:00,2025-11-17 10:00,2025-11-17 10:00,0,8,100
FAB136505A-04,INSTALL DOOR & HARDWARE - FAB136505A,Not Started,Vestibule 18 - 3F -SUE-FAB136505,,,,,,,,,,2025-12-01 08:00,2025-12-05 17:00,,,2025-12-01 08:00,2025-12-05 17:00,2025-11-25 10:00,2025-12-02 10:00,40,40,0
FAB136505A-05,PAINT & PROTECT DOORS & FRAMES - FAB136505A,Not Started,Vestibule 18 - 3F -SUE-FAB136505,,,,,,,,,,2026-02-16 08:00,2026-02-19 15:00,,,2026-02-16 08:00,2026-02-19 15:00,2025-12-02 10:00,2025-12-05 17:00,30,30,0
FAB136505B-01,IMPACT - INSTALL/REWORK DRYWALL FRAMING AROUND DOORS- FAB136505B,Complete,Vestibule 18 - 3F -SUE-FAB136505,,,,,,,,,,2025-06-23 08:00,2025-07-01 17:00,2025-01-08 08:00,2025-01-16 16:00,2025-11-20 17:00,2025-11-20 17:00,2025-11-25 10:00,2025-11-25 10:00,0,56,100
FAB136505B-02,SECAI ROUGH IN/SECURITY - FAB136505B,Complete,Vestibule 18 - 3F -SUE-FAB136505,,,,,,,,,,2025-06-23 08:00,2025-06-23 17:00,2025-01-16 08:00,2025-01-16 16:00,2025-11-20 17:00,2025-11-20 17:00,2025-11-25 10:00,2025-11-25 10:00,0,8,100
FAB136505B-04,INSTALL DOOR & HARDWARE - FAB136505B,Not Started,Vestibule 18 - 3F -SUE-FAB136505,,,,,,,,,,2025-11-21 08:00,2025-11-27 17:00,,,2025-11-21 08:00,2025-11-27 17:00,2025-11-25 10:00,2025-12-02 10:00,40,40,0
FAB136505B-05,PAINT & PROTECT DOORS & FRAMES - FAB136505B,Not Started,Vestibule 18 - 3F -SUE-FAB136505,,,,,,,,,,2026-02-16 08:00,2026-02-19 15:00,,,2026-02-16 08:00,2026-02-19 15:00,2025-12-02 10:00,2025-12-05 17:00,30,30,0
FAB136505C-03,INSTALL DOOR FRAMES - FAB136505C,Complete,Vestibule 18 - 3F -SUE-FAB136505,,,,,,,,,,2025-06-27 08:00,2025-06-27 17:00,2025-06-25 08:00,2025-06-26 17:00,2025-11-20 17:00,2025-11-20 17:00,2025-11-25 10:00,2025-11-25 10:00,0,8,100
FAB136505C-02,SECAI ROUGH IN/SECURITY - FAB136505C,Complete,Vestibule 18 - 3F -SUE-FAB136505,,,,,,,,,,2025-06-26 08:00,2025-06-26 17:00,2025-06-26 08:00,2025-06-26 17:00,2025-11-20 17:00,2025-11-20 17:00,2025-11-25 10:00,2025-11-25 10:00,0,8,100
FAB136505C-04,INSTALL DOOR & HARDWARE - FAB136505C,Active,Vestibule 18 - 3F -SUE-FAB136505,,,,,,,,,,2025-11-18 08:00,2025-11-24 17:00,2025-11-18 08:00,,2025-11-21 08:00,2025-11-27 17:00,2025-11-25 10:00,2025-12-02 10:00,40,40,0
FAB136505C-05,PAINT & PROTECT DOORS & FRAMES - FAB136505C,Not Started,Vestibule 18 - 3F -SUE-FAB136505,,,,,,,,,,2026-02-16 08:00,2026-02-19 15:00,,,2026-02-16 08:00,2026-02-19 15:00,2025-12-02 10:00,2025-12-05 17:00,30,30,0
FAB136505B-11,IMPACT - SECAI - BUCKHOIST LOCATED IN THE AREA - FAB136505B,Complete,Vestibule 18 - 3F -SUE-FAB136505,,,,,,,,,,2025-06-06 08:00,2025-06-11 10:00,2025-05-05 08:00,2025-06-27 16:00,2025-11-20 17:00,2025-11-20 17:00,2025-11-24 10:00,2025-11-24 10:00,0,26,100
FAB136505A-03A,INSTALL DOOR FRAMES - RE-ORDERED - FAB136505A,Active,Vestibule 18 - 3F -SUE-FAB136505,,,,,,,,,,2025-08-18 08:00,2025-09-25 17:00,2025-08-18 08:00,,2025-11-21 08:00,2025-11-28 17:00,2025-11-17 10:00,2025-11-25 10:00,48,232,0
ZX-1510,Complete Drywall & Inspect - Vestibule #5 - 3F-FAB130504,Complete,Vestibule 5 - 3F -SUW-FAB130504,,,,,,,,,,2025-05-16 08:00,2025-05-21 17:00,2025-05-16 08:00,2025-05-21 16:00,2025-11-20 17:00,2025-11-20 17:00,2025-11-18 10:00,2025-11-18 10:00,0,32,100
ZX-1520,Complete Fire Caulk & Inspect - Vestibule #5 - 3F-FAB130504,Complete,Vestibule 5 - 3F -SUW-FAB130504,,,,,,,,,,2025-06-06 08:00,2025-06-09 17:00,2025-06-05 08:00,2025-07-23 17:00,2025-11-20 17:00,2025-11-20 17:00,2025-12-05 17:00,2025-12-05 17:00,0,16,100
ZX-1530,Complete Control Joint & Inspect - Vestibule #05 - 3F-FAB130504,Complete,Vestibule 5 - 3F -SUW-FAB130504,,,,,,,,,,2025-05-22 08:00,2025-05-23 17:00,2025-05-22 08:00,2025-05-23 16:00,2025-11-20 17:00,2025-11-20 17:00,2025-11-18 10:00,2025-11-18 10:00,0,16,100
ZX-16510,IMPACT - Complete Drywall & Inspect - Vestibule #5 - 3F-FAB130504 INPSECTION,Complete,Vestibule 5 - 3F -SUW-FAB130504,,,,,,,,,,2025-05-12 08:00,2025-05-16 17:00,2025-05-09 08:00,2025-05-14 16:00,2025-11-20 17:00,2025-11-20 17:00,2025-11-18 10:00,2025-11-18 10:00,0,40,100
FAB130504A-03,INSTALL DOOR FRAMES - FAB130504A,Complete,Vestibule 5 - 3F -SUW-FAB130504,,,,,,,,,,2025-05-29 08:00,2025-06-06 17:00,2025-04-28 08:00,2025-04-28 16:00,2025-11-20 17:00,2025-11-20 17:00,2025-11-27 08:00,2025-11-27 08:00,0,56,100
FAB130504A-02,SECAI ROUGH IN/SECURITY - FAB130504A,Complete,Vestibule 5 - 3F -SUW-FAB130504,,,,,,,,,,2025-06-09 08:00,2025-06-09 17:00,2025-04-28 08:00,2025-04-28 16:00,2025-11-20 17:00,2025-11-20 17:00,2025-11-27 08:00,2025-11-27 08:00,0,8,100
FAB130504A-04,INSTALL DOOR & HARDWARE - FAB130504A,Active,Vestibule 5 - 3F -SUW-FAB130504,,,,,,,,,,2025-06-11 08:00,2025-06-17 17:00,2025-06-11 08:00,,2025-11-21 08:00,2025-11-27 17:00,2025-11-27 08:00,2025-12-03 17:00,40,40,0
FAB130504A-05,PAINT & PROTECT DOORS & FRAMES -  FAB130504A,Not Started,Vestibule 5 - 3F -SUW-FAB130504,,,,,,,,,,2026-02-16 08:00,2026-02-17 17:00,,,2026-02-16 08:00,2026-02-17 17:00,2025-12-04 08:00,2025-12-05 17:00,16,16,0
FAB130504B-03,INSTALL DOOR FRAMES - FAB130504B,Complete,Vestibule 5 - 3F -SUW-FAB130504,,,,,,,,,,2025-05-29 08:00,2025-06-06 17:00,2025-04-03 08:00,2025-04-03 16:00,2025-11-20 17:00,2025-11-20 17:00,2025-11-27 08:00,2025-11-27 08:00,0,56,100
FAB130504B-02,SECAI ROUGH IN/SECURITY - FAB130504B,Complete,Vestibule 5 - 3F -SUW-FAB130504,,,,,,,,,,2025-06-09 08:00,2025-06-09 17:00,2025-04-03 08:00,2025-04-03 16:00,2025-11-20 17:00,2025-11-20 17:00,2025-11-27 08:00,2025-11-27 08:00,0,8,100
FAB130504B-04,INSTALL DOOR & HARDWARE - FAB130504B,Active,Vestibule 5 - 3F -SUW-FAB130504,,,,,,,,,,2025-05-19 08:00,2025-05-23 17:00,2025-05-19 08:00,,2025-11-21 08:00,2025-11-27 17:00,2025-11-27 08:00,2025-12-03 17:00,40,40,0
FAB130504B-05,PAINT & PROTECT DOORS & FRAMES -  FAB130504B,Not Started,Vestibule 5 - 3F -SUW-FAB130504,,,,,,,,,,2026-02-16 08:00,2026-02-17 17:00,,,2026-02-16 08:00,2026-02-17 17:00,2025-12-04 08:00,2025-12-05 17:00,16,16,0
FAB130504C-03,INSTALL DOOR FRAMES - FAB130504C,Complete,Vestibule 5 - 3F -SUW-FAB130504,,,,,,,,,,2025-05-29 08:00,2025-05-29 17:00,2025-04-07 08:00,2025-04-07 16:00,2025-11-20 17:00,2025-11-20 17:00,2025-11-27 08:00,2025-11-27 08:00,0,8,100
FAB130504C-02,SECAI ROUGH IN/SECURITY - FAB130504C,Complete,Vestibule 5 - 3F -SUW-FAB130504,,,,,,,,,,2025-06-09 08:00,2025-06-09 17:00,2025-04-07 00:00,2025-04-07 16:00,2025-11-20 17:00,2025-11-20 17:00,2025-11-27 08:00,2025-11-27 08:00,0,8,100
FAB130504C-04,INSTALL DOOR & HARDWARE - FAB130504C,Active,Vestibule 5 - 3F -SUW-FAB130504,,,,,,,,,,2025-05-19 08:00,2025-05-23 17:00,2025-05-19 08:00,,2025-11-21 08:00,2025-11-27 17:00,2025-11-27 08:00,2025-12-03 17:00,40,40,0
FAB130504C-05,PAINT & PROTECT DOORS & FRAMES - FAB130504C,Not Started,Vestibule 5 - 3F -SUW-FAB130504,,,,,,,,,,2026-02-16 08:00,2026-02-17 17:00,,,2026-02-16 08:00,2026-02-17 17:00,2025-12-04 08:00,2025-12-05 17:00,16,16,0
ZX-1540,Complete Drywall & Inspect - Elevator Hall #05 - 3F-FAB130505,Complete,Elevator Hall 5 - 3F -SUW-FAB130505,,,,,,,,,,2025-09-12 08:00,2025-09-15 17:00,2025-09-12 08:00,2025-09-15 17:00,2025-11-20 17:00,2025-11-20 17:00,2025-11-24 10:00,2025-11-24 10:00,0,16,100
ZX-1560,Complete Control Joint & Inspect - E-Elevator Hall #05 - 3F-FAB130505,Complete,Elevator Hall 5 - 3F -SUW-FAB130505,,,,,,,,,,2025-09-12 08:00,2025-09-15 17:00,2025-09-12 08:00,2025-09-15 17:00,2025-11-20 17:00,2025-11-20 17:00,2025-11-24 10:00,2025-11-24 10:00,0,16,100
FAB130505B-03,INSTALL DOOR FRAMES - FAB130505B,Not Started,Elevator Hall 5 - 3F -SUW-FAB130505,,,,,,,,,,2025-11-21 08:00,2025-11-21 17:00,,,2025-11-21 08:00,2025-11-21 17:00,2025-11-24 10:00,2025-11-25 10:00,8,8,0
FAB130505B-04,INSTALL DOOR & HARDWARE - FAB130505B,Not Started,Elevator Hall 5 - 3F -SUW-FAB130505,,,,,,,,,,2025-11-24 08:00,2025-11-28 17:00,,,2025-11-24 08:00,2025-11-28 17:00,2025-11-25 10:00,2025-12-02 10:00,40,40,0
FAB130505B-05,PAINT & PROTECT DOORS & FRAMES -  FAB130505B,Not Started,Elevator Hall 5 - 3F -SUW-FAB130505,,,,,,,,,,2026-02-16 08:00,2026-02-19 15:00,,,2026-02-16 08:00,2026-02-19 15:00,2025-12-02 10:00,2025-12-05 17:00,30,30,0
ZX-1570,Complete Drywall & Inspect - CRT Lab Entrance - 3F-FAB130507,Complete,CRT Lab Entrance - 3F -SUW-FAB130507,,,,,,,,,,2025-05-05 08:00,2025-05-23 17:00,2025-05-05 08:00,2025-05-13 16:00,2025-11-20 17:00,2025-11-20 17:00,2025-11-25 10:00,2025-11-25 10:00,0,120,100
ZX-1580,Complete Fire Caulk & Inspect - CRT Lab Entrance - 3F-FAB130507,Complete,CRT Lab Entrance - 3F -SUW-FAB130507,,,,,,,,,,2025-08-01 08:00,2025-08-04 17:00,2025-08-01 08:00,2025-08-04 17:00,2025-11-20 17:00,2025-11-20 17:00,2025-12-05 17:00,2025-12-05 17:00,0,16,100
ZX-1590,Complete Control Joint & Inspect - CRT Lab Entrance - 3F-FAB130507,Complete,CRT Lab Entrance - 3F -SUW-FAB130507,,,,,,,,,,2025-08-04 08:00,2025-08-05 17:00,2025-08-04 08:00,2025-08-05 17:00,2025-11-20 17:00,2025-11-20 17:00,2025-11-25 10:00,2025-11-25 10:00,0,16,100
ZX-17360,IMPACT - BERG ALLOCATION - CRT Lab Entrance - 3F-FAB130507,Complete,CRT Lab Entrance - 3F -SUW-FAB130507,,,,,,,,,,2025-05-28 08:00,2025-05-30 17:00,2025-05-19 08:00,2025-05-20 16:00,2025-11-20 17:00,2025-11-20 17:00,2025-11-25 10:00,2025-11-25 10:00,0,24,100
ZX-17740,IMPACT - SECAI SG PANEL - CRT Lab Entrance - 3F-FAB130507,Complete,CRT Lab Entrance - 3F -SUW-FAB130507,,,,,,,,,,2025-06-27 08:00,2025-07-24 17:00,2025-06-27 08:00,2025-08-01 17:00,2025-11-20 17:00,2025-11-20 17:00,2025-11-25 10:00,2025-11-25 10:00,0,160,100
FAB130507B-01,IMPACT - INSTALL/REWORK DRYWALL FRAMING AROUND DOORS- FAB130507B,Complete,CRT Lab Entrance - 3F -SUW-FAB130507,,,,,,,,,,2025-05-15 08:00,2025-05-23 17:00,2025-05-07 08:00,2025-05-15 17:00,2025-11-20 17:00,2025-11-20 17:00,2025-11-25 10:00,2025-11-25 10:00,0,56,100
FAB130507B-02,SECAI ROUGH IN/SECURITY - FAB130507B,Complete,CRT Lab Entrance - 3F -SUW-FAB130507,,,,,,,,,,2025-05-15 08:00,2025-05-15 17:00,2025-05-15 08:00,2025-05-15 17:00,2025-11-20 17:00,2025-11-20 17:00,2025-11-25 10:00,2025-11-25 10:00,0,8,100
FAB130507B-03,INSTALL DOOR FRAMES - FAB130507B,Complete,CRT Lab Entrance - 3F -SUW-FAB130507,,,,,,,,,,2025-05-15 08:00,2025-05-15 17:00,2025-05-15 08:00,2025-05-15 17:00,2025-11-20 17:00,2025-11-20 17:00,2025-11-25 10:00,2025-11-25 10:00,0,8,100
FAB130507B-04,INSTALL DOOR & HARDWARE - FAB130507B,Active,CRT Lab Entrance - 3F -SUW-FAB130507,,,,,,,,,,2025-11-18 08:00,2025-11-24 17:00,2025-11-18 08:00,,2025-11-21 08:00,2025-11-27 17:00,2025-11-25 10:00,2025-12-02 10:00,40,40,0
FAB130507B-05,PAINT & PROTECT DOORS & FRAMES -  FAB130507B,Not Started,CRT Lab Entrance - 3F -SUW-FAB130507,,,,,,,,,,2026-02-16 08:00,2026-02-19 15:00,,,2026-02-16 08:00,2026-02-19 15:00,2025-12-02 10:00,2025-12-05 17:00,30,30,0
FAB130507C-00,SECAI SCP WALL FINISH - FAB130507C,Active,CRT Lab Entrance - 3F -SUW-FAB130507,,,,,,,,,,2025-08-06 08:00,2025-08-06 17:00,2025-08-06 08:00,,2026-01-09 08:00,2026-01-16 17:00,2025-11-26 08:00,2025-12-03 17:00,48,8,0
FAB130507C-01,DOOR ASSEMBLY - FAB130507C,Not Started,CRT Lab Entrance - 3F -SUW-FAB130507,,,,,,,,,,2026-01-19 08:00,2026-01-20 17:00,,,2026-01-19 08:00,2026-01-20 17:00,2025-12-04 08:00,2025-12-05 17:00,16,16,0
FAB130507C-02,DOOR PACKAGE INSTALL - FAB130507C,Not Started,CRT Lab Entrance - 3F -SUW-FAB130507,,,,,,,,,,2026-01-19 08:00,2026-01-20 17:00,,,2026-01-19 08:00,2026-01-20 17:00,2025-12-04 08:00,2025-12-05 17:00,16,16,0
ZX-1600,Complete Drywall & Inspect - Clean Vestibule #04 - 3F-FAB130403,Complete,Clean Vestibule 4 -3F -SUW-FAB130403,,,,,,,,,,2025-06-20 08:00,2025-06-30 17:00,2025-06-13 08:00,2025-06-23 16:00,2025-11-20 17:00,2025-11-20 17:00,2025-11-18 10:00,2025-11-18 10:00,0,56,100
ZX-1610,SECAI TURNOVER FOR ACELERATION - Fire Caulk & Inspect - Clean Vestibule #4 - 3F-FAB130403,Complete,Clean Vestibule 4 -3F -SUW-FAB130403,,,,,,,,,,2025-06-20 08:00,2025-06-23 17:00,2025-06-24 08:00,2025-06-24 16:00,2025-11-20 17:00,2025-11-20 17:00,2025-12-05 17:00,2025-12-05 17:00,0,16,100
ZX-1620,Complete Control Joint & Inspect - Clean Vestibule #04 - 3F-FAB130403,Complete,Clean Vestibule 4 -3F -SUW-FAB130403,,,,,,,,,,2025-06-20 08:00,2025-06-23 17:00,2025-06-20 08:00,2025-06-23 16:00,2025-11-20 17:00,2025-11-20 17:00,2025-11-18 10:00,2025-11-18 10:00,0,16,100
ZX-16350,IMPACT - PAINT CONTAINMENT-Clean Vestibule #4 - 3F-FAB130403,Complete,Clean Vestibule 4 -3F -SUW-FAB130403,,,,,,,,,,2025-05-05 08:00,2025-05-16 17:00,2025-05-05 08:00,2025-05-15 16:00,2025-11-20 17:00,2025-11-20 17:00,2025-12-05 17:00,2025-12-05 17:00,0,80,100
FAB130403A-01,INSTALL DOOR FRAMES - FAB130403A,Complete,Clean Vestibule 4 -3F -SUW-FAB130403,,,,,,,,,,2025-06-23 08:00,2025-07-01 17:00,2025-01-21 08:00,2025-01-22 16:00,2025-11-20 17:00,2025-11-20 17:00,2025-11-25 10:00,2025-11-25 10:00,0,56,100
FAB130403A-03,INSTALL DOOR FRAMES - FAB130403A,Complete,Clean Vestibule 4 -3F -SUW-FAB130403,,,,,,,,,,2025-01-22 08:00,2025-01-22 17:00,2025-01-22 08:00,2025-01-22 17:00,2025-11-20 17:00,2025-11-20 17:00,2025-11-25 10:00,2025-11-25 10:00,0,8,100
FAB130403A-04,INSTALL DOOR & HARDWARE - FAB130403A,Not Started,Clean Vestibule 4 -3F -SUW-FAB130403,,,,,,,,,,2025-11-21 08:00,2025-11-27 17:00,,,2025-11-21 08:00,2025-11-27 17:00,2025-11-25 10:00,2025-12-02 10:00,40,40,0
FAB130403A-05,PAINT & PROTECT DOORS & FRAMES - FAB130403A,Not Started,Clean Vestibule 4 -3F -SUW-FAB130403,,,,,,,,,,2026-02-16 08:00,2026-02-19 15:00,,,2026-02-16 08:00,2026-02-19 15:00,2025-12-02 10:00,2025-12-05 17:00,30,30,0
ZX-18430,IMPACT - MEP OPENING - Clean Vestibule #4 - 3F-FAB130403,Complete,Clean Vestibule 4 -3F -SUW-FAB130403,,,,,,,,,,2025-06-10 08:00,2025-06-23 17:00,2025-05-23 08:00,2025-06-06 16:00,2025-11-20 17:00,2025-11-20 17:00,2025-11-18 10:00,2025-11-18 10:00,0,80,100
ZX-1630,Complete Drywall & Inspect - Clean Vestibule @M/17 - 3F-FAB130320 NON RATED WALLS,Complete,Clean Vestibule @M/17 - 3F -SUW-FAB130320,,,,,,,,,,2025-06-24 08:00,2025-07-11 17:00,2025-06-24 08:00,2025-08-12 17:00,2025-11-20 17:00,2025-11-20 17:00,2025-12-05 17:00,2025-12-05 17:00,0,112,100
ZX-1650,Complete Control Joint & Inspect - Clean Vestibule @M/17 - 3F-FAB130320,Complete,Clean Vestibule @M/17 - 3F -SUW-FAB130320,,,,,,,,,,2025-09-11 08:00,2025-09-12 17:00,2025-09-11 08:00,2025-09-12 17:00,2025-11-20 17:00,2025-11-20 17:00,2025-12-05 17:00,2025-12-05 17:00,0,16,100
ZX-17370,IMPACT - MEP WORK BLOCKING - Complete Drywall & Inspect - Clean Vestibule @M/17 - 3F-FAB130320,Complete,Clean Vestibule @M/17 - 3F -SUW-FAB130320,,,,,,,,,,2025-05-05 08:00,2025-05-22 17:00,2025-05-05 08:00,2025-06-23 16:00,2025-11-20 17:00,2025-11-20 17:00,2025-12-05 17:00,2025-12-05 17:00,0,112,100
ZX-1660,Complete Drywall & Inspect - SUB Clean Rm. Airlock - 3F-FAB130315,Complete,SUB Clean Rm. Airlock - 3F -SUW-FAB130315,,,,,,,,,,2025-05-13 08:00,2025-05-21 17:00,2025-05-13 08:00,2025-09-12 17:00,2025-11-20 17:00,2025-11-20 17:00,2025-12-05 17:00,2025-12-05 17:00,0,56,100
ZX-1680,Complete Control Joint & Inspect - SUB Clean Rm. Airlock - 3F-FAB130315,Complete,SUB Clean Rm. Airlock - 3F -SUW-FAB130315,,,,,,,,,,2025-09-12 08:00,2025-09-15 17:00,2025-09-12 08:00,2025-09-15 17:00,2025-11-20 17:00,2025-11-20 17:00,2025-12-05 17:00,2025-12-05 17:00,0,16,100
ZX-16520,IMPACT - Complete Drywall & Inspect - SUB Clean Rm. Airlock - 3F-FAB130315 SECAI DENIAL OF ACCEL COST FOR BERG,Complete,SUB Clean Rm. Airlock - 3F -SUW-FAB130315,,,,,,,,,,2025-05-05 08:00,2025-05-12 17:00,2025-05-05 08:00,2025-05-12 16:00,2025-11-20 17:00,2025-11-20 17:00,2025-12-05 17:00,2025-12-05 17:00,0,48,100
FAB130315A-01,IMPACT - INSTALL/REWORK DRYWALL FRAMING AROUND DOORS - FAB130315A,Complete,SUB Clean Rm. Airlock - 3F -SUW-FAB130315,,,,,,,,,,2025-07-24 08:00,2025-08-01 17:00,2025-07-24 08:00,2025-08-01 17:00,2025-11-20 17:00,2025-11-20 17:00,2025-11-25 10:00,2025-11-25 10:00,0,56,100
FAB130315A-02,SECAI ROUGH IN/SECURITY - FAB130315A,Complete,SUB Clean Rm. Airlock - 3F -SUW-FAB130315,,,,,,,,,,2025-08-01 08:00,2025-08-01 17:00,2025-08-01 08:00,2025-08-01 17:00,2025-11-20 17:00,2025-11-20 17:00,2025-11-25 10:00,2025-11-25 10:00,0,8,100
FAB130315A-03,INSTALL DOOR FRAMES - FAB130315A,Complete,SUB Clean Rm. Airlock - 3F -SUW-FAB130315,,,,,,,,,,2025-08-01 08:00,2025-08-01 17:00,2025-08-01 08:00,2025-08-01 17:00,2025-11-20 17:00,2025-11-20 17:00,2025-11-25 10:00,2025-11-25 10:00,0,8,100
FAB130315A-04,INSTALL DOOR & HARDWARE - FAB130315A,Active,SUB Clean Rm. Airlock - 3F -SUW-FAB130315,,,,,,,,,,2025-11-18 08:00,2025-11-24 17:00,2025-11-18 08:00,,2025-11-21 08:00,2025-11-27 17:00,2025-11-25 10:00,2025-12-02 10:00,40,40,0
FAB130315A-05,PAINT & PROTECT DOORS & FRAMES -  FAB130315A,Not Started,SUB Clean Rm. Airlock - 3F -SUW-FAB130315,,,,,,,,,,2026-02-16 08:00,2026-02-19 15:00,,,2026-02-16 08:00,2026-02-19 15:00,2025-12-02 10:00,2025-12-05 17:00,30,30,0
FAB130315A-11,IMPACT - SCAFFOLD CONFLICT,Complete,SUB Clean Rm. Airlock - 3F -SUW-FAB130315,,,,,,,,,,2025-06-20 08:00,2025-06-26 17:00,2025-06-20 08:00,2025-06-23 16:00,2025-11-20 17:00,2025-11-20 17:00,2025-11-25 10:00,2025-11-25 10:00,0,40,100
ZX-17780,IMPACT - MEP OPENING / SAFETY ACESS - SUB Clean Rm. Airlock - 3F-FAB130315,Complete,SUB Clean Rm. Airlock - 3F -SUW-FAB130315,,,,,,,,,,2025-06-13 08:00,2025-06-26 17:00,2025-06-13 08:00,2025-06-23 16:00,2025-11-20 17:00,2025-11-20 17:00,2025-12-05 17:00,2025-12-05 17:00,0,80,100
ZX-18610,IMPACT MEP WORK - SUB Clean Rm. Airlock - 3F-FAB130315,Complete,SUB Clean Rm. Airlock - 3F -SUW-FAB130315,,,,,,,,,,2025-05-13 08:00,2025-05-26 17:00,2025-05-13 08:00,2025-06-23 16:00,2025-11-20 17:00,2025-11-20 17:00,2025-12-05 17:00,2025-12-05 17:00,0,80,100
ZX-18840,IMPACT - SECAI RAISED FLOOR INSTALL - SUB Clean Rm. Airlock - 3F-FAB130315,Complete,SUB Clean Rm. Airlock - 3F -SUW-FAB130315,,,,,,,,,,2025-06-26 08:00,2025-07-09 17:00,2025-06-26 08:00,2025-09-12 17:00,2025-11-20 17:00,2025-11-20 17:00,2025-12-05 17:00,2025-12-05 17:00,0,80,100
ZX-1690,Complete Drywall & Inspect - Clean Toilet Corridor - 3F-FAB130319,Complete,Clean Toilet Corridor - 3F -SUW-FAB130319,,,,,,,,,,2025-06-10 08:00,2025-06-23 17:00,2025-05-26 08:00,2025-06-05 16:00,2025-11-20 17:00,2025-11-20 17:00,2025-11-17 10:00,2025-11-17 10:00,0,80,100
ZX-1710,Complete Control Joint & Inspect - Clean Toilet Corridor - 3F-FAB130319,Complete,Clean Toilet Corridor - 3F -SUW-FAB130319,,,,,,,,,,2025-06-24 08:00,2025-06-25 17:00,2025-06-06 08:00,2025-06-07 16:00,2025-11-20 17:00,2025-11-20 17:00,2025-11-17 10:00,2025-11-17 10:00,0,16,100
FAB130319A-03,INSTALL DOOR FRAMES - FAB130319A,Complete,Clean Toilet Corridor - 3F -SUW-FAB130319,,,,,,,,,,2025-06-27 08:00,2025-07-07 17:00,2025-05-30 08:00,2025-05-30 16:00,2025-11-20 17:00,2025-11-20 17:00,2025-11-25 10:00,2025-11-25 10:00,0,56,100
FAB130319A-04,INSTALL DOOR & HARDWARE - FAB130319A,Active,Clean Toilet Corridor - 3F -SUW-FAB130319,,,,,,,,,,2025-11-13 08:00,2025-11-19 17:00,2025-11-13 08:00,,2025-11-21 08:00,2025-11-27 17:00,2025-11-25 10:00,2025-12-02 10:00,40,40,0
FAB130319A-05,PAINT & PROTECT DOORS & FRAMES - FAB130319A,Not Started,Clean Toilet Corridor - 3F -SUW-FAB130319,,,,,,,,,,2026-02-16 08:00,2026-02-19 15:00,,,2026-02-16 08:00,2026-02-19 15:00,2025-12-02 10:00,2025-12-05 17:00,30,30,0
FAB130319B-03,INSTALL DOOR FRAMES - FAB130319B,Complete,Clean Toilet Corridor - 3F -SUW-FAB130319,,,,,,,,,,2025-06-27 08:00,2025-07-07 17:00,2025-05-30 08:00,2025-05-30 16:00,2025-11-20 17:00,2025-11-20 17:00,2025-11-25 10:00,2025-11-25 10:00,0,56,100
FAB130319B-02,SECAI ROUGH IN/SECURITY - FAB130319B,Complete,Clean Toilet Corridor - 3F -SUW-FAB130319,,,,,,,,,,2025-07-09 08:00,2025-07-09 17:00,2025-05-30 08:00,2025-05-30 16:00,2025-11-20 17:00,2025-11-20 17:00,2025-11-25 10:00,2025-11-25 10:00,0,8,100
FAB130319B-04,INSTALL DOOR & HARDWARE - FAB130319B,Active,Clean Toilet Corridor - 3F -SUW-FAB130319,,,,,,,,,,2025-11-13 08:00,2025-11-19 17:00,2025-11-13 08:00,,2025-11-21 08:00,2025-11-27 17:00,2025-11-25 10:00,2025-12-02 10:00,40,40,0
FAB130319B-05,PAINT & PROTECT DOORS & FRAMES - FAB130319B,Not Started,Clean Toilet Corridor - 3F -SUW-FAB130319,,,,,,,,,,2026-02-16 08:00,2026-02-19 15:00,,,2026-02-16 08:00,2026-02-19 15:00,2025-12-02 10:00,2025-12-05 17:00,30,30,0
FAB130319C-01,IMPACT - INSTALL/REWORK DRYWALL FRAMING AROUND DOORS - FAB130319C,Complete,Clean Toilet Corridor - 3F -SUW-FAB130319,,,,,,,,,,2025-06-27 08:00,2025-07-07 17:00,2025-02-19 08:00,2025-02-27 16:00,2025-11-20 17:00,2025-11-20 17:00,2025-11-25 10:00,2025-11-25 10:00,0,56,100
FAB130319C-02,SECAI ROUGH IN/SECURITY - FAB130319C,Complete,Clean Toilet Corridor - 3F -SUW-FAB130319,,,,,,,,,,2025-07-09 08:00,2025-07-09 17:00,2025-02-27 08:00,2025-02-27 08:00,2025-11-20 17:00,2025-11-20 17:00,2025-11-25 10:00,2025-11-25 10:00,0,8,100
FAB130319C-03,INSTALL DOOR FRAMES - FAB130319C,Complete,Clean Toilet Corridor - 3F -SUW-FAB130319,,,,,,,,,,2025-06-23 13:00,2025-06-24 12:00,2025-02-27 00:00,2025-02-27 08:00,2025-11-20 17:00,2025-11-20 17:00,2025-11-25 10:00,2025-11-25 10:00,0,8,100
FAB130319C-04,INSTALL DOOR & HARDWARE - FAB130319C,Active,Clean Toilet Corridor - 3F -SUW-FAB130319,,,,,,,,,,2025-09-10 08:00,2025-09-16 17:00,2025-09-10 08:00,,2025-11-21 08:00,2025-11-27 17:00,2025-11-25 10:00,2025-12-02 10:00,40,40,0
FAB130319C-05,PAINT & PROTECT DOORS & FRAMES - FAB130319C,Not Started,Clean Toilet Corridor - 3F -SUW-FAB130319,,,,,,,,,,2026-02-16 08:00,2026-02-19 15:00,,,2026-02-16 08:00,2026-02-19 15:00,2025-12-02 10:00,2025-12-05 17:00,30,30,0
ZX-1720,SECAI TURNOVER FOR ACELERATION - Drywall & Inspect - Elevator Hall #03 - 3F-FAB130310 BAKER/DESCOPE,Complete,Elevator Hall 3 - 3F -SUW-FAB130310,,,,,,,,,,2025-06-27 08:00,2025-07-10 17:00,2025-06-27 08:00,2025-06-27 16:00,2025-11-20 17:00,2025-11-20 17:00,2025-11-25 10:00,2025-11-25 10:00,0,80,100
ZX-1730,SECAI TURNOVER FOR ACELERATION - Fire Caulk & Inspect - Elevator Hall #03 - 3F-FAB130310 BAKER/DESCOPE,Complete,Elevator Hall 3 - 3F -SUW-FAB130310,,,,,,,,,,2025-07-15 08:00,2025-07-16 17:00,2025-06-27 08:00,2025-06-27 16:00,2025-11-20 17:00,2025-11-20 17:00,2025-12-05 17:00,2025-12-05 17:00,0,16,100
ZX-1740,SECAI TURNOVER FOR ACELERATION - Control Joint & Inspect - Elevator Hall #03 - 3F-FAB130310 BAKER/DESCOPE,Complete,Elevator Hall 3 - 3F -SUW-FAB130310,,,,,,,,,,2025-07-15 08:00,2025-07-16 17:00,2025-06-27 08:00,2025-06-27 16:00,2025-11-20 17:00,2025-11-20 17:00,2025-11-25 10:00,2025-11-25 10:00,0,16,100
FAB130310A-02,SECAI ROUGH IN/SECURITY - FAB130310A,Complete,Elevator Hall 3 - 3F -SUW-FAB130310,,,,,,,,,,2025-07-09 08:00,2025-07-09 17:00,2025-04-04 08:00,2025-04-04 16:00,2025-11-20 17:00,2025-11-20 17:00,2025-11-25 10:00,2025-11-25 10:00,0,8,100
FAB130310A-03,INSTALL DOOR FRAMES - FAB130310A,Complete,Elevator Hall 3 - 3F -SUW-FAB130310,,,,,,,,,,2025-09-29 13:00,2025-09-30 12:00,2025-04-04 00:00,2025-04-04 12:00,2025-11-20 17:00,2025-11-20 17:00,2025-11-25 10:00,2025-11-25 10:00,0,8,100
FAB130310A-04,INSTALL DOOR & HARDWARE - FAB130310A,Active,Elevator Hall 3 - 3F -SUW-FAB130310,,,,,,,,,,2025-11-18 08:00,2025-11-24 17:00,2025-11-18 08:00,,2025-11-21 08:00,2025-11-27 17:00,2025-11-25 10:00,2025-12-02 10:00,40,40,0
FAB130310A-05,PAINT & PROTECT DOORS & FRAMES - FAB130310A,Not Started,Elevator Hall 3 - 3F -SUW-FAB130310,,,,,,,,,,2026-02-16 08:00,2026-02-19 15:00,,,2026-02-16 08:00,2026-02-19 15:00,2025-12-02 10:00,2025-12-05 17:00,30,30,0
FAB130310B-02,SECAI ROUGH IN/SECURITY - FAB130310B,Complete,Elevator Hall 3 - 3F -SUW-FAB130310,,,,,,,,,,2025-07-09 08:00,2025-07-09 17:00,2025-01-31 08:00,2025-01-31 16:00,2025-11-20 17:00,2025-11-20 17:00,2025-11-25 10:00,2025-11-25 10:00,0,8,100
FAB130310B-03,INSTALL DOOR FRAMES - FAB130310B,Complete,Elevator Hall 3 - 3F -SUW-FAB130310,,,,,,,,,,2025-09-29 13:00,2025-09-30 12:00,2025-01-31 00:00,2025-01-31 12:00,2025-11-20 17:00,2025-11-20 17:00,2025-11-25 10:00,2025-11-25 10:00,0,8,100
FAB130310B-04,INSTALL DOOR & HARDWARE - FAB130310B,Active,Elevator Hall 3 - 3F -SUW-FAB130310,,,,,,,,,,2025-11-18 08:00,2025-11-24 17:00,2025-11-18 08:00,,2025-11-21 08:00,2025-11-27 17:00,2025-11-25 10:00,2025-12-02 10:00,40,40,0
FAB130310B-05,PAINT & PROTECT DOORS & FRAMES - FAB130310B,Not Started,Elevator Hall 3 - 3F -SUW-FAB130310,,,,,,,,,,2026-02-16 08:00,2026-02-19 15:00,,,2026-02-16 08:00,2026-02-19 15:00,2025-12-02 10:00,2025-12-05 17:00,30,30,0
FAB130310C-03,INSTALL DOOR FRAMES - FAB130310C,Complete,Elevator Hall 3 - 3F -SUW-FAB130310,,,,,,,,,,2025-07-29 08:00,2025-07-29 17:00,2025-07-29 08:00,2025-07-29 17:00,2025-11-20 17:00,2025-11-20 17:00,2025-11-25 10:00,2025-11-25 10:00,0,8,100
FAB130310C-02,SECAI ROUGH IN/SECURITY - FAB130310C,Complete,Elevator Hall 3 - 3F -SUW-FAB130310,,,,,,,,,,2025-07-29 08:00,2025-07-29 17:00,2025-07-29 08:00,2025-07-29 17:00,2025-11-20 17:00,2025-11-20 17:00,2025-11-25 10:00,2025-11-25 10:00,0,8,100
FAB130310C-04,INSTALL DOOR & HARDWARE - FAB130310C,Not Started,Elevator Hall 3 - 3F -SUW-FAB130310,,,,,,,,,,2025-11-21 08:00,2025-11-27 17:00,,,2025-11-21 08:00,2025-11-27 17:00,2025-11-25 10:00,2025-12-02 10:00,40,40,0
FAB130310C-05,PAINT & PROTECT DOORS & FRAMES - FAB130310C,Not Started,Elevator Hall 3 - 3F -SUW-FAB130310,,,,,,,,,,2026-02-16 08:00,2026-02-19 15:00,,,2026-02-16 08:00,2026-02-19 15:00,2025-12-02 10:00,2025-12-05 17:00,30,30,0
ZX-18710,IMPACT SECAI ENVIROMENTAL CONTROLS -Elevator Hall #03 - 3F-FAB130310,Complete,Elevator Hall 3 - 3F -SUW-FAB130310,,,,,,,,,,2025-06-13 08:00,2025-06-26 17:00,2025-06-13 08:00,2025-06-27 16:00,2025-11-20 17:00,2025-11-20 17:00,2025-11-25 10:00,2025-11-25 10:00,0,80,100
ZX-1750,Complete Drywall & Inspect - Vestibule #3 - 3F-FAB130303,Complete,Vestibule 3 - 3F -SUW-FAB130303,,,,,,,,,,2025-05-16 08:00,2025-05-27 17:00,2025-05-21 08:00,2025-05-27 08:00,2025-11-20 17:00,2025-11-20 17:00,2025-11-25 10:00,2025-11-25 10:00,0,64,100
ZX-1760,Complete Fire Caulk & Inspect - Vestibule #3 - 3F-FAB130303,Complete,Vestibule 3 - 3F -SUW-FAB130303,,,,,,,,,,2025-07-18 08:00,2025-07-29 17:00,2025-07-18 08:00,2025-08-04 17:00,2025-11-20 17:00,2025-11-20 17:00,2025-12-05 17:00,2025-12-05 17:00,0,64,100
ZX-1770,Complete Control Joint & Inspect - Vestibule #03 - 3F-FAB130303,Complete,Vestibule 3 - 3F -SUW-FAB130303,,,,,,,,,,2025-06-06 08:00,2025-06-09 17:00,2025-05-29 08:00,2025-06-02 16:00,2025-11-20 17:00,2025-11-20 17:00,2025-11-25 10:00,2025-11-25 10:00,0,16,100
ZX-16420,IMPACT - SECAI DENIAL OF ACCEL COST FOR BERG - Complete Drywall & Inspect - Vestibule #3 - 3F-FAB130303,Complete,Vestibule 3 - 3F -SUW-FAB130303,,,,,,,,,,2025-05-09 08:00,2025-05-12 17:00,2025-05-09 08:00,2025-05-19 16:00,2025-11-20 17:00,2025-11-20 17:00,2025-11-25 10:00,2025-11-25 10:00,0,16,100
FAB130303A-03,INSTALL DOOR FRAMES - FAB130303A,Complete,Vestibule 3 - 3F -SUW-FAB130303,,,,,,,,,,2025-06-03 08:00,2025-06-11 17:00,2025-04-28 08:00,2025-04-28 16:00,2025-11-20 17:00,2025-11-20 17:00,2025-11-25 10:00,2025-11-25 10:00,0,56,100
FAB130303A-02,SECAI ROUGH IN/SECURITY - FAB130303A,Complete,Vestibule 3 - 3F -SUW-FAB130303,,,,,,,,,,2025-06-12 08:00,2025-06-12 17:00,2025-04-28 08:00,2025-04-28 16:00,2025-11-20 17:00,2025-11-20 17:00,2025-11-25 10:00,2025-11-25 10:00,0,8,100
FAB130303A-04,INSTALL DOOR & HARDWARE - FAB130303A,Active,Vestibule 3 - 3F -SUW-FAB130303,,,,,,,,,,2025-10-21 08:00,2025-10-27 17:00,2025-10-21 08:00,,2025-11-21 08:00,2025-11-27 17:00,2025-11-25 10:00,2025-12-02 10:00,40,40,0
FAB130303A-05,PAINT & PROTECT DOORS & FRAMES -  FAB130303A,Not Started,Vestibule 3 - 3F -SUW-FAB130303,,,,,,,,,,2026-02-16 08:00,2026-02-19 15:00,,,2026-02-16 08:00,2026-02-19 15:00,2025-12-02 10:00,2025-12-05 17:00,30,30,0
FAB130303B-01,INSTALL DOOR FRAMES - FAB130303B,Complete,Vestibule 3 - 3F -SUW-FAB130303,,,,,,,,,,2025-06-17 08:00,2025-06-25 17:00,2025-06-05 08:00,2025-06-05 16:00,2025-11-20 17:00,2025-11-20 17:00,2025-11-27 08:00,2025-11-27 08:00,0,56,100
FAB130303B-04,INSTALL DOOR & HARDWARE - FAB130303B,Active,Vestibule 3 - 3F -SUW-FAB130303,,,,,,,,,,2025-06-17 08:00,2025-06-23 17:00,2025-06-17 08:00,,2025-11-21 08:00,2025-11-27 17:00,2025-11-27 08:00,2025-12-03 17:00,40,40,0
FAB130303B-05,PAINT & PROTECT DOORS & FRAMES -  FAB130303B,Not Started,Vestibule 3 - 3F -SUW-FAB130303,,,,,,,,,,2026-02-16 08:00,2026-02-17 17:00,,,2026-02-16 08:00,2026-02-17 17:00,2025-12-04 08:00,2025-12-05 17:00,16,16,0
FAB130303A-65,IMPACT - RE-INSTALL CORRECT FRAME - FAB130303A,Complete,Vestibule 3 - 3F -SUW-FAB130303,,,,,,,,,,2025-06-20 08:00,2025-06-25 15:00,2025-06-20 08:00,2025-06-23 14:00,2025-11-20 17:00,2025-11-20 17:00,2025-11-25 10:00,2025-11-25 10:00,0,30,100
ZX-1150,Complete Drywall & Inspect - Airlock 3 - 3F-SUW-FAB130302,Complete,Air Lock 3 - 3F -SUW-FAB130302,,,,,,,,,,2025-05-05 08:00,2025-05-09 17:00,2025-05-05 08:00,2025-05-30 16:00,2025-11-20 17:00,2025-11-20 17:00,2025-12-05 17:00,2025-12-05 17:00,0,40,100
ZX-1160,Complete Fire Caulk & Inspect. - Airlock 3 - 3F-SUW-FAB130302,Complete,Air Lock 3 - 3F -SUW-FAB130302,,,,,,,,,,2025-06-10 08:00,2025-06-11 17:00,2025-06-10 08:00,2025-08-01 17:00,2025-11-20 17:00,2025-11-20 17:00,2025-12-05 17:00,2025-12-05 17:00,0,16,100
ZX-1170,Complete Control Joint & Inspect - Airlock 3 - 3F-SUW-FAB130302,Complete,Air Lock 3 - 3F -SUW-FAB130302,,,,,,,,,,2025-05-21 08:00,2025-05-23 12:00,2025-05-20 08:00,2025-05-21 12:00,2025-11-20 17:00,2025-11-20 17:00,2025-12-05 17:00,2025-12-05 17:00,0,20,100
ZX-17380,IMPACT - RFI SOFFIT DETAIL DESIGN - Complete Drywall & Inspect - Airlock 3 - 3F-SUW-FAB130302,Complete,Air Lock 3 - 3F -SUW-FAB130302,,,,,,,,,,2025-05-05 08:00,2025-05-09 17:00,2025-05-06 08:00,2025-05-16 08:00,2025-11-20 17:00,2025-11-20 17:00,2025-12-05 17:00,2025-12-05 17:00,0,40,100
ZX-18190,IMPACT - SECAI / AMTS Damaged Ceiling - Inspect - Airlock 3 - 3F-SUW-FAB130302,Complete,Air Lock 3 - 3F -SUW-FAB130302,,,,,,,,,,2025-05-05 08:00,2025-05-09 17:00,2025-05-30 08:00,2025-06-09 16:00,2025-11-20 17:00,2025-11-20 17:00,2025-12-05 17:00,2025-12-05 17:00,0,40,100
ZX-1060,Complete Drywall & Inspect - Airlock #20-Airlock 20 - 3F-FAB136312,Complete,Air Lock 20 - 3F -SUE-FAB136312,,,,,,,,,,2025-05-05 08:00,2025-05-08 17:00,2025-05-05 08:00,2025-05-08 16:00,2025-11-20 17:00,2025-11-20 17:00,2025-11-25 10:00,2025-11-25 10:00,0,32,100
ZX-1070,Complete Fire Caulk & Inspect. - Airlock #20-Airlock 20 - 3F-FAB136312,Complete,Air Lock 20 - 3F -SUE-FAB136312,,,,,,,,,,2025-06-06 08:00,2025-06-19 17:00,2025-06-05 08:00,2025-07-18 17:00,2025-11-20 17:00,2025-11-20 17:00,2025-12-05 17:00,2025-12-05 17:00,0,80,100
ZX-1080,Complete Control Joint & Inspect - Airlock #20 - 3F-FAB136312,Complete,Air Lock 20 - 3F -SUE-FAB136312,,,,,,,,,,2025-05-28 08:00,2025-05-30 12:00,2025-05-17 08:00,2025-05-22 12:00,2025-11-20 17:00,2025-11-20 17:00,2025-11-25 10:00,2025-11-25 10:00,0,20,100
ZX-17330,IMPACT - BERG ALLOCATION - Complete Control Joint & Inspect - Airlock #20-Airlock 20 - 3F-FAB136312,Complete,Air Lock 20 - 3F -SUE-FAB136312,,,,,,,,,,2025-05-13 08:00,2025-05-15 12:00,2025-05-09 08:00,2025-05-16 16:00,2025-11-20 17:00,2025-11-20 17:00,2025-11-25 10:00,2025-11-25 10:00,0,20,100
ZX-1030,Complete Drywall & Inspect - Airlock #22-Airlock 22 - 3F-FAB136109,Complete,Air Lock 22 - 3F -SUE-FAB136109,,,,,,,,,,2025-05-05 08:00,2025-05-07 17:00,2025-05-05 08:00,2025-05-24 16:00,2025-11-20 17:00,2025-11-20 17:00,2025-11-25 10:00,2025-11-25 10:00,0,24,100
ZX-1040,Complete Fire Caulk & Inspect. - Airlock #22-Airlock 22 - 3F-FAB136109,Complete,Air Lock 22 - 3F -SUE-FAB136109,,,,,,,,,,2025-08-01 08:00,2025-08-12 17:00,2025-08-01 08:00,2025-08-08 17:00,2025-11-20 17:00,2025-11-20 17:00,2025-12-05 17:00,2025-12-05 17:00,0,64,100
ZX-1050,Complete Control Joint & Inspect - Airlock #22 - 3F-FAB136109,Complete,Air Lock 22 - 3F -SUE-FAB136109,,,,,,,,,,2025-05-06 08:00,2025-05-08 12:00,2025-05-06 08:00,2025-05-08 12:00,2025-11-20 17:00,2025-11-20 17:00,2025-11-25 10:00,2025-11-25 10:00,0,20,100
ZX-16400,IMPACT - NEED SCAFFOLD REMOVED - Complete Control Joint & Inspect. - Airlock #22-Airlock 22 - 3F-FAB136109,Complete,Air Lock 22 - 3F -SUE-FAB136109,,,,,,,,,,2025-05-08 08:00,2025-05-16 17:00,2025-05-08 08:00,2025-05-23 16:00,2025-11-20 17:00,2025-11-20 17:00,2025-12-05 17:00,2025-12-05 17:00,0,56,100
ZX-16490,IMPACT - Complete Drywall & Inspect - Airlock #22-Airlock 22 - 3F-FAB136109 INSPECTIONS,Complete,Air Lock 22 - 3F -SUE-FAB136109,,,,,,,,,,2025-05-05 08:00,2025-05-07 17:00,2025-05-05 08:00,2025-05-16 16:00,2025-11-20 17:00,2025-11-20 17:00,2025-12-05 17:00,2025-12-05 17:00,0,24,100
TR-FAB130109A-01,IMPACT - INSTALL/REWORK DRYWALL FRAMING AROUND DOORS - TR - FAB130109A,Complete,Air Lock 22 - 3F -SUE-FAB136109,,,,,,,,,,2025-07-09 08:00,2025-07-16 17:00,2025-07-09 08:00,2025-07-16 17:00,2025-11-20 17:00,2025-11-20 17:00,2025-11-25 10:00,2025-11-25 10:00,0,48,100
TR-FAB130109A-02,SECAI ROUGH IN/SECURITY - TR - FAB130109A,Complete,Air Lock 22 - 3F -SUE-FAB136109,,,,,,,,,,2025-07-16 08:00,2025-07-16 17:00,2025-07-16 08:00,2025-07-16 17:00,2025-11-20 17:00,2025-11-20 17:00,2025-12-05 17:00,2025-12-05 17:00,0,8,100
TR-FAB130109A-03,INSTALL DOOR FRAMES - TR - FAB130109A,Complete,Air Lock 22 - 3F -SUE-FAB136109,,,,,,,,,,2025-07-16 08:00,2025-07-16 17:00,2025-07-16 08:00,2025-07-16 17:00,2025-11-20 17:00,2025-11-20 17:00,2025-11-25 10:00,2025-11-25 10:00,0,8,100
TR-FAB130109A-04,INSTALL DOOR & HARDWARE - TR - FAB130109A,Not Started,Air Lock 22 - 3F -SUE-FAB136109,,,,,,,,,,2025-11-21 08:00,2025-11-27 17:00,,,2025-11-21 08:00,2025-11-27 17:00,2025-11-25 10:00,2025-12-02 10:00,40,40,0
TR-FAB130109A-05,PAINT & PROTECT DOORS & FRAMES - TR - FAB130109A,Not Started,Air Lock 22 - 3F -SUE-FAB136109,,,,,,,,,,2026-02-16 08:00,2026-02-19 15:00,,,2026-02-16 08:00,2026-02-19 15:00,2025-12-02 10:00,2025-12-05 17:00,30,30,0
TR-FAB130109A-11,IMPACT - PROCUREMENT - Reordered doors (Wall Thickness and Door Swing Design Changes),Complete,Air Lock 22 - 3F -SUE-FAB136109,,,,,,,,,,2025-06-09 08:00,2025-08-15 17:00,2025-06-09 08:00,2025-07-14 17:00,2025-11-20 17:00,2025-11-20 17:00,2025-11-25 10:00,2025-11-25 10:00,0,400,100
ZX-1810,Complete Drywall & Inspect - Elevator #22 - 3F-FAB1-EL22,Complete,Elevator 22 - 3F -SUE-FAB1-EL22,,,,,,,,,,2025-07-28 08:00,2025-07-30 17:00,2025-07-28 08:00,2025-08-19 17:00,2025-11-20 17:00,2025-11-20 17:00,2025-12-05 17:00,2025-12-05 17:00,0,24,100
ZX-1820,Complete Fire Caulk & Inspect - Elevator #22 - 3F-FAB1-EL22,Complete,Elevator 22 - 3F -SUE-FAB1-EL22,,,,,,,,,,2025-09-05 08:00,2025-09-08 17:00,2025-09-05 08:00,2025-09-08 17:00,2025-11-20 17:00,2025-11-20 17:00,2025-12-05 17:00,2025-12-05 17:00,0,16,100
ZX-1830,Complete Control Joint & Inspect - Elevator #22 - 3F-FAB1-EL22,Complete,Elevator 22 - 3F -SUE-FAB1-EL22,,,,,,,,,,2025-08-18 08:00,2025-08-19 17:00,2025-08-18 08:00,2025-08-19 17:00,2025-11-20 17:00,2025-11-20 17:00,2025-12-05 17:00,2025-12-05 17:00,0,16,100
ZX-1840,Complete Drywall & Inspect - Elevator #20 - 3F-FAB1-EL20,Complete,Elevator 20 - 3F -SUE-FAB1-EL20,,,,,,,,,,2025-05-05 08:00,2025-05-16 17:00,2025-05-19 08:00,2025-05-28 16:00,2025-11-20 17:00,2025-11-20 17:00,2025-11-25 10:00,2025-11-25 10:00,0,80,100
ZX-1850,Complete Fire Caulk & Inspect - Elevator #20 - 3F-FAB1-EL20,Complete,Elevator 20 - 3F -SUE-FAB1-EL20,,,,,,,,,,2025-06-06 08:00,2025-06-09 17:00,2025-06-05 08:00,2025-06-18 08:00,2025-11-20 17:00,2025-11-20 17:00,2025-12-05 17:00,2025-12-05 17:00,0,16,100
ZX-1860,Install Complete Control Joint & Inspect - Elevator #20 - 3F-FAB1-EL20,Complete,Elevator 20 - 3F -SUE-FAB1-EL20,,,,,,,,,,2025-06-02 08:00,2025-06-03 17:00,2025-05-29 08:00,2025-05-30 16:00,2025-11-20 17:00,2025-11-20 17:00,2025-11-25 10:00,2025-11-25 10:00,0,16,100
ZX-18830,IMPACT - SECAI ELEVATOR TEAM TOOK OVER - Elevator #20 - 3F-FAB1-EL20,Complete,Elevator 20 - 3F -SUE-FAB1-EL20,,,,,,,,,,2025-06-18 08:00,2025-07-15 17:00,2025-06-18 08:00,2025-06-18 08:00,2025-11-20 17:00,2025-11-20 17:00,2025-12-05 17:00,2025-12-05 17:00,0,160,100
ZX-1870,Complete Drywall & Inspect - Elevator #19 - 3F-FAB1-EL19,Complete,Elevator 19 - 3F -SUE-FAB1-EL19,,,,,,,,,,2025-06-30 08:00,2025-07-23 12:00,2025-06-30 08:00,2025-08-19 17:00,2025-11-20 17:00,2025-11-20 17:00,2025-12-05 17:00,2025-12-05 17:00,0,140,100
ZX-1880,Complete Fire Caulk & Inspect - Elevator #19 - 3F-FAB1-EL19,Complete,Elevator 19 - 3F -SUE-FAB1-EL19,,,,,,,,,,2025-07-14 08:00,2025-07-15 17:00,2025-07-14 08:00,2025-08-21 17:00,2025-11-20 17:00,2025-11-20 17:00,2025-12-05 17:00,2025-12-05 17:00,0,16,100
ZX-1890,Complete Control Joint & Inspect - Elevator #19 - 3F-FAB1-EL19,Complete,Elevator 19 - 3F -SUE-FAB1-EL19,,,,,,,,,,2025-07-14 08:00,2025-07-15 17:00,2025-07-14 08:00,2025-08-19 17:00,2025-11-20 17:00,2025-11-20 17:00,2025-12-05 17:00,2025-12-05 17:00,0,16,100
ZX-17890,IMPACT - ONGOING Correction -Elevator #19 - 3F-FAB1-EL19,Complete,Elevator 19 - 3F -SUE-FAB1-EL19,,,,,,,,,,2025-06-24 08:00,2025-07-17 12:00,2025-05-07 08:00,2025-06-27 16:00,2025-11-20 17:00,2025-11-20 17:00,2025-12-05 17:00,2025-12-05 17:00,0,140,100
ZX-1900,Complete Drywall & Inspect - Elevator Hall #18 - 3F-FAB136504,Complete,Elevator Hall 18 - 3F -SUE-FAB136504,,,,,,,,,,2025-10-10 08:00,2025-10-13 17:00,2025-10-10 08:00,2025-10-13 17:00,2025-11-20 17:00,2025-11-20 17:00,2025-11-24 10:00,2025-11-24 10:00,0,16,100
ZX-1910,Complete Fire Caulk & Inspect - Elevator Hall #18 - 3F-FAB136504,Not Started,Elevator Hall 18 - 3F -SUE-FAB136504,,,,,,,,,,2025-11-21 08:00,2025-11-24 17:00,,,2025-11-21 08:00,2025-11-24 17:00,2025-12-04 08:00,2025-12-05 17:00,16,16,0
ZX-1920,Complete Control Joint & Inspect - Elevator Hall #18 - 3F-FAB136504,Complete,Elevator Hall 18 - 3F -SUE-FAB136504,,,,,,,,,,2025-10-06 08:00,2025-10-07 17:00,2025-10-06 08:00,2025-10-07 17:00,2025-11-20 17:00,2025-11-20 17:00,2025-11-24 10:00,2025-11-24 10:00,0,16,100
FAB136504A-03,INSTALL DOOR FRAMES - FAB136504A,Complete,Elevator Hall 18 - 3F -SUE-FAB136504,,,,,,,,,,2025-07-16 08:00,2025-07-16 17:00,2025-01-15 00:00,2025-01-16 16:00,2025-11-20 17:00,2025-11-20 17:00,2025-11-25 10:00,2025-11-25 10:00,0,8,100
FAB136504A-04,INSTALL DOOR & HARDWARE - FAB136504A,Not Started,Elevator Hall 18 - 3F -SUE-FAB136504,,,,,,,,,,2025-11-21 08:00,2025-11-27 17:00,,,2025-11-21 08:00,2025-11-27 17:00,2025-11-25 10:00,2025-12-02 10:00,40,40,0
FAB136504A-05,PAINT & PROTECT DOORS & FRAMES - FAB136504A,Not Started,Elevator Hall 18 - 3F -SUE-FAB136504,,,,,,,,,,2026-02-16 08:00,2026-02-19 15:00,,,2026-02-16 08:00,2026-02-19 15:00,2025-12-02 10:00,2025-12-05 17:00,30,30,0
FAB136504B-03,INSTALL DOOR FRAMES - FAB136504B,Not Started,Elevator Hall 18 - 3F -SUE-FAB136504,,,,,,,,,,2025-11-21 08:00,2025-11-21 17:00,,,2025-11-21 08:00,2025-11-21 17:00,2025-11-24 10:00,2025-11-25 10:00,8,8,0
FAB136504B-04,INSTALL DOOR & HARDWARE - FAB136504B,Not Started,Elevator Hall 18 - 3F -SUE-FAB136504,,,,,,,,,,2025-11-24 08:00,2025-11-28 17:00,,,2025-11-24 08:00,2025-11-28 17:00,2025-11-25 10:00,2025-12-02 10:00,40,40,0
FAB136504B-05,PAINT & PROTECT DOORS & FRAMES - FAB136504B,Not Started,Elevator Hall 18 - 3F -SUE-FAB136504,,,,,,,,,,2026-02-16 08:00,2026-02-19 15:00,,,2026-02-16 08:00,2026-02-19 15:00,2025-12-02 10:00,2025-12-05 17:00,30,30,0
FAB136504C-00,SHOP DRAWINGS (RFI 9565) - PATRIOT - FAB136504C,Complete,Elevator Hall 18 - 3F -SUE-FAB136504,,INTERIOR STAIRS,L3 / Waffle Slab Level,,,,,,,2025-07-03 08:00,2025-07-07 17:00,2025-07-03 08:00,2025-09-11 17:00,2025-11-20 17:00,2025-11-20 17:00,2025-11-24 08:00,2025-11-24 08:00,0,24,100
FAB136504C-01,GOAL POST SHOP DRAWINGS APPROVAL - JACOBS/SECAI - FAB136504C - C/32,Complete,Elevator Hall 18 - 3F -SUE-FAB136504,,INTERIOR STAIRS,L3 / Waffle Slab Level,,,,,,,2025-09-11 08:00,2025-09-17 17:00,2025-09-11 08:00,2025-10-24 17:00,2025-11-20 17:00,2025-11-20 17:00,2025-11-24 08:00,2025-11-24 08:00,0,40,100
FAB136504C-02,HEADER/GOAL POST FABRICATION - PATRIOT - FAB136504C - C/32,Complete,Elevator Hall 18 - 3F -SUE-FAB136504,,INTERIOR STAIRS,L3 / Waffle Slab Level,,,,,,,2025-10-27 08:00,2025-10-31 17:00,2025-10-27 08:00,2025-10-31 17:00,2025-11-20 17:00,2025-11-20 17:00,2025-11-24 08:00,2025-11-24 08:00,0,40,100
FAB136504C-04,HEADER/GOAL POST INSTALL - PATRIOT - FAB136504C - C/32,Not Started,Elevator Hall 18 - 3F -SUE-FAB136504,,INTERIOR STAIRS,L3 / Waffle Slab Level,,,,,,,2025-11-28 08:00,2025-12-02 17:00,,,2025-11-28 08:00,2025-12-02 17:00,2025-12-01 08:00,2025-12-03 17:00,24,24,0
FAB136504C-07,DOOR INSTALL - FAB136504C (OHC),Not Started,Elevator Hall 18 - 3F -SUE-FAB136504,,,,,,,,,,2025-12-03 08:00,2025-12-04 17:00,,,2025-12-03 08:00,2025-12-04 17:00,2025-12-04 08:00,2025-12-05 17:00,16,16,0
ZX-1930,Complete Drywall & Inspect - Elevator #18 - 3F-FAB1-EL18 - MKM,Complete,Elevator 18- 3F -SUE-FAB1-EL18,,,,,,,,,,2025-07-25 08:00,2025-08-07 17:00,2025-07-21 08:00,2025-07-28 17:00,2025-11-20 17:00,2025-11-20 17:00,2025-11-24 10:00,2025-11-24 10:00,0,80,100
ZX-1940,Complete Fire Caulk & Inspect - Elevator #18 - 3F-FAB1-EL18 - MKM,Complete,Elevator 18- 3F -SUE-FAB1-EL18,,,,,,,,,,2025-07-25 08:00,2025-07-28 17:00,2025-07-25 08:00,2025-07-28 17:00,2025-11-20 17:00,2025-11-20 17:00,2025-12-05 17:00,2025-12-05 17:00,0,16,100
ZX-1950,Complete Control Joint & Inspect - Elevator #18 - 3F-FAB1-EL18 - MKM,Complete,Elevator 18- 3F -SUE-FAB1-EL18,,,,,,,,,,2025-07-25 08:00,2025-07-28 17:00,2025-07-25 08:00,2025-07-28 17:00,2025-11-20 17:00,2025-11-20 17:00,2025-11-24 10:00,2025-11-24 10:00,0,16,100
ZX-1960,Complete Drywall & Inspect - Elevator #05 - 3F-FAB1-EL5,Complete,Elevator 5 - 3F -SUW-FAB1-EL05,,,,,,,,,,2025-09-29 08:00,2025-09-30 17:00,2025-09-29 08:00,2025-09-30 17:00,2025-11-20 17:00,2025-11-20 17:00,2025-12-05 17:00,2025-12-05 17:00,0,16,100
ZX-1970,Complete Fire Caulk & Inspect - Elevator #05 - 3F-FAB1-EL5,Complete,Elevator 5 - 3F -SUW-FAB1-EL05,,,,,,,,,,2025-09-29 08:00,2025-09-30 17:00,2025-09-29 08:00,2025-09-30 17:00,2025-11-20 17:00,2025-11-20 17:00,2025-12-05 17:00,2025-12-05 17:00,0,16,100
ZX-1980,Complete Control Joint & Inspect - Elevator #05 - 3F-FAB1-EL5,Complete,Elevator 5 - 3F -SUW-FAB1-EL05,,,,,,,,,,2025-09-29 08:00,2025-09-30 17:00,2025-09-29 08:00,2025-09-30 17:00,2025-11-20 17:00,2025-11-20 17:00,2025-12-05 17:00,2025-12-05 17:00,0,16,100
ZX-1990,SECAI TOOK OVER FOR ACCELERATION - Complete Drywall & Inspect - Elevator #03 - 3F-FAB1-EL3,Complete,Elevator 3 - 3F -SUW-FAB1-EL03,,,,,,,,,,2025-05-05 08:00,2025-05-16 17:00,2025-05-05 08:00,2025-05-12 17:00,2025-11-20 17:00,2025-11-20 17:00,2025-12-05 17:00,2025-12-05 17:00,0,80,100
ZX-2000,SECAI TOOK OVER FOR ACCELERATION - Complete Fire Caulk & Inspect - Elevator #03 - 3F-FAB1-EL3,Complete,Elevator 3 - 3F -SUW-FAB1-EL03,,,,,,,,,,2025-05-09 08:00,2025-05-12 17:00,2025-05-12 08:00,2025-05-12 17:00,2025-11-20 17:00,2025-11-20 17:00,2025-12-05 17:00,2025-12-05 17:00,0,16,100
ZX-2010,SECAI TOOK OVER FOR ACCELERATION - Complete Control Joint & Inspect - Elevator #03 - 3F-FAB1-EL3,Complete,Elevator 3 - 3F -SUW-FAB1-EL03,,,,,,,,,,2025-05-12 08:00,2025-05-13 17:00,2025-05-12 08:00,2025-05-12 17:00,2025-11-20 17:00,2025-11-20 17:00,2025-12-05 17:00,2025-12-05 17:00,0,16,100
ZX-17320,IMPACT - SECAI OPEN FOR USE - Drywall & Inspect - Elevator #03 - 3F-FAB1-EL3,Complete,Elevator 3 - 3F -SUW-FAB1-EL03,,,,,,,,,,2025-05-05 08:00,2025-05-16 17:00,2025-05-12 08:00,2025-05-12 17:00,2025-11-20 17:00,2025-11-20 17:00,2025-12-05 17:00,2025-12-05 17:00,0,80,100
ZX-2020,Complete Drywall & Inspect - Vestibule #1 - 3F-FAB130111,Complete,Vestibule 1 - 3F -SUW-FAB130111,,,,,,,,,,2025-05-05 08:00,2025-05-22 17:00,2025-05-05 08:00,2025-05-28 16:00,2025-11-20 17:00,2025-11-20 17:00,2025-11-25 10:00,2025-11-25 10:00,0,112,100
ZX-2030,Complete Fire Caulk & Inspect - Vestibule #1 - 3F-SUW-FAB130111,Complete,Vestibule 1 - 3F -SUW-FAB130111,,,,,,,,,,2025-07-18 08:00,2025-07-29 17:00,2025-07-18 08:00,2025-08-01 17:00,2025-11-20 17:00,2025-11-20 17:00,2025-11-25 10:00,2025-11-25 10:00,0,64,100
ZX-2040,Complete Control Joint & Inspect - Vestibule #1 - 3F-FAB130111,Complete,Vestibule 1 - 3F -SUW-FAB130111,,,,,,,,,,2025-05-29 08:00,2025-05-30 17:00,2025-05-29 08:00,2025-05-30 16:00,2025-11-20 17:00,2025-11-20 17:00,2025-11-25 10:00,2025-11-25 10:00,0,16,100
ZX-17390,IMPACT - MEP PIPE OBSTRUCTION - Vestibule #1 - FAB130111,Complete,Vestibule 1 - 3F -SUW-FAB130111,,,,,,,,,,2025-05-05 08:00,2025-05-22 17:00,2025-05-05 08:00,2025-05-16 16:00,2025-11-20 17:00,2025-11-20 17:00,2025-11-25 10:00,2025-11-25 10:00,0,112,100
FAB130111B-03,INSTALL DOOR FRAMES - FAB130111B,Complete,Vestibule 1 - 3F -SUW-FAB130111,,,,,,,,,,2025-08-08 08:00,2025-08-08 17:00,2025-08-09 08:00,2025-08-09 17:00,2025-11-20 17:00,2025-11-20 17:00,2025-11-25 10:00,2025-11-25 10:00,0,8,100
FAB130111B-04,INSTALL DOOR & HARDWARE - FAB130111B,Active,Vestibule 1 - 3F -SUW-FAB130111,,,,,,,,,,2025-11-13 08:00,2025-11-19 17:00,2025-11-13 08:00,,2025-11-21 08:00,2025-11-27 17:00,2025-11-25 10:00,2025-12-02 10:00,40,40,0
FAB130111B-05,PAINT & PROTECT DOORS & FRAMES -  FAB130111B,Not Started,Vestibule 1 - 3F -SUW-FAB130111,,,,,,,,,,2026-02-16 08:00,2026-02-19 15:00,,,2026-02-16 08:00,2026-02-19 15:00,2025-12-02 10:00,2025-12-05 17:00,30,30,0
FAB130111C-03,INSTALL DOOR FRAMES - FAB130111C,Complete,Vestibule 1 - 3F -SUW-FAB130111,,,,,,,,,,2025-06-02 08:00,2025-06-02 17:00,2025-01-24 08:00,2025-01-24 16:00,2025-11-20 17:00,2025-11-20 17:00,2025-11-24 10:00,2025-11-24 10:00,0,8,100
FAB130111C-02,SECAI ROUGH IN/SECURITY - FAB130111C,Complete,Vestibule 1 - 3F -SUW-FAB130111,,,,,,,,,,2025-06-11 08:00,2025-06-11 17:00,2025-01-24 08:00,2025-01-24 16:00,2025-11-20 17:00,2025-11-20 17:00,2025-11-24 10:00,2025-11-24 10:00,0,8,100
FAB130111C-04,INSTALL DOOR & HARDWARE - FAB130111C,Not Started,Vestibule 1 - 3F -SUW-FAB130111,,,,,,,,,,2025-11-28 08:00,2025-11-28 17:00,,,2025-11-28 08:00,2025-11-28 17:00,2025-12-01 10:00,2025-12-02 10:00,8,8,0
FAB130111C-05,PAINT & PROTECT DOORS & FRAMES -  FAB130111C,Not Started,Vestibule 1 - 3F -SUW-FAB130111,,,,,,,,,,2026-02-16 08:00,2026-02-19 15:00,,,2026-02-16 08:00,2026-02-19 15:00,2025-12-02 10:00,2025-12-05 17:00,30,30,0
FAB120311A-01,IMPACT - INSTALL/REWORK DRYWALL FRAMING AROUND DOORS - FAB120311A,Complete,Fire Alarm 3 - 2F -SUW-FAB120311,,,,,,,,,,2025-03-21 08:00,2025-03-31 17:00,2025-03-21 08:00,2025-03-31 17:00,2025-11-20 17:00,2025-11-20 17:00,2025-11-25 08:00,2025-11-25 08:00,0,56,100
FAB120311A-04,INSTALL DOOR & HARDWARE - FAB120311A,Active,Fire Alarm 3 - 2F -SUW-FAB120311,,,,,,,,,,2025-06-18 08:00,2025-06-24 17:00,2025-06-18 08:00,,2025-11-21 08:00,2025-11-27 17:00,2025-11-25 08:00,2025-12-01 17:00,40,40,0
FAB120311A-05,PAINT & PROTECT DOORS & FRAMES -  FAB120311A,Not Started,Fire Alarm 3 - 2F -SUW-FAB120311,,,,,,,,,,2026-02-16 08:00,2026-02-19 17:00,,,2026-02-16 08:00,2026-02-19 17:00,2025-12-02 08:00,2025-12-05 17:00,32,32,0
FAB130111C-60,IMPACT - SECAI REMOVED FRAME - REINSTALL - FAB130111C,Complete,Vestibule 1 - 3F -SUW-FAB130111,,,,,,,,,,2025-07-25 08:00,2025-07-25 17:00,2025-07-25 08:00,2025-07-25 17:00,2025-11-20 17:00,2025-11-20 17:00,2025-11-24 10:00,2025-11-24 10:00,0,8,100
FAB120311A-03,INSTALL DOOR FRAMES - FAB120311A,Complete,Fire Alarm 3 - 2F -SUW-FAB120311,,,,,,,,,,2025-03-31 08:00,2025-03-31 17:00,2025-03-31 08:00,2025-03-31 17:00,2025-11-20 17:00,2025-11-20 17:00,2025-11-25 08:00,2025-11-25 08:00,0,8,100
ZX-2050,Complete Drywall & Inspect - Elevator #02 - 3F-FAB1-EL2,Complete,Elevator 2 - 3F -SUW-FAB1-EL02,,,,,,,,,,2025-10-22 08:00,2025-10-28 17:00,2025-10-22 08:00,2025-10-28 17:00,2025-11-20 17:00,2025-11-20 17:00,2025-12-05 17:00,2025-12-05 17:00,0,40,100
ZX-2060,Complete Fire Caulk & Inspect - Elevator #02 - 3F-FAB1-EL2,Complete,Elevator 2 - 3F -SUW-FAB1-EL02,,,,,,,,,,2025-10-28 08:00,2025-10-29 17:00,2025-10-28 08:00,2025-10-29 17:00,2025-11-20 17:00,2025-11-20 17:00,2025-12-05 17:00,2025-12-05 17:00,0,16,100
ZX-2070,Complete Control Joint & Inspect - Elevator #02 - 3F-FAB1-EL2,Complete,Elevator 2 - 3F -SUW-FAB1-EL02,,,,,,,,,,2025-10-27 08:00,2025-10-28 17:00,2025-10-27 08:00,2025-10-28 17:00,2025-11-20 17:00,2025-11-20 17:00,2025-12-05 17:00,2025-12-05 17:00,0,16,100
ZX-16380,IMPACT - SECAI SCAFFOLD NEED INSTALLED - Elevator #02 - 3F-FAB1-EL2,Complete,Elevator 2 - 3F -SUW-FAB1-EL02,,,,,,,,,,2025-05-05 08:00,2025-05-30 17:00,2025-05-05 08:00,2025-10-28 17:00,2025-11-20 17:00,2025-11-20 17:00,2025-11-18 10:00,2025-11-18 10:00,0,160,100
ZX-2110,SECAI TOOK OVER FOR ACCELERATION - Drywall & Inspect - Elevator #01 - 3F-FAB1-EL1,Complete,Elevator 1 - 3F -SUW-FAB1-EL01,,,,,,,,,,2025-09-09 08:00,2025-09-19 17:00,2025-09-19 08:00,2025-09-19 17:00,2025-11-20 17:00,2025-11-20 17:00,2025-12-05 17:00,2025-12-05 17:00,0,72,100
ZX-2120,SECAI TOOK OVER FOR ACCELERATION - Fire Caulk & Inspect - Elevator #01 - 3F-FAB1-EL1,Complete,Elevator 1 - 3F -SUW-FAB1-EL01,,,,,,,,,,2025-09-18 08:00,2025-09-19 17:00,2025-09-19 08:00,2025-09-19 17:00,2025-11-20 17:00,2025-11-20 17:00,2025-12-05 17:00,2025-12-05 17:00,0,16,100
ZX-2130,SECAI TOOK OVER FOR ACCELERATION - Control Joint & Inspect - Elevator #01 - 3F-FAB1-EL1,Complete,Elevator 1 - 3F -SUW-FAB1-EL01,,,,,,,,,,2025-09-18 08:00,2025-09-19 17:00,2025-09-19 08:00,2025-09-19 17:00,2025-11-20 17:00,2025-11-20 17:00,2025-12-05 17:00,2025-12-05 17:00,0,16,100
ZX-16480,IMPACT - Complete Drywall & Inspect - Elevator #01 - 3F-FAB1-EL1 ELEVATOR TEAM TOOK OVER,Complete,Elevator 1 - 3F -SUW-FAB1-EL01,,,,,,,,,,2025-05-05 08:00,2025-05-23 17:00,2025-05-05 08:00,2025-09-15 17:00,2025-11-20 17:00,2025-11-20 17:00,2025-12-05 17:00,2025-12-05 17:00,0,120,100
ZX-2140,Complete Drywall & Inspect - Elevator #01A - 3F-FAB1-EL1A,Complete,Elevator 1A - 3F -SUW-FAB1-EL01A,,,,,,,,,,2025-05-05 08:00,2025-05-22 17:00,2025-05-05 08:00,2025-06-13 16:00,2025-11-20 17:00,2025-11-20 17:00,2025-12-05 17:00,2025-12-05 17:00,0,112,100
ZX-2150,Complete Fire Caulk & Inspect - END Catch-up -Elevator #01A - 3F-FAB1-EL1A,Complete,Elevator 1A - 3F -SUW-FAB1-EL01A,,,,,,,,,,2025-07-18 08:00,2025-07-21 17:00,2025-07-18 08:00,2025-08-01 17:00,2025-11-20 17:00,2025-11-20 17:00,2025-12-05 17:00,2025-12-05 17:00,0,16,100
ZX-2160,Complete Control Joint & Inspect - Elevator #01A - 3F-FAB1-EL1A,Complete,Elevator 1A - 3F -SUW-FAB1-EL01A,,,,,,,,,,2025-06-25 08:00,2025-06-26 17:00,2025-06-11 08:00,2025-06-13 16:00,2025-11-20 17:00,2025-11-20 17:00,2025-12-05 17:00,2025-12-05 17:00,0,16,100
ZX-17310,IMPACT - SECAI SCAFFOLD - Drywall & Inspect - Elevator #01A - 3F-FAB1-EL1A,Complete,Elevator 1A - 3F -SUW-FAB1-EL01A,,,,,,,,,,2025-05-05 08:00,2025-05-22 17:00,2025-05-12 08:00,2025-05-28 14:00,2025-11-20 17:00,2025-11-20 17:00,2025-12-05 17:00,2025-12-05 17:00,0,112,100
ZX-2170,Complete Drywall & Inspect - Elevator #1B - 3F-FAB1-EL1B - MK MARLOW FRONTS ONLY,Complete,Elevator 1B - 3F -SUW-FAB1-EL01B,,,,,,,,,,2025-06-27 08:00,2025-07-16 17:00,2025-06-27 08:00,2025-07-28 17:00,2025-11-20 17:00,2025-11-20 17:00,2025-12-05 17:00,2025-12-05 17:00,0,112,100
ZX-2180,Complete Fire Caulk & Inspect - Elevator #01B - 3F-FAB1-EL1B - MK MARLOW FRONTS ONLY,Complete,Elevator 1B - 3F -SUW-FAB1-EL01B,,,,,,,,,,2025-07-25 08:00,2025-07-28 17:00,2025-07-25 08:00,2025-07-28 17:00,2025-11-20 17:00,2025-11-20 17:00,2025-12-05 17:00,2025-12-05 17:00,0,16,100
ZX-2190,Complete Control Joint & Inspect - Elevator #1B - 3F-FAB1-EL1B - MK MARLOW FRONTS ONLY,Complete,Elevator 1B - 3F -SUW-FAB1-EL01B,,,,,,,,,,2025-07-25 08:00,2025-07-28 17:00,2025-07-25 08:00,2025-07-28 17:00,2025-11-20 17:00,2025-11-20 17:00,2025-12-05 17:00,2025-12-05 17:00,0,16,100
ZX-16500,IMPACT - Complete Drywall & Inspect - Elevator #01B - 3F-FAB1-EL1B RFI PENDING,Complete,Elevator 1B - 3F -SUW-FAB1-EL01B,,,,,,,,,,2025-05-13 08:00,2025-05-26 17:00,2025-05-05 08:00,2025-06-10 16:00,2025-11-20 17:00,2025-11-20 17:00,2025-12-05 17:00,2025-12-05 17:00,0,80,100
ZX-2200,Complete Drywall & Inspect - VIP Tour - 3F-FAB134101 NON RATED WALLS,Complete,VIP Tour - 3F -FIZ-FAB134101,,,,,,,,,,2025-06-05 08:00,2025-06-24 17:00,2025-05-12 08:00,2025-08-28 08:00,2025-11-20 17:00,2025-11-20 17:00,2025-11-25 08:00,2025-11-25 08:00,0,112,100
ZX-2220,Complete Control Joint & Inspect - VIP Tour - 3F-FAB134101,Complete,VIP Tour - 3F -FIZ-FAB134101,,,,,,,,,,2025-06-17 08:00,2025-06-18 17:00,2025-06-17 08:00,2025-06-19 16:00,2025-11-20 17:00,2025-11-20 17:00,2025-11-25 08:00,2025-11-25 08:00,0,16,100
FAB134101A-03,INSTALL DOOR FRAMES - FAB134101A,Complete,VIP Tour - 3F -FIZ-FAB134101,,,,,,,,,,2025-10-21 08:00,2025-10-21 17:00,2025-10-21 08:00,2025-10-21 17:00,2025-11-20 17:00,2025-11-20 17:00,2025-11-25 10:00,2025-11-25 10:00,0,8,100
FAB134101A-04,INSTALL DOOR & HARDWARE - FAB134101A,Not Started,VIP Tour - 3F -FIZ-FAB134101,,,,,,,,,,2025-11-21 08:00,2025-11-27 17:00,,,2025-11-21 08:00,2025-11-27 17:00,2025-11-25 10:00,2025-12-02 10:00,40,40,0
FAB134101A-05,PAINT & PROTECT DOORS & FRAMES - FAB134101A,Not Started,VIP Tour - 3F -FIZ-FAB134101,,,,,,,,,,2026-02-16 08:00,2026-02-19 15:00,,,2026-02-16 08:00,2026-02-19 15:00,2025-12-02 10:00,2025-12-05 17:00,30,30,0
FAB134101D-01,IMPACT - INSTALL/REWORK DRYWALL FRAMING AROUND DOORS - FAB134101D,Complete,VIP Tour - 3F -FIZ-FAB134101,,,,,,,,,,2025-10-16 08:00,2025-10-17 17:00,2025-10-16 08:00,2025-10-17 17:00,2025-11-20 17:00,2025-11-20 17:00,2025-11-25 10:00,2025-11-25 10:00,0,16,100
FAB134101D-02,SECAI ROUGH IN/SECURITY - FAB134101D,Complete,VIP Tour - 3F -FIZ-FAB134101,,,,,,,,,,2025-10-20 08:00,2025-10-20 17:00,2025-10-20 08:00,2025-10-20 17:00,2025-11-20 17:00,2025-11-20 17:00,2025-11-25 10:00,2025-11-25 10:00,0,8,100
FAB134101D-03,INSTALL DOOR FRAMES - FAB134101D,Complete,VIP Tour - 3F -FIZ-FAB134101,,,,,,,,,,2025-10-20 08:00,2025-10-20 17:00,2025-10-20 08:00,2025-10-20 17:00,2025-11-20 17:00,2025-11-20 17:00,2025-11-25 10:00,2025-11-25 10:00,0,8,100
FAB134101D-04,INSTALL DOOR & HARDWARE - FAB134101D,Not Started,VIP Tour - 3F -FIZ-FAB134101,,,,,,,,,,2025-11-21 08:00,2025-11-27 17:00,,,2025-11-21 08:00,2025-11-27 17:00,2025-11-25 10:00,2025-12-02 10:00,40,40,0
FAB134101D-05,PAINT & PROTECT DOORS & FRAMES - FAB134101D,Not Started,VIP Tour - 3F -FIZ-FAB134101,,,,,,,,,,2026-02-16 08:00,2026-02-19 15:00,,,2026-02-16 08:00,2026-02-19 15:00,2025-12-02 10:00,2025-12-05 17:00,30,30,0
FAB134101A-11,IMPACT - INTERNAL - GOAL POST TO BE INSTALLED,Complete,VIP Tour - 3F -FIZ-FAB134101,,,,,,,,,,2025-06-16 08:00,2025-06-24 10:00,2025-06-16 08:00,2025-06-19 10:00,2025-11-20 17:00,2025-11-20 17:00,2025-11-25 08:00,2025-11-25 08:00,0,50,100
FAB134101A-12,IMPACT - INTERNAL - RAF PONY WALL DETAIL (RFI),Complete,VIP Tour - 3F -FIZ-FAB134101,,,,,,,,,,2025-06-20 08:00,2025-06-30 10:00,2025-04-23 08:00,2025-06-18 10:00,2025-11-20 17:00,2025-11-20 17:00,2025-11-25 10:00,2025-11-25 10:00,0,50,100
FAB134101A-22,IMPACT - PROCUREMENT DOOR FRAMES - FAB134101A,Active,VIP Tour - 3F -FIZ-FAB134101,,,,,,,,,,2025-07-03 10:00,2025-08-28 10:00,2025-06-19 10:00,,2025-11-21 08:00,2025-11-27 17:00,2025-12-01 08:00,2025-12-05 17:00,40,320,100
ZX-2230,Complete Drywall & Inspect - VIP Tour Vestibule - 3F-FAB134103 NON RATED WALLS,Complete,VIP Tour Vestibule - 3F -FIZ-FAB134103,,,,,,,,,,2025-06-19 08:00,2025-06-27 17:00,2025-05-12 08:00,2025-06-16 16:00,2025-11-20 17:00,2025-11-20 17:00,2025-11-25 10:00,2025-11-25 10:00,0,56,100
ZX-2250,Complete Control Joint & Inspect - VIP Tour Vestibule - 3F-FAB134103,Complete,VIP Tour Vestibule - 3F -FIZ-FAB134103,,,,,,,,,,2025-05-28 08:00,2025-05-29 17:00,2025-05-28 08:00,2025-05-29 16:00,2025-11-20 17:00,2025-11-20 17:00,2025-11-25 10:00,2025-11-25 10:00,0,16,100
FAB134103A-01,INSTALL DOOR FRAMES - FAB134103A,Complete,VIP Tour Vestibule - 3F -FIZ-FAB134103,,,,,,,,,,2025-10-24 08:00,2025-10-24 17:00,2025-10-24 08:00,2025-10-24 17:00,2025-11-20 17:00,2025-11-20 17:00,2025-11-25 10:00,2025-11-25 10:00,0,8,100
FAB134103A-04,INSTALL DOOR & HARDWARE - FAB134103A,Active,VIP Tour Vestibule - 3F -FIZ-FAB134103,,,,,,,,,,2025-11-18 08:00,2025-11-24 17:00,2025-11-18 08:00,,2025-11-21 08:00,2025-11-27 17:00,2025-11-25 10:00,2025-12-02 10:00,40,40,0
FAB134103A-05,PAINT & PROTECT DOORS & FRAMES - FAB134103A,Not Started,VIP Tour Vestibule - 3F -FIZ-FAB134103,,,,,,,,,,2026-02-16 08:00,2026-02-19 15:00,,,2026-02-16 08:00,2026-02-19 15:00,2025-12-02 10:00,2025-12-05 17:00,30,30,0
FAB134103C-03,INSTALL DOOR FRAMES - FAB134103C,Complete,VIP Tour Vestibule - 3F -FIZ-FAB134103,,,,,,,,,,2025-05-30 08:00,2025-06-09 17:00,2025-05-14 08:00,2025-05-16 16:00,2025-11-20 17:00,2025-11-20 17:00,2025-11-25 10:00,2025-11-25 10:00,0,56,100
FAB134103C-02,SECAI ROUGH IN/SECURITY - FAB134103C,Complete,VIP Tour Vestibule - 3F -FIZ-FAB134103,,,,,,,,,,2025-06-10 08:00,2025-06-10 17:00,2025-05-14 08:00,2025-05-16 16:00,2025-11-20 17:00,2025-11-20 17:00,2025-11-25 10:00,2025-11-25 10:00,0,8,100
FAB134103C-04,INSTALL DOOR & HARDWARE - FAB134103C,Not Started,VIP Tour Vestibule - 3F -FIZ-FAB134103,,,,,,,,,,2025-12-01 08:00,2025-12-05 17:00,,,2025-12-01 08:00,2025-12-05 17:00,2025-11-25 10:00,2025-12-02 10:00,40,40,0
FAB134103C-05,PAINT & PROTECT DOORS & FRAMES - FAB134103C,Not Started,VIP Tour Vestibule - 3F -FIZ-FAB134103,,,,,,,,,,2026-02-16 08:00,2026-02-19 15:00,,,2026-02-16 08:00,2026-02-19 15:00,2025-12-02 10:00,2025-12-05 17:00,30,30,0
FAB134103D-01,INSTALL DOOR FRAMES - FAB134103D,Complete,VIP Tour Vestibule - 3F -FIZ-FAB134103,,,,,,,,,,2025-06-26 08:00,2025-06-26 17:00,2025-06-27 08:00,2025-06-27 08:00,2025-11-20 17:00,2025-11-20 17:00,2025-11-25 10:00,2025-11-25 10:00,0,8,100
FAB134103D-02,IMAPCT - ACCESS CONSTRAINT - SECAI ROUGH IN/SECURITY - FAB134103D,Complete,VIP Tour Vestibule - 3F -FIZ-FAB134103,,,,,,,,,,2025-07-07 08:00,2025-07-07 17:00,2025-06-27 08:00,2025-06-27 16:00,2025-11-20 17:00,2025-11-20 17:00,2025-11-25 10:00,2025-11-25 10:00,0,8,100
FAB134103D-04,INSTALL DOOR & HARDWARE - FAB134103D,Active,VIP Tour Vestibule - 3F -FIZ-FAB134103,,,,,,,,,,2025-11-18 08:00,2025-11-24 17:00,2025-11-18 08:00,,2025-11-21 08:00,2025-11-27 17:00,2025-11-25 10:00,2025-12-02 10:00,40,40,0
FAB134103D-05,PAINT & PROTECT DOORS & FRAMES - FAB134103D,Not Started,VIP Tour Vestibule - 3F -FIZ-FAB134103,,,,,,,,,,2026-02-16 08:00,2026-02-19 15:00,,,2026-02-16 08:00,2026-02-19 15:00,2025-12-02 10:00,2025-12-05 17:00,30,30,0
FAB134103A-11,IMPACT - INTERNAL - RAF PONY WALL DETAIL (RFI),Complete,VIP Tour Vestibule - 3F -FIZ-FAB134103,,,,,,,,,,2025-06-06 08:00,2025-06-16 10:00,2025-05-27 15:00,2025-06-04 10:00,2025-11-20 17:00,2025-11-20 17:00,2025-11-25 10:00,2025-11-25 10:00,0,50,100
FAB134103A-21,PROCUREMENT - FRAME RE-ORDER - FAB134103A,Complete,VIP Tour Vestibule - 3F -FIZ-FAB134103,,,,,,,,,,2025-06-20 08:00,2025-08-14 17:00,2025-06-20 08:00,2025-10-20 17:00,2025-11-20 17:00,2025-11-20 17:00,2025-11-25 10:00,2025-11-25 10:00,0,320,100
FAB134103C-6,IMPACT - ACCESS FLOOR INSTALL BY SECAI - FAB134103C,Active,VIP Tour Vestibule - 3F -FIZ-FAB134103,,,,,,,,,,2025-06-13 08:00,2025-06-18 15:00,2025-05-19 08:00,,2025-11-21 08:00,2025-11-28 17:00,2025-11-17 10:00,2025-11-25 10:00,48,30,0
ZX-2260,Complete Drywall & Inspect - Vestibule @ F.4/1 - 3F-FAB134104,Complete,Vestibule @ F.4/1 - 3F -FIZ-FAB134104,,,,,,,,,,2025-09-01 08:00,2025-09-05 17:00,2025-09-01 08:00,2025-09-05 17:00,2025-11-20 17:00,2025-11-20 17:00,2025-11-25 08:00,2025-11-25 08:00,0,40,100
ZX-2270,Complete Fire Caulk & Inspect - Vestibule @ F.4/1 - 3F-FAB134104,Complete,Vestibule @ F.4/1 - 3F -FIZ-FAB134104,,,,,,,,,,2025-09-08 08:00,2025-09-09 17:00,2025-09-08 08:00,2025-09-09 17:00,2025-11-20 17:00,2025-11-20 17:00,2025-12-05 17:00,2025-12-05 17:00,0,16,100
ZX-2280,Complete Control Joint & Inspect - Vestibule @ F.4/1 - 3F-FAB134104,Complete,Vestibule @ F.4/1 - 3F -FIZ-FAB134104,,,,,,,,,,2025-09-04 08:00,2025-09-05 17:00,2025-09-04 08:00,2025-09-05 17:00,2025-11-20 17:00,2025-11-20 17:00,2025-11-25 08:00,2025-11-25 08:00,0,16,100
ZX-16360,IMPACT - PAINT BOOTH OBSTRUCTING WORK-Vestibule @ F.4/1 - 3F-FAB134104,Complete,Vestibule @ F.4/1 - 3F -FIZ-FAB134104,,,,,,,,,,2025-05-06 08:00,2025-05-12 17:00,2025-05-06 08:00,2025-06-20 17:00,2025-11-20 17:00,2025-11-20 17:00,2025-11-25 08:00,2025-11-25 08:00,0,40,100
FAB134104A-03,INSTALL DOOR FRAMES - FAB134104A,Complete,Vestibule @ F.4/1 - 3F -FIZ-FAB134104,,,,,,,,,,2025-10-22 08:00,2025-10-22 17:00,2025-10-22 08:00,2025-10-22 17:00,2025-11-20 17:00,2025-11-20 17:00,2025-11-25 08:00,2025-11-25 08:00,0,8,100
FAB134104A-04,INSTALL DOOR & HARDWARE - FAB134104A,Not Started,Vestibule @ F.4/1 - 3F -FIZ-FAB134104,,,,,,,,,,2025-11-21 08:00,2025-11-27 17:00,,,2025-11-21 08:00,2025-11-27 17:00,2025-11-25 08:00,2025-12-01 17:00,40,40,0
FAB134104A-05,PAINT & PROTECT DOORS & FRAMES -  FAB134104A,Not Started,Vestibule @ F.4/1 - 3F -FIZ-FAB134104,,,,,,,,,,2026-02-16 08:00,2026-02-19 17:00,,,2026-02-16 08:00,2026-02-19 17:00,2025-12-02 08:00,2025-12-05 17:00,32,32,0
ZX-2290,Complete Drywall & Inspect - Unassigned - 3F-FAB132102,Complete,Unassigned - 3F - FIZ-FAB134102,,,,,,,,,,2025-08-15 08:00,2025-08-25 17:00,2025-08-15 08:00,2025-09-05 17:00,2025-11-20 17:00,2025-11-20 17:00,2025-11-17 08:00,2025-11-17 08:00,0,56,100
ZX-2300,Complete Fire Caulk & Inspect - Unassigned - 3F-FAB132102,Complete,Unassigned - 3F - FIZ-FAB134102,,,,,,,,,,2025-09-08 08:00,2025-09-09 17:00,2025-09-08 08:00,2025-09-09 17:00,2025-11-20 17:00,2025-11-20 17:00,2025-12-05 17:00,2025-12-05 17:00,0,16,100
ZX-2310,Complete Control Joint & Inspect - Unassigned - 3F-FAB132102,Complete,Unassigned - 3F - FIZ-FAB134102,,,,,,,,,,2025-09-04 08:00,2025-09-05 17:00,2025-09-04 08:00,2025-09-05 17:00,2025-11-20 17:00,2025-11-20 17:00,2025-11-25 08:00,2025-11-25 08:00,0,16,100
ZX-16370,IMPACT - PAINT BOOTH OBSTRUCTING WORK-Unassigned - 3F-FAB134102,Complete,Unassigned - 3F - FIZ-FAB134102,,,,,,,,,,2025-05-06 08:00,2025-05-12 17:00,2025-05-06 08:00,2025-06-20 17:00,2025-11-20 17:00,2025-11-20 17:00,2025-11-17 08:00,2025-11-17 08:00,0,40,100
ZX-2320,Complete Drywall & Inspect - Smock Locker@A-D/1-2 - 3F-FAB134106,Complete,Smock Locker@A-D/1-2 - 3F -FIZ-FAB134106,,,,,,,,,,2025-08-12 08:00,2025-08-18 17:00,2025-08-12 08:00,2025-08-18 17:00,2025-11-20 17:00,2025-11-20 17:00,2025-11-25 10:00,2025-11-25 10:00,0,40,100
ZX-2330,Complete Fire Caulk & Inspect - Smock Locker@A-D/1-2 - 3F-FAB134106,Complete,Smock Locker@A-D/1-2 - 3F -FIZ-FAB134106,,,,,,,,,,2025-09-05 08:00,2025-09-08 17:00,2025-09-05 08:00,2025-09-08 17:00,2025-11-20 17:00,2025-11-20 17:00,2025-12-05 17:00,2025-12-05 17:00,0,16,100
ZX-16640,IMPACT SG PANELS TO BE REMOVED - Complete Drywall & Inspect - Smock Locker@A-D/1-2 - 3F-FAB134106,Complete,Smock Locker@A-D/1-2 - 3F -FIZ-FAB134106,,,,,,,,,,2025-05-05 08:00,2025-05-16 17:00,2025-05-05 08:00,2025-09-05 17:00,2025-11-20 17:00,2025-11-20 17:00,2025-11-25 10:00,2025-11-25 10:00,0,80,100
FAB136102A-03,INSTALL DOOR FRAMES - FAB136102A,Complete,Smock Locker@A-D/1-2 - 3F -FIZ-FAB134106,,,,,,,,,,2025-05-13 08:00,2025-05-13 17:00,2025-05-13 08:00,2025-05-13 17:00,2025-11-20 17:00,2025-11-20 17:00,2025-11-25 10:00,2025-11-25 10:00,0,8,100
FAB136102A-02,SECAI ROUGH IN/SECURITY - FAB136102A,Complete,Smock Locker@A-D/1-2 - 3F -FIZ-FAB134106,,,,,,,,,,2025-05-13 08:00,2025-05-13 17:00,2025-05-13 08:00,2025-05-13 17:00,2025-11-20 17:00,2025-11-20 17:00,2025-11-25 10:00,2025-11-25 10:00,0,8,100
FAB136102A-04,INSTALL DOOR & HARDWARE - FAB136102A,Not Started,Smock Locker@A-D/1-2 - 3F -FIZ-FAB134106,,,,,,,,,,2025-11-21 08:00,2025-11-27 17:00,,,2025-11-21 08:00,2025-11-27 17:00,2025-11-25 10:00,2025-12-02 10:00,40,40,0
FAB136102A-05,PAINT & PROTECT DOORS & FRAMES -  FAB136102A,Not Started,Smock Locker@A-D/1-2 - 3F -FIZ-FAB134106,,,,,,,,,,2026-02-16 08:00,2026-02-19 15:00,,,2026-02-16 08:00,2026-02-19 15:00,2025-12-02 10:00,2025-12-05 17:00,30,30,0
FAB136102B-00,SECAI SCP WALL FINISH - FAB136102B,Complete,Smock Locker@A-D/1-2 - 3F -FIZ-FAB134106,,,,,,,,,,2025-08-05 08:00,2025-08-05 17:00,2025-07-17 08:00,2025-08-05 17:00,2025-11-20 17:00,2025-11-20 17:00,2025-10-08 08:00,2025-10-08 08:00,0,8,100
FAB136102B-01,DOOR ASSEMBLY - FAB136102B,Complete,Smock Locker@A-D/1-2 - 3F -FIZ-FAB134106,,,,,,,,,,2025-08-06 08:00,2025-08-07 17:00,2025-08-06 08:00,2025-08-07 17:00,2025-11-20 17:00,2025-11-20 17:00,2025-11-18 08:00,2025-11-18 08:00,0,16,100
FAB136102B-02,DOOR PACKAGE INSTALL - FAB136102B,Complete,Smock Locker@A-D/1-2 - 3F -FIZ-FAB134106,,,,,,,,,,2025-08-06 08:00,2025-08-07 17:00,2025-08-06 08:00,2025-08-07 17:00,2025-11-20 17:00,2025-11-20 17:00,2025-12-05 17:00,2025-12-05 17:00,0,16,100
ZX-2410,Complete Drywall & Inspect - Duct Shaft - 3F-SUE-FAB136105,Complete,Duct Shaft - 3F -SUE-FAB136105,,,,,,,,,,2025-09-05 08:00,2025-09-11 17:00,2025-09-05 08:00,2025-09-11 17:00,2025-11-20 17:00,2025-11-20 17:00,2025-12-04 08:00,2025-12-04 08:00,0,40,100
ZX-2420,Complete Fire Caulk & Inspect - Duct Shaft - 3F-SUE-FAB136105,Complete,Duct Shaft - 3F -SUE-FAB136105,,,,,,,,,,2025-09-29 08:00,2025-09-30 17:00,2025-09-29 08:00,2025-09-30 17:00,2025-11-20 17:00,2025-11-20 17:00,2025-12-05 17:00,2025-12-05 17:00,0,16,100
ZX-2430,Complete Control Joint & Inspect - Duct Shaft - 3F-SUE-FAB136105,Not Started,Duct Shaft - 3F -SUE-FAB136105,,,,,,,,,,2025-12-05 08:00,2025-12-08 17:00,,,2025-12-05 08:00,2025-12-08 17:00,2025-12-04 08:00,2025-12-05 17:00,16,16,0
FAB136105A-01,IMPACT - INSTALL/REWORK DRYWALL FRAMING AROUND DOORS - FAB136105A,Complete,Duct Shaft - 3F -SUE-FAB136105,,,,,,,,,,2025-05-05 08:00,2025-05-06 17:00,2025-05-05 08:00,2025-05-06 17:00,2025-11-20 17:00,2025-11-20 17:00,2025-11-25 10:00,2025-11-25 10:00,0,16,100
FAB136105A-02,SECAI ROUGH IN/SECURITY - FAB136105A,Complete,Duct Shaft - 3F -SUE-FAB136105,,,,,,,,,,2025-05-05 08:00,2025-05-05 17:00,2025-05-05 08:00,2025-05-05 17:00,2025-11-20 17:00,2025-11-20 17:00,2025-11-25 10:00,2025-11-25 10:00,0,8,100
FAB136105A-03,INSTALL DOOR FRAMES - FAB136105A,Complete,Duct Shaft - 3F -SUE-FAB136105,,,,,,,,,,2025-08-18 13:00,2025-08-19 12:00,2025-05-05 00:00,2025-05-06 12:00,2025-11-20 17:00,2025-11-20 17:00,2025-11-25 10:00,2025-11-25 10:00,0,8,100
FAB136105A-04,INSTALL DOOR & HARDWARE - FAB136105A,Not Started,Duct Shaft - 3F -SUE-FAB136105,,,,,,,,,,2025-11-21 08:00,2025-11-27 17:00,,,2025-11-21 08:00,2025-11-27 17:00,2025-11-25 10:00,2025-12-02 10:00,40,40,0
FAB136105A-05,PAINT & PROTECT DOORS & FRAMES - FAB136105A,Not Started,Duct Shaft - 3F -SUE-FAB136105,,,,,,,,,,2026-02-16 08:00,2026-02-19 15:00,,,2026-02-16 08:00,2026-02-19 15:00,2025-12-02 10:00,2025-12-05 17:00,30,30,0
ZX-2380,Complete Drywall & Inspect - Fire Alarm - 3F-FAB136114,Complete,Fire Alarm 22 - 3F -SUE-FAB136114,,,,,,,,,,2024-12-09 08:00,2024-12-09 08:00,2024-12-09 08:00,2024-12-12 16:00,2025-11-20 17:00,2025-11-20 17:00,2025-11-24 10:00,2025-11-24 10:00,0,0,100
ZX-2390,Complete Fire Caulk & Inspect - Fire Alarm - 3F-FAB136114,Complete,Fire Alarm 22 - 3F -SUE-FAB136114,,,,,,,,,,2025-06-27 08:00,2025-06-30 17:00,2024-12-19 08:00,2024-12-20 16:00,2025-11-20 17:00,2025-11-20 17:00,2025-12-05 17:00,2025-12-05 17:00,0,16,100
ZX-2400,Complete Control Joint & Inspect - Fire Alarm - 3F-FAB136114,Complete,Fire Alarm 22 - 3F -SUE-FAB136114,,,,,,,,,,2025-06-27 08:00,2025-06-30 17:00,2024-12-16 08:00,2024-12-18 16:00,2025-11-20 17:00,2025-11-20 17:00,2025-11-24 10:00,2025-11-24 10:00,0,16,100
FAB136114A-03,INSTALL DOOR FRAMES - FAB136114A,Complete,Fire Alarm 22 - 3F -SUE-FAB136114,,,,,,,,,,2025-07-07 13:00,2025-07-08 12:00,2025-01-15 00:00,2025-01-16 12:00,2025-11-20 17:00,2025-11-20 17:00,2025-11-25 10:00,2025-11-25 10:00,0,8,100
FAB136114A-04,INSTALL DOOR & HARDWARE - FAB136114A,Active,Fire Alarm 22 - 3F -SUE-FAB136114,,,,,,,,,,2025-07-09 08:00,2025-07-15 17:00,2025-07-09 08:00,,2025-11-21 08:00,2025-11-27 17:00,2025-11-25 10:00,2025-12-02 10:00,40,40,0
FAB136114A-05,PAINT & PROTECT DOORS & FRAMES -  FAB136114A,Not Started,Fire Alarm 22 - 3F -SUE-FAB136114,,,,,,,,,,2026-02-16 08:00,2026-02-19 15:00,,,2026-02-16 08:00,2026-02-19 15:00,2025-12-02 10:00,2025-12-05 17:00,30,30,0
ZX-2500,SECAI TOOK OVER FOR ACCELERATION Drywall & Inspect - Electrical Rm - 3F-SUE-FAB136302,Complete,Electrical Rm - 3F -SUE-FAB136302,,,,,,,,,,2025-07-21 13:00,2025-08-06 12:00,2025-06-16 12:00,2025-11-05 08:00,2025-11-20 17:00,2025-11-20 17:00,2025-12-05 17:00,2025-12-05 17:00,0,96,100
ZX-2510,Complete Fire Caulk & Inspect - Electrical Rm - 3F-SUE-FAB136302,Complete,Electrical Rm - 3F -SUE-FAB136302,,,,,,,,,,2025-07-14 08:00,2025-07-18 17:00,2025-07-14 08:00,2025-10-03 17:00,2025-11-20 17:00,2025-11-20 17:00,2025-12-05 17:00,2025-12-05 17:00,0,40,100
ZX-2520,SECAI TOOK OVER FOR ACCELERATION Control Joint & Inspect - Electrical Rm - 3F-SUE-FAB136302,Complete,Electrical Rm - 3F -SUE-FAB136302,,,,,,,,,,2025-08-11 08:00,2025-08-15 17:00,2025-07-14 08:00,2025-11-05 17:00,2025-11-20 17:00,2025-11-20 17:00,2025-12-05 17:00,2025-12-05 17:00,0,40,100
FAB136302A-01,IMPACT - INSTALL/REWORK DRYWALL FRAMING AROUND DOORS - FAB136302A HANDED OVER TO SECAI ON 08/29,Complete,Electrical Rm - 3F -SUE-FAB136302,,,,,,,,,,2025-08-18 08:00,2025-08-26 17:00,2025-08-29 08:00,2025-08-29 17:00,2025-11-20 17:00,2025-11-20 17:00,2025-11-25 10:00,2025-11-25 10:00,0,56,100
FAB136302A-02,SECAI ROUGH IN/SECURITY - FAB136302A HANDED OVER TO SECAI ON 08/29,Complete,Electrical Rm - 3F -SUE-FAB136302,,,,,,,,,,2025-08-29 08:00,2025-08-29 17:00,2025-08-29 08:00,2025-08-29 17:00,2025-11-20 17:00,2025-11-20 17:00,2025-11-25 10:00,2025-11-25 10:00,0,8,100
FAB136302A-03,INSTALL DOOR FRAMES - FAB136302A,Complete,Electrical Rm - 3F -SUE-FAB136302,,,,,,,,,,2025-08-29 08:00,2025-08-29 17:00,2025-08-29 08:00,2025-11-14 17:00,2025-11-20 17:00,2025-11-20 17:00,2025-11-25 10:00,2025-11-25 10:00,0,8,100
FAB136302A-04,INSTALL DOOR & HARDWARE - FAB136302A,Active,Electrical Rm - 3F -SUE-FAB136302,,,,,,,,,,2025-11-17 08:00,2025-11-21 17:00,2025-11-17 08:00,,2025-11-21 08:00,2025-11-27 17:00,2025-11-25 10:00,2025-12-02 10:00,40,40,0
FAB136302A-05,PAINT & PROTECT DOORS & FRAMES - FAB136302A,Not Started,Electrical Rm - 3F -SUE-FAB136302,,,,,,,,,,2026-02-16 08:00,2026-02-19 15:00,,,2026-02-16 08:00,2026-02-19 15:00,2025-12-02 10:00,2025-12-05 17:00,30,30,0
FAB136302B-03,INSTALL DOOR FRAMES - FAB136302B,Not Started,Electrical Rm - 3F -SUE-FAB136302,,,,,,,,,,2025-12-05 08:00,2025-12-05 17:00,,,2025-12-05 08:00,2025-12-05 17:00,2025-11-25 10:00,2025-11-26 10:00,8,8,0
FAB136302B-04,INSTALL DOOR & HARDWARE - FAB136302B,Not Started,Electrical Rm - 3F -SUE-FAB136302,,,,,,,,,,2025-12-05 08:00,2025-12-11 17:00,,,2025-12-05 08:00,2025-12-11 17:00,2025-11-25 10:00,2025-12-02 10:00,40,40,0
FAB136302B-05,PAINT & PROTECT DOORS & FRAMES - FAB136302B,Not Started,Electrical Rm - 3F -SUE-FAB136302,,,,,,,,,,2026-02-16 08:00,2026-02-19 15:00,,,2026-02-16 08:00,2026-02-19 15:00,2025-12-02 10:00,2025-12-05 17:00,30,30,0
FAB136302C-01,IMPACT - INSTALL/REWORK DRYWALL FRAMING AROUND DOORS - FAB136302C HANDED OVER TO SECAI ON 08/29,Complete,Electrical Rm - 3F -SUE-FAB136302,,,,,,,,,,2025-08-28 08:00,2025-08-29 17:00,2025-08-29 08:00,2025-08-29 17:00,2025-11-20 17:00,2025-11-20 17:00,2025-11-17 10:00,2025-11-17 10:00,0,16,100
FAB136302C-02,SECAI ROUGH IN/SECURITY - FAB136302C HANDED OVER TO SECAI ON 08/29,Complete,Electrical Rm - 3F -SUE-FAB136302,,,,,,,,,,2025-08-29 08:00,2025-08-29 17:00,2025-08-29 08:00,2025-08-29 17:00,2025-11-20 17:00,2025-11-20 17:00,2025-11-17 10:00,2025-11-17 10:00,0,8,100
FAB136302C-03,INSTALL DOOR FRAME BY SECAI - FAB136302C HANDED OVER ON 08/29,Active,Electrical Rm - 3F -SUE-FAB136302,,,,,,,,,,2025-08-29 08:00,2025-08-29 17:00,2025-08-29 08:00,,2025-11-21 08:00,2025-11-28 17:00,2025-11-17 10:00,2025-11-25 10:00,48,8,0
FAB136302C-04,INSTALL DOOR & HARDWARE - FAB136302C,Not Started,Electrical Rm - 3F -SUE-FAB136302,,,,,,,,,,2025-12-01 08:00,2025-12-05 17:00,,,2025-12-01 08:00,2025-12-05 17:00,2025-11-25 10:00,2025-12-02 10:00,40,40,0
FAB136302C-05,PAINT & PROTECT DOORS & FRAMES - FAB136302C,Not Started,Electrical Rm - 3F -SUE-FAB136302,,,,,,,,,,2026-02-16 08:00,2026-02-19 15:00,,,2026-02-16 08:00,2026-02-19 15:00,2025-12-02 10:00,2025-12-05 17:00,30,30,0
FAB136302D-01,IMPACT - INSTALL/REWORK DRYWALL FRAMING AROUND DOORS - FAB136302D,Complete,Electrical Rm - 3F -SUE-FAB136302,,,,,,,,,,2025-01-17 08:00,2025-01-27 17:00,2025-01-17 08:00,2025-01-27 17:00,2025-11-20 17:00,2025-11-20 17:00,2025-11-25 10:00,2025-11-25 10:00,0,56,100
FAB136302D-02,SECAI ROUGH IN/SECURITY  - FAB136302D,Complete,Electrical Rm - 3F -SUE-FAB136302,,,,,,,,,,2025-01-27 08:00,2025-01-27 17:00,2025-01-27 08:00,2025-01-27 17:00,2025-11-20 17:00,2025-11-20 17:00,2025-11-25 10:00,2025-11-25 10:00,0,8,100
FAB136302D-03,INSTALL DOOR FRAMES - FAB136302D,Complete,Electrical Rm - 3F -SUE-FAB136302,,,,,,,,,,2025-08-18 08:00,2025-08-18 17:00,2025-01-27 00:00,2025-01-27 16:00,2025-11-20 17:00,2025-11-20 17:00,2025-11-25 10:00,2025-11-25 10:00,0,8,100
FAB136302D-04,INSTALL DOOR & HARDWARE - FAB136302D,Active,Electrical Rm - 3F -SUE-FAB136302,,,,,,,,,,2025-11-17 08:00,2025-11-21 17:00,2025-11-17 08:00,,2025-11-21 08:00,2025-11-27 17:00,2025-11-25 10:00,2025-12-02 10:00,40,40,0
FAB136302D-05,PAINT & PROTECT DOORS & FRAMES - FAB136302D,Not Started,Electrical Rm - 3F -SUE-FAB136302,,,,,,,,,,2026-02-16 08:00,2026-02-19 15:00,,,2026-02-16 08:00,2026-02-19 15:00,2025-12-02 10:00,2025-12-05 17:00,30,30,0
FAB136302E-01,IMPACT - INSTALL/REWORK DRYWALL FRAMING AROUND DOORS - FAB136302E,Complete,Electrical Rm - 3F -SUE-FAB136302,,,,,,,,,,2025-05-16 08:00,2025-05-26 17:00,2025-05-16 08:00,2025-05-21 17:00,2025-11-20 17:00,2025-11-20 17:00,2025-11-25 10:00,2025-11-25 10:00,0,56,100
FAB136302E-02,SECAI ROUGH IN/SECURITY - FAB136302E,Complete,Electrical Rm - 3F -SUE-FAB136302,,,,,,,,,,2025-05-21 08:00,2025-05-21 17:00,2025-05-21 08:00,2025-05-21 17:00,2025-11-20 17:00,2025-11-20 17:00,2025-11-25 10:00,2025-11-25 10:00,0,8,100
FAB136302E-03,INSTALL DOOR FRAMES - FAB136302E,Complete,Electrical Rm - 3F -SUE-FAB136302,,,,,,,,,,2025-08-18 08:00,2025-08-18 17:00,2025-05-21 00:00,2025-05-21 16:00,2025-11-20 17:00,2025-11-20 17:00,2025-11-25 10:00,2025-11-25 10:00,0,8,100
FAB136302E-04,INSTALL DOOR & HARDWARE - FAB136302E,Active,Electrical Rm - 3F -SUE-FAB136302,,,,,,,,,,2025-11-18 08:00,2025-11-24 17:00,2025-11-18 08:00,,2025-11-21 08:00,2025-11-27 17:00,2025-11-25 10:00,2025-12-02 10:00,40,40,0
FAB136302E-05,PAINT & PROTECT DOORS & FRAMES - FAB136302E,Not Started,Electrical Rm - 3F -SUE-FAB136302,,,,,,,,,,2026-02-16 08:00,2026-02-19 15:00,,,2026-02-16 08:00,2026-02-19 15:00,2025-12-02 10:00,2025-12-05 17:00,30,30,0
FAB136302F-01,IMPACT - INSTALL/REWORK DRYWALL FRAMING AROUND DOORS - FAB136302F,Complete,Electrical Rm - 3F -SUE-FAB136302,,,,,,,,,,2025-04-28 08:00,2025-05-06 17:00,2025-04-28 08:00,2025-05-06 17:00,2025-11-20 17:00,2025-11-20 17:00,2025-11-25 10:00,2025-11-25 10:00,0,56,100
FAB136302F-02,SECAI ROUGH IN/SECURITY - FAB136302F,Complete,Electrical Rm - 3F -SUE-FAB136302,,,,,,,,,,2025-05-06 08:00,2025-05-06 17:00,2025-05-06 08:00,2025-05-06 17:00,2025-11-20 17:00,2025-11-20 17:00,2025-11-25 10:00,2025-11-25 10:00,0,8,100
FAB136302F-03,INSTALL DOOR FRAMES - FAB136302F,Complete,Electrical Rm - 3F -SUE-FAB136302,,,,,,,,,,2025-08-18 08:00,2025-08-18 17:00,2025-05-06 00:00,2025-05-06 16:00,2025-11-20 17:00,2025-11-20 17:00,2025-11-25 10:00,2025-11-25 10:00,0,8,100
FAB136302F-04,INSTALL DOOR & HARDWARE - FAB136302F,Active,Electrical Rm - 3F -SUE-FAB136302,,,,,,,,,,2025-11-06 08:00,2025-11-12 17:00,2025-11-06 08:00,,2025-11-21 08:00,2025-11-27 17:00,2025-11-25 10:00,2025-12-02 10:00,40,40,0
FAB136302F-05,PAINT & PROTECT DOORS & FRAMES - FFAB136302F,Not Started,Electrical Rm - 3F -SUE-FAB136302,,,,,,,,,,2026-02-16 08:00,2026-02-19 15:00,,,2026-02-16 08:00,2026-02-19 15:00,2025-12-02 10:00,2025-12-05 17:00,30,30,0
FAB136302G-01,IMPACT - INSTALL/REWORK DRYWALL FRAMING AROUND DOORS - FAB136302G HANDED OVER TO SECAI ON 08/29,Complete,Electrical Rm - 3F -SUE-FAB136302,,,,,,,,,,2025-08-28 08:00,2025-08-29 17:00,2025-08-29 08:00,2025-08-29 17:00,2025-11-20 17:00,2025-11-20 17:00,2025-11-25 10:00,2025-11-25 10:00,0,16,100
FAB136302G-02,SECAI ROUGH IN/SECURITY - FAB136302G HANDED OVER TO SECAI ON 08/29,Complete,Electrical Rm - 3F -SUE-FAB136302,,,,,,,,,,2025-08-29 08:00,2025-08-29 17:00,2025-08-29 08:00,2025-08-29 17:00,2025-11-20 17:00,2025-11-20 17:00,2025-11-25 10:00,2025-11-25 10:00,0,8,100
FAB136302G-03,INSTALL DOOR FRAME BY SECAI- FAB136302G HANDED OVER TO SECAI ON 08/29,Complete,Electrical Rm - 3F -SUE-FAB136302,,,,,,,,,,2025-08-29 08:00,2025-08-29 17:00,2025-08-29 08:00,2025-11-04 17:00,2025-11-20 17:00,2025-11-20 17:00,2025-11-25 10:00,2025-11-25 10:00,0,8,100
FAB136302G-04,INSTALL DOOR & HARDWARE - FAB136302G,Active,Electrical Rm - 3F -SUE-FAB136302,,,,,,,,,,2025-11-06 08:00,2025-11-12 17:00,2025-11-06 08:00,,2025-11-21 08:00,2025-11-27 17:00,2025-11-25 10:00,2025-12-02 10:00,40,40,0
FAB136302G-05,PAINT & PROTECT DOORS & FRAMES - FAB136302G,Not Started,Electrical Rm - 3F -SUE-FAB136302,,,,,,,,,,2026-02-16 08:00,2026-02-19 15:00,,,2026-02-16 08:00,2026-02-19 15:00,2025-12-02 10:00,2025-12-05 17:00,30,30,0
FAB136302H-01,IMPACT - INSTALL/REWORK DRYWALL FRAMING AROUND DOORS - FAB136302H,Complete,Electrical Rm - 3F -SUE-FAB136302,,,,,,,,,,2025-01-16 08:00,2025-01-24 17:00,2025-01-16 08:00,2025-01-24 17:00,2025-11-20 17:00,2025-11-20 17:00,2025-11-25 10:00,2025-11-25 10:00,0,56,100
FAB136302H-02,SECAI ROUGH IN/SECURITY - FAB136302H,Complete,Electrical Rm - 3F -SUE-FAB136302,,,,,,,,,,2025-01-24 08:00,2025-01-24 17:00,2025-01-24 08:00,2025-01-24 17:00,2025-11-20 17:00,2025-11-20 17:00,2025-11-25 10:00,2025-11-25 10:00,0,8,100
FAB136302H-03,INSTALL DOOR FRAMES - FAB136302H,Complete,Electrical Rm - 3F -SUE-FAB136302,,,,,,,,,,2025-08-18 08:00,2025-08-18 17:00,2025-01-24 00:00,2025-01-24 16:00,2025-11-20 17:00,2025-11-20 17:00,2025-11-25 10:00,2025-11-25 10:00,0,8,100
FAB136302H-04,INSTALL DOOR & HARDWARE - FAB136302H,Active,Electrical Rm - 3F -SUE-FAB136302,,,,,,,,,,2025-11-07 08:00,2025-11-13 17:00,2025-11-07 08:00,,2025-11-21 08:00,2025-11-27 17:00,2025-11-25 10:00,2025-12-02 10:00,40,40,0
FAB136302H-05,PAINT & PROTECT DOORS & FRAMES - FAB136302H,Not Started,Electrical Rm - 3F -SUE-FAB136302,,,,,,,,,,2026-02-16 08:00,2026-02-19 15:00,,,2026-02-16 08:00,2026-02-19 15:00,2025-12-02 10:00,2025-12-05 17:00,30,30,0
FAB136302J-01,IMPACT - INSTALL/REWORK DRYWALL FRAMING AROUND DOORS - FAB136302J HANDED OVER TO SECAI ON 08/29,Complete,Electrical Rm - 3F -SUE-FAB136302,,,,,,,,,,2025-08-28 08:00,2025-08-29 17:00,2025-08-29 08:00,2025-08-29 17:00,2025-11-20 17:00,2025-11-20 17:00,2025-11-25 10:00,2025-11-25 10:00,0,16,100
FAB136302J-02,SECAI ROUGH IN/SECURITY - FAB136302J HANDED OVER TO SECAI ON 08/29,Complete,Electrical Rm - 3F -SUE-FAB136302,,,,,,,,,,2025-08-29 08:00,2025-08-29 17:00,2025-08-29 08:00,2025-08-29 17:00,2025-11-20 17:00,2025-11-20 17:00,2025-11-25 10:00,2025-11-25 10:00,0,8,100
FAB136302J-03,INSTALL DOOR FRAME BY SECAI - FAB136302J HANDED OVER ON 08/29,Complete,Electrical Rm - 3F -SUE-FAB136302,,,,,,,,,,2025-08-29 08:00,2025-08-29 17:00,2025-08-29 08:00,2025-11-03 17:00,2025-11-20 17:00,2025-11-20 17:00,2025-11-25 10:00,2025-11-25 10:00,0,8,100
FAB136302J-04,INSTALL DOOR & HARDWARE - FAB136302J,Active,Electrical Rm - 3F -SUE-FAB136302,,,,,,,,,,2025-11-04 08:00,2025-11-10 17:00,2025-11-04 08:00,,2025-11-21 08:00,2025-11-27 17:00,2025-11-25 10:00,2025-12-02 10:00,40,40,0
FAB136302J-05,PAINT & PROTECT DOORS & FRAMES - FAB136302J,Not Started,Electrical Rm - 3F -SUE-FAB136302,,,,,,,,,,2026-02-16 08:00,2026-02-19 15:00,,,2026-02-16 08:00,2026-02-19 15:00,2025-12-02 10:00,2025-12-05 17:00,30,30,0
FAB136302C-11,IMPACT - INTERNAL - UNALIGNED GOAL POST OPENING FAB136302C,Complete,Electrical Rm - 3F -SUE-FAB136302,,,,,,,,,,2025-06-20 08:00,2025-07-10 17:00,2025-06-20 08:00,2025-08-29 17:00,2025-11-20 17:00,2025-11-20 17:00,2025-11-17 10:00,2025-11-17 10:00,0,120,100
FAB136302G-11,IMPACT - INTERNAL - UNASSEMBLED TRANSOM FRAMES FAB136302G HANDED OVER TO SECAI ON 08/29,Complete,Electrical Rm - 3F -SUE-FAB136302,,,,,,,,,,2025-06-20 08:00,2025-07-10 17:00,2025-06-20 08:00,2025-08-29 17:00,2025-11-20 17:00,2025-11-20 17:00,2025-11-25 10:00,2025-11-25 10:00,0,120,100
FAB136302J-11,IMPACT - INTERNAL - UNASSEMBLED TRANSOM FRAMES FAB136302J HANDED OVER TO SECAI ON 08/29,Complete,Electrical Rm - 3F -SUE-FAB136302,,,,,,,,,,2025-06-20 08:00,2025-07-10 17:00,2025-06-20 08:00,2025-08-29 17:00,2025-11-20 17:00,2025-11-20 17:00,2025-11-25 10:00,2025-11-25 10:00,0,120,100
FAB136408A-03,INSTALL DOOR FRAMES - FAB136408A,Complete,Electrical Rm - 3F -SUE-FAB136302,,,,,,,,,,2025-07-03 08:00,2025-07-03 17:00,2025-07-03 08:00,2025-07-03 17:00,2025-11-20 17:00,2025-11-20 17:00,2025-11-25 10:00,2025-11-25 10:00,0,8,100
FAB136408A-04,INSTALL DOOR & HARDWARE - FAB136408A,Not Started,Electrical Rm - 3F -SUE-FAB136302,,,,,,,,,,2025-11-21 08:00,2025-11-27 17:00,,,2025-11-21 08:00,2025-11-27 17:00,2025-11-25 10:00,2025-12-02 10:00,40,40,0
FAB136408A-05,PAINT & PROTECT DOORS & FRAMES -  FAB136408A,Not Started,Electrical Rm - 3F -SUE-FAB136302,,,,,,,,,,2026-02-16 08:00,2026-02-19 15:00,,,2026-02-16 08:00,2026-02-19 15:00,2025-12-02 10:00,2025-12-05 17:00,30,30,0
ZX-2590,Complete Drywall & Inspect - Duct Shaft - 3F-SUE-FAB136301,Complete,Duct Shaft - 3F -SUE-FAB136301,,,,,,,,,,2025-09-26 08:00,2025-09-29 17:00,2025-09-26 08:00,2025-09-29 17:00,2025-11-20 17:00,2025-11-20 17:00,2025-12-05 17:00,2025-12-05 17:00,0,16,100
ZX-2600,Complete Fire Caulk & Inspect - Duct Shaft - 3F-SUE-FAB136301,Complete,Duct Shaft - 3F -SUE-FAB136301,,,,,,,,,,2025-09-29 08:00,2025-09-30 17:00,2025-09-29 08:00,2025-09-30 17:00,2025-11-20 17:00,2025-11-20 17:00,2025-12-05 17:00,2025-12-05 17:00,0,16,100
ZX-2950,Complete Drywall & Inspect - Duct Shaft - 3F-SUE-FAB136106,Complete,Duct Shaft - 3F -SUE-FAB136106,,,,,,,,,,2025-10-03 08:00,2025-10-06 17:00,2025-10-03 08:00,2025-10-06 17:00,2025-11-20 17:00,2025-11-20 17:00,2025-12-05 17:00,2025-12-05 17:00,0,16,100
ZX-2960,Complete Fire Caulk & Inspect - Duct Shaft - 3F-SUE-FAB136106,Complete,Duct Shaft - 3F -SUE-FAB136106,,,,,,,,,,2025-10-10 08:00,2025-10-13 17:00,2025-10-10 08:00,2025-10-13 17:00,2025-11-20 17:00,2025-11-20 17:00,2025-12-05 17:00,2025-12-05 17:00,0,16,100
ZX-2970,Complete Control Joint & Inspect - Duct Shaft - 3F-SUE-FAB136106,Complete,Duct Shaft - 3F -SUE-FAB136106,,,,,,,,,,2025-10-03 08:00,2025-10-06 17:00,2025-10-03 08:00,2025-10-06 17:00,2025-11-20 17:00,2025-11-20 17:00,2025-12-05 17:00,2025-12-05 17:00,0,16,100
FAB136106A-01,IMPACT - INSTALL/REWORK DRYWALL FRAMING AROUND DOORS - FAB136106A,Complete,Duct Shaft - 3F -SUE-FAB136106,,,,,,,,,,2025-01-14 08:00,2025-01-15 17:00,2025-01-14 08:00,2025-01-15 17:00,2025-11-20 17:00,2025-11-20 17:00,2025-11-25 10:00,2025-11-25 10:00,0,16,100
FAB136106A-02,SECAI ROUGH IN/SECURITY - FAB136106A,Complete,Duct Shaft - 3F -SUE-FAB136106,,,,,,,,,,2025-01-16 08:00,2025-01-16 17:00,2025-01-16 08:00,2025-01-16 17:00,2025-11-20 17:00,2025-11-20 17:00,2025-11-25 10:00,2025-11-25 10:00,0,8,100
FAB136106A-03,INSTALL DOOR FRAMES - FAB136106A,Complete,Duct Shaft - 3F -SUE-FAB136106,,,,,,,,,,2025-07-09 13:00,2025-07-10 12:00,2025-01-16 00:00,2025-01-17 12:00,2025-11-20 17:00,2025-11-20 17:00,2025-11-25 10:00,2025-11-25 10:00,0,8,100
FAB136106A-04,INSTALL DOOR & HARDWARE - FAB136106A,Active,Duct Shaft - 3F -SUE-FAB136106,,,,,,,,,,2025-07-09 08:00,2025-07-15 17:00,2025-07-09 08:00,,2025-11-21 08:00,2025-11-27 17:00,2025-11-25 10:00,2025-12-02 10:00,40,40,0
FAB136106A-05,PAINT & PROTECT DOORS & FRAMES - FAB136106A,Not Started,Duct Shaft - 3F -SUE-FAB136106,,,,,,,,,,2026-02-16 08:00,2026-02-19 15:00,,,2026-02-16 08:00,2026-02-19 15:00,2025-12-02 10:00,2025-12-05 17:00,30,30,0
ZX-18810,IMPACT SECAI MEP SCAFFOLD IN THE AREA - Duct Shaft - 3F-SUE-FAB136106,Active,Duct Shaft - 3F -SUE-FAB136106,,,,,,,,,,2025-07-16 08:00,2025-07-24 17:00,2025-06-19 08:00,,2025-11-21 08:00,2025-11-27 17:00,2025-12-01 08:00,2025-12-05 17:00,40,56,0
ZX-2650,Complete Drywall & Inspect - Battery Rm1 - 3F-SUE-FAB136202,Complete,Battery Rm 1 - 3F -SUE-FAB136202,,,,,,,,,,2025-06-26 08:00,2025-07-09 17:00,2025-06-16 08:00,2025-09-08 17:00,2025-11-20 17:00,2025-11-20 17:00,2025-11-25 10:00,2025-11-25 10:00,0,80,100
ZX-2660,Complete Fire Caulk & Inspect - Battery Rm #01 - 3F-SUE-FAB136202,Complete,Battery Rm 1 - 3F -SUE-FAB136202,,,,,,,,,,2025-07-14 08:00,2025-07-29 17:00,2025-07-14 08:00,2025-08-28 17:00,2025-11-20 17:00,2025-11-20 17:00,2025-12-05 17:00,2025-12-05 17:00,0,96,100
ZX-2670,Complete Control Joint & Inspect - Battery Rm #01 - 3F-SUE-FAB136202,Complete,Battery Rm 1 - 3F -SUE-FAB136202,,,,,,,,,,2025-07-14 08:00,2025-07-15 17:00,2025-07-14 08:00,2025-09-08 17:00,2025-11-20 17:00,2025-11-20 17:00,2025-11-25 10:00,2025-11-25 10:00,0,16,100
ZX-2740,Complete Drywall & Inspect - Duct Shaft - 3F-SUE-FAB136201,Not Started,Duct Shaft - 3F -SUE-FAB136201,,,,,,,,,,2025-12-05 08:00,2025-12-08 17:00,,,2025-12-05 08:00,2025-12-08 17:00,2025-12-02 08:00,2025-12-03 17:00,16,16,0
ZX-2750,Complete Fire Caulk & Inspect - Duct Shaft - 3F-SUE-FAB136201,Not Started,Duct Shaft - 3F -SUE-FAB136201,,,,,,,,,,2025-12-09 08:00,2025-12-10 17:00,,,2025-12-09 08:00,2025-12-10 17:00,2025-12-04 08:00,2025-12-05 17:00,16,16,0
ZX-2830,Complete Drywall & Inspect - Smock Locker @D-F/1-3 - 3F-FAB134106,Complete,Smock Locker @D-F/1-3 - 3F -FIZ-FAB134106,,,,,,,,,,2025-08-12 08:00,2025-08-18 17:00,2025-08-12 08:00,2025-08-18 17:00,2025-11-20 17:00,2025-11-20 17:00,2025-11-28 08:00,2025-11-28 08:00,0,40,100
ZX-2840,Complete Fire Caulk & Inspect - Smock Locker @D-F/1-3 - 3F-FAB134106,Complete,Smock Locker @D-F/1-3 - 3F -FIZ-FAB134106,,,,,,,,,,2025-09-05 08:00,2025-09-08 17:00,2025-09-05 08:00,2025-09-08 17:00,2025-11-20 17:00,2025-11-20 17:00,2025-12-05 17:00,2025-12-05 17:00,0,16,100
ZX-16630,IMPACT SG PANELS TO BE REMOVED - Complete Drywall & Inspect - Smock Locker @D-F/1-3 - 3F-FAB134106,Complete,Smock Locker @D-F/1-3 - 3F -FIZ-FAB134106,,,,,,,,,,2025-05-05 08:00,2025-05-16 17:00,2025-05-05 08:00,2025-09-05 17:00,2025-11-20 17:00,2025-11-20 17:00,2025-11-28 08:00,2025-11-28 08:00,0,80,100
FAB134106A-02,SECAI ROUGH IN/SECURITY - FAB134106A,Complete,Smock Locker @D-F/1-3 - 3F -FIZ-FAB134106,,,,,,,,,,2025-04-30 08:00,2025-04-30 17:00,2025-04-30 08:00,2025-04-30 17:00,2025-11-20 17:00,2025-11-20 17:00,2025-11-28 08:00,2025-11-28 08:00,0,8,100
FAB134106A-03,INSTALL DOOR FRAMES - FAB134106A,Complete,Smock Locker @D-F/1-3 - 3F -FIZ-FAB134106,,,,,,,,,,2025-07-17 13:00,2025-07-18 12:00,2025-04-30 00:00,2025-04-30 16:00,2025-11-20 17:00,2025-11-20 17:00,2025-11-28 08:00,2025-11-28 08:00,0,8,100
FAB134106A-04,INSTALL DOOR & HARDWARE - FAB134106A,Active,Smock Locker @D-F/1-3 - 3F -FIZ-FAB134106,,,,,,,,,,2025-08-15 08:00,2025-08-21 17:00,2025-08-15 08:00,,2025-11-21 08:00,2025-11-27 17:00,2025-11-28 08:00,2025-12-04 17:00,40,40,0
FAB134106A-05,PAINT & PROTECT DOORS & FRAMES -  FAB134106A,Not Started,Smock Locker @D-F/1-3 - 3F -FIZ-FAB134106,,,,,,,,,,2026-02-16 08:00,2026-02-16 17:00,,,2026-02-16 08:00,2026-02-16 17:00,2025-12-05 08:00,2025-12-05 17:00,8,8,0
FAB134106C-00,SECAI SCP WALL FINISH - FAB134106C,Active,Smock Locker @D-F/1-3 - 3F -FIZ-FAB134106,,,,,,,,,,2025-07-21 08:00,2025-07-21 17:00,2025-07-21 08:00,,2025-11-25 08:00,2025-12-02 17:00,2025-11-10 08:00,2025-11-17 17:00,48,8,0
FAB134106C-01,DOOR ASSEMBLY - FAB134106C,Not Started,Smock Locker @D-F/1-3 - 3F -FIZ-FAB134106,,,,,,,,,,2025-12-03 08:00,2025-12-04 17:00,,,2025-12-03 08:00,2025-12-04 17:00,2025-11-18 08:00,2025-11-19 17:00,16,16,0
FAB134106C-02,DOOR PACKAGE INSTALL - FAB134106C,Not Started,Smock Locker @D-F/1-3 - 3F -FIZ-FAB134106,,,,,,,,,,2025-12-03 08:00,2025-12-04 17:00,,,2025-12-03 08:00,2025-12-04 17:00,2025-12-04 08:00,2025-12-05 17:00,16,16,0
FAB134106B-00,SHOP DRAWINGS (RFI 9565) - PATRIOT - FAB134106B,Complete,Smock Locker @D-F/1-3 - 3F -FIZ-FAB134106,,INTERIOR STAIRS,L3 / Waffle Slab Level,,,,,,,2025-07-03 08:00,2025-07-21 12:00,2025-07-03 07:00,2025-09-11 17:00,2025-11-20 17:00,2025-11-20 17:00,2025-11-06 08:00,2025-11-06 08:00,0,100,100
FAB134106B-01,GOAL POST SHOP DRAWINGS APPROVAL - JACOBS/SECAI - FAB134106B - E/1,Complete,Smock Locker @D-F/1-3 - 3F -FIZ-FAB134106,,INTERIOR STAIRS,L3 / Waffle Slab Level,,,,,,,2025-09-11 08:00,2025-09-17 17:00,2025-09-11 08:00,2025-10-17 17:00,2025-11-20 17:00,2025-11-20 17:00,2025-11-06 08:00,2025-11-06 08:00,0,40,100
FAB134106B-02,HEADER/GOAL POST FABRICATION - PATRIOT - FAB134106B - E/1,Complete,Smock Locker @D-F/1-3 - 3F -FIZ-FAB134106,,INTERIOR STAIRS,L3 / Waffle Slab Level,,,,,,,2025-10-20 08:00,2025-10-22 17:00,2025-10-20 08:00,2025-10-23 17:00,2025-11-20 17:00,2025-11-20 17:00,2025-11-06 08:00,2025-11-06 08:00,0,24,100
FAB134106B-04,HEADER/GOAL POST INSTALL - PATRIOT - FAB134106B - E/1,Complete,Smock Locker @D-F/1-3 - 3F -FIZ-FAB134106,,INTERIOR STAIRS,L3 / Waffle Slab Level,,,,,,,2025-10-24 08:00,2025-10-24 17:00,2025-10-24 08:00,2025-10-24 17:00,2025-11-20 17:00,2025-11-20 17:00,2025-11-06 08:00,2025-11-06 08:00,0,8,100
FAB134106B-07,DOOR INSTALL - FAB134106B (OHC),Not Started,Smock Locker @D-F/1-3 - 3F -FIZ-FAB134106,,,,,,,,,,2025-11-21 08:00,2025-11-24 17:00,,,2025-11-21 08:00,2025-11-24 17:00,2025-11-06 08:00,2025-11-07 17:00,16,16,0
FAB134106B-50,IMPACT - SGP PANELS TO BE REMOVED- FAB134106B - E/1,Complete,Smock Locker @D-F/1-3 - 3F -FIZ-FAB134106,,INTERIOR STAIRS,L3 / Waffle Slab Level,,,,,,,2025-08-25 08:00,2025-08-29 17:00,2025-08-25 08:00,2025-10-20 17:00,2025-11-20 17:00,2025-11-20 17:00,2025-11-06 08:00,2025-11-06 08:00,0,40,100
ZX-2920,Complete Drywall & Inspect - Fire Alarm 20 - 3F-FAB136308,Complete,Fire Alarm 20 - 3F -SUE-FAB136308,,,,,,,,,,2025-06-26 08:00,2025-06-26 17:00,2024-09-16 08:00,2024-09-20 16:00,2025-11-20 17:00,2025-11-20 17:00,2025-11-17 10:00,2025-11-17 10:00,0,8,100
ZX-2930,Complete Fire Caulk & Inspect - Fire Alarm 20 - 3F-FAB136308,Complete,Fire Alarm 20 - 3F -SUE-FAB136308,,,,,,,,,,2025-07-18 08:00,2025-07-21 17:00,2024-09-27 08:00,2024-09-30 16:00,2025-11-20 17:00,2025-11-20 17:00,2025-12-05 17:00,2025-12-05 17:00,0,16,100
ZX-2940,Complete Control Joint & Inspect - Fire Alarm 20 - 3F-FAB136308,Complete,Fire Alarm 20 - 3F -SUE-FAB136308,,,,,,,,,,2025-06-27 08:00,2025-06-30 17:00,2024-09-23 08:00,2024-09-27 16:00,2025-11-20 17:00,2025-11-20 17:00,2025-11-17 10:00,2025-11-17 10:00,0,16,100
FAB136308A-01,IMPACT - INSTALL/REWORK DRYWALL FRAMING AROUND DOORS - FAB136308A,Complete,Fire Alarm 20 - 3F -SUE-FAB136308,,,,,,,,,,2025-01-17 08:00,2025-01-27 17:00,2025-01-17 08:00,2025-01-27 17:00,2025-11-20 17:00,2025-11-20 17:00,2025-11-25 10:00,2025-11-25 10:00,0,56,100
FAB136308A-02,SECAI ROUGH IN/SECURITY - FAB136308A,Complete,Fire Alarm 20 - 3F -SUE-FAB136308,,,,,,,,,,2025-01-27 08:00,2025-01-27 17:00,2025-01-27 08:00,2025-01-27 17:00,2025-11-20 17:00,2025-11-20 17:00,2025-11-25 10:00,2025-11-25 10:00,0,8,100
FAB136308A-03,INSTALL DOOR FRAMES - FAB136308A,Complete,Fire Alarm 20 - 3F -SUE-FAB136308,,,,,,,,,,2025-07-25 08:00,2025-07-25 17:00,2025-01-27 00:00,2025-01-27 16:00,2025-11-20 17:00,2025-11-20 17:00,2025-11-25 10:00,2025-11-25 10:00,0,8,100
FAB136308A-04,INSTALL DOOR & HARDWARE - FAB136308A,Not Started,Fire Alarm 20 - 3F -SUE-FAB136308,,,,,,,,,,2025-11-21 08:00,2025-11-27 17:00,,,2025-11-21 08:00,2025-11-27 17:00,2025-11-25 10:00,2025-12-02 10:00,40,40,0
FAB136308A-05,PAINT & PROTECT DOORS & FRAMES - FAB136308A,Not Started,Fire Alarm 20 - 3F -SUE-FAB136308,,,,,,,,,,2026-02-16 08:00,2026-02-19 15:00,,,2026-02-16 08:00,2026-02-19 15:00,2025-12-02 10:00,2025-12-05 17:00,30,30,0
ZX-2680,Complete Drywall & Inspect - IT Security 22 - 3F-FAB136112,Complete,IT Security 22 - 3F -SUE-FAB136112,,,,,,,,,,2025-09-11 08:00,2025-09-11 08:00,2025-09-11 08:00,2025-09-11 08:00,2025-11-20 17:00,2025-11-20 17:00,2025-11-24 10:00,2025-11-24 10:00,0,0,100
ZX-2690,Complete Fire Caulk & Inspect - IT Security 22 - 3F-FAB136112,Complete,IT Security 22 - 3F -SUE-FAB136112,,,,,,,,,,2025-09-29 08:00,2025-09-29 08:00,2025-09-29 08:00,2025-09-29 08:00,2025-11-20 17:00,2025-11-20 17:00,2025-12-05 17:00,2025-12-05 17:00,0,0,100
ZX-2700,Complete Control Joint & Inspect - IT Security 22 - 3F-FAB136112,Complete,IT Security 22 - 3F -SUE-FAB136112,,,,,,,,,,2025-10-06 08:00,2025-10-07 17:00,2025-10-06 08:00,2025-10-07 17:00,2025-11-20 17:00,2025-11-20 17:00,2025-11-24 10:00,2025-11-24 10:00,0,16,100
TR-FAB136112A-03,INSTALL DOOR FRAMES - TR - FAB136112A,Complete,IT Security 22 - 3F -SUE-FAB136112,,,,,,,,,,2025-08-14 08:00,2025-08-22 17:00,2025-07-18 08:00,2025-07-18 17:00,2025-11-20 17:00,2025-11-20 17:00,2025-11-25 10:00,2025-11-25 10:00,0,56,100
TR-FAB136112A-04,INSTALL DOOR & HARDWARE - TR - FAB136112A,Not Started,IT Security 22 - 3F -SUE-FAB136112,,,,,,,,,,2025-11-21 08:00,2025-11-27 17:00,,,2025-11-21 08:00,2025-11-27 17:00,2025-11-25 10:00,2025-12-02 10:00,40,40,0
TR-FAB136112A-05,PAINT & PROTECT DOORS & FRAMES -  TR - FAB136112A,Not Started,IT Security 22 - 3F -SUE-FAB136112,,,,,,,,,,2026-02-16 08:00,2026-02-19 15:00,,,2026-02-16 08:00,2026-02-19 15:00,2025-12-02 10:00,2025-12-05 17:00,30,30,0
TR-FAB136112A-11,IMPACT - PROCUREMENT - Reordered doors (Wall Thickness and Door Swing Design Changes),Complete,IT Security 22 - 3F -SUE-FAB136112,,,,,,,,,,2025-06-20 08:00,2025-08-14 17:00,2025-06-20 08:00,2025-07-14 17:00,2025-11-20 17:00,2025-11-20 17:00,2025-11-25 10:00,2025-11-25 10:00,0,320,100
ZX-3070,Complete Drywall & Inspect - Electrical RM - 3F-SUW-FAB130402,Complete,Electrical Rm - 3F -SUW-FAB130402,,,,,,,,,,2025-07-25 08:00,2025-08-07 17:00,2025-06-16 08:00,2025-09-29 08:00,2025-11-20 17:00,2025-11-20 17:00,2025-11-25 10:00,2025-11-25 10:00,0,80,100
ZX-3080,Complete Fire Caulk & Inspect - Electrical RM - 3F-SUW-FAB130402,Complete,Electrical Rm - 3F -SUW-FAB130402,,,,,,,,,,2025-07-14 08:00,2025-07-15 17:00,2025-07-14 08:00,2025-11-06 17:00,2025-11-20 17:00,2025-11-20 17:00,2025-12-05 17:00,2025-12-05 17:00,0,16,100
ZX-3090,Complete Control Joint & Inspect - Electrical RM - 3F-SUW-FAB130402,Complete,Electrical Rm - 3F -SUW-FAB130402,,,,,,,,,,2025-08-22 08:00,2025-08-25 17:00,2025-07-14 08:00,2025-11-06 17:00,2025-11-20 17:00,2025-11-20 17:00,2025-12-05 17:00,2025-12-05 17:00,0,16,100
FAB130402A-03,INSTALL DOOR FRAMES - FAB130402A,Complete,Electrical Rm - 3F -SUW-FAB130402,,,,,,,,,,2025-07-28 13:00,2025-07-29 12:00,2025-02-13 00:00,2025-02-13 12:00,2025-11-20 17:00,2025-11-20 17:00,2025-11-25 10:00,2025-11-25 10:00,0,8,100
FAB130402A-04,INSTALL DOOR & HARDWARE - FAB130402A,Active,Electrical Rm - 3F -SUW-FAB130402,,,,,,,,,,2025-11-13 08:00,2025-11-19 17:00,2025-11-13 08:00,,2025-11-21 08:00,2025-11-27 17:00,2025-11-25 10:00,2025-12-02 10:00,40,40,0
FAB130402A-05,PAINT & PROTECT DOORS & FRAMES -  FAB130402A,Not Started,Electrical Rm - 3F -SUW-FAB130402,,,,,,,,,,2026-02-16 08:00,2026-02-19 15:00,,,2026-02-16 08:00,2026-02-19 15:00,2025-12-02 10:00,2025-12-05 17:00,30,30,0
FAB130402B-01,IMPACT - INSTALL/REWORK DRYWALL FRAMING AROUND DOORS - FAB130402B,Complete,Electrical Rm - 3F -SUW-FAB130402,,,,,,,,,,2025-04-30 08:00,2025-05-01 17:00,2025-04-30 08:00,2025-05-01 17:00,2025-11-20 17:00,2025-11-20 17:00,2025-11-25 10:00,2025-11-25 10:00,0,16,100
FAB130402B-02,SECAI ROUGH IN/SECURITY - FAB130402B,Complete,Electrical Rm - 3F -SUW-FAB130402,,,,,,,,,,2025-05-01 08:00,2025-05-01 17:00,2025-05-01 08:00,2025-05-01 17:00,2025-11-20 17:00,2025-11-20 17:00,2025-11-25 10:00,2025-11-25 10:00,0,8,100
FAB130402B-03,INSTALL DOOR FRAMES - FAB130402B,Complete,Electrical Rm - 3F -SUW-FAB130402,,,,,,,,,,2025-05-01 08:00,2025-05-01 17:00,2025-05-01 08:00,2025-05-01 17:00,2025-11-20 17:00,2025-11-20 17:00,2025-11-25 10:00,2025-11-25 10:00,0,8,100
FAB130402B-04,INSTALL DOOR & HARDWARE - FAB130402B,Not Started,Electrical Rm - 3F -SUW-FAB130402,,,,,,,,,,2025-11-28 08:00,2025-12-04 17:00,,,2025-11-28 08:00,2025-12-04 17:00,2025-11-25 10:00,2025-12-02 10:00,40,40,0
FAB130402B-05,PAINT & PROTECT DOORS & FRAMES -  FAB130402B,Not Started,Electrical Rm - 3F -SUW-FAB130402,,,,,,,,,,2026-02-16 08:00,2026-02-19 15:00,,,2026-02-16 08:00,2026-02-19 15:00,2025-12-02 10:00,2025-12-05 17:00,30,30,0
FAB130402C-03,INSTALL DOOR FRAMES - FAB130402C,Complete,Electrical Rm - 3F -SUW-FAB130402,,,,,,,,,,2025-07-28 13:00,2025-07-29 12:00,2025-01-22 00:00,2025-01-22 12:00,2025-11-20 17:00,2025-11-20 17:00,2025-11-24 08:00,2025-11-24 08:00,0,8,100
FAB130402C-04,INSTALL DOOR & HARDWARE - FAB130402C,Not Started,Electrical Rm - 3F -SUW-FAB130402,,,,,,,,,,2025-11-21 08:00,2025-11-27 17:00,,,2025-11-21 08:00,2025-11-27 17:00,2025-11-25 10:00,2025-12-02 10:00,40,40,0
FAB130402C-05,PAINT & PROTECT DOORS & FRAMES -  FAB130402C,Not Started,Electrical Rm - 3F -SUW-FAB130402,,,,,,,,,,2026-02-16 08:00,2026-02-19 15:00,,,2026-02-16 08:00,2026-02-19 15:00,2025-12-02 10:00,2025-12-05 17:00,30,30,0
FAB130402D-02,IMPACT - PATRIOT OHC SHOP DWG MODIFY - FAB130402D,Not Started,Electrical Rm - 3F -SUW-FAB130402,,,,,,,,,,2025-11-21 08:00,2025-12-11 17:00,,,2025-11-21 08:00,2025-12-11 17:00,2025-11-04 10:00,2025-11-25 10:00,120,120,0
FAB130402D-03,INSTALL DOOR FRAMES - FAB130402D,Not Started,Electrical Rm - 3F -SUW-FAB130402,,,,,,,,,,2025-12-12 08:00,2025-12-12 17:00,,,2025-12-12 08:00,2025-12-12 17:00,2025-11-25 10:00,2025-11-26 10:00,8,8,0
FAB130402D-04,INSTALL DOOR & HARDWARE - FAB130402D,Not Started,Electrical Rm - 3F -SUW-FAB130402,,,,,,,,,,2025-12-12 08:00,2025-12-18 17:00,,,2025-12-12 08:00,2025-12-18 17:00,2025-11-25 10:00,2025-12-02 10:00,40,40,0
FAB130402D-05,PAINT & PROTECT DOORS & FRAMES -  FAB130402D,Not Started,Electrical Rm - 3F -SUW-FAB130402,,,,,,,,,,2026-02-16 08:00,2026-02-19 15:00,,,2026-02-16 08:00,2026-02-19 15:00,2025-12-02 10:00,2025-12-05 17:00,30,30,0
FAB130402D-11,IMPACT - INTERNAL - UNASSEMBLED TRANSOM FRAMES,Active,Electrical Rm - 3F -SUW-FAB130402,,,,,,,,,,2025-06-20 08:00,2025-07-10 17:00,2025-06-20 08:00,,2025-11-21 08:00,2025-11-28 17:00,2025-11-04 10:00,2025-11-12 10:00,48,120,0
FAB1-ST50D-03,INSTALL DOOR FRAMES - FAB1-ST50D,Complete,Electrical Rm - 3F -SUW-FAB130402,,,,,,,,,,2025-09-16 08:00,2025-09-16 17:00,2025-09-16 08:00,2025-09-16 17:00,2025-11-20 17:00,2025-11-20 17:00,2025-11-25 10:00,2025-11-25 10:00,0,8,100
FAB1-ST50D-04,INSTALL DOOR & HARDWARE - FAB1-ST50D,Active,Electrical Rm - 3F -SUW-FAB130402,,,,,,,,,,2025-10-02 08:00,2025-10-08 17:00,2025-10-02 08:00,,2025-11-21 08:00,2025-11-27 17:00,2025-11-25 10:00,2025-12-02 10:00,40,40,0
FAB1-ST50D-05,PAINT & PROTECT DOORS & FRAMES - FAB1-ST50D,Not Started,Electrical Rm - 3F -SUW-FAB130402,,,,,,,,,,2026-02-16 08:00,2026-02-19 15:00,,,2026-02-16 08:00,2026-02-19 15:00,2025-12-02 10:00,2025-12-05 17:00,30,30,0
FAB1-ST50D-50,IMPACT - PROCUREMENT - REORDERED DOORS (JAMB DEPTH ISSUE),Complete,Electrical Rm - 3F -SUW-FAB130402,,,,,,,,,,2025-09-03 08:00,2025-11-20 10:00,2025-06-09 08:00,2025-07-14 10:00,2025-11-20 17:00,2025-11-20 17:00,2025-11-25 10:00,2025-11-25 10:00,0,450,100
FAB130402E-00,SHOP DRAWINGS (RFI 9565) - PATRIOT - FAB130402E,Complete,Electrical Rm - 3F -SUW-FAB130402,,INTERIOR STAIRS,L3 / Waffle Slab Level,,,,,,,2025-07-03 08:00,2025-07-07 17:00,2025-07-03 08:00,2025-09-11 17:00,2025-11-20 17:00,2025-11-20 17:00,2025-11-25 08:00,2025-11-25 08:00,0,24,100
FAB130402E-01,GOAL POST SHOP DRAWINGS APPROVAL - JACOBS/SECAI - FAB130402E - M/19,Complete,Electrical Rm - 3F -SUW-FAB130402,,INTERIOR STAIRS,L3 / Waffle Slab Level,,,,,,,2025-09-11 08:00,2025-09-17 17:00,2025-09-11 08:00,2025-10-24 17:00,2025-11-20 17:00,2025-11-20 17:00,2025-11-25 08:00,2025-11-25 08:00,0,40,100
FAB130402E-02,HEADER/GOAL POST FABRICATION - PATRIOT - FAB130402E - M/19,Complete,Electrical Rm - 3F -SUW-FAB130402,,INTERIOR STAIRS,L3 / Waffle Slab Level,,,,,,,2025-10-27 08:00,2025-10-29 17:00,2025-10-27 08:00,2025-10-29 17:00,2025-11-20 17:00,2025-11-20 17:00,2025-11-25 08:00,2025-11-25 08:00,0,24,100
FAB130402E-04,HEADER/GOAL POST INSTALL - PATRIOT - FAB130402E - M/19,Not Started,Electrical Rm - 3F -SUW-FAB130402,,INTERIOR STAIRS,L3 / Waffle Slab Level,,,PATRIOT,,,,2025-11-28 08:00,2025-12-01 17:00,,,2025-11-28 08:00,2025-12-01 17:00,2025-12-02 08:00,2025-12-03 17:00,16,16,0
FAB130402E-07,DOOR INSTALL - FAB130402E (OHC),Not Started,Electrical Rm - 3F -SUW-FAB130402,,,,,,,,,,2025-12-19 08:00,2025-12-22 17:00,,,2025-12-19 08:00,2025-12-22 17:00,2025-12-04 08:00,2025-12-05 17:00,16,16,0
ZX-3160,Complete Drywall & Inspect - IT/Security 3 - 3F-FAB130307 NON RATED WALLS,Complete,IT/Security 3 - 3F -SUW-FAB130307,,,,,,,,,,2025-06-24 08:00,2025-06-26 17:00,2025-06-13 08:00,2025-06-23 16:00,2025-11-20 17:00,2025-11-20 17:00,2025-11-25 10:00,2025-11-25 10:00,0,24,100
ZX-3180,Complete Control Joint & Inspect - IT/Security 3 - 3F-FAB130307,Complete,IT/Security 3 - 3F -SUW-FAB130307,,,,,,,,,,2025-06-27 08:00,2025-06-30 17:00,2025-06-23 08:00,2025-06-24 16:00,2025-11-20 17:00,2025-11-20 17:00,2025-11-25 10:00,2025-11-25 10:00,0,16,100
TR-FAB130307A-01,IMPACT - INSTALL/REWORK DRYWALL FRAMING AROUND DOORS - TR - FAB130307A,Complete,IT/Security 3 - 3F -SUW-FAB130307,,,,,,,,,,2025-01-15 08:00,2025-01-23 17:00,2025-01-15 08:00,2025-01-23 17:00,2025-11-20 17:00,2025-11-20 17:00,2025-11-25 10:00,2025-11-25 10:00,0,56,100
TR-FAB130307A-02,SECAI ROUGH IN/SECURITY - TR - FAB130307A,Complete,IT/Security 3 - 3F -SUW-FAB130307,,,,,,,,,,2025-01-23 08:00,2025-01-23 17:00,2025-01-23 08:00,2025-01-23 17:00,2025-11-20 17:00,2025-11-20 17:00,2025-11-25 10:00,2025-11-25 10:00,0,8,100
TR-FAB130307A-03,INSTALL DOOR FRAMES - TR - FAB130307A,Complete,IT/Security 3 - 3F -SUW-FAB130307,,,,,,,,,,2025-06-27 13:00,2025-06-30 12:00,2025-01-23 00:00,2025-01-23 12:00,2025-11-20 17:00,2025-11-20 17:00,2025-11-25 10:00,2025-11-25 10:00,0,8,100
TR-FAB130307A-04,INSTALL DOOR & HARDWARE - TR - FAB130307A,Active,IT/Security 3 - 3F -SUW-FAB130307,,,,,,,,,,2025-10-20 08:00,2025-10-24 17:00,2025-10-20 08:00,,2025-11-21 08:00,2025-11-27 17:00,2025-11-25 10:00,2025-12-02 10:00,40,40,0
TR-FAB130307A-05,PAINT & PROTECT DOORS & FRAMES - TR - FAB130307A,Not Started,IT/Security 3 - 3F -SUW-FAB130307,,,,,,,,,,2026-02-16 08:00,2026-02-19 15:00,,,2026-02-16 08:00,2026-02-19 15:00,2025-12-02 10:00,2025-12-05 17:00,30,30,0
ZX-3010,Complete Drywall & Inspect - Duct Shaft - 3F-SUW-FAB130112,Complete,Duct Shaft - 3F -SUW-FAB130112,,,,,,,,,,2025-09-04 08:00,2025-09-08 17:00,2025-09-04 08:00,2025-09-08 17:00,2025-11-20 17:00,2025-11-20 17:00,2025-12-05 17:00,2025-12-05 17:00,0,24,100
ZX-3020,Complete Fire Caulk & Inspect - Duct Shaft - 3F-SUW-FAB130112,Complete,Duct Shaft - 3F -SUW-FAB130112,,,,,,,,,,2025-09-29 08:00,2025-09-29 08:00,2025-09-29 08:00,2025-09-29 08:00,2025-11-20 17:00,2025-11-20 17:00,2025-12-05 17:00,2025-12-05 17:00,0,0,100
ZX-3460,Complete Drywall & Inspect - Duct Shaft - 3F-SUE-FAB136510,Complete,Duct Shaft - 3F -SUE-FAB136510,,,,,,,,,,2025-08-27 08:00,2025-09-02 17:00,2025-08-27 08:00,2025-09-02 17:00,2025-11-20 17:00,2025-11-20 17:00,2025-12-04 08:00,2025-12-04 08:00,0,40,100
ZX-3470,Complete Fire Caulk & Inspect - Duct Shaft - 3F-SUE-FAB136510,Complete,Duct Shaft - 3F -SUE-FAB136510,,,,,,,,,,2025-09-29 08:00,2025-09-30 17:00,2025-09-29 08:00,2025-09-30 17:00,2025-11-20 17:00,2025-11-20 17:00,2025-12-05 17:00,2025-12-05 17:00,0,16,100
ZX-3480,Complete Control Joint & Inspect - Duct Shaft - 3F-SUE-FAB136510,Not Started,Duct Shaft - 3F -SUE-FAB136510,,,,,,,,,,2025-11-21 08:00,2025-11-24 17:00,,,2025-11-21 08:00,2025-11-24 17:00,2025-12-04 08:00,2025-12-05 17:00,16,16,0
FAB136510A-01,IMPACT - INSTALL/REWORK DRYWALL FRAMING AROUND DOORS - FAB136510A,Complete,Duct Shaft - 3F -SUE-FAB136510,,,,,,,,,,2025-05-05 08:00,2025-05-13 17:00,2025-05-05 08:00,2025-05-09 17:00,2025-11-20 17:00,2025-11-20 17:00,2025-11-25 10:00,2025-11-25 10:00,0,56,100
FAB136510A-02,SECAI ROUGH IN/SECURITY -  FAB136510A,Complete,Duct Shaft - 3F -SUE-FAB136510,,,,,,,,,,2025-05-09 08:00,2025-05-09 17:00,2025-05-09 08:00,2025-05-09 17:00,2025-11-20 17:00,2025-11-20 17:00,2025-11-25 10:00,2025-11-25 10:00,0,8,100
FAB136510A-03,INSTALL DOOR FRAMES - FAB136510A,Complete,Duct Shaft - 3F -SUE-FAB136510,,,,,,,,,,2025-07-28 13:00,2025-07-29 12:00,2025-05-08 00:00,2025-05-09 12:00,2025-11-20 17:00,2025-11-20 17:00,2025-11-25 10:00,2025-11-25 10:00,0,8,100
FAB136510A-04,INSTALL DOOR & HARDWARE - FAB136510A,Active,Duct Shaft - 3F -SUE-FAB136510,,,,,,,,,,2025-07-09 08:00,2025-07-15 17:00,2025-07-09 08:00,,2025-11-21 08:00,2025-11-27 17:00,2025-11-25 10:00,2025-12-02 10:00,40,40,0
FAB136510A-05,PAINT & PROTECT DOORS & FRAMES -  FAB136510A,Not Started,Duct Shaft - 3F -SUE-FAB136510,,,,,,,,,,2026-02-16 08:00,2026-02-19 15:00,,,2026-02-16 08:00,2026-02-19 15:00,2025-12-02 10:00,2025-12-05 17:00,30,30,0
ZX-18970,IMPACT - SECAI MEP SCAFFOLD IN THE AREA - Duct Shaft - 3F-SUE-FAB136510,Active,Duct Shaft - 3F -SUE-FAB136510,,,,,,,,,,2025-06-27 08:00,2025-07-17 17:00,2025-06-27 08:00,,2025-11-21 08:00,2025-11-28 17:00,2025-11-28 08:00,2025-12-05 17:00,48,120,0
ZX-3430,SECAI TOOK OVER FOR DESIGN ISSUES - Complete Drywall & Inspect - Rated Chase-West - 3F-SUW-FAB130408,Complete,Rated Chase West - 3F -SUW-FAB130408,,,,,,,,,,2025-08-15 08:00,2025-08-21 17:00,2025-08-15 08:00,2025-08-15 17:00,2025-11-20 17:00,2025-11-20 17:00,2025-11-24 08:00,2025-11-24 08:00,0,40,100
ZX-3440,SECAI TOOK OVER FOR DESIGN ISSUES - Complete Fire Caulk & Inspect - Rated Chase-West - 3F-SUW-FAB130408,Complete,Rated Chase West - 3F -SUW-FAB130408,,,,,,,,,,2025-08-14 08:00,2025-08-15 17:00,2025-08-15 08:00,2025-08-15 17:00,2025-11-20 17:00,2025-11-20 17:00,2025-12-05 17:00,2025-12-05 17:00,0,16,100
ZX-3450,SECAI TOOK OVER FOR DESING ISSUES - Complete Control Joint & Inspect - Rated Chase-West - 3F-SUW-FAB130408,Complete,Rated Chase West - 3F -SUW-FAB130408,,,,,,,,,,2025-08-14 08:00,2025-08-15 17:00,2025-08-15 08:00,2025-08-15 17:00,2025-11-20 17:00,2025-11-20 17:00,2025-11-24 08:00,2025-11-24 08:00,0,16,100
FAB130408A-03,INSTALL DOOR FRAMES - FAB130408A,Not Started,Rated Chase West - 3F -SUW-FAB130408,,,,,,,,,,2025-11-21 08:00,2025-11-21 17:00,,,2025-11-21 08:00,2025-11-21 17:00,2025-11-24 08:00,2025-11-24 17:00,8,8,0
FAB130408A-04,INSTALL DOOR & HARDWARE - FAB130408A,Not Started,Rated Chase West - 3F -SUW-FAB130408,,,,,,,,,,2025-11-24 08:00,2025-11-28 17:00,,,2025-11-24 08:00,2025-11-28 17:00,2025-11-25 08:00,2025-12-01 17:00,40,40,0
FAB130408A-05,PAINT & PROTECT DOORS & FRAMES -  FAB130408A,Not Started,Rated Chase West - 3F -SUW-FAB130408,,,,,,,,,,2026-02-16 08:00,2026-02-19 17:00,,,2026-02-16 08:00,2026-02-19 17:00,2025-12-02 08:00,2025-12-05 17:00,32,32,0
ZX-3520,Complete Drywall & Inspect - Duct Shaft - 3F-SUW_FAB130401,Complete,Duct Shaft - 3F -SUW-FAB130401,,,,,,,,,,2025-09-02 08:00,2025-09-08 17:00,2025-09-02 08:00,2025-09-08 17:00,2025-11-20 17:00,2025-11-20 17:00,2025-11-18 10:00,2025-11-18 10:00,0,40,100
ZX-3530,Complete Fire Caulk & Inspect - Duct Shaft - 3F-SUW_FAB130401,Not Started,Duct Shaft - 3F -SUW-FAB130401,,,,,,,,,,2025-11-28 08:00,2025-12-01 17:00,,,2025-11-28 08:00,2025-12-01 17:00,2025-12-04 08:00,2025-12-05 17:00,16,16,0
FAB130401A-01,IMPACT - INSTALL/REWORK DRYWALL FRAMING AROUND DOORS - FAB130401A,Complete,Duct Shaft - 3F -SUW-FAB130401,,,,,,,,,,2025-02-05 08:00,2025-02-13 17:00,2025-02-05 08:00,2025-02-13 17:00,2025-11-20 17:00,2025-11-20 17:00,2025-11-18 10:00,2025-11-18 10:00,0,56,100
FAB130401A-02,SECAI ROUGH IN/SECURITY - FAB130401A,Complete,Duct Shaft - 3F -SUW-FAB130401,,,,,,,,,,2025-02-13 08:00,2025-02-13 17:00,2025-02-13 08:00,2025-02-13 17:00,2025-11-20 17:00,2025-11-20 17:00,2025-11-18 10:00,2025-11-18 10:00,0,8,100
FAB130401A-03,INSTALL DOOR FRAMES - FAB130401A,Complete,Duct Shaft - 3F -SUW-FAB130401,,,,,,,,,,2025-07-31 13:00,2025-08-01 12:00,2025-02-13 00:00,2025-02-13 12:00,2025-11-20 17:00,2025-11-20 17:00,2025-11-18 10:00,2025-11-18 10:00,0,8,100
FAB130401A-04,INSTALL DOOR & HARDWARE - FAB130401A,Not Started,Duct Shaft - 3F -SUW-FAB130401,,,,,,,,,,2025-11-28 08:00,2025-12-04 17:00,,,2025-11-28 08:00,2025-12-04 17:00,2025-11-25 10:00,2025-12-02 10:00,40,40,0
FAB130401A-05,PAINT & PROTECT DOORS & FRAMES -  FAB130401A,Not Started,Duct Shaft - 3F -SUW-FAB130401,,,,,,,,,,2026-02-16 08:00,2026-02-19 15:00,,,2026-02-16 08:00,2026-02-19 15:00,2025-12-02 10:00,2025-12-05 17:00,30,30,0
ZX-3370,Complete Drywall & Inspect - NaOH Transfer Rm - 3F-FAB130311,Complete,NaOH Transfer Rm - 3F -SUW-FAB130311,,,,,,,,,,2025-08-18 08:00,2025-08-26 17:00,2025-08-18 08:00,2025-08-26 17:00,2025-11-20 17:00,2025-11-20 17:00,2025-11-24 10:00,2025-11-24 10:00,0,56,100
ZX-3380,Complete Fire Caulk & Inspect - NaOH Transfer Rm - 3F-FAB130311,Complete,NaOH Transfer Rm - 3F -SUW-FAB130311,,,,,,,,,,2025-08-25 08:00,2025-08-26 17:00,2025-08-25 08:00,2025-08-26 17:00,2025-11-20 17:00,2025-11-20 17:00,2025-12-05 17:00,2025-12-05 17:00,0,16,100
ZX-3390,Complete Control Joint & Inspect - NaOH Transfer Rm - 3F-FAB130311,Complete,NaOH Transfer Rm - 3F -SUW-FAB130311,,,,,,,,,,2025-08-25 08:00,2025-08-26 17:00,2025-08-25 08:00,2025-08-26 17:00,2025-11-20 17:00,2025-11-20 17:00,2025-11-24 10:00,2025-11-24 10:00,0,16,100
FAB130311A-01,IMPACT - INSTALL/REWORK DRYWALL FRAMING AROUND DOORS - FAB130311A,Complete,NaOH Transfer Rm - 3F -SUW-FAB130311,,,,,,,,,,2025-07-14 08:00,2025-07-22 17:00,2025-05-12 08:00,2025-05-20 16:00,2025-11-20 17:00,2025-11-20 17:00,2025-11-25 10:00,2025-11-25 10:00,0,56,100
FAB130311A-02,SECAI ROUGH IN/SECURITY - FAB130311A,Complete,NaOH Transfer Rm - 3F -SUW-FAB130311,,,,,,,,,,2025-07-23 08:00,2025-07-23 17:00,2025-05-21 08:00,2025-05-23 16:00,2025-11-20 17:00,2025-11-20 17:00,2025-11-25 10:00,2025-11-25 10:00,0,8,100
FAB130311A-03,INSTALL DOOR FRAMES - FAB130311A,Complete,NaOH Transfer Rm - 3F -SUW-FAB130311,,,,,,,,,,2025-07-24 08:00,2025-07-24 17:00,2025-05-27 08:00,2025-05-29 08:00,2025-11-20 17:00,2025-11-20 17:00,2025-11-25 10:00,2025-11-25 10:00,0,8,100
FAB130311A-04,INSTALL DOOR & HARDWARE - FAB130311A,Not Started,NaOH Transfer Rm - 3F -SUW-FAB130311,,,,,,,,,,2025-12-05 08:00,2025-12-11 17:00,,,2025-12-05 08:00,2025-12-11 17:00,2025-11-25 10:00,2025-12-02 10:00,40,40,0
FAB130311A-05,PAINT & PROTECT DOORS & FRAMES - FAB130311A,Not Started,NaOH Transfer Rm - 3F -SUW-FAB130311,,,,,,,,,,2026-02-16 08:00,2026-02-19 15:00,,,2026-02-16 08:00,2026-02-19 15:00,2025-12-02 10:00,2025-12-05 17:00,30,30,0
FAB130311B-03,INSTALL DOOR FRAMES - FAB130311B,Not Started,NaOH Transfer Rm - 3F -SUW-FAB130311,,,,,,,,,,2025-11-28 08:00,2025-11-28 17:00,,,2025-11-28 08:00,2025-11-28 17:00,2025-11-24 10:00,2025-11-25 10:00,8,8,0
FAB130311B-04,INSTALL DOOR & HARDWARE - FAB130311B,Not Started,NaOH Transfer Rm - 3F -SUW-FAB130311,,,,,,,,,,2025-12-01 08:00,2025-12-05 17:00,,,2025-12-01 08:00,2025-12-05 17:00,2025-11-25 10:00,2025-12-02 10:00,40,40,0
FAB130311B-05,PAINT & PROTECT DOORS & FRAMES - FAB130311B,Not Started,NaOH Transfer Rm - 3F -SUW-FAB130311,,,,,,,,,,2026-02-16 08:00,2026-02-19 15:00,,,2026-02-16 08:00,2026-02-19 15:00,2025-12-02 10:00,2025-12-05 17:00,30,30,0
FAB130311B-00,IMPACT - PROCUREMENT - NEW WALL THICKNESS ISSUE FAB130311B,Active,NaOH Transfer Rm - 3F -SUW-FAB130311,,,,,,,,,,2025-06-13 08:00,2025-09-09 12:00,2025-06-09 08:00,,2025-11-21 08:00,2025-11-27 17:00,2025-11-17 10:00,2025-11-24 10:00,40,500,0
ZX-3400,Complete Drywall & Inspect - Duct Shaft - 3F-SUW-FAB130102,Complete,Duct Shaft-3F-SUW-FAB130102,,,,,,,,,,2025-09-04 08:00,2025-09-08 17:00,2025-09-04 08:00,2025-09-08 17:00,2025-11-20 17:00,2025-11-20 17:00,2025-11-17 10:00,2025-11-17 10:00,0,24,100
ZX-3410,Complete Fire Caulk & Inspect - Duct Shaft - 3F-SUW-FAB130102,Complete,Duct Shaft-3F-SUW-FAB130102,,,,,,,,,,2025-09-08 08:00,2025-09-09 17:00,2025-09-09 08:00,2025-09-09 17:00,2025-11-20 17:00,2025-11-20 17:00,2025-12-05 17:00,2025-12-05 17:00,0,16,100
FAB130102A-02,SECAI ROUGH IN/SECURITY - FAB130102A,Complete,Duct Shaft-3F-SUW-FAB130102,,,,,,,,,,2025-01-20 08:00,2025-01-20 17:00,2025-01-20 08:00,2025-01-20 17:00,2025-11-20 17:00,2025-11-20 17:00,2025-11-25 10:00,2025-11-25 10:00,0,8,100
FAB130102A-03,INSTALL DOOR FRAMES - FAB130102A,Complete,Duct Shaft-3F-SUW-FAB130102,,,,,,,,,,2025-08-08 08:00,2025-08-08 17:00,2025-01-20 00:00,2025-01-20 16:00,2025-11-20 17:00,2025-11-20 17:00,2025-11-25 10:00,2025-11-25 10:00,0,8,100
FAB130102A-04,INSTALL DOOR & HARDWARE - FAB130102A,Not Started,Duct Shaft-3F-SUW-FAB130102,,,,,,,,,,2025-11-21 08:00,2025-11-27 17:00,,,2025-11-21 08:00,2025-11-27 17:00,2025-11-25 10:00,2025-12-02 10:00,40,40,0
FAB130102A-05,PAINT & PROTECT DOORS & FRAMES - FAB130102A,Not Started,Duct Shaft-3F-SUW-FAB130102,,,,,,,,,,2026-02-16 08:00,2026-02-19 15:00,,,2026-02-16 08:00,2026-02-19 15:00,2025-12-02 10:00,2025-12-05 17:00,30,30,0
ZX-18750,IMPACT - SECAI MEP SCAFFOLD IN THE AREA - Duct Shaft - 3F-SUW-FAB130102,Active,Duct Shaft-3F-SUW-FAB130102,,,,,,,,,,2025-07-01 08:00,2025-07-21 17:00,2024-11-01 08:00,,2025-11-21 08:00,2025-11-28 17:00,2025-11-28 08:00,2025-12-05 17:00,48,120,0
ZX-4030,Complete Drywall & Inspect - Duct Shaft - 3F-SUE-FAB136401,Complete,Duct Shaft - 3F -SUE-FAB136401,,,,,,,,,,2025-11-03 08:00,2025-11-11 17:00,2025-11-03 08:00,2025-11-07 17:00,2025-11-20 17:00,2025-11-20 17:00,2025-11-24 10:00,2025-11-24 10:00,0,56,100
ZX-4040,Complete Fire Caulk & Inspect - Duct Shaft - 3F-SUE-FAB136401,Complete,Duct Shaft - 3F -SUE-FAB136401,,,,,,,,,,2025-11-06 08:00,2025-11-07 17:00,2025-11-06 08:00,2025-11-07 17:00,2025-11-20 17:00,2025-11-20 17:00,2025-12-05 17:00,2025-12-05 17:00,0,16,100
ZX-4050,Complete Control Joint & Inspect - Duct Shaft - 3F-SUE-FAB136401,Complete,Duct Shaft - 3F -SUE-FAB136401,,,,,,,,,,2025-11-06 08:00,2025-11-07 17:00,2025-11-06 08:00,2025-11-07 17:00,2025-11-20 17:00,2025-11-20 17:00,2025-11-24 10:00,2025-11-24 10:00,0,16,100
FAB136401A-01,IMPACT - INSTALL/REWORK DRYWALL FRAMING AROUND DOORS - FAB136401A FRAME HANDED OVER TO SECAI 07/18,Complete,Duct Shaft - 3F -SUE-FAB136401,,,,,,,,,,2025-07-18 08:00,2025-07-28 17:00,2025-07-18 08:00,2025-07-18 17:00,2025-11-20 17:00,2025-11-20 17:00,2025-11-25 10:00,2025-11-25 10:00,0,56,100
FAB136401A-02,SECAI ROUGH IN/SECURITY - FAB136401A FRAME HANDED OVER TO SECAI 07/18,Complete,Duct Shaft - 3F -SUE-FAB136401,,,,,,,,,,2025-07-18 08:00,2025-07-18 17:00,2025-07-18 08:00,2025-07-18 17:00,2025-11-20 17:00,2025-11-20 17:00,2025-11-25 10:00,2025-11-25 10:00,0,8,100
FAB136401A-03,INSTALL DOOR FRAME BY SECAI - FAB136401A HANDED OVER TO SECAI 07/18,Complete,Duct Shaft - 3F -SUE-FAB136401,,,,,,,,,,2025-09-17 08:00,2025-09-17 17:00,2025-08-11 08:00,2025-08-12 17:00,2025-11-20 17:00,2025-11-20 17:00,2025-11-25 10:00,2025-11-25 10:00,0,8,100
FAB136401A-04,INSTALL DOOR & HARDWARE - FAB136401A,Not Started,Duct Shaft - 3F -SUE-FAB136401,,,,,,,,,,2025-11-21 08:00,2025-11-27 17:00,,,2025-11-21 08:00,2025-11-27 17:00,2025-11-25 10:00,2025-12-02 10:00,40,40,0
FAB136401A-05,PAINT & PROTECT DOORS & FRAMES -  FAB136401A,Not Started,Duct Shaft - 3F -SUE-FAB136401,,,,,,,,,,2026-02-16 08:00,2026-02-19 15:00,,,2026-02-16 08:00,2026-02-19 15:00,2025-12-02 10:00,2025-12-05 17:00,30,30,0
FAB136401A-11,IMPACT - SECAI - DIRECTIVE TO HOLD FRAME INSTALLATION FRAME HANDED OVER TO SECAI 07/18,Complete,Duct Shaft - 3F -SUE-FAB136401,,,,,,,,,,2025-07-18 08:00,2025-07-28 10:00,2025-07-18 08:00,2025-07-18 10:00,2025-11-20 17:00,2025-11-20 17:00,2025-11-25 10:00,2025-11-25 10:00,0,50,100
FAB136401B-03,INSTALL DOOR FRAMES - FAB136401B,Not Started,Duct Shaft - 3F -SUE-FAB136401,,,,,,,,,,2025-11-28 08:00,2025-11-28 17:00,,,2025-11-28 08:00,2025-11-28 17:00,2025-11-24 10:00,2025-11-25 10:00,8,8,0
FAB136401B-04,INSTALL DOOR & HARDWARE - FAB136401B,Not Started,Duct Shaft - 3F -SUE-FAB136401,,,,,,,,,,2025-12-01 08:00,2025-12-05 17:00,,,2025-12-01 08:00,2025-12-05 17:00,2025-11-25 10:00,2025-12-02 10:00,40,40,0
FAB136401B-05,PAINT & PROTECT DOORS & FRAMES - FAB136401B,Not Started,Duct Shaft - 3F -SUE-FAB136401,,,,,,,,,,2026-02-16 08:00,2026-02-19 15:00,,,2026-02-16 08:00,2026-02-19 15:00,2025-12-02 10:00,2025-12-05 17:00,30,30,0
ZX-3820,Complete Drywall & Inspect - Reticle Rm - 3F-SUE-FAB136502,Complete,Reticle Rm - 3F -SUE-FAB136502,,,,,,,,,,2025-04-14 08:00,2025-04-18 17:00,2025-04-14 08:00,2025-04-18 17:00,2025-11-20 17:00,2025-11-20 17:00,2025-12-05 17:00,2025-12-05 17:00,0,40,100
ZX-3830,Complete Fire Caulk & Inspect - Reticle Rm - 3F-SUE-FAB136502,Complete,Reticle Rm - 3F -SUE-FAB136502,,,,,,,,,,2025-04-17 08:00,2025-04-18 17:00,2025-04-17 08:00,2025-04-18 17:00,2025-11-20 17:00,2025-11-20 17:00,2025-12-05 17:00,2025-12-05 17:00,0,16,100
ZX-3840,Complete Control Joint & Inspect - Reticle Rm - 3F-SUE-FAB136502,Complete,Reticle Rm - 3F -SUE-FAB136502,,,,,,,,,,2025-04-17 08:00,2025-04-18 17:00,2025-04-17 08:00,2025-04-18 17:00,2025-11-20 17:00,2025-11-20 17:00,2025-12-05 17:00,2025-12-05 17:00,0,16,100
ZX-3790,Complete Drywall & Inspect - Battery Rm - 3F-SUW-FAB130501,Complete,Battery Rm - 3F -SUW-FAB130501,,,,,,,,,,2025-07-18 08:00,2025-07-31 17:00,2025-06-16 08:00,2025-09-05 17:00,2025-11-20 17:00,2025-11-20 17:00,2025-12-05 17:00,2025-12-05 17:00,0,80,100
ZX-3800,Complete Fire Caulk & Inspect - Battery Rm - 3F-SUW-FAB130501,Complete,Battery Rm - 3F -SUW-FAB130501,,,,,,,,,,2025-07-14 08:00,2025-07-15 17:00,2025-07-14 08:00,2025-09-16 17:00,2025-11-20 17:00,2025-11-20 17:00,2025-12-05 17:00,2025-12-05 17:00,0,16,100
ZX-3810,Complete Control Joint & Inspect - Battery Rm - 3F-SUW-FAB130501,Complete,Battery Rm - 3F -SUW-FAB130501,,,,,,,,,,2025-07-14 08:00,2025-07-15 17:00,2025-07-14 08:00,2025-09-05 17:00,2025-11-20 17:00,2025-11-20 17:00,2025-12-05 17:00,2025-12-05 17:00,0,16,100
FAB130501A-01,IMPACT - PATRIOT DESIGN NEW BASE PLATE- FAB130501A - M/27,Complete,Battery Rm - 3F -SUW-FAB130501,,INTERIOR STAIRS,L3 / Waffle Slab Level,,,,,,,2025-08-06 08:00,2025-08-14 17:00,2025-06-26 00:00,2025-10-24 08:00,2025-11-20 17:00,2025-11-20 17:00,2025-11-06 17:00,2025-11-06 17:00,0,56,100
FAB130501A-04,INSTALL DOOR & HARDWARE - FAB130501A,Not Started,Battery Rm - 3F -SUW-FAB130501,,,,,,,,,,2025-11-24 08:00,2025-11-28 17:00,,,2025-11-24 08:00,2025-11-28 17:00,2025-11-25 10:00,2025-12-02 10:00,40,40,0
FAB130501A-05,PAINT & PROTECT DOORS & FRAMES -  FAB130501A,Not Started,Battery Rm - 3F -SUW-FAB130501,,,,,,,,,,2026-02-16 08:00,2026-02-19 15:00,,,2026-02-16 08:00,2026-02-19 15:00,2025-12-02 10:00,2025-12-05 17:00,30,30,0
FAB130501A-03,INSTALL DOOR FRAMES - FAB130501A,Not Started,Battery Rm - 3F -SUW-FAB130501,,,,,,,,,,2025-11-21 08:00,2025-11-21 17:00,,,2025-11-21 08:00,2025-11-21 17:00,2025-11-24 10:00,2025-11-25 10:00,8,8,0
ZX-3880,Complete Drywall & Inspect - W-H2SO4 Transfer Rm - 3F-FAB130312,Complete,W-H2SO4 Transfer Rm - 3F -SUW-FAB130312,,,,,,,,,,2025-08-25 08:00,2025-08-26 17:00,2025-08-25 08:00,2025-08-26 17:00,2025-11-20 17:00,2025-11-20 17:00,2025-11-25 10:00,2025-11-25 10:00,0,16,100
ZX-3890,Complete Fire Caulk & Inspect - W-H2SO4 Transfer Rm - 3F-FAB130312,Complete,W-H2SO4 Transfer Rm - 3F -SUW-FAB130312,,,,,,,,,,2025-07-09 08:00,2025-07-10 17:00,2025-07-09 08:00,2025-07-10 17:00,2025-11-20 17:00,2025-11-20 17:00,2025-12-05 17:00,2025-12-05 17:00,0,16,100
ZX-3900,Complete Control Joint & Inspect - W-H2SO4 Transfer Rm - 3F-FAB130312,Complete,W-H2SO4 Transfer Rm - 3F -SUW-FAB130312,,,,,,,,,,2025-08-25 08:00,2025-08-26 17:00,2025-08-25 08:00,2025-08-26 17:00,2025-11-20 17:00,2025-11-20 17:00,2025-11-25 10:00,2025-11-25 10:00,0,16,100
ZX-3730,Complete Drywall & Inspect - Duct Shaft - 3F-SUW-FAB130301,Complete,Duct Shaft - 3F -SUW-FAB130301,,,,,,,,,,2025-09-29 08:00,2025-10-03 17:00,2025-09-29 08:00,2025-10-03 17:00,2025-11-20 17:00,2025-11-20 17:00,2025-12-05 17:00,2025-12-05 17:00,0,40,100
ZX-3740,Complete Fire Caulk & Inspect - Duct Shaft - 3F-SUW-FAB130301,Complete,Duct Shaft - 3F -SUW-FAB130301,,,,,,,,,,2025-09-29 08:00,2025-09-30 17:00,2025-09-29 08:00,2025-09-30 17:00,2025-11-20 17:00,2025-11-20 17:00,2025-12-05 17:00,2025-12-05 17:00,0,16,100
ZX-3750,Complete Control Joint & Inspect - Duct Shaft - 3F-SUW-FAB130301,Complete,Duct Shaft - 3F -SUW-FAB130301,,,,,,,,,,2025-10-02 08:00,2025-10-03 17:00,2025-10-02 08:00,2025-10-03 17:00,2025-11-20 17:00,2025-11-20 17:00,2025-12-05 17:00,2025-12-05 17:00,0,16,100
ZX-18740,IMPACT - SECAI SCAFFOLD IN THE AREA - Duct Shaft - 3F-SUW-FAB130301,Active,Duct Shaft - 3F -SUW-FAB130301,,,,,,,,,,2025-07-03 08:00,2025-07-09 17:00,2024-11-01 08:00,,2025-11-21 08:00,2025-11-28 17:00,2025-11-28 08:00,2025-12-05 17:00,48,40,0
ZX-3760,Complete Drywall & Inspect - Quitz - 3F-FAB130313,Complete,Quitz - 3F -SUW-FAB130313,,,,,,,,,,2025-06-11 08:00,2025-06-24 17:00,2025-05-09 08:00,2025-05-23 16:00,2025-11-20 17:00,2025-11-20 17:00,2025-11-25 10:00,2025-11-25 10:00,0,80,100
ZX-3780,SECAI TOOK OVER FOR ACCELERATION - Complete Control Joint & Inspect - Quitz - 3F-FAB130313,Complete,Quitz - 3F -SUW-FAB130313,,,,,,,,,,2025-07-15 08:00,2025-07-15 17:00,2025-07-15 08:00,2025-07-15 17:00,2025-11-20 17:00,2025-11-20 17:00,2025-11-25 10:00,2025-11-25 10:00,0,8,100
FAB130313A-03,INSTALL DOOR FRAMES - FAB130313A,Complete,Quitz - 3F -SUW-FAB130313,,,,,,,,,,2025-05-19 13:00,2025-05-20 12:00,2025-05-19 13:00,2025-05-20 12:00,2025-11-20 17:00,2025-11-20 17:00,2025-11-25 10:00,2025-11-25 10:00,0,8,100
FAB130313A-04,INSTALL DOOR & HARDWARE - FAB130313A,Active,Quitz - 3F -SUW-FAB130313,,,,,,,,,,2025-11-18 08:00,2025-11-24 17:00,2025-11-18 08:00,,2025-11-21 08:00,2025-11-27 17:00,2025-11-25 10:00,2025-12-02 10:00,40,40,0
FAB130313A-05,PAINT & PROTECT DOORS & FRAMES - FAB130313A,Not Started,Quitz - 3F -SUW-FAB130313,,,,,,,,,,2026-02-16 08:00,2026-02-19 15:00,,,2026-02-16 08:00,2026-02-19 15:00,2025-12-02 10:00,2025-12-05 17:00,30,30,0
ZX-18700,IMPACT SECAI MEP MATERIAL IN THE WAY - Quitz - 3F-FAB130313 - SECAI TOOK OVER FOR ACCELERATION,Complete,Quitz - 3F -SUW-FAB130313,,,,,,,,,,2025-06-13 08:00,2025-06-26 17:00,2025-06-13 08:00,2025-07-15 08:00,2025-11-20 17:00,2025-11-20 17:00,2025-11-25 10:00,2025-11-25 10:00,0,80,100
ZX-4180,Complete Drywall & Inspect - Duct Shaft - 3F-SUE-FAB136507,Not Started,Duct Shaft - 3F -SUE-FAB136507,,,,,,,,,,2025-12-05 08:00,2025-12-05 08:00,,,2025-12-05 08:00,2025-12-05 08:00,2025-12-03 17:00,2025-12-03 17:00,0,0,0
ZX-4190,Complete Fire Caulk & Inspect - Duct Shaft - 3F-SUE-FAB136507,Not Started,Duct Shaft - 3F -SUE-FAB136507,,,,,,,,,,2025-12-05 08:00,2025-12-08 17:00,,,2025-12-05 08:00,2025-12-08 17:00,2025-12-04 08:00,2025-12-05 17:00,16,16,0
ZX-4200,Complete Control Joint & Inspect - Duct Shaft - 3F-SUE-FAB136507,Not Started,Duct Shaft - 3F -SUE-FAB136507,,,,,,,,,,2025-12-05 08:00,2025-12-08 17:00,,,2025-12-05 08:00,2025-12-08 17:00,2025-12-04 08:00,2025-12-05 17:00,16,16,0
ZX-4060,Complete Drywall & Inspect - Duct Shaft - 3F-SUW-FAB130502,Complete,Duct Shaft - 3F -SUW-FAB130502,,,,,,,,,,2025-09-01 08:00,2025-09-05 17:00,2025-09-01 08:00,2025-09-05 17:00,2025-11-20 17:00,2025-11-20 17:00,2025-11-24 10:00,2025-11-24 10:00,0,40,100
ZX-4070,Complete Fire Caulk & Inspect - Duct Shaft - 3F-SUW-FAB130502,Complete,Duct Shaft - 3F -SUW-FAB130502,,,,,,,,,,2025-09-29 08:00,2025-09-30 17:00,2025-09-29 08:00,2025-09-30 17:00,2025-11-20 17:00,2025-11-20 17:00,2025-12-05 17:00,2025-12-05 17:00,0,16,100
FAB130502A-01,IMPACT - INSTALL/REWORK DRYWALL FRAMING AROUND DOORS - FAB130502A,Complete,Duct Shaft - 3F -SUW-FAB130502,,,,,,,,,,2025-01-10 08:00,2025-01-20 17:00,2025-01-10 08:00,2025-01-20 17:00,2025-11-20 17:00,2025-11-20 17:00,2025-11-25 10:00,2025-11-25 10:00,0,56,100
FAB130502A-02,SECAI ROUGH IN/SECURITY - FAB130502A,Complete,Duct Shaft - 3F -SUW-FAB130502,,,,,,,,,,2025-01-20 08:00,2025-01-20 17:00,2025-01-20 08:00,2025-01-20 17:00,2025-11-20 17:00,2025-11-20 17:00,2025-11-25 10:00,2025-11-25 10:00,0,8,100
FAB130502A-04,INSTALL DOOR & HARDWARE - FAB130502A,Not Started,Duct Shaft - 3F -SUW-FAB130502,,,,,,,,,,2025-11-21 08:00,2025-11-27 17:00,,,2025-11-21 08:00,2025-11-27 17:00,2025-11-25 10:00,2025-12-02 10:00,40,40,0
FAB130502A-05,PAINT & PROTECT DOORS & FRAMES - FAB130502A,Not Started,Duct Shaft - 3F -SUW-FAB130502,,,,,,,,,,2026-02-16 08:00,2026-02-19 15:00,,,2026-02-16 08:00,2026-02-19 15:00,2025-12-02 10:00,2025-12-05 17:00,30,30,0
FAB130502B-04,INSTALL DOOR & HARDWARE - FAB130502B,Not Started,Duct Shaft - 3F -SUW-FAB130502,,,,,,,,,,2025-11-25 08:00,2025-12-01 17:00,,,2025-11-25 08:00,2025-12-01 17:00,2025-11-25 10:00,2025-12-02 10:00,40,40,0
FAB130502B-05,PAINT & PROTECT DOORS & FRAMES - FAB130502B,Not Started,Duct Shaft - 3F -SUW-FAB130502,,,,,,,,,,2026-02-16 08:00,2026-02-19 15:00,,,2026-02-16 08:00,2026-02-19 15:00,2025-12-02 10:00,2025-12-05 17:00,30,30,0
FAB130502B-11,IMPACT - SECAI - DIRECTIVE TO HOLD FRAME INSTALLATION,Not Started,Duct Shaft - 3F -SUW-FAB130502,,,,,,,,,,2025-11-21 08:00,2025-11-21 17:00,,,2025-11-21 08:00,2025-11-21 17:00,2025-11-21 10:00,2025-11-24 10:00,8,8,0
ZX-4150,Complete Drywall & Inspect - Duct Shaft - 3F-SUW-FAB130406,Complete,Duct Shaft - 3F -SUW-FAB130406,,,,,,,,,,2025-09-09 08:00,2025-09-15 17:00,2025-09-09 08:00,2025-09-15 17:00,2025-11-20 17:00,2025-11-20 17:00,2025-12-05 17:00,2025-12-05 17:00,0,40,100
ZX-4160,Complete Fire Caulk & Inspect - Duct Shaft - 3F-SUW-FAB130406,Complete,Duct Shaft - 3F -SUW-FAB130406,,,,,,,,,,2025-11-05 08:00,2025-11-06 17:00,2025-11-05 08:00,2025-11-06 17:00,2025-11-20 17:00,2025-11-20 17:00,2025-12-05 17:00,2025-12-05 17:00,0,16,100
FAB130406A-01,IMPACT - INSTALL/REWORK DRYWALL FRAMING AROUND DOORS - FAB130406A,Complete,Duct Shaft - 3F -SUW-FAB130406,,,,,,,,,,2025-01-14 08:00,2025-01-22 17:00,2025-01-14 08:00,2025-01-22 17:00,2025-11-20 17:00,2025-11-20 17:00,2025-11-25 10:00,2025-11-25 10:00,0,56,100
FAB130406A-02,SECAI ROUGH IN/SECURITY - FAB130406A,Complete,Duct Shaft - 3F -SUW-FAB130406,,,,,,,,,,2025-01-22 08:00,2025-01-22 17:00,2025-01-22 08:00,2025-01-22 17:00,2025-11-20 17:00,2025-11-20 17:00,2025-11-25 10:00,2025-11-25 10:00,0,8,100
FAB130406A-03,INSTALL DOOR FRAMES - FAB130406A,Complete,Duct Shaft - 3F -SUW-FAB130406,,,,,,,,,,2025-07-22 13:00,2025-07-23 12:00,2025-01-22 00:00,2025-01-22 12:00,2025-11-20 17:00,2025-11-20 17:00,2025-11-25 10:00,2025-11-25 10:00,0,8,100
FAB130406A-04,INSTALL DOOR & HARDWARE - FAB130406A,Not Started,Duct Shaft - 3F -SUW-FAB130406,,,,,,,,,,2025-11-21 08:00,2025-11-27 17:00,,,2025-11-21 08:00,2025-11-27 17:00,2025-11-25 10:00,2025-12-02 10:00,40,40,0
FAB130406A-05,PAINT & PROTECT DOORS & FRAMES - FAB130406A,Not Started,Duct Shaft - 3F -SUW-FAB130406,,,,,,,,,,2026-02-16 08:00,2026-02-19 15:00,,,2026-02-16 08:00,2026-02-19 15:00,2025-12-02 10:00,2025-12-05 17:00,30,30,0
ZX-16120,Complete Drywall & Inspect - G.3-J/33 - 3F-SECAI refuse to remove the panels - HANDED OVER DUE TO REFUSUAL,Complete,G.3-J/33 - 3F - FAB,,,,,,,,,,2025-09-23 08:00,2025-09-29 17:00,2025-09-29 08:00,2025-09-29 17:00,2025-11-20 17:00,2025-11-20 17:00,2025-12-05 17:00,2025-12-05 17:00,0,40,100
ZX-16130,Complete Fire Caulk & Inspect - G.3-J/33 - 3F,Complete,G.3-J/33 - 3F - FAB,,,,,,,,,,2025-08-08 08:00,2025-08-19 17:00,2025-06-12 08:00,2025-06-21 16:00,2025-11-20 17:00,2025-11-20 17:00,2025-12-05 17:00,2025-12-05 17:00,0,64,100
ZX-16140,Complete Control Joint & Inspect - G.3-J/33 - 3F-SECAI refuse to remove the panels - HANDED OVER DUE TO REFUSUAL,Complete,G.3-J/33 - 3F - FAB,,,,,,,,,,2025-09-26 08:00,2025-09-29 17:00,2025-09-29 08:00,2025-09-29 17:00,2025-11-20 17:00,2025-11-20 17:00,2025-12-05 17:00,2025-12-05 17:00,0,16,100
ZX-16440,IMPACT - Complete Drywall & Inspect - G.3-J/33 - 3F SG PANELS TO BE REMOVED,Complete,G.3-J/33 - 3F - FAB,,,,,,,,,,2025-05-05 08:00,2025-05-30 17:00,2025-05-05 08:00,2025-09-08 17:00,2025-11-20 17:00,2025-11-20 17:00,2025-12-05 17:00,2025-12-05 17:00,0,160,100
ZX-16450,IMPACT - Complete Control Joint & Inspect - G.3-J/33 - 3F-SAFETY ISSUES WITH ACCESS,Complete,G.3-J/33 - 3F - FAB,,,,,,,,,,2025-05-05 08:00,2025-05-16 17:00,2025-05-05 08:00,2025-06-11 16:00,2025-11-20 17:00,2025-11-20 17:00,2025-12-05 17:00,2025-12-05 17:00,0,80,100
ZX-4090,Complete Drywall & Inspect - Duct Shaft - 3F-SUW-FAB130204,Complete,Duct Shaft - 3F -SUW-FAB130204,,,,,,,,,,2025-09-01 08:00,2025-09-05 17:00,2025-09-01 08:00,2025-09-05 17:00,2025-11-20 17:00,2025-11-20 17:00,2025-11-25 10:00,2025-11-25 10:00,0,40,100
ZX-4100,Complete Fire Caulk & Inspect - Duct Shaft - 3F-SUW-FAB130204,Complete,Duct Shaft - 3F -SUW-FAB130204,,,,,,,,,,2025-09-29 08:00,2025-09-29 08:00,2025-09-29 08:00,2025-09-29 08:00,2025-11-20 17:00,2025-11-20 17:00,2025-12-05 17:00,2025-12-05 17:00,0,0,100
FAB130204A-01,INSTALL DOOR FRAMES - FAB130204A,Complete,Duct Shaft - 3F -SUW-FAB130204,,,,,,,,,,2025-01-17 08:00,2025-01-27 17:00,2025-01-17 08:00,2025-01-17 17:00,2025-11-20 17:00,2025-11-20 17:00,2025-11-25 10:00,2025-11-25 10:00,0,56,100
FAB130204A-02,SECAI ROUGH IN/SECURITY - FAB130204A,Complete,Duct Shaft - 3F -SUW-FAB130204,,,,,,,,,,2025-01-17 08:00,2025-01-17 17:00,2025-01-17 08:00,2025-01-17 17:00,2025-11-20 17:00,2025-11-20 17:00,2025-11-25 10:00,2025-11-25 10:00,0,8,100
FAB130204A-04,INSTALL DOOR & HARDWARE - FAB130204A,Not Started,Duct Shaft - 3F -SUW-FAB130204,,,,,,,,,,2025-11-21 08:00,2025-11-27 17:00,,,2025-11-21 08:00,2025-11-27 17:00,2025-11-25 10:00,2025-12-02 10:00,40,40,0
FAB130204A-05,PAINT & PROTECT DOORS & FRAMES - FAB130204A,Not Started,Duct Shaft - 3F -SUW-FAB130204,,,,,,,,,,2026-02-16 08:00,2026-02-19 15:00,,,2026-02-16 08:00,2026-02-19 15:00,2025-12-02 10:00,2025-12-05 17:00,30,30,0
ZX-4750,Complete Drywall & Inspect - Battery Rm 2 - 3F-SUE-FAB136402,Complete,Battery Rm 2 - 3F -SUE-FAB136402,,,,,,,,,,2025-07-18 08:00,2025-07-31 17:00,2025-07-18 08:00,2025-09-05 17:00,2025-11-20 17:00,2025-11-20 17:00,2025-12-05 17:00,2025-12-05 17:00,0,80,100
ZX-4760,Complete Fire Caulk & Inspect - Battery Rm #02 - 3F-SUE-FAB136402,Complete,Battery Rm 2 - 3F -SUE-FAB136402,,,,,,,,,,2025-07-18 08:00,2025-07-21 17:00,2025-07-18 08:00,2025-08-08 17:00,2025-11-20 17:00,2025-11-20 17:00,2025-12-05 17:00,2025-12-05 17:00,0,16,100
ZX-4770,Complete Control Joint & Inspect - Battery Rm #02 - 3F-SUE-FAB136402,Complete,Battery Rm 2 - 3F -SUE-FAB136402,,,,,,,,,,2025-07-14 08:00,2025-07-15 17:00,2025-07-18 08:00,2025-09-05 17:00,2025-11-20 17:00,2025-11-20 17:00,2025-12-05 17:00,2025-12-05 17:00,0,16,100
ZX-4540,Complete Drywall & Inspect - PR Lifter Rm - 3F-SUE-FAB126509,Complete,PR Lifter Rm - 2F -SUE-FAB126509,,,,,,,,,,2025-09-04 08:00,2025-09-05 17:00,2025-09-04 08:00,2025-09-05 17:00,2025-11-20 17:00,2025-11-20 17:00,2025-12-05 17:00,2025-12-05 17:00,0,16,100
ZX-4550,Complete Fire Caulk & Inspect - PR Lifter Rm - 3F-SUE-FAB126509,Complete,PR Lifter Rm - 2F -SUE-FAB126509,,,,,,,,,,2025-09-29 08:00,2025-09-30 17:00,2025-09-29 08:00,2025-09-30 17:00,2025-11-20 17:00,2025-11-20 17:00,2025-12-05 17:00,2025-12-05 17:00,0,16,100
ZX-4560,SECAI TOOK OVER FOR ACCELERATION - Complete Control Joint & Inspect - PR Lifter Rm - 3F-SUE-FAB126509,Complete,PR Lifter Rm - 2F -SUE-FAB126509,,,,,,,,,,2025-10-21 08:00,2025-10-22 17:00,2025-10-22 08:00,2025-10-22 17:00,2025-11-20 17:00,2025-11-20 17:00,2025-12-05 17:00,2025-12-05 17:00,0,16,100
FAB126509A-01,IMPACT - INSTALL/REWORK DRYWALL FRAMING AROUND DOORS - FAB126509A,Complete,PR Lifter Rm - 2F -SUE-FAB126509,,,,,,,,,,2025-09-26 08:00,2025-09-29 17:00,2025-09-26 08:00,2025-09-29 17:00,2025-11-20 17:00,2025-11-20 17:00,2025-11-25 10:00,2025-11-25 10:00,0,16,100
FAB126509A-02,SECAI ROUGH IN/SECURITY - FAB126509A,Complete,PR Lifter Rm - 2F -SUE-FAB126509,,,,,,,,,,2025-09-29 08:00,2025-09-29 17:00,2025-09-29 08:00,2025-09-29 17:00,2025-11-20 17:00,2025-11-20 17:00,2025-11-25 10:00,2025-11-25 10:00,0,8,100
FAB126509A-03,INSTALL DOOR FRAMES - FAB126509A,Complete,PR Lifter Rm - 2F -SUE-FAB126509,,,,,,,,,,2025-09-29 08:00,2025-09-29 17:00,2025-09-29 08:00,2025-09-29 17:00,2025-11-20 17:00,2025-11-20 17:00,2025-11-25 10:00,2025-11-25 10:00,0,8,100
FAB126509A-04,INSTALL DOOR & HARDWARE - FAB126509A,Not Started,PR Lifter Rm - 2F -SUE-FAB126509,,,,,,,,,,2025-11-21 08:00,2025-11-27 17:00,,,2025-11-21 08:00,2025-11-27 17:00,2025-11-25 10:00,2025-12-02 10:00,40,40,0
FAB126509A-05,PAINT & PROTECT DOORS & FRAMES -  FAB126509A,Not Started,PR Lifter Rm - 2F -SUE-FAB126509,,,,,,,,,,2026-02-16 08:00,2026-02-19 15:00,,,2026-02-16 08:00,2026-02-19 15:00,2025-12-02 10:00,2025-12-05 17:00,30,30,0
ZX-4420,Complete Drywall & Inspect - Duct Shaft - 3F-SUE-FAB136405,Complete,Duct Shaft - 3F -SUE-FAB136405,,,,,,,,,,2025-11-03 08:00,2025-11-11 17:00,2025-11-03 08:00,2025-11-07 17:00,2025-11-20 17:00,2025-11-20 17:00,2025-12-05 17:00,2025-12-05 17:00,0,56,100
ZX-4430,Complete Fire Caulk & Inspect - Duct Shaft - 3F-SUE-FAB136405,Complete,Duct Shaft - 3F -SUE-FAB136405,,,,,,,,,,2025-11-06 08:00,2025-11-07 17:00,2025-11-06 08:00,2025-11-07 17:00,2025-11-20 17:00,2025-11-20 17:00,2025-12-05 17:00,2025-12-05 17:00,0,16,100
ZX-4440,Complete Control Joint & Inspect - Duct Shaft - 3F-SUE-FAB136405,Complete,Duct Shaft - 3F -SUE-FAB136405,,,,,,,,,,2025-11-06 08:00,2025-11-07 17:00,2025-11-06 08:00,2025-11-07 17:00,2025-11-20 17:00,2025-11-20 17:00,2025-12-05 17:00,2025-12-05 17:00,0,16,100
ZX-4510,Complete Drywall & Inspect - Fire Alarm Rm 3 - 3F-FAB130305,Complete,Fire Alarm Rm 3 - 3F -SUW-FAB130305,,,,,,,,,,2025-09-03 08:00,2025-09-05 17:00,2025-09-03 08:00,2025-09-05 17:00,2025-11-20 17:00,2025-11-20 17:00,2025-12-05 17:00,2025-12-05 17:00,0,24,100
ZX-4520,Complete Fire Caulk & Inspect - Fire Alarm Rm 3 - 3F-FAB130305,Complete,Fire Alarm Rm 3 - 3F -SUW-FAB130305,,,,,,,,,,2025-09-05 08:00,2025-09-08 17:00,2025-09-05 08:00,2025-09-08 17:00,2025-11-20 17:00,2025-11-20 17:00,2025-12-05 17:00,2025-12-05 17:00,0,16,100
ZX-4530,Complete Control Joint & Inspect - Fire Alarm Rm 3 - 3F-FAB130305,Complete,Fire Alarm Rm 3 - 3F -SUW-FAB130305,,,,,,,,,,2025-09-12 08:00,2025-09-12 17:00,2025-09-12 08:00,2025-09-12 17:00,2025-11-20 17:00,2025-11-20 17:00,2025-12-05 17:00,2025-12-05 17:00,0,8,100
FAB130305A-01,IMPACT - INSTALL/REWORK DRYWALL FRAMING AROUND DOORS - FAB130305A,Complete,Fire Alarm Rm 3 - 3F -SUW-FAB130305,,,,,,,,,,2025-03-27 08:00,2025-04-04 17:00,2025-03-27 08:00,2025-04-03 17:00,2025-11-20 17:00,2025-11-20 17:00,2025-11-25 10:00,2025-11-25 10:00,0,56,100
FAB130305A-02,SECAI ROUGH IN/SECURITY - FAB130305A,Complete,Fire Alarm Rm 3 - 3F -SUW-FAB130305,,,,,,,,,,2025-04-03 08:00,2025-04-03 17:00,2025-04-03 08:00,2025-04-03 17:00,2025-11-20 17:00,2025-11-20 17:00,2025-11-25 10:00,2025-11-25 10:00,0,8,100
FAB130305A-03,INSTALL DOOR FRAMES - FAB130305A,Complete,Fire Alarm Rm 3 - 3F -SUW-FAB130305,,,,,,,,,,2025-06-27 13:00,2025-06-30 12:00,2025-04-03 00:00,2025-04-03 12:00,2025-11-20 17:00,2025-11-20 17:00,2025-11-25 10:00,2025-11-25 10:00,0,8,100
FAB130305A-04,INSTALL DOOR & HARDWARE - FAB130305A,Active,Fire Alarm Rm 3 - 3F -SUW-FAB130305,,,,,,,,,,2025-10-21 08:00,2025-10-27 17:00,2025-10-21 08:00,,2025-11-21 08:00,2025-11-27 17:00,2025-11-25 10:00,2025-12-02 10:00,40,40,0
FAB130305A-05,PAINT & PROTECT DOORS & FRAMES - FAB130305A,Not Started,Fire Alarm Rm 3 - 3F -SUW-FAB130305,,,,,,,,,,2026-02-16 08:00,2026-02-19 15:00,,,2026-02-16 08:00,2026-02-19 15:00,2025-12-02 10:00,2025-12-05 17:00,30,30,0
ZX-4450,Complete Drywall & Inspect - Fire Alarm Rm 1 - 3F-FAB130105,Complete,Fire Alarm Rm 1 - 3F -SUW-FAB130105,,,,,,,,,,2025-07-21 08:00,2025-07-29 17:00,2024-08-12 08:00,2024-08-20 16:00,2025-11-20 17:00,2025-11-20 17:00,2025-12-03 17:00,2025-12-03 17:00,0,56,100
ZX-4460,Complete Fire Caulk & Inspect - Fire Alarm Rm 1 - 3F-FAB130105,Complete,Fire Alarm Rm 1 - 3F -SUW-FAB130105,,,,,,,,,,2025-09-29 08:00,2025-09-29 17:00,2025-09-29 08:00,2025-09-29 17:00,2025-11-20 17:00,2025-11-20 17:00,2025-12-05 17:00,2025-12-05 17:00,0,8,100
ZX-4470,Complete Control Joint & Inspect - Fire Alarm Rm 1 - 3F-FAB130105,Complete,Fire Alarm Rm 1 - 3F -SUW-FAB130105,,,,,,,,,,2025-07-30 08:00,2025-07-31 17:00,2024-08-21 08:00,2024-08-23 16:00,2025-11-20 17:00,2025-11-20 17:00,2025-12-03 17:00,2025-12-03 17:00,0,16,100
ZX-4480,Complete Drywall & Inspect - IT/Security 1 - 3F-FAB130109,Complete,IT/Security 1- 3F -SUW-FAB130109,,,,,,,,,,2024-11-11 08:00,2024-11-19 17:00,2024-11-11 08:00,2024-11-21 16:00,2025-11-20 17:00,2025-11-20 17:00,2025-12-05 17:00,2025-12-05 17:00,0,56,100
ZX-4490,Complete Fire Caulk & Inspect - IT/Security 1 - 3F-FAB130109,Complete,IT/Security 1- 3F -SUW-FAB130109,,,,,,,,,,2025-09-05 08:00,2025-09-08 17:00,2025-09-05 08:00,2025-09-08 17:00,2025-11-20 17:00,2025-11-20 17:00,2025-12-05 17:00,2025-12-05 17:00,0,16,100
ZX-4500,Complete Control Joint & Inspect - IT/Security 1 - 3F-FAB130109,Complete,IT/Security 1- 3F -SUW-FAB130109,,,,,,,,,,2025-10-29 08:00,2025-10-29 17:00,2025-10-29 08:00,2025-10-29 17:00,2025-11-20 17:00,2025-11-20 17:00,2025-12-05 17:00,2025-12-05 17:00,0,8,100
ZX-5770,Complete Drywall & Inspect - D-G/33 - 3F-SECAI refuse to remove the panels - HANDED OVER DUE TO REFUSUAL,Complete,D-G/33 - 3F - FAB,,,,,,,,,,2025-09-23 08:00,2025-09-29 17:00,2025-09-29 08:00,2025-09-29 17:00,2025-11-20 17:00,2025-11-20 17:00,2025-12-05 17:00,2025-12-05 17:00,0,40,100
ZX-5780,Complete Fire Caulk & Inspect - D-G/33 - 3F-SECAI refuse to remove the panels - HANDED OVER DUE TO REFUSUAL,Complete,D-G/33 - 3F - FAB,,,,,,,,,,2025-07-29 08:00,2025-08-07 17:00,2025-06-12 08:00,2025-06-28 16:00,2025-11-20 17:00,2025-11-20 17:00,2025-12-05 17:00,2025-12-05 17:00,0,64,100
ZX-5790,Complete Control Joint & Inspect - D-G/33 - 3F-SECAI refuse to remove the panels - HANDED OVER DUE TO REFUSUAL,Complete,D-G/33 - 3F - FAB,,,,,,,,,,2025-08-08 08:00,2025-08-11 17:00,2025-06-12 08:00,2025-09-29 08:00,2025-11-20 17:00,2025-11-20 17:00,2025-12-05 17:00,2025-12-05 17:00,0,16,100
ZX-16460,IMPACT - Complete Drywall & Inspect - D-G/33 - 3F-SECAI refuse to remove the panels - HANDED OVER DUE TO REFUSUAL,Complete,D-G/33 - 3F - FAB,,,,,,,,,,2025-05-05 08:00,2025-05-30 17:00,2025-05-05 08:00,2025-09-29 17:00,2025-11-20 17:00,2025-11-20 17:00,2025-12-05 17:00,2025-12-05 17:00,0,160,100
ZX-16470,IMPACT - Complete Control Joint & Inspect - D-G/33 - 3F SAFETY ISSUES WITH ACCESS,Complete,D-G/33 - 3F - FAB,,,,,,,,,,2025-05-05 08:00,2025-05-16 17:00,2025-05-05 08:00,2025-06-11 16:00,2025-11-20 17:00,2025-11-20 17:00,2025-12-05 17:00,2025-12-05 17:00,0,80,100
ZX-10450,Complete Drywall & Inspect - IT/Security 20 - 3F-TR-FAB136306,Complete,IT/Security 20 - 3F -SUE-TR-FAB136306,,,,,,,,,,2024-08-05 08:00,2024-08-06 17:00,2024-08-05 08:00,2024-08-09 16:00,2025-11-20 17:00,2025-11-20 17:00,2025-11-25 10:00,2025-11-25 10:00,0,16,100
ZX-10460,Complete Fire Caulk & Inspect - IT/Security 20 - 3F-TR-FAB136306,Complete,IT/Security 20 - 3F -SUE-TR-FAB136306,,,,,,,,,,2025-07-18 08:00,2025-07-21 17:00,2024-08-12 08:00,2024-08-14 16:00,2025-11-20 17:00,2025-11-20 17:00,2025-12-05 17:00,2025-12-05 17:00,0,16,100
ZX-10470,Complete Control Joint & Inspect - IT/Security 20 - 3F-TR-FAB136306,Complete,IT/Security 20 - 3F -SUE-TR-FAB136306,,,,,,,,,,2025-07-18 08:00,2025-07-21 17:00,2024-08-12 08:00,2024-08-14 16:00,2025-11-20 17:00,2025-11-20 17:00,2025-11-25 10:00,2025-11-25 10:00,0,16,100
TR-FAB136306A-01,IMPACT - INSTALL/REWORK DRYWALL FRAMING AROUND DOORS - TR - FAB136306A,Complete,IT/Security 20 - 3F -SUE-TR-FAB136306,,,,,,,,,,2025-01-09 08:00,2025-01-17 17:00,2025-01-09 08:00,2025-01-17 17:00,2025-11-20 17:00,2025-11-20 17:00,2025-11-25 10:00,2025-11-25 10:00,0,56,100
TR-FAB136306A-02,SECAI ROUGH IN/SECURITY -  TR - FAB136306A,Complete,IT/Security 20 - 3F -SUE-TR-FAB136306,,,,,,,,,,2025-01-17 08:00,2025-01-17 17:00,2025-01-17 08:00,2025-01-17 17:00,2025-11-20 17:00,2025-11-20 17:00,2025-11-25 10:00,2025-11-25 10:00,0,8,100
TR-FAB136306A-03,INSTALL DOOR FRAMES - TR - FAB136306A,Complete,IT/Security 20 - 3F -SUE-TR-FAB136306,,,,,,,,,,2025-01-17 08:00,2025-01-17 17:00,2025-01-17 08:00,2025-01-17 17:00,2025-11-20 17:00,2025-11-20 17:00,2025-11-25 10:00,2025-11-25 10:00,0,8,100
TR-FAB136306A-04,INSTALL DOOR & HARDWARE - TR - FAB136306A,Not Started,IT/Security 20 - 3F -SUE-TR-FAB136306,,,,,,,,,,2025-11-21 08:00,2025-11-27 17:00,,,2025-11-21 08:00,2025-11-27 17:00,2025-11-25 10:00,2025-12-02 10:00,40,40,0
TR-FAB136306A-05,PAINT & PROTECT DOORS & FRAMES -  TR - FAB136306A,Not Started,IT/Security 20 - 3F -SUE-TR-FAB136306,,,,,,,,,,2026-02-16 08:00,2026-02-19 15:00,,,2026-02-16 08:00,2026-02-19 15:00,2025-12-02 10:00,2025-12-05 17:00,30,30,0
ZX-16180,Complete Drywall & Inspect - Clean Toilet (M) 1 - 3F-FAB130317,Complete,Clean Toilet (M) 1- 3F -SUW-FAB130317,,,,,,,,,,2025-06-10 10:00,2025-06-26 10:00,2025-05-26 10:00,2025-06-05 10:00,2025-11-20 17:00,2025-11-20 17:00,2025-11-25 08:00,2025-11-25 08:00,0,96,100
ZX-16200,Complete Control Joint & Inspect - Clean Toilet (M) 1 - 3F-FAB130317,Complete,Clean Toilet (M) 1- 3F -SUW-FAB130317,,,,,,,,,,2025-07-16 10:00,2025-07-18 10:00,2025-06-06 10:00,2025-06-07 10:00,2025-11-20 17:00,2025-11-20 17:00,2025-11-25 08:00,2025-11-25 08:00,0,16,100
FAB130317A-02,SECAI ROUGH IN/SECURITY - FAB130317A,Complete,Clean Toilet (M) 1- 3F -SUW-FAB130317,,,,,,,,,,2025-07-11 08:00,2025-07-11 17:00,2025-05-11 08:00,2025-05-11 16:00,2025-11-20 17:00,2025-11-20 17:00,2025-11-25 10:00,2025-11-25 10:00,0,8,100
FAB130317A-03,INSTALL DOOR FRAMES - FAB130317A,Complete,Clean Toilet (M) 1- 3F -SUW-FAB130317,,,,,,,,,,2025-07-09 13:00,2025-07-10 12:00,2025-05-11 00:00,2025-05-12 16:00,2025-11-20 17:00,2025-11-20 17:00,2025-11-25 10:00,2025-11-25 10:00,0,8,100
FAB130317A-04,INSTALL DOOR & HARDWARE - FAB130317A,Active,Clean Toilet (M) 1- 3F -SUW-FAB130317,,,,,,,,,,2025-11-13 08:00,2025-11-19 17:00,2025-11-13 08:00,,2025-11-21 08:00,2025-11-27 17:00,2025-11-25 10:00,2025-12-02 10:00,40,40,0
FAB130317A-05,PAINT & PROTECT DOORS & FRAMES - FAB130317A,Not Started,Clean Toilet (M) 1- 3F -SUW-FAB130317,,,,,,,,,,2026-02-16 08:00,2026-02-19 15:00,,,2026-02-16 08:00,2026-02-19 15:00,2025-12-02 10:00,2025-12-05 17:00,30,30,0
ZX-16210,Complete Drywall & Inspect - Clean Toilet (W) 1 - 3F-FAB130316,Complete,Clean Toilet (W) 1 - 3F -SUW-FAB130316,,,,,,,,,,2025-06-12 08:00,2025-06-20 17:00,2025-05-06 08:00,2025-05-23 16:00,2025-11-20 17:00,2025-11-20 17:00,2025-11-25 08:00,2025-11-25 08:00,0,56,100
ZX-16230,Complete Control Joint & Inspect - Clean Toilet (W) 1 - 3F-FAB130316,Complete,Clean Toilet (W) 1 - 3F -SUW-FAB130316,,,,,,,,,,2025-05-30 08:00,2025-06-02 17:00,2025-05-23 08:00,2025-05-24 16:00,2025-11-20 17:00,2025-11-20 17:00,2025-11-25 08:00,2025-11-25 08:00,0,16,100
FAB130316A-01,IMPACT - INSTALL/REWORK DRYWALL FRAMING AROUND DOORS- FAB130316A,Complete,Clean Toilet (W) 1 - 3F -SUW-FAB130316,,,,,,,,,,2025-06-06 08:00,2025-06-16 17:00,2025-05-06 08:00,2025-05-06 16:00,2025-11-20 17:00,2025-11-20 17:00,2025-11-25 08:00,2025-11-25 08:00,0,56,100
FAB130316A-02,SECAI ROUGH IN/SECURITY - FAB130316A,Complete,Clean Toilet (W) 1 - 3F -SUW-FAB130316,,,,,,,,,,2025-06-06 08:00,2025-06-06 17:00,2025-05-06 08:00,2025-05-06 16:00,2025-11-20 17:00,2025-11-20 17:00,2025-11-25 08:00,2025-11-25 08:00,0,8,100
FAB130316A-03,INSTALL DOOR FRAMES - FAB130316A,Complete,Clean Toilet (W) 1 - 3F -SUW-FAB130316,,,,,,,,,,2025-06-24 13:00,2025-06-25 12:00,2025-05-06 00:00,2025-05-06 12:00,2025-11-20 17:00,2025-11-20 17:00,2025-11-25 08:00,2025-11-25 08:00,0,8,100
FAB130316A-04,INSTALL DOOR & HARDWARE - FAB130316A,Active,Clean Toilet (W) 1 - 3F -SUW-FAB130316,,,,,,,,,,2025-06-10 08:00,2025-06-16 17:00,2025-06-10 08:00,,2025-11-21 08:00,2025-11-27 17:00,2025-11-25 08:00,2025-12-01 17:00,40,40,0
FAB130316A-05,PAINT & PROTECT DOORS & FRAMES - FAB130316A,Not Started,Clean Toilet (W) 1 - 3F -SUW-FAB130316,,,,,,,,,,2026-02-16 08:00,2026-02-19 17:00,,,2026-02-16 08:00,2026-02-19 17:00,2025-12-02 08:00,2025-12-05 17:00,32,32,0
ZX-16240,Complete Drywall & Inspect - Airlock 18 - 3F-FAB136506,Complete,Air Lock 18 - 3F -SUE-FAB136506,,,,,,,,,,2025-05-05 08:00,2025-05-07 17:00,2025-05-05 08:00,2025-05-13 16:00,2025-11-20 17:00,2025-11-20 17:00,2025-12-05 17:00,2025-12-05 17:00,0,24,100
ZX-16250,Complete Fire Caulk & Inspect - Airlock #18 - 3F-FAB136506-1 - DESCOPED,Complete,Air Lock 18 - 3F -SUE-FAB136506,,,,,,,,,,2025-06-10 08:00,2025-06-19 17:00,2025-05-28 08:00,2025-06-06 16:00,2025-11-20 17:00,2025-11-20 17:00,2025-12-05 17:00,2025-12-05 17:00,0,64,100
ZX-16260,Complete Control Joint & Inspect - Airlock #18 - 3F-FAB136506,Complete,Air Lock 18 - 3F -SUE-FAB136506,,,,,,,,,,2025-05-06 08:00,2025-05-07 17:00,2025-05-08 08:00,2025-05-30 08:00,2025-11-20 17:00,2025-11-20 17:00,2025-12-05 17:00,2025-12-05 17:00,0,16,100
ZX-16410,IMPACT - SCAFFOLD NEED TO BE REMOVED - Complete Control Joint & Inspect - Airlock 18 - 3F-FAB136506,Complete,Air Lock 18 - 3F -SUE-FAB136506,,,,,,,,,,2025-05-08 08:00,2025-05-09 17:00,2025-05-08 08:00,2025-05-28 16:00,2025-11-20 17:00,2025-11-20 17:00,2025-12-05 17:00,2025-12-05 17:00,0,16,100
ZX-16270,Complete Drywall & Inspect - CRT Airlock - 3F-FAB130506,Complete,CRT Air Lock - 3F -SUW-FAB130506,,,,,,,,,,2025-07-09 08:00,2025-07-17 17:00,2025-06-19 08:00,2025-08-12 08:00,2025-11-20 17:00,2025-11-20 17:00,2025-11-24 10:00,2025-11-24 10:00,0,56,100
ZX-16290,Complete Control Joint & Inspect - CRT Airlock - 3F-FAB130506,Complete,CRT Air Lock - 3F -SUW-FAB130506,,,,,,,,,,2025-09-12 08:00,2025-09-12 17:00,2025-09-12 08:00,2025-09-12 17:00,2025-11-20 17:00,2025-11-20 17:00,2025-11-24 10:00,2025-11-24 10:00,0,8,100
ZX-16310,IMPACT - BUCKHOIST REMOVAL - 5/30-CRT Airlock - 3F-FAB130506,Complete,CRT Air Lock - 3F -SUW-FAB130506,,,,,,,,,,2025-05-06 14:00,2025-06-03 14:00,2025-05-06 14:00,2025-06-18 16:00,2025-11-20 17:00,2025-11-20 17:00,2025-11-24 10:00,2025-11-24 10:00,0,160,100
ZX-16650,Complete Drywall & Inspect - Stair #02 SUW- 3F- FAB1-ST02,Complete,Stair 2 - 3F-SUW-FAB1-ST02,,,,,,,,,,2025-05-13 08:00,2025-05-26 17:00,2025-05-13 08:00,2025-08-18 17:00,2025-11-20 17:00,2025-11-20 17:00,2025-11-18 08:00,2025-11-18 08:00,0,80,100
ZX-16660,SECAI TOOK OVER FOR ACCELERATION - Complete Fire Caulk & Inspect - Stair #02 SUW- 3F- FAB1-ST02,Complete,Stair 2 - 3F-SUW-FAB1-ST02,,,,,,,,,,2025-08-18 08:00,2025-08-18 17:00,2025-08-18 08:00,2025-08-18 17:00,2025-11-20 17:00,2025-11-20 17:00,2025-12-05 17:00,2025-12-05 17:00,0,8,100
ZX-16670,Complete Control Joint & Inspect - Stair #02 SUW- 3F- FAB1-ST02,Complete,Stair 2 - 3F-SUW-FAB1-ST02,,,,,,,,,,2025-08-18 08:00,2025-08-18 17:00,2025-08-18 08:00,2025-08-18 17:00,2025-11-20 17:00,2025-11-20 17:00,2025-12-05 17:00,2025-12-05 17:00,0,8,100
ZX-16710,Complete Drywall CEILING & Inspect - Stair #02 SUW- 3F- FAB1-ST02,Complete,Stair 2 - 3F-SUW-FAB1-ST02,,,,,,,,,,2025-07-16 08:00,2025-07-29 17:00,2025-06-09 08:00,2025-06-30 16:00,2025-11-20 17:00,2025-11-20 17:00,2025-12-05 17:00,2025-12-05 17:00,0,80,100
ZX-17960,IMPACT - ONGOING WORK INSIDE CHASE - Stair #02 SUW- 3F- FAB1-ST02,Complete,Stair 2 - 3F-SUW-FAB1-ST02,,,,,,,,,,2025-05-13 08:00,2025-05-26 17:00,2025-05-13 08:00,2025-08-08 08:00,2025-11-20 17:00,2025-11-20 17:00,2025-11-18 08:00,2025-11-18 08:00,0,80,100
FAB1-ST02C-03,INSTALL DOOR FRAMES - FAB1-ST02C,Complete,Stair 2 - 3F-SUW-FAB1-ST02,,,,,,,,,,2025-07-01 08:00,2025-07-01 17:00,2025-07-01 08:00,2025-07-01 16:00,2025-11-20 17:00,2025-11-20 17:00,2025-11-18 08:00,2025-11-18 08:00,0,8,100
FAB1-ST02C-04,INSTALL DOOR & HARDWARE - FAB1-ST02C,Active,Stair 2 - 3F-SUW-FAB1-ST02,,,,,,,,,,2025-11-12 08:00,2025-11-18 17:00,2025-11-12 08:00,,2025-11-21 08:00,2025-11-27 17:00,2025-11-18 08:00,2025-11-24 17:00,40,40,0
FAB1-ST02C-05,PAINT & PROTECT DOORS & FRAMES - FAB1-ST02C,Not Started,Stair 2 - 3F-SUW-FAB1-ST02,,,,,,,,,,2026-02-16 08:00,2026-02-20 17:00,,,2026-02-16 08:00,2026-02-20 17:00,2025-12-01 08:00,2025-12-05 17:00,40,40,0
FAB1-ST02D-04,INSTALL DOOR & HARDWARE - FAB1-ST02D-03,Not Started,Stair 2 - 3F-SUW-FAB1-ST02,,,,,,,,,,2025-11-28 08:00,2025-12-04 17:00,,,2025-11-28 08:00,2025-12-04 17:00,2025-11-25 08:00,2025-12-01 17:00,40,40,0
FAB1-ST02D-05,PAINT & PROTECT DOORS & FRAMES - FAB1-ST02D-03,Not Started,Stair 2 - 3F-SUW-FAB1-ST02,,,,,,,,,,2026-02-16 08:00,2026-02-19 17:00,,,2026-02-16 08:00,2026-02-19 17:00,2025-12-02 08:00,2025-12-05 17:00,32,32,0
FAB1-ST02D-03,INSTALL DOOR FRAMES - FAB1-ST02D-03,Complete,Stair 2 - 3F-SUW-FAB1-ST02,,,,,,,,,,2025-08-06 08:00,2025-08-06 17:00,2025-08-06 08:00,2025-08-06 17:00,2025-11-20 17:00,2025-11-20 17:00,2025-11-25 08:00,2025-11-25 08:00,0,8,100
FAB1-ST02D-60,IMPACT - RUST REMEDIATION - FAB1-ST02D-03,Complete,Stair 2 - 3F-SUW-FAB1-ST02,,,,,,,,,,2025-07-01 08:00,2025-07-09 17:00,2025-07-01 08:00,2025-08-05 17:00,2025-11-20 17:00,2025-11-20 17:00,2025-11-25 08:00,2025-11-25 08:00,0,56,100
ZX-16850,Complete Drywall & Inspect - Stair #03 SUW- 3F- FAB1-ST03,Complete,Stair 3 - 3F- SUW-FAB1-ST03,,,,,,,,,,2025-05-13 08:00,2025-05-26 17:00,2025-05-13 08:00,2025-10-13 17:00,2025-11-20 17:00,2025-11-20 17:00,2025-12-05 17:00,2025-12-05 17:00,0,80,100
ZX-16860,Complete Fire Caulk & Inspect - Stair #03 SUW- 3F- FAB1-ST03,Complete,Stair 3 - 3F- SUW-FAB1-ST03,,,,,,,,,,2025-10-13 08:00,2025-10-14 17:00,2025-10-13 08:00,2025-10-14 17:00,2025-11-20 17:00,2025-11-20 17:00,2025-12-05 17:00,2025-12-05 17:00,0,16,100
ZX-16870,Complete Control Joint & Inspect - Stair #03 SUW- 3F- FAB1-ST03,Complete,Stair 3 - 3F- SUW-FAB1-ST03,,,,,,,,,,2025-10-10 08:00,2025-10-13 17:00,2025-10-10 08:00,2025-10-13 17:00,2025-11-20 17:00,2025-11-20 17:00,2025-12-05 17:00,2025-12-05 17:00,0,16,100
ZX-17970,IMPACT - ONGOING WORK INSIDE CHASE - Stair #03 SUW- 3F- FAB1-ST03,Complete,Stair 3 - 3F- SUW-FAB1-ST03,,,,,,,,,,2025-05-13 08:00,2025-05-26 17:00,2025-05-13 08:00,2025-10-10 17:00,2025-11-20 17:00,2025-11-20 17:00,2025-12-05 17:00,2025-12-05 17:00,0,80,100
ZX-18320,IMPACT - SECAI OPENED STAIRS - Stair #03 SUW- 3F- FAB1-ST03,Complete,Stair 3 - 3F- SUW-FAB1-ST03,,,,,,,,,,2025-06-04 08:00,2025-07-07 17:00,2025-06-04 08:00,2025-09-19 08:00,2025-11-20 17:00,2025-11-20 17:00,2025-12-05 17:00,2025-12-05 17:00,0,192,100
ZX-18490,IMPACT - SECAI ISSUED STOP WORK NOTICE,Complete,Stair 3 - 3F- SUW-FAB1-ST03,,,,,,,,,,2025-06-12 08:00,2025-06-25 17:00,2025-06-12 08:00,2025-09-19 08:00,2025-11-20 17:00,2025-11-20 17:00,2025-12-05 17:00,2025-12-05 17:00,0,80,100
FAB1-ST03C-01,IMPACT - INSTALL/REWORK DRYWALL FRAMING AROUND DOORS - FAB1-ST03C,Complete,Stair 3 - 3F- SUW-FAB1-ST03,,,,,,,,,,2025-04-01 08:00,2025-04-09 17:00,2025-04-01 08:00,2025-04-07 17:00,2025-11-20 17:00,2025-11-20 17:00,2025-11-25 08:00,2025-11-25 08:00,0,56,100
FAB1-ST03C-02,SECAI ROUGH IN/SECURITY - FAB1-ST03C,Complete,Stair 3 - 3F- SUW-FAB1-ST03,,,,,,,,,,2025-04-07 08:00,2025-04-07 17:00,2025-04-07 08:00,2025-04-07 17:00,2025-11-20 17:00,2025-11-20 17:00,2025-11-25 08:00,2025-11-25 08:00,0,8,100
FAB1-ST03C-03,INSTALL DOOR FRAMES - FAB1-ST03C,Complete,Stair 3 - 3F- SUW-FAB1-ST03,,,,,,,,,,2025-04-07 08:00,2025-04-07 17:00,2025-04-07 08:00,2025-04-07 17:00,2025-11-20 17:00,2025-11-20 17:00,2025-11-25 08:00,2025-11-25 08:00,0,8,100
FAB1-ST03C-04,INSTALL DOOR & HARDWARE - FAB1-ST03C,Not Started,Stair 3 - 3F- SUW-FAB1-ST03,,,,,,,,,,2025-11-28 08:00,2025-12-04 17:00,,,2025-11-28 08:00,2025-12-04 17:00,2025-11-25 08:00,2025-12-01 17:00,40,40,0
FAB1-ST03C-05,PAINT & PROTECT DOORS & FRAMES - FAB1-ST03C,Not Started,Stair 3 - 3F- SUW-FAB1-ST03,,,,,,,,,,2026-02-16 08:00,2026-02-19 17:00,,,2026-02-16 08:00,2026-02-19 17:00,2025-12-02 08:00,2025-12-05 17:00,32,32,0
ZX-16880,Complete Drywall & Inspect - Stair #20 SUE- 3F- FAB1-ST20,Complete,Stair 20 - 3F -SUE-FAB1-ST20,,,,,,,,,,2025-05-13 08:00,2025-05-19 17:00,2025-05-13 08:00,2025-10-06 17:00,2025-11-20 17:00,2025-11-20 17:00,2025-12-05 17:00,2025-12-05 17:00,0,40,100
ZX-16890,Complete Fire Caulk & Inspect - Stair #20 SUE- 3F- FAB1-ST20,Complete,Stair 20 - 3F -SUE-FAB1-ST20,,,,,,,,,,2025-10-06 08:00,2025-10-07 17:00,2025-10-06 08:00,2025-10-07 17:00,2025-11-20 17:00,2025-11-20 17:00,2025-12-05 17:00,2025-12-05 17:00,0,16,100
ZX-16900,Complete Control Joint & Inspect - Stair #20 SUE- 3F- FAB1-ST20,Complete,Stair 20 - 3F -SUE-FAB1-ST20,,,,,,,,,,2025-10-03 08:00,2025-10-06 17:00,2025-10-03 08:00,2025-10-06 17:00,2025-11-20 17:00,2025-11-20 17:00,2025-12-05 17:00,2025-12-05 17:00,0,16,100
ZX-17940,IMPACT - ONGOING WORK INSIDE CHASE - Stair #20 SUE- 3F- FAB1-ST20,Complete,Stair 20 - 3F -SUE-FAB1-ST20,,,,,,,,,,2025-05-13 08:00,2025-05-19 17:00,2025-05-13 08:00,2025-10-06 17:00,2025-11-20 17:00,2025-11-20 17:00,2025-12-05 17:00,2025-12-05 17:00,0,40,100
ZX-18470,IMPACT - SECAI ISSUED STOP WORK NOTICE,Complete,Stair 20 - 3F -SUE-FAB1-ST20,,,,,,,,,,2025-06-12 08:00,2025-06-25 17:00,2025-06-12 08:00,2025-09-10 17:00,2025-11-20 17:00,2025-11-20 17:00,2025-12-05 17:00,2025-12-05 17:00,0,80,100
FAB1-ST20C-01,IMPACT - INSTALL/REWORK DRYWALL FRAMING AROUND DOORS - FAB1-ST20C,Complete,Stair 20 - 3F -SUE-FAB1-ST20,,,,,,,,,,2025-09-09 08:00,2025-09-10 17:00,2025-09-09 08:00,2025-09-10 17:00,2025-11-20 17:00,2025-11-20 17:00,2025-11-24 08:00,2025-11-24 08:00,0,16,100
FAB1-ST20C-02,SECAI ROUGH IN/SECURITY - FAB1-ST20C,Complete,Stair 20 - 3F -SUE-FAB1-ST20,,,,,,,,,,2025-09-10 08:00,2025-09-10 17:00,2025-09-10 08:00,2025-09-10 17:00,2025-11-20 17:00,2025-11-20 17:00,2025-11-24 08:00,2025-11-24 08:00,0,8,100
FAB1-ST20C-03,INSTALL DOOR FRAMES - FAB1-ST20C,Complete,Stair 20 - 3F -SUE-FAB1-ST20,,,,,,,,,,2025-09-10 08:00,2025-09-10 17:00,2025-09-10 08:00,2025-09-10 17:00,2025-11-20 17:00,2025-11-20 17:00,2025-11-24 08:00,2025-11-24 08:00,0,8,100
FAB1-ST20C-04,INSTALL DOOR & HARDWARE - FAB1-ST20C,Active,Stair 20 - 3F -SUE-FAB1-ST20,,,,,,,,,,2025-11-18 08:00,2025-11-24 17:00,2025-11-18 08:00,,2025-11-21 08:00,2025-11-27 17:00,2025-11-24 08:00,2025-11-28 17:00,40,40,0
FAB1-ST20C-05,PAINT & PROTECT DOORS & FRAMES - FAB1-ST20C,Not Started,Stair 20 - 3F -SUE-FAB1-ST20,,,,,,,,,,2026-02-16 08:00,2026-02-20 17:00,,,2026-02-16 08:00,2026-02-20 17:00,2025-12-01 08:00,2025-12-05 17:00,40,40,0
ZX-17010,Complete Drywall & Inspect - Stair #21 SUE- 3F- FAB1-ST21,Complete,Stair 21 - 3F-SUE-FAB1-ST21,,,,,,,,,,2025-05-13 08:00,2025-05-26 17:00,2025-05-13 08:00,2025-08-18 17:00,2025-11-20 17:00,2025-11-20 17:00,2025-12-05 17:00,2025-12-05 17:00,0,80,100
ZX-17020,SECAI TOOK OVER FOR ACCELERATION - Complete Fire Caulk & Inspect - Stair #21 SUE- 3F- FAB1-ST21,Complete,Stair 21 - 3F-SUE-FAB1-ST21,,,,,,,,,,2025-08-18 08:00,2025-08-18 17:00,2025-08-18 08:00,2025-08-18 17:00,2025-11-20 17:00,2025-11-20 17:00,2025-12-05 17:00,2025-12-05 17:00,0,8,100
ZX-17030,Complete Control Joint & Inspect - Stair #21 SUE- 3F- FAB1-ST21,Complete,Stair 21 - 3F-SUE-FAB1-ST21,,,,,,,,,,2025-08-15 08:00,2025-08-18 17:00,2025-08-15 08:00,2025-08-18 17:00,2025-11-20 17:00,2025-11-20 17:00,2025-12-05 17:00,2025-12-05 17:00,0,16,100
ZX-17040,Complete Drywall CEILING & Inspect - Stair #21 SUE- 3F- FAB1-ST21,Complete,Stair 21 - 3F-SUE-FAB1-ST21,,,,,,,,,,2025-08-05 08:00,2025-08-18 17:00,2025-08-05 08:00,2025-08-18 17:00,2025-11-20 17:00,2025-11-20 17:00,2025-12-05 17:00,2025-12-05 17:00,0,80,100
ZX-17540,IMPACT RFI Drywall CEILING - Stair #21,Complete,Stair 21 - 3F-SUE-FAB1-ST21,,,,,,,,,,2025-05-30 08:00,2025-06-05 17:00,2025-05-26 08:00,2025-05-30 16:00,2025-11-20 17:00,2025-11-20 17:00,2025-12-05 17:00,2025-12-05 17:00,0,40,100
ZX-17950,IMPACT - ONGOING WORK INSIDE CHASE - Stair #21 SUE- 3F- FAB1-ST21,Complete,Stair 21 - 3F-SUE-FAB1-ST21,,,,,,,,,,2025-05-13 08:00,2025-05-26 17:00,2025-05-13 08:00,2025-08-08 17:00,2025-11-20 17:00,2025-11-20 17:00,2025-12-05 17:00,2025-12-05 17:00,0,80,100
FAB1-ST21C-01,IMPACT - INSTALL/REWORK DRYWALL FRAMING AROUND DOORS - FAB1-ST21C,Complete,Stair 21 - 3F-SUE-FAB1-ST21,,,,,,,,,,2025-02-05 08:00,2025-02-13 17:00,2025-02-05 08:00,2025-02-13 17:00,2025-11-20 17:00,2025-11-20 17:00,2025-11-24 08:00,2025-11-24 08:00,0,56,100
FAB1-ST21C-02,SECAI ROUGH IN/SECURITY - FAB1-ST21C,Complete,Stair 21 - 3F-SUE-FAB1-ST21,,,,,,,,,,2025-02-13 08:00,2025-02-13 17:00,2025-02-13 08:00,2025-02-13 17:00,2025-11-20 17:00,2025-11-20 17:00,2025-11-24 08:00,2025-11-24 08:00,0,8,100
FAB1-ST21C-03,INSTALL DOOR FRAMES - FAB1-ST21C,Complete,Stair 21 - 3F-SUE-FAB1-ST21,,,,,,,,,,2025-02-13 08:00,2025-02-13 17:00,2025-02-13 08:00,2025-02-13 17:00,2025-11-20 17:00,2025-11-20 17:00,2025-11-24 08:00,2025-11-24 08:00,0,8,100
FAB1-ST21C-04,INSTALL DOOR & HARDWARE - FAB1-ST21C,Active,Stair 21 - 3F-SUE-FAB1-ST21,,,,,,,,,,2025-11-12 08:00,2025-11-18 17:00,2025-11-12 08:00,,2025-11-21 08:00,2025-11-27 17:00,2025-11-24 08:00,2025-11-28 17:00,40,40,0
FAB1-ST21C-05,PAINT & PROTECT DOORS & FRAMES - FAB1-ST21C,Not Started,Stair 21 - 3F-SUE-FAB1-ST21,,,,,,,,,,2026-02-16 08:00,2026-02-20 17:00,,,2026-02-16 08:00,2026-02-20 17:00,2025-12-01 08:00,2025-12-05 17:00,40,40,0
FAB1-ST21D-03,INSTALL DOOR FRAMES - FAB1-ST21D,Complete,Stair 21 - 3F-SUE-FAB1-ST21,,,,,,,,,,2025-06-27 08:00,2025-06-27 17:00,2025-07-01 08:00,2025-07-01 08:00,2025-11-20 17:00,2025-11-20 17:00,2025-11-24 08:00,2025-11-24 08:00,0,8,100
FAB1-ST21D-04,INSTALL DOOR & HARDWARE - FAB1-ST21D,Not Started,Stair 21 - 3F-SUE-FAB1-ST21,,,,,,,,,,2025-11-21 08:00,2025-11-27 17:00,,,2025-11-21 08:00,2025-11-27 17:00,2025-11-24 08:00,2025-11-28 17:00,40,40,0
FAB1-ST21D-05,PAINT & PROTECT DOORS & FRAMES - FAB1-ST21D,Not Started,Stair 21 - 3F-SUE-FAB1-ST21,,,,,,,,,,2026-02-16 08:00,2026-02-20 17:00,,,2026-02-16 08:00,2026-02-20 17:00,2025-12-01 08:00,2025-12-05 17:00,40,40,0
ZX-17170,Complete Drywall & Inspect - Stair #04 SUW- 3F- FAB1-ST04 - MKMARLOW,Complete,Stair 4 - 3F-SUW-FAB1-ST04,,,,,,,,,,2025-06-27 08:00,2025-07-10 17:00,2025-06-27 08:00,2025-09-05 17:00,2025-11-20 17:00,2025-11-20 17:00,2025-11-25 08:00,2025-11-25 08:00,0,80,100
ZX-17180,Complete Fire Caulk & Inspect - Stair #04 SUW- 3F- FAB1-ST04 - MKMARLOW,Complete,Stair 4 - 3F-SUW-FAB1-ST04,,,,,,,,,,2025-09-29 08:00,2025-09-30 17:00,2025-09-29 08:00,2025-09-30 17:00,2025-11-20 17:00,2025-11-20 17:00,2025-12-05 17:00,2025-12-05 17:00,0,16,100
ZX-17190,Complete Control Joint & Inspect - Stair #04 SUW- 3F- FAB1-ST04 - MKMARLOW,Complete,Stair 4 - 3F-SUW-FAB1-ST04,,,,,,,,,,2025-09-04 08:00,2025-09-05 17:00,2025-09-04 08:00,2025-09-05 17:00,2025-11-20 17:00,2025-11-20 17:00,2025-11-25 08:00,2025-11-25 08:00,0,16,100
ZX-17200,Complete Drywall CEILING & Inspect - Stair #04 SUE- 3F- FAB1-ST04 - MKMARLOW,Complete,Stair 4 - 3F-SUW-FAB1-ST04,,,,,,,,,,2025-09-15 08:00,2025-09-15 08:00,2025-09-15 08:00,2025-09-15 08:00,2025-11-20 17:00,2025-11-20 17:00,2025-12-05 17:00,2025-12-05 17:00,0,0,100
FAB1-ST04C-01,IMPACT - INSTALL/REWORK DRYWALL FRAMING AROUND DOORS - FAB1-ST04C,Complete,Stair 4 - 3F-SUW-FAB1-ST04,,,,,,,,,,2025-09-04 08:00,2025-09-05 17:00,2025-09-04 08:00,2025-09-05 17:00,2025-11-20 17:00,2025-11-20 17:00,2025-11-25 08:00,2025-11-25 08:00,0,16,100
FAB1-ST04C-02,SECAI ROUGH IN/SECURITY - FAB1-ST04C,Complete,Stair 4 - 3F-SUW-FAB1-ST04,,,,,,,,,,2025-09-05 08:00,2025-09-05 17:00,2025-09-05 08:00,2025-09-05 17:00,2025-11-20 17:00,2025-11-20 17:00,2025-11-25 08:00,2025-11-25 08:00,0,8,100
FAB1-ST04C-03,INSTALL DOOR FRAMES - FAB1-ST04C,Complete,Stair 4 - 3F-SUW-FAB1-ST04,,,,,,,,,,2025-09-05 08:00,2025-09-05 17:00,2025-09-05 08:00,2025-09-05 17:00,2025-11-20 17:00,2025-11-20 17:00,2025-11-25 08:00,2025-11-25 08:00,0,8,100
FAB1-ST04C-04,INSTALL DOOR & HARDWARE - FAB1-ST04C,Active,Stair 4 - 3F-SUW-FAB1-ST04,,,,,,,,,,2025-11-12 08:00,2025-11-18 17:00,2025-11-12 08:00,,2025-11-21 08:00,2025-11-27 17:00,2025-11-25 08:00,2025-12-01 17:00,40,40,0
FAB1-ST04C-05,PAINT & PROTECT DOORS & FRAMES - FAB1-ST04C,Not Started,Stair 4 - 3F-SUW-FAB1-ST04,,,,,,,,,,2026-02-16 08:00,2026-02-19 17:00,,,2026-02-16 08:00,2026-02-19 17:00,2025-12-02 08:00,2025-12-05 17:00,32,32,0
ZX-17210,SECAI TURNOVER FOR ACELERATION - Drywall & Inspect - Stair #19 SUE- 3F- FAB1-ST19 BAKER/DESCOPE,Complete,Stair 19 - 3F -SUE-FAB1-ST19,,,,,,,,,,2025-06-10 08:00,2025-06-23 17:00,2025-06-10 08:00,2025-06-10 16:00,2025-11-20 17:00,2025-11-20 17:00,2025-12-05 17:00,2025-12-05 17:00,0,80,100
ZX-17220,SECAI TURNOVER FOR ACELERATION - Fire Caulk & Inspect - Stair #19 SUE- 3F- FAB1-ST19 BAKER DESCOPE,Complete,Stair 19 - 3F -SUE-FAB1-ST19,,,,,,,,,,2025-06-27 08:00,2025-06-30 17:00,2025-06-12 08:00,2025-06-12 16:00,2025-11-20 17:00,2025-11-20 17:00,2025-12-05 17:00,2025-12-05 17:00,0,16,100
ZX-17230,SECAI TURNOVER FOR ACELERATION - Control Joint & Inspect - Stair #19 SUE- 3F- FAB1-ST19 BAKER/DESCOPE,Complete,Stair 19 - 3F -SUE-FAB1-ST19,,,,,,,,,,2025-06-10 08:00,2025-06-11 17:00,2025-06-10 08:00,2025-06-10 16:00,2025-11-20 17:00,2025-11-20 17:00,2025-12-05 17:00,2025-12-05 17:00,0,16,100
ZX-17240,SECAI TURNOVER FOR ACELERATION - Drywall CEILING & Inspect - Stair #19 SUE- 3F- FAB1-ST19 BAKER/DESCOPE,Complete,Stair 19 - 3F -SUE-FAB1-ST19,,,,,,,,,,2025-06-10 08:00,2025-06-23 17:00,2025-06-10 08:00,2025-06-10 16:00,2025-11-20 17:00,2025-11-20 17:00,2025-12-05 17:00,2025-12-05 17:00,0,80,100
ZX-18310,SECAI TURNOVER FOR ACELERATION THE AREA - Stair #19 SUE- 3F- FAB1-ST19 BAKER/DESCOPE,Complete,Stair 19 - 3F -SUE-FAB1-ST19,,,,,,,,,,2025-06-06 08:00,2025-06-12 17:00,2025-06-10 08:00,2025-06-10 08:00,2025-11-20 17:00,2025-11-20 17:00,2025-12-05 17:00,2025-12-05 17:00,0,40,100
FAB1-ST19C-04,INSTALL DOOR & HARDWARE - FAB1-ST19C,Active,Stair 19 - 3F -SUE-FAB1-ST19,,,,,,,,,,2025-11-11 08:00,2025-11-17 17:00,2025-11-11 08:00,,2025-11-21 08:00,2025-11-27 17:00,2025-11-25 08:00,2025-12-01 17:00,40,40,0
FAB1-ST19C-05,PAINT & PROTECT DOORS & FRAMES - FAB1-ST19C,Not Started,Stair 19 - 3F -SUE-FAB1-ST19,,,,,,,,,,2026-02-16 08:00,2026-02-19 17:00,,,2026-02-16 08:00,2026-02-19 17:00,2025-12-02 08:00,2025-12-05 17:00,32,32,0
ZX-18080,Complete Drywall & Inspect - Stair #18 SUE- 3F- FAB1-ST18,Complete,Stair 18 - 3F -SUE-FAB1-ST18,,,,,,,,,,2025-09-29 08:00,2025-10-03 17:00,2025-09-29 08:00,2025-10-03 17:00,2025-11-20 17:00,2025-11-20 17:00,2025-12-05 17:00,2025-12-05 17:00,0,40,100
ZX-18090,Complete Fire Caulk & Inspect - Stair #18 SUE- 3F- FAB1-ST18,Complete,Stair 18 - 3F -SUE-FAB1-ST18,,,,,,,,,,2025-10-03 08:00,2025-10-06 17:00,2025-10-03 08:00,2025-10-06 17:00,2025-11-20 17:00,2025-11-20 17:00,2025-12-05 17:00,2025-12-05 17:00,0,16,100
ZX-18100,Complete Control Joint & Inspect - Stair #18 SUE- 3F- FAB1-ST18,Complete,Stair 18 - 3F -SUE-FAB1-ST18,,,,,,,,,,2025-10-02 08:00,2025-10-03 17:00,2025-10-02 08:00,2025-10-03 17:00,2025-11-20 17:00,2025-11-20 17:00,2025-12-05 17:00,2025-12-05 17:00,0,16,100
FAB130116A-00,SECAI SCP WALL FINISH - FAB130116A,Active,FA Lab - 3F -SUW-FAB130116,,,,,,,,,,2025-07-23 08:00,2025-07-23 17:00,2025-07-23 08:00,,2025-11-21 08:00,2025-11-28 17:00,2025-10-08 08:00,2025-10-15 17:00,48,8,0
FAB130116A-01,DOOR ASSEMBLY - FAB130116A,Not Started,FA Lab - 3F -SUW-FAB130116,,,,,,,,,,2025-12-05 08:00,2025-12-08 17:00,,,2025-12-05 08:00,2025-12-08 17:00,2025-11-20 08:00,2025-11-21 17:00,16,16,0
FAB130116A-02,DOOR PACKAGE INSTALL - FAB130116A,Not Started,FA Lab - 3F -SUW-FAB130116,,,,,,,,,,2025-12-05 08:00,2025-12-08 17:00,,,2025-12-05 08:00,2025-12-08 17:00,2025-12-04 08:00,2025-12-05 17:00,16,16,0
FAB130117F-00,SECAI SCP WALL FINISH - FAB130117F,Active,FAB Lab - 3F -SUW-FAB130115,,,,,,,,,,2025-07-25 08:00,2025-07-25 17:00,2025-07-25 08:00,,2025-12-02 08:00,2025-12-09 17:00,2025-10-17 08:00,2025-10-24 17:00,48,8,0
FAB130117F-01,DOOR ASSEMBLY - FAB130117F,Not Started,FAB Lab - 3F -SUW-FAB130115,,,,,,,,,,2025-12-10 08:00,2025-12-11 17:00,,,2025-12-10 08:00,2025-12-11 17:00,2025-11-24 08:00,2025-11-25 17:00,16,16,0
FAB130117F-02,DOOR PACKAGE INSTALL - FAB130117F,Not Started,FAB Lab - 3F -SUW-FAB130115,,,,,,,,,,2025-12-10 08:00,2025-12-11 17:00,,,2025-12-10 08:00,2025-12-11 17:00,2025-12-04 08:00,2025-12-05 17:00,16,16,0
FAB130117G-00,SECAI SCP WALL FINISH - FAB130117G,Active,FAB Lab - 3F -SUW-FAB130114,,,,,,,,,,2025-07-29 08:00,2025-07-29 17:00,2025-07-29 08:00,,2025-12-11 08:00,2025-12-18 17:00,2025-10-28 08:00,2025-11-04 17:00,48,8,0
FAB130117G-01,DOOR ASSEMBLY - FAB130117G,Not Started,FAB Lab - 3F -SUW-FAB130114,,,,,,,,,,2025-12-19 08:00,2025-12-22 17:00,,,2025-12-19 08:00,2025-12-22 17:00,2025-11-26 08:00,2025-11-27 17:00,16,16,0
FAB130117G-02,DOOR PACKAGE INSTALL - FAB130117G,Not Started,FAB Lab - 3F -SUW-FAB130114,,,,,,,,,,2025-12-19 08:00,2025-12-22 17:00,,,2025-12-19 08:00,2025-12-22 17:00,2025-12-04 08:00,2025-12-05 17:00,16,16,0
FAB130117H-00,SECAI SCP WALL FINISH - FAB130117H,Active,FAB Lab - 3F -SUW-FAB130113,,,,,,,,,,2025-07-31 08:00,2025-07-31 17:00,2025-07-31 08:00,,2025-12-22 08:00,2025-12-29 17:00,2025-11-06 08:00,2025-11-13 17:00,48,8,0
FAB130117H-01,DOOR ASSEMBLY - FAB130117H,Not Started,FAB Lab - 3F -SUW-FAB130113,,,,,,,,,,2025-12-30 08:00,2025-12-31 17:00,,,2025-12-30 08:00,2025-12-31 17:00,2025-11-28 08:00,2025-12-01 17:00,16,16,0
FAB130117H-02,DOOR PACKAGE INSTALL - FAB130117H,Not Started,FAB Lab - 3F -SUW-FAB130113,,,,,,,,,,2025-12-30 08:00,2025-12-31 17:00,,,2025-12-30 08:00,2025-12-31 17:00,2025-12-04 08:00,2025-12-05 17:00,16,16,0
FAB130117I-00,SECAI SCP WALL FINISH - FAB130117I,Active,FA Lab - 3F -SUW-FAB130201,,,,,,,,,,2025-08-04 08:00,2025-08-04 17:00,2025-08-04 08:00,,2025-12-31 08:00,2026-01-07 17:00,2025-11-17 08:00,2025-11-24 17:00,48,8,0
FAB130117I-01,DOOR ASSEMBLY - FAB130117I,Not Started,FA Lab - 3F -SUW-FAB130201,,,,,,,,,,2026-01-08 08:00,2026-01-09 17:00,,,2026-01-08 08:00,2026-01-09 17:00,2025-12-02 08:00,2025-12-03 17:00,16,16,0
FAB130117I-02,DOOR PACKAGE INSTALL - FAB130117I,Not Started,FA Lab - 3F -SUW-FAB130201,,,,,,,,,,2026-01-08 08:00,2026-01-09 17:00,,,2026-01-08 08:00,2026-01-09 17:00,2025-12-04 08:00,2025-12-05 17:00,16,16,0
FAB134105A-00,SECAI SCP WALL FINISH - FAB134105A,Complete,S/L Entrance - 3F -FIZ-FAB134105,,,,,,,,,,2025-08-05 08:00,2025-08-05 17:00,2025-07-11 08:00,2025-08-05 17:00,2025-11-20 17:00,2025-11-20 17:00,2025-10-08 08:00,2025-10-08 08:00,0,8,100
FAB134105A-01,DOOR ASSEMBLY - FAB134105A,Complete,S/L Entrance - 3F -FIZ-FAB134105,,,,,,,,,,2025-08-06 08:00,2025-08-07 17:00,2025-08-06 08:00,2025-08-07 17:00,2025-11-20 17:00,2025-11-20 17:00,2025-11-18 08:00,2025-11-18 08:00,0,16,100
FAB134105A-02,DOOR PACKAGE INSTALL - FAB134105A,Complete,S/L Entrance - 3F -FIZ-FAB134105,,,,,,,,,,2025-08-06 08:00,2025-08-07 17:00,2025-08-06 08:00,2025-08-07 17:00,2025-11-20 17:00,2025-11-20 17:00,2025-12-05 17:00,2025-12-05 17:00,0,16,100
FAB134105C-00,SECAI SCP WALL FINISH - FAB134105C,Complete,S/L Entrance - 3F -FIZ-FAB134105,,,,,,,,,,2025-08-05 08:00,2025-08-05 17:00,2025-07-15 08:00,2025-08-05 17:00,2025-11-20 17:00,2025-11-20 17:00,2025-10-08 08:00,2025-10-08 08:00,0,8,100
FAB134105C-01,DOOR ASSEMBLY - FAB134105C,Complete,S/L Entrance - 3F -FIZ-FAB134105,,,,,,,,,,2025-08-06 08:00,2025-08-07 17:00,2025-08-06 08:00,2025-08-07 17:00,2025-11-20 17:00,2025-11-20 17:00,2025-11-18 08:00,2025-11-18 08:00,0,16,100
FAB134105C-02,DOOR PACKAGE INSTALL - FAB134105C,Complete,S/L Entrance - 3F -FIZ-FAB134105,,,,,,,,,,2025-08-06 08:00,2025-08-07 17:00,2025-08-06 08:00,2025-08-07 17:00,2025-11-20 17:00,2025-11-20 17:00,2025-12-05 17:00,2025-12-05 17:00,0,16,100
1.2,PRIORITY 1 - LEVEL 2,Not Started,LEVEL 2,,,,,,,,,,2025-11-20 17:00,2025-11-20 17:00,,,2025-11-20 17:00,2025-11-20 17:00,2025-12-05 17:00,2025-12-05 17:00,0,0,0
2.2,PRIORITY 2 - LEVEL 2,Not Started,LEVEL 2,,,,,,,,,,2025-12-08 17:00,2025-12-08 17:00,,,2025-12-08 17:00,2025-12-08 17:00,2025-12-05 17:00,2025-12-05 17:00,0,0,0
3.2,PRIORITY 3 - LEVEL 2,Not Started,LEVEL 2,,,,,,,,,,2025-12-22 17:00,2025-12-22 17:00,,,2025-12-22 17:00,2025-12-22 17:00,2025-12-05 17:00,2025-12-05 17:00,0,0,0
4.2,PRIORITY 4 - LEVEL 2,Not Started,LEVEL 2,,,,,,,,,,2025-12-15 17:00,2025-12-15 17:00,,,2025-12-15 17:00,2025-12-15 17:00,2025-12-05 17:00,2025-12-05 17:00,0,0,0
5.2,PRIORITY 5 - LEVEL 2,Not Started,LEVEL 2,,,,,,,,,,2025-12-09 17:00,2025-12-09 17:00,,,2025-12-09 17:00,2025-12-09 17:00,2025-12-05 17:00,2025-12-05 17:00,0,0,0
ZX-2350,Complete Drywall & Inspect - Clean Vestibule #19 - 2F-FAB126402,Complete,Clean Vestibule 19 - 2F -SUE-FAB126402,,,,,,,,,,2025-10-22 08:00,2025-10-28 17:00,2025-10-22 08:00,2025-10-28 17:00,2025-11-20 17:00,2025-11-20 17:00,2025-12-04 08:00,2025-12-04 08:00,0,40,100
ZX-2360,Complete Fire Caulk & Inspect - Clean Vestibule #19 - 2F-FAB126402,Complete,Clean Vestibule 19 - 2F -SUE-FAB126402,,,,,,,,,,2025-09-26 08:00,2025-09-29 17:00,2025-09-26 08:00,2025-09-29 17:00,2025-11-20 17:00,2025-11-20 17:00,2025-12-05 17:00,2025-12-05 17:00,0,16,100
ZX-2370,Complete Control Joint & Inspect - Clean Vestibule #19 - 2F-FAB126402,Not Started,Clean Vestibule 19 - 2F -SUE-FAB126402,,,,,,,,,,2025-12-05 08:00,2025-12-08 17:00,,,2025-12-05 08:00,2025-12-08 17:00,2025-12-04 08:00,2025-12-05 17:00,16,16,0
FAB126402A-02,SECAI ROUGH IN/SECURITY - FAB126402A,Complete,Clean Vestibule 19 - 2F -SUE-FAB126402,,,,,,,,,,2025-03-28 08:00,2025-03-28 17:00,2025-03-28 08:00,2025-03-28 17:00,2025-11-20 17:00,2025-11-20 17:00,2025-11-25 10:00,2025-11-25 10:00,0,8,100
FAB126402A-03,INSTALL DOOR FRAMES - FAB126402A,Complete,Clean Vestibule 19 - 2F -SUE-FAB126402,,,,,,,,,,2025-08-04 13:00,2025-08-05 12:00,2025-03-28 00:00,2025-03-28 16:00,2025-11-20 17:00,2025-11-20 17:00,2025-11-25 10:00,2025-11-25 10:00,0,8,100
FAB126402A-04,INSTALL DOOR & HARDWARE - FAB126402A,Active,Clean Vestibule 19 - 2F -SUE-FAB126402,,,,,,,,,,2025-11-13 08:00,2025-11-19 17:00,2025-11-13 08:00,,2025-11-21 08:00,2025-11-27 17:00,2025-11-25 10:00,2025-12-02 10:00,40,40,0
FAB126402A-05,PAINT & PROTECT DOORS & FRAMES -  FAB126402A,Not Started,Clean Vestibule 19 - 2F -SUE-FAB126402,,,,,,,,,,2026-02-16 08:00,2026-02-19 15:00,,,2026-02-16 08:00,2026-02-19 15:00,2025-12-02 10:00,2025-12-05 17:00,30,30,0
ZX-2440,Complete Drywall & Inspect - Elevator #19 - 2F-FAB1-EL19,Complete,Elevator 19 - 2F -SUE-FAB1-EL19,,,,,,,,,,2025-06-19 08:00,2025-07-02 17:00,2025-06-11 08:00,2025-07-21 11:00,2025-11-20 17:00,2025-11-20 17:00,2025-11-20 10:00,2025-11-20 10:00,0,80,100
ZX-2450,Complete Fire Caulk & Inspect - Elevator #19 - 2F-FAB1-EL19,Complete,Elevator 19 - 2F -SUE-FAB1-EL19,,,,,,,,,,2025-08-01 08:00,2025-08-04 17:00,2025-08-01 08:00,2025-08-06 17:00,2025-11-20 17:00,2025-11-20 17:00,2025-12-05 17:00,2025-12-05 17:00,0,16,100
ZX-2460,Complete Control Joint & Inspect - Elevator #19 - 2F-FAB1-EL19,Complete,Elevator 19 - 2F -SUE-FAB1-EL19,,,,,,,,,,2025-07-28 08:00,2025-07-29 17:00,2025-07-22 08:00,2025-07-23 17:00,2025-11-20 17:00,2025-11-20 17:00,2025-11-20 10:00,2025-11-20 10:00,0,16,100
ZX-18280,IMPACT - SECAI MISSING MATERIAL - MOVED -Elevator #19 - 2F-FAB1-EL19,Complete,Elevator 19 - 2F -SUE-FAB1-EL19,,,,,,,,,,2025-06-10 08:00,2025-06-23 17:00,2025-06-02 08:00,2025-06-10 16:00,2025-11-20 17:00,2025-11-20 17:00,2025-11-20 10:00,2025-11-20 10:00,0,80,100
FAB126502F-01,DOOR FRAME HANDED OVER TO SECAI ON 10/01 - FAB126502F,Complete,Elevator 19 - 2F -SUE-FAB1-EL19,,,,,,,,,,2025-10-01 08:00,2025-10-01 17:00,2025-10-01 08:00,2025-10-01 17:00,2025-11-20 17:00,2025-11-20 17:00,2025-11-25 10:00,2025-11-25 10:00,0,8,100
FAB126502F-03,INSTALL DOOR FRAME BY SECAI - FAB126502F - HANDED OVER TO SECAI ON 10/01,Complete,Elevator 19 - 2F -SUE-FAB1-EL19,,,,,,,,,,2025-10-01 08:00,2025-10-01 17:00,2025-10-01 08:00,2025-11-17 17:00,2025-11-20 17:00,2025-11-20 17:00,2025-11-25 10:00,2025-11-25 10:00,0,8,100
FAB126502F-04,INSTALL DOOR & HARDWARE - FAB126502F,Active,Elevator 19 - 2F -SUE-FAB1-EL19,,,,,,,,,,2025-11-18 08:00,2025-11-24 17:00,2025-11-18 08:00,,2025-11-21 08:00,2025-11-27 17:00,2025-11-25 10:00,2025-12-02 10:00,40,40,0
FAB126502F-05,PAINT & PROTECT DOORS & FRAMES -  FAB126502F,Not Started,Elevator 19 - 2F -SUE-FAB1-EL19,,,,,,,,,,2026-02-16 08:00,2026-02-19 15:00,,,2026-02-16 08:00,2026-02-19 15:00,2025-12-02 10:00,2025-12-05 17:00,30,30,0
FAB126502F-30,IMPACT - REORDER FRAME -Elevator #19 - 2F - FAB1-EL19,Complete,Elevator 19 - 2F -SUE-FAB1-EL19,,,,,,,,,,2025-09-15 08:00,2025-10-01 17:00,2025-09-15 08:00,2025-10-01 17:00,2025-11-20 17:00,2025-11-20 17:00,2025-11-25 10:00,2025-11-25 10:00,0,104,100
ZX-2620,Complete Drywall & Inspect - Duct Shaft - 2F-SUE-FAB126510,Complete,Duct Shaft - 2F -SUE-FAB126510,,,,,,,,,,2025-09-01 08:00,2025-09-05 17:00,2025-09-01 08:00,2025-09-05 17:00,2025-11-20 17:00,2025-11-20 17:00,2025-12-05 08:00,2025-12-05 08:00,0,40,100
ZX-2630,Complete Fire Caulk & Inspect - Duct Shaft - 2F-SUE-FAB126510,Not Started,Duct Shaft - 2F -SUE-FAB126510,,,,,,,,,,2025-12-05 08:00,2025-12-05 17:00,,,2025-12-05 08:00,2025-12-05 17:00,2025-12-05 08:00,2025-12-05 17:00,8,8,0
ZX-2640,Complete Control Joint & Inspect - Duct Shaft - 2F-SUE-FAB126510,Complete,Duct Shaft - 2F -SUE-FAB126510,,,,,,,,,,2025-10-27 08:00,2025-10-27 17:00,2025-10-27 08:00,2025-10-27 17:00,2025-11-20 17:00,2025-11-20 17:00,2025-12-05 17:00,2025-12-05 17:00,0,8,100
ZX-2560,Complete Drywall & Inspect - Airlock 20 - 2F-FAB126311,Complete,Air Lock 20 - 2F -SUE-FAB126311,,,,,,,,,,2025-06-27 08:00,2025-07-10 17:00,2024-08-19 08:00,2024-08-30 16:00,2025-11-20 17:00,2025-11-20 17:00,2025-11-25 10:00,2025-11-25 10:00,0,80,100
ZX-2570,Complete Fire Caulk & Inspect - Airlock #20 - 2F-FAB126311,Complete,Air Lock 20 - 2F -SUE-FAB126311,,,,,,,,,,2025-07-14 08:00,2025-07-15 17:00,2024-08-30 08:00,2024-09-02 16:00,2025-11-20 17:00,2025-11-20 17:00,2025-12-01 08:00,2025-12-01 08:00,0,16,100
ZX-2580,Complete Control Joint & Inspect - Airlock #20 - 2F-FAB126311,Complete,Air Lock 20 - 2F -SUE-FAB126311,,,,,,,,,,2025-07-14 08:00,2025-07-15 17:00,2024-08-28 08:00,2024-08-30 16:00,2025-11-20 17:00,2025-11-20 17:00,2025-11-25 10:00,2025-11-25 10:00,0,16,100
FAB126311B-01,IMPACT - INSTALL/REWORK DRYWALL FRAMING AROUND DOORS - FAB126311B,Complete,Air Lock 20 - 2F -SUE-FAB126311,,,,,,,,,,2025-04-01 08:00,2025-04-09 17:00,2025-04-01 08:00,2025-04-09 17:00,2025-11-20 17:00,2025-11-20 17:00,2025-11-25 10:00,2025-11-25 10:00,0,56,100
FAB126311B-02,SECAI ROUGH IN/SECURITY - FAB126311B,Complete,Air Lock 20 - 2F -SUE-FAB126311,,,,,,,,,,2025-04-09 08:00,2025-04-09 17:00,2025-04-09 08:00,2025-04-09 17:00,2025-11-20 17:00,2025-11-20 17:00,2025-11-25 10:00,2025-11-25 10:00,0,8,100
FAB126311B-03,INSTALL DOOR FRAMES - FAB126311B,Complete,Air Lock 20 - 2F -SUE-FAB126311,,,,,,,,,,2025-07-15 13:00,2025-07-16 12:00,2025-04-09 00:00,2025-04-09 16:00,2025-11-20 17:00,2025-11-20 17:00,2025-11-25 10:00,2025-11-25 10:00,0,8,100
FAB126311B-04,INSTALL DOOR & HARDWARE - FAB126311B,Active,Air Lock 20 - 2F -SUE-FAB126311,,,,,,,,,,2025-11-14 08:00,2025-11-20 17:00,2025-11-14 08:00,,2025-11-21 08:00,2025-11-27 17:00,2025-11-25 10:00,2025-12-02 10:00,40,40,0
FAB126311B-05,PAINT & PROTECT DOORS & FRAMES - FAB126311B,Not Started,Air Lock 20 - 2F -SUE-FAB126311,,,,,,,,,,2026-02-16 08:00,2026-02-19 15:00,,,2026-02-16 08:00,2026-02-19 15:00,2025-12-02 10:00,2025-12-05 17:00,30,30,0
FAB126311C-01,IMPACT - INSTALL/REWORK DRYWALL FRAMING AROUND DOORS - FAB126311C,Complete,Air Lock 20 - 2F -SUE-FAB126311,,,,,,,,,,2025-04-01 08:00,2025-04-09 17:00,2025-04-01 08:00,2025-04-09 17:00,2025-11-20 17:00,2025-11-20 17:00,2025-11-25 10:00,2025-11-25 10:00,0,56,100
FAB126311C-02,SECAI ROUGH IN/SECURITY - FAB126311C,Complete,Air Lock 20 - 2F -SUE-FAB126311,,,,,,,,,,2025-04-09 08:00,2025-04-09 17:00,2025-04-09 08:00,2025-04-09 17:00,2025-11-20 17:00,2025-11-20 17:00,2025-11-25 10:00,2025-11-25 10:00,0,8,100
FAB126311C-03,INSTALL DOOR FRAMES - FAB126311C,Complete,Air Lock 20 - 2F -SUE-FAB126311,,,,,,,,,,2025-07-15 13:00,2025-07-16 12:00,2025-04-09 00:00,2025-04-09 16:00,2025-11-20 17:00,2025-11-20 17:00,2025-11-25 10:00,2025-11-25 10:00,0,8,100
FAB126311C-04,INSTALL DOOR & HARDWARE - FAB126311C,Active,Air Lock 20 - 2F -SUE-FAB126311,,,,,,,,,,2025-09-04 08:00,2025-09-10 17:00,2025-09-04 08:00,,2025-11-21 08:00,2025-11-27 17:00,2025-11-25 10:00,2025-12-02 10:00,40,40,0
FAB126311C-05,PAINT & PROTECT DOORS & FRAMES - FAB126311C,Not Started,Air Lock 20 - 2F -SUE-FAB126311,,,,,,,,,,2026-02-16 08:00,2026-02-19 15:00,,,2026-02-16 08:00,2026-02-19 15:00,2025-12-02 10:00,2025-12-05 17:00,30,30,0
FAB126311D-01,IMPACT - INSTALL/REWORK DRYWALL FRAMING AROUND DOORS - FAB126311D,Complete,Air Lock 20 - 2F -SUE-FAB126311,,,,,,,,,,2025-04-02 08:00,2025-04-10 17:00,2025-04-02 08:00,2025-04-09 17:00,2025-11-20 17:00,2025-11-20 17:00,2025-11-25 10:00,2025-11-25 10:00,0,56,100
FAB126311D-02,SECAI ROUGH IN/SECURITY - FAB126311D,Complete,Air Lock 20 - 2F -SUE-FAB126311,,,,,,,,,,2025-04-09 08:00,2025-04-09 17:00,2025-04-09 08:00,2025-04-09 17:00,2025-11-20 17:00,2025-11-20 17:00,2025-11-25 10:00,2025-11-25 10:00,0,8,100
FAB126311D-03,INSTALL DOOR FRAMES - FAB126311D,Complete,Air Lock 20 - 2F -SUE-FAB126311,,,,,,,,,,2025-07-15 13:00,2025-07-16 12:00,2025-04-09 00:00,2025-04-09 16:00,2025-11-20 17:00,2025-11-20 17:00,2025-11-25 10:00,2025-11-25 10:00,0,8,100
FAB126311D-04,INSTALL DOOR & HARDWARE - FAB126311D,Not Started,Air Lock 20 - 2F -SUE-FAB126311,,,,,,,,,,2025-11-21 08:00,2025-11-27 17:00,,,2025-11-21 08:00,2025-11-27 17:00,2025-11-25 10:00,2025-12-02 10:00,40,40,0
FAB126311D-05,PAINT & PROTECT DOORS & FRAMES - FAB126311D,Not Started,Air Lock 20 - 2F -SUE-FAB126311,,,,,,,,,,2026-02-16 08:00,2026-02-19 15:00,,,2026-02-16 08:00,2026-02-19 15:00,2025-12-02 10:00,2025-12-05 17:00,30,30,0
FAB126311E-01,IMPACT - INSTALL/REWORK DRYWALL FRAMING AROUND DOORS - FAB126311E,Complete,Air Lock 20 - 2F -SUE-FAB126311,,,,,,,,,,2025-02-26 08:00,2025-03-06 17:00,2025-02-26 08:00,2025-03-06 17:00,2025-11-20 17:00,2025-11-20 17:00,2025-11-25 10:00,2025-11-25 10:00,0,56,100
FAB126311E-02,SECAI ROUGH IN/SECURITY - FAB126311E,Complete,Air Lock 20 - 2F -SUE-FAB126311,,,,,,,,,,2025-03-06 08:00,2025-03-06 17:00,2025-03-06 08:00,2025-03-06 17:00,2025-11-20 17:00,2025-11-20 17:00,2025-11-25 10:00,2025-11-25 10:00,0,8,100
FAB126311E-03,INSTALL DOOR FRAMES - FAB126311E,Complete,Air Lock 20 - 2F -SUE-FAB126311,,,,,,,,,,2025-03-06 08:00,2025-03-06 17:00,2025-03-06 08:00,2025-03-06 17:00,2025-11-20 17:00,2025-11-20 17:00,2025-11-25 10:00,2025-11-25 10:00,0,8,100
FAB126311E-04,INSTALL DOOR & HARDWARE - FAB126311E,Active,Air Lock 20 - 2F -SUE-FAB126311,,,,,,,,,,2025-09-05 08:00,2025-09-11 17:00,2025-09-05 08:00,,2025-11-21 08:00,2025-11-27 17:00,2025-11-25 10:00,2025-12-02 10:00,40,40,0
FAB126311E-05,PAINT & PROTECT DOORS & FRAMES - FAB126311E,Not Started,Air Lock 20 - 2F -SUE-FAB126311,,,,,,,,,,2026-02-16 08:00,2026-02-19 15:00,,,2026-02-16 08:00,2026-02-19 15:00,2025-12-02 10:00,2025-12-05 17:00,30,30,0
ZX-2530,Complete Drywall & Inspect - Duct Shaft - 2F-SUE-FAB126403,Complete,Duct Shaft - 2F -SUE-FAB126403,,,,,,,,,,2025-10-22 08:00,2025-10-28 17:00,2025-10-22 08:00,2025-10-28 17:00,2025-11-20 17:00,2025-11-20 17:00,2025-12-04 08:00,2025-12-04 08:00,0,40,100
ZX-2540,Complete Fire Caulk & Inspect - Duct Shaft - 2F-SUE-FAB126403,Not Started,Duct Shaft - 2F -SUE-FAB126403,,,,,,,,,,2025-12-05 08:00,2025-12-08 17:00,,,2025-12-05 08:00,2025-12-08 17:00,2025-12-04 08:00,2025-12-05 17:00,16,16,0
ZX-2550,Complete Control Joint & Inspect - Duct Shaft - 2F-SUE-FAB126403,Complete,Duct Shaft - 2F -SUE-FAB126403,,,,,,,,,,2025-11-06 08:00,2025-11-07 17:00,2025-11-06 08:00,2025-11-07 17:00,2025-11-20 17:00,2025-11-20 17:00,2025-12-05 17:00,2025-12-05 17:00,0,16,100
FAB126110A-01,IMPACT - INSTALL/REWORK DRYWALL FRAMING AROUND DOORS - FAB126110A,Complete,Duct Shaft - 2F -SUE-FAB126403,,,,,,,,,,2025-05-08 08:00,2025-05-16 17:00,2025-05-08 08:00,2025-05-16 17:00,2025-11-20 17:00,2025-11-20 17:00,2025-11-25 10:00,2025-11-25 10:00,0,56,100
FAB126110A-02,SECAI ROUGH IN/SECURITY - FAB126110A,Complete,Duct Shaft - 2F -SUE-FAB126403,,,,,,,,,,2025-05-16 08:00,2025-05-16 17:00,2025-05-16 08:00,2025-05-16 17:00,2025-11-20 17:00,2025-11-20 17:00,2025-11-25 10:00,2025-11-25 10:00,0,8,100
FAB126110A-03,INSTALL DOOR FRAMES - FAB126110A,Complete,Duct Shaft - 2F -SUE-FAB126403,,,,,,,,,,2025-05-16 08:00,2025-05-16 17:00,2025-05-16 08:00,2025-05-16 17:00,2025-11-20 17:00,2025-11-20 17:00,2025-11-25 10:00,2025-11-25 10:00,0,8,100
FAB126110A-04,INSTALL DOOR & HARDWARE - FAB126110A,Active,Duct Shaft - 2F -SUE-FAB126403,,,,,,,,,,2025-11-13 08:00,2025-11-19 17:00,2025-11-13 08:00,,2025-11-21 08:00,2025-11-27 17:00,2025-11-25 10:00,2025-12-02 10:00,40,40,0
FAB126110A-05,PAINT & PROTECT DOORS & FRAMES -  FAB126110A,Not Started,Duct Shaft - 2F -SUE-FAB126403,,,,,,,,,,2026-02-16 08:00,2026-02-19 15:00,,,2026-02-16 08:00,2026-02-19 15:00,2025-12-02 10:00,2025-12-05 17:00,30,30,0
ZX-2470,SECAI TOOK OVER FOR ACCELERATION - Complete Drywall & Inspect - PR Lifter Vestibule - 2F-FAB126511,Complete,PR Lifter Vestibule - 2F -SUE-FAB126511,,,,,,,,,,2025-10-22 08:00,2025-10-23 17:00,2025-10-22 08:00,2025-10-22 17:00,2025-11-20 17:00,2025-11-20 17:00,2025-12-05 17:00,2025-12-05 17:00,0,16,100
ZX-2480,SECAI TOOK OVER FOR ACCELERATION - Complete Fire Caulk & Inspect - PR Lifter Vestibule - 2F-FAB126511,Complete,PR Lifter Vestibule - 2F -SUE-FAB126511,,,,,,,,,,2025-10-21 08:00,2025-10-22 17:00,2025-10-22 08:00,2025-10-22 17:00,2025-11-20 17:00,2025-11-20 17:00,2025-12-05 17:00,2025-12-05 17:00,0,16,100
ZX-2490,SECAI TOOK OVER FOR ACCELERATION - Complete Control Joint & Inspect - PR Lifter Vestibule - 2F-FAB126511,Complete,PR Lifter Vestibule - 2F -SUE-FAB126511,,,,,,,,,,2025-10-21 08:00,2025-10-22 17:00,2025-10-22 08:00,2025-10-22 17:00,2025-11-20 17:00,2025-11-20 17:00,2025-12-05 17:00,2025-12-05 17:00,0,16,100
FAB126511A-03,INSTALL DOOR FRAMES - FAB126511A,Complete,PR Lifter Vestibule - 2F -SUE-FAB126511,,,,,,,,,,2025-04-09 08:00,2025-04-09 17:00,2025-04-09 08:00,2025-04-09 17:00,2025-11-20 17:00,2025-11-20 17:00,2025-11-25 08:00,2025-11-25 08:00,0,8,100
FAB126511A-02,SECAI ROUGH IN/SECURITY - FAB126511A,Complete,PR Lifter Vestibule - 2F -SUE-FAB126511,,,,,,,,,,2025-04-09 08:00,2025-04-09 17:00,2025-04-09 08:00,2025-04-09 17:00,2025-11-20 17:00,2025-11-20 17:00,2025-11-25 08:00,2025-11-25 08:00,0,8,100
FAB126511A-04,INSTALL DOOR & HARDWARE - FAB126511A,Active,PR Lifter Vestibule - 2F -SUE-FAB126511,,,,,,,,,,2025-06-06 08:00,2025-06-12 17:00,2025-06-06 08:00,,2025-11-21 08:00,2025-11-27 17:00,2025-11-25 08:00,2025-12-01 17:00,40,40,0
FAB126511A-05,PAINT & PROTECT DOORS & FRAMES -  FAB126511A,Not Started,PR Lifter Vestibule - 2F -SUE-FAB126511,,,,,,,,,,2026-02-16 08:00,2026-02-19 17:00,,,2026-02-16 08:00,2026-02-19 17:00,2025-12-02 08:00,2025-12-05 17:00,32,32,0
FAB126511A-07,DOOR FRAME PAINT & 1ST COAT - FAB126511A,Complete,PR Lifter Vestibule - 2F -SUE-FAB126511,,,,,,,,,,2025-05-26 08:00,2025-05-30 17:00,2025-05-26 08:00,2025-05-30 17:00,2025-11-20 17:00,2025-11-20 17:00,2025-11-25 08:00,2025-11-25 08:00,0,40,100
ZX-2710,Complete Drywall & Inspect - T/L Maint. Rm 23 - 2F-SUE-FAB126501,Complete,T/L Maint. Rm 23 - 2F -SUE-FAB126501,,,,,,,,,,2025-09-22 08:00,2025-09-26 17:00,2025-09-22 08:00,2025-09-26 17:00,2025-11-20 17:00,2025-11-20 17:00,2025-12-05 17:00,2025-12-05 17:00,0,40,100
ZX-2720,Complete Fire Caulk & Inspect - T/L Maint. Rm 23 - 2F-SUE-FAB126501,Complete,T/L Maint. Rm 23 - 2F -SUE-FAB126501,,,,,,,,,,2025-09-25 08:00,2025-09-26 17:00,2025-09-25 08:00,2025-09-26 17:00,2025-11-20 17:00,2025-11-20 17:00,2025-12-05 17:00,2025-12-05 17:00,0,16,100
ZX-2730,Complete Control Joint & Inspect - T/L Maint. Rm 23 - 2F-SUE-FAB126501,Complete,T/L Maint. Rm 23 - 2F -SUE-FAB126501,,,,,,,,,,2025-09-25 08:00,2025-09-26 17:00,2025-09-25 08:00,2025-09-26 17:00,2025-11-20 17:00,2025-11-20 17:00,2025-12-05 17:00,2025-12-05 17:00,0,16,100
FAB126501A-01,IMPACT - INSTALL/REWORK DRYWALL FRAMING AROUND DOORS - FAB126501A,Complete,T/L Maint. Rm 23 - 2F -SUE-FAB126501,,,,,,,,,,2025-05-12 08:00,2025-05-20 17:00,2025-05-12 08:00,2025-05-16 17:00,2025-11-20 17:00,2025-11-20 17:00,2025-11-25 10:00,2025-11-25 10:00,0,56,100
FAB126501A-02,SECAI ROUGH IN/SECURITY - FAB126501A,Complete,T/L Maint. Rm 23 - 2F -SUE-FAB126501,,,,,,,,,,2025-05-16 08:00,2025-05-16 17:00,2025-05-16 08:00,2025-05-16 17:00,2025-11-20 17:00,2025-11-20 17:00,2025-11-25 10:00,2025-11-25 10:00,0,8,100
FAB126501A-03,INSTALL DOOR FRAMES - FAB126501A,Complete,T/L Maint. Rm 23 - 2F -SUE-FAB126501,,,,,,,,,,2025-08-12 13:00,2025-08-13 12:00,2025-05-15 00:00,2025-05-16 16:00,2025-11-20 17:00,2025-11-20 17:00,2025-11-25 10:00,2025-11-25 10:00,0,8,100
FAB126501A-04,INSTALL DOOR & HARDWARE - FAB126501A,Not Started,T/L Maint. Rm 23 - 2F -SUE-FAB126501,,,,,,,,,,2025-11-21 08:00,2025-11-27 17:00,,,2025-11-21 08:00,2025-11-27 17:00,2025-11-25 10:00,2025-12-02 10:00,40,40,0
FAB126501A-05,PAINT & PROTECT DOORS & FRAMES -  FAB126501A,Not Started,T/L Maint. Rm 23 - 2F -SUE-FAB126501,,,,,,,,,,2026-02-16 08:00,2026-02-19 15:00,,,2026-02-16 08:00,2026-02-19 15:00,2025-12-02 10:00,2025-12-05 17:00,30,30,0
ZX-2890,Complete Drywall & Inspect - Airlock 18 - 2F-FAB126506,Complete,Air Lock 18 - 2F -SUE-FAB126506,,,,,,,,,,2025-09-01 08:00,2025-09-05 17:00,2025-09-01 08:00,2025-09-05 17:00,2025-11-20 17:00,2025-11-20 17:00,2025-11-25 10:00,2025-11-25 10:00,0,40,100
ZX-2900,Complete Fire Caulk & Inspect - Airlock #18 - 2F-FAB126506,Complete,Air Lock 18 - 2F -SUE-FAB126506,,,,,,,,,,2025-09-15 08:00,2025-09-16 17:00,2025-09-15 08:00,2025-09-16 17:00,2025-11-20 17:00,2025-11-20 17:00,2025-12-05 17:00,2025-12-05 17:00,0,16,100
ZX-2910,SECAI TOOK OVER FOR ACCELERATION - Complete Control Joint & Inspect - Airlock 18 - 2F-FAB126506,Complete,Air Lock 18 - 2F -SUE-FAB126506,,,,,,,,,,2025-09-04 08:00,2025-09-05 17:00,2025-09-05 08:00,2025-09-05 17:00,2025-11-20 17:00,2025-11-20 17:00,2025-11-25 10:00,2025-11-25 10:00,0,16,100
FAB126506B-01,IMPACT - INSTALL/REWORK DRYWALL FRAMING AROUND DOORS - FAB126506B HANDED OVER TO SECAI ON 08/29,Complete,Air Lock 18 - 2F -SUE-FAB126506,,,,,,,,,,2025-08-28 08:00,2025-08-29 17:00,2025-08-29 08:00,2025-08-29 17:00,2025-11-20 17:00,2025-11-20 17:00,2025-11-25 10:00,2025-11-25 10:00,0,16,100
FAB126506B-02,SECAI ROUGH IN/SECURITY - FAB126506B HANDED OVER TO SECAI ON 08/29,Complete,Air Lock 18 - 2F -SUE-FAB126506,,,,,,,,,,2025-08-29 08:00,2025-08-29 17:00,2025-08-29 08:00,2025-08-29 17:00,2025-11-20 17:00,2025-11-20 17:00,2025-11-25 10:00,2025-11-25 10:00,0,8,100
FAB126506B-03,INSTALL DOOR FRAME BY SECAI - FAB126506B HANDED OVER ON 08/29,Active,Air Lock 18 - 2F -SUE-FAB126506,,,,,,,,,,2025-08-29 08:00,2025-08-29 17:00,2025-08-29 08:00,,2025-11-21 08:00,2025-11-28 17:00,2025-11-25 10:00,2025-12-03 10:00,48,8,0
FAB126506B-04,INSTALL DOOR & HARDWARE - FAB126506B,Not Started,Air Lock 18 - 2F -SUE-FAB126506,,,,,,,,,,2025-12-05 08:00,2025-12-11 17:00,,,2025-12-05 08:00,2025-12-11 17:00,2025-11-25 10:00,2025-12-02 10:00,40,40,0
FAB126506B-05,PAINT & PROTECT DOORS & FRAMES -  FAB126506B,Not Started,Air Lock 18 - 2F -SUE-FAB126506,,,,,,,,,,2026-02-16 08:00,2026-02-19 15:00,,,2026-02-16 08:00,2026-02-19 15:00,2025-12-02 10:00,2025-12-05 17:00,30,30,0
FAB126506C-03,INSTALL DOOR FRAME BY SECAI - FAB126506C HANDED OVER ON 10/27,Complete,Air Lock 18 - 2F -SUE-FAB126506,,,,,,,,,,2025-10-27 08:00,2025-10-27 17:00,2025-10-27 08:00,2025-11-13 17:00,2025-11-20 17:00,2025-11-20 17:00,2025-11-25 10:00,2025-11-25 10:00,0,8,100
FAB126506C-04,INSTALL DOOR & HARDWARE - FAB126506C,Active,Air Lock 18 - 2F -SUE-FAB126506,,,,,,,,,,2025-11-14 08:00,2025-11-20 17:00,2025-11-14 08:00,,2025-11-21 08:00,2025-11-27 17:00,2025-11-25 10:00,2025-12-02 10:00,40,40,100
FAB126506C-05,PAINT & PROTECT DOORS & FRAMES -  FAB126506C,Not Started,Air Lock 18 - 2F -SUE-FAB126506,,,,,,,,,,2026-02-16 08:00,2026-02-19 15:00,,,2026-02-16 08:00,2026-02-19 15:00,2025-12-02 10:00,2025-12-05 17:00,30,30,0
FAB126506D-01,IMPACT - INSTALL/REWORK DRYWALL FRAMING AROUND DOORS - FAB126506D,Complete,Air Lock 18 - 2F -SUE-FAB126506,,,,,,,,,,2025-02-18 08:00,2025-02-26 17:00,2025-02-18 08:00,2025-02-26 17:00,2025-11-20 17:00,2025-11-20 17:00,2025-11-25 10:00,2025-11-25 10:00,0,56,100
FAB126506D-02,SECAI ROUGH IN/SECURITY - FAB126506D,Complete,Air Lock 18 - 2F -SUE-FAB126506,,,,,,,,,,2025-02-26 08:00,2025-02-26 17:00,2025-02-26 08:00,2025-02-26 17:00,2025-11-20 17:00,2025-11-20 17:00,2025-11-25 10:00,2025-11-25 10:00,0,8,100
FAB126506D-03,INSTALL DOOR FRAMES - FAB126506D,Complete,Air Lock 18 - 2F -SUE-FAB126506,,,,,,,,,,2025-07-17 13:00,2025-07-18 12:00,2025-02-26 00:00,2025-02-26 16:00,2025-11-20 17:00,2025-11-20 17:00,2025-11-25 10:00,2025-11-25 10:00,0,8,100
FAB126506D-04,INSTALL DOOR & HARDWARE - FAB126506D,Active,Air Lock 18 - 2F -SUE-FAB126506,,,,,,,,,,2025-05-14 08:00,2025-05-20 17:00,2025-05-14 08:00,,2025-11-21 08:00,2025-11-27 17:00,2025-11-25 10:00,2025-12-02 10:00,40,40,0
FAB126506D-05,PAINT & PROTECT DOORS & FRAMES -  FAB126506D,Not Started,Air Lock 18 - 2F -SUE-FAB126506,,,,,,,,,,2026-02-16 08:00,2026-02-19 15:00,,,2026-02-16 08:00,2026-02-19 15:00,2025-12-02 10:00,2025-12-05 17:00,30,30,0
FAB126506E-01,IMPACT - INSTALL/REWORK DRYWALL FRAMING AROUND DOORS - FAB126506E HANDED OVER TO SECAI ON 08/29,Complete,Air Lock 18 - 2F -SUE-FAB126506,,,,,,,,,,2025-08-28 08:00,2025-08-29 17:00,2025-08-29 08:00,2025-08-29 17:00,2025-11-20 17:00,2025-11-20 17:00,2025-11-25 10:00,2025-11-25 10:00,0,16,100
FAB126506E-02,SECAI ROUGH IN/SECURITY - FAB126506E HANDED OVER TO SECAI ON 08/29,Complete,Air Lock 18 - 2F -SUE-FAB126506,,,,,,,,,,2025-08-29 08:00,2025-08-29 17:00,2025-08-29 08:00,2025-08-29 17:00,2025-11-20 17:00,2025-11-20 17:00,2025-11-25 10:00,2025-11-25 10:00,0,8,100
FAB126506E-04,INSTALL DOOR & HARDWARE - FAB126506E,Active,Air Lock 18 - 2F -SUE-FAB126506,,,,,,,,,,2025-11-18 08:00,2025-11-24 17:00,2025-11-18 08:00,,2025-11-21 08:00,2025-11-27 17:00,2025-11-25 10:00,2025-12-02 10:00,40,40,0
FAB126506E-05,PAINT & PROTECT DOORS & FRAMES -  FAB126506E,Not Started,Air Lock 18 - 2F -SUE-FAB126506,,,,,,,,,,2026-02-16 08:00,2026-02-19 15:00,,,2026-02-16 08:00,2026-02-19 15:00,2025-12-02 10:00,2025-12-05 17:00,30,30,0
FAB126506E-11,IMPACT - PROCUREMENT - REORDERED DOORS (JAMB DEPTH ISSUE) FAB126506E,Complete,Air Lock 18 - 2F -SUE-FAB126506,,,,,,,,,,2025-06-20 08:00,2025-08-14 17:00,2025-06-20 08:00,2025-06-30 17:00,2025-11-20 17:00,2025-11-20 17:00,2025-11-25 10:00,2025-11-25 10:00,0,320,100
FAB126506E-03,INSTALL DOOR FRAME BY SECAI - FAB126506E HANDED OVER ON 08/29,Complete,Air Lock 18 - 2F -SUE-FAB126506,,,,,,,,,,2025-08-29 08:00,2025-08-29 17:00,2025-08-29 08:00,2025-09-16 17:00,2025-11-20 17:00,2025-11-20 17:00,2025-11-25 10:00,2025-11-25 10:00,0,8,100
ZX-2860,Complete Drywall & Inspect - Fire Alarm 18 - 2F-FAB126513,Complete,Fire Alarm 18 - 2F -SUE-FAB126513,,,,,,,,,,2025-09-10 08:00,2025-09-16 17:00,2025-09-10 08:00,2025-09-16 17:00,2025-11-20 17:00,2025-11-20 17:00,2025-12-04 08:00,2025-12-04 08:00,0,40,100
ZX-2870,Complete Fire Caulk & Inspect - Fire Alarm 18 - 2F-FAB126513,Not Started,Fire Alarm 18 - 2F -SUE-FAB126513,,,,,,,,,,2025-11-21 08:00,2025-11-24 17:00,,,2025-11-21 08:00,2025-11-24 17:00,2025-12-04 08:00,2025-12-05 17:00,16,16,0
ZX-2880,Complete Control Joint & Inspect - Fire Alarm 18 - 2F-FAB126513,Complete,Fire Alarm 18 - 2F -SUE-FAB126513,,,,,,,,,,2025-10-06 08:00,2025-10-07 17:00,2025-10-06 08:00,2025-10-07 17:00,2025-11-20 17:00,2025-11-20 17:00,2025-12-05 17:00,2025-12-05 17:00,0,16,100
FAB126513A-01,IMPACT - INSTALL/REWORK DRYWALL FRAMING AROUND DOORS - FAB126513A,Complete,Fire Alarm 18 - 2F -SUE-FAB126513,,,,,,,,,,2025-02-27 08:00,2025-03-07 17:00,2025-02-27 08:00,2025-03-07 17:00,2025-11-20 17:00,2025-11-20 17:00,2025-11-25 10:00,2025-11-25 10:00,0,56,100
FAB126513A-02,SECAI ROUGH IN/SECURITY - FAB126513A,Complete,Fire Alarm 18 - 2F -SUE-FAB126513,,,,,,,,,,2025-03-07 08:00,2025-03-07 17:00,2025-03-07 08:00,2025-03-07 17:00,2025-11-20 17:00,2025-11-20 17:00,2025-11-25 10:00,2025-11-25 10:00,0,8,100
FAB126513A-03,INSTALL DOOR FRAMES - FAB126513A,Complete,Fire Alarm 18 - 2F -SUE-FAB126513,,,,,,,,,,2025-09-08 13:00,2025-09-09 12:00,2025-03-07 00:00,2025-03-07 16:00,2025-11-20 17:00,2025-11-20 17:00,2025-11-25 10:00,2025-11-25 10:00,0,8,100
FAB126513A-04,INSTALL DOOR & HARDWARE - FAB126513A,Active,Fire Alarm 18 - 2F -SUE-FAB126513,,,,,,,,,,2025-10-20 08:00,2025-10-24 17:00,2025-10-20 08:00,,2025-11-21 08:00,2025-11-27 17:00,2025-11-25 10:00,2025-12-02 10:00,40,40,0
FAB126513A-05,PAINT & PROTECT DOORS & FRAMES -  FAB126513A,Not Started,Fire Alarm 18 - 2F -SUE-FAB126513,,,,,,,,,,2026-02-16 08:00,2026-02-19 15:00,,,2026-02-16 08:00,2026-02-19 15:00,2025-12-02 10:00,2025-12-05 17:00,30,30,0
ZX-2800,Complete Drywall & Inspect - Elevator Hall #18 - 2F-FAB126504,Complete,Elevator Hall 18 - 2F -SUE-FAB126504,,,,,,,,,,2025-10-01 08:00,2025-10-07 17:00,2025-10-01 08:00,2025-10-07 17:00,2025-11-20 17:00,2025-11-20 17:00,2025-12-05 17:00,2025-12-05 17:00,0,40,100
ZX-2810,Complete Fire Caulk & Inspect - Elevator Hall #18 - 2F-FAB126504,Complete,Elevator Hall 18 - 2F -SUE-FAB126504,,,,,,,,,,2025-10-09 08:00,2025-10-10 17:00,2025-10-09 08:00,2025-10-10 17:00,2025-11-20 17:00,2025-11-20 17:00,2025-12-05 17:00,2025-12-05 17:00,0,16,100
ZX-2820,Complete Control Joint & Inspect - Elevator Hall #18 - 2F-FAB126504,Complete,Elevator Hall 18 - 2F -SUE-FAB126504,,,,,,,,,,2025-10-09 08:00,2025-10-10 17:00,2025-10-09 08:00,2025-10-10 17:00,2025-11-20 17:00,2025-11-20 17:00,2025-12-05 17:00,2025-12-05 17:00,0,16,100
ZX-2770,Complete Drywall & Inspect - Vestibule 18 - 2F-FAB126505,Complete,Vestibule 18 - 2F -SUE-FAB126505,,,,,,,,,,2025-11-03 08:00,2025-11-07 17:00,2025-11-03 08:00,2025-11-07 17:00,2025-11-20 17:00,2025-11-20 17:00,2025-12-05 17:00,2025-12-05 17:00,0,40,100
ZX-2780,Complete Fire Caulk & Inspect - Vestibule 18 - 2F-FAB126505,Complete,Vestibule 18 - 2F -SUE-FAB126505,,,,,,,,,,2025-11-06 08:00,2025-11-07 17:00,2025-11-06 08:00,2025-11-07 17:00,2025-11-20 17:00,2025-11-20 17:00,2025-12-05 17:00,2025-12-05 17:00,0,16,100
ZX-2790,Complete Control Joint & Inspect - Vestibule #18 - 2F-FAB126505,Complete,Vestibule 18 - 2F -SUE-FAB126505,,,,,,,,,,2025-10-30 08:00,2025-10-31 17:00,2025-10-30 08:00,2025-10-31 17:00,2025-11-20 17:00,2025-11-20 17:00,2025-12-05 17:00,2025-12-05 17:00,0,16,100
FAB126505A-03,INSTALL DOOR FRAMES - FAB126505A,Complete,Vestibule 18 - 2F -SUE-FAB126505,,,,,,,,,,2025-07-02 08:00,2025-07-02 17:00,2025-07-31 08:00,2025-07-31 16:00,2025-11-20 17:00,2025-11-20 17:00,2025-11-21 08:00,2025-11-21 08:00,0,8,100
FAB126505A-04,INSTALL DOOR & HARDWARE - FAB126505A,Not Started,Vestibule 18 - 2F -SUE-FAB126505,,,,,,,,,,2025-11-28 08:00,2025-12-04 17:00,,,2025-11-28 08:00,2025-12-04 17:00,2025-11-28 08:00,2025-12-04 17:00,40,40,0
FAB126505A-05,PAINT & PROTECT DOORS & FRAMES -  FAB126505A,Not Started,Vestibule 18 - 2F -SUE-FAB126505,,,,,,,,,,2026-02-16 08:00,2026-02-16 17:00,,,2026-02-16 08:00,2026-02-16 17:00,2025-12-05 08:00,2025-12-05 17:00,8,8,0
FAB126505B-01,IMPACT - INSTALL/REWORK DRYWALL FRAMING AROUND DOORS - FAB126505B,Complete,Vestibule 18 - 2F -SUE-FAB126505,,,,,,,,,,2025-03-05 08:00,2025-03-13 17:00,2025-03-05 08:00,2025-03-13 17:00,2025-11-20 17:00,2025-11-20 17:00,2025-11-25 10:00,2025-11-25 10:00,0,56,100
FAB126505B-02,SECAI ROUGH IN/SECURITY - FAB126505B,Complete,Vestibule 18 - 2F -SUE-FAB126505,,,,,,,,,,2025-03-13 08:00,2025-03-13 17:00,2025-03-13 08:00,2025-03-13 17:00,2025-11-20 17:00,2025-11-20 17:00,2025-11-25 10:00,2025-11-25 10:00,0,8,100
FAB126505B-03,INSTALL DOOR FRAMES - FAB126505B,Complete,Vestibule 18 - 2F -SUE-FAB126505,,,,,,,,,,2025-08-04 13:00,2025-08-05 12:00,2025-03-13 00:00,2025-03-13 16:00,2025-11-20 17:00,2025-11-20 17:00,2025-11-25 10:00,2025-11-25 10:00,0,8,100
FAB126505B-04,INSTALL DOOR & HARDWARE - FAB126505B,Not Started,Vestibule 18 - 2F -SUE-FAB126505,,,,,,,,,,2025-11-21 08:00,2025-11-27 17:00,,,2025-11-21 08:00,2025-11-27 17:00,2025-11-25 10:00,2025-12-02 10:00,40,40,0
FAB126505B-05,PAINT & PROTECT DOORS & FRAMES -  FAB126505B,Not Started,Vestibule 18 - 2F -SUE-FAB126505,,,,,,,,,,2026-02-16 08:00,2026-02-19 15:00,,,2026-02-16 08:00,2026-02-19 15:00,2025-12-02 10:00,2025-12-05 17:00,30,30,0
ZX-3310,Complete Drywall & Inspect - Vestibule 20 - 2F-FAB126310,Complete,Vestibule 20 - 2F -SUE-FAB126310,,,,,,,,,,2025-09-25 08:00,2025-09-26 17:00,2025-09-25 08:00,2025-09-26 17:00,2025-11-20 17:00,2025-11-20 17:00,2025-12-05 17:00,2025-12-05 17:00,0,16,100
ZX-3320,Complete Fire Caulk & Inspect - Vestibule 20 - 2F-FAB126310,Complete,Vestibule 20 - 2F -SUE-FAB126310,,,,,,,,,,2025-09-25 08:00,2025-09-26 17:00,2025-09-25 08:00,2025-09-26 17:00,2025-11-20 17:00,2025-11-20 17:00,2025-12-05 17:00,2025-12-05 17:00,0,16,100
ZX-3330,Complete Control Joint & Inspect - Vestibule #20 - 2F-FAB126310,Complete,Vestibule 20 - 2F -SUE-FAB126310,,,,,,,,,,2025-09-25 08:00,2025-09-26 17:00,2025-09-25 08:00,2025-09-26 17:00,2025-11-20 17:00,2025-11-20 17:00,2025-12-05 17:00,2025-12-05 17:00,0,16,100
FAB126310A-03,INSTALL DOOR FRAME BY SECAI - FAB126310A HANDED OVER TO SECAI 06/27,Complete,Vestibule 20 - 2F -SUE-FAB126310,,,,,,,,,,2025-06-30 08:00,2025-07-11 17:00,2025-06-28 08:00,2025-10-22 17:00,2025-11-20 17:00,2025-11-20 17:00,2025-11-25 10:00,2025-11-25 10:00,0,80,100
FAB126310A-04,INSTALL DOOR & HARDWARE - FAB126310A,Active,Vestibule 20 - 2F -SUE-FAB126310,,,,,,,,,,2025-10-23 08:00,2025-10-29 17:00,2025-10-23 08:00,,2025-11-21 08:00,2025-11-27 17:00,2025-11-25 10:00,2025-12-02 10:00,40,40,0
FAB126310A-05,PAINT & PROTECT DOORS & FRAMES - FAB126310A,Not Started,Vestibule 20 - 2F -SUE-FAB126310,,,,,,,,,,2026-02-16 08:00,2026-02-19 15:00,,,2026-02-16 08:00,2026-02-19 15:00,2025-12-02 10:00,2025-12-05 17:00,30,30,0
FAB126310B-01,IMPACT - INSTALL/REWORK DRYWALL FRAMING AROUND DOORS - FAB126310B,Complete,Vestibule 20 - 2F -SUE-FAB126310,,,,,,,,,,2025-02-25 10:00,2025-03-06 10:00,2025-02-25 10:00,2025-03-06 10:00,2025-11-20 17:00,2025-11-20 17:00,2025-11-25 10:00,2025-11-25 10:00,0,56,100
FAB126310B-02,SECAI ROUGH IN/SECURITY - FAB126310B,Complete,Vestibule 20 - 2F -SUE-FAB126310,,,,,,,,,,2025-03-06 10:00,2025-03-07 10:00,2025-03-06 10:00,2025-03-06 10:00,2025-11-20 17:00,2025-11-20 17:00,2025-11-25 10:00,2025-11-25 10:00,0,8,100
FAB126310B-03,INSTALL DOOR FRAMES - FAB126310B,Complete,Vestibule 20 - 2F -SUE-FAB126310,,,,,,,,,,2025-07-10 13:00,2025-07-11 12:00,2025-03-06 00:00,2025-03-06 16:00,2025-11-20 17:00,2025-11-20 17:00,2025-11-25 10:00,2025-11-25 10:00,0,8,100
FAB126310B-04,INSTALL DOOR & HARDWARE - FAB126310B,Active,Vestibule 20 - 2F -SUE-FAB126310,,,,,,,,,,2025-10-23 08:00,2025-10-29 17:00,2025-10-23 08:00,,2025-11-21 08:00,2025-11-27 17:00,2025-11-25 10:00,2025-12-02 10:00,40,40,0
FAB126310B-05,PAINT & PROTECT DOORS & FRAMES - FAB126310B,Not Started,Vestibule 20 - 2F -SUE-FAB126310,,,,,,,,,,2026-02-16 08:00,2026-02-19 15:00,,,2026-02-16 08:00,2026-02-19 15:00,2025-12-02 10:00,2025-12-05 17:00,30,30,0
FAB126310A-11,IMPACT - SCAFFOLD IN VESTIBULE,Not Started,Vestibule 20 - 2F -SUE-FAB126310,,,,,,,,,,2025-11-21 08:00,2025-11-27 17:00,,,2025-11-21 08:00,2025-11-27 17:00,2025-12-01 08:00,2025-12-05 17:00,40,40,0
FAB126310A-13,DOOR FRAME HANDED OVER TO SECAI 06/27- FAB126310A,Complete,Vestibule 20 - 2F -SUE-FAB126310,,,,,,,,,,2025-06-27 08:00,2025-06-27 17:00,2025-06-27 08:00,2025-06-27 16:00,2025-11-20 17:00,2025-11-20 17:00,2025-11-25 10:00,2025-11-25 10:00,0,8,100
ZX-3130,Complete Drywall & Inspect - Duct Shaft - 2F-SUE-FAB126102,Complete,Duct Shaft - 2F -SUE-FAB126102,,,,,,,,,,2025-09-01 08:00,2025-09-05 17:00,2025-09-01 08:00,2025-09-05 17:00,2025-11-20 17:00,2025-11-20 17:00,2025-11-17 10:00,2025-11-17 10:00,0,40,100
ZX-3140,Complete Fire Caulk & Inspect - Duct Shaft - 2F-SUE-FAB126102,Complete,Duct Shaft - 2F -SUE-FAB126102,,,,,,,,,,2025-10-06 08:00,2025-10-07 17:00,2025-10-06 08:00,2025-10-07 17:00,2025-11-20 17:00,2025-11-20 17:00,2025-12-05 17:00,2025-12-05 17:00,0,16,100
ZX-3150,Complete Control Joint & Inspect - Duct Shaft - 2F-SUE-FAB126102,Complete,Duct Shaft - 2F -SUE-FAB126102,,,,,,,,,,2025-09-04 08:00,2025-09-05 17:00,2025-09-04 08:00,2025-09-05 17:00,2025-11-20 17:00,2025-11-20 17:00,2025-11-17 10:00,2025-11-17 10:00,0,16,100
FAB126102A-01,IMPACT - INSTALL/REWORK DRYWALL FRAMING AROUND DOORS - FAB126102A,Complete,Duct Shaft - 2F -SUE-FAB126102,,,,,,,,,,2025-05-01 08:00,2025-05-09 17:00,2025-05-01 08:00,2025-05-05 17:00,2025-11-20 17:00,2025-11-20 17:00,2025-11-25 10:00,2025-11-25 10:00,0,56,100
FAB126102A-02,SECAI ROUGH IN/SECURITY - FAB126102A,Complete,Duct Shaft - 2F -SUE-FAB126102,,,,,,,,,,2025-05-05 08:00,2025-05-05 17:00,2025-05-05 08:00,2025-05-05 17:00,2025-11-20 17:00,2025-11-20 17:00,2025-11-25 10:00,2025-11-25 10:00,0,8,100
FAB126102A-03,INSTALL DOOR FRAMES - FAB126102A,Complete,Duct Shaft - 2F -SUE-FAB126102,,,,,,,,,,2025-08-26 08:00,2025-08-26 17:00,2025-05-05 00:00,2025-05-05 16:00,2025-11-20 17:00,2025-11-20 17:00,2025-11-25 10:00,2025-11-25 10:00,0,8,100
FAB126102A-04,INSTALL DOOR & HARDWARE - FAB126102A,Active,Duct Shaft - 2F -SUE-FAB126102,,,,,,,,,,2025-06-06 08:00,2025-06-12 17:00,2025-06-06 08:00,,2025-11-21 08:00,2025-11-27 17:00,2025-11-25 10:00,2025-12-02 10:00,40,40,0
FAB126102A-05,PAINT & PROTECT DOORS & FRAMES -  FAB126102A,Not Started,Duct Shaft - 2F -SUE-FAB126102,,,,,,,,,,2026-02-16 08:00,2026-02-19 15:00,,,2026-02-16 08:00,2026-02-19 15:00,2025-12-02 10:00,2025-12-05 17:00,30,30,0
ZX-3280,Complete Drywall & Inspect - Thermohygrostat Rm - 2F-FAB122103,Complete,Thermohygrostat Rm - 2F -FIZ-FAB122103,,,,,,,,,,2025-07-07 08:00,2025-07-18 17:00,2025-07-07 08:00,2025-07-18 17:00,2025-11-20 17:00,2025-11-20 17:00,2025-11-24 10:00,2025-11-24 10:00,0,80,100
ZX-3290,Complete Fire Caulk & Inspect - Thermohygrostat Rm - 2F-FAB122103,Complete,Thermohygrostat Rm - 2F -FIZ-FAB122103,,,,,,,,,,2025-07-17 08:00,2025-07-18 17:00,2025-07-17 08:00,2025-07-18 17:00,2025-11-20 17:00,2025-11-20 17:00,2025-12-05 17:00,2025-12-05 17:00,0,16,100
ZX-3300,Complete Control Joint & Inspect - Thermohygrostat Rm - 2F-FAB122103,Complete,Thermohygrostat Rm - 2F -FIZ-FAB122103,,,,,,,,,,2025-07-17 08:00,2025-07-18 17:00,2025-07-17 08:00,2025-07-18 17:00,2025-11-20 17:00,2025-11-20 17:00,2025-11-24 10:00,2025-11-24 10:00,0,16,100
ZX-3190,Complete Drywall & Inspect - Data Center B - 2F-FAB122106,Complete,Data Center B - 2F -FIZ-FAB122106,,,,,,,,,,2025-08-11 08:00,2025-08-22 17:00,2025-05-05 08:00,2025-08-22 17:00,2025-11-20 17:00,2025-11-20 17:00,2025-11-25 10:00,2025-11-25 10:00,0,80,100
ZX-3200,Complete Fire Caulk & Inspect - Data Center B - 2F-FAB122106,Complete,Data Center B - 2F -FIZ-FAB122106,,,,,,,,,,2025-08-25 08:00,2025-08-26 17:00,2025-05-14 13:00,2025-05-16 17:00,2025-11-20 17:00,2025-11-20 17:00,2025-12-05 17:00,2025-12-05 17:00,0,16,100
ZX-3210,Complete Control Joint & Inspect - Data Center B - 2F-FAB122106,Complete,Data Center B - 2F -FIZ-FAB122106,,,,,,,,,,2025-08-25 08:00,2025-08-26 17:00,2025-05-20 15:00,2025-05-20 15:00,2025-11-20 17:00,2025-11-20 17:00,2025-11-25 10:00,2025-11-25 10:00,0,16,100
ZX-16320,IMPACT - SECAI RFI - CEILING-Data Center B - 2F-FAB122106,Complete,Data Center B - 2F -FIZ-FAB122106,,,,,,,,,,2025-05-05 08:00,2025-05-16 17:00,2025-05-05 08:00,2025-08-15 17:00,2025-11-20 17:00,2025-11-20 17:00,2025-11-25 10:00,2025-11-25 10:00,0,80,100
ZX-16330,IMPACT - SECAI ELECTIRCAL / DUCT WORK-Data Center B - 2F-FAB122106,Complete,Data Center B - 2F -FIZ-FAB122106,,,,,,,,,,2025-05-05 08:00,2025-05-16 17:00,2025-05-05 08:00,2025-08-22 17:00,2025-11-20 17:00,2025-11-20 17:00,2025-11-25 10:00,2025-11-25 10:00,0,80,100
FAB122106A-01,IMPACT - INSTALL/REWORK DRYWALL FRAMING AROUND DOORS - FAB122106A,Complete,Data Center B - 2F -FIZ-FAB122106,,,,,,,,,,2025-08-18 08:00,2025-08-26 17:00,2025-05-07 08:00,2025-05-15 17:00,2025-11-20 17:00,2025-11-20 17:00,2025-11-25 10:00,2025-11-25 10:00,0,56,100
FAB122106A-02,SECAI ROUGH IN/SECURITY - FAB122106A,Complete,Data Center B - 2F -FIZ-FAB122106,,,,,,,,,,2025-05-15 08:00,2025-05-15 17:00,2025-05-15 08:00,2025-05-15 17:00,2025-11-20 17:00,2025-11-20 17:00,2025-11-25 10:00,2025-11-25 10:00,0,8,100
FAB122106A-03,INSTALL DOOR FRAMES - FAB122106A,Complete,Data Center B - 2F -FIZ-FAB122106,,,,,,,,,,2025-05-15 08:00,2025-05-15 17:00,2025-05-15 08:00,2025-05-15 17:00,2025-11-20 17:00,2025-11-20 17:00,2025-11-25 10:00,2025-11-25 10:00,0,8,100
FAB122106A-04,INSTALL DOOR & HARDWARE - FAB122106A,Active,Data Center B - 2F -FIZ-FAB122106,,,,,,,,,,2025-05-15 08:00,2025-05-21 17:00,2025-05-15 08:00,,2025-11-21 08:00,2025-11-27 17:00,2025-11-25 10:00,2025-12-02 10:00,40,40,0
FAB122106A-05,PAINT & PROTECT DOORS & FRAMES -  FAB122106A,Not Started,Data Center B - 2F -FIZ-FAB122106,,,,,,,,,,2026-02-16 08:00,2026-02-19 15:00,,,2026-02-16 08:00,2026-02-19 15:00,2025-12-02 10:00,2025-12-05 17:00,30,30,0
FAB122106B-01,IMPACT - INSTALL/REWORK DRYWALL FRAMING AROUND DOORS - FAB122106B,Complete,Data Center B - 2F -FIZ-FAB122106,,,,,,,,,,2025-05-07 08:00,2025-05-15 17:00,2025-05-07 08:00,2025-05-15 17:00,2025-11-20 17:00,2025-11-20 17:00,2025-11-25 10:00,2025-11-25 10:00,0,56,100
FAB122106B-02,SECAI ROUGH IN/SECURITY - FAB122106B,Complete,Data Center B - 2F -FIZ-FAB122106,,,,,,,,,,2025-05-15 08:00,2025-05-15 17:00,2025-05-15 08:00,2025-05-15 17:00,2025-11-20 17:00,2025-11-20 17:00,2025-11-25 10:00,2025-11-25 10:00,0,8,100
FAB122106B-03,INSTALL DOOR FRAMES - FAB122106B,Complete,Data Center B - 2F -FIZ-FAB122106,,,,,,,,,,2025-05-15 08:00,2025-05-15 17:00,2025-05-15 08:00,2025-05-15 17:00,2025-11-20 17:00,2025-11-20 17:00,2025-11-25 10:00,2025-11-25 10:00,0,8,100
FAB122106B-04,INSTALL DOOR & HARDWARE - FAB122106B,Not Started,Data Center B - 2F -FIZ-FAB122106,,,,,,,,,,2025-11-21 08:00,2025-11-27 17:00,,,2025-11-21 08:00,2025-11-27 17:00,2025-11-25 10:00,2025-12-02 10:00,40,40,0
FAB122106B-05,PAINT & PROTECT DOORS & FRAMES -  FAB122106B,Not Started,Data Center B - 2F -FIZ-FAB122106,,,,,,,,,,2026-02-16 08:00,2026-02-19 15:00,,,2026-02-16 08:00,2026-02-19 15:00,2025-12-02 10:00,2025-12-05 17:00,30,30,0
FAB122106C-01,IMPACT - INSTALL/REWORK DRYWALL FRAMING AROUND DOORS - FAB122106C,Complete,Data Center B - 2F -FIZ-FAB122106,,,,,,,,,,2025-05-15 08:00,2025-05-23 17:00,2025-05-07 08:00,2025-05-15 17:00,2025-11-20 17:00,2025-11-20 17:00,2025-11-25 10:00,2025-11-25 10:00,0,56,100
FAB122106C-02,SECAI ROUGH IN/SECURITY - FAB122106C,Complete,Data Center B - 2F -FIZ-FAB122106,,,,,,,,,,2025-05-15 08:00,2025-05-15 17:00,2025-05-15 08:00,2025-05-15 17:00,2025-11-20 17:00,2025-11-20 17:00,2025-11-25 10:00,2025-11-25 10:00,0,8,100
FAB122106C-03,INSTALL DOOR FRAMES - FAB122106C,Complete,Data Center B - 2F -FIZ-FAB122106,,,,,,,,,,2025-05-15 08:00,2025-05-15 17:00,2025-05-15 08:00,2025-05-15 17:00,2025-11-20 17:00,2025-11-20 17:00,2025-11-25 10:00,2025-11-25 10:00,0,8,100
FAB122106C-04,INSTALL DOOR & HARDWARE - FAB122106C,Not Started,Data Center B - 2F -FIZ-FAB122106,,,,,,,,,,2025-11-21 08:00,2025-11-27 17:00,,,2025-11-21 08:00,2025-11-27 17:00,2025-11-25 10:00,2025-12-02 10:00,40,40,0
FAB122106C-05,PAINT & PROTECT DOORS & FRAMES -  FAB122106C,Not Started,Data Center B - 2F -FIZ-FAB122106,,,,,,,,,,2026-02-16 08:00,2026-02-19 15:00,,,2026-02-16 08:00,2026-02-19 15:00,2025-12-02 10:00,2025-12-05 17:00,30,30,0
ZX-3250,Complete Drywall & Inspect - Airlock 22 - 2F-FAB126107 - MKM,Complete,Air Lock 22 - 2F -SUE-FAB126107,,,,,,,,,,2025-07-18 08:00,2025-07-31 17:00,2025-07-18 08:00,2025-09-05 17:00,2025-11-20 17:00,2025-11-20 17:00,2025-11-25 10:00,2025-11-25 10:00,0,80,100
ZX-3260,Complete Fire Caulk & Inspect - Airlock #22 - 2F-FAB126107 - MKM,Complete,Air Lock 22 - 2F -SUE-FAB126107,,,,,,,,,,2025-08-08 08:00,2025-08-11 17:00,2025-08-08 08:00,2025-08-11 17:00,2025-11-20 17:00,2025-11-20 17:00,2025-12-05 17:00,2025-12-05 17:00,0,16,100
ZX-3270,Complete Control Joint & Inspect - Airlock #22 - 2F-FAB126107 - MKM - SECAI TOOK OVER ON EAST AND WEST WALLS,Complete,Air Lock 22 - 2F -SUE-FAB126107,,,,,,,,,,2025-08-25 08:00,2025-08-26 17:00,2025-08-25 08:00,2025-08-26 17:00,2025-11-20 17:00,2025-11-20 17:00,2025-11-25 10:00,2025-11-25 10:00,0,16,100
FAB126107A-01,INSTALL DOOR FRAME BY SECAI - FAB126107A HANDED OVER ON 08/29,Complete,Air Lock 22 - 2F -SUE-FAB126107,,,,,,,,,,2025-08-29 08:00,2025-08-29 17:00,2025-08-29 08:00,2025-11-07 17:00,2025-11-20 17:00,2025-11-20 17:00,2025-11-25 10:00,2025-11-25 10:00,0,8,100
FAB126107A-04,INSTALL DOOR & HARDWARE - FAB126107A,Active,Air Lock 22 - 2F -SUE-FAB126107,,,,,,,,,,2025-11-10 08:00,2025-11-14 17:00,2025-11-10 08:00,,2025-11-21 08:00,2025-11-27 17:00,2025-11-25 10:00,2025-12-02 10:00,40,40,0
FAB126107A-05,PAINT & PROTECT DOORS & FRAMES - FAB126107A,Not Started,Air Lock 22 - 2F -SUE-FAB126107,,,,,,,,,,2026-02-16 08:00,2026-02-19 15:00,,,2026-02-16 08:00,2026-02-19 15:00,2025-12-02 10:00,2025-12-05 17:00,30,30,0
FAB126107B-01,INSTALL DOOR FRAMES - FAB126107B,Complete,Air Lock 22 - 2F -SUE-FAB126107,,,,,,,,,,2025-07-29 08:00,2025-07-29 17:00,2025-07-29 08:00,2025-07-29 17:00,2025-11-20 17:00,2025-11-20 17:00,2025-11-25 10:00,2025-11-25 10:00,0,8,100
FAB126107B-04,INSTALL DOOR & HARDWARE - FAB126107B,Active,Air Lock 22 - 2F -SUE-FAB126107,,,,,,,,,,2025-10-31 08:00,2025-11-06 17:00,2025-10-31 08:00,,2025-11-21 08:00,2025-11-27 17:00,2025-11-25 10:00,2025-12-02 10:00,40,40,0
FAB126107B-05,PAINT & PROTECT DOORS & FRAMES - FAB126107B,Not Started,Air Lock 22 - 2F -SUE-FAB126107,,,,,,,,,,2026-02-16 08:00,2026-02-19 15:00,,,2026-02-16 08:00,2026-02-19 15:00,2025-12-02 10:00,2025-12-05 17:00,30,30,0
FAB126107D-01,IMPACT - INSTALL/REWORK DRYWALL FRAMING AROUND DOORS - FAB126107D,Complete,Air Lock 22 - 2F -SUE-FAB126107,,,,,,,,,,2025-03-25 08:00,2025-04-02 17:00,2025-03-25 08:00,2025-04-01 17:00,2025-11-20 17:00,2025-11-20 17:00,2025-11-25 10:00,2025-11-25 10:00,0,56,100
FAB126107D-02,SECAI ROUGH IN/SECURITY - FAB126107D,Complete,Air Lock 22 - 2F -SUE-FAB126107,,,,,,,,,,2025-04-01 08:00,2025-04-01 17:00,2025-04-01 08:00,2025-04-01 17:00,2025-11-20 17:00,2025-11-20 17:00,2025-11-25 10:00,2025-11-25 10:00,0,8,100
FAB126107D-03,INSTALL DOOR FRAMES - FAB126107D,Complete,Air Lock 22 - 2F -SUE-FAB126107,,,,,,,,,,2025-07-11 13:00,2025-07-14 12:00,2025-03-31 00:00,2025-04-01 16:00,2025-11-20 17:00,2025-11-20 17:00,2025-11-25 10:00,2025-11-25 10:00,0,8,100
FAB126107D-04,INSTALL DOOR & HARDWARE - FAB126107D,Active,Air Lock 22 - 2F -SUE-FAB126107,,,,,,,,,,2025-11-13 08:00,2025-11-19 17:00,2025-11-13 08:00,,2025-11-21 08:00,2025-11-27 17:00,2025-11-25 10:00,2025-12-02 10:00,40,40,0
FAB126107D-05,PAINT & PROTECT DOORS & FRAMES - FAB126107D,Not Started,Air Lock 22 - 2F -SUE-FAB126107,,,,,,,,,,2026-02-16 08:00,2026-02-19 15:00,,,2026-02-16 08:00,2026-02-19 15:00,2025-12-02 10:00,2025-12-05 17:00,30,30,0
FAB126107E-01,IMPACT - INSTALL/REWORK DRYWALL FRAMING AROUND DOORS - FAB126107E,Complete,Air Lock 22 - 2F -SUE-FAB126107,,,,,,,,,,2025-04-01 08:00,2025-04-09 17:00,2025-04-01 08:00,2025-04-11 17:00,2025-11-20 17:00,2025-11-20 17:00,2025-11-25 10:00,2025-11-25 10:00,0,56,100
FAB126107E-02,SECAI ROUGH IN/SECURITY - FAB126107E,Complete,Air Lock 22 - 2F -SUE-FAB126107,,,,,,,,,,2025-04-11 08:00,2025-04-11 17:00,2025-04-11 08:00,2025-04-11 17:00,2025-11-20 17:00,2025-11-20 17:00,2025-11-25 10:00,2025-11-25 10:00,0,8,100
FAB126107E-03,INSTALL DOOR FRAMES - FAB126107E,Complete,Air Lock 22 - 2F -SUE-FAB126107,,,,,,,,,,2025-07-11 13:00,2025-07-14 12:00,2025-04-11 00:00,2025-04-11 16:00,2025-11-20 17:00,2025-11-20 17:00,2025-11-25 10:00,2025-11-25 10:00,0,8,100
FAB126107E-04,INSTALL DOOR & HARDWARE - FAB126107E,Active,Air Lock 22 - 2F -SUE-FAB126107,,,,,,,,,,2025-11-11 08:00,2025-11-17 17:00,2025-11-11 08:00,,2025-11-21 08:00,2025-11-27 17:00,2025-11-25 10:00,2025-12-02 10:00,40,40,0
FAB126107E-05,PAINT & PROTECT DOORS & FRAMES - FAB126107E,Not Started,Air Lock 22 - 2F -SUE-FAB126107,,,,,,,,,,2026-02-16 08:00,2026-02-19 15:00,,,2026-02-16 08:00,2026-02-19 15:00,2025-12-02 10:00,2025-12-05 17:00,30,30,0
FAB126107A-11,IMPACT - PROCUREMENT - REORDERED DOORS (JAMB DEPTH ISSUE),Complete,Air Lock 22 - 2F -SUE-FAB126107,,,,,,,,,,2025-07-10 08:00,2025-09-12 17:00,2025-06-09 08:00,2025-07-14 17:00,2025-11-20 17:00,2025-11-20 17:00,2025-11-25 10:00,2025-11-25 10:00,0,376,100
FAB126107B-11,IMPACT - PROCUREMENT - REORDERED DOORS (JAMB DEPTH ISSUE),Complete,Air Lock 22 - 2F -SUE-FAB126107,,,,,,,,,,2025-07-10 08:00,2025-09-12 17:00,2025-06-09 08:00,2025-07-14 17:00,2025-11-20 17:00,2025-11-20 17:00,2025-11-25 10:00,2025-11-25 10:00,0,376,100
ZX-3220,Complete Drywall & Inspect - Elevator Hall #20 - 2F-FAB126302,Complete,Elevator Hall 20 - 2F SUE-FAB126302,,,,,,,,,,2025-09-01 08:00,2025-09-05 17:00,2025-09-01 08:00,2025-09-05 17:00,2025-11-20 17:00,2025-11-20 17:00,2025-12-05 17:00,2025-12-05 17:00,0,40,100
ZX-3230,Complete Fire Caulk & Inspect - Elevator Hall #20 - 2F-FAB126302,Complete,Elevator Hall 20 - 2F SUE-FAB126302,,,,,,,,,,2025-09-11 08:00,2025-09-12 17:00,2025-09-11 08:00,2025-09-12 17:00,2025-11-20 17:00,2025-11-20 17:00,2025-12-05 17:00,2025-12-05 17:00,0,16,100
ZX-3240,Complete Control Joint & Inspect - Elevator Hall #20 - 2F-FAB126302,Complete,Elevator Hall 20 - 2F SUE-FAB126302,,,,,,,,,,2025-09-11 08:00,2025-09-12 17:00,2025-09-11 08:00,2025-09-12 17:00,2025-11-20 17:00,2025-11-20 17:00,2025-12-05 17:00,2025-12-05 17:00,0,16,100
ZX-3670,Complete Drywall & Inspect - Clean Vestibule #21 - 2F-FAB126201 - MKM,Complete,Clean Vestibule 21 - 2F -SUE-FAB126201,,,,,,,,,,2025-07-18 08:00,2025-07-31 17:00,2025-07-18 08:00,2025-09-04 17:00,2025-11-20 17:00,2025-11-20 17:00,2025-12-05 17:00,2025-12-05 17:00,0,80,100
ZX-3680,Complete Fire Caulk & Inspect - Clean Vestibule #21 - 2F-FAB126201 - MKM,Complete,Clean Vestibule 21 - 2F -SUE-FAB126201,,,,,,,,,,2025-09-29 08:00,2025-09-29 17:00,2025-09-29 08:00,2025-09-29 17:00,2025-11-20 17:00,2025-11-20 17:00,2025-12-05 17:00,2025-12-05 17:00,0,8,100
ZX-3690,Complete Control Joint & Inspect - Clean Vestibule #21 - 2F-FAB126201 - MKM,Complete,Clean Vestibule 21 - 2F -SUE-FAB126201,,,,,,,,,,2025-10-06 08:00,2025-10-07 17:00,2025-10-06 08:00,2025-10-07 17:00,2025-11-20 17:00,2025-11-20 17:00,2025-12-05 17:00,2025-12-05 17:00,0,16,100
FAB126201A-01,IMPACT - INSTALL/REWORK DRYWALL FRAMING AROUND DOORS - FAB126201A,Complete,Clean Vestibule 21 - 2F -SUE-FAB126201,,,,,,,,,,2025-03-20 08:00,2025-03-28 17:00,2025-03-20 08:00,2025-03-28 17:00,2025-11-20 17:00,2025-11-20 17:00,2025-11-25 10:00,2025-11-25 10:00,0,56,100
FAB126201A-02,SECAI ROUGH IN/SECURITY - FAB126201A,Complete,Clean Vestibule 21 - 2F -SUE-FAB126201,,,,,,,,,,2025-03-28 08:00,2025-03-28 17:00,2025-03-28 08:00,2025-03-28 17:00,2025-11-20 17:00,2025-11-20 17:00,2025-11-25 10:00,2025-11-25 10:00,0,8,100
FAB126201A-03,INSTALL DOOR FRAMES - FAB126201A,Complete,Clean Vestibule 21 - 2F -SUE-FAB126201,,,,,,,,,,2025-06-27 13:00,2025-06-30 12:00,2025-03-28 00:00,2025-03-28 16:00,2025-11-20 17:00,2025-11-20 17:00,2025-11-25 10:00,2025-11-25 10:00,0,8,100
FAB126201A-04,INSTALL DOOR & HARDWARE - FAB126201A,Active,Clean Vestibule 21 - 2F -SUE-FAB126201,,,,,,,,,,2025-09-04 08:00,2025-09-10 17:00,2025-09-04 08:00,,2025-11-21 08:00,2025-11-27 17:00,2025-11-25 10:00,2025-12-02 10:00,40,40,0
FAB126201A-05,PAINT & PROTECT DOORS & FRAMES - FAB126201A,Not Started,Clean Vestibule 21 - 2F -SUE-FAB126201,,,,,,,,,,2026-02-16 08:00,2026-02-19 15:00,,,2026-02-16 08:00,2026-02-19 15:00,2025-12-02 10:00,2025-12-05 17:00,30,30,0
ZX-3490,SECAI TOOK OVER ACCELERATION - Remaining CEILING Drywall & Inspect - Pedestrian Walkway - 2F-FAB120111,Complete,Pedestrian Walkway - 2F -FIZ-FAB120111,,,,,,,,,,2025-11-06 08:00,2025-11-12 17:00,2025-11-06 08:00,2025-11-06 17:00,2025-11-20 17:00,2025-11-20 17:00,2025-12-05 17:00,2025-12-05 17:00,0,40,100
ZX-3500,Complete Fire Caulk & Inspect - Pedestrian Walkway - 2F-FAB120111,Complete,Pedestrian Walkway - 2F -FIZ-FAB120111,,,,,,,,,,2025-10-09 08:00,2025-10-10 17:00,2025-10-09 08:00,2025-10-10 17:00,2025-11-20 17:00,2025-11-20 17:00,2025-12-05 17:00,2025-12-05 17:00,0,16,100
ZX-3640,Complete Drywall & Inspect - Elevator Hall #22 - 2F-FAB126104,Complete,Elevator Hall 22 - 2F -SUE-FAB126104,,,,,,,,,,2025-09-01 08:00,2025-09-05 17:00,2025-09-01 08:00,2025-09-05 17:00,2025-11-20 17:00,2025-11-20 17:00,2025-11-20 10:00,2025-11-20 10:00,0,40,100
ZX-3650,Complete Fire Caulk & Inspect - Elevator Hall #22 - 2F-FAB126104,Complete,Elevator Hall 22 - 2F -SUE-FAB126104,,,,,,,,,,2025-09-29 08:00,2025-09-29 17:00,2025-09-29 08:00,2025-09-29 17:00,2025-11-20 17:00,2025-11-20 17:00,2025-12-05 17:00,2025-12-05 17:00,0,8,100
ZX-3660,Complete Control Joint & Inspect - Elevator Hall #22 - 2F-FAB126104,Complete,Elevator Hall 22 - 2F -SUE-FAB126104,,,,,,,,,,2025-10-10 08:00,2025-10-13 17:00,2025-10-10 08:00,2025-10-13 17:00,2025-11-20 17:00,2025-11-20 17:00,2025-11-20 10:00,2025-11-20 10:00,0,16,100
FAB126104D-01,INSTALL DOOR FRAME BY SECAI - FAB126104D HANDED OVER 06/27,Complete,Elevator Hall 22 - 2F -SUE-FAB126104,,,,,,,,,,2025-06-27 08:00,2025-07-10 17:00,2025-06-28 08:00,2025-08-13 08:00,2025-11-20 17:00,2025-11-20 17:00,2025-11-25 10:00,2025-11-25 10:00,0,80,100
FAB126104D-04,INSTALL DOOR & HARDWARE - FAB126104D,Active,Elevator Hall 22 - 2F -SUE-FAB126104,,,,,,,,,,2025-11-13 08:00,2025-11-19 17:00,2025-11-13 08:00,,2025-11-21 08:00,2025-11-27 17:00,2025-11-25 10:00,2025-12-02 10:00,40,40,0
FAB126104D-05,PAINT & PROTECT DOORS & FRAMES - FAB126104D,Not Started,Elevator Hall 22 - 2F -SUE-FAB126104,,,,,,,,,,2026-02-16 08:00,2026-02-19 15:00,,,2026-02-16 08:00,2026-02-19 15:00,2025-12-02 10:00,2025-12-05 17:00,30,30,0
FAB126104E-01,INSTALL DOOR FRAMES - FAB126104E,Not Started,Elevator Hall 22 - 2F -SUE-FAB126104,,,,,,,,,,2025-12-01 08:00,2025-12-02 17:00,,,2025-12-01 08:00,2025-12-02 17:00,2025-11-28 10:00,2025-12-02 10:00,16,16,0
FAB126104E-04,INSTALL DOOR & HARDWARE - FAB126104E,Not Started,Elevator Hall 22 - 2F -SUE-FAB126104,,,,,,,,,,2025-11-28 08:00,2025-12-04 17:00,,,2025-11-28 08:00,2025-12-04 17:00,2025-11-25 10:00,2025-12-02 10:00,40,40,0
FAB126104E-05,PAINT & PROTECT DOORS & FRAMES - FAB126104E,Not Started,Elevator Hall 22 - 2F -SUE-FAB126104,,,,,,,,,,2026-02-16 08:00,2026-02-19 15:00,,,2026-02-16 08:00,2026-02-19 15:00,2025-12-02 10:00,2025-12-05 17:00,30,30,0
FAB126104E-11,IMPACT - INTERNAL - UNASSEMBLED TRANSOM FRAMES,Not Started,Elevator Hall 22 - 2F -SUE-FAB126104,,,,,,,,,,2025-11-21 08:00,2025-11-28 17:00,,,2025-11-21 08:00,2025-11-28 17:00,2025-11-20 10:00,2025-11-28 10:00,48,48,0
FAB126104D-40,DOOR FRAME HANDED OVER TO SECAI ON 06/27 - FAB126104D,Complete,Elevator Hall 22 - 2F -SUE-FAB126104,,,,,,,,,,2025-06-27 08:00,2025-06-27 17:00,2025-06-27 08:00,2025-06-27 16:00,2025-11-20 17:00,2025-11-20 17:00,2025-11-25 10:00,2025-11-25 10:00,0,8,100
ZX-3610,SECAI TOOK OVER FOR ACCELERATION - Complete Drywall & Inspect - Vestibule 22 - 2F-FAB126106,Complete,Vestibule 22 - 2F -SUE-FAB126106,,,,,,,,,,2025-08-19 08:00,2025-08-25 17:00,2025-08-26 08:00,2025-08-26 17:00,2025-11-20 17:00,2025-11-20 17:00,2025-11-25 10:00,2025-11-25 10:00,0,40,100
ZX-3620,SECAI TOOK OVER FOR ACCELERATION - Complete Fire Caulk & Inspect - Vestibule 22 - 2F-FAB126106,Complete,Vestibule 22 - 2F -SUE-FAB126106,,,,,,,,,,2025-08-25 08:00,2025-08-26 17:00,2025-08-26 08:00,2025-08-26 17:00,2025-11-20 17:00,2025-11-20 17:00,2025-12-05 17:00,2025-12-05 17:00,0,16,100
ZX-3630,SECAI TOOK OVER FOR ACCELERATION - Complete Control Joint & Inspect - Vestibule 22 - 2F-FAB126106,Complete,Vestibule 22 - 2F -SUE-FAB126106,,,,,,,,,,2025-08-25 08:00,2025-08-26 17:00,2025-08-26 08:00,2025-08-26 17:00,2025-11-20 17:00,2025-11-20 17:00,2025-11-25 10:00,2025-11-25 10:00,0,16,100
FAB126106A-03,INSTALL DOOR FRAMES - FAB126106A,Complete,Vestibule 22 - 2F -SUE-FAB126106,,,,,,,,,,2025-10-03 08:00,2025-10-03 17:00,2025-10-03 08:00,2025-10-03 17:00,2025-11-20 17:00,2025-11-20 17:00,2025-11-25 10:00,2025-11-25 10:00,0,8,100
FAB126106A-04,INSTALL DOOR & HARDWARE - FAB126106A,Active,Vestibule 22 - 2F -SUE-FAB126106,,,,,,,,,,2025-10-23 08:00,2025-10-29 17:00,2025-10-23 08:00,,2025-11-21 08:00,2025-11-27 17:00,2025-11-25 10:00,2025-12-02 10:00,40,40,0
FAB126106A-05,PAINT & PROTECT DOORS & FRAMES - FAB126106A,Not Started,Vestibule 22 - 2F -SUE-FAB126106,,,,,,,,,,2026-02-16 08:00,2026-02-19 15:00,,,2026-02-16 08:00,2026-02-19 15:00,2025-12-02 10:00,2025-12-05 17:00,30,30,0
FAB126106B-01,IMPACT - INSTALL/REWORK DRYWALL FRAMING AROUND DOORS - FAB126106B,Complete,Vestibule 22 - 2F -SUE-FAB126106,,,,,,,,,,2025-02-17 08:00,2025-02-25 17:00,2025-02-17 08:00,2025-02-25 17:00,2025-11-20 17:00,2025-11-20 17:00,2025-11-25 10:00,2025-11-25 10:00,0,56,100
FAB126106B-02,SECAI ROUGH IN/SECURITY - FAB126106B,Complete,Vestibule 22 - 2F -SUE-FAB126106,,,,,,,,,,2025-02-25 08:00,2025-02-25 17:00,2025-02-25 08:00,2025-02-25 17:00,2025-11-20 17:00,2025-11-20 17:00,2025-11-25 10:00,2025-11-25 10:00,0,8,100
FAB126106B-03,INSTALL DOOR FRAMES - FAB126106B,Complete,Vestibule 22 - 2F -SUE-FAB126106,,,,,,,,,,2025-08-18 13:00,2025-08-19 12:00,2025-02-25 00:00,2025-02-25 16:00,2025-11-20 17:00,2025-11-20 17:00,2025-11-25 10:00,2025-11-25 10:00,0,8,100
FAB126106B-04,INSTALL DOOR & HARDWARE - FAB126106B,Active,Vestibule 22 - 2F -SUE-FAB126106,,,,,,,,,,2025-10-22 08:00,2025-10-28 17:00,2025-10-22 08:00,,2025-11-21 08:00,2025-11-27 17:00,2025-11-25 10:00,2025-12-02 10:00,40,40,0
FAB126106B-05,PAINT & PROTECT DOORS & FRAMES - FAB126106B,Not Started,Vestibule 22 - 2F -SUE-FAB126106,,,,,,,,,,2026-02-16 08:00,2026-02-19 15:00,,,2026-02-16 08:00,2026-02-19 15:00,2025-12-02 10:00,2025-12-05 17:00,30,30,0
ZX-3580,Complete Drywall & Inspect - Fire Alarm 22 - 2F-FAB126112,Complete,Fire Alarm 22 - 2F - SUE-FAB126112,,,,,,,,,,2025-09-09 08:00,2025-09-15 17:00,2025-09-09 08:00,2025-09-15 17:00,2025-11-20 17:00,2025-11-20 17:00,2025-12-05 17:00,2025-12-05 17:00,0,40,100
ZX-3600,Complete Control Joint & Inspect - Fire Alarm 22 - 2F-FAB126112,Complete,Fire Alarm 22 - 2F - SUE-FAB126112,,,,,,,,,,2025-10-10 08:00,2025-10-13 17:00,2025-10-10 08:00,2025-10-13 17:00,2025-11-20 17:00,2025-11-20 17:00,2025-12-05 17:00,2025-12-05 17:00,0,16,100
FAB126112A-01,IMPACT - INSTALL/REWORK DRYWALL FRAMING AROUND DOORS - FAB126112A,Complete,Fire Alarm 22 - 2F - SUE-FAB126112,,,,,,,,,,2025-05-12 08:00,2025-05-20 17:00,2025-05-12 08:00,2025-05-16 17:00,2025-11-20 17:00,2025-11-20 17:00,2025-11-25 10:00,2025-11-25 10:00,0,56,100
FAB126112A-02,SECAI ROUGH IN/SECURITY - FAB126112A,Complete,Fire Alarm 22 - 2F - SUE-FAB126112,,,,,,,,,,2025-05-16 08:00,2025-05-16 17:00,2025-05-16 08:00,2025-05-16 17:00,2025-11-20 17:00,2025-11-20 17:00,2025-11-25 10:00,2025-11-25 10:00,0,8,100
FAB126112A-03,INSTALL DOOR FRAMES - FAB126112A,Complete,Fire Alarm 22 - 2F - SUE-FAB126112,,,,,,,,,,2025-07-28 13:00,2025-07-29 12:00,2025-05-15 00:00,2025-05-16 16:00,2025-11-20 17:00,2025-11-20 17:00,2025-11-25 10:00,2025-11-25 10:00,0,8,100
FAB126112A-04,INSTALL DOOR & HARDWARE - FAB126112A,Active,Fire Alarm 22 - 2F - SUE-FAB126112,,,,,,,,,,2025-05-16 08:00,2025-05-22 17:00,2025-05-16 08:00,,2025-11-21 08:00,2025-11-27 17:00,2025-11-25 10:00,2025-12-02 10:00,40,40,0
FAB126112A-05,PAINT & PROTECT DOORS & FRAMES - FAB126112A,Not Started,Fire Alarm 22 - 2F - SUE-FAB126112,,,,,,,,,,2026-02-16 08:00,2026-02-19 15:00,,,2026-02-16 08:00,2026-02-19 15:00,2025-12-02 10:00,2025-12-05 17:00,30,30,0
ZX-3850,Complete Drywall & Inspect - Data Center A - 2F-FAB120106,Complete,Data Center A - 2F -FIZ-FAB120106,,,,,,,,,,2025-06-10 08:00,2025-07-07 17:00,2025-06-10 08:00,2025-07-25 17:00,2025-11-20 17:00,2025-11-20 17:00,2025-11-24 10:00,2025-11-24 10:00,0,160,100
ZX-3860,Complete Fire Caulk & Inspect - Data Center A - 2F-FAB120106,Complete,Data Center A - 2F -FIZ-FAB120106,,,,,,,,,,2025-07-25 08:00,2025-07-30 17:00,2025-07-25 08:00,2025-08-04 17:00,2025-11-20 17:00,2025-11-20 17:00,2025-12-05 17:00,2025-12-05 17:00,0,32,100
ZX-3870,Complete Control Joint & Inspect - Data Center A - 2F-FAB120106,Complete,Data Center A - 2F -FIZ-FAB120106,,,,,,,,,,2025-07-25 08:00,2025-07-25 17:00,2025-07-25 08:00,2025-07-25 17:00,2025-11-20 17:00,2025-11-20 17:00,2025-11-24 10:00,2025-11-24 10:00,0,8,100
FAB120106A-01,IMPACT - INSTALL/REWORK DRYWALL FRAMING AROUND DOORS - FAB120106A,Complete,Data Center A - 2F -FIZ-FAB120106,,,,,,,,,,2025-08-01 08:00,2025-08-11 17:00,2025-07-08 13:00,2025-07-15 17:00,2025-11-20 17:00,2025-11-20 17:00,2025-11-27 08:00,2025-11-27 08:00,0,56,100
FAB120106A-02,SECAI ROUGH IN/SECURITY - FAB120106A,Complete,Data Center A - 2F -FIZ-FAB120106,,,,,,,,,,2025-08-01 08:00,2025-08-01 17:00,2025-07-09 08:00,2025-07-11 17:00,2025-11-20 17:00,2025-11-20 17:00,2025-11-27 08:00,2025-11-27 08:00,0,8,100
FAB120106A-03,INSTALL DOOR FRAMES - FAB120106A,Complete,Data Center A - 2F -FIZ-FAB120106,,,,,,,,,,2025-08-01 08:00,2025-08-01 17:00,2025-07-21 08:00,2025-07-22 17:00,2025-11-20 17:00,2025-11-20 17:00,2025-11-27 08:00,2025-11-27 08:00,0,8,100
FAB120106A-04,INSTALL DOOR & HARDWARE - FAB120106A,Active,Data Center A - 2F -FIZ-FAB120106,,,,,,,,,,2025-08-25 08:00,2025-08-29 17:00,2025-08-25 08:00,,2025-11-21 08:00,2025-11-27 17:00,2025-11-27 08:00,2025-12-03 17:00,40,40,0
FAB120106A-05,PAINT & PROTECT DOORS & FRAMES - FAB120106A,Not Started,Data Center A - 2F -FIZ-FAB120106,,,,,,,,,,2026-02-16 08:00,2026-02-17 17:00,,,2026-02-16 08:00,2026-02-17 17:00,2025-12-04 08:00,2025-12-05 17:00,16,16,0
FAB120106B-01,IMPACT - INSTALL/REWORK DRYWALL FRAMING AROUND DOORS - FAB120106B,Complete,Data Center A - 2F -FIZ-FAB120106,,,,,,,,,,2025-08-01 08:00,2025-08-01 17:00,2025-07-14 08:00,2025-07-17 17:00,2025-11-20 17:00,2025-11-20 17:00,2025-11-25 10:00,2025-11-25 10:00,0,8,100
FAB120106B-02,SECAI ROUGH IN/SECURITY - FAB120106B,Complete,Data Center A - 2F -FIZ-FAB120106,,,,,,,,,,2025-08-01 08:00,2025-08-01 17:00,2025-07-18 08:00,2025-07-21 17:00,2025-11-20 17:00,2025-11-20 17:00,2025-11-25 10:00,2025-11-25 10:00,0,8,100
FAB120106B-03,INSTALL DOOR FRAME  - FAB120106B,Complete,Data Center A - 2F -FIZ-FAB120106,,,,,,,,,,2025-08-01 08:00,2025-08-01 17:00,2025-07-23 08:00,2025-07-23 17:00,2025-11-20 17:00,2025-11-20 17:00,2025-11-25 10:00,2025-11-25 10:00,0,8,100
FAB120106B-04,INSTALL DOOR & HARDWARE - FAB120106B,Active,Data Center A - 2F -FIZ-FAB120106,,,,,,,,,,2025-09-11 08:00,2025-09-17 17:00,2025-09-11 08:00,,2025-11-21 08:00,2025-11-27 17:00,2025-11-25 10:00,2025-12-02 10:00,40,40,0
FAB120106B-05,PAINT & PROTECT DOORS & FRAMES - FAB120106B,Not Started,Data Center A - 2F -FIZ-FAB120106,,,,,,,,,,2026-02-16 08:00,2026-02-19 15:00,,,2026-02-16 08:00,2026-02-19 15:00,2025-12-02 10:00,2025-12-05 17:00,30,30,0
FAB120106C-03,INSTALL DOOR FRAMES - FAB120106C,Not Started,Data Center A - 2F -FIZ-FAB120106,,,,,,,,,,2025-11-21 08:00,2025-11-21 17:00,,,2025-11-21 08:00,2025-11-21 17:00,2025-11-24 10:00,2025-11-25 10:00,8,8,0
FAB120106C-04,INSTALL DOOR & HARDWARE - FAB120106C,Not Started,Data Center A - 2F -FIZ-FAB120106,,,,,,,,,,2025-11-24 08:00,2025-11-28 17:00,,,2025-11-24 08:00,2025-11-28 17:00,2025-11-25 10:00,2025-12-02 10:00,40,40,0
FAB120106C-05,PAINT & PROTECT DOORS & FRAMES - FAB120106C,Not Started,Data Center A - 2F -FIZ-FAB120106,,,,,,,,,,2026-02-16 08:00,2026-02-19 15:00,,,2026-02-16 08:00,2026-02-19 15:00,2025-12-02 10:00,2025-12-05 17:00,30,30,0
FAB120106B-11,IMPACT - INTERNAL - RAF PONY WALL DETAIL (RFI),Complete,Data Center A - 2F -FIZ-FAB120106,,,,,,,,,,2025-06-10 08:00,2025-06-18 10:00,2025-06-02 08:00,2025-06-10 10:00,2025-11-20 17:00,2025-11-20 17:00,2025-11-24 10:00,2025-11-24 10:00,0,50,100
FAB120118K-03,INSTALL DOOR FRAMES - FAB120118K,Complete,Data Center A - 2F -FIZ-FAB120106,,,,,,,,,,2025-06-30 08:00,2025-06-30 17:00,2025-06-30 08:00,2025-06-30 16:00,2025-11-20 17:00,2025-11-20 17:00,2025-11-27 08:00,2025-11-27 08:00,0,8,100
FAB120118K-04,INSTALL DOOR & HARDWARE - FAB120118K,Active,Data Center A - 2F -FIZ-FAB120106,,,,,,,,,,2025-08-26 08:00,2025-09-01 17:00,2025-08-26 08:00,,2025-11-21 08:00,2025-11-27 17:00,2025-11-27 08:00,2025-12-03 17:00,40,40,0
FAB120118K-05,PAINT & PROTECT DOORS & FRAMES - FAB120118K,Not Started,Data Center A - 2F -FIZ-FAB120106,,,,,,,,,,2026-02-16 08:00,2026-02-17 17:00,,,2026-02-16 08:00,2026-02-17 17:00,2025-12-04 08:00,2025-12-05 17:00,16,16,0
FAB120106B-60,IMPACT - SECAI MEP SCAFFOLD IMPEDING DOOR INSTALLATION- FAB120106B,Complete,Data Center A - 2F -FIZ-FAB120106,,,,,,,,,,2025-08-01 08:00,2025-09-11 17:00,2025-07-04 08:00,2025-09-10 17:00,2025-11-20 17:00,2025-11-20 17:00,2025-11-25 10:00,2025-11-25 10:00,0,240,100
FAB120118K-6,DOOR PREP - FAB120118K,Complete,Data Center A - 2F -FIZ-FAB120106,,,,,,,,,,2025-06-30 08:00,2025-07-11 17:00,2025-06-30 08:00,2025-08-25 08:00,2025-11-20 17:00,2025-11-20 17:00,2025-11-27 08:00,2025-11-27 08:00,0,80,100
ZX-4000,Complete Drywall & Inspect - Thermohygrostat Rm - 2F-FAB120103,Complete,Thermohygrostat Rm - 2F -FIZ-FAB120103,,,,,,,,,,2025-07-07 08:00,2025-07-18 17:00,2025-07-07 08:00,2025-07-17 17:00,2025-11-20 17:00,2025-11-20 17:00,2025-11-25 10:00,2025-11-25 10:00,0,80,100
ZX-4010,Complete Fire Caulk & Inspect - Thermohygrostat Rm - 2F-FAB120103,Complete,Thermohygrostat Rm - 2F -FIZ-FAB120103,,,,,,,,,,2025-07-17 08:00,2025-07-18 17:00,2025-07-17 08:00,2025-07-18 17:00,2025-11-20 17:00,2025-11-20 17:00,2025-12-05 17:00,2025-12-05 17:00,0,16,100
ZX-4020,Complete Control Joint & Inspect - Thermohygrostat Rm - 2F-FAB120103,Complete,Thermohygrostat Rm - 2F -FIZ-FAB120103,,,,,,,,,,2025-07-17 08:00,2025-07-18 17:00,2025-07-17 08:00,2025-07-18 17:00,2025-11-20 17:00,2025-11-20 17:00,2025-11-25 10:00,2025-11-25 10:00,0,16,100
FAB120103A-01,IMPACT - INSTALL/REWORK DRYWALL FRAMING AROUND DOORS - FAB120103A,Complete,Thermohygrostat Rm - 2F -FIZ-FAB120103,,,,,,,,,,2025-09-24 08:00,2025-09-25 17:00,2025-09-24 08:00,2025-09-25 17:00,2025-11-20 17:00,2025-11-20 17:00,2025-11-25 10:00,2025-11-25 10:00,0,16,100
FAB120103A-02,SECAI ROUGH IN/SECURITY - FAB120103A,Complete,Thermohygrostat Rm - 2F -FIZ-FAB120103,,,,,,,,,,2025-09-25 08:00,2025-09-25 17:00,2025-09-25 08:00,2025-09-25 17:00,2025-11-20 17:00,2025-11-20 17:00,2025-11-25 10:00,2025-11-25 10:00,0,8,100
FAB120103A-03,INSTALL DOOR FRAMES - FAB120103A,Complete,Thermohygrostat Rm - 2F -FIZ-FAB120103,,,,,,,,,,2025-09-25 08:00,2025-09-25 17:00,2025-09-25 08:00,2025-09-25 17:00,2025-11-20 17:00,2025-11-20 17:00,2025-11-25 10:00,2025-11-25 10:00,0,8,100
FAB120103A-04,INSTALL DOOR & HARDWARE - FAB120103A,Not Started,Thermohygrostat Rm - 2F -FIZ-FAB120103,,,,,,,,,,2025-11-21 08:00,2025-11-27 17:00,,,2025-11-21 08:00,2025-11-27 17:00,2025-11-25 10:00,2025-12-02 10:00,40,40,0
FAB120103A-05,PAINT & PROTECT DOORS & FRAMES -  FAB120103A,Not Started,Thermohygrostat Rm - 2F -FIZ-FAB120103,,,,,,,,,,2026-02-16 08:00,2026-02-19 15:00,,,2026-02-16 08:00,2026-02-19 15:00,2025-12-02 10:00,2025-12-05 17:00,30,30,0
FAB120103A-11,IMPACT - INTERNAL - RAF PONY WALL DETAIL (RFI),Complete,Thermohygrostat Rm - 2F -FIZ-FAB120103,,,,,,,,,,2025-09-19 08:00,2025-09-19 17:00,2025-09-19 08:00,2025-09-19 17:00,2025-11-20 17:00,2025-11-20 17:00,2025-11-25 10:00,2025-11-25 10:00,0,8,100
ZX-3910,Complete Drywall & Inspect - Duct Shaft - 2F-SUE-FAB126103,Complete,Duct Shaft - 2F -SUE-FAB126103,,,,,,,,,,2025-09-09 08:00,2025-09-15 17:00,2025-09-09 08:00,2025-09-15 17:00,2025-11-20 17:00,2025-11-20 17:00,2025-12-05 17:00,2025-12-05 17:00,0,40,100
ZX-3920,Complete Fire Caulk & Inspect - Duct Shaft - 2F-SUE-FAB126103,Complete,Duct Shaft - 2F -SUE-FAB126103,,,,,,,,,,2025-09-29 08:00,2025-09-30 17:00,2025-09-29 08:00,2025-09-30 17:00,2025-11-20 17:00,2025-11-20 17:00,2025-12-05 17:00,2025-12-05 17:00,0,16,100
ZX-3970,Complete Drywall & Inspect - Duct Shaft - 2F-SUE-FAB126105,Complete,Duct Shaft - 2F -SUE-FAB126105,,,,,,,,,,2025-10-06 08:00,2025-10-07 17:00,2025-10-06 08:00,2025-10-07 17:00,2025-11-20 17:00,2025-11-20 17:00,2025-12-04 08:00,2025-12-04 08:00,0,16,100
ZX-3980,Complete Fire Caulk & Inspect - Duct Shaft - 2F-SUE-FAB126105,Not Started,Duct Shaft - 2F -SUE-FAB126105,,,,,,,,,,2025-12-05 08:00,2025-12-08 17:00,,,2025-12-05 08:00,2025-12-08 17:00,2025-12-04 08:00,2025-12-05 17:00,16,16,0
ZX-3990,Complete Control Joint & Inspect - Duct Shaft - 2F-SUE-FAB126105,Complete,Duct Shaft - 2F -SUE-FAB126105,,,,,,,,,,2025-11-06 08:00,2025-11-07 17:00,2025-11-06 08:00,2025-11-07 17:00,2025-11-20 17:00,2025-11-20 17:00,2025-12-05 17:00,2025-12-05 17:00,0,16,100
FAB126105A-01,IMPACT - INSTALL/REWORK DRYWALL FRAMING AROUND DOORS - FAB126105A,Complete,Duct Shaft - 2F -SUE-FAB126105,,,,,,,,,,2025-05-01 08:00,2025-05-02 17:00,2025-05-01 08:00,2025-05-02 17:00,2025-11-20 17:00,2025-11-20 17:00,2025-11-25 10:00,2025-11-25 10:00,0,16,100
FAB126105A-02,SECAI ROUGH IN/SECURITY - FAB126105A,Complete,Duct Shaft - 2F -SUE-FAB126105,,,,,,,,,,2025-05-05 08:00,2025-05-05 17:00,2025-05-05 08:00,2025-05-05 17:00,2025-11-20 17:00,2025-11-20 17:00,2025-11-25 10:00,2025-11-25 10:00,0,8,100
FAB126105A-03,INSTALL DOOR FRAMES - FAB126105A,Complete,Duct Shaft - 2F -SUE-FAB126105,,,,,,,,,,2025-08-12 13:00,2025-08-13 12:00,2025-05-04 00:00,2025-05-05 12:00,2025-11-20 17:00,2025-11-20 17:00,2025-11-25 10:00,2025-11-25 10:00,0,8,100
FAB126105A-04,INSTALL DOOR & HARDWARE - FAB126105A,Active,Duct Shaft - 2F -SUE-FAB126105,,,,,,,,,,2025-11-18 08:00,2025-11-24 17:00,2025-11-18 08:00,,2025-11-21 08:00,2025-11-27 17:00,2025-11-25 10:00,2025-12-02 10:00,40,40,0
FAB126105A-05,PAINT & PROTECT DOORS & FRAMES -  FAB126105A,Not Started,Duct Shaft - 2F -SUE-FAB126105,,,,,,,,,,2026-02-16 08:00,2026-02-19 15:00,,,2026-02-16 08:00,2026-02-19 15:00,2025-12-02 10:00,2025-12-05 17:00,30,30,0
FAB126109A-01,IMPACT - INSTALL/REWORK DRYWALL FRAMING AROUND DOORS - FAB126109A,Complete,Duct Shaft - 2F -SUE-FAB126105,,,,,,,,,,2025-05-08 08:00,2025-05-16 17:00,2025-05-08 08:00,2025-05-19 17:00,2025-11-20 17:00,2025-11-20 17:00,2025-11-25 10:00,2025-11-25 10:00,0,56,100
FAB126109A-02,SECAI ROUGH IN/SECURITY - FAB126109A,Complete,Duct Shaft - 2F -SUE-FAB126105,,,,,,,,,,2025-05-19 08:00,2025-05-19 17:00,2025-05-19 08:00,2025-05-19 17:00,2025-11-20 17:00,2025-11-20 17:00,2025-11-25 10:00,2025-11-25 10:00,0,8,100
FAB126109A-03,INSTALL DOOR FRAMES - FAB126109A,Complete,Duct Shaft - 2F -SUE-FAB126105,,,,,,,,,,2025-05-19 08:00,2025-05-19 17:00,2025-05-19 08:00,2025-05-19 17:00,2025-11-20 17:00,2025-11-20 17:00,2025-11-25 10:00,2025-11-25 10:00,0,8,100
FAB126109A-04,INSTALL DOOR & HARDWARE - FAB126109A,Active,Duct Shaft - 2F -SUE-FAB126105,,,,,,,,,,2025-06-06 08:00,2025-06-12 17:00,2025-06-06 08:00,,2025-11-21 08:00,2025-11-27 17:00,2025-11-25 10:00,2025-12-02 10:00,40,40,0
FAB126109A-05,PAINT & PROTECT DOORS & FRAMES - FAB126109A,Not Started,Duct Shaft - 2F -SUE-FAB126105,,,,,,,,,,2026-02-16 08:00,2026-02-19 15:00,,,2026-02-16 08:00,2026-02-19 15:00,2025-12-02 10:00,2025-12-05 17:00,30,30,0
ZX-3940,Complete Drywall & Inspect - Fire Alarm 20 - 2F-FAB126308,Complete,Fire Alarm 20 - 2F -SUE-FAB126308,,,,,,,,,,2025-09-01 08:00,2025-09-05 17:00,2025-09-01 08:00,2025-09-05 17:00,2025-11-20 17:00,2025-11-20 17:00,2025-12-05 17:00,2025-12-05 17:00,0,40,100
ZX-3950,Complete Fire Caulk & Inspect - Fire Alarm 20 - 2F-FAB126308,Complete,Fire Alarm 20 - 2F -SUE-FAB126308,,,,,,,,,,2025-09-29 08:00,2025-09-29 17:00,2025-09-29 08:00,2025-09-29 17:00,2025-11-20 17:00,2025-11-20 17:00,2025-12-05 17:00,2025-12-05 17:00,0,8,100
ZX-3960,Complete Control Joint & Inspect - Fire Alarm 20 - 2F-FAB126308,Complete,Fire Alarm 20 - 2F -SUE-FAB126308,,,,,,,,,,2025-10-27 08:00,2025-10-27 17:00,2025-10-27 08:00,2025-10-27 17:00,2025-11-20 17:00,2025-11-20 17:00,2025-12-05 17:00,2025-12-05 17:00,0,8,100
FAB126308A-03,INSTALL DOOR FRAME BY SECAI - FAB126308A HANDED OVER 06/27,Complete,Fire Alarm 20 - 2F -SUE-FAB126308,,,,,,,,,,2025-06-27 08:00,2025-07-10 17:00,2025-06-28 08:00,2025-10-30 17:00,2025-11-20 17:00,2025-11-20 17:00,2025-12-01 08:00,2025-12-01 08:00,0,80,100
FAB126308A-04,INSTALL DOOR & HARDWARE - FAB126308A,Active,Fire Alarm 20 - 2F -SUE-FAB126308,,,,,,,,,,2025-11-12 08:00,2025-11-18 17:00,2025-11-12 08:00,,2025-11-21 08:00,2025-11-27 17:00,2025-12-01 08:00,2025-12-05 17:00,40,40,0
FAB126308A-05,PAINT & PROTECT DOORS & FRAMES - FAB126308A,Not Started,Fire Alarm 20 - 2F -SUE-FAB126308,,,,,,,,,,2026-02-16 08:00,2026-02-19 17:00,,,2026-02-16 08:00,2026-02-19 17:00,2025-12-02 08:00,2025-12-05 17:00,32,32,0
FAB126308A-13,DOOR FRAME HANDED OVER TO SECAI ON 06/27- FAB126308A,Complete,Fire Alarm 20 - 2F -SUE-FAB126308,,,,,,,,,,2025-06-27 08:00,2025-06-27 17:00,2025-06-27 08:00,2025-06-27 16:00,2025-11-20 17:00,2025-11-20 17:00,2025-12-01 08:00,2025-12-01 08:00,0,8,100
ZX-4390,Complete Drywall & Inspect - Duct Shaft - 2F-SUE-FAB126401,Not Started,Duct Shaft - 2F -SUE-FAB126401,,,,,,,,,,2025-12-05 08:00,2025-12-11 17:00,,,2025-12-05 08:00,2025-12-11 17:00,2025-11-27 08:00,2025-12-03 17:00,40,40,0
ZX-4400,Complete Fire Caulk & Inspect - Duct Shaft - 2F-SUE-FAB126401,Not Started,Duct Shaft - 2F -SUE-FAB126401,,,,,,,,,,2025-12-12 08:00,2025-12-15 17:00,,,2025-12-12 08:00,2025-12-15 17:00,2025-12-04 08:00,2025-12-05 17:00,16,16,0
FAB126401A-01,IMPACT - INSTALL/REWORK DRYWALL FRAMING AROUND DOORS - FAB126401A,Complete,Duct Shaft - 2F -SUE-FAB126401,,,,,,,,,,2025-07-09 08:00,2025-07-17 17:00,2025-07-09 08:00,2025-07-17 17:00,2025-11-20 17:00,2025-11-20 17:00,2025-11-25 10:00,2025-11-25 10:00,0,56,100
FAB126401A-02,SECAI ROUGH IN/SECURITY - FAB126401A,Complete,Duct Shaft - 2F -SUE-FAB126401,,,,,,,,,,2025-07-17 08:00,2025-07-17 17:00,2025-07-17 08:00,2025-07-17 17:00,2025-11-20 17:00,2025-11-20 17:00,2025-11-25 10:00,2025-11-25 10:00,0,8,100
FAB126401A-03,INSTALL DOOR FRAMES - FAB126401A,Complete,Duct Shaft - 2F -SUE-FAB126401,,,,,,,,,,2025-07-17 08:00,2025-07-17 17:00,2025-07-17 08:00,2025-07-17 17:00,2025-11-20 17:00,2025-11-20 17:00,2025-11-25 10:00,2025-11-25 10:00,0,8,100
FAB126401A-04,INSTALL DOOR & HARDWARE - FAB126401A,Active,Duct Shaft - 2F -SUE-FAB126401,,,,,,,,,,2025-11-13 08:00,2025-11-19 17:00,2025-11-13 08:00,,2025-11-21 08:00,2025-11-27 17:00,2025-11-25 10:00,2025-12-02 10:00,40,40,0
FAB126401A-05,PAINT & PROTECT DOORS & FRAMES - FAB126401A,Not Started,Duct Shaft - 2F -SUE-FAB126401,,,,,,,,,,2026-02-16 08:00,2026-02-19 15:00,,,2026-02-16 08:00,2026-02-19 15:00,2025-12-02 10:00,2025-12-05 17:00,30,30,0
FAB126401B-01,IMPACT - INSTALL/REWORK DRYWALL FRAMING AROUND DOORS - FAB126401B,Complete,Duct Shaft - 2F -SUE-FAB126401,,,,,,,,,,2025-07-21 08:00,2025-07-29 17:00,2025-07-21 08:00,2025-07-29 17:00,2025-11-20 17:00,2025-11-20 17:00,2025-11-25 10:00,2025-11-25 10:00,0,56,100
FAB126401B-02,SECAI ROUGH IN/SECURITY - FAB126401B,Complete,Duct Shaft - 2F -SUE-FAB126401,,,,,,,,,,2025-07-29 08:00,2025-07-29 17:00,2025-07-29 08:00,2025-07-29 17:00,2025-11-20 17:00,2025-11-20 17:00,2025-11-25 10:00,2025-11-25 10:00,0,8,100
FAB126401B-03,INSTALL DOOR FRAMES - FAB126401B,Complete,Duct Shaft - 2F -SUE-FAB126401,,,,,,,,,,2025-07-29 08:00,2025-07-29 17:00,2025-07-29 08:00,2025-07-29 17:00,2025-11-20 17:00,2025-11-20 17:00,2025-11-25 10:00,2025-11-25 10:00,0,8,100
FAB126401B-04,INSTALL DOOR & HARDWARE - FAB126401B,Not Started,Duct Shaft - 2F -SUE-FAB126401,,,,,,,,,,2025-11-21 08:00,2025-11-27 17:00,,,2025-11-21 08:00,2025-11-27 17:00,2025-11-25 10:00,2025-12-02 10:00,40,40,0
FAB126401B-05,PAINT & PROTECT DOORS & FRAMES - FAB126401B,Not Started,Duct Shaft - 2F -SUE-FAB126401,,,,,,,,,,2026-02-16 08:00,2026-02-19 15:00,,,2026-02-16 08:00,2026-02-19 15:00,2025-12-02 10:00,2025-12-05 17:00,30,30,0
ZX-4210,Complete Drywall & Inspect - Thermohygrostat Rm - 2F-FAB120104,Complete,Thermohygrostat Rm - 2F -FIZ-FAB120104,,,,,,,,,,2025-09-05 08:00,2025-09-18 17:00,2025-06-23 08:00,2025-06-25 11:00,2025-11-20 17:00,2025-11-20 17:00,2025-11-17 08:00,2025-11-17 08:00,0,80,100
ZX-4220,Complete Fire Caulk & Inspect - Thermohygrostat Rm - 2F-FAB120104,Complete,Thermohygrostat Rm - 2F -FIZ-FAB120104,,,,,,,,,,2025-09-19 08:00,2025-09-22 17:00,2025-06-26 08:00,2025-06-27 17:00,2025-11-20 17:00,2025-11-20 17:00,2025-12-05 17:00,2025-12-05 17:00,0,16,100
ZX-4230,Complete Control Joint & Inspect - Thermohygrostat Rm - 2F-FAB120104,Complete,Thermohygrostat Rm - 2F -FIZ-FAB120104,,,,,,,,,,2025-09-19 08:00,2025-09-22 17:00,2025-06-27 08:00,2025-06-27 17:00,2025-11-20 17:00,2025-11-20 17:00,2025-11-24 10:00,2025-11-24 10:00,0,16,100
FAB120104A-03,INSTALL DOOR FRAMES - FAB120104A,Complete,Thermohygrostat Rm - 2F -FIZ-FAB120104,,,,,,,,,,2025-10-27 08:00,2025-10-27 17:00,2025-10-27 08:00,2025-10-27 17:00,2025-11-20 17:00,2025-11-20 17:00,2025-11-25 10:00,2025-11-25 10:00,0,8,100
FAB120104A-04,INSTALL DOOR & HARDWARE - FAB120104A,Not Started,Thermohygrostat Rm - 2F -FIZ-FAB120104,,,,,,,,,,2025-11-21 08:00,2025-11-27 17:00,,,2025-11-21 08:00,2025-11-27 17:00,2025-11-25 10:00,2025-12-02 10:00,40,40,0
FAB120104A-05,PAINT & PROTECT DOORS & FRAMES -  FAB120104A,Not Started,Thermohygrostat Rm - 2F -FIZ-FAB120104,,,,,,,,,,2026-02-16 08:00,2026-02-19 15:00,,,2026-02-16 08:00,2026-02-19 15:00,2025-12-02 10:00,2025-12-05 17:00,30,30,0
FAB120104A-11,IMPACT- SECAI TEMPORAY DUCTS AND CORDS IN OPENIG - FAB120104A,Complete,Thermohygrostat Rm - 2F -FIZ-FAB120104,,,,,,,,,,2025-08-22 08:00,2025-09-04 17:00,2025-08-22 08:00,2025-10-24 17:00,2025-11-20 17:00,2025-11-20 17:00,2025-11-25 10:00,2025-11-25 10:00,0,80,100
ZX-4360,SECAI TURNOVER FOR ACELERATION - Drywall & Inspect - Battery Rm - 2F-FAB124102 BAKER/DESCOPE,Complete,Battery Rm - 2F -FIZ-FAB124102,,,,,,,,,,2025-08-04 08:00,2025-08-22 17:00,2025-06-16 08:00,2025-06-16 16:00,2025-11-20 17:00,2025-11-20 17:00,2025-11-18 10:00,2025-11-18 10:00,0,120,100
ZX-4370,SECAI TURNOVER FOR ACELERATION Fire Caulk & Inspect - Battery Rm - 2F-FAB124102 BAKER/DESCOPE,Complete,Battery Rm - 2F -FIZ-FAB124102,,,,,,,,,,2025-07-15 08:00,2025-07-16 17:00,2025-06-16 08:00,2025-06-16 16:00,2025-11-20 17:00,2025-11-20 17:00,2025-12-05 17:00,2025-12-05 17:00,0,16,100
ZX-4380,SECAI TURNOVER FOR ACELERATION Control Joint & Inspect - Battery Rm - 2F-FAB124102 BAKER/DESCOPE,Complete,Battery Rm - 2F -FIZ-FAB124102,,,,,,,,,,2025-07-15 08:00,2025-07-16 17:00,2025-06-16 08:00,2025-06-16 16:00,2025-11-20 17:00,2025-11-20 17:00,2025-11-18 10:00,2025-11-18 10:00,0,16,100
FAB124102A-01,SECAI TURNOVER FOR ACELERATION - INSTALL/REWORK DRYWALL FRAMING AROUND DOORS - FAB124102A,Complete,Battery Rm - 2F -FIZ-FAB124102,,,,,,,,,,2025-07-17 08:00,2025-07-25 17:00,2025-06-16 08:00,2025-06-16 16:00,2025-11-20 17:00,2025-11-20 17:00,2025-11-25 10:00,2025-11-25 10:00,0,56,100
FAB124102A-02,SECAI ROUGH IN/SECURITY - FAB124102A SECAI TURNOVER FOR ACELERATION,Complete,Battery Rm - 2F -FIZ-FAB124102,,,,,,,,,,2025-07-28 08:00,2025-07-28 17:00,2025-06-16 08:00,2025-06-16 16:00,2025-11-20 17:00,2025-11-20 17:00,2025-11-25 10:00,2025-11-25 10:00,0,8,100
FAB124102A-03,INSTALL DOOR FRAMES - FAB124102A,Complete,Battery Rm - 2F -FIZ-FAB124102,,,,,,,,,,2025-10-17 08:00,2025-10-17 17:00,2025-10-17 08:00,2025-10-17 17:00,2025-11-20 17:00,2025-11-20 17:00,2025-11-25 10:00,2025-11-25 10:00,0,8,100
FAB124102A-04,INSTALL DOOR & HARDWARE - FAB124102A,Not Started,Battery Rm - 2F -FIZ-FAB124102,,,,,,,,,,2025-11-21 08:00,2025-11-27 17:00,,,2025-11-21 08:00,2025-11-27 17:00,2025-11-25 10:00,2025-12-02 10:00,40,40,0
FAB124102A-05,PAINT & PROTECT DOORS & FRAMES - FAB124102A,Not Started,Battery Rm - 2F -FIZ-FAB124102,,,,,,,,,,2026-02-16 08:00,2026-02-19 15:00,,,2026-02-16 08:00,2026-02-19 15:00,2025-12-02 10:00,2025-12-05 17:00,30,30,0
FAB124102B-03,INSTALL DOOR FRAMES - FAB124102B,Complete,Battery Rm - 2F -FIZ-FAB124102,,,,,,,,,,2025-10-22 08:00,2025-10-22 17:00,2025-10-22 08:00,2025-10-22 17:00,2025-11-20 17:00,2025-11-20 17:00,2025-11-18 10:00,2025-11-18 10:00,0,8,100
FAB124102B-04,INSTALL DOOR & HARDWARE - FAB124102B,Not Started,Battery Rm - 2F -FIZ-FAB124102,,,,,,,,,,2025-11-28 08:00,2025-12-04 17:00,,,2025-11-28 08:00,2025-12-04 17:00,2025-11-25 10:00,2025-12-02 10:00,40,40,0
FAB124102B-05,PAINT & PROTECT DOORS & FRAMES - FAB124102B,Not Started,Battery Rm - 2F -FIZ-FAB124102,,,,,,,,,,2026-02-16 08:00,2026-02-19 15:00,,,2026-02-16 08:00,2026-02-19 15:00,2025-12-02 10:00,2025-12-05 17:00,30,30,0
FAB124102B-11,IMPACT - PROCUREMENT - REORDERED DOORS (JAMB DEPTH ISSUE),Complete,Battery Rm - 2F -FIZ-FAB124102,,,,,,,,,,2025-06-20 08:00,2025-08-14 17:00,2025-06-20 08:00,2025-06-30 17:00,2025-11-20 17:00,2025-11-20 17:00,2025-11-18 10:00,2025-11-18 10:00,0,320,100
ZX-4270,Complete Drywall & Inspect - IT/Security Rm 22 - 2F-FAB126108,Complete,IT/Security Rm 22 - 2F -SUE-FAB126108,,,,,,,,,,2025-09-01 08:00,2025-09-05 17:00,2025-09-01 08:00,2025-09-05 17:00,2025-11-20 17:00,2025-11-20 17:00,2025-11-25 10:00,2025-11-25 10:00,0,40,100
ZX-4280,Complete Fire Caulk & Inspect - IT/Security Rm 22 - 2F-FAB126108,Complete,IT/Security Rm 22 - 2F -SUE-FAB126108,,,,,,,,,,2025-09-04 08:00,2025-09-05 17:00,2025-09-04 08:00,2025-09-05 17:00,2025-11-20 17:00,2025-11-20 17:00,2025-12-05 17:00,2025-12-05 17:00,0,16,100
ZX-4290,Complete Control Joint & Inspect - IT/Security Rm 22 - 2F-FAB126108,Complete,IT/Security Rm 22 - 2F -SUE-FAB126108,,,,,,,,,,2025-09-04 08:00,2025-09-05 17:00,2025-09-04 08:00,2025-09-05 17:00,2025-11-20 17:00,2025-11-20 17:00,2025-11-25 10:00,2025-11-25 10:00,0,16,100
TR-FAB126108A-01,IMPACT - INSTALL/REWORK DRYWALL FRAMING AROUND DOORS - TR - FAB126108A,Complete,IT/Security Rm 22 - 2F -SUE-FAB126108,,,,,,,,,,2025-05-12 08:00,2025-05-20 17:00,2025-05-12 08:00,2025-05-16 17:00,2025-11-20 17:00,2025-11-20 17:00,2025-11-25 10:00,2025-11-25 10:00,0,56,100
TR-FAB126108A-02,SECAI ROUGH IN/SECURITY - TR - FAB126108A,Complete,IT/Security Rm 22 - 2F -SUE-FAB126108,,,,,,,,,,2025-05-16 08:00,2025-05-16 17:00,2025-05-16 08:00,2025-05-16 17:00,2025-11-20 17:00,2025-11-20 17:00,2025-11-25 10:00,2025-11-25 10:00,0,8,100
TR-FAB126108A-03,INSTALL DOOR FRAMES - TR - FAB126108A,Complete,IT/Security Rm 22 - 2F -SUE-FAB126108,,,,,,,,,,2025-07-31 13:00,2025-08-01 12:00,2025-05-15 00:00,2025-05-16 16:00,2025-11-20 17:00,2025-11-20 17:00,2025-11-25 10:00,2025-11-25 10:00,0,8,100
TR-FAB126108A-04,INSTALL DOOR & HARDWARE - TR - FAB126108A,Active,IT/Security Rm 22 - 2F -SUE-FAB126108,,,,,,,,,,2025-10-08 08:00,2025-10-14 17:00,2025-10-08 08:00,,2025-11-21 08:00,2025-11-27 17:00,2025-11-25 10:00,2025-12-02 10:00,40,40,0
TR-FAB126108A-05,PAINT & PROTECT DOORS & FRAMES - TR - FAB126108A,Not Started,IT/Security Rm 22 - 2F -SUE-FAB126108,,,,,,,,,,2026-02-16 08:00,2026-02-19 15:00,,,2026-02-16 08:00,2026-02-19 15:00,2025-12-02 10:00,2025-12-05 17:00,30,30,0
ZX-4300,Complete Drywall & Inspect - IT/Security 20 - 2F-FABTR-FAB126304,Complete,IT/Security 20 - 2F -SUE-TR-FAB-FAB126304,,,,,,,,,,2024-08-19 08:00,2024-08-19 17:00,2024-08-19 08:00,2024-08-30 16:00,2025-11-20 17:00,2025-11-20 17:00,2025-12-04 08:00,2025-12-04 08:00,0,8,100
ZX-4310,Complete Fire Caulk & Inspect - IT/Security 20 - 2F-FABTR-FAB126304,Complete,IT/Security 20 - 2F -SUE-TR-FAB-FAB126304,,,,,,,,,,2025-09-29 08:00,2025-09-30 17:00,2025-09-29 08:00,2025-09-30 17:00,2025-11-20 17:00,2025-11-20 17:00,2025-12-05 17:00,2025-12-05 17:00,0,16,100
ZX-4320,Complete Control Joint & Inspect - IT/Security 20 - 2F-FABTR-FAB126304,Not Started,IT/Security 20 - 2F -SUE-TR-FAB-FAB126304,,,,,,,,,,2025-11-28 08:00,2025-12-01 17:00,,,2025-11-28 08:00,2025-12-01 17:00,2025-12-04 08:00,2025-12-05 17:00,16,16,0
TR-FAB126304A-01,INSTALL DOOR FRAMES - TR - FAB126304A,Complete,IT/Security 20 - 2F -SUE-TR-FAB-FAB126304,,,,,,,,,,2025-11-07 08:00,2025-11-07 17:00,2025-11-07 08:00,2025-11-07 17:00,2025-11-20 17:00,2025-11-20 17:00,2025-12-01 08:00,2025-12-01 08:00,0,8,100
TR-FAB126304A-04,INSTALL DOOR & HARDWARE - TR - FAB126304A,Active,IT/Security 20 - 2F -SUE-TR-FAB-FAB126304,,,,,,,,,,2025-11-10 08:00,2025-11-14 17:00,2025-11-10 08:00,,2025-11-21 08:00,2025-11-27 17:00,2025-12-01 08:00,2025-12-05 17:00,40,40,0
TR-FAB126304A-05,PAINT & PROTECT DOORS & FRAMES - TR - FAB126304A,Not Started,IT/Security 20 - 2F -SUE-TR-FAB-FAB126304,,,,,,,,,,2026-02-16 08:00,2026-02-19 15:00,,,2026-02-16 08:00,2026-02-19 15:00,2025-12-02 10:00,2025-12-05 17:00,30,30,0
TR-FAB126304A-11,IMPACT - INTERNAL - ONGOING WORK INSIDE THE ROOM,Complete,IT/Security 20 - 2F -SUE-TR-FAB-FAB126304,,,,,,,,,,2025-11-06 08:00,2025-11-06 17:00,2025-11-06 08:00,2025-11-06 17:00,2025-11-20 17:00,2025-11-20 17:00,2025-12-01 08:00,2025-12-01 08:00,0,8,100
ZX-4570,SECAI TOOK OVER ACCELERATION - Complete Drywall & Inspect - Pedestrian Walkway - 2F-FAB122105,Complete,Pedestrian Walkway - 2F -FIZ-FAB122105,,,,,,,,,,2025-10-13 08:00,2025-10-17 17:00,2025-10-13 08:00,2025-11-06 17:00,2025-11-20 17:00,2025-11-20 17:00,2025-12-05 17:00,2025-12-05 17:00,0,40,100
ZX-4580,Complete Fire Caulk & Inspect - Pedestrian Walkway - 2F-FAB122105,Complete,Pedestrian Walkway - 2F -FIZ-FAB122105,,,,,,,,,,2025-10-09 08:00,2025-10-10 17:00,2025-10-09 08:00,2025-10-10 17:00,2025-11-20 17:00,2025-11-20 17:00,2025-12-05 17:00,2025-12-05 17:00,0,16,100
ZX-4590,SECAI TOOK OVER ACCELERATION - Complete Control Joint & Inspect - Pedestrian Walkway - 2F-FAB122105,Complete,Pedestrian Walkway - 2F -FIZ-FAB122105,,,,,,,,,,2025-11-06 08:00,2025-11-07 17:00,2025-11-06 08:00,2025-11-06 17:00,2025-11-20 17:00,2025-11-20 17:00,2025-12-05 17:00,2025-12-05 17:00,0,16,100
ZX-4720,Complete Drywall & Inspect - I/O Rm - 2F-FAB124101,Complete,I/O Rm - 2F -FIZ-FAB124101,,,,,,,,,,2025-07-07 08:00,2025-07-18 17:00,2025-07-07 08:00,2025-07-18 17:00,2025-11-20 17:00,2025-11-20 17:00,2025-11-18 10:00,2025-11-18 10:00,0,80,100
ZX-4730,Complete Fire Caulk & Inspect - I/O Rm - 2F-FAB124101,Not Started,I/O Rm - 2F -FIZ-FAB124101,,,,,,,,,,2025-11-21 08:00,2025-11-21 17:00,,,2025-11-21 08:00,2025-11-21 17:00,2025-12-05 08:00,2025-12-05 17:00,8,8,0
ZX-4740,Complete Control Joint & Inspect - I/O Rm - 2F-FAB124101,Complete,I/O Rm - 2F -FIZ-FAB124101,,,,,,,,,,2025-07-17 08:00,2025-07-18 17:00,2025-07-17 08:00,2025-07-18 17:00,2025-11-20 17:00,2025-11-20 17:00,2025-11-18 10:00,2025-11-18 10:00,0,16,100
FAB124101A-01,IMPACT - INSTALL/REWORK DRYWALL FRAMING AROUND DOORS - FAB124101A,Complete,I/O Rm - 2F -FIZ-FAB124101,,,,,,,,,,2025-10-08 08:00,2025-10-14 17:00,2025-10-08 08:00,2025-10-14 17:00,2025-11-20 17:00,2025-11-20 17:00,2025-11-18 10:00,2025-11-18 10:00,0,40,100
FAB124101A-02,SECAI ROUGH IN/SECURITY - FAB124101A,Complete,I/O Rm - 2F -FIZ-FAB124101,,,,,,,,,,2025-10-15 08:00,2025-10-15 08:00,2025-10-15 08:00,2025-10-15 08:00,2025-11-20 17:00,2025-11-20 17:00,2025-11-18 10:00,2025-11-18 10:00,0,0,100
FAB124101A-03,INSTALL DOOR FRAMES - FAB124101A,Complete,I/O Rm - 2F -FIZ-FAB124101,,,,,,,,,,2025-10-17 08:00,2025-10-17 08:00,2025-10-17 08:00,2025-10-17 08:00,2025-11-20 17:00,2025-11-20 17:00,2025-11-18 10:00,2025-11-18 10:00,0,0,100
FAB124101A-04,INSTALL DOOR & HARDWARE - FAB124101A,Not Started,I/O Rm - 2F -FIZ-FAB124101,,,,,,,,,,2025-11-28 08:00,2025-12-04 17:00,,,2025-11-28 08:00,2025-12-04 17:00,2025-11-25 10:00,2025-12-02 10:00,40,40,0
FAB124101A-05,PAINT & PROTECT DOORS & FRAMES - FAB124101A,Not Started,I/O Rm - 2F -FIZ-FAB124101,,,,,,,,,,2026-02-16 08:00,2026-02-19 15:00,,,2026-02-16 08:00,2026-02-19 15:00,2025-12-02 10:00,2025-12-05 17:00,30,30,0
FAB124101B-01,IMPACT - INSTALL/REWORK DRYWALL FRAMING AROUND DOORS - FAB124101B,Complete,I/O Rm - 2F -FIZ-FAB124101,,,,,,,,,,2025-10-08 08:00,2025-10-14 17:00,2025-10-08 08:00,2025-10-14 17:00,2025-11-20 17:00,2025-11-20 17:00,2025-11-18 10:00,2025-11-18 10:00,0,40,100
FAB124101B-02,SECAI ROUGH IN/SECURITY - FAB124101B,Complete,I/O Rm - 2F -FIZ-FAB124101,,,,,,,,,,2025-10-15 08:00,2025-10-15 17:00,2025-10-15 08:00,2025-10-15 17:00,2025-11-20 17:00,2025-11-20 17:00,2025-11-18 10:00,2025-11-18 10:00,0,8,100
FAB124101B-03,INSTALL DOOR FRAMES - FAB124101B,Complete,I/O Rm - 2F -FIZ-FAB124101,,,,,,,,,,2025-10-17 08:00,2025-10-17 17:00,2025-10-17 08:00,2025-10-17 17:00,2025-11-20 17:00,2025-11-20 17:00,2025-11-18 10:00,2025-11-18 10:00,0,8,100
FAB124101B-04,INSTALL DOOR & HARDWARE - FAB124101B,Not Started,I/O Rm - 2F -FIZ-FAB124101,,,,,,,,,,2025-11-28 08:00,2025-12-04 17:00,,,2025-11-28 08:00,2025-12-04 17:00,2025-11-25 10:00,2025-12-02 10:00,40,40,0
FAB124101B-05,PAINT & PROTECT DOORS & FRAMES - FAB124101B,Not Started,I/O Rm - 2F -FIZ-FAB124101,,,,,,,,,,2026-02-16 08:00,2026-02-19 15:00,,,2026-02-16 08:00,2026-02-19 15:00,2025-12-02 10:00,2025-12-05 17:00,30,30,0
FAB124101A-11,IMPACT - PROCUREMENT - REORDERED DOORS (JAMB DEPTH ISSUE),Complete,I/O Rm - 2F -FIZ-FAB124101,,,,,,,,,,2025-06-09 08:00,2025-08-12 17:00,2025-06-09 08:00,2025-07-14 17:00,2025-11-20 17:00,2025-11-20 17:00,2025-11-18 10:00,2025-11-18 10:00,0,376,100
FAB124101B-11,IMPACT - PROCUREMENT - REORDERED DOORS (JAMB DEPTH ISSUE),Complete,I/O Rm - 2F -FIZ-FAB124101,,,,,,,,,,2025-06-09 08:00,2025-08-12 17:00,2025-06-09 08:00,2025-07-14 17:00,2025-11-20 17:00,2025-11-20 17:00,2025-11-18 10:00,2025-11-18 10:00,0,376,100
ZX-4630,SECAI TURNOVER FOR ACELERATION - Drywall & Inspect - Electrical Rm - 2F-FAB124103,Complete,Electrical Rm - 2F -FIZ-FAB124103,,,,,,,,,,2025-06-16 08:00,2025-06-24 17:00,2025-06-16 08:00,2025-06-27 17:00,2025-11-20 17:00,2025-11-20 17:00,2025-11-17 10:00,2025-11-17 10:00,0,56,100
ZX-4640,SECAI TURNOVER FOR ACELERATION - Fire Caulk & Inspect - Electrical Rm - 2F-FAB124103,Complete,Electrical Rm - 2F -FIZ-FAB124103,,,,,,,,,,2025-08-12 08:00,2025-08-13 17:00,2025-06-27 08:00,2025-06-27 17:00,2025-11-20 17:00,2025-11-20 17:00,2025-12-05 17:00,2025-12-05 17:00,0,16,100
ZX-4650,SECAI TURNOVER FOR ACELERATION - Control Joint & Inspect - Electrical Rm - 2F-FAB124103,Complete,Electrical Rm - 2F -FIZ-FAB124103,,,,,,,,,,2025-08-12 08:00,2025-08-13 17:00,2025-06-27 08:00,2025-06-27 17:00,2025-11-20 17:00,2025-11-20 17:00,2025-11-17 10:00,2025-11-17 10:00,0,16,100
ZX-4690,Complete Drywall & Inspect - Duct Shaft - 2F-SUE-FAB126301,Complete,Duct Shaft - 2F -SUE-FAB126301,,,,,,,,,,2025-10-01 08:00,2025-10-07 17:00,2025-10-01 08:00,2025-10-07 17:00,2025-11-20 17:00,2025-11-20 17:00,2025-12-05 17:00,2025-12-05 17:00,0,40,100
ZX-4710,Complete Control Joint & Inspect - Duct Shaft - 2F-SUE-FAB126301,Complete,Duct Shaft - 2F -SUE-FAB126301,,,,,,,,,,2025-11-06 08:00,2025-11-07 17:00,2025-11-06 08:00,2025-11-07 17:00,2025-11-20 17:00,2025-11-20 17:00,2025-12-05 17:00,2025-12-05 17:00,0,16,100
FAB126301A-01,IMPACT - INSTALL/REWORK DRYWALL FRAMING AROUND DOORS - FAB126301A,Complete,Duct Shaft - 2F -SUE-FAB126301,,,,,,,,,,2025-04-24 08:00,2025-05-02 17:00,2025-04-24 08:00,2025-05-02 17:00,2025-11-20 17:00,2025-11-20 17:00,2025-11-25 10:00,2025-11-25 10:00,0,56,100
FAB126301A-02,SECAI ROUGH IN/SECURITY - FAB126301A,Complete,Duct Shaft - 2F -SUE-FAB126301,,,,,,,,,,2025-05-02 08:00,2025-05-02 17:00,2025-05-02 08:00,2025-05-02 17:00,2025-11-20 17:00,2025-11-20 17:00,2025-11-25 10:00,2025-11-25 10:00,0,8,100
FAB126301A-03,INSTALL DOOR FRAMES - FAB126301A,Complete,Duct Shaft - 2F -SUE-FAB126301,,,,,,,,,,2025-08-19 13:00,2025-08-20 12:00,2025-05-02 00:00,2025-05-02 16:00,2025-11-20 17:00,2025-11-20 17:00,2025-11-25 10:00,2025-11-25 10:00,0,8,100
FAB126301A-04,INSTALL DOOR & HARDWARE - FAB126301A,Active,Duct Shaft - 2F -SUE-FAB126301,,,,,,,,,,2025-09-04 08:00,2025-09-10 17:00,2025-09-04 08:00,,2025-11-21 08:00,2025-11-27 17:00,2025-11-25 10:00,2025-12-02 10:00,40,40,0
FAB126301A-05,PAINT & PROTECT DOORS & FRAMES -  FAB126301A,Not Started,Duct Shaft - 2F -SUE-FAB126301,,,,,,,,,,2026-02-16 08:00,2026-02-19 15:00,,,2026-02-16 08:00,2026-02-19 15:00,2025-12-02 10:00,2025-12-05 17:00,30,30,0
FAB126302A-01,IMPACT - INSTALL/REWORK DRYWALL FRAMING AROUND DOORS - FAB126302A,Complete,Duct Shaft - 2F -SUE-FAB126301,,,,,,,,,,2025-02-17 08:00,2025-02-25 17:00,2025-02-17 08:00,2025-02-25 17:00,2025-11-20 17:00,2025-11-20 17:00,2025-11-25 10:00,2025-11-25 10:00,0,56,100
FAB126302A-02,SECAI ROUGH IN/SECURITY - FAB126302A,Complete,Duct Shaft - 2F -SUE-FAB126301,,,,,,,,,,2025-02-25 08:00,2025-02-25 17:00,2025-02-25 08:00,2025-02-25 17:00,2025-11-20 17:00,2025-11-20 17:00,2025-11-25 10:00,2025-11-25 10:00,0,8,100
FAB126302A-03,INSTALL DOOR FRAMES - FAB126302A,Complete,Duct Shaft - 2F -SUE-FAB126301,,,,,,,,,,2025-02-25 08:00,2025-02-25 17:00,2025-02-25 08:00,2025-02-25 17:00,2025-11-20 17:00,2025-11-20 17:00,2025-11-25 10:00,2025-11-25 10:00,0,8,100
FAB126302A-04,INSTALL DOOR & HARDWARE - FAB126302A,Active,Duct Shaft - 2F -SUE-FAB126301,,,,,,,,,,2025-09-04 08:00,2025-09-10 17:00,2025-09-04 08:00,,2025-11-21 08:00,2025-11-27 17:00,2025-11-25 10:00,2025-12-02 10:00,40,40,0
FAB126302A-05,PAINT & PROTECT DOORS & FRAMES -  FAB126302A,Not Started,Duct Shaft - 2F -SUE-FAB126301,,,,,,,,,,2026-02-16 08:00,2026-02-19 15:00,,,2026-02-16 08:00,2026-02-19 15:00,2025-12-02 10:00,2025-12-05 17:00,30,30,0
ZX-4660,SECAI TOOK OVER FOR ACCELERATION - Complete Drywall & Inspect - Elevator 20 - 2F-1FAB-EL20,Complete,Elevator 20 - 2F -SUE-FAB1-EL20,,,,,,,,,,2025-05-16 08:00,2025-05-29 17:00,2025-05-16 08:00,2025-06-27 16:00,2025-11-20 17:00,2025-11-20 17:00,2025-11-21 10:00,2025-11-21 10:00,0,80,100
ZX-4670,SECAI TOOK OVER FOR ACCELERATION - Complete Fire Caulk & Inspect - Elevator 20 - 2F-1FAB-EL20,Complete,Elevator 20 - 2F -SUE-FAB1-EL20,,,,,,,,,,2025-07-01 08:00,2025-07-02 17:00,2025-07-02 08:00,2025-07-02 17:00,2025-11-20 17:00,2025-11-20 17:00,2025-12-05 17:00,2025-12-05 17:00,0,16,100
ZX-4680,SECAI TOOK OVER FOR ACCELERATION - Complete Control Joint & Inspect - Elevator 20 - 2F-1FAB-EL20,Complete,Elevator 20 - 2F -SUE-FAB1-EL20,,,,,,,,,,2025-06-30 08:00,2025-07-01 17:00,2025-06-30 08:00,2025-07-01 16:00,2025-11-20 17:00,2025-11-20 17:00,2025-11-21 10:00,2025-11-21 10:00,0,16,100
ZX-18890,IMPACT - SECAI ELEVATOR TEAM TOOK OVER - Elevator #20 - 2F-1FAB-EL20,Complete,Elevator 20 - 2F -SUE-FAB1-EL20,,,,,,,,,,2025-07-02 08:00,2025-07-15 17:00,2025-07-02 08:00,2025-07-02 17:00,2025-11-20 17:00,2025-11-20 17:00,2025-12-05 17:00,2025-12-05 17:00,0,80,100
ZX-4780,Complete Drywall & Inspect - Elevator #05 - 2F-1FAB-EL5,Complete,Elevator 5 - 2F -SUW-FAB1-EL05,,,,,,,,,,2025-09-05 08:00,2025-09-11 17:00,2025-09-05 08:00,2025-09-11 17:00,2025-11-20 17:00,2025-11-20 17:00,2025-12-05 17:00,2025-12-05 17:00,0,40,100
ZX-4790,Complete Fire Caulk & Inspect - Elevator #05 - 2F-1FAB-EL5,Complete,Elevator 5 - 2F -SUW-FAB1-EL05,,,,,,,,,,2025-09-11 08:00,2025-09-12 17:00,2025-09-11 08:00,2025-09-12 17:00,2025-11-20 17:00,2025-11-20 17:00,2025-12-05 17:00,2025-12-05 17:00,0,16,100
ZX-4800,Complete Control Joint & Inspect - Elevator #05 - 2F-1FAB-EL5,Complete,Elevator 5 - 2F -SUW-FAB1-EL05,,,,,,,,,,2025-09-10 08:00,2025-09-11 17:00,2025-09-10 08:00,2025-09-11 17:00,2025-11-20 17:00,2025-11-20 17:00,2025-12-05 17:00,2025-12-05 17:00,0,16,100
ZX-4810,Complete Drywall & Inspect - Battery Rm - 2F-SUW-FAB120501,Complete,Battery Rm 3 - 2F -SUW-FAB120501,,,,,,,,,,2025-07-14 08:00,2025-07-25 17:00,2025-06-16 08:00,2025-09-02 17:00,2025-11-20 17:00,2025-11-20 17:00,2025-11-25 10:00,2025-11-25 10:00,0,80,100
ZX-4820,Complete Fire Caulk & Inspect - Battery Rm - 2F-SUW-FAB120501,Complete,Battery Rm 3 - 2F -SUW-FAB120501,,,,,,,,,,2025-07-14 08:00,2025-07-15 17:00,2025-07-14 08:00,2025-09-02 17:00,2025-11-20 17:00,2025-11-20 17:00,2025-12-05 17:00,2025-12-05 17:00,0,16,100
ZX-4830,Complete Control Joint & Inspect - Battery Rm - 2F-SUW-FAB120501,Complete,Battery Rm 3 - 2F -SUW-FAB120501,,,,,,,,,,2025-07-14 08:00,2025-07-15 17:00,2025-07-14 08:00,2025-09-02 17:00,2025-11-20 17:00,2025-11-20 17:00,2025-11-25 10:00,2025-11-25 10:00,0,16,100
FAB120501A-01,IMPACT - INSTALL/REWORK DRYWALL FRAMING AROUND DOORS - FAB120501A,Complete,Battery Rm 3 - 2F -SUW-FAB120501,,,,,,,,,,2025-05-16 08:00,2025-05-26 17:00,2025-05-16 08:00,2025-05-21 17:00,2025-11-20 17:00,2025-11-20 17:00,2025-11-25 10:00,2025-11-25 10:00,0,56,100
FAB120501A-02,SECAI ROUGH IN/SECURITY - FAB120501A,Complete,Battery Rm 3 - 2F -SUW-FAB120501,,,,,,,,,,2025-05-21 08:00,2025-05-21 17:00,2025-05-21 08:00,2025-05-21 17:00,2025-11-20 17:00,2025-11-20 17:00,2025-11-25 10:00,2025-11-25 10:00,0,8,100
FAB120501A-03,INSTALL DOOR FRAMES - FAB120501A,Complete,Battery Rm 3 - 2F -SUW-FAB120501,,,,,,,,,,2025-07-22 13:00,2025-07-23 12:00,2025-05-20 00:00,2025-05-21 16:00,2025-11-20 17:00,2025-11-20 17:00,2025-11-25 10:00,2025-11-25 10:00,0,8,100
FAB120501A-04,INSTALL DOOR & HARDWARE - FAB120501A,Not Started,Battery Rm 3 - 2F -SUW-FAB120501,,,,,,,,,,2025-11-28 08:00,2025-12-04 17:00,,,2025-11-28 08:00,2025-12-04 17:00,2025-11-25 10:00,2025-12-02 10:00,40,40,0
FAB120501A-05,PAINT & PROTECT DOORS & FRAMES - FAB120501A,Not Started,Battery Rm 3 - 2F -SUW-FAB120501,,,,,,,,,,2026-02-16 08:00,2026-02-19 15:00,,,2026-02-16 08:00,2026-02-19 15:00,2025-12-02 10:00,2025-12-05 17:00,30,30,0
FAB120501B-01,IMPACT - INSTALL/REWORK DRYWALL FRAMING AROUND DOORS - FAB120501B,Complete,Battery Rm 3 - 2F -SUW-FAB120501,,,,,,,,,,2025-05-05 08:00,2025-05-13 17:00,2025-05-05 08:00,2025-05-12 17:00,2025-11-20 17:00,2025-11-20 17:00,2025-11-25 10:00,2025-11-25 10:00,0,56,100
FAB120501B-02,SECAI ROUGH IN/SECURITY - FAB120501B,Complete,Battery Rm 3 - 2F -SUW-FAB120501,,,,,,,,,,2025-05-12 08:00,2025-05-12 17:00,2025-05-12 08:00,2025-05-12 17:00,2025-11-20 17:00,2025-11-20 17:00,2025-11-25 10:00,2025-11-25 10:00,0,8,100
FAB120501B-03,INSTALL DOOR FRAMES - FAB120501B,Complete,Battery Rm 3 - 2F -SUW-FAB120501,,,,,,,,,,2025-07-22 13:00,2025-07-23 12:00,2025-05-11 00:00,2025-05-12 16:00,2025-11-20 17:00,2025-11-20 17:00,2025-11-25 10:00,2025-11-25 10:00,0,8,100
FAB120501B-04,INSTALL DOOR & HARDWARE - FAB120501B,Active,Battery Rm 3 - 2F -SUW-FAB120501,,,,,,,,,,2025-09-09 08:00,2025-09-15 17:00,2025-09-09 08:00,,2025-11-21 08:00,2025-11-27 17:00,2025-11-25 10:00,2025-12-02 10:00,40,40,0
FAB120501B-05,PAINT & PROTECT DOORS & FRAMES -  FAB120501B,Not Started,Battery Rm 3 - 2F -SUW-FAB120501,,,,,,,,,,2026-02-16 08:00,2026-02-19 15:00,,,2026-02-16 08:00,2026-02-19 15:00,2025-12-02 10:00,2025-12-05 17:00,30,30,0
ZX-4870,Complete Drywall & Inspect - Elevator #03 - 2F-1FAB-EL3,Complete,Elevator 3 - 2F -SUW-FAB1-EL03,,,,,,,,,,2025-08-14 08:00,2025-08-27 17:00,2025-05-05 08:00,2025-05-23 16:00,2025-11-20 17:00,2025-11-20 17:00,2025-12-05 17:00,2025-12-05 17:00,0,80,100
ZX-4880,SECAI TOOK OVER FOR ACCELERATION - Complete Fire Caulk & Inspect - Elevator 3 - 2F-1FAB-EL3,Complete,Elevator 3 - 2F -SUW-FAB1-EL03,,,,,,,,,,2025-06-02 08:00,2025-06-03 17:00,2025-06-02 08:00,2025-06-02 17:00,2025-11-20 17:00,2025-11-20 17:00,2025-12-05 17:00,2025-12-05 17:00,0,16,100
ZX-4890,Complete Control Joint & Inspect - Elevator #03 - 2F-1FAB-EL3,Complete,Elevator 3 - 2F -SUW-FAB1-EL03,,,,,,,,,,2025-08-28 08:00,2025-08-29 17:00,2025-05-05 08:00,2025-05-23 16:00,2025-11-20 17:00,2025-11-20 17:00,2025-12-05 17:00,2025-12-05 17:00,0,16,100
ZX-18900,IMPACT - SECAI ELEVATOR TEAM TOOK OVER - Elevator #03 - 2F-1FAB-EL3,Complete,Elevator 3 - 2F -SUW-FAB1-EL03,,,,,,,,,,2025-06-02 08:00,2025-07-18 17:00,2025-06-02 08:00,2025-06-02 17:00,2025-11-20 17:00,2025-11-20 17:00,2025-12-05 17:00,2025-12-05 17:00,0,280,100
ZX-4840,Complete Drywall & Inspect - Vestibule 1 - 2F-SUW-FAB120508,Complete,Vestibule 1 - 2F -SUW-FAB120508,,,,,,,,,,2025-08-18 08:00,2025-08-18 08:00,2025-08-18 08:00,2025-10-28 17:00,2025-11-20 17:00,2025-11-20 17:00,2025-12-05 17:00,2025-12-05 17:00,0,0,100
ZX-4850,Complete Fire Caulk & Inspect - Vestibule 1 - 2F-SUW-FAB120508,Complete,Vestibule 1 - 2F -SUW-FAB120508,,,,,,,,,,2025-10-29 08:00,2025-10-30 17:00,2025-10-29 08:00,2025-10-30 17:00,2025-11-20 17:00,2025-11-20 17:00,2025-12-05 17:00,2025-12-05 17:00,0,16,100
ZX-4860,Complete Control Joint & Inspect - Vestibule #01 - 2F-SUW-FAB120508,Complete,Vestibule 1 - 2F -SUW-FAB120508,,,,,,,,,,2025-10-27 08:00,2025-10-28 17:00,2025-10-27 08:00,2025-10-28 17:00,2025-11-20 17:00,2025-11-20 17:00,2025-12-05 17:00,2025-12-05 17:00,0,16,100
FAB120508A-01,IMPACT - INSTALL/REWORK DRYWALL FRAMING AROUND DOORS - FAB120508A,Complete,Vestibule 1 - 2F -SUW-FAB120508,,,,,,,,,,2025-04-25 08:00,2025-05-05 17:00,2025-04-25 08:00,2025-05-02 17:00,2025-11-20 17:00,2025-11-20 17:00,2025-11-25 10:00,2025-11-25 10:00,0,56,100
FAB120508A-02,SECAI ROUGH IN/SECURITY - FAB120508A,Complete,Vestibule 1 - 2F -SUW-FAB120508,,,,,,,,,,2025-05-02 08:00,2025-05-02 17:00,2025-05-02 08:00,2025-05-02 17:00,2025-11-20 17:00,2025-11-20 17:00,2025-11-25 10:00,2025-11-25 10:00,0,8,100
FAB120508A-03,INSTALL DOOR FRAMES - FAB120508A,Complete,Vestibule 1 - 2F -SUW-FAB120508,,,,,,,,,,2025-06-26 13:00,2025-06-27 12:00,2025-05-01 00:00,2025-05-02 16:00,2025-11-20 17:00,2025-11-20 17:00,2025-11-25 10:00,2025-11-25 10:00,0,8,100
FAB120508A-04,INSTALL DOOR & HARDWARE - FAB120508A,Active,Vestibule 1 - 2F -SUW-FAB120508,,,,,,,,,,2025-07-10 08:00,2025-07-16 17:00,2025-07-10 08:00,,2025-11-21 08:00,2025-11-27 17:00,2025-11-25 10:00,2025-12-02 10:00,40,40,0
FAB120508A-05,PAINT & PROTECT DOORS & FRAMES - FAB120508A,Not Started,Vestibule 1 - 2F -SUW-FAB120508,,,,,,,,,,2026-02-16 08:00,2026-02-19 15:00,,,2026-02-16 08:00,2026-02-19 15:00,2025-12-02 10:00,2025-12-05 17:00,30,30,0
ZX-4990,Complete Drywall & Inspect - T/L Maint. Rm 1 - 2F-SUW-FAB120102,Complete,T/L Maint. Rm 1 - 2F -SUW-FAB120102,,,,,,,,,,2025-09-01 08:00,2025-09-05 17:00,2025-09-01 08:00,2025-09-05 17:00,2025-11-20 17:00,2025-11-20 17:00,2025-11-25 10:00,2025-11-25 10:00,0,40,100
ZX-5000,Complete Fire Caulk & Inspect - T/L Maint. Rm 1 - 2F-SUW-FAB120102,Complete,T/L Maint. Rm 1 - 2F -SUW-FAB120102,,,,,,,,,,2025-09-24 08:00,2025-09-24 08:00,2025-09-24 08:00,2025-09-24 08:00,2025-11-20 17:00,2025-11-20 17:00,2025-12-05 17:00,2025-12-05 17:00,0,0,100
ZX-5010,Complete Control Joint & Inspect - T/L Maint. Rm 1 - 2F-SUW-FAB120102,Complete,T/L Maint. Rm 1 - 2F -SUW-FAB120102,,,,,,,,,,2025-09-04 08:00,2025-09-05 17:00,2025-09-04 08:00,2025-09-05 17:00,2025-11-20 17:00,2025-11-20 17:00,2025-11-25 10:00,2025-11-25 10:00,0,16,100
FAB120102A-01,IMPACT - INSTALL/REWORK DRYWALL FRAMING AROUND DOORS - FAB120102A,Complete,T/L Maint. Rm 1 - 2F -SUW-FAB120102,,,,,,,,,,2025-04-07 08:00,2025-04-15 17:00,2025-04-07 08:00,2025-04-14 17:00,2025-11-20 17:00,2025-11-20 17:00,2025-11-25 10:00,2025-11-25 10:00,0,56,100
FAB120102A-02,SECAI ROUGH IN/SECURITY - FAB120102A,Complete,T/L Maint. Rm 1 - 2F -SUW-FAB120102,,,,,,,,,,2025-04-14 08:00,2025-04-14 17:00,2025-04-14 08:00,2025-04-14 17:00,2025-11-20 17:00,2025-11-20 17:00,2025-11-25 10:00,2025-11-25 10:00,0,8,100
FAB120102A-03,INSTALL DOOR FRAMES - FAB120102A,Complete,T/L Maint. Rm 1 - 2F -SUW-FAB120102,,,,,,,,,,2025-08-21 13:00,2025-08-22 12:00,2025-04-14 00:00,2025-04-14 16:00,2025-11-20 17:00,2025-11-20 17:00,2025-11-25 10:00,2025-11-25 10:00,0,8,100
FAB120102A-04,INSTALL DOOR & HARDWARE - FAB120102A,Active,T/L Maint. Rm 1 - 2F -SUW-FAB120102,,,,,,,,,,2025-10-07 08:00,2025-10-13 17:00,2025-10-07 08:00,,2025-11-21 08:00,2025-11-27 17:00,2025-11-25 10:00,2025-12-02 10:00,40,40,0
FAB120102A-05,PAINT & PROTECT DOORS & FRAMES -  FAB120102A,Not Started,T/L Maint. Rm 1 - 2F -SUW-FAB120102,,,,,,,,,,2026-02-16 08:00,2026-02-19 15:00,,,2026-02-16 08:00,2026-02-19 15:00,2025-12-02 10:00,2025-12-05 17:00,30,30,0
ZX-4900,Complete Drywall & Inspect - GCS Storage - 2F-FAB120506,Complete,GCS Storage - 2F -SUW-FAB120506,,,,,,,,,,2025-09-08 08:00,2025-09-12 17:00,2025-09-08 08:00,2025-09-12 17:00,2025-11-20 17:00,2025-11-20 17:00,2025-12-05 17:00,2025-12-05 17:00,0,40,100
ZX-4910,Complete Fire Caulk & Inspect - GCS Storage - 2F-FAB120506,Complete,GCS Storage - 2F -SUW-FAB120506,,,,,,,,,,2025-09-26 08:00,2025-09-29 17:00,2025-09-26 08:00,2025-09-29 17:00,2025-11-20 17:00,2025-11-20 17:00,2025-12-05 17:00,2025-12-05 17:00,0,16,100
ZX-4920,Complete Control Joint & Inspect - GCS Storage - 2F-FAB120506,Complete,GCS Storage - 2F -SUW-FAB120506,,,,,,,,,,2025-10-10 08:00,2025-10-13 17:00,2025-10-10 08:00,2025-10-13 17:00,2025-11-20 17:00,2025-11-20 17:00,2025-12-05 17:00,2025-12-05 17:00,0,16,100
FAB120506D-01,IMPACT - INSTALL/REWORK DRYWALL FRAMING AROUND DOORS - FAB120506D,Complete,GCS Storage - 2F -SUW-FAB120506,,,,,,,,,,2025-02-19 08:00,2025-02-27 17:00,2025-02-19 00:00,2025-02-27 17:00,2025-11-20 17:00,2025-11-20 17:00,2025-11-25 08:00,2025-11-25 08:00,0,56,100
FAB120506D-02,SECAI ROUGH IN/SECURITY - FAB120506D,Complete,GCS Storage - 2F -SUW-FAB120506,,,,,,,,,,2025-02-27 08:00,2025-02-27 17:00,2025-02-27 08:00,2025-02-27 17:00,2025-11-20 17:00,2025-11-20 17:00,2025-11-25 08:00,2025-11-25 08:00,0,8,100
FAB120506D-03,INSTALL DOOR FRAMES - FAB120506D,Complete,GCS Storage - 2F -SUW-FAB120506,,,,,,,,,,2025-07-25 13:00,2025-07-28 12:00,2025-02-27 00:00,2025-02-27 16:00,2025-11-20 17:00,2025-11-20 17:00,2025-11-25 08:00,2025-11-25 08:00,0,8,100
FAB120506D-04,INSTALL DOOR & HARDWARE - FAB120506D,Active,GCS Storage - 2F -SUW-FAB120506,,,,,,,,,,2025-11-05 08:00,2025-11-11 17:00,2025-11-05 08:00,,2025-11-21 08:00,2025-11-27 17:00,2025-11-25 08:00,2025-12-01 17:00,40,40,0
FAB120506D-05,PAINT & PROTECT DOORS & FRAMES -  FAB120506D,Not Started,GCS Storage - 2F -SUW-FAB120506,,,,,,,,,,2026-02-16 08:00,2026-02-19 17:00,,,2026-02-16 08:00,2026-02-19 17:00,2025-12-02 08:00,2025-12-05 17:00,32,32,0
FAB120506E-01,IMPACT - INSTALL/REWORK DRYWALL FRAMING AROUND DOORS - FAB120506E,Complete,GCS Storage - 2F -SUW-FAB120506,,,,,,,,,,2025-02-12 08:00,2025-02-20 17:00,2025-02-12 08:00,2025-02-20 17:00,2025-11-20 17:00,2025-11-20 17:00,2025-11-25 08:00,2025-11-25 08:00,0,56,100
FAB120506E-02,SECAI ROUGH IN/SECURITY - FAB120506E,Complete,GCS Storage - 2F -SUW-FAB120506,,,,,,,,,,2025-02-20 08:00,2025-02-20 17:00,2025-02-20 08:00,2025-02-20 17:00,2025-11-20 17:00,2025-11-20 17:00,2025-11-25 08:00,2025-11-25 08:00,0,8,100
FAB120506E-03,INSTALL DOOR FRAMES - FAB120506E,Complete,GCS Storage - 2F -SUW-FAB120506,,,,,,,,,,2025-07-25 13:00,2025-07-28 12:00,2025-02-20 00:00,2025-02-20 16:00,2025-11-20 17:00,2025-11-20 17:00,2025-11-25 08:00,2025-11-25 08:00,0,8,100
FAB120506E-04,INSTALL DOOR & HARDWARE - FAB120506E,Active,GCS Storage - 2F -SUW-FAB120506,,,,,,,,,,2025-10-31 08:00,2025-11-06 17:00,2025-10-31 08:00,,2025-11-21 08:00,2025-11-27 17:00,2025-11-25 08:00,2025-12-01 17:00,40,40,0
FAB120506E-05,PAINT & PROTECT DOORS & FRAMES -  FAB120506E,Not Started,GCS Storage - 2F -SUW-FAB120506,,,,,,,,,,2026-02-16 08:00,2026-02-19 17:00,,,2026-02-16 08:00,2026-02-19 17:00,2025-12-02 08:00,2025-12-05 17:00,32,32,0
FAB120506A-00,IMPACT - SECAI SCAFFOLD IMPEDING DOOR FRAME INSTALLATION - FAB120506A,Complete,GCS Storage - 2F -SUW-FAB120506,,,,,,,,,,2025-06-20 08:00,2025-06-26 17:00,2025-06-20 08:00,2025-10-03 17:00,2025-11-20 17:00,2025-11-20 17:00,2025-11-25 08:00,2025-11-25 08:00,0,40,100
 FAB120506A-02,SECAI ROUGH IN/SECURITY - FAB120506A,Complete,GCS Storage - 2F -SUW-FAB120506,,,,,,,,,,2025-10-06 08:00,2025-10-06 17:00,2025-10-06 08:00,2025-10-06 17:00,2025-11-20 17:00,2025-11-20 17:00,2025-11-25 08:00,2025-11-25 08:00,0,8,100
 FAB120506A-04,INSTALL DOOR & HARDWARE - FAB120506A,Active,GCS Storage - 2F -SUW-FAB120506,,,,,,,,,,2025-11-05 08:00,2025-11-11 17:00,2025-11-05 08:00,,2025-11-21 08:00,2025-11-27 17:00,2025-11-25 08:00,2025-12-01 17:00,40,40,0
 FAB120506A-05,PAINT & PROTECT DOORS & FRAMES -  FAB120506A,Not Started,GCS Storage - 2F -SUW-FAB120506,,,,,,,,,,2026-02-16 08:00,2026-02-19 17:00,,,2026-02-16 08:00,2026-02-19 17:00,2025-12-02 08:00,2025-12-05 17:00,32,32,0
FAB120506B-00,IMPACT - SECAI SCAFFOLD IMPEDING DOOR FRAME INSTALLATION - FAB120506B,Complete,GCS Storage - 2F -SUW-FAB120506,,,,,,,,,,2025-06-20 08:00,2025-06-26 17:00,2025-06-20 08:00,2025-10-03 17:00,2025-11-20 17:00,2025-11-20 17:00,2025-11-25 08:00,2025-11-25 08:00,0,40,100
 FAB120506B-02,SECAI ROUGH IN/SECURITY - FAB120506B,Complete,GCS Storage - 2F -SUW-FAB120506,,,,,,,,,,2025-10-06 08:00,2025-10-06 17:00,2025-10-06 08:00,2025-10-06 17:00,2025-11-20 17:00,2025-11-20 17:00,2025-11-25 08:00,2025-11-25 08:00,0,8,100
 FAB120506B-04,INSTALL DOOR & HARDWARE - FAB120506B,Active,GCS Storage - 2F -SUW-FAB120506,,,,,,,,,,2025-11-14 08:00,2025-11-20 17:00,2025-11-14 08:00,,2025-11-21 08:00,2025-11-27 17:00,2025-11-25 08:00,2025-12-01 17:00,40,40,0
 FAB120506B-05,PAINT & PROTECT DOORS & FRAMES -  FAB120506B,Not Started,GCS Storage - 2F -SUW-FAB120506,,,,,,,,,,2026-02-16 08:00,2026-02-19 17:00,,,2026-02-16 08:00,2026-02-19 17:00,2025-12-02 08:00,2025-12-05 17:00,32,32,0
FAB120506C-00,IMPACT - SECAI SCAFFOLD IMPEDING DOOR FRAME INSTALLATION - FAB120506C,Complete,GCS Storage - 2F -SUW-FAB120506,,,,,,,,,,2025-06-20 08:00,2025-06-26 17:00,2025-06-20 08:00,2025-10-03 17:00,2025-11-20 17:00,2025-11-20 17:00,2025-11-25 08:00,2025-11-25 08:00,0,40,100
 FAB120506C-02,SECAI ROUGH IN/SECURITY - FAB120506C,Complete,GCS Storage - 2F -SUW-FAB120506,,,,,,,,,,2025-10-06 08:00,2025-10-06 17:00,2025-10-06 08:00,2025-10-06 17:00,2025-11-20 17:00,2025-11-20 17:00,2025-11-25 08:00,2025-11-25 08:00,0,8,100
 FAB120506C-04,INSTALL DOOR & HARDWARE - FAB120506C,Active,GCS Storage - 2F -SUW-FAB120506,,,,,,,,,,2025-11-05 08:00,2025-11-11 17:00,2025-11-05 08:00,,2025-11-21 08:00,2025-11-27 17:00,2025-11-25 08:00,2025-12-01 17:00,40,40,0
 FAB120506C-05,PAINT & PROTECT DOORS & FRAMES - FAB120506C,Not Started,GCS Storage - 2F -SUW-FAB120506,,,,,,,,,,2026-02-16 08:00,2026-02-19 17:00,,,2026-02-16 08:00,2026-02-19 17:00,2025-12-02 08:00,2025-12-05 17:00,32,32,0
FAB120506A-03,INSTALL DOOR FRAMES - FAB120506A,Complete,GCS Storage - 2F -SUW-FAB120506,,,,,,,,,,2025-10-07 08:00,2025-10-07 17:00,2025-10-07 08:00,2025-10-07 17:00,2025-11-20 17:00,2025-11-20 17:00,2025-11-25 08:00,2025-11-25 08:00,0,8,100
FAB120506B-03,INSTALL DOOR FRAMES - FAB120506B,Complete,GCS Storage - 2F -SUW-FAB120506,,,,,,,,,,2025-10-06 08:00,2025-10-06 17:00,2025-10-06 08:00,2025-10-06 17:00,2025-11-20 17:00,2025-11-20 17:00,2025-11-25 08:00,2025-11-25 08:00,0,8,100
FAB120506C-03,INSTALL DOOR FRAMES - FAB120506C,Complete,GCS Storage - 2F -SUW-FAB120506,,,,,,,,,,2025-10-07 08:00,2025-10-07 17:00,2025-10-07 08:00,2025-10-07 17:00,2025-11-20 17:00,2025-11-20 17:00,2025-11-25 08:00,2025-11-25 08:00,0,8,100
ZX-4960,Complete Drywall & Inspect-Electrical Rm - 2F-SUW-FAB120401,Complete,Electrical Rm - 2F -SUW-FAB120401,,,,,,,,,,2025-05-16 08:00,2025-05-29 17:00,2025-05-16 08:00,2025-10-13 17:00,2025-11-20 17:00,2025-11-20 17:00,2025-11-17 10:00,2025-11-17 10:00,0,80,100
ZX-4970,Complete Fire Caulk & Inspect - Electrical Rm - 2F-SUW-FAB120401,Complete,Electrical Rm - 2F -SUW-FAB120401,,,,,,,,,,2025-09-09 08:00,2025-09-15 17:00,2025-09-09 08:00,2025-09-15 17:00,2025-11-20 17:00,2025-11-20 17:00,2025-12-05 17:00,2025-12-05 17:00,0,40,100
ZX-4980,Complete Control Joint & Inspect - Electrical Rm - 2F-SUW-FAB120401,Complete,Electrical Rm - 2F -SUW-FAB120401,,,,,,,,,,2025-07-14 08:00,2025-08-29 17:00,2025-07-14 08:00,2025-09-15 08:00,2025-11-20 17:00,2025-11-20 17:00,2025-11-17 10:00,2025-11-17 10:00,0,280,100
FAB120401A-01,INSTALL DOOR FRAME BY SECAI - FAB120401A HANDED OVER 06/27,Complete,Electrical Rm - 2F -SUW-FAB120401,,,,,,,,,,2025-06-30 08:00,2025-07-11 17:00,2025-06-28 08:00,2025-09-16 17:00,2025-11-20 17:00,2025-11-20 17:00,2025-11-25 10:00,2025-11-25 10:00,0,80,100
FAB120401A-04,INSTALL DOOR & HARDWARE - FAB120401A,Active,Electrical Rm - 2F -SUW-FAB120401,,,,,,,,,,2025-10-24 08:00,2025-10-30 17:00,2025-10-24 08:00,,2025-11-21 08:00,2025-11-27 17:00,2025-11-25 10:00,2025-12-02 10:00,40,40,0
FAB120401A-05,PAINT & PROTECT DOORS & FRAMES -  FAB120401A,Not Started,Electrical Rm - 2F -SUW-FAB120401,,,,,,,,,,2026-02-16 08:00,2026-02-19 15:00,,,2026-02-16 08:00,2026-02-19 15:00,2025-12-02 10:00,2025-12-05 17:00,30,30,0
FAB120401B-04,INSTALL DOOR & HARDWARE - FAB120401B,Not Started,Electrical Rm - 2F -SUW-FAB120401,,,,,,,,,,2025-12-01 08:00,2025-12-05 17:00,,,2025-12-01 08:00,2025-12-05 17:00,2025-11-25 10:00,2025-12-02 10:00,40,40,0
FAB120401B-05,PAINT & PROTECT DOORS & FRAMES - FAB120401B,Not Started,Electrical Rm - 2F -SUW-FAB120401,,,,,,,,,,2026-02-16 08:00,2026-02-19 15:00,,,2026-02-16 08:00,2026-02-19 15:00,2025-12-02 10:00,2025-12-05 17:00,30,30,0
FAB120401C-01,INSTALL DOOR FRAME BY SECAI - FAB120401C HANDED OVER 06/27,Complete,Electrical Rm - 2F -SUW-FAB120401,,,,,,,,,,2025-06-27 08:00,2025-07-10 17:00,2025-06-28 08:00,2025-11-05 17:00,2025-11-20 17:00,2025-11-20 17:00,2025-11-25 10:00,2025-11-25 10:00,0,80,100
FAB120401C-04,INSTALL DOOR & HARDWARE - FAB120401C,Active,Electrical Rm - 2F -SUW-FAB120401,,,,,,,,,,2025-11-06 08:00,2025-11-12 17:00,2025-11-06 08:00,,2025-11-21 08:00,2025-11-27 17:00,2025-11-25 10:00,2025-12-02 10:00,40,40,0
FAB120401C-05,PAINT & PROTECT DOORS & FRAMES -  FAB120401C,Not Started,Electrical Rm - 2F -SUW-FAB120401,,,,,,,,,,2026-02-16 08:00,2026-02-19 15:00,,,2026-02-16 08:00,2026-02-19 15:00,2025-12-02 10:00,2025-12-05 17:00,30,30,0
FAB120401D-01,SECAI - INSTALL DOOR FRAMES - FAB120401D,Not Started,Electrical Rm - 2F -SUW-FAB120401,,,,,,,,,,2025-12-01 08:00,2025-12-01 17:00,,,2025-12-01 08:00,2025-12-01 17:00,2025-11-24 10:00,2025-11-25 10:00,8,8,0
FAB120401D-04,INSTALL DOOR & HARDWARE - FAB120401D,Not Started,Electrical Rm - 2F -SUW-FAB120401,,,,,,,,,,2025-12-02 08:00,2025-12-08 17:00,,,2025-12-02 08:00,2025-12-08 17:00,2025-11-25 10:00,2025-12-02 10:00,40,40,0
FAB120401D-05,PAINT & PROTECT DOORS & FRAMES -  FAB120401D,Not Started,Electrical Rm - 2F -SUW-FAB120401,,,,,,,,,,2026-02-16 08:00,2026-02-19 15:00,,,2026-02-16 08:00,2026-02-19 15:00,2025-12-02 10:00,2025-12-05 17:00,30,30,0
FAB120401E-01,IMPACT - INSTALL/REWORK DRYWALL FRAMING AROUND DOORS - FAB120401E,Complete,Electrical Rm - 2F -SUW-FAB120401,,,,,,,,,,2025-06-25 08:00,2025-06-25 17:00,2025-06-12 08:00,2025-06-20 16:00,2025-11-20 17:00,2025-11-20 17:00,2025-11-25 10:00,2025-11-25 10:00,0,8,100
FAB120401E-02,SECAI ROUGH IN/SECURITY - FAB120401E,Complete,Electrical Rm - 2F -SUW-FAB120401,,,,,,,,,,2025-07-02 08:00,2025-07-02 17:00,2025-06-20 08:00,2025-06-20 16:00,2025-11-20 17:00,2025-11-20 17:00,2025-11-25 10:00,2025-11-25 10:00,0,8,100
FAB120401E-03,INSTALL DOOR FRAME & INSPECT - FAB120401E,Complete,Electrical Rm - 2F -SUW-FAB120401,,,,,,,,,,2025-07-02 08:00,2025-07-02 17:00,2025-06-20 08:00,2025-06-20 16:00,2025-11-20 17:00,2025-11-20 17:00,2025-11-25 10:00,2025-11-25 10:00,0,8,100
FAB120401E-04,INSTALL DOOR & HARDWARE - FAB120401E,Active,Electrical Rm - 2F -SUW-FAB120401,,,,,,,,,,2025-06-20 08:00,2025-06-26 17:00,2025-06-20 08:00,,2025-11-21 08:00,2025-11-27 17:00,2025-11-25 10:00,2025-12-02 10:00,40,40,0
FAB120401E-05,PAINT & PROTECT DOORS & FRAMES -  FAB120401E,Not Started,Electrical Rm - 2F -SUW-FAB120401,,,,,,,,,,2026-02-16 08:00,2026-02-19 15:00,,,2026-02-16 08:00,2026-02-19 15:00,2025-12-02 10:00,2025-12-05 17:00,30,30,0
FAB120401F-01,INSTALL DOOR FRAME BY SECAI - FAB120401F - HANDED OVER ON 10/14,Complete,Electrical Rm - 2F -SUW-FAB120401,,,,,,,,,,2025-10-14 08:00,2025-10-14 17:00,2025-10-14 08:00,2025-11-05 17:00,2025-11-20 17:00,2025-11-20 17:00,2025-11-25 10:00,2025-11-25 10:00,0,8,100
FAB120401F-04,INSTALL DOOR & HARDWARE - FAB120401F,Active,Electrical Rm - 2F -SUW-FAB120401,,,,,,,,,,2025-11-06 08:00,2025-11-12 17:00,2025-11-06 08:00,,2025-11-21 08:00,2025-11-27 17:00,2025-11-25 10:00,2025-12-02 10:00,40,40,0
FAB120401F-05,PAINT & PROTECT DOORS & FRAMES -  FAB120401F,Not Started,Electrical Rm - 2F -SUW-FAB120401,,,,,,,,,,2026-02-16 08:00,2026-02-19 15:00,,,2026-02-16 08:00,2026-02-19 15:00,2025-12-02 10:00,2025-12-05 17:00,30,30,0
FAB120401G-70,DOOR FRAME HANDED OVER TO SECAI ON 10/01 - FAB120401G,Complete,Electrical Rm - 2F -SUW-FAB120401,,,,,,,,,,2025-10-01 08:00,2025-10-01 17:00,2025-10-01 08:00,2025-10-01 17:00,2025-11-20 17:00,2025-11-20 17:00,2025-11-17 10:00,2025-11-17 10:00,0,8,100
FAB120401G-03,INSTALL DOOR FRAME BY SECAI - FAB120401G - HANDED OVER ON 10/01,Active,Electrical Rm - 2F -SUW-FAB120401,,,,,,,,,,2025-10-01 08:00,2025-10-01 17:00,2025-10-01 08:00,,2025-11-21 08:00,2025-11-28 17:00,2025-11-17 10:00,2025-11-25 10:00,48,8,0
FAB120401G-04,INSTALL DOOR & HARDWARE - FAB120401G,Not Started,Electrical Rm - 2F -SUW-FAB120401,,,,,,,,,,2025-12-01 08:00,2025-12-05 17:00,,,2025-12-01 08:00,2025-12-05 17:00,2025-11-25 10:00,2025-12-02 10:00,40,40,0
FAB120401G-05,PAINT & PROTECT DOORS & FRAMES -  FAB120401G,Not Started,Electrical Rm - 2F -SUW-FAB120401,,,,,,,,,,2026-02-16 08:00,2026-02-19 15:00,,,2026-02-16 08:00,2026-02-19 15:00,2025-12-02 10:00,2025-12-05 17:00,30,30,0
FAB120401D-11,IMPACT - INTERNAL - UNASSEMBLED TRANSOM FRAMES FAB120401D,Active,Electrical Rm - 2F -SUW-FAB120401,,,,,,,,,,2025-06-06 08:00,2025-07-21 10:00,2025-06-06 08:00,,2025-11-21 08:00,2025-11-28 17:00,2025-11-14 10:00,2025-11-24 10:00,48,250,0
FAB120401F-11,IMPACT - INTERNAL - UNASSEMBLED TRANSOM FRAMES FAB120401F - DOOR FRAME HANDED OVER TO SECAI ON 10/14,Complete,Electrical Rm - 2F -SUW-FAB120401,,,,,,,,,,2025-06-06 08:00,2025-07-21 10:00,2025-06-06 08:00,2025-10-14 17:00,2025-11-20 17:00,2025-11-20 17:00,2025-11-25 10:00,2025-11-25 10:00,0,250,100
FAB120401G-11,"IMPACT - INTERNAL - ELEVATOR WORK, SCAFFOLD IN THE WAY - DOOR FRAME HANDED OVER TO SECAI ON 10/01",Complete,Electrical Rm - 2F -SUW-FAB120401,,,,,,,,,,2025-06-06 08:00,2025-06-16 10:00,2025-06-06 08:00,2025-10-01 17:00,2025-11-20 17:00,2025-11-20 17:00,2025-11-17 10:00,2025-11-17 10:00,0,50,100
FAB120401G-21,PROCUREMENT - RE-ORDER - DOOR FRAMES - FAB120401G,Complete,Electrical Rm - 2F -SUW-FAB120401,,,,,,,,,,2025-06-16 08:00,2025-08-01 17:00,2025-06-05 08:00,2025-07-14 17:00,2025-11-20 17:00,2025-11-20 17:00,2025-11-17 10:00,2025-11-17 10:00,0,280,100
FAB120303F-01,IMPACT - INSTALL/REWORK DRYWALL FRAMING AROUND DOORS - FAB120303F HANDED OVER TO SECAI ON 08/29,Complete,Electrical Rm - 2F -SUW-FAB120401,,,,,,,,,,2025-08-29 08:00,2025-08-29 17:00,2025-08-29 08:00,2025-08-29 17:00,2025-11-20 17:00,2025-11-20 17:00,2025-11-25 10:00,2025-11-25 10:00,0,8,100
FAB120303F-02,SECAI ROUGH IN/SECURITY - FAB120303F HANDED OVER TO SECAI ON 08/29,Complete,Electrical Rm - 2F -SUW-FAB120401,,,,,,,,,,2025-08-29 08:00,2025-08-29 17:00,2025-08-29 08:00,2025-08-29 17:00,2025-11-20 17:00,2025-11-20 17:00,2025-11-25 10:00,2025-11-25 10:00,0,8,100
FAB120303F-03,INSTALL DOOR FRAME BY SECAI - FAB120303F HANDED OVER ON 08/29,Complete,Electrical Rm - 2F -SUW-FAB120401,,,,,,,,,,2025-08-29 08:00,2025-08-29 17:00,2025-08-29 08:00,2025-11-06 17:00,2025-11-20 17:00,2025-11-20 17:00,2025-11-25 10:00,2025-11-25 10:00,0,8,100
FAB120303F-04,INSTALL DOOR & HARDWARE - FAB120303F,Active,Electrical Rm - 2F -SUW-FAB120401,,,,,,,,,,2025-11-07 08:00,2025-11-13 17:00,2025-11-07 08:00,,2025-11-21 08:00,2025-11-27 17:00,2025-11-25 10:00,2025-12-02 10:00,40,40,0
FAB120303F-05,PAINT & PROTECT DOORS & FRAMES -  FAB120303F,Not Started,Electrical Rm - 2F -SUW-FAB120401,,,,,,,,,,2026-02-16 08:00,2026-02-19 15:00,,,2026-02-16 08:00,2026-02-19 15:00,2025-12-02 10:00,2025-12-05 17:00,30,30,0
FAB120303H-01,IMPACT - INSTALL/REWORK DRYWALL FRAMING AROUND DOORS - FAB120303FH - P1,Complete,Electrical Rm - 2F -SUW-FAB120401,,,,,,,,,,2025-06-27 08:00,2025-06-27 17:00,2025-06-27 08:00,2025-06-27 16:00,2025-11-20 17:00,2025-11-20 17:00,2025-12-01 17:00,2025-12-01 17:00,0,8,100
FAB120303H-02,SECAI ROUGH IN/SECURITY - FAB120303H - P1,Complete,Electrical Rm - 2F -SUW-FAB120401,,,,,,,,,,2025-06-27 08:00,2025-06-27 17:00,2025-06-30 08:00,2025-06-30 16:00,2025-11-20 17:00,2025-11-20 17:00,2025-12-01 17:00,2025-12-01 17:00,0,8,100
FAB120303H-04,INSTALL DOOR & HARDWARE - FAB120303H - P1,Active,Electrical Rm - 2F -SUW-FAB120401,,,,,,,,,,2025-06-30 08:00,2025-07-04 17:00,2025-06-30 08:00,,2025-11-21 08:00,2025-11-27 17:00,2025-11-25 08:00,2025-12-01 17:00,40,40,0
FAB120303H-05,PAINT & PROTECT DOORS & FRAMES -  FAB120303H,Not Started,Electrical Rm - 2F -SUW-FAB120401,,,,,,,,,,2026-02-16 08:00,2026-02-19 17:00,,,2026-02-16 08:00,2026-02-19 17:00,2025-12-02 08:00,2025-12-05 17:00,32,32,0
FAB120303H-03,INSTALL DOOR FRAMES - FAB120303H,Complete,Electrical Rm - 2F -SUW-FAB120401,,,,,,,,,,2025-06-27 08:00,2025-06-27 17:00,2025-06-30 08:00,2025-06-30 16:00,2025-11-20 17:00,2025-11-20 17:00,2025-12-01 17:00,2025-12-01 17:00,0,8,100
FAB120401C-13,DOOR FRAME HANDED OVER TO SECAI ON 06/27 - FAB120401C,Complete,Electrical Rm - 2F -SUW-FAB120401,,,,,,,,,,2025-06-27 08:00,2025-06-27 17:00,2025-06-27 08:00,2025-06-27 16:00,2025-11-20 17:00,2025-11-20 17:00,2025-11-25 10:00,2025-11-25 10:00,0,8,100
FAB120401A-13,DOOR FRAME HANDED OVER TO SECAI ON 06/27 - FAB120401A,Complete,Electrical Rm - 2F -SUW-FAB120401,,,,,,,,,,2025-06-27 08:00,2025-06-27 17:00,2025-06-27 08:00,2025-06-27 16:00,2025-11-20 17:00,2025-11-20 17:00,2025-11-25 10:00,2025-11-25 10:00,0,8,100
ZX-4930,Complete Drywall & Inspect - Fire Alarm 3 - 2F-FAB120311,Complete,Fire Alarm 3 - 2F -SUW-FAB120311,,,,,,,,,,2025-07-23 08:00,2025-08-05 17:00,2025-07-23 08:00,2025-08-05 17:00,2025-11-20 17:00,2025-11-20 17:00,2025-11-25 08:00,2025-11-25 08:00,0,80,100
ZX-4940,Complete Fire Caulk & Inspect - Fire Alarm 3 - 2F-FAB120311,Complete,Fire Alarm 3 - 2F -SUW-FAB120311,,,,,,,,,,2025-10-29 08:00,2025-10-30 17:00,2025-10-29 08:00,2025-10-30 17:00,2025-11-20 17:00,2025-11-20 17:00,2025-12-05 17:00,2025-12-05 17:00,0,16,100
ZX-4950,Complete Control Joint & Inspect - Fire Alarm 3 - 2F-FAB120311,Complete,Fire Alarm 3 - 2F -SUW-FAB120311,,,,,,,,,,2025-09-02 08:00,2025-09-03 17:00,2025-09-02 08:00,2025-09-03 17:00,2025-11-20 17:00,2025-11-20 17:00,2025-11-25 08:00,2025-11-25 08:00,0,16,100
ZX-5230,Complete Drywall & Inspect - i/o Rm - 2F-SUE-FAB126512,Complete,I/O Rm - 2F -SUE-FAB126512,,,,,,,,,,2025-09-02 08:00,2025-09-08 17:00,2025-09-02 08:00,2025-09-08 17:00,2025-11-20 17:00,2025-11-20 17:00,2025-12-05 17:00,2025-12-05 17:00,0,40,100
ZX-5240,Complete Fire Caulk & Inspect - i/o Rm - 2F-SUE-FAB126512,Complete,I/O Rm - 2F -SUE-FAB126512,,,,,,,,,,2025-10-27 08:00,2025-10-28 17:00,2025-10-27 08:00,2025-10-28 17:00,2025-11-20 17:00,2025-11-20 17:00,2025-12-05 17:00,2025-12-05 17:00,0,16,100
ZX-5250,Complete Control Joint & Inspect - I/O Rm - 2F-SUE-FAB126512 SECAI TO COMPLETE DUE DEMOLITION,Complete,I/O Rm - 2F -SUE-FAB126512,,,,,,,,,,2025-11-03 08:00,2025-11-04 17:00,2025-11-03 08:00,2025-11-03 17:00,2025-11-20 17:00,2025-11-20 17:00,2025-12-05 17:00,2025-12-05 17:00,0,16,100
FAB126512A-03,INSTALL DOOR FRAMES - FAB126512A,Complete,I/O Rm - 2F -SUE-FAB126512,,,,,,,,,,2025-10-23 08:00,2025-10-23 17:00,2025-10-23 08:00,2025-10-23 17:00,2025-11-20 17:00,2025-11-20 17:00,2025-11-25 10:00,2025-11-25 10:00,0,8,100
FAB126512A-04,INSTALL DOOR & HARDWARE - FAB126512A,Active,I/O Rm - 2F -SUE-FAB126512,,,,,,,,,,2025-10-28 08:00,2025-11-03 17:00,2025-10-28 08:00,,2025-11-21 08:00,2025-11-27 17:00,2025-11-25 10:00,2025-12-02 10:00,40,40,0
FAB126512A-05,PAINT & PROTECT DOORS & FRAMES - FAB126512A,Not Started,I/O Rm - 2F -SUE-FAB126512,,,,,,,,,,2026-02-16 08:00,2026-02-19 15:00,,,2026-02-16 08:00,2026-02-19 15:00,2025-12-02 10:00,2025-12-05 17:00,30,30,0
ZX-5020,Complete Drywall & Inspect - Fire Alarm 5 - 2F-FAB120510,Complete,Fire Alarm 5 - 2F -SUW-FAB120510,,,,,,,,,,2025-09-29 08:00,2025-10-03 17:00,2025-09-29 08:00,2025-10-03 17:00,2025-11-20 17:00,2025-11-20 17:00,2025-12-05 17:00,2025-12-05 17:00,0,40,100
ZX-5030,Complete Fire Caulk & Inspect - Fire Alarm 5 - 2F-FAB120510,Complete,Fire Alarm 5 - 2F -SUW-FAB120510,,,,,,,,,,2025-11-06 08:00,2025-11-07 17:00,2025-11-06 08:00,2025-11-07 17:00,2025-11-20 17:00,2025-11-20 17:00,2025-12-05 17:00,2025-12-05 17:00,0,16,100
ZX-5040,Complete Control Joint & Inspect - Fire Alarm 5 - 2F-FAB120510,Complete,Fire Alarm 5 - 2F -SUW-FAB120510,,,,,,,,,,2025-10-29 08:00,2025-10-30 17:00,2025-10-29 08:00,2025-10-30 17:00,2025-11-20 17:00,2025-11-20 17:00,2025-12-05 17:00,2025-12-05 17:00,0,16,100
FAB120510A-01,SECAI - INSTALL DOOR FRAMES - FAB120510A,Complete,Fire Alarm 5 - 2F -SUW-FAB120510,,,,,,,,,,2025-07-11 10:00,2025-07-22 10:00,2025-07-09 10:00,2025-07-09 10:00,2025-11-20 17:00,2025-11-20 17:00,2025-12-01 08:00,2025-12-01 08:00,0,56,100
FAB120510A-04,INSTALL DOOR & HARDWARE - FAB120510A,Active,Fire Alarm 5 - 2F -SUW-FAB120510,,,,,,,,,,2025-07-09 08:00,2025-07-15 17:00,2025-07-09 08:00,,2025-11-21 08:00,2025-11-27 17:00,2025-12-01 08:00,2025-12-05 17:00,40,40,0
FAB120510A-05,PAINT & PROTECT DOORS & FRAMES - FAB120510A,Not Started,Fire Alarm 5 - 2F -SUW-FAB120510,,,,,,,,,,2026-02-16 08:00,2026-02-19 15:00,,,2026-02-16 08:00,2026-02-19 15:00,2025-12-02 10:00,2025-12-05 17:00,30,30,0
ZX-5080,SECAI TOOK OVER FOR DESIGN - Complete Drywall & Inspect - Rated Chase-West - 2F-SUW-FAB120511,Complete,Rated Chase West - 2F -SUW-FAB120511,,,,,,,,,,2025-08-15 08:00,2025-08-21 17:00,2025-08-15 08:00,2025-08-15 17:00,2025-11-20 17:00,2025-11-20 17:00,2025-11-17 10:00,2025-11-17 10:00,0,40,100
ZX-5090,SECAI TOOK OVER FOR DESIGN - Complete Fire Caulk & Inspect - Rated Chase-West - 2F-SUW-FAB120511,Complete,Rated Chase West - 2F -SUW-FAB120511,,,,,,,,,,2025-08-14 08:00,2025-08-15 17:00,2025-08-15 08:00,2025-08-15 17:00,2025-11-20 17:00,2025-11-20 17:00,2025-12-05 17:00,2025-12-05 17:00,0,16,100
ZX-5100,SECAI TOOK OVER FOR DESIGN - Complete Control Joint & Inspect - Rated Chase-West - 2F-SUW-FAB120511,Complete,Rated Chase West - 2F -SUW-FAB120511,,,,,,,,,,2025-08-14 08:00,2025-08-15 17:00,2025-08-15 08:00,2025-08-15 17:00,2025-11-20 17:00,2025-11-20 17:00,2025-11-17 10:00,2025-11-17 10:00,0,16,100
FAB120511A-01,DOOR FRAME HANDED OVER TO SECAI ON 10/14 - FAB120511A,Complete,Rated Chase West - 2F -SUW-FAB120511,,,,,,,,,,2025-10-14 08:00,2025-10-14 17:00,2025-10-14 08:00,2025-10-14 17:00,2025-11-20 17:00,2025-11-20 17:00,2025-11-17 10:00,2025-11-17 10:00,0,8,100
FAB120511A-03,INSTALL DOOR FRAME BY SECAI - FAB120511A - HANDED OVER TO SECAI ON 10/14,Active,Rated Chase West - 2F -SUW-FAB120511,,,,,,,,,,2025-10-14 08:00,2025-10-14 17:00,2025-10-14 08:00,,2025-11-21 08:00,2025-11-28 17:00,2025-11-17 10:00,2025-11-25 10:00,48,8,0
FAB120511A-04,INSTALL DOOR & HARDWARE - FAB120511A,Not Started,Rated Chase West - 2F -SUW-FAB120511,,,,,,,,,,2025-12-01 08:00,2025-12-05 17:00,,,2025-12-01 08:00,2025-12-05 17:00,2025-11-25 10:00,2025-12-02 10:00,40,40,0
FAB120511A-05,PAINT & PROTECT DOORS & FRAMES -  FAB120511A,Not Started,Rated Chase West - 2F -SUW-FAB120511,,,,,,,,,,2026-02-16 08:00,2026-02-19 15:00,,,2026-02-16 08:00,2026-02-19 15:00,2025-12-02 10:00,2025-12-05 17:00,30,30,0
ZX-5140,Complete Drywall & Inspect - IT/Security 3 - 2F-TR-FAB120307,Complete,IT/Security 3 - 2F -SUW-TR-FAB120307,,,,,,,,,,2025-08-27 08:00,2025-09-02 17:00,2025-08-27 08:00,2025-09-02 17:00,2025-11-20 17:00,2025-11-20 17:00,2025-11-25 10:00,2025-11-25 10:00,0,40,100
ZX-5150,Complete Fire Caulk & Inspect - IT/Security 3 - 2F-TR-FAB120307,Complete,IT/Security 3 - 2F -SUW-TR-FAB120307,,,,,,,,,,2025-09-29 08:00,2025-09-30 17:00,2025-09-29 08:00,2025-09-30 17:00,2025-11-20 17:00,2025-11-20 17:00,2025-12-05 17:00,2025-12-05 17:00,0,16,100
ZX-5160,Complete Control Joint & Inspect - IT/Security 3 - 2F-TR-FAB120307,Complete,IT/Security 3 - 2F -SUW-TR-FAB120307,,,,,,,,,,2025-09-02 08:00,2025-09-03 17:00,2025-09-02 08:00,2025-09-03 17:00,2025-11-20 17:00,2025-11-20 17:00,2025-11-25 10:00,2025-11-25 10:00,0,16,100
TR-FAB120307A-01,IMPACT - INSTALL/REWORK DRYWALL FRAMING AROUND DOORS - TR - FAB120307A,Complete,IT/Security 3 - 2F -SUW-TR-FAB120307,,,,,,,,,,2025-05-21 08:00,2025-05-29 17:00,2025-05-21 08:00,2025-05-29 17:00,2025-11-20 17:00,2025-11-20 17:00,2025-11-25 10:00,2025-11-25 10:00,0,56,100
TR-FAB120307A-02,SECAI ROUGH IN/SECURITY -  TR - FAB120307A,Complete,IT/Security 3 - 2F -SUW-TR-FAB120307,,,,,,,,,,2025-05-29 08:00,2025-05-29 17:00,2025-05-29 08:00,2025-05-29 17:00,2025-11-20 17:00,2025-11-20 17:00,2025-11-25 10:00,2025-11-25 10:00,0,8,100
TR-FAB120307A-03,INSTALL DOOR FRAMES - TR - FAB120307A,Complete,IT/Security 3 - 2F -SUW-TR-FAB120307,,,,,,,,,,2025-05-29 08:00,2025-05-29 17:00,2025-05-29 08:00,2025-05-29 17:00,2025-11-20 17:00,2025-11-20 17:00,2025-11-25 10:00,2025-11-25 10:00,0,8,100
TR-FAB120307A-04,INSTALL DOOR & HARDWARE - TR - FAB120307A,Active,IT/Security 3 - 2F -SUW-TR-FAB120307,,,,,,,,,,2025-11-13 08:00,2025-11-19 17:00,2025-11-13 08:00,,2025-11-21 08:00,2025-11-27 17:00,2025-11-25 10:00,2025-12-02 10:00,40,40,0
TR-FAB120307A-05,PAINT & PROTECT DOORS & FRAMES - TR - FAB120307A,Not Started,IT/Security 3 - 2F -SUW-TR-FAB120307,,,,,,,,,,2026-02-16 08:00,2026-02-19 15:00,,,2026-02-16 08:00,2026-02-19 15:00,2025-12-02 10:00,2025-12-05 17:00,30,30,0
ZX-5050,Complete Drywall & Inspect - Battery Rm 2 - 2F-SUW-FAB120314,Complete,Battery Rm 2 - 2F -SUW-FAB120314,,,,,,,,,,2025-07-22 08:00,2025-08-04 17:00,2025-06-16 08:00,2025-09-03 17:00,2025-11-20 17:00,2025-11-20 17:00,2025-11-25 10:00,2025-11-25 10:00,0,80,100
ZX-5060,Complete Fire Caulk & Inspect - Battery Rm #02 - 2F-SUW-FAB120314,Complete,Battery Rm 2 - 2F -SUW-FAB120314,,,,,,,,,,2025-07-14 08:00,2025-07-18 17:00,2025-07-14 08:00,2025-09-03 17:00,2025-11-20 17:00,2025-11-20 17:00,2025-12-05 17:00,2025-12-05 17:00,0,40,100
ZX-5070,Complete Control Joint & Inspect - Battery Rm #02 - 2F-SUW-FAB120314,Complete,Battery Rm 2 - 2F -SUW-FAB120314,,,,,,,,,,2025-07-14 08:00,2025-07-18 17:00,2025-07-14 08:00,2025-09-03 17:00,2025-11-20 17:00,2025-11-20 17:00,2025-11-25 10:00,2025-11-25 10:00,0,40,100
FAB120314A-01,IMPACT - INSTALL/REWORK DRYWALL FRAMING AROUND DOORS - FAB120314A,Complete,Battery Rm 2 - 2F -SUW-FAB120314,,,,,,,,,,2025-04-01 08:00,2025-04-09 17:00,2025-04-01 08:00,2025-04-09 17:00,2025-11-20 17:00,2025-11-20 17:00,2025-11-25 10:00,2025-11-25 10:00,0,56,100
FAB120314A-02,SECAI ROUGH IN/SECURITY - FAB120314A,Complete,Battery Rm 2 - 2F -SUW-FAB120314,,,,,,,,,,2025-04-09 08:00,2025-04-09 17:00,2025-04-09 08:00,2025-04-09 17:00,2025-11-20 17:00,2025-11-20 17:00,2025-11-25 10:00,2025-11-25 10:00,0,8,100
FAB120314A-03,INSTALL DOOR FRAMES - FAB120314A,Complete,Battery Rm 2 - 2F -SUW-FAB120314,,,,,,,,,,2025-07-21 13:00,2025-07-22 12:00,2025-04-09 00:00,2025-04-09 16:00,2025-11-20 17:00,2025-11-20 17:00,2025-11-25 10:00,2025-11-25 10:00,0,8,100
FAB120314A-04,INSTALL DOOR & HARDWARE - FAB120314A,Not Started,Battery Rm 2 - 2F -SUW-FAB120314,,,,,,,,,,2025-11-28 08:00,2025-12-04 17:00,,,2025-11-28 08:00,2025-12-04 17:00,2025-11-25 10:00,2025-12-02 10:00,40,40,0
FAB120314A-05,PAINT & PROTECT DOORS & FRAMES - FAB120314A,Not Started,Battery Rm 2 - 2F -SUW-FAB120314,,,,,,,,,,2026-02-16 08:00,2026-02-19 15:00,,,2026-02-16 08:00,2026-02-19 15:00,2025-12-02 10:00,2025-12-05 17:00,30,30,0
FAB120314B-01,IMPACT - INSTALL/REWORK DRYWALL FRAMING AROUND DOORS - FAB120314B,Complete,Battery Rm 2 - 2F -SUW-FAB120314,,,,,,,,,,2025-02-13 08:00,2025-02-21 17:00,2025-02-13 08:00,2025-02-21 17:00,2025-11-20 17:00,2025-11-20 17:00,2025-11-25 10:00,2025-11-25 10:00,0,56,100
FAB120314B-02,SECAI ROUGH IN/SECURITY - FAB120314B,Complete,Battery Rm 2 - 2F -SUW-FAB120314,,,,,,,,,,2025-02-21 08:00,2025-02-21 17:00,2025-02-21 08:00,2025-02-21 17:00,2025-11-20 17:00,2025-11-20 17:00,2025-11-25 10:00,2025-11-25 10:00,0,8,100
FAB120314B-03,INSTALL DOOR FRAMES - FAB120314B,Complete,Battery Rm 2 - 2F -SUW-FAB120314,,,,,,,,,,2025-07-21 13:00,2025-07-22 12:00,2025-02-21 00:00,2025-02-21 16:00,2025-11-20 17:00,2025-11-20 17:00,2025-11-25 10:00,2025-11-25 10:00,0,8,100
FAB120314B-04,INSTALL DOOR & HARDWARE - FAB120314B,Not Started,Battery Rm 2 - 2F -SUW-FAB120314,,,,,,,,,,2025-11-28 08:00,2025-12-04 17:00,,,2025-11-28 08:00,2025-12-04 17:00,2025-11-25 10:00,2025-12-02 10:00,40,40,0
FAB120314B-05,PAINT & PROTECT DOORS & FRAMES - FAB120314B,Not Started,Battery Rm 2 - 2F -SUW-FAB120314,,,,,,,,,,2026-02-16 08:00,2026-02-19 15:00,,,2026-02-16 08:00,2026-02-19 15:00,2025-12-02 10:00,2025-12-05 17:00,30,30,0
ZX-5200,Complete Drywall & Inspect - Clean Vestibule #02 - 2F-FAB120201,Complete,Clean Vestibule 2 - 2F -SUW-FAB120201,,,,,,,,,,2025-10-01 08:00,2025-10-07 17:00,2025-10-01 08:00,2025-10-07 17:00,2025-11-20 17:00,2025-11-20 17:00,2025-12-05 17:00,2025-12-05 17:00,0,40,100
ZX-5210,Complete Fire Caulk & Inspect - Clean Vestibule #02 - 2F-FAB120201,Complete,Clean Vestibule 2 - 2F -SUW-FAB120201,,,,,,,,,,2025-10-09 08:00,2025-10-10 17:00,2025-10-09 08:00,2025-10-10 17:00,2025-11-20 17:00,2025-11-20 17:00,2025-12-05 17:00,2025-12-05 17:00,0,16,100
ZX-5220,Complete Control Joint & Inspect - Clean Vestibule #02 - 2F-FAB120201,Complete,Clean Vestibule 2 - 2F -SUW-FAB120201,,,,,,,,,,2025-10-09 08:00,2025-10-10 17:00,2025-10-09 08:00,2025-10-10 17:00,2025-11-20 17:00,2025-11-20 17:00,2025-12-05 17:00,2025-12-05 17:00,0,16,100
FAB120201A-01,IMPACT - INSTALL/REWORK DRYWALL FRAMING AROUND DOORS - FAB120201A,Complete,Clean Vestibule 2 - 2F -SUW-FAB120201,,,,,,,,,,2025-02-10 08:00,2025-02-18 17:00,2025-02-10 08:00,2025-02-18 17:00,2025-11-20 17:00,2025-11-20 17:00,2025-11-25 10:00,2025-11-25 10:00,0,56,100
FAB120201A-02,SECAI ROUGH IN/SECURITY - FAB120201A,Complete,Clean Vestibule 2 - 2F -SUW-FAB120201,,,,,,,,,,2025-02-18 08:00,2025-02-18 17:00,2025-02-18 08:00,2025-02-18 17:00,2025-11-20 17:00,2025-11-20 17:00,2025-11-25 10:00,2025-11-25 10:00,0,8,100
FAB120201A-03,INSTALL DOOR FRAMES - FAB120201A,Complete,Clean Vestibule 2 - 2F -SUW-FAB120201,,,,,,,,,,2025-07-10 13:00,2025-07-11 12:00,2025-02-18 00:00,2025-02-18 16:00,2025-11-20 17:00,2025-11-20 17:00,2025-11-25 10:00,2025-11-25 10:00,0,8,100
FAB120201A-04,INSTALL DOOR & HARDWARE - FAB120201A,Active,Clean Vestibule 2 - 2F -SUW-FAB120201,,,,,,,,,,2025-11-13 08:00,2025-11-19 17:00,2025-11-13 08:00,,2025-11-21 08:00,2025-11-27 17:00,2025-11-25 10:00,2025-12-02 10:00,40,40,0
FAB120201A-05,PAINT & PROTECT DOORS & FRAMES - FAB120201A,Not Started,Clean Vestibule 2 - 2F -SUW-FAB120201,,,,,,,,,,2026-02-16 08:00,2026-02-19 15:00,,,2026-02-16 08:00,2026-02-19 15:00,2025-12-02 10:00,2025-12-05 17:00,30,30,0
ZX-18990,IMPACT - PENDING ELEVATOR COMPLETION - Clean Vestibule 2 - 2F-FAB120201,Complete,Clean Vestibule 2 - 2F -SUW-FAB120201,,,,,,,,,,2025-06-23 08:00,2025-07-18 17:00,2025-06-23 08:00,2025-10-20 17:00,2025-11-20 17:00,2025-11-20 17:00,2025-12-05 17:00,2025-12-05 17:00,0,160,100
ZX-5170,SECAI TOOK OVER FOR ACCELERATION - Complete Drywall & Inspect - Airlock 1 - 2F-FAB120108 - MKM,Complete,Air Lock 1 - 2F -SUW-FAB120108,,,,,,,,,,2025-07-18 08:00,2025-07-31 17:00,2025-07-18 08:00,2025-08-18 17:00,2025-11-20 17:00,2025-11-20 17:00,2025-11-17 10:00,2025-11-17 10:00,0,80,100
ZX-5180,Complete Fire Caulk & Inspect - Airlock #01 - 2F-FAB120108 - MKM,Complete,Air Lock 1 - 2F -SUW-FAB120108,,,,,,,,,,2025-08-14 08:00,2025-08-15 17:00,2025-08-14 08:00,2025-08-15 17:00,2025-11-20 17:00,2025-11-20 17:00,2025-12-05 17:00,2025-12-05 17:00,0,16,100
ZX-5190,SECAI TOOK OVER FOR ACCELERATION - Complete Control Joint & Inspect - Airlock 1 - 2F-FAB120108 - MKM,Complete,Air Lock 1 - 2F -SUW-FAB120108,,,,,,,,,,2025-08-18 08:00,2025-08-18 17:00,2025-08-18 08:00,2025-08-18 17:00,2025-11-20 17:00,2025-11-20 17:00,2025-11-17 10:00,2025-11-17 10:00,0,8,100
FAB120108A-13,DOOR FRAME HANDED OVER TO SECAI - FAB120108A,Complete,Air Lock 1 - 2F -SUW-FAB120108,,,,,,,,,,2025-06-27 08:00,2025-06-27 17:00,2025-06-27 08:00,2025-06-27 17:00,2025-11-20 17:00,2025-11-20 17:00,2025-11-18 10:00,2025-11-18 10:00,0,8,100
FAB120108A-04,INSTALL DOOR & HARDWARE - FAB120108A,Not Started,Air Lock 1 - 2F -SUW-FAB120108,,,,,,,,,,2025-11-28 08:00,2025-12-04 17:00,,,2025-11-28 08:00,2025-12-04 17:00,2025-11-25 10:00,2025-12-02 10:00,40,40,0
FAB120108A-05,PAINT & PROTECT DOORS & FRAMES - FAB120108A,Not Started,Air Lock 1 - 2F -SUW-FAB120108,,,,,,,,,,2026-02-16 08:00,2026-02-19 15:00,,,2026-02-16 08:00,2026-02-19 15:00,2025-12-02 10:00,2025-12-05 17:00,30,30,0
FAB120108B-13,DOOR FRAME HANDED OVER TO SECAI ON 06/27 - FAB120108B,Complete,Air Lock 1 - 2F -SUW-FAB120108,,,,,,,,,,2025-06-27 08:00,2025-06-27 17:00,2025-06-27 08:00,2025-06-27 08:00,2025-11-20 17:00,2025-11-20 17:00,2025-11-25 10:00,2025-11-25 10:00,0,8,100
FAB120108B-03,INSTALL DOOR FRAME BY SECAI - FAB120108B HANDED OVER ON 06/27,Complete,Air Lock 1 - 2F -SUW-FAB120108,,,,,,,,,,2025-06-27 08:00,2025-07-10 17:00,2025-06-28 08:00,2025-09-15 17:00,2025-11-20 17:00,2025-11-20 17:00,2025-11-25 10:00,2025-11-25 10:00,0,80,100
FAB120108B-04,INSTALL DOOR & HARDWARE - FAB120108B,Active,Air Lock 1 - 2F -SUW-FAB120108,,,,,,,,,,2025-10-27 08:00,2025-10-31 17:00,2025-10-27 08:00,,2025-11-21 08:00,2025-11-27 17:00,2025-11-25 10:00,2025-12-02 10:00,40,40,0
FAB120108B-05,PAINT & PROTECT DOORS & FRAMES - FAB120108B,Not Started,Air Lock 1 - 2F -SUW-FAB120108,,,,,,,,,,2026-02-16 08:00,2026-02-19 15:00,,,2026-02-16 08:00,2026-02-19 15:00,2025-12-02 10:00,2025-12-05 17:00,30,30,0
FAB120108D-75,DOOR FRAME HANDED OVER TO SECAI ON 10/03 - FAB120108D,Complete,Air Lock 1 - 2F -SUW-FAB120108,,,,,,,,,,2025-10-03 08:00,2025-10-03 17:00,2025-10-03 08:00,2025-10-03 17:00,2025-11-20 17:00,2025-11-20 17:00,2025-11-25 10:00,2025-11-25 10:00,0,8,100
FAB120108D-03,INSTALL DOOR FRAME BY SECAI - FAB120108D - HANDED OVER ON 10/03,Complete,Air Lock 1 - 2F -SUW-FAB120108,,,,,,,,,,2025-10-02 08:00,2025-10-02 17:00,2025-10-02 08:00,2025-10-02 17:00,2025-11-20 17:00,2025-11-20 17:00,2025-11-25 10:00,2025-11-25 10:00,0,8,100
FAB120108D-04,INSTALL DOOR & HARDWARE - FAB120108D,Not Started,Air Lock 1 - 2F -SUW-FAB120108,,,,,,,,,,2025-12-01 08:00,2025-12-05 17:00,,,2025-12-01 08:00,2025-12-05 17:00,2025-11-25 10:00,2025-12-02 10:00,40,40,0
FAB120108D-05,PAINT & PROTECT DOORS & FRAMES - FAB120108D,Not Started,Air Lock 1 - 2F -SUW-FAB120108,,,,,,,,,,2026-02-16 08:00,2026-02-19 15:00,,,2026-02-16 08:00,2026-02-19 15:00,2025-12-02 10:00,2025-12-05 17:00,30,30,0
FAB120108E-13,DOOR FRAME HANDED OVER TO SECAI ON 08/29 - FAB120108E,Complete,Air Lock 1 - 2F -SUW-FAB120108,,,,,,,,,,2025-08-29 08:00,2025-08-29 17:00,2025-08-29 08:00,2025-08-29 17:00,2025-11-20 17:00,2025-11-20 17:00,2025-11-17 10:00,2025-11-17 10:00,0,8,100
FAB120108E-04,INSTALL DOOR & HARDWARE - FAB120108E,Not Started,Air Lock 1 - 2F -SUW-FAB120108,,,,,,,,,,2025-12-01 08:00,2025-12-05 17:00,,,2025-12-01 08:00,2025-12-05 17:00,2025-11-25 10:00,2025-12-02 10:00,40,40,0
FAB120108E-05,PAINT & PROTECT DOORS & FRAMES - FAB120108E,Not Started,Air Lock 1 - 2F -SUW-FAB120108,,,,,,,,,,2026-02-16 08:00,2026-02-19 15:00,,,2026-02-16 08:00,2026-02-19 15:00,2025-12-02 10:00,2025-12-05 17:00,30,30,0
FAB120108D-11,IMPACT - PROCUREMENT - REORDERED DOOR FRAME (JAMB DEPTH ISSUE) FAB120108D,Complete,Air Lock 1 - 2F -SUW-FAB120108,,,,,,,,,,2025-06-20 08:00,2025-08-14 17:00,2025-06-20 08:00,2025-06-30 17:00,2025-11-20 17:00,2025-11-20 17:00,2025-11-25 10:00,2025-11-25 10:00,0,320,100
FAB120108E-11,IMPACT - PROCUREMENT - REORDERED DOOR FRAME (JAMB DEPTH ISSUE) FAB120108E,Complete,Air Lock 1 - 2F -SUW-FAB120108,,,,,,,,,,2025-06-20 08:00,2025-08-14 17:00,2025-06-20 08:00,2025-06-30 17:00,2025-11-20 17:00,2025-11-20 17:00,2025-11-17 10:00,2025-11-17 10:00,0,320,100
FAB120108A-21,IMPACT - RFI 9489 HOLLOWMETAL FRAME CLASH WITH GOALPOST BASE PLATES,Complete,Air Lock 1 - 2F -SUW-FAB120108,,,,,,,,,,2025-06-20 08:00,2025-06-30 10:00,2024-11-04 08:00,2025-06-27 17:00,2025-11-20 17:00,2025-11-20 17:00,2025-11-17 10:00,2025-11-17 10:00,0,50,100
ZX-5110,Complete Drywall & Inspect - Elevator Hall #01 - 2F-FAB120113,Complete,Elevator Hall 1 - 2F -SUW-FAB120113,,,,,,,,,,2025-10-09 08:00,2025-10-10 17:00,2025-10-09 08:00,2025-10-10 17:00,2025-11-20 17:00,2025-11-20 17:00,2025-12-02 08:00,2025-12-02 08:00,0,16,100
ZX-5120,Complete Fire Caulk & Inspect - Elevator Hall #01 - 2F-FAB120113,Not Started,Elevator Hall 1 - 2F -SUW-FAB120113,,,,,,,,,,2025-12-02 08:00,2025-12-03 17:00,,,2025-12-02 08:00,2025-12-03 17:00,2025-12-02 08:00,2025-12-03 17:00,16,16,0
ZX-5130,Complete Control Joint & Inspect - Elevator Hall #01 - 2F-FAB120113,Not Started,Elevator Hall 1 - 2F -SUW-FAB120113,,,,,,,,,,2025-12-04 08:00,2025-12-05 17:00,,,2025-12-04 08:00,2025-12-05 17:00,2025-12-04 08:00,2025-12-05 17:00,16,16,0
FAB120113A-01,IMPACT - INSTALL/REWORK DRYWALL FRAMING AROUND DOORS - FAB120113A HANDED OVER TO SECAI 09/05,Complete,Elevator Hall 1 - 2F -SUW-FAB120113,,,,,,,,,,2025-09-05 08:00,2025-09-08 17:00,2025-09-05 08:00,2025-09-05 17:00,2025-11-20 17:00,2025-11-20 17:00,2025-11-17 10:00,2025-11-17 10:00,0,16,100
FAB120113A-02,SECAI ROUGH IN/SECURITY - FAB120113A HANDED OVER TO SECAI ON 09/05,Complete,Elevator Hall 1 - 2F -SUW-FAB120113,,,,,,,,,,2025-09-05 08:00,2025-09-05 17:00,2025-09-05 08:00,2025-09-05 17:00,2025-11-20 17:00,2025-11-20 17:00,2025-11-17 10:00,2025-11-17 10:00,0,8,100
FAB120113A-03,INSTALL DOOR FRAME BY SECAI - FAB120113A HANDED OVER ON 09/05,Active,Elevator Hall 1 - 2F -SUW-FAB120113,,,,,,,,,,2025-09-05 08:00,2025-09-05 17:00,2025-09-05 08:00,,2025-11-21 08:00,2025-11-28 17:00,2025-11-17 10:00,2025-11-25 10:00,48,8,0
FAB120113A-04,INSTALL DOOR & HARDWARE - FAB120113A,Not Started,Elevator Hall 1 - 2F -SUW-FAB120113,,,,,,,,,,2025-12-01 08:00,2025-12-05 17:00,,,2025-12-01 08:00,2025-12-05 17:00,2025-11-25 10:00,2025-12-02 10:00,40,40,0
FAB120113A-05,PAINT & PROTECT DOORS & FRAMES - FAB120113A,Not Started,Elevator Hall 1 - 2F -SUW-FAB120113,,,,,,,,,,2026-02-16 08:00,2026-02-19 15:00,,,2026-02-16 08:00,2026-02-19 15:00,2025-12-02 10:00,2025-12-05 17:00,30,30,0
FAB120113B-01,IMPACT - INSTALL/REWORK DRYWALL FRAMING AROUND DOORS - FAB120113B,Complete,Elevator Hall 1 - 2F -SUW-FAB120113,,,,,,,,,,2025-03-21 08:00,2025-03-31 17:00,2025-03-21 08:00,2025-03-31 17:00,2025-11-20 17:00,2025-11-20 17:00,2025-11-25 10:00,2025-11-25 10:00,0,56,100
FAB120113B-02,SECAI ROUGH IN/SECURITY - FAB120113B,Complete,Elevator Hall 1 - 2F -SUW-FAB120113,,,,,,,,,,2025-03-31 08:00,2025-03-31 17:00,2025-03-31 08:00,2025-03-31 17:00,2025-11-20 17:00,2025-11-20 17:00,2025-11-25 10:00,2025-11-25 10:00,0,8,100
FAB120113B-03,INSTALL DOOR FRAMES - FAB120113B,Complete,Elevator Hall 1 - 2F -SUW-FAB120113,,,,,,,,,,2025-09-03 13:00,2025-09-04 12:00,2025-03-31 00:00,2025-03-31 16:00,2025-11-20 17:00,2025-11-20 17:00,2025-11-25 10:00,2025-11-25 10:00,0,8,100
FAB120113B-04,INSTALL DOOR & HARDWARE - FAB120113B,Not Started,Elevator Hall 1 - 2F -SUW-FAB120113,,,,,,,,,,2025-11-21 08:00,2025-11-27 17:00,,,2025-11-21 08:00,2025-11-27 17:00,2025-11-25 10:00,2025-12-02 10:00,40,40,0
FAB120113B-05,PAINT & PROTECT DOORS & FRAMES - FAB120113B,Not Started,Elevator Hall 1 - 2F -SUW-FAB120113,,,,,,,,,,2026-02-16 08:00,2026-02-19 15:00,,,2026-02-16 08:00,2026-02-19 15:00,2025-12-02 10:00,2025-12-05 17:00,30,30,0
ZX-5710,SECAI TURNOVER FOR ACELERATION - Drywall & Inspect - Battery Rm - 2F-SUE-FAB126503 BAKER/DESCOPE,Complete,Battery Rm - 2F -SUE-FAB126503,,,,,,,,,,2025-07-15 08:00,2025-07-28 17:00,2025-06-16 08:00,2025-06-16 16:00,2025-11-20 17:00,2025-11-20 17:00,2025-11-25 10:00,2025-11-25 10:00,0,80,100
ZX-5720,SECAI - TOOK OVER - Fire Caulk & Inspect - Battery Rm - 2F-SUE-FAB126503 BAKER/DESCOPE,Complete,Battery Rm - 2F -SUE-FAB126503,,,,,,,,,,2025-07-29 08:00,2025-07-30 17:00,2025-06-16 08:00,2025-06-16 16:00,2025-11-20 17:00,2025-11-20 17:00,2025-12-05 17:00,2025-12-05 17:00,0,16,100
ZX-5730,SECAI TURNOVER FOR ACELERATION - Control Joint & Inspect - Battery Rm - 2F-SUE-FAB126503 BAKER/DESCOPE,Complete,Battery Rm - 2F -SUE-FAB126503,,,,,,,,,,2025-07-29 08:00,2025-07-30 17:00,2025-06-16 08:00,2025-06-16 16:00,2025-11-20 17:00,2025-11-20 17:00,2025-11-25 10:00,2025-11-25 10:00,0,16,100
FAB126503A-01,INSTALL/REWORK DRYWALL FRAMING AROUND DOORS - FAB126503A,Complete,Battery Rm - 2F -SUE-FAB126503,,,,,,,,,,2025-07-04 08:00,2025-07-14 17:00,2025-07-04 08:00,2025-07-14 17:00,2025-11-20 17:00,2025-11-20 17:00,2025-11-27 08:00,2025-11-27 08:00,0,56,100
FAB126503A-02,SECAI ROUGH IN/SECURITY - FAB126503A,Complete,Battery Rm - 2F -SUE-FAB126503,,,,,,,,,,2025-07-15 08:00,2025-07-15 17:00,2025-07-15 08:00,2025-07-15 17:00,2025-11-20 17:00,2025-11-20 17:00,2025-11-27 08:00,2025-11-27 08:00,0,8,100
FAB126503A-03,INSTALL DOOR FRAMES - FAB126503A,Complete,Battery Rm - 2F -SUE-FAB126503,,,,,,,,,,2025-07-15 08:00,2025-07-15 17:00,2025-07-15 08:00,2025-07-15 17:00,2025-11-20 17:00,2025-11-20 17:00,2025-11-27 08:00,2025-11-27 08:00,0,8,100
FAB126503A-04,INSTALL DOOR & HARDWARE - FAB126503A,Active,Battery Rm - 2F -SUE-FAB126503,,,,,,,,,,2025-07-16 08:00,2025-07-22 17:00,2025-07-16 08:00,,2025-11-21 08:00,2025-11-27 17:00,2025-11-27 08:00,2025-12-03 17:00,40,40,0
FAB126503A-05,PAINT & PROTECT DOORS & FRAMES - FAB126503A,Not Started,Battery Rm - 2F -SUE-FAB126503,,,,,,,,,,2026-02-16 08:00,2026-02-17 17:00,,,2026-02-16 08:00,2026-02-17 17:00,2025-12-04 08:00,2025-12-05 17:00,16,16,0
FAB126503B-01,INSTALL/REWORK DRYWALL FRAMING AROUND DOORS - FAB126503B,Complete,Battery Rm - 2F -SUE-FAB126503,,,,,,,,,,2025-06-18 08:00,2025-06-26 17:00,2025-06-18 08:00,2025-06-26 17:00,2025-11-20 17:00,2025-11-20 17:00,2025-11-25 10:00,2025-11-25 10:00,0,56,100
FAB126503B-02,SECAI ROUGH IN/SECURITY - FAB126503B,Complete,Battery Rm - 2F -SUE-FAB126503,,,,,,,,,,2025-06-26 08:00,2025-06-26 17:00,2025-06-26 08:00,2025-06-26 17:00,2025-11-20 17:00,2025-11-20 17:00,2025-11-25 10:00,2025-11-25 10:00,0,8,100
FAB126503B-03,INSTALL DOOR FRAMES - FAB126503B,Complete,Battery Rm - 2F -SUE-FAB126503,,,,,,,,,,2025-06-26 08:00,2025-06-26 17:00,2025-06-26 08:00,2025-06-26 17:00,2025-11-20 17:00,2025-11-20 17:00,2025-11-25 10:00,2025-11-25 10:00,0,8,100
FAB126503B-04,INSTALL DOOR & HARDWARE - FAB126503B,Active,Battery Rm - 2F -SUE-FAB126503,,,,,,,,,,2025-11-13 08:00,2025-11-19 17:00,2025-11-13 08:00,,2025-11-21 08:00,2025-11-27 17:00,2025-11-25 10:00,2025-12-02 10:00,40,40,0
FAB126503B-05,PAINT & PROTECT DOORS & FRAMES - FAB126503B,Not Started,Battery Rm - 2F -SUE-FAB126503,,,,,,,,,,2026-02-16 08:00,2026-02-19 15:00,,,2026-02-16 08:00,2026-02-19 15:00,2025-12-02 10:00,2025-12-05 17:00,30,30,0
FAB126503A-11,IMPACT - INTERNAL - NO OPENING AT THIS LOCATION FAB126503A,Complete,Battery Rm - 2F -SUE-FAB126503,,,,,,,,,,2025-07-10 08:00,2025-07-10 17:00,2025-06-16 08:00,2025-06-16 16:00,2025-11-20 17:00,2025-11-20 17:00,2025-11-27 08:00,2025-11-27 08:00,0,8,100
ZX-5260,Complete Drywall & Inspect - Storage - 2F-SUW-FAB120509 NON RATED,Complete,Storage - 2F -SUW-FAB120509,,,,,,,,,,2025-07-11 08:00,2025-07-24 17:00,2025-06-10 08:00,2025-06-20 16:00,2025-11-20 17:00,2025-11-20 17:00,2025-12-05 17:00,2025-12-05 17:00,0,80,100
ZX-5280,Complete Control Joint & Inspect - Storage - 2F-SUW-FAB120509,Complete,Storage - 2F -SUW-FAB120509,,,,,,,,,,2025-10-02 08:00,2025-10-03 17:00,2025-10-02 08:00,2025-10-03 17:00,2025-11-20 17:00,2025-11-20 17:00,2025-12-05 17:00,2025-12-05 17:00,0,16,100
FAB120509A-01,IMPACT - INSTALL/REWORK DRYWALL FRAMING AROUND DOORS - FAB120509A,Complete,Storage - 2F -SUW-FAB120509,,,,,,,,,,2025-02-10 08:00,2025-02-18 17:00,2025-02-10 08:00,2025-02-18 17:00,2025-11-20 17:00,2025-11-20 17:00,2025-11-25 10:00,2025-11-25 10:00,0,56,100
FAB120509A-02,SECAI ROUGH IN/SECURITY - FAB120509A,Complete,Storage - 2F -SUW-FAB120509,,,,,,,,,,2025-02-18 08:00,2025-02-18 17:00,2025-02-18 08:00,2025-02-18 17:00,2025-11-20 17:00,2025-11-20 17:00,2025-11-25 10:00,2025-11-25 10:00,0,8,100
FAB120509A-03,INSTALL DOOR FRAMES - FAB120509A,Complete,Storage - 2F -SUW-FAB120509,,,,,,,,,,2025-09-04 13:00,2025-09-05 12:00,2025-02-18 00:00,2025-02-18 16:00,2025-11-20 17:00,2025-11-20 17:00,2025-11-25 10:00,2025-11-25 10:00,0,8,100
FAB120509A-04,INSTALL DOOR & HARDWARE - FAB120509A,Active,Storage - 2F -SUW-FAB120509,,,,,,,,,,2025-11-07 08:00,2025-11-13 17:00,2025-11-07 08:00,,2025-11-21 08:00,2025-11-27 17:00,2025-11-25 10:00,2025-12-02 10:00,40,40,0
FAB120509A-05,PAINT & PROTECT DOORS & FRAMES -  FAB120509A,Not Started,Storage - 2F -SUW-FAB120509,,,,,,,,,,2026-02-16 08:00,2026-02-19 15:00,,,2026-02-16 08:00,2026-02-19 15:00,2025-12-02 10:00,2025-12-05 17:00,30,30,0
ZX-5320,Complete Drywall & Inspect - Duct Shaft - 2F-SUW-FAB120403,Complete,Duct Shaft - 2F -SUW-FAB120403,,,,,,,,,,2025-11-06 08:00,2025-11-07 17:00,2025-11-06 08:00,2025-11-08 17:00,2025-11-20 17:00,2025-11-20 17:00,2025-12-05 17:00,2025-12-05 17:00,0,16,100
ZX-5330,Complete Fire Caulk & Inspect - Duct Shaft - 2F-SUW-FAB120403,Complete,Duct Shaft - 2F -SUW-FAB120403,,,,,,,,,,2025-11-06 08:00,2025-11-07 17:00,2025-11-06 08:00,2025-11-08 17:00,2025-11-20 17:00,2025-11-20 17:00,2025-12-05 17:00,2025-12-05 17:00,0,16,100
ZX-5340,Complete Control Joint & Inspect - Duct Shaft - 2F-SUW-FAB120403,Complete,Duct Shaft - 2F -SUW-FAB120403,,,,,,,,,,2025-10-02 08:00,2025-10-03 17:00,2025-10-02 08:00,2025-10-03 17:00,2025-11-20 17:00,2025-11-20 17:00,2025-12-05 17:00,2025-12-05 17:00,0,16,100
FAB120403A-01,IMPACT - INSTALL/REWORK DRYWALL FRAMING AROUND DOORS  - FAB120403A,Complete,Duct Shaft - 2F -SUW-FAB120403,,,,,,,,,,2025-05-19 08:00,2025-05-27 17:00,2025-05-19 08:00,2025-05-22 17:00,2025-11-20 17:00,2025-11-20 17:00,2025-11-25 10:00,2025-11-25 10:00,0,56,100
FAB120403A-02,SECAI ROUGH IN/SECURITY - FAB120403A,Complete,Duct Shaft - 2F -SUW-FAB120403,,,,,,,,,,2025-05-19 08:00,2025-05-19 17:00,2025-05-22 08:00,2025-05-22 17:00,2025-11-20 17:00,2025-11-20 17:00,2025-11-25 10:00,2025-11-25 10:00,0,8,100
FAB120403A-03,INSTALL DOOR FRAMES - FAB120403A,Complete,Duct Shaft - 2F -SUW-FAB120403,,,,,,,,,,2025-05-22 08:00,2025-05-22 17:00,2025-05-22 08:00,2025-05-22 17:00,2025-11-20 17:00,2025-11-20 17:00,2025-11-25 10:00,2025-11-25 10:00,0,8,100
FAB120403A-04,INSTALL DOOR & HARDWARE - FAB120403A,Active,Duct Shaft - 2F -SUW-FAB120403,,,,,,,,,,2025-10-24 08:00,2025-10-30 17:00,2025-10-24 08:00,,2025-11-21 08:00,2025-11-27 17:00,2025-11-25 10:00,2025-12-02 10:00,40,40,0
FAB120403A-05,PAINT & PROTECT DOORS & FRAMES -  FAB120403A,Not Started,Duct Shaft - 2F -SUW-FAB120403,,,,,,,,,,2026-02-16 08:00,2026-02-19 15:00,,,2026-02-16 08:00,2026-02-19 15:00,2025-12-02 10:00,2025-12-05 17:00,30,30,0
FAB120403A-11,IMPACT - INTERIOR - CHERRY STAIR BLASTING NO ACCESS,Complete,Duct Shaft - 2F -SUW-FAB120403,,,,,,,,,,2025-05-21 08:00,2025-05-21 08:00,2025-05-21 08:00,2025-05-21 08:00,2025-11-20 17:00,2025-11-20 17:00,2025-11-25 10:00,2025-11-25 10:00,0,0,100
ZX-5380,Complete Drywall & Inspect - Vestibule 3 - 2F-FAB120304 - MKM,Complete,Vestibule 3 - 2F -SUW-FAB120304,,,,,,,,,,2025-07-18 08:00,2025-07-24 17:00,2025-07-18 08:00,2025-09-26 17:00,2025-11-20 17:00,2025-11-20 17:00,2025-12-05 17:00,2025-12-05 17:00,0,40,100
ZX-5390,Complete Fire Caulk & Inspect - Vestibule 3 - 2F-FAB120304 - MKM,Complete,Vestibule 3 - 2F -SUW-FAB120304,,,,,,,,,,2025-09-25 08:00,2025-09-26 17:00,2025-09-25 08:00,2025-09-26 17:00,2025-11-20 17:00,2025-11-20 17:00,2025-12-05 17:00,2025-12-05 17:00,0,16,100
ZX-5400,Complete Control Joint & Inspect - Vestibule #03 - 2F-FAB120304 - MKM,Complete,Vestibule 3 - 2F -SUW-FAB120304,,,,,,,,,,2025-09-25 08:00,2025-09-26 17:00,2025-09-25 08:00,2025-09-26 17:00,2025-11-20 17:00,2025-11-20 17:00,2025-12-05 17:00,2025-12-05 17:00,0,16,100
FAB120304A-01,IMPACT - INSTALL/REWORK DRYWALL FRAMING AROUND DOORS - FAB120304A,Complete,Vestibule 3 - 2F -SUW-FAB120304,,,,,,,,,,2025-02-11 08:00,2025-02-19 17:00,2025-02-11 08:00,2025-02-19 17:00,2025-11-20 17:00,2025-11-20 17:00,2025-11-25 10:00,2025-11-25 10:00,0,56,100
FAB120304A-02,SECAI ROUGH IN/SECURITY - FAB120304A,Complete,Vestibule 3 - 2F -SUW-FAB120304,,,,,,,,,,2025-02-19 08:00,2025-02-19 17:00,2025-02-19 08:00,2025-02-19 17:00,2025-11-20 17:00,2025-11-20 17:00,2025-11-25 10:00,2025-11-25 10:00,0,8,100
FAB120304A-03,INSTALL DOOR FRAMES - FAB120304A,Complete,Vestibule 3 - 2F -SUW-FAB120304,,,,,,,,,,2025-08-08 13:00,2025-08-11 12:00,2025-02-19 00:00,2025-02-19 16:00,2025-11-20 17:00,2025-11-20 17:00,2025-11-25 10:00,2025-11-25 10:00,0,8,100
FAB120304A-04,INSTALL DOOR & HARDWARE - FAB120304A,Active,Vestibule 3 - 2F -SUW-FAB120304,,,,,,,,,,2025-09-26 08:00,2025-10-02 17:00,2025-09-26 08:00,,2025-11-21 08:00,2025-11-27 17:00,2025-11-25 10:00,2025-12-02 10:00,40,40,0
FAB120304A-05,PAINT & PROTECT DOORS & FRAMES - FAB120304A,Not Started,Vestibule 3 - 2F -SUW-FAB120304,,,,,,,,,,2026-02-16 08:00,2026-02-19 15:00,,,2026-02-16 08:00,2026-02-19 15:00,2025-12-02 10:00,2025-12-05 17:00,30,30,0
FAB120304B-01,IMPACT - INSTALL/REWORK DRYWALL FRAMING AROUND DOORS - FAB120304B,Complete,Vestibule 3 - 2F -SUW-FAB120304,,,,,,,,,,2025-02-11 08:00,2025-02-19 17:00,2025-02-11 08:00,2025-02-19 17:00,2025-11-20 17:00,2025-11-20 17:00,2025-11-25 10:00,2025-11-25 10:00,0,56,100
FAB120304B-02,SECAI ROUGH IN/SECURITY - FAB120304B,Complete,Vestibule 3 - 2F -SUW-FAB120304,,,,,,,,,,2025-02-19 08:00,2025-02-19 17:00,2025-02-19 08:00,2025-02-19 17:00,2025-11-20 17:00,2025-11-20 17:00,2025-11-25 10:00,2025-11-25 10:00,0,8,100
FAB120304B-03,INSTALL DOOR FRAMES - FAB120304B,Complete,Vestibule 3 - 2F -SUW-FAB120304,,,,,,,,,,2025-08-08 13:00,2025-08-11 12:00,2025-02-19 00:00,2025-02-19 16:00,2025-11-20 17:00,2025-11-20 17:00,2025-11-25 10:00,2025-11-25 10:00,0,8,100
FAB120304B-04,INSTALL DOOR & HARDWARE - FAB120304B,Active,Vestibule 3 - 2F -SUW-FAB120304,,,,,,,,,,2025-04-04 08:00,2025-04-10 17:00,2025-04-04 08:00,,2025-11-21 08:00,2025-11-27 17:00,2025-11-25 10:00,2025-12-02 10:00,40,40,0
FAB120304B-05,PAINT & PROTECT DOORS & FRAMES - FAB120304B,Not Started,Vestibule 3 - 2F -SUW-FAB120304,,,,,,,,,,2026-02-16 08:00,2026-02-19 15:00,,,2026-02-16 08:00,2026-02-19 15:00,2025-12-02 10:00,2025-12-05 17:00,30,30,0
ZX-5500,Complete Drywall & Inspect - Battery Rm 1 - 2F-SUW-FAB120315,Complete,Battery Rm 1- 2F -SUW-FAB120315,,,,,,,,,,2025-07-15 08:00,2025-07-28 17:00,2025-06-16 08:00,2025-08-29 17:00,2025-11-20 17:00,2025-11-20 17:00,2025-11-24 10:00,2025-11-24 10:00,0,80,100
ZX-5510,Complete Fire Caulk & Inspect - Battery Rm #01 - 2F-SUW-FAB120315,Complete,Battery Rm 1- 2F -SUW-FAB120315,,,,,,,,,,2025-07-14 08:00,2025-07-18 17:00,2025-07-14 08:00,2025-08-29 17:00,2025-11-20 17:00,2025-11-20 17:00,2025-12-05 17:00,2025-12-05 17:00,0,40,100
ZX-5520,Complete Control Joint & Inspect - Battery Rm #01 - 2F-SUW-FAB120315,Complete,Battery Rm 1- 2F -SUW-FAB120315,,,,,,,,,,2025-08-18 08:00,2025-08-22 17:00,2025-07-14 08:00,2025-08-29 17:00,2025-11-20 17:00,2025-11-20 17:00,2025-11-24 10:00,2025-11-24 10:00,0,40,100
FAB120315A-01,IMPACT - INSTALL/REWORK DRYWALL FRAMING AROUND DOORS - FAB120315A,Complete,Battery Rm 1- 2F -SUW-FAB120315,,,,,,,,,,2025-05-01 08:00,2025-05-09 17:00,2025-05-01 08:00,2025-05-08 17:00,2025-11-20 17:00,2025-11-20 17:00,2025-11-25 10:00,2025-11-25 10:00,0,56,100
FAB120315A-02,SECAI ROUGH IN/SECURITY - FAB120315A,Complete,Battery Rm 1- 2F -SUW-FAB120315,,,,,,,,,,2025-05-08 08:00,2025-05-08 17:00,2025-05-08 08:00,2025-05-08 17:00,2025-11-20 17:00,2025-11-20 17:00,2025-11-25 10:00,2025-11-25 10:00,0,8,100
FAB120315A-03,INSTALL DOOR FRAMES - FAB120315A,Complete,Battery Rm 1- 2F -SUW-FAB120315,,,,,,,,,,2025-07-23 13:00,2025-07-24 12:00,2025-05-08 00:00,2025-05-08 16:00,2025-11-20 17:00,2025-11-20 17:00,2025-11-25 10:00,2025-11-25 10:00,0,8,100
FAB120315A-04,INSTALL DOOR & HARDWARE - FAB120315A,Not Started,Battery Rm 1- 2F -SUW-FAB120315,,,,,,,,,,2025-11-28 08:00,2025-12-04 17:00,,,2025-11-28 08:00,2025-12-04 17:00,2025-11-25 10:00,2025-12-02 10:00,40,40,0
FAB120315A-05,PAINT & PROTECT DOORS & FRAMES - FAB120315A,Not Started,Battery Rm 1- 2F -SUW-FAB120315,,,,,,,,,,2026-02-16 08:00,2026-02-19 15:00,,,2026-02-16 08:00,2026-02-19 15:00,2025-12-02 10:00,2025-12-05 17:00,30,30,0
FAB120315B-01,IMPACT - INSTALL/REWORK DRYWALL FRAMING AROUND DOORS - FAB120315B,Complete,Battery Rm 1- 2F -SUW-FAB120315,,,,,,,,,,2025-04-01 08:00,2025-04-09 17:00,2025-03-26 08:00,2025-04-01 17:00,2025-11-20 17:00,2025-11-20 17:00,2025-11-27 08:00,2025-11-27 08:00,0,56,100
FAB120315B-02,SECAI ROUGH IN/SECURITY - FAB120315B,Complete,Battery Rm 1- 2F -SUW-FAB120315,,,,,,,,,,2025-04-01 08:00,2025-04-01 17:00,2025-04-01 08:00,2025-04-01 17:00,2025-11-20 17:00,2025-11-20 17:00,2025-11-27 08:00,2025-11-27 08:00,0,8,100
FAB120315B-03,INSTALL DOOR FRAMES - FAB120315B,Complete,Battery Rm 1- 2F -SUW-FAB120315,,,,,,,,,,2025-07-23 13:00,2025-07-24 12:00,2025-04-01 00:00,2025-04-01 16:00,2025-11-20 17:00,2025-11-20 17:00,2025-11-27 08:00,2025-11-27 08:00,0,8,100
FAB120315B-04,INSTALL DOOR & HARDWARE - FAB120315B,Active,Battery Rm 1- 2F -SUW-FAB120315,,,,,,,,,,2025-09-09 08:00,2025-09-15 17:00,2025-09-09 08:00,,2025-11-21 08:00,2025-11-27 17:00,2025-11-27 08:00,2025-12-03 17:00,40,40,0
FAB120315B-05,PAINT & PROTECT DOORS & FRAMES - FAB120315B,Not Started,Battery Rm 1- 2F -SUW-FAB120315,,,,,,,,,,2026-02-16 08:00,2026-02-17 17:00,,,2026-02-16 08:00,2026-02-17 17:00,2025-12-04 08:00,2025-12-05 17:00,16,16,0
ZX-5290,Complete Drywall & Inspect - Duct Shaft - 2F-SUW-FAB120110,Complete,Duct Shaft - 2F -SUW-FAB120110,,,,,,,,,,2025-09-01 08:00,2025-09-05 17:00,2025-09-01 08:00,2025-09-05 17:00,2025-11-20 17:00,2025-11-20 17:00,2025-11-25 08:00,2025-11-25 08:00,0,40,100
ZX-5300,Complete Fire Caulk & Inspect - Duct Shaft - 2F-SUW-FAB120110,Complete,Duct Shaft - 2F -SUW-FAB120110,,,,,,,,,,2025-09-22 08:00,2025-09-22 17:00,2025-09-22 08:00,2025-09-22 08:00,2025-11-20 17:00,2025-11-20 17:00,2025-12-05 17:00,2025-12-05 17:00,0,8,100
ZX-5440,Complete Drywall & Inspect - IT/Security 1 - 2F-TR-FAB120107,Complete,IT/Security 1 - 2F -SUW-TR-FAB120107,,,,,,,,,,2025-09-01 08:00,2025-09-05 17:00,2025-09-01 08:00,2025-09-05 17:00,2025-11-20 17:00,2025-11-20 17:00,2025-11-25 10:00,2025-11-25 10:00,0,40,100
ZX-5450,Complete Fire Caulk & Inspect - IT/Security 1 - 2F-TR-FAB120107,Complete,IT/Security 1 - 2F -SUW-TR-FAB120107,,,,,,,,,,2025-10-30 08:00,2025-10-31 17:00,2025-10-30 08:00,2025-10-30 08:00,2025-11-20 17:00,2025-11-20 17:00,2025-12-05 17:00,2025-12-05 17:00,0,16,100
ZX-5460,Complete Control Joint & Inspect - IT/Security 1 - 2F-TR-FAB120107,Complete,IT/Security 1 - 2F -SUW-TR-FAB120107,,,,,,,,,,2025-09-04 08:00,2025-09-05 17:00,2025-09-04 08:00,2025-09-05 17:00,2025-11-20 17:00,2025-11-20 17:00,2025-11-25 10:00,2025-11-25 10:00,0,16,100
TR-FAB120107A-01,IMPACT - INSTALL/REWORK DRYWALL FRAMING AROUND DOORS - TR - FAB120107A,Complete,IT/Security 1 - 2F -SUW-TR-FAB120107,,,,,,,,,,2025-08-13 08:00,2025-08-13 08:00,2025-08-13 08:00,2025-08-13 08:00,2025-11-20 17:00,2025-11-20 17:00,2025-11-25 10:00,2025-11-25 10:00,0,0,100
TR-FAB120107A-02,SECAI ROUGH IN/SECURITY - TR - FAB120107A,Complete,IT/Security 1 - 2F -SUW-TR-FAB120107,,,,,,,,,,2025-08-13 08:00,2025-08-13 17:00,2025-08-13 08:00,2025-08-13 17:00,2025-11-20 17:00,2025-11-20 17:00,2025-11-25 10:00,2025-11-25 10:00,0,8,100
TR-FAB120107A-03,INSTALL DOOR FRAMES - TR - FAB120107A,Complete,IT/Security 1 - 2F -SUW-TR-FAB120107,,,,,,,,,,2025-08-13 08:00,2025-08-13 17:00,2025-08-13 08:00,2025-08-13 08:00,2025-11-20 17:00,2025-11-20 17:00,2025-11-25 10:00,2025-11-25 10:00,0,8,100
TR-FAB120107A-04,INSTALL DOOR & HARDWARE - TR - FAB120107A,Not Started,IT/Security 1 - 2F -SUW-TR-FAB120107,,,,,,,,,,2025-11-21 08:00,2025-11-27 17:00,,,2025-11-21 08:00,2025-11-27 17:00,2025-11-25 10:00,2025-12-02 10:00,40,40,0
TR-FAB120107A-05,PAINT & PROTECT DOORS & FRAMES - TR - FAB120107A,Not Started,IT/Security 1 - 2F -SUW-TR-FAB120107,,,,,,,,,,2026-02-16 08:00,2026-02-19 15:00,,,2026-02-16 08:00,2026-02-19 15:00,2025-12-02 10:00,2025-12-05 17:00,30,30,0
TR-FAB120107A-11,IMPACT - PROCUREMENT - Reordered doors (Wall Thickness and Door Swing Design Changes),Complete,IT/Security 1 - 2F -SUW-TR-FAB120107,,,,,,,,,,2025-06-09 08:00,2025-08-04 17:00,2025-06-09 08:00,2025-07-14 17:00,2025-11-20 17:00,2025-11-20 17:00,2025-11-25 10:00,2025-11-25 10:00,0,328,100
ZX-5560,Complete Drywall & Inspect - Elevator #01A - 2F-1FAB-EL1A,Complete,Elevator 1A - 2F -SUW-FAB1-EL01A,,,,,,,,,,2025-05-16 08:00,2025-05-29 17:00,2025-05-16 08:00,2025-07-14 17:00,2025-11-20 17:00,2025-11-20 17:00,2025-12-05 17:00,2025-12-05 17:00,0,80,100
ZX-5570,Complete Fire Caulk & Inspect - Elevator #01A - 2F-1FAB-EL1A,Complete,Elevator 1A - 2F -SUW-FAB1-EL01A,,,,,,,,,,2025-08-01 08:00,2025-08-04 17:00,2025-07-29 13:00,2025-08-01 15:00,2025-11-20 17:00,2025-11-20 17:00,2025-12-05 17:00,2025-12-05 17:00,0,16,100
ZX-5580,Complete Control Joint & Inspect - Elevator #01A - 2F-1FAB-EL1A,Complete,Elevator 1A - 2F -SUW-FAB1-EL01A,,,,,,,,,,2025-07-28 08:00,2025-07-29 17:00,2025-07-15 08:00,2025-07-18 17:00,2025-11-20 17:00,2025-11-20 17:00,2025-12-05 17:00,2025-12-05 17:00,0,16,100
ZX-5410,Complete Drywall & Inspect - Duct Shaft - 2F-SUW-FAB120101,Not Started,Duct Shaft - 2F -SUW-FAB120101,,,,,,,,,,2025-12-05 08:00,2025-12-05 17:00,,,2025-12-05 08:00,2025-12-05 17:00,2025-12-03 08:00,2025-12-03 17:00,8,8,0
ZX-5420,Complete Fire Caulk & Inspect - Duct Shaft - 2F-SUW-FAB120101,Not Started,Duct Shaft - 2F -SUW-FAB120101,,,,,,,,,,2025-12-08 08:00,2025-12-09 17:00,,,2025-12-08 08:00,2025-12-09 17:00,2025-12-04 08:00,2025-12-05 17:00,16,16,0
ZX-5470,SECAI TURNOVER FOR ACELERATION - Drywall & Inspect - Electrical Rm - 2F-SUE-FAB126502 BAKER/DESCOPE,Complete,Electrical Rm - 2F -SUE-FAB126502,,,,,,,,,,2025-07-15 08:00,2025-07-28 17:00,2025-06-16 08:00,2025-06-16 16:00,2025-11-20 17:00,2025-11-20 17:00,2025-11-25 10:00,2025-11-25 10:00,0,80,100
ZX-5480,SECAI TURNOVER FOR ACELERATION - Fire Caulk & Inspect - Electrical Rm - 2F-SUE-FAB126502 BAKER/DESCOPE,Complete,Electrical Rm - 2F -SUE-FAB126502,,,,,,,,,,2025-07-29 08:00,2025-07-30 17:00,2025-06-16 08:00,2025-06-16 16:00,2025-11-20 17:00,2025-11-20 17:00,2025-12-05 17:00,2025-12-05 17:00,0,16,100
ZX-5490,SECAI TURNOVER FOR ACELERATION - Control Joint & Inspect - Electrical Rm - 2F-SUE-FAB126502 BAKER/DESCOPE,Complete,Electrical Rm - 2F -SUE-FAB126502,,,,,,,,,,2025-07-29 08:00,2025-07-30 17:00,2025-06-16 08:00,2025-06-16 16:00,2025-11-20 17:00,2025-11-20 17:00,2025-11-25 10:00,2025-11-25 10:00,0,16,100
FAB126502A-01,INSTALL/REWORK DRYWALL FRAMING AROUND DOORS - FAB126502A,Complete,Electrical Rm - 2F -SUE-FAB126502,,,,,,,,,,2025-07-22 08:00,2025-07-30 17:00,2025-07-22 08:00,2025-07-30 17:00,2025-11-20 17:00,2025-11-20 17:00,2025-12-01 08:00,2025-12-01 08:00,0,56,100
FAB126502A-02,SECAI ROUGH IN/SECURITY - FAB126502A,Complete,Electrical Rm - 2F -SUE-FAB126502,,,,,,,,,,2025-07-31 08:00,2025-07-31 17:00,2025-07-31 08:00,2025-07-31 17:00,2025-11-20 17:00,2025-11-20 17:00,2025-12-01 08:00,2025-12-01 08:00,0,8,100
FAB126502A-03,INSTALL DOOR FRAMES - FAB126502A,Complete,Electrical Rm - 2F -SUE-FAB126502,,,,,,,,,,2025-07-30 13:00,2025-07-31 12:00,2025-07-30 13:00,2025-07-31 12:00,2025-11-20 17:00,2025-11-20 17:00,2025-12-01 08:00,2025-12-01 08:00,0,8,100
FAB126502A-04,INSTALL DOOR & HARDWARE - FAB126502A,Active,Electrical Rm - 2F -SUE-FAB126502,,,,,,,,,,2025-05-19 08:00,2025-05-23 17:00,2025-05-19 08:00,,2025-11-21 08:00,2025-11-27 17:00,2025-12-01 08:00,2025-12-05 17:00,40,40,0
FAB126502A-05,PAINT & PROTECT DOORS & FRAMES - FAB126502A,Not Started,Electrical Rm - 2F -SUE-FAB126502,,,,,,,,,,2026-02-16 08:00,2026-02-16 08:00,,,2026-02-16 08:00,2026-02-16 08:00,2025-12-05 17:00,2025-12-05 17:00,0,0,0
FAB126502C-01,INSTALL DOOR FRAMES - FAB126502C,Active,Electrical Rm - 2F -SUE-FAB126502,,,,,,,,,,2025-08-29 08:00,2025-08-29 17:00,2025-08-29 08:00,,2025-11-21 08:00,2025-11-28 17:00,2025-11-25 10:00,2025-12-03 10:00,48,8,0
FAB126502C-04,INSTALL DOOR & HARDWARE - FAB126502C,Not Started,Electrical Rm - 2F -SUE-FAB126502,,,,,,,,,,2025-11-21 08:00,2025-11-27 17:00,,,2025-11-21 08:00,2025-11-27 17:00,2025-11-25 10:00,2025-12-02 10:00,40,40,0
FAB126502C-05,PAINT & PROTECT DOORS & FRAMES - FAB126502C,Not Started,Electrical Rm - 2F -SUE-FAB126502,,,,,,,,,,2026-02-16 08:00,2026-02-19 15:00,,,2026-02-16 08:00,2026-02-19 15:00,2025-12-02 10:00,2025-12-05 17:00,30,30,0
FAB126502D-02,SECAI ROUGH IN/SECURITY - FAB126502D HANDED OVER TO SECAI ON 06/27,Complete,Electrical Rm - 2F -SUE-FAB126502,,,,,,,,,,2025-07-22 08:00,2025-07-22 17:00,2025-06-16 08:00,2025-06-16 16:00,2025-11-20 17:00,2025-11-20 17:00,2025-11-25 10:00,2025-11-25 10:00,0,8,100
FAB126502D-03,INSTALL DOOR FRAME BY SECAI - FAB126502D HANDED OVER 06/27,Complete,Electrical Rm - 2F -SUE-FAB126502,,,,,,,,,,2025-06-27 08:00,2025-07-10 17:00,2025-06-28 08:00,2025-09-17 17:00,2025-11-20 17:00,2025-11-20 17:00,2025-11-25 10:00,2025-11-25 10:00,0,80,100
FAB126502D-04,INSTALL DOOR & HARDWARE - FAB126502D,Active,Electrical Rm - 2F -SUE-FAB126502,,,,,,,,,,2025-10-22 08:00,2025-10-28 17:00,2025-10-22 08:00,,2025-11-21 08:00,2025-11-27 17:00,2025-11-25 10:00,2025-12-02 10:00,40,40,0
FAB126502D-05,PAINT & PROTECT DOORS & FRAMES - FAB126502D,Not Started,Electrical Rm - 2F -SUE-FAB126502,,,,,,,,,,2026-02-16 08:00,2026-02-19 15:00,,,2026-02-16 08:00,2026-02-19 15:00,2025-12-02 10:00,2025-12-05 17:00,30,30,0
FAB126502E-01,INSTALL/REWORK DRYWALL FRAMING AROUND DOORS - FAB126502E,Complete,Electrical Rm - 2F -SUE-FAB126502,,,,,,,,,,2025-07-22 08:00,2025-07-30 17:00,2025-05-08 08:00,2025-05-13 16:00,2025-11-20 17:00,2025-11-20 17:00,2025-11-28 08:00,2025-11-28 08:00,0,56,100
FAB126502E-02,SECAI ROUGH IN/SECURITY - FAB126502E SECAI TURNOVER FOR ACELERATION,Complete,Electrical Rm - 2F -SUE-FAB126502,,,,,,,,,,2025-07-31 08:00,2025-07-31 17:00,2025-05-13 08:00,2025-05-13 16:00,2025-11-20 17:00,2025-11-20 17:00,2025-11-28 08:00,2025-11-28 08:00,0,8,100
FAB126502E-03,INSTALL DOOR FRAMES - FAB126502E,Complete,Electrical Rm - 2F -SUE-FAB126502,,,,,,,,,,2025-07-30 13:00,2025-07-31 12:00,2025-05-13 00:00,2025-05-14 16:00,2025-11-20 17:00,2025-11-20 17:00,2025-11-28 08:00,2025-11-28 08:00,0,8,100
FAB126502E-04,INSTALL DOOR & HARDWARE - FAB126502E,Active,Electrical Rm - 2F -SUE-FAB126502,,,,,,,,,,2025-05-15 08:00,2025-05-21 17:00,2025-05-15 08:00,,2025-11-21 08:00,2025-11-27 17:00,2025-11-28 08:00,2025-12-04 17:00,40,40,0
FAB126502E-05,PAINT & PROTECT DOORS & FRAMES - FAB126502E,Not Started,Electrical Rm - 2F -SUE-FAB126502,,,,,,,,,,2026-02-16 08:00,2026-02-16 17:00,,,2026-02-16 08:00,2026-02-16 17:00,2025-12-05 08:00,2025-12-05 17:00,8,8,0
FAB126502D-13,DOOR FRAME HANDED OVER TO SECAI ON 06/27 - FAB126502D,Complete,Electrical Rm - 2F -SUE-FAB126502,,,,,,,,,,2025-06-27 08:00,2025-06-27 17:00,2025-06-27 08:00,2025-06-27 16:00,2025-11-20 17:00,2025-11-20 17:00,2025-11-25 10:00,2025-11-25 10:00,0,8,100
ZX-5740,Complete Drywall & Inspect - Duct Shaft - 2F-SUW-FAB120512,Complete,Duct Shaft - 2F -SUW-FAB120512,,,,,,,,,,2025-11-03 08:00,2025-11-07 17:00,2025-11-03 08:00,2025-11-07 17:00,2025-11-20 17:00,2025-11-20 17:00,2025-12-05 17:00,2025-12-05 17:00,0,40,100
ZX-5750,Complete Fire Caulk & Inspect - Duct Shaft - 2F-SUW-FAB120512,Complete,Duct Shaft - 2F -SUW-FAB120512,,,,,,,,,,2025-11-06 08:00,2025-11-07 17:00,2025-11-06 08:00,2025-11-07 17:00,2025-11-20 17:00,2025-11-20 17:00,2025-12-05 17:00,2025-12-05 17:00,0,16,100
ZX-5760,Complete Control Joint & Inspect - Duct Shaft - 2F-SUW-FAB120512,Complete,Duct Shaft - 2F -SUW-FAB120512,,,,,,,,,,2025-11-06 08:00,2025-11-07 17:00,2025-11-06 08:00,2025-11-07 17:00,2025-11-20 17:00,2025-11-20 17:00,2025-12-05 17:00,2025-12-05 17:00,0,16,100
ZX-5800,Complete Drywall & Inspect - Clean Vestibule #04 - 2F-FAB120402,Complete,Clean Vestibule 4 - 2F -SUW-FAB120402,,,,,,,,,,2025-07-09 08:00,2025-07-22 17:00,2025-02-04 08:00,2025-02-14 16:00,2025-11-20 17:00,2025-11-20 17:00,2025-11-25 08:00,2025-11-25 08:00,0,80,100
ZX-5810,Complete Fire Caulk & Inspect - Clean Vestibule #04 - 2F-FAB120402 - MKM,Complete,Clean Vestibule 4 - 2F -SUW-FAB120402,,,,,,,,,,2025-08-06 08:00,2025-08-07 17:00,2025-08-06 08:00,2025-08-07 17:00,2025-11-20 17:00,2025-11-20 17:00,2025-11-25 08:00,2025-11-25 08:00,0,16,100
ZX-5820,Complete Control Joint & Inspect - Clean Vestibule #04 - 2F-FAB120402,Complete,Clean Vestibule 4 - 2F -SUW-FAB120402,,,,,,,,,,2025-07-23 08:00,2025-07-24 17:00,2025-02-14 08:00,2025-02-17 16:00,2025-11-20 17:00,2025-11-20 17:00,2025-11-25 08:00,2025-11-25 08:00,0,16,100
FAB120402A-01,IMPACT - INSTALL/REWORK DRYWALL FRAMING AROUND DOORS - FAB120402A,Complete,Clean Vestibule 4 - 2F -SUW-FAB120402,,,,,,,,,,2025-05-29 08:00,2025-06-06 17:00,2025-05-29 08:00,2025-05-30 08:00,2025-11-20 17:00,2025-11-20 17:00,2025-11-25 10:00,2025-11-25 10:00,0,56,100
FAB120402A-02,SECAI ROUGH IN/SECURITY - FAB120402A,Complete,Clean Vestibule 4 - 2F -SUW-FAB120402,,,,,,,,,,2025-05-30 08:00,2025-05-30 17:00,2025-05-30 08:00,2025-05-30 17:00,2025-11-20 17:00,2025-11-20 17:00,2025-11-25 10:00,2025-11-25 10:00,0,8,100
FAB120402A-03,INSTALL DOOR FRAMES - FAB120402A,Complete,Clean Vestibule 4 - 2F -SUW-FAB120402,,,,,,,,,,2025-05-30 08:00,2025-05-30 17:00,2025-05-30 08:00,2025-05-30 17:00,2025-11-20 17:00,2025-11-20 17:00,2025-11-25 10:00,2025-11-25 10:00,0,8,100
FAB120402A-04,INSTALL DOOR & HARDWARE - FAB120402A,Active,Clean Vestibule 4 - 2F -SUW-FAB120402,,,,,,,,,,2025-11-12 08:00,2025-11-18 17:00,2025-11-12 08:00,,2025-11-21 08:00,2025-11-27 17:00,2025-11-25 10:00,2025-12-02 10:00,40,40,0
FAB120402A-05,PAINT & PROTECT DOORS & FRAMES -  FAB120402A,Not Started,Clean Vestibule 4 - 2F -SUW-FAB120402,,,,,,,,,,2026-02-16 08:00,2026-02-19 15:00,,,2026-02-16 08:00,2026-02-19 15:00,2025-12-02 10:00,2025-12-05 17:00,30,30,0
FAB120402A-11,"IMPACT - INTERNAL - CHERRY STAIR BLASTIN, NO ACCESS",Complete,Clean Vestibule 4 - 2F -SUW-FAB120402,,,,,,,,,,2025-05-29 08:00,2025-05-29 08:00,2025-05-29 08:00,2025-05-29 08:00,2025-11-20 17:00,2025-11-20 17:00,2025-11-25 10:00,2025-11-25 10:00,0,0,100
ZX-5860,Complete Drywall & Inspect - Airlock 3 - 2F-FAB120303 - MKM,Complete,Air Lock 3 - 2F -SUW-FAB120303,,,,,,,,,,2025-07-18 08:00,2025-07-31 17:00,2025-07-18 08:00,2025-08-25 08:00,2025-11-20 17:00,2025-11-20 17:00,2025-11-25 10:00,2025-11-25 10:00,0,80,100
ZX-5870,Complete Fire Caulk & Inspect - Airlock #03 - 2F-FAB120303 - MKM,Complete,Air Lock 3 - 2F -SUW-FAB120303,,,,,,,,,,2025-08-25 08:00,2025-08-26 17:00,2025-08-26 08:00,2025-08-26 17:00,2025-11-20 17:00,2025-11-20 17:00,2025-12-05 17:00,2025-12-05 17:00,0,16,100
ZX-5880,SECAI TOOK OVER FOR ACCELERATION - Complete Control Joint & Inspect - Airlock 3 - 2F-FAB120303 - MKM,Complete,Air Lock 3 - 2F -SUW-FAB120303,,,,,,,,,,2025-08-18 08:00,2025-08-18 17:00,2025-08-18 08:00,2025-08-18 17:00,2025-11-20 17:00,2025-11-20 17:00,2025-11-25 10:00,2025-11-25 10:00,0,8,100
FAB120303A-01,IMPACT - INSTALL/REWORK DRYWALL FRAMING AROUND DOORS - FAB120303A,Complete,Air Lock 3 - 2F -SUW-FAB120303,,,,,,,,,,2025-03-20 08:00,2025-03-28 17:00,2025-03-20 08:00,2025-03-28 17:00,2025-11-20 17:00,2025-11-20 17:00,2025-11-25 10:00,2025-11-25 10:00,0,56,100
FAB120303A-02,SECAI ROUGH IN/SECURITY - FAB120303A,Complete,Air Lock 3 - 2F -SUW-FAB120303,,,,,,,,,,2025-03-28 08:00,2025-03-28 17:00,2025-03-28 08:00,2025-03-28 17:00,2025-11-20 17:00,2025-11-20 17:00,2025-11-25 10:00,2025-11-25 10:00,0,8,100
FAB120303A-03,INSTALL DOOR FRAMES - FAB120303A,Complete,Air Lock 3 - 2F -SUW-FAB120303,,,,,,,,,,2025-07-14 13:00,2025-07-15 12:00,2025-03-28 00:00,2025-03-28 16:00,2025-11-20 17:00,2025-11-20 17:00,2025-11-25 10:00,2025-11-25 10:00,0,8,100
FAB120303A-04,INSTALL DOOR & HARDWARE - FAB120303A,Not Started,Air Lock 3 - 2F -SUW-FAB120303,,,,,,,,,,2025-11-21 08:00,2025-11-27 17:00,,,2025-11-21 08:00,2025-11-27 17:00,2025-11-25 10:00,2025-12-02 10:00,40,40,0
FAB120303A-05,PAINT & PROTECT DOORS & FRAMES - FAB120303A,Not Started,Air Lock 3 - 2F -SUW-FAB120303,,,,,,,,,,2026-02-16 08:00,2026-02-19 15:00,,,2026-02-16 08:00,2026-02-19 15:00,2025-12-02 10:00,2025-12-05 17:00,30,30,0
FAB120303B-01,IMPACT - INSTALL/REWORK DRYWALL FRAMING AROUND DOORS - FAB120303B,Complete,Air Lock 3 - 2F -SUW-FAB120303,,,,,,,,,,2025-02-25 08:00,2025-03-05 17:00,2025-02-25 08:00,2025-03-05 17:00,2025-11-20 17:00,2025-11-20 17:00,2025-11-25 10:00,2025-11-25 10:00,0,56,100
FAB120303B-02,SECAI ROUGH IN/SECURITY - FAB120303B,Complete,Air Lock 3 - 2F -SUW-FAB120303,,,,,,,,,,2025-03-05 08:00,2025-03-05 17:00,2025-03-05 08:00,2025-03-05 17:00,2025-11-20 17:00,2025-11-20 17:00,2025-11-25 10:00,2025-11-25 10:00,0,8,100
FAB120303B-03,INSTALL DOOR FRAMES - FAB120303B,Complete,Air Lock 3 - 2F -SUW-FAB120303,,,,,,,,,,2025-07-14 13:00,2025-07-15 12:00,2025-03-05 00:00,2025-03-05 16:00,2025-11-20 17:00,2025-11-20 17:00,2025-11-25 10:00,2025-11-25 10:00,0,8,100
FAB120303B-04,INSTALL DOOR & HARDWARE - FAB120303B,Active,Air Lock 3 - 2F -SUW-FAB120303,,,,,,,,,,2025-10-23 08:00,2025-10-29 17:00,2025-10-23 08:00,,2025-11-21 08:00,2025-11-27 17:00,2025-11-25 10:00,2025-12-02 10:00,40,40,0
FAB120303B-05,PAINT & PROTECT DOORS & FRAMES - FAB120303B,Not Started,Air Lock 3 - 2F -SUW-FAB120303,,,,,,,,,,2026-02-16 08:00,2026-02-19 15:00,,,2026-02-16 08:00,2026-02-19 15:00,2025-12-02 10:00,2025-12-05 17:00,30,30,0
FAB120303C-01,IMPACT - INSTALL/REWORK DRYWALL FRAMING AROUND DOORS - FAB120303C,Complete,Air Lock 3 - 2F -SUW-FAB120303,,,,,,,,,,2025-08-12 08:00,2025-08-20 17:00,2025-07-15 08:00,2025-07-16 17:00,2025-11-20 17:00,2025-11-20 17:00,2025-11-25 10:00,2025-11-25 10:00,0,56,100
FAB120303C-04,INSTALL DOOR & HARDWARE - FAB120303C,Active,Air Lock 3 - 2F -SUW-FAB120303,,,,,,,,,,2025-10-23 08:00,2025-10-29 17:00,2025-10-23 08:00,,2025-11-21 08:00,2025-11-27 17:00,2025-11-25 10:00,2025-12-02 10:00,40,40,0
FAB120303C-05,PAINT & PROTECT DOORS & FRAMES - FAB120303C,Not Started,Air Lock 3 - 2F -SUW-FAB120303,,,,,,,,,,2026-02-16 08:00,2026-02-19 15:00,,,2026-02-16 08:00,2026-02-19 15:00,2025-12-02 10:00,2025-12-05 17:00,30,30,0
FAB120303D-03,INSTALL DOOR FRAMES BY SECAI - FAB120303D HANDED OVER ON 08/15,Complete,Air Lock 3 - 2F -SUW-FAB120303,,,,,,,,,,2025-08-15 08:00,2025-08-15 17:00,2025-08-15 08:00,2025-11-07 17:00,2025-11-20 17:00,2025-11-20 17:00,2025-11-25 10:00,2025-11-25 10:00,0,8,100
FAB120303D-04,INSTALL DOOR & HARDWARE - FAB120303D,Active,Air Lock 3 - 2F -SUW-FAB120303,,,,,,,,,,2025-11-11 08:00,2025-11-17 17:00,2025-11-11 08:00,,2025-11-21 08:00,2025-11-27 17:00,2025-11-25 10:00,2025-12-02 10:00,40,40,0
FAB120303D-05,PAINT & PROTECT DOORS & FRAMES - FAB120303D,Not Started,Air Lock 3 - 2F -SUW-FAB120303,,,,,,,,,,2026-02-16 08:00,2026-02-19 15:00,,,2026-02-16 08:00,2026-02-19 15:00,2025-12-02 10:00,2025-12-05 17:00,30,30,0
FAB120303C-11,IMPACT - PROCUREMENT - REORDERED DOORS (JAMB DEPTH ISSUE),Complete,Air Lock 3 - 2F -SUW-FAB120303,,,,,,,,,,2025-06-09 08:00,2025-08-12 17:00,2025-06-09 08:00,2025-07-14 17:00,2025-11-20 17:00,2025-11-20 17:00,2025-11-25 10:00,2025-11-25 10:00,0,376,100
FAB120303D-11,IMPACT - PROCUREMENT - REORDERED DOORS (JAMB DEPTH ISSUE),Complete,Air Lock 3 - 2F -SUW-FAB120303,,,,,,,,,,2025-06-09 08:00,2025-08-12 17:00,2025-06-09 08:00,2025-07-14 17:00,2025-11-20 17:00,2025-11-20 17:00,2025-11-25 10:00,2025-11-25 10:00,0,376,100
ZX-5980,Complete Drywall & Inspect - Duct Shaft - 2F-SUW-FAB120301,Complete,Duct Shaft - 2F -SUW-FAB120301,,,,,,,,,,2025-09-01 08:00,2025-09-05 17:00,2025-09-01 08:00,2025-09-05 17:00,2025-11-20 17:00,2025-11-20 17:00,2025-11-25 08:00,2025-11-25 08:00,0,40,100
ZX-5990,Complete Fire Caulk & Inspect - Duct Shaft - 2F-SUW-FAB120301,Complete,Duct Shaft - 2F -SUW-FAB120301,,,,,,,,,,2025-09-12 08:00,2025-09-15 17:00,2025-09-12 08:00,2025-09-15 17:00,2025-11-20 17:00,2025-11-20 17:00,2025-12-05 17:00,2025-12-05 17:00,0,16,100
FAB120301A-01,IMPACT - INSTALL/REWORK DRYWALL FRAMING AROUND DOORS - FAB120301A,Complete,Duct Shaft - 2F -SUW-FAB120301,,,,,,,,,,2025-02-25 08:00,2025-03-05 17:00,2025-02-25 08:00,2025-03-05 17:00,2025-11-20 17:00,2025-11-20 17:00,2025-11-25 08:00,2025-11-25 08:00,0,56,100
FAB120301A-02,SECAI ROUGH IN/SECURITY - FAB120301A,Complete,Duct Shaft - 2F -SUW-FAB120301,,,,,,,,,,2025-03-05 08:00,2025-03-05 17:00,2025-03-05 08:00,2025-03-05 17:00,2025-11-20 17:00,2025-11-20 17:00,2025-11-25 08:00,2025-11-25 08:00,0,8,100
FAB120301A-03,INSTALL DOOR FRAMES - FAB120301A,Complete,Duct Shaft - 2F -SUW-FAB120301,,,,,,,,,,2025-09-22 13:00,2025-09-23 12:00,2025-03-05 00:00,2025-03-05 16:00,2025-11-20 17:00,2025-11-20 17:00,2025-11-25 08:00,2025-11-25 08:00,0,8,100
FAB120301A-04,INSTALL DOOR & HARDWARE - FAB120301A,Active,Duct Shaft - 2F -SUW-FAB120301,,,,,,,,,,2025-04-04 08:00,2025-04-10 17:00,2025-04-04 08:00,,2025-11-21 08:00,2025-11-27 17:00,2025-11-25 08:00,2025-12-01 17:00,40,40,0
FAB120301A-05,PAINT & PROTECT DOORS & FRAMES -  FAB120301A,Not Started,Duct Shaft - 2F -SUW-FAB120301,,,,,,,,,,2026-02-16 08:00,2026-02-19 17:00,,,2026-02-16 08:00,2026-02-19 17:00,2025-12-02 08:00,2025-12-05 17:00,32,32,0
ZX-5920,Complete Drywall & Inspect - Fire Alarm 1 - 2F-FAB120105,Complete,Fire Alarm 1 - 2F -SUW-FAB120105,,,,,,,,,,2025-08-01 08:00,2025-08-14 17:00,2025-08-01 08:00,2025-08-11 17:00,2025-11-20 17:00,2025-11-20 17:00,2025-11-25 10:00,2025-11-25 10:00,0,80,100
ZX-5930,Complete Fire Caulk & Inspect - Fire Alarm 1 - 2F-FAB120105,Not Started,Fire Alarm 1 - 2F -SUW-FAB120105,,,,,,,,,,2025-11-28 08:00,2025-11-28 17:00,,,2025-11-28 08:00,2025-11-28 17:00,2025-12-05 08:00,2025-12-05 17:00,8,8,0
ZX-5940,Complete Control Joint & Inspect - Fire Alarm 1 - 2F-FAB120105,Complete,Fire Alarm 1 - 2F -SUW-FAB120105,,,,,,,,,,2025-09-02 08:00,2025-09-03 17:00,2025-09-02 08:00,2025-09-03 17:00,2025-11-20 17:00,2025-11-20 17:00,2025-11-25 10:00,2025-11-25 10:00,0,16,100
FAB120105A-01,IMPACT - INSTALL/REWORK DRYWALL FRAMING AROUND DOORS - FAB120105A,Complete,Fire Alarm 1 - 2F -SUW-FAB120105,,,,,,,,,,2025-03-14 08:00,2025-03-24 17:00,2025-03-14 08:00,2025-03-24 17:00,2025-11-20 17:00,2025-11-20 17:00,2025-11-25 10:00,2025-11-25 10:00,0,56,100
FAB120105A-02,SECAI ROUGH IN/SECURITY - FAB120105A,Complete,Fire Alarm 1 - 2F -SUW-FAB120105,,,,,,,,,,2025-03-24 08:00,2025-03-24 17:00,2025-03-24 08:00,2025-03-24 17:00,2025-11-20 17:00,2025-11-20 17:00,2025-11-25 10:00,2025-11-25 10:00,0,8,100
FAB120105A-03,INSTALL DOOR FRAMES - FAB120105A,Complete,Fire Alarm 1 - 2F -SUW-FAB120105,,,,,,,,,,2025-03-24 08:00,2025-03-24 17:00,2025-03-24 08:00,2025-03-24 17:00,2025-11-20 17:00,2025-11-20 17:00,2025-11-25 10:00,2025-11-25 10:00,0,8,100
FAB120105A-04,INSTALL DOOR & HARDWARE - FAB120105A,Active,Fire Alarm 1 - 2F -SUW-FAB120105,,,,,,,,,,2025-10-28 08:00,2025-11-03 17:00,2025-10-28 08:00,,2025-11-21 08:00,2025-11-27 17:00,2025-11-25 10:00,2025-12-02 10:00,40,40,0
FAB120105A-05,PAINT & PROTECT DOORS & FRAMES - FAB120105A,Not Started,Fire Alarm 1 - 2F -SUW-FAB120105,,,,,,,,,,2026-02-16 08:00,2026-02-19 15:00,,,2026-02-16 08:00,2026-02-19 15:00,2025-12-02 10:00,2025-12-05 17:00,30,30,0
ZX-6040,SECAI TOOK OVER FOR ACCELERATION - Drywall & Inspect - Elevator #01 - 2F-1FAB-EL1,Complete,Elevator 1 - 2F -SUW-FAB1-EL01,,,,,,,,,,2025-09-09 08:00,2025-09-19 17:00,2025-09-19 08:00,2025-09-19 17:00,2025-11-20 17:00,2025-11-20 17:00,2025-12-05 17:00,2025-12-05 17:00,0,72,100
ZX-6050,SECAI TOOK OVER FOR ACCELERATION - Fire Caulk & Inspect - Elevator #01 - 2F-1FAB-EL1,Complete,Elevator 1 - 2F -SUW-FAB1-EL01,,,,,,,,,,2025-09-18 08:00,2025-09-19 17:00,2025-09-19 08:00,2025-09-19 17:00,2025-11-20 17:00,2025-11-20 17:00,2025-12-05 17:00,2025-12-05 17:00,0,16,100
ZX-6060,SECAI TOOK OVER FOR ACCELERATION - Control Joint & Inspect - Elevator #01 - 2F-1FAB-EL1,Complete,Elevator 1 - 2F -SUW-FAB1-EL01,,,,,,,,,,2025-09-18 08:00,2025-09-19 17:00,2025-09-19 08:00,2025-09-19 17:00,2025-11-20 17:00,2025-11-20 17:00,2025-12-05 17:00,2025-12-05 17:00,0,16,100
ZX-17520,IMPACT - SECAI ELEVATOR TM TOOK OVER - Elevator #01 - 2F-1FAB-EL1,Complete,Elevator 1 - 2F -SUW-FAB1-EL01,,,,,,,,,,2025-05-13 08:00,2025-05-26 17:00,2025-05-05 08:00,2025-09-15 17:00,2025-11-20 17:00,2025-11-20 17:00,2025-12-05 17:00,2025-12-05 17:00,0,80,100
ZX-5950,SECAI TOOK OVER ACCELERATION - Drywall & Inspect - Vestibule 5 - 2F-FAB120504 - MKM,Complete,Vestibule 5 - 2F -SUW-FAB120504,,,,,,,,,,2025-10-23 08:00,2025-10-24 17:00,2025-10-23 08:00,2025-10-30 17:00,2025-11-20 17:00,2025-11-20 17:00,2025-11-25 10:00,2025-11-25 10:00,0,16,100
ZX-5960,SECAI TOOK OVER ACCELERATION - Fire Caulk & Inspect - Vestibule 5 - 2F-FAB120504 - MKM,Complete,Vestibule 5 - 2F -SUW-FAB120504,,,,,,,,,,2025-10-29 08:00,2025-10-30 17:00,2025-10-30 08:00,2025-10-30 17:00,2025-11-20 17:00,2025-11-20 17:00,2025-12-05 17:00,2025-12-05 17:00,0,16,100
ZX-5970,SECAI TOOK OVER ACCELERATION - Control Joint & Inspect - Vestibule #05 - 2F-FAB120504 - MKM,Complete,Vestibule 5 - 2F -SUW-FAB120504,,,,,,,,,,2025-10-29 08:00,2025-10-30 17:00,2025-10-30 08:00,2025-10-30 17:00,2025-11-20 17:00,2025-11-20 17:00,2025-11-25 10:00,2025-11-25 10:00,0,16,100
FAB120504B-01,DOOR FRAME HANDED OVER TO SECAI ON 10/01 - FAB120504B,Complete,Vestibule 5 - 2F -SUW-FAB120504,,,,,,,,,,2025-10-01 08:00,2025-10-01 17:00,2025-10-01 08:00,2025-10-01 17:00,2025-11-20 17:00,2025-11-20 17:00,2025-11-25 10:00,2025-11-25 10:00,0,8,100
FAB120504B-04,INSTALL DOOR & HARDWARE - FAB120504B,Active,Vestibule 5 - 2F -SUW-FAB120504,,,,,,,,,,2025-11-18 08:00,2025-11-24 17:00,2025-11-18 08:00,,2025-11-21 08:00,2025-11-27 17:00,2025-11-25 10:00,2025-12-02 10:00,40,40,0
FAB120504B-05,PAINT & PROTECT DOORS & FRAMES - FAB120504B,Not Started,Vestibule 5 - 2F -SUW-FAB120504,,,,,,,,,,2026-02-16 08:00,2026-02-19 15:00,,,2026-02-16 08:00,2026-02-19 15:00,2025-12-02 10:00,2025-12-05 17:00,30,30,0
FAB120504B-03,INSTALL DOOR FRAME BY SECAI - FAB120504B - HANDED OVER ON 10/01,Complete,Vestibule 5 - 2F -SUW-FAB120504,,,,,,,,,,2025-10-01 08:00,2025-10-02 17:00,2025-10-01 08:00,2025-10-06 17:00,2025-11-20 17:00,2025-11-20 17:00,2025-11-25 10:00,2025-11-25 10:00,0,16,100
FAB120504D-04,INSTALL DOOR & HARDWARE - FAB120504D,Active,Vestibule 5 - 2F -SUW-FAB120504,,,,,,,,,,2025-10-31 08:00,2025-11-06 17:00,2025-10-31 08:00,,2025-11-21 08:00,2025-11-27 17:00,2025-11-25 10:00,2025-12-02 10:00,40,40,0
FAB120504D-05,PAINT & PROTECT DOORS & FRAMES - FAB120504D,Not Started,Vestibule 5 - 2F -SUW-FAB120504,,,,,,,,,,2026-02-16 08:00,2026-02-19 15:00,,,2026-02-16 08:00,2026-02-19 15:00,2025-12-02 10:00,2025-12-05 17:00,30,30,0
ZX-6190,Complete Drywall & Inspect - Elevator #18 - 2F-1FAB-EL18 - MKM,Complete,Elevator 18 - 2F -SUE-FAB1-EL18,,,,,,,,,,2025-07-18 08:00,2025-07-28 17:00,2025-06-25 15:39,2025-07-04 17:00,2025-11-20 17:00,2025-11-20 17:00,2025-11-25 10:00,2025-11-25 10:00,0,56,100
ZX-6200,Complete Fire Caulk & Inspect - Elevator #18 - 2F-1FAB-EL18 -MKM,Complete,Elevator 18 - 2F -SUE-FAB1-EL18,,,,,,,,,,2025-07-31 08:00,2025-08-01 17:00,2025-07-11 08:00,2025-07-11 17:00,2025-11-20 17:00,2025-11-20 17:00,2025-12-05 17:00,2025-12-05 17:00,0,16,100
ZX-6210,Complete Control Joint & Inspect - Elevator #18 - 2F-1FAB-EL18 -MKM,Complete,Elevator 18 - 2F -SUE-FAB1-EL18,,,,,,,,,,2025-07-29 08:00,2025-07-30 17:00,2025-07-08 08:00,2025-07-10 17:00,2025-11-20 17:00,2025-11-20 17:00,2025-11-25 10:00,2025-11-25 10:00,0,16,100
ZX-6220,Complete Drywall & Inspect - Utility Rm - 2F-FAB120507,Complete,Utility Rm - 2F -SUW-FAB120507,,,,,,,,,,2025-09-01 08:00,2025-09-05 17:00,2025-09-01 08:00,2025-09-05 17:00,2025-11-20 17:00,2025-11-20 17:00,2025-11-25 10:00,2025-11-25 10:00,0,40,100
ZX-6230,Complete Fire Caulk & Inspect - Utility Rm - 2F-FAB120507,Complete,Utility Rm - 2F -SUW-FAB120507,,,,,,,,,,2025-09-29 08:00,2025-09-29 08:00,2025-09-29 08:00,2025-09-29 08:00,2025-11-20 17:00,2025-11-20 17:00,2025-12-05 17:00,2025-12-05 17:00,0,0,100
ZX-6240,Complete Control Joint & Inspect - Utility Rm - 2F-FAB120507,Complete,Utility Rm - 2F -SUW-FAB120507,,,,,,,,,,2025-09-04 08:00,2025-09-05 17:00,2025-09-04 08:00,2025-09-05 17:00,2025-11-20 17:00,2025-11-20 17:00,2025-11-25 10:00,2025-11-25 10:00,0,16,100
FAB120507A-01,IMPACT - PATRIOT OPENING (BENT PLATE) FIX - FAB120507A,Complete,Utility Rm - 2F -SUW-FAB120507,,,,,,,,,,2025-11-10 08:00,2025-11-11 17:00,2025-11-10 08:00,2025-11-11 17:00,2025-11-20 17:00,2025-11-20 17:00,2025-11-25 10:00,2025-11-25 10:00,0,16,100
FAB120507A-04,INSTALL DOOR & HARDWARE - FAB120507A,Active,Utility Rm - 2F -SUW-FAB120507,,,,,,,,,,2025-11-13 08:00,2025-11-19 17:00,2025-11-13 08:00,,2025-11-21 08:00,2025-11-27 17:00,2025-11-25 10:00,2025-12-02 10:00,40,40,0
FAB120507A-05,PAINT & PROTECT DOORS & FRAMES -  FAB120507A,Not Started,Utility Rm - 2F -SUW-FAB120507,,,,,,,,,,2026-02-16 08:00,2026-02-19 15:00,,,2026-02-16 08:00,2026-02-19 15:00,2025-12-02 10:00,2025-12-05 17:00,30,30,0
FAB120507B-01,IMPACT - SECAI SCAFFOLD IMPEDING DOOR FRAME INSTALLATION - FAB120507B,Active,Utility Rm - 2F -SUW-FAB120507,,,,,,,,,,2025-08-25 08:00,2025-08-25 17:00,2025-08-25 08:00,,2025-11-21 08:00,2025-11-28 17:00,2025-11-13 10:00,2025-11-21 10:00,48,8,0
FAB120507B-04,INSTALL DOOR & HARDWARE - FAB120507B,Not Started,Utility Rm - 2F -SUW-FAB120507,,,,,,,,,,2025-12-03 08:00,2025-12-09 17:00,,,2025-12-03 08:00,2025-12-09 17:00,2025-11-25 10:00,2025-12-02 10:00,40,40,0
FAB120507B-05,PAINT & PROTECT DOORS & FRAMES -  FAB120507B,Not Started,Utility Rm - 2F -SUW-FAB120507,,,,,,,,,,2026-02-16 08:00,2026-02-19 15:00,,,2026-02-16 08:00,2026-02-19 15:00,2025-12-02 10:00,2025-12-05 17:00,30,30,0
FAB120507C-01,IMPACT - INSTALL/REWORK DRYWALL FRAMING AROUND DOORS - FAB120507C,Complete,Utility Rm - 2F -SUW-FAB120507,,,,,,,,,,2025-02-13 08:00,2025-02-21 17:00,2025-02-13 08:00,2025-02-21 17:00,2025-11-20 17:00,2025-11-20 17:00,2025-11-25 10:00,2025-11-25 10:00,0,56,100
FAB120507C-02,SECAI ROUGH IN/SECURITY - FAB120507C,Complete,Utility Rm - 2F -SUW-FAB120507,,,,,,,,,,2025-02-21 08:00,2025-02-21 17:00,2025-02-21 08:00,2025-02-21 17:00,2025-11-20 17:00,2025-11-20 17:00,2025-11-25 10:00,2025-11-25 10:00,0,8,100
FAB120507C-03,INSTALL DOOR FRAMES - FAB120507C,Complete,Utility Rm - 2F -SUW-FAB120507,,,,,,,,,,2025-08-18 13:00,2025-08-19 12:00,2025-02-21 00:00,2025-02-21 16:00,2025-11-20 17:00,2025-11-20 17:00,2025-11-25 10:00,2025-11-25 10:00,0,8,100
FAB120507C-04,INSTALL DOOR & HARDWARE - FAB120507C,Not Started,Utility Rm - 2F -SUW-FAB120507,,,,,,,,,,2025-11-28 08:00,2025-12-04 17:00,,,2025-11-28 08:00,2025-12-04 17:00,2025-11-25 10:00,2025-12-02 10:00,40,40,0
FAB120507C-05,PAINT & PROTECT DOORS & FRAMES -  FAB120507C,Not Started,Utility Rm - 2F -SUW-FAB120507,,,,,,,,,,2026-02-16 08:00,2026-02-19 15:00,,,2026-02-16 08:00,2026-02-19 15:00,2025-12-02 10:00,2025-12-05 17:00,30,30,0
FAB120507A-03,INSTALL DOOR FRAMES - FAB120507A,Complete,Utility Rm - 2F -SUW-FAB120507,,,,,,,,,,2025-11-11 08:00,2025-11-11 17:00,2025-11-11 08:00,2025-11-11 17:00,2025-11-20 17:00,2025-11-20 17:00,2025-11-25 10:00,2025-11-25 10:00,0,8,100
FAB120507B-03,INSTALL DOOR FRAMES - FAB120507B,Not Started,Utility Rm - 2F -SUW-FAB120507,,,,,,,,,,2025-12-01 08:00,2025-12-01 17:00,,,2025-12-01 08:00,2025-12-01 17:00,2025-11-21 10:00,2025-11-24 10:00,8,8,0
ZX-6280,Complete Drywall & Inspect - Duct Shaft - 2F-SUW-FAB120312,Complete,Duct Shaft - 2F -SUW-FAB120312,,,,,,,,,,2025-08-19 08:00,2025-08-25 17:00,2025-08-19 08:00,2025-08-25 17:00,2025-11-20 17:00,2025-11-20 17:00,2025-12-04 08:00,2025-12-04 08:00,0,40,100
ZX-6290,Complete Fire Caulk & Inspect - Duct Shaft - 2F-SUW-FAB120312,Not Started,Duct Shaft - 2F -SUW-FAB120312,,,,,,,,,,2025-12-05 08:00,2025-12-08 17:00,,,2025-12-05 08:00,2025-12-08 17:00,2025-12-04 08:00,2025-12-05 17:00,16,16,0
FAB120308A-01,IMPACT - INSTALL/REWORK DRYWALL FRAMING AROUND DOORS - FAB120308A,Complete,Duct Shaft - 2F -SUW-FAB120312,,,,,,,,,,2025-02-25 08:00,2025-03-05 17:00,2025-02-25 08:00,2025-03-05 17:00,2025-11-20 17:00,2025-11-20 17:00,2025-11-25 10:00,2025-11-25 10:00,0,56,100
FAB120308A-02,SECAI ROUGH IN/SECURITY - FAB120308A,Complete,Duct Shaft - 2F -SUW-FAB120312,,,,,,,,,,2025-03-05 08:00,2025-03-05 17:00,2025-03-05 08:00,2025-03-05 17:00,2025-11-20 17:00,2025-11-20 17:00,2025-11-25 10:00,2025-11-25 10:00,0,8,100
FAB120308A-03,INSTALL DOOR FRAMES - FAB120308A,Complete,Duct Shaft - 2F -SUW-FAB120312,,,,,,,,,,2025-03-05 08:00,2025-03-05 17:00,2025-03-05 08:00,2025-03-05 17:00,2025-11-20 17:00,2025-11-20 17:00,2025-11-25 10:00,2025-11-25 10:00,0,8,100
FAB120308A-04,INSTALL DOOR & HARDWARE - FAB120308A,Active,Duct Shaft - 2F -SUW-FAB120312,,,,,,,,,,2025-07-10 08:00,2025-07-16 17:00,2025-07-10 08:00,,2025-11-21 08:00,2025-11-27 17:00,2025-11-25 10:00,2025-12-02 10:00,40,40,0
FAB120308A-05,PAINT & PROTECT DOORS & FRAMES -  FAB120308A,Not Started,Duct Shaft - 2F -SUW-FAB120312,,,,,,,,,,2026-02-16 08:00,2026-02-19 15:00,,,2026-02-16 08:00,2026-02-19 15:00,2025-12-02 10:00,2025-12-05 17:00,30,30,0
ZX-6340,Complete Drywall & Inspect - Elevator Hall #03 - 2F-FAB120305,Not Started,Elevator Hall 3 - 2F -SUW-FAB120305,,,,,,,,,,2025-12-12 08:00,2025-12-18 17:00,,,2025-12-12 08:00,2025-12-18 17:00,2025-11-27 08:00,2025-12-03 17:00,40,40,0
ZX-6350,Complete Fire Caulk & Inspect - Elevator Hall #03 - 2F-FAB120305,Complete,Elevator Hall 3 - 2F -SUW-FAB120305,,,,,,,,,,2025-09-18 08:00,2025-09-19 17:00,2025-09-18 08:00,2025-09-19 17:00,2025-11-20 17:00,2025-11-20 17:00,2025-12-05 17:00,2025-12-05 17:00,0,16,100
ZX-6360,Complete Control Joint & Inspect - Elevator Hall #03 - 2F-FAB120305,Not Started,Elevator Hall 3 - 2F -SUW-FAB120305,,,,,,,,,,2025-12-19 08:00,2025-12-22 17:00,,,2025-12-19 08:00,2025-12-22 17:00,2025-12-04 08:00,2025-12-05 17:00,16,16,0
FAB120305A-00,SHOP DRAWINGS (RFI 9565) - PATRIOT - FAB120305A,Complete,Elevator Hall 3 - 2F -SUW-FAB120305,,INTERIOR STAIRS,L2 - SubFab Level,,,,,,,2025-07-03 08:00,2025-07-14 17:00,2025-07-03 07:00,2025-09-11 17:00,2025-11-20 17:00,2025-11-20 17:00,2025-12-04 08:00,2025-12-04 08:00,0,64,100
FAB120305A-01,GOAL POST SHOP DRAWINGS APPROVAL - JACOBS/SECAI - FAB120305A - L.5/17.5,Complete,Elevator Hall 3 - 2F -SUW-FAB120305,,INTERIOR STAIRS,L2 - SubFab Level,,,,,,,2025-09-11 08:00,2025-09-17 17:00,2025-09-11 08:00,2025-09-26 17:00,2025-11-20 17:00,2025-11-20 17:00,2025-12-04 08:00,2025-12-04 08:00,0,40,100
FAB120305A-02,HEADER/GOAL POST FABRICATION - PATRIOT - FAB120305A - L.5/17.5,Complete,Elevator Hall 3 - 2F -SUW-FAB120305,,INTERIOR STAIRS,L2 - SubFab Level,,,,,,,2025-11-03 08:00,2025-11-07 17:00,2025-11-03 08:00,2025-11-14 17:00,2025-11-20 17:00,2025-11-20 17:00,2025-12-04 08:00,2025-12-04 08:00,0,40,100
FAB120305A-04,HEADER/GOAL POST INSTALL - PATRIOT - FAB120305A - L.5/17.5,Complete,Elevator Hall 3 - 2F -SUW-FAB120305,,INTERIOR STAIRS,L2 - SubFab Level,,,,,,,2025-11-17 08:00,2025-11-19 17:00,2025-11-17 08:00,2025-11-20 17:00,2025-11-20 17:00,2025-11-20 17:00,2025-12-04 08:00,2025-12-04 08:00,0,24,100
FAB120305A-07,DOOR INSTALL - FAB120305A (OHC),Not Started,Elevator Hall 3 - 2F -SUW-FAB120305,,,,,,,,,,2025-12-09 08:00,2025-12-10 17:00,,,2025-12-09 08:00,2025-12-10 17:00,2025-12-04 08:00,2025-12-05 17:00,16,16,0
ZX-6460,Complete Drywall & Inspect - Clean Elevator 2 - 2F-1FAB-EL2 - MKM,Complete,Clean Elevator 2 - 2F -SUW-FAB1-EL02,,,,,,,,,,2025-06-10 08:00,2025-06-23 17:00,2025-08-05 08:00,2025-10-27 08:00,2025-11-20 17:00,2025-11-20 17:00,2025-12-05 17:00,2025-12-05 17:00,0,80,100
ZX-6470,Complete Fire Caulk & Inspect - Clean Elevator #02 - 2F-1FAB-EL2 - MKM,Complete,Clean Elevator 2 - 2F -SUW-FAB1-EL02,,,,,,,,,,2025-09-15 08:00,2025-09-15 17:00,2025-09-15 08:00,2025-09-15 17:00,2025-11-20 17:00,2025-11-20 17:00,2025-12-05 17:00,2025-12-05 17:00,0,8,100
ZX-6480,Complete Control Joint & Inspect - Clean Elevator #02 - 2F-1FAB-EL2 - MKM,Complete,Clean Elevator 2 - 2F -SUW-FAB1-EL02,,,,,,,,,,2025-09-15 08:00,2025-09-15 17:00,2025-09-15 08:00,2025-09-15 17:00,2025-11-20 17:00,2025-11-20 17:00,2025-12-05 17:00,2025-12-05 17:00,0,8,100
ZX-19070,IMPACT - SECAI NEEDS TO BUILD SCAFFOLD - Clean Elevator #02 - 2F-1FAB-EL2,Complete,Clean Elevator 2 - 2F -SUW-FAB1-EL02,,,,,,,,,,2025-06-10 08:00,2025-07-14 17:00,2025-06-10 08:00,2025-08-01 17:00,2025-11-20 17:00,2025-11-20 17:00,2025-12-05 17:00,2025-12-05 17:00,0,200,100
ZX-6250,Complete Drywall & Inspect - Vestibule 1 - 2F-FAB120109,Complete,Vestibule 1 - 2F -SUW-FAB120109,,,,,,,,,,2024-11-01 08:00,2024-11-14 17:00,2024-11-01 08:00,2024-11-12 16:00,2025-11-20 17:00,2025-11-20 17:00,2025-12-05 17:00,2025-12-05 17:00,0,80,100
ZX-6260,Complete Fire Caulk & Inspect - Vestibule 1 - 2F-FAB120109 - MKM,Complete,Vestibule 1 - 2F -SUW-FAB120109,,,,,,,,,,2025-07-18 08:00,2025-07-21 17:00,2025-07-18 08:00,2025-09-30 17:00,2025-11-20 17:00,2025-11-20 17:00,2025-12-05 17:00,2025-12-05 17:00,0,16,100
ZX-6270,Complete Control Joint & Inspect - Vestibule #01 - 2F-FAB120109 - MKM,Complete,Vestibule 1 - 2F -SUW-FAB120109,,,,,,,,,,2025-10-10 08:00,2025-10-10 17:00,2025-10-10 08:00,2025-10-10 17:00,2025-11-20 17:00,2025-11-20 17:00,2025-12-05 17:00,2025-12-05 17:00,0,8,100
FAB120109A-01,IMPACT - INSTALL/REWORK DRYWALL FRAMING AROUND DOORS - FAB120109A,Complete,Vestibule 1 - 2F -SUW-FAB120109,,,,,,,,,,2025-03-24 08:00,2025-04-01 17:00,2025-03-24 08:00,2025-03-31 17:00,2025-11-20 17:00,2025-11-20 17:00,2025-11-25 10:00,2025-11-25 10:00,0,56,100
FAB120109A-02,SECAI ROUGH IN/SECURITY  - FAB120109A,Complete,Vestibule 1 - 2F -SUW-FAB120109,,,,,,,,,,2025-04-01 08:00,2025-04-01 17:00,2025-03-31 08:00,2025-03-31 17:00,2025-11-20 17:00,2025-11-20 17:00,2025-11-25 10:00,2025-11-25 10:00,0,8,100
FAB120109A-03,INSTALL DOOR FRAMES  - FAB120109A,Complete,Vestibule 1 - 2F -SUW-FAB120109,,,,,,,,,,2025-07-23 13:00,2025-07-24 12:00,2025-03-31 00:00,2025-03-31 08:00,2025-11-20 17:00,2025-11-20 17:00,2025-11-25 10:00,2025-11-25 10:00,0,8,100
FAB120109A-04,INSTALL DOOR & HARDWARE - FAB120109A,Active,Vestibule 1 - 2F -SUW-FAB120109,,,,,,,,,,2025-09-12 08:00,2025-09-18 17:00,2025-09-12 08:00,,2025-11-21 08:00,2025-11-27 17:00,2025-11-25 10:00,2025-12-02 10:00,40,40,0
FAB120109A-05,PAINT & PROTECT DOORS & FRAMES - FAB120109A,Not Started,Vestibule 1 - 2F -SUW-FAB120109,,,,,,,,,,2026-02-16 08:00,2026-02-19 15:00,,,2026-02-16 08:00,2026-02-19 15:00,2025-12-02 10:00,2025-12-05 17:00,30,30,0
FAB120109B-01,IMPACT - INSTALL/REWORK DRYWALL FRAMING AROUND DOORS - FAB120109B,Complete,Vestibule 1 - 2F -SUW-FAB120109,,,,,,,,,,2025-02-12 08:00,2025-02-20 17:00,2025-02-12 08:00,2025-02-20 17:00,2025-11-20 17:00,2025-11-20 17:00,2025-11-25 10:00,2025-11-25 10:00,0,56,100
FAB120109B-02,SECAI ROUGH IN/SECURITY  - FAB120109B,Complete,Vestibule 1 - 2F -SUW-FAB120109,,,,,,,,,,2025-02-20 08:00,2025-02-20 17:00,2025-02-20 08:00,2025-02-20 17:00,2025-11-20 17:00,2025-11-20 17:00,2025-11-25 10:00,2025-11-25 10:00,0,8,100
FAB120109B-03,INSTALL DOOR FRAMES  - FAB120109B,Complete,Vestibule 1 - 2F -SUW-FAB120109,,,,,,,,,,2025-07-23 13:00,2025-07-24 12:00,2025-02-20 00:00,2025-02-20 16:00,2025-11-20 17:00,2025-11-20 17:00,2025-11-25 10:00,2025-11-25 10:00,0,8,100
FAB120109B-04,INSTALL DOOR & HARDWARE - FAB120109B,Active,Vestibule 1 - 2F -SUW-FAB120109,,,,,,,,,,2025-11-12 08:00,2025-11-18 17:00,2025-11-12 08:00,,2025-11-21 08:00,2025-11-27 17:00,2025-11-25 10:00,2025-12-02 10:00,40,40,0
FAB120109B-05,PAINT & PROTECT DOORS & FRAMES - FAB120109B,Not Started,Vestibule 1 - 2F -SUW-FAB120109,,,,,,,,,,2026-02-16 08:00,2026-02-19 15:00,,,2026-02-16 08:00,2026-02-19 15:00,2025-12-02 10:00,2025-12-05 17:00,30,30,0
FAB120109C-01,IMPACT - INSTALL/REWORK DRYWALL FRAMING AROUND DOORS - FAB120109C,Complete,Vestibule 1 - 2F -SUW-FAB120109,,,,,,,,,,2025-05-01 08:00,2025-05-09 17:00,2025-05-01 08:00,2025-05-05 17:00,2025-11-20 17:00,2025-11-20 17:00,2025-11-25 10:00,2025-11-25 10:00,0,56,100
FAB120109C-02,SECAI ROUGH IN/SECURITY - FAB120109C,Complete,Vestibule 1 - 2F -SUW-FAB120109,,,,,,,,,,2025-05-05 08:00,2025-05-05 17:00,2025-05-05 08:00,2025-05-05 17:00,2025-11-20 17:00,2025-11-20 17:00,2025-11-25 10:00,2025-11-25 10:00,0,8,100
FAB120109C-03,INSTALL DOOR FRAMES - FAB120109C,Complete,Vestibule 1 - 2F -SUW-FAB120109,,,,,,,,,,2025-07-23 13:00,2025-07-24 12:00,2025-05-04 00:00,2025-05-05 16:00,2025-11-20 17:00,2025-11-20 17:00,2025-11-25 10:00,2025-11-25 10:00,0,8,100
FAB120109C-04,INSTALL DOOR & HARDWARE - FAB120109C,Active,Vestibule 1 - 2F -SUW-FAB120109,,,,,,,,,,2025-08-26 08:00,2025-09-01 17:00,2025-08-26 08:00,,2025-11-21 08:00,2025-11-27 17:00,2025-11-25 10:00,2025-12-02 10:00,40,40,0
FAB120109C-05,PAINT & PROTECT DOORS & FRAMES - FAB120109C,Not Started,Vestibule 1 - 2F -SUW-FAB120109,,,,,,,,,,2026-02-16 08:00,2026-02-19 15:00,,,2026-02-16 08:00,2026-02-19 15:00,2025-12-02 10:00,2025-12-05 17:00,30,30,0
ZX-6400,Complete Drywall & Inspect - Duct Shaft - 2F-SUW-FAB120112,Complete,Duct Shaft - 2F -SUW-FAB120112,,,,,,,,,,2025-10-01 08:00,2025-10-07 17:00,2025-10-01 08:00,2025-10-06 17:00,2025-11-20 17:00,2025-11-20 17:00,2025-11-14 08:00,2025-11-14 08:00,0,40,100
ZX-6410,Complete Fire Caulk & Inspect - Duct Shaft - 2F-SUW-FAB120112,Complete,Duct Shaft - 2F -SUW-FAB120112,,,,,,,,,,2025-09-12 08:00,2025-09-15 17:00,2025-09-12 08:00,2025-09-15 17:00,2025-11-20 17:00,2025-11-20 17:00,2025-12-05 17:00,2025-12-05 17:00,0,16,100
FAB120112A-01,IMPACT - INSTALL/REWORK DRYWALL FRAMING AROUND DOORS - FAB120112A,Complete,Duct Shaft - 2F -SUW-FAB120112,,,,,,,,,,2025-07-21 08:00,2025-07-29 17:00,2025-07-21 08:00,2025-07-29 17:00,2025-11-20 17:00,2025-11-20 17:00,2025-11-25 10:00,2025-11-25 10:00,0,56,100
FAB120112A-02,SECAI ROUGH IN/SECURITY - FAB120112A,Complete,Duct Shaft - 2F -SUW-FAB120112,,,,,,,,,,2025-07-29 08:00,2025-07-29 17:00,2025-07-29 08:00,2025-07-29 17:00,2025-11-20 17:00,2025-11-20 17:00,2025-11-25 10:00,2025-11-25 10:00,0,8,100
FAB120112A-03,INSTALL DOOR FRAMES - FAB120112A,Complete,Duct Shaft - 2F -SUW-FAB120112,,,,,,,,,,2025-07-29 08:00,2025-07-29 17:00,2025-07-29 08:00,2025-07-29 17:00,2025-11-20 17:00,2025-11-20 17:00,2025-11-25 10:00,2025-11-25 10:00,0,8,100
FAB120112A-04,INSTALL DOOR & HARDWARE - FAB120112A,Active,Duct Shaft - 2F -SUW-FAB120112,,,,,,,,,,2025-11-07 08:00,2025-11-13 17:00,2025-11-07 08:00,,2025-11-21 08:00,2025-11-27 17:00,2025-11-25 10:00,2025-12-02 10:00,40,40,0
FAB120112A-05,PAINT & PROTECT DOORS & FRAMES -  FAB120112A,Not Started,Duct Shaft - 2F -SUW-FAB120112,,,,,,,,,,2026-02-16 08:00,2026-02-19 15:00,,,2026-02-16 08:00,2026-02-19 15:00,2025-12-02 10:00,2025-12-05 17:00,30,30,0
ZX-6520,Complete Drywall & Inspect - Elevator #1B - 2F-1FAB-EL1B - MK MARLOW,Complete,Elevator 1B - 2F -SUW-FAB1-EL01B,,,,,,,,,,2025-05-13 08:00,2025-05-26 17:00,2025-05-13 08:00,2025-07-18 10:00,2025-11-20 17:00,2025-11-20 17:00,2025-12-05 17:00,2025-12-05 17:00,0,80,100
ZX-6530,Complete Fire Caulk & Inspect - Elevator #01B - 2F-1FAB-EL1B - MK MARLOW,Complete,Elevator 1B - 2F -SUW-FAB1-EL01B,,,,,,,,,,2025-07-30 08:00,2025-07-31 17:00,2025-07-30 08:00,2025-08-01 17:00,2025-11-20 17:00,2025-11-20 17:00,2025-12-05 17:00,2025-12-05 17:00,0,16,100
ZX-6540,Complete Control Joint & Inspect - Elevator #1B - 2F-1FAB-EL1B - MK MARLOW,Complete,Elevator 1B - 2F -SUW-FAB1-EL01B,,,,,,,,,,2025-08-04 08:00,2025-08-05 17:00,2025-07-18 16:06,2025-07-21 17:00,2025-11-20 17:00,2025-11-20 17:00,2025-12-05 17:00,2025-12-05 17:00,0,16,100
ZX-18270,IMPACT - RFI DOOR FRONT DESIGN - Elevator #1B - 2F-1FAB-EL1B,Complete,Elevator 1B - 2F -SUW-FAB1-EL01B,,,,,,,,,,2025-05-13 08:00,2025-05-26 17:00,2025-05-13 08:00,2025-06-10 16:00,2025-11-20 17:00,2025-11-20 17:00,2025-12-05 17:00,2025-12-05 17:00,0,80,100
ZX-6430,Complete Drywall & Inspect - Airlock 5 - 2F-FAB120503,Complete,Air lock 5 - 2F -SUW-FAB120503,,,,,,,,,,2025-06-27 08:00,2025-07-10 17:00,2024-12-09 08:00,2024-12-18 08:00,2025-11-20 17:00,2025-11-20 17:00,2025-11-17 10:00,2025-11-17 10:00,0,80,100
ZX-6440,SECAI TOOK OVER DUE TO DESIGN - Complete Fire Caulk & Inspect - Airlock 5 - 2F-FAB120503 - MKM,Complete,Air lock 5 - 2F -SUW-FAB120503,,,,,,,,,,2025-07-18 08:00,2025-07-21 17:00,2025-07-18 08:00,2025-08-18 17:00,2025-11-20 17:00,2025-11-20 17:00,2025-12-05 17:00,2025-12-05 17:00,0,16,100
ZX-6450,Complete Control Joint & Inspect - Airlock #05 - 2F-FAB120503,Complete,Air lock 5 - 2F -SUW-FAB120503,,,,,,,,,,2025-07-14 08:00,2025-07-15 17:00,2024-12-18 08:00,2024-12-20 16:00,2025-11-20 17:00,2025-11-20 17:00,2025-11-17 10:00,2025-11-17 10:00,0,16,100
FAB120503A-01,IMPACT - INSTALL/REWORK DRYWALL FRAMING AROUND DOORS - FAB120503A,Complete,Air lock 5 - 2F -SUW-FAB120503,,,,,,,,,,2025-02-13 08:00,2025-02-21 17:00,2025-02-13 08:00,2025-02-21 17:00,2025-11-20 17:00,2025-11-20 17:00,2025-11-25 10:00,2025-11-25 10:00,0,56,100
FAB120503A-02,SECAI ROUGH IN/SECURITY - FAB120503A,Complete,Air lock 5 - 2F -SUW-FAB120503,,,,,,,,,,2025-02-21 08:00,2025-02-21 17:00,2025-02-21 08:00,2025-02-21 17:00,2025-11-20 17:00,2025-11-20 17:00,2025-11-25 10:00,2025-11-25 10:00,0,8,100
FAB120503A-03,INSTALL DOOR FRAMES - FAB120503A,Complete,Air lock 5 - 2F -SUW-FAB120503,,,,,,,,,,2025-07-10 13:00,2025-07-11 12:00,2025-02-21 00:00,2025-02-21 16:00,2025-11-20 17:00,2025-11-20 17:00,2025-11-25 10:00,2025-11-25 10:00,0,8,100
FAB120503A-04,INSTALL DOOR & HARDWARE - FAB120503A,Active,Air lock 5 - 2F -SUW-FAB120503,,,,,,,,,,2025-10-31 08:00,2025-11-06 17:00,2025-10-31 08:00,,2025-11-21 08:00,2025-11-27 17:00,2025-11-25 10:00,2025-12-02 10:00,40,40,0
FAB120503A-05,PAINT & PROTECT DOORS & FRAMES - FAB120503A,Not Started,Air lock 5 - 2F -SUW-FAB120503,,,,,,,,,,2026-02-16 08:00,2026-02-19 15:00,,,2026-02-16 08:00,2026-02-19 15:00,2025-12-02 10:00,2025-12-05 17:00,30,30,0
FAB120503B-01,IMPACT - INSTALL/REWORK DRYWALL FRAMING AROUND DOORS - FAB120503B HANDED OVER TO SECAI ON 08/29,Complete,Air lock 5 - 2F -SUW-FAB120503,,,,,,,,,,2025-08-29 08:00,2025-09-01 17:00,2025-08-29 08:00,2025-08-29 17:00,2025-11-20 17:00,2025-11-20 17:00,2025-11-17 10:00,2025-11-17 10:00,0,16,100
FAB120503B-04,INSTALL DOOR & HARDWARE - FAB120503B,Not Started,Air lock 5 - 2F -SUW-FAB120503,,,,,,,,,,2025-12-01 08:00,2025-12-05 17:00,,,2025-12-01 08:00,2025-12-05 17:00,2025-11-25 10:00,2025-12-02 10:00,40,40,0
FAB120503B-05,PAINT & PROTECT DOORS & FRAMES - FAB120503B,Not Started,Air lock 5 - 2F -SUW-FAB120503,,,,,,,,,,2026-02-16 08:00,2026-02-19 15:00,,,2026-02-16 08:00,2026-02-19 15:00,2025-12-02 10:00,2025-12-05 17:00,30,30,0
FAB120503D-01,IMPACT - INSTALL/REWORK DRYWALL FRAMING AROUND DOORS - FAB120503D HANDED OVER TO SECAI ON 08/29,Complete,Air lock 5 - 2F -SUW-FAB120503,,,,,,,,,,2025-08-28 08:00,2025-08-29 17:00,2025-08-29 08:00,2025-08-29 17:00,2025-11-20 17:00,2025-11-20 17:00,2025-11-18 10:00,2025-11-18 10:00,0,16,100
FAB120503D-02,SECAI ROUGH IN/SECURITY - FAB120503D HANDED OVER TO SECAI ON 08/29,Complete,Air lock 5 - 2F -SUW-FAB120503,,,,,,,,,,2025-08-29 08:00,2025-08-29 17:00,2025-08-29 08:00,2025-08-29 17:00,2025-11-20 17:00,2025-11-20 17:00,2025-11-18 10:00,2025-11-18 10:00,0,8,100
FAB120503D-03,INSTALL DOOR FRAME BY SECAI - FAB120503D HANDED OVER ON 08/29,Active,Air lock 5 - 2F -SUW-FAB120503,,,,,,,,,,2025-08-29 08:00,2025-08-29 17:00,2025-08-29 08:00,,2025-11-21 08:00,2025-11-27 17:00,2025-11-18 10:00,2025-11-25 10:00,40,8,100
FAB120503D-04,INSTALL DOOR & HARDWARE - FAB120503D,Not Started,Air lock 5 - 2F -SUW-FAB120503,,,,,,,,,,2025-11-28 08:00,2025-12-04 17:00,,,2025-11-28 08:00,2025-12-04 17:00,2025-11-25 10:00,2025-12-02 10:00,40,40,0
FAB120503D-05,PAINT & PROTECT DOORS & FRAMES - FAB120503D,Not Started,Air lock 5 - 2F -SUW-FAB120503,,,,,,,,,,2026-02-16 08:00,2026-02-19 15:00,,,2026-02-16 08:00,2026-02-19 15:00,2025-12-02 10:00,2025-12-05 17:00,30,30,0
FAB120503E-01,IMPACT - INSTALL/REWORK DRYWALL FRAMING AROUND DOORS - FAB120503E,Complete,Air lock 5 - 2F -SUW-FAB120503,,,,,,,,,,2025-07-24 08:00,2025-08-01 17:00,2025-07-24 08:00,2025-08-01 17:00,2025-11-20 17:00,2025-11-20 17:00,2025-11-25 10:00,2025-11-25 10:00,0,56,100
FAB120503E-04,INSTALL DOOR & HARDWARE - FAB120503E,Active,Air lock 5 - 2F -SUW-FAB120503,,,,,,,,,,2025-10-31 08:00,2025-11-06 17:00,2025-10-31 08:00,,2025-11-21 08:00,2025-11-27 17:00,2025-11-25 10:00,2025-12-02 10:00,40,40,0
FAB120503E-05,PAINT & PROTECT DOORS & FRAMES - FAB120503E,Not Started,Air lock 5 - 2F -SUW-FAB120503,,,,,,,,,,2026-02-16 08:00,2026-02-19 15:00,,,2026-02-16 08:00,2026-02-19 15:00,2025-12-02 10:00,2025-12-05 17:00,30,30,0
FAB120503B-11,IMPACT - INTERNAL - UNALIGNED GOAL POST OPENING,Complete,Air lock 5 - 2F -SUW-FAB120503,,,,,,,,,,2025-08-29 08:00,2025-08-29 08:00,2025-08-29 08:00,2025-08-29 08:00,2025-11-20 17:00,2025-11-20 17:00,2025-11-17 10:00,2025-11-17 10:00,0,0,100
FAB120503D-00,IMPACT - PROCUREMENT - REORDERED DOORS (JAMB DEPTH ISSUE),Complete,Air lock 5 - 2F -SUW-FAB120503,,,,,,,,,,2025-06-09 08:00,2025-08-12 17:00,2025-06-09 08:00,2025-07-14 17:00,2025-11-20 17:00,2025-11-20 17:00,2025-11-18 10:00,2025-11-18 10:00,0,376,100
FAB120503E-00,IMPACT - PROCUREMENT - REORDERED DOORS (JAMB DEPTH ISSUE),Complete,Air lock 5 - 2F -SUW-FAB120503,,,,,,,,,,2025-06-09 08:00,2025-08-12 17:00,2025-06-09 08:00,2025-07-14 17:00,2025-11-20 17:00,2025-11-20 17:00,2025-11-25 10:00,2025-11-25 10:00,0,376,100
ZX-6670,Complete Drywall & Inspect - Elevator Hall #05 - 2F-FAB120505,Complete,Elevator Hall 5 - 2F -SUW-FAB120505,,,,,,,,,,2025-09-05 08:00,2025-09-11 17:00,2025-09-05 08:00,2025-09-11 17:00,2025-11-20 17:00,2025-11-20 17:00,2025-11-24 10:00,2025-11-24 10:00,0,40,100
ZX-6680,Complete Fire Caulk & Inspect - Elevator Hall #05 - 2F-FAB120505,Complete,Elevator Hall 5 - 2F -SUW-FAB120505,,,,,,,,,,2025-10-09 08:00,2025-10-10 17:00,2025-10-09 08:00,2025-10-10 17:00,2025-11-20 17:00,2025-11-20 17:00,2025-12-05 17:00,2025-12-05 17:00,0,16,100
ZX-6690,Complete Control Joint & Inspect - Elevator Hall #05 - 2F-FAB120505,Complete,Elevator Hall 5 - 2F -SUW-FAB120505,,,,,,,,,,2025-10-09 08:00,2025-10-10 17:00,2025-10-09 08:00,2025-10-10 17:00,2025-11-20 17:00,2025-11-20 17:00,2025-11-24 10:00,2025-11-24 10:00,0,16,100
FAB120505A-03,INSTALL DOOR FRAMES - FAB120505A,Not Started,Elevator Hall 5 - 2F -SUW-FAB120505,,,,,,,,,,2025-11-28 08:00,2025-11-28 17:00,,,2025-11-28 08:00,2025-11-28 17:00,2025-11-24 10:00,2025-11-25 10:00,8,8,0
FAB120505A-04,INSTALL DOOR & HARDWARE - FAB120505A,Not Started,Elevator Hall 5 - 2F -SUW-FAB120505,,,,,,,,,,2025-12-01 08:00,2025-12-05 17:00,,,2025-12-01 08:00,2025-12-05 17:00,2025-11-25 10:00,2025-12-02 10:00,40,40,0
FAB120505A-05,PAINT & PROTECT DOORS & FRAMES - FAB120505A,Not Started,Elevator Hall 5 - 2F -SUW-FAB120505,,,,,,,,,,2026-02-16 08:00,2026-02-19 15:00,,,2026-02-16 08:00,2026-02-19 15:00,2025-12-02 10:00,2025-12-05 17:00,30,30,0
FAB120505C-01,IMPACT - INSTALL/REWORK DRYWALL FRAMING AROUND DOORS - FAB120505C,Complete,Elevator Hall 5 - 2F -SUW-FAB120505,,,,,,,,,,2025-02-24 08:00,2025-03-04 17:00,2025-02-24 08:00,2025-03-04 17:00,2025-11-20 17:00,2025-11-20 17:00,2025-11-25 10:00,2025-11-25 10:00,0,56,100
FAB120505C-02,SECAI ROUGH IN/SECURITY - FAB120505C,Complete,Elevator Hall 5 - 2F -SUW-FAB120505,,,,,,,,,,2025-03-04 08:00,2025-03-04 17:00,2025-03-04 08:00,2025-03-04 17:00,2025-11-20 17:00,2025-11-20 17:00,2025-11-25 10:00,2025-11-25 10:00,0,8,100
FAB120505C-03,INSTALL DOOR FRAMES - FAB120505C,Complete,Elevator Hall 5 - 2F -SUW-FAB120505,,,,,,,,,,2025-08-13 13:00,2025-08-14 12:00,2025-03-04 00:00,2025-03-04 16:00,2025-11-20 17:00,2025-11-20 17:00,2025-11-25 10:00,2025-11-25 10:00,0,8,100
FAB120505C-04,INSTALL DOOR & HARDWARE - FAB120505C,Active,Elevator Hall 5 - 2F -SUW-FAB120505,,,,,,,,,,2025-11-05 08:00,2025-11-11 17:00,2025-11-05 08:00,,2025-11-21 08:00,2025-11-27 17:00,2025-11-25 10:00,2025-12-02 10:00,40,40,0
FAB120505C-05,PAINT & PROTECT DOORS & FRAMES - FAB120505C,Not Started,Elevator Hall 5 - 2F -SUW-FAB120505,,,,,,,,,,2026-02-16 08:00,2026-02-19 15:00,,,2026-02-16 08:00,2026-02-19 15:00,2025-12-02 10:00,2025-12-05 17:00,30,30,0
FAB120505A-11,IMPACT - INTERNAL - UNASSEMBLED TRANSOM FRAMES,Not Started,Elevator Hall 5 - 2F -SUW-FAB120505,,,,,,,,,,2025-11-21 08:00,2025-11-24 17:00,,,2025-11-21 08:00,2025-11-24 17:00,2025-11-20 10:00,2025-11-24 10:00,16,16,0
FAB120505B-00,SHOP DRAWINGS (RFI 9565) - PATRIOT - FAB120505B,Complete,Elevator Hall 5 - 2F -SUW-FAB120505,,INTERIOR STAIRS,L2 - SubFab Level,,,,,,,2025-07-03 08:00,2025-07-14 17:00,2025-07-03 07:00,2025-09-11 17:00,2025-11-20 17:00,2025-11-20 17:00,2025-12-04 08:00,2025-12-04 08:00,0,64,100
FAB120505B-01,GOAL POST SHOP DRAWINGS APPROVAL - JACOBS/SECAI - FAB120505B - L.5/32,Complete,Elevator Hall 5 - 2F -SUW-FAB120505,,INTERIOR STAIRS,L2 - SubFab Level,,,,,,,2025-09-29 08:00,2025-10-03 17:00,2025-09-11 00:00,2025-10-10 17:00,2025-11-20 17:00,2025-11-20 17:00,2025-12-04 08:00,2025-12-04 08:00,0,40,100
FAB120505B-02,HEADER/GOAL POST FABRICATION - PATRIOT - FAB120505B - L.5/32,Complete,Elevator Hall 5 - 2F -SUW-FAB120505,,INTERIOR STAIRS,L2 - SubFab Level,,,,,,,2025-10-13 08:00,2025-10-15 17:00,2025-10-13 08:00,2025-10-15 17:00,2025-11-20 17:00,2025-11-20 17:00,2025-12-04 08:00,2025-12-04 08:00,0,24,100
FAB120505B-04,HEADER/GOAL POST INSTALL - PATRIOT - FAB120505B - L.5/32,Complete,Elevator Hall 5 - 2F -SUW-FAB120505,,INTERIOR STAIRS,L2 - SubFab Level,,,,,,,2025-10-16 08:00,2025-10-17 17:00,2025-10-16 08:00,2025-10-17 17:00,2025-11-20 17:00,2025-11-20 17:00,2025-12-04 08:00,2025-12-04 08:00,0,16,100
FAB120505B-07,DOOR INSTALL - FAB120505B (OHC),Not Started,Elevator Hall 5 - 2F -SUW-FAB120505,,,,,,,,,,2025-12-08 08:00,2025-12-09 17:00,,,2025-12-08 08:00,2025-12-09 17:00,2025-12-04 08:00,2025-12-05 17:00,16,16,0
ZX-16720,Complete Drywall & Inspect - Stair #02 SUW- 2F- FAB1-ST02,Complete,Stair 2 - 2F -SUW-FAB1-ST02,,,,,,,,,,2025-05-13 08:00,2025-05-26 17:00,2025-05-13 08:00,2025-08-18 08:00,2025-11-20 17:00,2025-11-20 17:00,2025-11-27 08:00,2025-11-27 08:00,0,80,100
ZX-16730,SECAI TOOK OVER FOR ACCELERATION - Complete Fire Caulk & Inspect - Stair #02 SUW- 2F- FAB1-ST02,Complete,Stair 2 - 2F -SUW-FAB1-ST02,,,,,,,,,,2025-08-18 08:00,2025-08-18 17:00,2025-08-18 08:00,2025-08-18 17:00,2025-11-20 17:00,2025-11-20 17:00,2025-12-05 17:00,2025-12-05 17:00,0,8,100
ZX-16740,Complete Control Joint & Inspect - Stair #02 SUW- 2F- FAB1-ST02,Complete,Stair 2 - 2F -SUW-FAB1-ST02,,,,,,,,,,2025-08-15 08:00,2025-08-18 17:00,2025-08-15 08:00,2025-08-18 17:00,2025-11-20 17:00,2025-11-20 17:00,2025-11-27 08:00,2025-11-27 08:00,0,16,100
ZX-18040,IMPACT - ONGOING WORK INSIDE CHASE - Stair #02 SUW- 2F- FAB1-ST02,Complete,Stair 2 - 2F -SUW-FAB1-ST02,,,,,,,,,,2025-05-13 08:00,2025-05-26 17:00,2025-05-13 08:00,2025-08-08 17:00,2025-11-20 17:00,2025-11-20 17:00,2025-11-27 08:00,2025-11-27 08:00,0,80,100
FAB1-ST02B-01,IMPACT - INSTALL/REWORK DRYWALL FRAMING AROUND DOORS - FAB1-ST02B,Complete,Stair 2 - 2F -SUW-FAB1-ST02,,,,,,,,,,2025-02-10 08:00,2025-02-18 17:00,2025-02-10 08:00,2025-02-18 17:00,2025-11-20 17:00,2025-11-20 17:00,2025-11-27 08:00,2025-11-27 08:00,0,56,100
FAB1-ST02B-02,SECAI ROUGH IN/SECURITY - FAB1-ST02B,Complete,Stair 2 - 2F -SUW-FAB1-ST02,,,,,,,,,,2025-02-18 08:00,2025-02-18 17:00,2025-02-18 08:00,2025-02-18 17:00,2025-11-20 17:00,2025-11-20 17:00,2025-11-27 08:00,2025-11-27 08:00,0,8,100
FAB1-ST02B-03,INSTALL DOOR FRAMES - FAB1-ST02B,Complete,Stair 2 - 2F -SUW-FAB1-ST02,,,,,,,,,,2025-02-18 08:00,2025-02-18 17:00,2025-02-18 08:00,2025-02-18 17:00,2025-11-20 17:00,2025-11-20 17:00,2025-11-27 08:00,2025-11-27 08:00,0,8,100
FAB1-ST02B-04,INSTALL DOOR & HARDWARE - FAB1-ST02B,Active,Stair 2 - 2F -SUW-FAB1-ST02,,,,,,,,,,2025-11-05 08:00,2025-11-11 17:00,2025-11-05 08:00,,2025-11-21 08:00,2025-11-27 17:00,2025-11-27 08:00,2025-12-03 17:00,40,40,0
FAB1-ST02B-05,PAINT & PROTECT DOORS & FRAMES - FAB1-ST02B,Not Started,Stair 2 - 2F -SUW-FAB1-ST02,,,,,,,,,,2026-02-16 08:00,2026-02-17 17:00,,,2026-02-16 08:00,2026-02-17 17:00,2025-12-04 08:00,2025-12-05 17:00,16,16,0
ZX-16790,Complete Drywall & Inspect - Stair #03 SUW- 2F- FAB1-ST03,Complete,Stair 3 - 2F -SUW-FAB1-ST03,,,,,,,,,,2025-05-13 08:00,2025-05-19 17:00,2025-05-13 08:00,2025-10-13 17:00,2025-11-20 17:00,2025-11-20 17:00,2025-11-24 08:00,2025-11-24 08:00,0,40,100
ZX-16800,Complete Fire Caulk & Inspect - Stair #03 SUW- 2F- FAB1-ST03,Complete,Stair 3 - 2F -SUW-FAB1-ST03,,,,,,,,,,2025-09-26 08:00,2025-09-29 17:00,2025-09-26 08:00,2025-09-29 17:00,2025-11-20 17:00,2025-11-20 17:00,2025-12-05 17:00,2025-12-05 17:00,0,16,100
ZX-16810,Complete Control Joint & Inspect - Stair #03 SUW- 2F- FAB1-ST03,Complete,Stair 3 - 2F -SUW-FAB1-ST03,,,,,,,,,,2025-09-26 08:00,2025-09-29 17:00,2025-09-26 08:00,2025-09-29 17:00,2025-11-20 17:00,2025-11-20 17:00,2025-12-05 17:00,2025-12-05 17:00,0,16,100
ZX-18050,IMPACT - ONGOING WORK INSIDE CHASE - Stair #03 SUW- 2F- FAB1-ST03,Complete,Stair 3 - 2F -SUW-FAB1-ST03,,,,,,,,,,2025-05-13 08:00,2025-05-19 17:00,2025-05-13 08:00,2025-10-10 17:00,2025-11-20 17:00,2025-11-20 17:00,2025-11-24 08:00,2025-11-24 08:00,0,40,100
ZX-18400,IMPACT - SECAI STOP WORK FOR EGRESS - Stair #03 SUW- 2F- FAB1-ST03,Complete,Stair 3 - 2F -SUW-FAB1-ST03,,,,,,,,,,2025-06-10 08:00,2025-06-30 17:00,2025-06-10 08:00,2025-09-26 17:00,2025-11-20 17:00,2025-11-20 17:00,2025-11-24 08:00,2025-11-24 08:00,0,120,100
ZX-18520,IMPACT - SECAI ISSUED STOP WORK NOTICE,Complete,Stair 3 - 2F -SUW-FAB1-ST03,,,,,,,,,,2025-06-12 08:00,2025-06-18 17:00,2025-06-12 08:00,2025-09-26 17:00,2025-11-20 17:00,2025-11-20 17:00,2025-11-24 08:00,2025-11-24 08:00,0,40,100
FAB1-ST03B-01,IMPACT - INSTALL/REWORK DRYWALL FRAMING AROUND DOORS - FAB1-ST03B,Complete,Stair 3 - 2F -SUW-FAB1-ST03,,,,,,,,,,2025-02-10 08:00,2025-02-18 17:00,2025-02-10 08:00,2025-02-18 17:00,2025-11-20 17:00,2025-11-20 17:00,2025-11-24 08:00,2025-11-24 08:00,0,56,100
FAB1-ST03B-02,SECAI ROUGH IN/SECURITY - FAB1-ST03B,Complete,Stair 3 - 2F -SUW-FAB1-ST03,,,,,,,,,,2025-02-18 08:00,2025-02-18 17:00,2025-02-18 08:00,2025-02-18 17:00,2025-11-20 17:00,2025-11-20 17:00,2025-11-24 08:00,2025-11-24 08:00,0,8,100
FAB1-ST03B-03,INSTALL DOOR FRAMES - FAB1-ST03B,Complete,Stair 3 - 2F -SUW-FAB1-ST03,,,,,,,,,,2025-02-18 08:00,2025-02-18 17:00,2025-02-18 08:00,2025-02-18 17:00,2025-11-20 17:00,2025-11-20 17:00,2025-11-24 08:00,2025-11-24 08:00,0,8,100
FAB1-ST03B-04,INSTALL DOOR & HARDWARE - FAB1-ST03B,Not Started,Stair 3 - 2F -SUW-FAB1-ST03,,,,,,,,,,2025-11-28 08:00,2025-12-04 17:00,,,2025-11-28 08:00,2025-12-04 17:00,2025-11-24 08:00,2025-11-28 17:00,40,40,0
FAB1-ST03B-05,PAINT & PROTECT DOORS & FRAMES - FAB1-ST03B,Not Started,Stair 3 - 2F -SUW-FAB1-ST03,,,,,,,,,,2026-02-16 08:00,2026-02-20 17:00,,,2026-02-16 08:00,2026-02-20 17:00,2025-12-01 08:00,2025-12-05 17:00,40,40,0
ZX-16940,Complete Drywall & Inspect - Stair #20 SUE- 2F- FAB1-ST20,Complete,Stair #20 - 2F -SUE-FAB1-ST20,,,,,,,,,,2025-05-13 08:00,2025-05-26 17:00,2025-05-13 08:00,2025-05-30 08:00,2025-11-20 17:00,2025-11-20 17:00,2025-12-05 17:00,2025-12-05 17:00,0,80,100
ZX-16950,Complete Fire Caulk & Inspect - Stair #20 SUE- 2F- FAB1-ST20,Complete,Stair #20 - 2F -SUE-FAB1-ST20,,,,,,,,,,2025-10-06 08:00,2025-10-07 17:00,2025-10-06 08:00,2025-10-07 17:00,2025-11-20 17:00,2025-11-20 17:00,2025-12-05 17:00,2025-12-05 17:00,0,16,100
ZX-16960,Complete Control Joint & Inspect - Stair #20 SUE- 2F- FAB1-ST20,Complete,Stair #20 - 2F -SUE-FAB1-ST20,,,,,,,,,,2025-05-29 08:00,2025-05-30 17:00,2025-05-29 08:00,2025-05-30 17:00,2025-11-20 17:00,2025-11-20 17:00,2025-12-05 17:00,2025-12-05 17:00,0,16,100
ZX-18060,IMPACT - ONGOING WORK INSIDE CHASE - Stair #20 SUE- 2F- FAB1-ST20,Complete,Stair #20 - 2F -SUE-FAB1-ST20,,,,,,,,,,2025-05-13 08:00,2025-05-26 17:00,2025-05-13 08:00,2025-09-04 17:00,2025-11-20 17:00,2025-11-20 17:00,2025-12-05 17:00,2025-12-05 17:00,0,80,100
ZX-18410,IMPACT - SECAI STOP WORK FOR EGRESS - Stair #20 SUE- 2F- FAB1-ST20,Complete,Stair #20 - 2F -SUE-FAB1-ST20,,,,,,,,,,2025-06-10 08:00,2025-07-07 17:00,2025-06-10 08:00,2025-09-04 17:00,2025-11-20 17:00,2025-11-20 17:00,2025-12-05 17:00,2025-12-05 17:00,0,160,100
FAB1-ST20B-01,IMPACT - INSTALL/REWORK DRYWALL FRAMING AROUND DOORS - FAB1-ST20B,Complete,Stair #20 - 2F -SUE-FAB1-ST20,,,,,,,,,,2025-10-10 08:00,2025-10-13 17:00,2025-10-10 08:00,2025-10-13 17:00,2025-11-20 17:00,2025-11-20 17:00,2025-11-24 08:00,2025-11-24 08:00,0,16,100
FAB1-ST20B-02,SECAI ROUGH IN/SECURITY - FAB1-ST20B,Complete,Stair #20 - 2F -SUE-FAB1-ST20,,,,,,,,,,2025-10-13 08:00,2025-10-13 17:00,2025-10-13 08:00,2025-10-13 17:00,2025-11-20 17:00,2025-11-20 17:00,2025-11-24 08:00,2025-11-24 08:00,0,8,100
FAB1-ST20B-03,INSTALL DOOR FRAMES - FAB1-ST20B,Complete,Stair #20 - 2F -SUE-FAB1-ST20,,,,,,,,,,2025-10-13 08:00,2025-10-13 17:00,2025-10-13 08:00,2025-10-13 17:00,2025-11-20 17:00,2025-11-20 17:00,2025-11-24 08:00,2025-11-24 08:00,0,8,100
FAB1-ST20B-04,INSTALL DOOR & HARDWARE - FAB1-ST20B,Active,Stair #20 - 2F -SUE-FAB1-ST20,,,,,,,,,,2025-11-07 08:00,2025-11-13 17:00,2025-11-07 08:00,,2025-11-21 08:00,2025-11-27 17:00,2025-11-24 08:00,2025-11-28 17:00,40,40,0
FAB1-ST20B-05,PAINT & PROTECT DOORS & FRAMES - FAB1-ST20B,Not Started,Stair #20 - 2F -SUE-FAB1-ST20,,,,,,,,,,2026-02-16 08:00,2026-02-20 17:00,,,2026-02-16 08:00,2026-02-20 17:00,2025-12-01 08:00,2025-12-05 17:00,40,40,0
ZX-17080,Complete Drywall & Inspect - Stair #21 SUE- 2F- FAB1-ST20,Complete,Stair #21 - 2F -SUE- FAB1-ST21,,,,,,,,,,2025-05-13 08:00,2025-05-26 17:00,2025-05-13 08:00,2025-08-18 08:00,2025-11-20 17:00,2025-11-20 17:00,2025-12-05 17:00,2025-12-05 17:00,0,80,100
ZX-17090,SECAI TOOK OVER FOR ACCELERATION - Complete Fire Caulk & Inspect - Stair #21 SUE- 2F- FAB1-ST20,Complete,Stair #21 - 2F -SUE- FAB1-ST21,,,,,,,,,,2025-08-18 08:00,2025-08-18 17:00,2025-08-18 08:00,2025-08-18 17:00,2025-11-20 17:00,2025-11-20 17:00,2025-12-05 17:00,2025-12-05 17:00,0,8,100
ZX-17100,Complete Control Joint & Inspect - Stair #21 SUE- 2F- FAB1-ST20,Complete,Stair #21 - 2F -SUE- FAB1-ST21,,,,,,,,,,2025-08-15 08:00,2025-08-18 17:00,2025-08-15 08:00,2025-08-18 17:00,2025-11-20 17:00,2025-11-20 17:00,2025-12-05 17:00,2025-12-05 17:00,0,16,100
ZX-18070,IMPACT - ONGOING WORK INSIDE CHASE - Stair #21 SUE- 2F- FAB1-ST20,Complete,Stair #21 - 2F -SUE- FAB1-ST21,,,,,,,,,,2025-05-13 08:00,2025-05-26 17:00,2025-05-13 08:00,2025-08-08 17:00,2025-11-20 17:00,2025-11-20 17:00,2025-12-05 17:00,2025-12-05 17:00,0,80,100
FAB1-ST21B-01,INSTALL DOOR FRAMES - FAB1-ST21B,Complete,Stair #21 - 2F -SUE- FAB1-ST21,,,,,,,,,,2025-06-27 08:00,2025-06-27 17:00,2025-06-30 08:00,2025-06-30 16:00,2025-11-20 17:00,2025-11-20 17:00,2025-11-24 08:00,2025-11-24 08:00,0,8,100
FAB1-ST21B-04,INSTALL DOOR & HARDWARE - FAB1-ST21B,Active,Stair #21 - 2F -SUE- FAB1-ST21,,,,,,,,,,2025-11-14 08:00,2025-11-20 17:00,2025-11-14 08:00,,2025-11-21 08:00,2025-11-27 17:00,2025-11-24 08:00,2025-11-28 17:00,40,40,0
FAB1-ST21B-05,PAINT & PROTECT DOORS & FRAMES - FAB1-ST21B,Not Started,Stair #21 - 2F -SUE- FAB1-ST21,,,,,,,,,,2026-02-16 08:00,2026-02-20 17:00,,,2026-02-16 08:00,2026-02-20 17:00,2025-12-01 08:00,2025-12-05 17:00,40,40,0
ZX-17110,Complete Drywall & Inspect - Stair #04 SUW- 2F- FAB1-ST04 - MK MARLOW,Complete,Stair #4 SUW- 2F -SUWFAB1-ST04,,,,,,,,,,2025-06-10 08:00,2025-06-18 17:00,2025-06-10 08:00,2025-09-05 17:00,2025-11-20 17:00,2025-11-20 17:00,2025-11-24 08:00,2025-11-24 08:00,0,56,100
ZX-17120,Complete Fire Caulk & Inspect - Stair #04 SUW- 2F- FAB1-ST04 - MK MARLOW,Complete,Stair #4 SUW- 2F -SUWFAB1-ST04,,,,,,,,,,2025-09-29 08:00,2025-09-29 17:00,2025-09-29 08:00,2025-09-29 08:00,2025-11-20 17:00,2025-11-20 17:00,2025-12-05 17:00,2025-12-05 17:00,0,8,100
ZX-17130,Complete Control Joint & Inspect - Stair #04 SUW- 2F- FAB1-ST04 - MK MARLOW,Complete,Stair #4 SUW- 2F -SUWFAB1-ST04,,,,,,,,,,2025-09-04 08:00,2025-09-05 17:00,2025-09-04 08:00,2025-09-05 17:00,2025-11-20 17:00,2025-11-20 17:00,2025-11-24 08:00,2025-11-24 08:00,0,16,100
FAB1-ST04B-01,IMPACT - INSTALL/REWORK DRYWALL FRAMING AROUND DOORS - FAB1-ST04B,Complete,Stair #4 SUW- 2F -SUWFAB1-ST04,,,,,,,,,,2025-08-25 08:00,2025-08-26 17:00,2025-08-25 08:00,2025-08-26 17:00,2025-11-20 17:00,2025-11-20 17:00,2025-11-24 08:00,2025-11-24 08:00,0,16,100
FAB1-ST04B-02,SECAI ROUGH IN/SECURITY - FAB1-ST04B,Complete,Stair #4 SUW- 2F -SUWFAB1-ST04,,,,,,,,,,2025-08-26 08:00,2025-08-26 17:00,2025-08-26 08:00,2025-08-26 17:00,2025-11-20 17:00,2025-11-20 17:00,2025-11-24 08:00,2025-11-24 08:00,0,8,100
FAB1-ST04B-03,INSTALL DOOR FRAMES - FAB1-ST04B,Complete,Stair #4 SUW- 2F -SUWFAB1-ST04,,,,,,,,,,2025-08-26 08:00,2025-08-26 17:00,2025-08-26 08:00,2025-08-26 17:00,2025-11-20 17:00,2025-11-20 17:00,2025-11-24 08:00,2025-11-24 08:00,0,8,100
FAB1-ST04B-04,INSTALL DOOR & HARDWARE - FAB1-ST04B,Active,Stair #4 SUW- 2F -SUWFAB1-ST04,,,,,,,,,,2025-11-06 08:00,2025-11-12 17:00,2025-11-06 08:00,,2025-11-21 08:00,2025-11-27 17:00,2025-11-24 08:00,2025-11-28 17:00,40,40,0
FAB1-ST04B-05,PAINT & PROTECT DOORS & FRAMES - FAB1-ST04B,Not Started,Stair #4 SUW- 2F -SUWFAB1-ST04,,,,,,,,,,2026-02-16 08:00,2026-02-20 17:00,,,2026-02-16 08:00,2026-02-20 17:00,2025-12-01 08:00,2025-12-05 17:00,40,40,0
ZX-17250,SECAI TURNOVER FOR ACELERATION - Drywall & Inspect - Stair #19 SUE- 2F- FAB1-ST19 BAKER/DESCOPE,Complete,Stair #19 - 2F -SUE-FAB1-ST19,,,,,,,,,,2025-07-17 08:00,2025-07-30 17:00,2025-06-06 08:00,2025-06-06 16:00,2025-11-20 17:00,2025-11-20 17:00,2025-11-25 08:00,2025-11-25 08:00,0,80,100
ZX-17260,SECAI TURNOVER FOR ACELERATION - Fire Caulk & Inspect - Stair #19 SUE- 2F- FAB1-ST19 BAKER/DESCOPE,Complete,Stair #19 - 2F -SUE-FAB1-ST19,,,,,,,,,,2025-08-04 08:00,2025-08-05 17:00,2025-06-06 08:00,2025-06-06 16:00,2025-11-20 17:00,2025-11-20 17:00,2025-12-05 17:00,2025-12-05 17:00,0,16,100
ZX-17270,SECAI TURNOVER FOR ACELERATION - Control Joint & Inspect - Stair #19 SUE- 2F- FAB1-ST19 BAKER/DESCOPE,Complete,Stair #19 - 2F -SUE-FAB1-ST19,,,,,,,,,,2025-07-31 08:00,2025-08-01 17:00,2025-06-06 08:00,2025-06-06 16:00,2025-11-20 17:00,2025-11-20 17:00,2025-11-25 08:00,2025-11-25 08:00,0,16,100
FAB1-ST19B-04,INSTALL DOOR & HARDWARE - FAB1-ST19B,Active,Stair #19 - 2F -SUE-FAB1-ST19,,,,,,,,,,2025-11-14 08:00,2025-11-20 17:00,2025-11-14 08:00,,2025-11-21 08:00,2025-11-27 17:00,2025-11-25 08:00,2025-12-01 17:00,40,40,0
FAB1-ST19B-05,PAINT & PROTECT DOORS & FRAMES - FAB1-ST19B,Not Started,Stair #19 - 2F -SUE-FAB1-ST19,,,,,,,,,,2026-02-16 08:00,2026-02-19 17:00,,,2026-02-16 08:00,2026-02-19 17:00,2025-12-02 08:00,2025-12-05 17:00,32,32,0
ZX-18150,Complete Drywall & Inspect - Stair 18 SUE- 2F- FAB1-ST18,Complete,Stair 18 - 2F -SUE-FAB1-ST18,,,,,,,,,,2025-10-03 08:00,2025-10-06 17:00,2025-10-03 08:00,2025-10-06 17:00,2025-11-20 17:00,2025-11-20 17:00,2025-12-02 10:00,2025-12-02 10:00,0,16,100
ZX-18160,Complete Fire Caulk & Inspect - Stair 18 SUE- 2F- FAB1-ST18,Complete,Stair 18 - 2F -SUE-FAB1-ST18,,,,,,,,,,2025-09-05 08:00,2025-09-08 17:00,2025-09-05 08:00,2025-09-08 17:00,2025-11-20 17:00,2025-11-20 17:00,2025-12-05 17:00,2025-12-05 17:00,0,16,100
ZX-18170,Complete Control Joint & Inspect - Stair #18 SUE- 2F- FAB1-ST18,Complete,Stair 18 - 2F -SUE-FAB1-ST18,,,,,,,,,,2025-10-03 08:00,2025-10-06 17:00,2025-10-03 08:00,2025-10-06 17:00,2025-11-20 17:00,2025-11-20 17:00,2025-12-02 10:00,2025-12-02 10:00,0,16,100
ZX-18530,Complete Drywall & Inspect - Duct Shaft - 2F-SUE-FAB126507,Complete,Duct Shaft - 2F -SUE-FAB126507,,,,,,,,,,2025-09-01 08:00,2025-09-05 17:00,2025-09-01 08:00,2025-09-05 17:00,2025-11-20 17:00,2025-11-20 17:00,2025-12-05 08:00,2025-12-05 08:00,0,40,100
ZX-18540,Complete Fire Caulk & Inspect - Duct Shaft - 2F-SUE-FAB126507,Not Started,Duct Shaft - 2F -SUE-FAB126507,,,,,,,,,,2025-12-05 08:00,2025-12-05 17:00,,,2025-12-05 08:00,2025-12-05 17:00,2025-12-05 08:00,2025-12-05 17:00,8,8,0
ZX-18550,Complete Control Joint & Inspect - Duct Shaft - 2F-SUE-FAB126507,Not Started,Duct Shaft - 2F -SUE-FAB126507,,,,,,,,,,2025-12-05 08:00,2025-12-05 17:00,,,2025-12-05 08:00,2025-12-05 17:00,2025-12-05 08:00,2025-12-05 17:00,8,8,0
FAB126507B-70,DOOR FRAME HANDED OVER TO SECAI ON 10/14 - FAB126507B,Complete,Duct Shaft - 2F -SUE-FAB126507,,,,,,,,,,2025-10-14 08:00,2025-10-14 17:00,2025-10-14 08:00,2025-10-14 17:00,2025-11-20 17:00,2025-11-20 17:00,2025-11-25 10:00,2025-11-25 10:00,0,8,100
FAB126507B-03,INSTALL DOOR FRAME BY SECAI - FAB126507B  - HANDED OVER ON 10/14,Complete,Duct Shaft - 2F -SUE-FAB126507,,,,,,,,,,2025-10-14 08:00,2025-10-14 17:00,2025-10-14 08:00,2025-11-17 17:00,2025-11-20 17:00,2025-11-20 17:00,2025-11-25 10:00,2025-11-25 10:00,0,8,100
FAB126507B-04,INSTALL DOOR & HARDWARE - FAB126507B,Active,Duct Shaft - 2F -SUE-FAB126507,,,,,,,,,,2025-11-18 08:00,2025-11-24 17:00,2025-11-18 08:00,,2025-11-21 08:00,2025-11-27 17:00,2025-11-25 10:00,2025-12-02 10:00,40,40,0
FAB126507B-05,PAINT & PROTECT DOORS & FRAMES -  FAB126507B,Not Started,Duct Shaft - 2F -SUE-FAB126507,,,,,,,,,,2026-02-16 08:00,2026-02-19 15:00,,,2026-02-16 08:00,2026-02-19 15:00,2025-12-02 10:00,2025-12-05 17:00,30,30,0
1.1,PRIORITY 1 - LEVEL 1,Not Started,LEVEL 1,,,,,,,,,,2025-11-20 17:00,2025-11-20 17:00,,,2025-11-20 17:00,2025-11-20 17:00,2025-12-05 17:00,2025-12-05 17:00,0,0,0
2.1,PRIORITY 2 - LEVEL 1,Not Started,LEVEL 1,,,,,,,,,,2025-11-20 17:00,2025-11-20 17:00,,,2025-11-20 17:00,2025-11-20 17:00,2025-12-05 17:00,2025-12-05 17:00,0,0,0
3.1,PRIORITY 3 - LEVEL 1,Not Started,LEVEL 1,,,,,,,,,,2025-11-20 17:00,2025-11-20 17:00,,,2025-11-20 17:00,2025-11-20 17:00,2025-12-05 17:00,2025-12-05 17:00,0,0,0
4.1,PRIORITY 4 - LEVEL 1,Not Started,LEVEL 1,,,,,,,,,,2025-11-20 17:00,2025-11-20 17:00,,,2025-11-20 17:00,2025-11-20 17:00,2025-12-05 17:00,2025-12-05 17:00,0,0,0
5.1,PRIORITY 5 - LEVEL 1,Not Started,LEVEL 1,,,,,,,,,,2025-12-05 17:00,2025-12-05 17:00,,,2025-12-05 17:00,2025-12-05 17:00,2025-12-05 17:00,2025-12-05 17:00,0,0,0
ZX-2080,Complete Drywall & Inspect - Elevator Hall #01 - 3F-FAB130103,Complete,Elevator Hall 1 - 3F -SUW-FAB130103,,,,,,,,,,2025-09-03 08:00,2025-09-04 17:00,2025-09-03 08:00,2025-09-04 17:00,2025-11-20 17:00,2025-11-20 17:00,2025-11-25 10:00,2025-11-25 10:00,0,16,100
ZX-2090,Complete Fire Caulk & Inspect - Elevator Hall #01 - 3F-FAB130103,Complete,Elevator Hall 1 - 3F -SUW-FAB130103,,,,,,,,,,2025-09-08 08:00,2025-09-09 17:00,2025-09-08 08:00,2025-09-09 17:00,2025-11-20 17:00,2025-11-20 17:00,2025-12-05 17:00,2025-12-05 17:00,0,16,100
ZX-2100,Complete Control Joint & Inspect - Elevator Hall #01 - 3F-FAB130103,Complete,Elevator Hall 1 - 3F -SUW-FAB130103,,,,,,,,,,2025-09-04 08:00,2025-09-05 17:00,2025-09-04 08:00,2025-09-05 17:00,2025-11-20 17:00,2025-11-20 17:00,2025-11-25 10:00,2025-11-25 10:00,0,16,100
FAB130103A-01,IMPACT - INSTALL/REWORK DRYWALL FRAMING AROUND DOORS - FAB130103A,Complete,Elevator Hall 1 - 3F -SUW-FAB130103,,,,,,,,,,2025-01-20 08:00,2025-01-28 17:00,2025-01-20 08:00,2025-01-27 17:00,2025-11-20 17:00,2025-11-20 17:00,2025-11-25 10:00,2025-11-25 10:00,0,56,100
FAB130103A-02,SECAI ROUGH IN/SECURITY - FAB130103A,Complete,Elevator Hall 1 - 3F -SUW-FAB130103,,,,,,,,,,2025-01-27 08:00,2025-01-27 17:00,2025-01-27 08:00,2025-01-27 17:00,2025-11-20 17:00,2025-11-20 17:00,2025-11-25 10:00,2025-11-25 10:00,0,8,100
FAB130103A-03,INSTALL DOOR FRAMES - FAB130103A,Complete,Elevator Hall 1 - 3F -SUW-FAB130103,,,,,,,,,,2025-08-12 13:00,2025-08-13 12:00,2025-01-27 00:00,2025-01-27 16:00,2025-11-20 17:00,2025-11-20 17:00,2025-11-25 10:00,2025-11-25 10:00,0,8,100
FAB130103A-04,INSTALL DOOR & HARDWARE - FAB130103A,Not Started,Elevator Hall 1 - 3F -SUW-FAB130103,,,,,,,,,,2025-11-21 08:00,2025-11-27 17:00,,,2025-11-21 08:00,2025-11-27 17:00,2025-11-25 10:00,2025-12-02 10:00,40,40,0
FAB130103A-05,PAINT & PROTECT DOORS & FRAMES -  FAB130103A,Not Started,Elevator Hall 1 - 3F -SUW-FAB130103,,,,,,,,,,2026-02-16 08:00,2026-02-19 15:00,,,2026-02-16 08:00,2026-02-19 15:00,2025-12-02 10:00,2025-12-05 17:00,30,30,0
FAB130103B-03,INSTALL DOOR FRAMES - FAB130103B,Complete,Elevator Hall 1 - 3F -SUW-FAB130103,,,,,,,,,,2025-07-28 08:00,2025-07-28 17:00,2025-07-22 08:00,2025-07-22 17:00,2025-11-20 17:00,2025-11-20 17:00,2025-11-25 10:00,2025-11-25 10:00,0,8,100
FAB130103B-04,INSTALL DOOR & HARDWARE - FAB130103B,Not Started,Elevator Hall 1 - 3F -SUW-FAB130103,,,,,,,,,,2025-11-21 08:00,2025-11-27 17:00,,,2025-11-21 08:00,2025-11-27 17:00,2025-11-25 10:00,2025-12-02 10:00,40,40,0
FAB130103B-05,PAINT & PROTECT DOORS & FRAMES -  FAB130103B,Not Started,Elevator Hall 1 - 3F -SUW-FAB130103,,,,,,,,,,2026-02-16 08:00,2026-02-19 15:00,,,2026-02-16 08:00,2026-02-19 15:00,2025-12-02 10:00,2025-12-05 17:00,30,30,0
FAB130103C-01,IMPACT - INSTALL/REWORK DRYWALL FRAMING AROUND DOORS - FAB130103C,Complete,Elevator Hall 1 - 3F -SUW-FAB130103,,,,,,,,,,2025-03-26 08:00,2025-04-03 17:00,2025-03-26 08:00,2025-04-03 17:00,2025-11-20 17:00,2025-11-20 17:00,2025-11-25 10:00,2025-11-25 10:00,0,56,100
FAB130103C-02,SECAI ROUGH IN/SECURITY - FAB130103C,Complete,Elevator Hall 1 - 3F -SUW-FAB130103,,,,,,,,,,2025-04-03 08:00,2025-04-03 17:00,2025-04-03 08:00,2025-04-03 17:00,2025-11-20 17:00,2025-11-20 17:00,2025-11-25 10:00,2025-11-25 10:00,0,8,100
FAB130103C-03,INSTALL DOOR FRAMES - FAB130103C,Complete,Elevator Hall 1 - 3F -SUW-FAB130103,,,,,,,,,,2025-08-12 13:00,2025-08-13 12:00,2025-04-03 00:00,2025-04-03 16:00,2025-11-20 17:00,2025-11-20 17:00,2025-11-25 10:00,2025-11-25 10:00,0,8,100
FAB130103C-04,INSTALL DOOR & HARDWARE - FAB130103C,Not Started,Elevator Hall 1 - 3F -SUW-FAB130103,,,,,,,,,,2025-11-21 08:00,2025-11-27 17:00,,,2025-11-21 08:00,2025-11-27 17:00,2025-11-25 10:00,2025-12-02 10:00,40,40,0
FAB130103C-05,PAINT & PROTECT DOORS & FRAMES -  FAB130103C,Not Started,Elevator Hall 1 - 3F -SUW-FAB130103,,,,,,,,,,2026-02-16 08:00,2026-02-19 15:00,,,2026-02-16 08:00,2026-02-19 15:00,2025-12-02 10:00,2025-12-05 17:00,30,30,0
FAB130103B-11,IMPACT - SECAI - ADDED FIRE RATED DOORS (CONCEPT FRAMES INC),Complete,Elevator Hall 1 - 3F -SUW-FAB130103,,,,,,,,,,2025-06-27 08:00,2025-07-17 17:00,2025-06-27 08:00,2025-07-18 10:00,2025-11-20 17:00,2025-11-20 17:00,2025-11-25 10:00,2025-11-25 10:00,0,120,100
FAB130103B-07,DOOR FRAME PREP AND PLACEMENT- FAB130103B,Complete,Elevator Hall 1 - 3F -SUW-FAB130103,,,,,,,,,,2025-07-03 08:00,2025-07-09 17:00,2025-07-03 08:00,2025-07-21 17:00,2025-11-20 17:00,2025-11-20 17:00,2025-11-25 10:00,2025-11-25 10:00,0,40,100
ZX-5620,Complete Drywall & Inspect - Elevator Mech Rm #22 - 1F-FAB116103,Complete,Elevator Mech. Rm 22 - 1F -SUE-FAB116103,,,,,,,,,,2024-09-10 08:00,2024-09-16 17:00,2024-09-10 08:00,2024-09-16 17:00,2025-11-20 17:00,2025-11-20 17:00,2025-11-17 10:00,2025-11-17 10:00,0,40,100
ZX-5630,Complete Fire Caulk & Inspect - Elevator Mech Rm #22 - 1F-FAB116103,Complete,Elevator Mech. Rm 22 - 1F -SUE-FAB116103,,,,,,,,,,2024-09-17 08:00,2024-09-18 17:00,2024-09-17 08:00,2024-09-18 17:00,2025-11-20 17:00,2025-11-20 17:00,2025-12-05 17:00,2025-12-05 17:00,0,16,100
ZX-5640,Complete Control Joint & Inspect - Elevator Mech Rm #22 - 1F-FAB116103,Complete,Elevator Mech. Rm 22 - 1F -SUE-FAB116103,,,,,,,,,,2024-09-17 08:00,2024-09-18 17:00,2024-09-17 08:00,2024-09-18 17:00,2025-11-20 17:00,2025-11-20 17:00,2025-11-17 10:00,2025-11-17 10:00,0,16,100
FAB116103A-04,INSTALL DOOR & HARDWARE - FAB116103A,Not Started,Elevator Mech. Rm 22 - 1F -SUE-FAB116103,,,,,,,,,,2025-12-01 08:00,2025-12-05 17:00,,,2025-12-01 08:00,2025-12-05 17:00,2025-11-25 10:00,2025-12-02 10:00,40,40,0
FAB116103A-05,PAINT & PROTECT DOORS & FRAMES - FAB116103A,Not Started,Elevator Mech. Rm 22 - 1F -SUE-FAB116103,,,,,,,,,,2026-02-16 08:00,2026-02-19 15:00,,,2026-02-16 08:00,2026-02-19 15:00,2025-12-02 10:00,2025-12-05 17:00,30,30,0
ZX-5350,Complete Drywall & Inspect - Fire Alarm 22-1F-FAB116116,Complete,Fire Alarm 22 - 1F -FAB116116,,,,,,,,,,2025-09-12 08:00,2025-09-12 17:00,2025-09-12 08:00,2025-09-16 17:00,2025-11-20 17:00,2025-11-20 17:00,2025-12-05 17:00,2025-12-05 17:00,0,8,100
ZX-5360,Complete Fire Caulk & Inspect - Fire Alarm 22-1F-FAB116116,Complete,Fire Alarm 22 - 1F -FAB116116,,,,,,,,,,2025-09-15 08:00,2025-09-16 17:00,2025-09-15 08:00,2025-09-16 17:00,2025-11-20 17:00,2025-11-20 17:00,2025-12-05 17:00,2025-12-05 17:00,0,16,100
ZX-5370,SECAI TOOK OVER FOR ACCELERATION - Control Joint & Inspect - Fire Alarm 22-1F-FAB116116 SECAI INSTALLED DOOR FRAME,Complete,Fire Alarm 22 - 1F -FAB116116,,,,,,,,,,2025-06-19 08:00,2025-06-20 17:00,2025-06-19 08:00,2025-06-19 17:00,2025-11-20 17:00,2025-11-20 17:00,2025-12-05 17:00,2025-12-05 17:00,0,16,100
FAB116116A-01,IMPACT - INSTALL/REWORK DRYWALL FRAMING AROUND DOORS - FAB116116A HANDED OVER TO SECAI ON 08/20,Complete,Fire Alarm 22 - 1F -FAB116116,,,,,,,,,,2025-08-20 08:00,2025-08-21 17:00,2025-08-20 08:00,2025-08-20 17:00,2025-11-20 17:00,2025-11-20 17:00,2025-11-25 10:00,2025-11-25 10:00,0,16,100
FAB116116A-02,SECAI ROUGH IN/SECURITY - FAB116116A HANDED OVER TO SECAI ON 08/20,Complete,Fire Alarm 22 - 1F -FAB116116,,,,,,,,,,2025-08-20 08:00,2025-08-20 17:00,2025-08-20 08:00,2025-08-20 17:00,2025-11-20 17:00,2025-11-20 17:00,2025-11-25 10:00,2025-11-25 10:00,0,8,100
FAB116116A-03,INSTALL DOOR FRAME BY SECAI - FAB116116A HANDED OVER TO SECAI ON 08/20,Complete,Fire Alarm 22 - 1F -FAB116116,,,,,,,,,,2025-08-20 08:00,2025-08-20 17:00,2025-08-20 08:00,2025-09-06 08:00,2025-11-20 17:00,2025-11-20 17:00,2025-11-25 10:00,2025-11-25 10:00,0,8,100
FAB116116A-04,INSTALL DOOR & HARDWARE - FAB116116A,Active,Fire Alarm 22 - 1F -FAB116116,,,,,,,,,,2025-10-01 08:00,2025-10-07 17:00,2025-10-01 08:00,,2025-11-21 08:00,2025-11-27 17:00,2025-11-25 10:00,2025-12-02 10:00,40,40,0
FAB116116A-05,PAINT & PROTECT DOORS & FRAMES - FAB116116A,Not Started,Fire Alarm 22 - 1F -FAB116116,,,,,,,,,,2026-02-16 08:00,2026-02-19 15:00,,,2026-02-16 08:00,2026-02-19 15:00,2025-12-02 10:00,2025-12-05 17:00,30,30,0
FAB116116A-11,IMPACT - PROCUREMENT - REORDERED DOORS (JAMB DEPTH ISSUE),Complete,Fire Alarm 22 - 1F -FAB116116,,,,,,,,,,2025-06-20 08:00,2025-08-14 17:00,2025-06-20 08:00,2025-06-30 17:00,2025-11-20 17:00,2025-11-20 17:00,2025-11-25 10:00,2025-11-25 10:00,0,320,100
ZX-5530,SECAI TOOK OVER FOR ACCELERATION - Drywall & Inspect - Airlock 22-1F-FAB116111,Complete,Air Lock 22 - 1F -SUE-FAB116111,,,,,,,,,,2025-06-10 08:00,2025-06-10 08:00,2025-06-10 08:00,2025-06-10 08:00,2025-11-20 17:00,2025-11-20 17:00,2025-11-25 10:00,2025-11-25 10:00,0,0,100
ZX-5540,SECAI TOOK OVER FOR ACCELERATION - Fire Caulk & Inspect - Airlock 22-1F-FAB116111,Complete,Air Lock 22 - 1F -SUE-FAB116111,,,,,,,,,,2025-06-10 08:00,2025-06-10 08:00,2025-06-10 08:00,2025-06-10 08:00,2025-11-20 17:00,2025-11-20 17:00,2025-12-05 17:00,2025-12-05 17:00,0,0,100
ZX-5550,SECAI TOOK OVER FOR ACCELERATION - Control Joint & Inspect - Airlock 22-1F-FAB116111,Complete,Air Lock 22 - 1F -SUE-FAB116111,,,,,,,,,,2025-06-10 08:00,2025-06-10 08:00,2025-06-10 08:00,2025-06-10 08:00,2025-11-20 17:00,2025-11-20 17:00,2025-11-25 10:00,2025-11-25 10:00,0,0,100
FAB116111A-01,INSTALL DOOR FRAME BY SECAI - FAB116111A HANDED OVER TO SECAI ON 07/18,Complete,Air Lock 22 - 1F -SUE-FAB116111,,,,,,,,,,2025-08-29 08:00,2025-09-04 17:00,2025-08-29 08:00,2025-09-05 08:00,2025-11-20 17:00,2025-11-20 17:00,2025-11-25 10:00,2025-11-25 10:00,0,40,100
FAB116111A-04,INSTALL DOOR & HARDWARE - FAB116111A,Not Started,Air Lock 22 - 1F -SUE-FAB116111,,,,,,,,,,2025-12-05 08:00,2025-12-11 17:00,,,2025-12-05 08:00,2025-12-11 17:00,2025-11-25 10:00,2025-12-02 10:00,40,40,0
FAB116111A-05,PAINT & PROTECT DOORS & FRAMES - FAB116111A,Not Started,Air Lock 22 - 1F -SUE-FAB116111,,,,,,,,,,2026-02-16 08:00,2026-02-19 15:00,,,2026-02-16 08:00,2026-02-19 15:00,2025-12-02 10:00,2025-12-05 17:00,30,30,0
FAB116111B-01,IMPACT - INSTALL/REWORK DRYWALL FRAMING AROUND DOORS - FAB116111B,Complete,Air Lock 22 - 1F -SUE-FAB116111,,,,,,,,,,2025-06-10 08:00,2025-06-18 17:00,2025-03-10 08:00,2025-03-17 08:00,2025-11-20 17:00,2025-11-20 17:00,2025-11-25 10:00,2025-11-25 10:00,0,56,100
FAB116111B-02,SECAI ROUGH IN/SECURITY - FAB116111B,Complete,Air Lock 22 - 1F -SUE-FAB116111,,,,,,,,,,2025-06-10 08:00,2025-06-10 17:00,2025-03-17 08:00,2025-03-17 08:00,2025-11-20 17:00,2025-11-20 17:00,2025-11-25 10:00,2025-11-25 10:00,0,8,100
FAB116111B-03,INSTALL DOOR FRAMES - FAB116111B,Complete,Air Lock 22 - 1F -SUE-FAB116111,,,,,,,,,,2025-09-23 13:00,2025-09-24 12:00,2025-03-17 00:00,2025-03-17 16:00,2025-11-20 17:00,2025-11-20 17:00,2025-11-25 10:00,2025-11-25 10:00,0,8,100
FAB116111B-04,INSTALL DOOR & HARDWARE - FAB116111B,Active,Air Lock 22 - 1F -SUE-FAB116111,,,,,,,,,,2025-08-22 08:00,2025-08-28 17:00,2025-08-22 08:00,,2025-11-21 08:00,2025-11-27 17:00,2025-11-25 10:00,2025-12-02 10:00,40,40,0
FAB116111B-05,PAINT & PROTECT DOORS & FRAMES - FAB116111B,Not Started,Air Lock 22 - 1F -SUE-FAB116111,,,,,,,,,,2026-02-16 08:00,2026-02-19 15:00,,,2026-02-16 08:00,2026-02-19 15:00,2025-12-02 10:00,2025-12-05 17:00,30,30,0
FAB116111C-01,IMPACT - INSTALL/REWORK DRYWALL FRAMING AROUND DOORS - FAB116111C,Complete,Air Lock 22 - 1F -SUE-FAB116111,,,,,,,,,,2025-06-10 08:00,2025-06-18 17:00,2025-04-01 08:00,2025-04-07 08:00,2025-11-20 17:00,2025-11-20 17:00,2025-11-25 10:00,2025-11-25 10:00,0,56,100
FAB116111C-02,SECAI ROUGH IN/SECURITY - FAB116111C,Complete,Air Lock 22 - 1F -SUE-FAB116111,,,,,,,,,,2025-06-10 08:00,2025-06-10 17:00,2025-04-07 08:00,2025-04-07 08:00,2025-11-20 17:00,2025-11-20 17:00,2025-11-25 10:00,2025-11-25 10:00,0,8,100
FAB116111C-03,INSTALL DOOR FRAMES - FAB116111C,Complete,Air Lock 22 - 1F -SUE-FAB116111,,,,,,,,,,2025-09-23 13:00,2025-09-24 12:00,2025-04-07 00:00,2025-04-07 16:00,2025-11-20 17:00,2025-11-20 17:00,2025-11-25 10:00,2025-11-25 10:00,0,8,100
FAB116111C-04,INSTALL DOOR & HARDWARE - FAB116111C,Active,Air Lock 22 - 1F -SUE-FAB116111,,,,,,,,,,2025-05-30 08:00,2025-06-05 17:00,2025-05-30 08:00,,2025-11-21 08:00,2025-11-27 17:00,2025-11-25 10:00,2025-12-02 10:00,40,40,0
FAB116111C-05,PAINT & PROTECT DOORS & FRAMES - FAB116111C,Not Started,Air Lock 22 - 1F -SUE-FAB116111,,,,,,,,,,2026-02-16 08:00,2026-02-19 15:00,,,2026-02-16 08:00,2026-02-19 15:00,2025-12-02 10:00,2025-12-05 17:00,30,30,0
FAB116111D-01,IMPACT - INSTALL/REWORK DRYWALL FRAMING AROUND DOORS - FAB116111D,Complete,Air Lock 22 - 1F -SUE-FAB116111,,,,,,,,,,2025-06-10 08:00,2025-06-18 17:00,2025-05-01 08:00,2025-05-01 08:00,2025-11-20 17:00,2025-11-20 17:00,2025-11-25 10:00,2025-11-25 10:00,0,56,100
FAB116111D-02,SECAI ROUGH IN/SECURITY - FAB116111D,Complete,Air Lock 22 - 1F -SUE-FAB116111,,,,,,,,,,2025-06-10 08:00,2025-06-10 17:00,2025-05-01 08:00,2025-05-01 08:00,2025-11-20 17:00,2025-11-20 17:00,2025-11-25 10:00,2025-11-25 10:00,0,8,100
FAB116111D-03,INSTALL DOOR FRAMES - FAB116111D,Complete,Air Lock 22 - 1F -SUE-FAB116111,,,,,,,,,,2025-10-10 08:00,2025-10-10 17:00,2025-10-10 08:00,2025-10-10 17:00,2025-11-20 17:00,2025-11-20 17:00,2025-11-25 10:00,2025-11-25 10:00,0,8,100
FAB116111D-04,INSTALL DOOR & HARDWARE - FAB116111D,Active,Air Lock 22 - 1F -SUE-FAB116111,,,,,,,,,,2025-10-13 08:00,2025-10-17 17:00,2025-10-13 08:00,,2025-11-21 08:00,2025-11-27 17:00,2025-11-25 10:00,2025-12-02 10:00,40,40,0
FAB116111D-05,PAINT & PROTECT DOORS & FRAMES - FAB116111D,Not Started,Air Lock 22 - 1F -SUE-FAB116111,,,,,,,,,,2026-02-16 08:00,2026-02-19 15:00,,,2026-02-16 08:00,2026-02-19 15:00,2025-12-02 10:00,2025-12-05 17:00,30,30,0
FAB116111E-13,DOOR FRAME HANDED OVER TO SECAI ON 07/18 - FAB116111E,Complete,Air Lock 22 - 1F -SUE-FAB116111,,,,,,,,,,2025-07-18 08:00,2025-07-18 17:00,2025-07-18 08:00,2025-07-18 08:00,2025-11-20 17:00,2025-11-20 17:00,2025-11-25 10:00,2025-11-25 10:00,0,8,100
FAB116111E-03,INSTALL DOOR FRAME BY SECAI - FAB116111E HANDED OVER TO SECAI ON 07/18,Complete,Air Lock 22 - 1F -SUE-FAB116111,,,,,,,,,,2025-07-18 08:00,2025-07-18 17:00,2025-07-18 08:00,2025-09-10 08:00,2025-11-20 17:00,2025-11-20 17:00,2025-11-25 10:00,2025-11-25 10:00,0,8,100
FAB116111E-04,INSTALL DOOR & HARDWARE - FAB116111E,Active,Air Lock 22 - 1F -SUE-FAB116111,,,,,,,,,,2025-10-01 08:00,2025-10-07 17:00,2025-10-01 08:00,,2025-11-21 08:00,2025-11-27 17:00,2025-11-25 10:00,2025-12-02 10:00,40,40,0
FAB116111E-05,PAINT & PROTECT DOORS & FRAMES - FAB116111E,Not Started,Air Lock 22 - 1F -SUE-FAB116111,,,,,,,,,,2026-02-16 08:00,2026-02-19 15:00,,,2026-02-16 08:00,2026-02-19 15:00,2025-12-02 10:00,2025-12-05 17:00,30,30,0
FAB116111F-01,IMPACT - INSTALL/REWORK DRYWALL FRAMING AROUND DOORS - FAB116111F,Complete,Air Lock 22 - 1F -SUE-FAB116111,,,,,,,,,,2025-06-10 08:00,2025-06-18 17:00,2025-03-24 08:00,2025-04-01 08:00,2025-11-20 17:00,2025-11-20 17:00,2025-11-25 10:00,2025-11-25 10:00,0,56,100
FAB116111F-02,SECAI ROUGH IN/SECURITY - FAB116111F,Complete,Air Lock 22 - 1F -SUE-FAB116111,,,,,,,,,,2025-06-10 08:00,2025-06-10 17:00,2025-04-01 08:00,2025-04-01 08:00,2025-11-20 17:00,2025-11-20 17:00,2025-11-25 10:00,2025-11-25 10:00,0,8,100
FAB116111F-03,INSTALL DOOR FRAMES - FAB116111F,Complete,Air Lock 22 - 1F -SUE-FAB116111,,,,,,,,,,2025-09-23 13:00,2025-09-24 12:00,2025-04-01 00:00,2025-04-01 16:00,2025-11-20 17:00,2025-11-20 17:00,2025-11-25 10:00,2025-11-25 10:00,0,8,100
FAB116111F-04,INSTALL DOOR & HARDWARE - FAB116111F,Active,Air Lock 22 - 1F -SUE-FAB116111,,,,,,,,,,2025-10-01 08:00,2025-10-07 17:00,2025-10-01 08:00,,2025-11-21 08:00,2025-11-27 17:00,2025-11-25 10:00,2025-12-02 10:00,40,40,0
FAB116111F-05,PAINT & PROTECT DOORS & FRAMES - FAB116111F,Not Started,Air Lock 22 - 1F -SUE-FAB116111,,,,,,,,,,2026-02-16 08:00,2026-02-19 15:00,,,2026-02-16 08:00,2026-02-19 15:00,2025-12-02 10:00,2025-12-05 17:00,30,30,0
FAB116111E-11,IMPACT - PROCUREMENT - Reordered doors (Wall Thickness and Door Swing Design Changes),Complete,Air Lock 22 - 1F -SUE-FAB116111,,,,,,,,,,2025-06-09 08:00,2025-07-21 17:00,2025-06-09 08:00,2025-07-14 17:00,2025-11-20 17:00,2025-11-20 17:00,2025-11-25 10:00,2025-11-25 10:00,0,248,100
ZX-5680,SECAI TURNOVER FOR ACELERATION - Drywall & Inspect - Fire Riser Rm 3-1F-SUE-FAB116107,Complete,Fire Riser Rm 3 - 1F -SUE-FAB116107,,,,,,,,,,2025-06-30 08:00,2025-07-11 17:00,2025-06-30 08:00,2025-06-30 17:00,2025-11-20 17:00,2025-11-20 17:00,2025-12-05 17:00,2025-12-05 17:00,0,80,100
ZX-5690,SECAI TURNOVER FOR ACELERATION - Fire Caulk & Inspect - Fire Riser Rm 3-1F-SUE-FAB116107,Complete,Fire Riser Rm 3 - 1F -SUE-FAB116107,,,,,,,,,,2025-06-30 08:00,2025-07-01 17:00,2025-06-30 08:00,2025-06-30 17:00,2025-11-20 17:00,2025-11-20 17:00,2025-12-05 17:00,2025-12-05 17:00,0,16,100
ZX-5700,SECAI TURNOVER FOR ACELERATION - Control Joint & Inspect - Fire Riser Rm 3-1F-SUE-FAB116107,Complete,Fire Riser Rm 3 - 1F -SUE-FAB116107,,,,,,,,,,2025-06-30 08:00,2025-07-01 17:00,2025-06-30 08:00,2025-06-30 17:00,2025-11-20 17:00,2025-11-20 17:00,2025-12-05 17:00,2025-12-05 17:00,0,16,100
FAB116107A-02,SECAI ROUGH IN/SECURITY - FAB116107A,Complete,Fire Riser Rm 3 - 1F -SUE-FAB116107,,,,,,,,,,2025-07-30 08:00,2025-07-30 17:00,2025-07-30 08:00,2025-07-30 17:00,2025-11-20 17:00,2025-11-20 17:00,2025-11-27 08:00,2025-11-27 08:00,0,8,100
FAB116107A-03,INSTALL DOOR FRAMES - FAB116107A,Complete,Fire Riser Rm 3 - 1F -SUE-FAB116107,,,,,,,,,,2025-07-30 08:00,2025-07-30 17:00,2025-07-30 08:00,2025-07-30 17:00,2025-11-20 17:00,2025-11-20 17:00,2025-11-25 10:00,2025-11-25 10:00,0,8,100
FAB116107A-04,INSTALL DOOR & HARDWARE - FAB116107A,Active,Fire Riser Rm 3 - 1F -SUE-FAB116107,,,,,,,,,,2025-08-12 08:00,2025-08-18 17:00,2025-08-12 08:00,,2025-11-21 08:00,2025-11-27 17:00,2025-11-27 08:00,2025-12-03 17:00,40,40,0
FAB116107A-05,PAINT & PROTECT DOORS & FRAMES - FAB116107A,Not Started,Fire Riser Rm 3 - 1F -SUE-FAB116107,,,,,,,,,,2026-02-16 08:00,2026-02-17 17:00,,,2026-02-16 08:00,2026-02-17 17:00,2025-12-04 08:00,2025-12-05 17:00,16,16,0
FAB116107A-07,DOOR FRAME PAINT & 1ST COAT - FAB116107A,Complete,Fire Riser Rm 3 - 1F -SUE-FAB116107,,,,,,,,,,2025-08-06 08:00,2025-08-08 17:00,2025-08-06 08:00,2025-08-08 17:00,2025-11-20 17:00,2025-11-20 17:00,2025-11-27 08:00,2025-11-27 08:00,0,24,100
ZX-5650,Complete Drywall & Inspect - Duct Shaft - 1F-SUE-FAB116109,Complete,Duct Shaft - 1F -SUE-FAB116109,,,,,,,,,,2025-09-01 08:00,2025-09-05 17:00,2025-09-01 08:00,2025-09-05 17:00,2025-11-20 17:00,2025-11-20 17:00,2025-11-27 08:00,2025-11-27 08:00,0,40,100
ZX-5660,Complete Fire Caulk & Inspect - Duct Shaft - 1F-SUE-FAB116109,Complete,Duct Shaft - 1F -SUE-FAB116109,,,,,,,,,,2025-09-01 08:00,2025-09-02 17:00,2025-09-01 08:00,2025-09-02 17:00,2025-11-20 17:00,2025-11-20 17:00,2025-12-05 17:00,2025-12-05 17:00,0,16,100
FAB116109A-01,IMPACT - INSTALL/REWORK DRYWALL FRAMING AROUND DOORS - FAB116109A,Complete,Duct Shaft - 1F -SUE-FAB116109,,,,,,,,,,2025-05-12 08:00,2025-05-20 17:00,2025-05-12 08:00,2025-05-16 17:00,2025-11-20 17:00,2025-11-20 17:00,2025-11-25 10:00,2025-11-25 10:00,0,56,100
FAB116109A-02,SECAI ROUGH IN/SECURITY - FAB116109A,Complete,Duct Shaft - 1F -SUE-FAB116109,,,,,,,,,,2025-05-16 08:00,2025-05-16 17:00,2025-05-16 08:00,2025-05-16 17:00,2025-11-20 17:00,2025-11-20 17:00,2025-11-25 10:00,2025-11-25 10:00,0,8,100
FAB116109A-03,INSTALL DOOR FRAMES - FAB116109A,Complete,Duct Shaft - 1F -SUE-FAB116109,,,,,,,,,,2025-09-19 13:00,2025-09-22 12:00,2025-05-15 00:00,2025-05-16 16:00,2025-11-20 17:00,2025-11-20 17:00,2025-11-25 10:00,2025-11-25 10:00,0,8,100
FAB116109A-04,INSTALL DOOR & HARDWARE - FAB116109A,Active,Duct Shaft - 1F -SUE-FAB116109,,,,,,,,,,2025-10-14 08:00,2025-10-20 17:00,2025-10-14 08:00,,2025-11-21 08:00,2025-11-27 17:00,2025-11-25 10:00,2025-12-02 10:00,40,40,0
FAB116109A-05,PAINT & PROTECT DOORS & FRAMES - FAB116109A,Not Started,Duct Shaft - 1F -SUE-FAB116109,,,,,,,,,,2026-02-16 08:00,2026-02-19 15:00,,,2026-02-16 08:00,2026-02-19 15:00,2025-12-02 10:00,2025-12-05 17:00,30,30,0
FAB116109B-01,IMPACT - INSTALL/REWORK DRYWALL FRAMING AROUND DOORS - FAB116109B,Complete,Duct Shaft - 1F -SUE-FAB116109,,,,,,,,,,2025-09-15 08:00,2025-09-23 17:00,2025-07-15 08:00,2025-07-18 17:00,2025-11-20 17:00,2025-11-20 17:00,2025-11-27 08:00,2025-11-27 08:00,0,56,100
FAB116109B-02,SECAI ROUGH IN/SECURITY - FAB116109B,Complete,Duct Shaft - 1F -SUE-FAB116109,,,,,,,,,,2025-09-24 08:00,2025-09-24 17:00,2025-07-21 08:00,2025-07-23 17:00,2025-11-20 17:00,2025-11-20 17:00,2025-11-27 08:00,2025-11-27 08:00,0,8,100
FAB116109B-03,INSTALL DOOR FRAMES - FAB116109B,Complete,Duct Shaft - 1F -SUE-FAB116109,,,,,,,,,,2025-09-25 08:00,2025-09-25 17:00,2025-07-24 08:00,2025-07-25 17:00,2025-11-20 17:00,2025-11-20 17:00,2025-11-27 08:00,2025-11-27 08:00,0,8,100
FAB116109B-04,INSTALL DOOR & HARDWARE - FAB116109B,Active,Duct Shaft - 1F -SUE-FAB116109,,,,,,,,,,2025-08-20 08:00,2025-08-26 17:00,2025-08-20 08:00,,2025-11-21 08:00,2025-11-27 17:00,2025-11-27 08:00,2025-12-03 17:00,40,40,0
FAB116109B-05,PAINT & PROTECT DOORS & FRAMES - FAB116109B,Not Started,Duct Shaft - 1F -SUE-FAB116109,,,,,,,,,,2026-02-16 08:00,2026-02-17 17:00,,,2026-02-16 08:00,2026-02-17 17:00,2025-12-04 08:00,2025-12-05 17:00,16,16,0
ZX-5590,Drywall & Inspect - Mechanical Rm 2-1F-SUE-FAB116203,Complete,Mechanical Rm 2 - 1F -SUE-FAB116203,,,,,,,,,,2024-08-15 08:00,2024-08-28 17:00,2024-08-15 08:00,2024-08-28 17:00,2025-11-20 17:00,2025-11-20 17:00,2025-12-05 17:00,2025-12-05 17:00,0,80,100
ZX-5600,Fire Caulk & Inspect - Mechanical Rm 2-1F-SUE-FAB116203,Complete,Mechanical Rm 2 - 1F -SUE-FAB116203,,,,,,,,,,2024-08-28 08:00,2024-08-29 17:00,2024-08-28 08:00,2024-08-29 17:00,2025-11-20 17:00,2025-11-20 17:00,2025-12-05 17:00,2025-12-05 17:00,0,16,100
ZX-5610,Control Joint & Inspect - Mechanical Rm 2-1F-SUE-FAB116203,Complete,Mechanical Rm 2 - 1F -SUE-FAB116203,,,,,,,,,,2024-08-28 08:00,2024-08-29 17:00,2024-08-28 08:00,2024-08-29 17:00,2025-11-20 17:00,2025-11-20 17:00,2025-12-05 17:00,2025-12-05 17:00,0,16,100
FAB116203A-03,INSTALL DOOR FRAMES - FAB116203A HANDED OVER TO SECAI 07/07,Complete,Mechanical Rm 2 - 1F -SUE-FAB116203,,,,,,,,,,2025-07-09 08:00,2025-07-22 17:00,2025-07-09 08:00,2025-09-18 17:00,2025-11-20 17:00,2025-11-20 17:00,2025-11-25 10:00,2025-11-25 10:00,0,80,100
FAB116203A-04,INSTALL DOOR & HARDWARE - FAB116203A,Active,Mechanical Rm 2 - 1F -SUE-FAB116203,,,,,,,,,,2025-09-19 08:00,2025-09-25 17:00,2025-09-19 08:00,,2025-11-21 08:00,2025-11-27 17:00,2025-11-25 10:00,2025-12-02 10:00,40,40,0
FAB116203A-05,PAINT & PROTECT DOORS & FRAMES - FAB116203A,Not Started,Mechanical Rm 2 - 1F -SUE-FAB116203,,,,,,,,,,2026-02-16 08:00,2026-02-19 15:00,,,2026-02-16 08:00,2026-02-19 15:00,2025-12-02 10:00,2025-12-05 17:00,30,30,0
FAB116203B-02,SECAI ROUGH IN/SECURITY - FAB116203B,Complete,Mechanical Rm 2 - 1F -SUE-FAB116203,,,,,,,,,,2025-07-11 08:00,2025-07-11 17:00,2025-07-07 08:00,2025-07-07 17:00,2025-11-20 17:00,2025-11-20 17:00,2025-11-25 10:00,2025-11-25 10:00,0,8,100
FAB116203B-03,INSTALL DOOR FRAMES - FAB116203B,Complete,Mechanical Rm 2 - 1F -SUE-FAB116203,,,,,,,,,,2025-07-11 08:00,2025-07-11 17:00,2025-07-07 08:00,2025-07-07 17:00,2025-11-20 17:00,2025-11-20 17:00,2025-11-25 10:00,2025-11-25 10:00,0,8,100
FAB116203B-04,INSTALL DOOR & HARDWARE - FAB116203B,Active,Mechanical Rm 2 - 1F -SUE-FAB116203,,,,,,,,,,2025-08-29 08:00,2025-09-04 17:00,2025-08-29 08:00,,2025-11-21 08:00,2025-11-27 17:00,2025-11-25 10:00,2025-12-02 10:00,40,40,0
FAB116203B-05,PAINT & PROTECT DOORS & FRAMES - FAB116203B,Not Started,Mechanical Rm 2 - 1F -SUE-FAB116203,,,,,,,,,,2026-02-16 08:00,2026-02-19 15:00,,,2026-02-16 08:00,2026-02-19 15:00,2025-12-02 10:00,2025-12-05 17:00,30,30,0
FAB116203C-02,SECAI ROUGH IN/SECURITY - FAB116203C,Complete,Mechanical Rm 2 - 1F -SUE-FAB116203,,,,,,,,,,2025-07-11 08:00,2025-07-11 17:00,2025-07-11 08:00,2025-07-11 17:00,2025-11-20 17:00,2025-11-20 17:00,2025-11-25 10:00,2025-11-25 10:00,0,8,100
FAB116203C-03,INSTALL DOOR FRAMES - FAB116203C,Complete,Mechanical Rm 2 - 1F -SUE-FAB116203,,,,,,,,,,2025-07-11 08:00,2025-07-11 17:00,2025-07-11 08:00,2025-07-11 17:00,2025-11-20 17:00,2025-11-20 17:00,2025-11-25 10:00,2025-11-25 10:00,0,8,100
FAB116203C-04,INSTALL DOOR & HARDWARE - FAB116203C,Not Started,Mechanical Rm 2 - 1F -SUE-FAB116203,,,,,,,,,,2025-11-21 08:00,2025-11-27 17:00,,,2025-11-21 08:00,2025-11-27 17:00,2025-11-25 10:00,2025-12-02 10:00,40,40,0
FAB116203C-05,PAINT & PROTECT DOORS & FRAMES - FAB116203C,Not Started,Mechanical Rm 2 - 1F -SUE-FAB116203,,,,,,,,,,2026-02-16 08:00,2026-02-19 15:00,,,2026-02-16 08:00,2026-02-19 15:00,2025-12-02 10:00,2025-12-05 17:00,30,30,0
FAB116203A-11,IMPACT - SECAI - MEP SCAFFOLD (SECAI TURNOVER FOR ACELERATION),Complete,Mechanical Rm 2 - 1F -SUE-FAB116203,,,,,,,,,,2025-06-27 08:00,2025-07-07 10:00,2025-06-27 08:00,2025-07-07 10:00,2025-11-20 17:00,2025-11-20 17:00,2025-12-05 17:00,2025-12-05 17:00,0,50,100
FAB116203C-00,IMPACT - PATRIOT CLADDING HEADER FIX - FAB116203C,Complete,Mechanical Rm 2 - 1F -SUE-FAB116203,,,,,,,,,,2025-06-13 08:00,2025-07-03 17:00,2025-06-13 08:00,2025-07-10 17:00,2025-11-20 17:00,2025-11-20 17:00,2025-11-25 10:00,2025-11-25 10:00,0,120,100
FAB116203B-00,IMPACT - PATRIOT CLADDING HEADER FIX - FAB116203B,Complete,Mechanical Rm 2 - 1F -SUE-FAB116203,,,,,,,,,,2025-06-13 08:00,2025-07-03 17:00,2025-06-13 08:00,2025-07-04 17:00,2025-11-20 17:00,2025-11-20 17:00,2025-11-25 10:00,2025-11-25 10:00,0,120,100
FAB116203B-07,DOOR FRAME PAINT & 1ST COAT - FAB116203B,Complete,Mechanical Rm 2 - 1F -SUE-FAB116203,,,,,,,,,,2025-08-25 08:00,2025-08-27 17:00,2025-08-25 08:00,2025-08-27 17:00,2025-11-20 17:00,2025-11-20 17:00,2025-11-25 10:00,2025-11-25 10:00,0,24,100
FAB116203A-13,DOOR FRAME HANDED OVER TO SECAI ON 07/07- FAB116203A,Complete,Mechanical Rm 2 - 1F -SUE-FAB116203,,,,,,,,,,2025-07-07 08:00,2025-07-07 17:00,2025-07-07 08:00,2025-07-07 16:00,2025-11-20 17:00,2025-11-20 17:00,2025-11-25 10:00,2025-11-25 10:00,0,8,100
ZX-5890,Complete Drywall & Inspect - Pedestrian Walkway-1F-FAB114108,Complete,Pedestrian Walkway - 1F -FIZ-FAB114108,,,,,,,,,,2025-09-03 08:00,2025-09-16 17:00,2024-11-04 08:00,2024-11-11 16:00,2025-11-20 17:00,2025-11-20 17:00,2025-12-05 17:00,2025-12-05 17:00,0,80,100
ZX-5900,Complete Fire Caulk & Inspect - Pedestrian Walkway-1F-FAB114108,Complete,Pedestrian Walkway - 1F -FIZ-FAB114108,,,,,,,,,,2025-09-02 08:00,2025-09-08 17:00,2025-09-02 08:00,2025-09-08 17:00,2025-11-20 17:00,2025-11-20 17:00,2025-12-05 17:00,2025-12-05 17:00,0,40,100
ZX-5910,Complete Control Joint & Inspect - Pedestrian Walkway-1F-FAB114108,Complete,Pedestrian Walkway - 1F -FIZ-FAB114108,,,,,,,,,,2025-09-17 08:00,2025-09-18 17:00,2024-11-04 08:00,2024-11-11 16:00,2025-11-20 17:00,2025-11-20 17:00,2025-12-05 17:00,2025-12-05 17:00,0,16,100
ZX-6100,Complete Drywall & Inspect - Elevator #22 - 1F-1FAB-EL22,Complete,Elevator 22 - 1F -SUE-FAB1-EL22,,,,,,,,,,2025-07-18 08:00,2025-07-31 17:00,2025-07-14 08:00,2025-08-11 17:00,2025-11-20 17:00,2025-11-20 17:00,2025-12-03 07:00,2025-12-03 07:00,0,80,100
ZX-6110,Complete Fire Caulk & Inspect - Elevator #22 - 1F-1FAB-EL22,Complete,Elevator 22 - 1F -SUE-FAB1-EL22,,,,,,,,,,2025-07-14 08:00,2025-07-15 17:00,2025-07-14 08:00,2025-08-11 17:00,2025-11-20 17:00,2025-11-20 17:00,2025-12-05 17:00,2025-12-05 17:00,0,16,100
ZX-6120,Complete Control Joint & Inspect - Elevator #22 - 1F-1FAB-EL22,Complete,Elevator 22 - 1F -SUE-FAB1-EL22,,,,,,,,,,2025-07-14 08:00,2025-07-15 17:00,2025-07-14 08:00,2025-08-11 17:00,2025-11-20 17:00,2025-11-20 17:00,2025-12-05 17:00,2025-12-05 17:00,0,16,100
ZX-5830,Complete Drywall & Inspect - IT/Security 22-1F-FAB116112,Complete,IT/Security 22 - 1F -TR-SUE-FAB116112,,,,,,,,,,2025-09-12 08:00,2025-09-25 17:00,2025-05-16 08:00,2025-05-30 17:00,2025-11-20 17:00,2025-11-20 17:00,2025-11-25 10:00,2025-11-25 10:00,0,80,100
ZX-5840,Complete Fire Caulk & Inspect - IT/Security 22-1F-FAB116112,Complete,IT/Security 22 - 1F -TR-SUE-FAB116112,,,,,,,,,,2025-09-26 08:00,2025-09-29 17:00,2025-05-16 08:00,2025-05-30 17:00,2025-11-20 17:00,2025-11-20 17:00,2025-12-05 17:00,2025-12-05 17:00,0,16,100
ZX-5850,Complete Control Joint & Inspect - IT/Security 22-1F-FAB116112,Complete,IT/Security 22 - 1F -TR-SUE-FAB116112,,,,,,,,,,2025-09-26 08:00,2025-09-29 17:00,2025-05-16 08:00,2025-05-30 17:00,2025-11-20 17:00,2025-11-20 17:00,2025-11-25 10:00,2025-11-25 10:00,0,16,100
TR-FAB116112A-01,IMPACT - INSTALL/REWORK DRYWALL FRAMING AROUND DOORS - TR - FAB116112A,Complete,IT/Security 22 - 1F -TR-SUE-FAB116112,,,,,,,,,,2025-09-01 08:00,2025-09-09 17:00,2025-09-05 08:00,2025-09-05 17:00,2025-11-20 17:00,2025-11-20 17:00,2025-11-25 10:00,2025-11-25 10:00,0,56,100
TR-FAB116112A-02,SECAI ROUGH IN/SECURITY - TR - FAB116112A,Complete,IT/Security 22 - 1F -TR-SUE-FAB116112,,,,,,,,,,2025-09-05 08:00,2025-09-05 17:00,2025-09-05 08:00,2025-09-05 17:00,2025-11-20 17:00,2025-11-20 17:00,2025-11-25 10:00,2025-11-25 10:00,0,8,100
TR-FAB116112A-03,INSTALL DOOR FRAME BY SECAI - TR - FAB116112A,Complete,IT/Security 22 - 1F -TR-SUE-FAB116112,,,,,,,,,,2025-09-05 08:00,2025-09-05 17:00,2025-09-05 08:00,2025-09-29 08:00,2025-11-20 17:00,2025-11-20 17:00,2025-11-25 10:00,2025-11-25 10:00,0,8,100
TR-FAB116112A-04,INSTALL DOOR & HARDWARE - TR - FAB116112A,Active,IT/Security 22 - 1F -TR-SUE-FAB116112,,,,,,,,,,2025-10-02 08:00,2025-10-08 17:00,2025-10-02 08:00,,2025-11-21 08:00,2025-11-27 17:00,2025-11-25 10:00,2025-12-02 10:00,40,40,0
TR-FAB116112A-05,PAINT & PROTECT DOORS & FRAMES -  TR - FAB116112A,Not Started,IT/Security 22 - 1F -TR-SUE-FAB116112,,,,,,,,,,2026-02-16 08:00,2026-02-19 15:00,,,2026-02-16 08:00,2026-02-19 15:00,2025-12-02 10:00,2025-12-05 17:00,30,30,0
TR-FAB116112A-11,IMPACT - PROCUREMENT - Reordered doors (Wall Thickness and Door Swing Design Changes),Complete,IT/Security 22 - 1F -TR-SUE-FAB116112,,,,,,,,,,2025-06-20 08:00,2025-08-14 17:00,2025-04-14 08:00,2025-05-12 17:00,2025-11-20 17:00,2025-11-20 17:00,2025-11-25 10:00,2025-11-25 10:00,0,320,100
ZX-6010,SECAI TURNOVER FOR ACELERATION - Drywall & Inspect - Exit Passageway 22-1F-FAB116106 - BAKER/DESCOPE,Complete,Exit Passageway 22 - 1F -SUE-FAB116106,,,,,,,,,,2025-10-17 13:00,2025-10-31 12:00,2025-06-10 12:00,2025-06-10 12:00,2025-11-20 17:00,2025-11-20 17:00,2025-12-05 17:00,2025-12-05 17:00,0,80,100
ZX-6020,SECAI TURNOVER FOR ACELERATION - Fire Caulk & Inspect - Exit Passageway 22-1F-FAB116106 - BAKER/DESCOPE,Complete,Exit Passageway 22 - 1F -SUE-FAB116106,,,,,,,,,,2025-10-31 13:00,2025-11-04 12:00,2025-06-10 12:00,2025-06-10 12:00,2025-11-20 17:00,2025-11-20 17:00,2025-12-05 17:00,2025-12-05 17:00,0,16,100
ZX-6030,SECAI TURNOVER FOR ACELERATION - Control Joint & Inspect - Exit Passageway 22-1F-FAB116106 - BAKER/DESCOPE,Complete,Exit Passageway 22 - 1F -SUE-FAB116106,,,,,,,,,,2025-10-31 13:00,2025-11-04 12:00,2025-06-10 12:00,2025-06-10 12:00,2025-11-20 17:00,2025-11-20 17:00,2025-12-05 17:00,2025-12-05 17:00,0,16,100
FAB116106B-02,SECAI ROUGH IN/SECURITY - FAB116106B,Complete,Exit Passageway 22 - 1F -SUE-FAB116106,,,,,,,,,,2025-06-13 08:00,2025-06-13 17:00,2025-06-13 08:00,2025-06-13 16:00,2025-11-20 17:00,2025-11-20 17:00,2025-11-25 10:00,2025-11-25 10:00,0,8,100
FAB116106B-04,INSTALL DOOR & HARDWARE - FAB116106B,Not Started,Exit Passageway 22 - 1F -SUE-FAB116106,,,,,,,,,,2025-12-05 08:00,2025-12-11 17:00,,,2025-12-05 08:00,2025-12-11 17:00,2025-11-25 10:00,2025-12-02 10:00,40,40,0
FAB116106B-05,PAINT & PROTECT DOORS & FRAMES - FAB116106B,Not Started,Exit Passageway 22 - 1F -SUE-FAB116106,,,,,,,,,,2026-02-16 08:00,2026-02-19 15:00,,,2026-02-16 08:00,2026-02-19 15:00,2025-12-02 10:00,2025-12-05 17:00,30,30,0
FAB116106B-03,INSTALL DOOR FRAMES - FAB116106B,Complete,Exit Passageway 22 - 1F -SUE-FAB116106,,,,,,,,,,2025-06-13 08:00,2025-06-13 17:00,2025-06-13 08:00,2025-06-13 16:00,2025-11-20 17:00,2025-11-20 17:00,2025-11-25 08:00,2025-11-25 08:00,0,8,100
ZX-6160,Complete Drywall & Inspect - I/O Rm 1-1F-SUE-FAB116108,Complete,I/O Rm 1 - 1F -SUE-FAB116108,,,,,,,,,,2025-08-19 08:00,2025-08-25 17:00,2025-08-19 08:00,2025-08-25 17:00,2025-11-20 17:00,2025-11-20 17:00,2025-11-25 10:00,2025-11-25 10:00,0,40,100
ZX-6170,Complete Fire Caulk & Inspect - I/O Rm 1-1F-SUE-FAB116108,Complete,I/O Rm 1 - 1F -SUE-FAB116108,,,,,,,,,,2025-10-27 08:00,2025-10-28 17:00,2025-10-27 08:00,2025-10-28 17:00,2025-11-20 17:00,2025-11-20 17:00,2025-12-05 17:00,2025-12-05 17:00,0,16,100
ZX-6180,Complete Control Joint & Inspect - I/O Rm 1-1F-SUE-FAB116108,Complete,I/O Rm 1 - 1F -SUE-FAB116108,,,,,,,,,,2025-08-22 08:00,2025-08-25 17:00,2025-08-22 08:00,2025-08-25 17:00,2025-11-20 17:00,2025-11-20 17:00,2025-11-25 10:00,2025-11-25 10:00,0,16,100
FAB116108A-01,IMPACT - INSTALL/REWORK DRYWALL FRAMING AROUND DOORS - FAB116108A,Complete,I/O Rm 1 - 1F -SUE-FAB116108,,,,,,,,,,2025-06-25 08:00,2025-07-03 17:00,2025-06-25 08:00,2025-06-25 17:00,2025-11-20 17:00,2025-11-20 17:00,2025-11-25 10:00,2025-11-25 10:00,0,56,100
FAB116108A-02,SECAI ROUGH IN/SECURITY - FAB116108A,Complete,I/O Rm 1 - 1F -SUE-FAB116108,,,,,,,,,,2025-08-06 08:00,2025-08-06 17:00,2025-06-26 08:00,2025-06-26 17:00,2025-11-20 17:00,2025-11-20 17:00,2025-11-25 10:00,2025-11-25 10:00,0,8,100
FAB116108A-03,INSTALL DOOR FRAMES - FAB116108A,Complete,I/O Rm 1 - 1F -SUE-FAB116108,,,,,,,,,,2025-08-07 08:00,2025-08-07 17:00,2025-06-26 08:00,2025-06-26 17:00,2025-11-20 17:00,2025-11-20 17:00,2025-11-25 10:00,2025-11-25 10:00,0,8,100
FAB116108A-04,INSTALL DOOR & HARDWARE - FAB116108A,Active,I/O Rm 1 - 1F -SUE-FAB116108,,,,,,,,,,2025-07-01 08:00,2025-07-07 17:00,2025-07-01 08:00,,2025-11-21 08:00,2025-11-27 17:00,2025-11-25 10:00,2025-12-02 10:00,40,40,0
FAB116108A-05,PAINT & PROTECT DOORS & FRAMES - FAB116108A,Not Started,I/O Rm 1 - 1F -SUE-FAB116108,,,,,,,,,,2026-02-16 08:00,2026-02-19 15:00,,,2026-02-16 08:00,2026-02-19 15:00,2025-12-02 10:00,2025-12-05 17:00,30,30,0
ZX-6130,Complete Drywall & Inspect - Duct Shaft Vestibule - 1F-SUE-FAB116205,Complete,Duct Shaft Vestibule - 1F -SUE-FAB116205,,,,,,,,,,2025-09-22 08:00,2025-10-03 17:00,2024-12-03 08:00,2024-12-09 16:00,2025-11-20 17:00,2025-11-20 17:00,2025-11-25 10:00,2025-11-25 10:00,0,80,100
ZX-6140,Complete Fire Caulk & Inspect - Duct Shaft Vestibule - 1F-SUE-FAB116205,Complete,Duct Shaft Vestibule - 1F -SUE-FAB116205,,,,,,,,,,2025-10-06 08:00,2025-10-07 17:00,2024-12-10 08:00,2024-12-11 16:00,2025-11-20 17:00,2025-11-20 17:00,2025-12-05 17:00,2025-12-05 17:00,0,16,100
FAB116205A-03,INSTALL DOOR FRAMES - FAB116205A,Complete,Duct Shaft Vestibule - 1F -SUE-FAB116205,,,,,,,,,,2025-10-22 08:00,2025-10-22 17:00,2025-10-22 08:00,2025-10-22 17:00,2025-11-20 17:00,2025-11-20 17:00,2025-11-25 10:00,2025-11-25 10:00,0,8,100
FAB116205A-04,INSTALL DOOR & HARDWARE - FAB116205A,Active,Duct Shaft Vestibule - 1F -SUE-FAB116205,,,,,,,,,,2025-11-13 08:00,2025-11-19 17:00,2025-11-13 08:00,,2025-11-21 08:00,2025-11-27 17:00,2025-11-25 10:00,2025-12-02 10:00,40,40,0
FAB116205A-05,PAINT & PROTECT DOORS & FRAMES - FAB116205A,Not Started,Duct Shaft Vestibule - 1F -SUE-FAB116205,,,,,,,,,,2026-02-16 08:00,2026-02-19 15:00,,,2026-02-16 08:00,2026-02-19 15:00,2025-12-02 10:00,2025-12-05 17:00,30,30,0
ZX-6070,Complete Drywall & Inspect - Duct Shaft Vestibule - 1F-SUE-FAB116206,Complete,Duct Shaft Vestibule - 1F -SUE-FAB116206,,,,,,,,,,2025-10-06 08:00,2025-10-07 17:00,2025-10-06 08:00,2025-10-07 17:00,2025-11-20 17:00,2025-11-20 17:00,2025-12-05 17:00,2025-12-05 17:00,0,16,100
ZX-6080,Complete Fire Caulk & Inspect - Duct Shaft Vestibule - 1F-SUE-FAB116206,Complete,Duct Shaft Vestibule - 1F -SUE-FAB116206,,,,,,,,,,2025-10-10 08:00,2025-10-13 17:00,2025-10-10 08:00,2025-10-13 17:00,2025-11-20 17:00,2025-11-20 17:00,2025-12-05 17:00,2025-12-05 17:00,0,16,100
FAB116206A-01,IMPACT - INSTALL/REWORK DRYWALL FRAMING AROUND DOORS - FAB116206A,Complete,Duct Shaft Vestibule - 1F -SUE-FAB116206,,,,,,,,,,2025-08-13 08:00,2025-08-21 17:00,2025-08-13 08:00,2025-08-21 17:00,2025-11-20 17:00,2025-11-20 17:00,2025-11-25 10:00,2025-11-25 10:00,0,56,100
FAB116206A-02,SECAI ROUGH IN/SECURITY - FAB116206A,Complete,Duct Shaft Vestibule - 1F -SUE-FAB116206,,,,,,,,,,2025-08-22 08:00,2025-08-22 17:00,2025-08-22 08:00,2025-08-22 17:00,2025-11-20 17:00,2025-11-20 17:00,2025-11-25 10:00,2025-11-25 10:00,0,8,100
FAB116206A-03,INSTALL DOOR FRAMES - FAB116206A,Complete,Duct Shaft Vestibule - 1F -SUE-FAB116206,,,,,,,,,,2025-08-22 08:00,2025-08-22 17:00,2025-08-22 08:00,2025-08-22 17:00,2025-11-20 17:00,2025-11-20 17:00,2025-11-25 10:00,2025-11-25 10:00,0,8,100
FAB116206A-04,INSTALL DOOR & HARDWARE - FAB116206A,Active,Duct Shaft Vestibule - 1F -SUE-FAB116206,,,,,,,,,,2025-09-24 08:00,2025-09-30 17:00,2025-09-24 08:00,,2025-11-21 08:00,2025-11-27 17:00,2025-11-25 10:00,2025-12-02 10:00,40,40,0
FAB116206A-05,PAINT & PROTECT DOORS & FRAMES - FAB116206A,Not Started,Duct Shaft Vestibule - 1F -SUE-FAB116206,,,,,,,,,,2026-02-16 08:00,2026-02-19 15:00,,,2026-02-16 08:00,2026-02-19 15:00,2025-12-02 10:00,2025-12-05 17:00,30,30,0
FAB116206A-11,IMPACT - SECAI - DIRECTIVE TO HOLD FRAME INSTALLATION,Complete,Duct Shaft Vestibule - 1F -SUE-FAB116206,,,,,,,,,,2025-08-21 08:00,2025-08-21 17:00,2025-08-21 08:00,2025-08-21 17:00,2025-11-20 17:00,2025-11-20 17:00,2025-11-25 10:00,2025-11-25 10:00,0,8,100
ZX-6370,Complete Drywall & Inspect - OAC Mechanical RM-1F-FAB116101,Complete,OAC Mechanical RM - 1F -FIZ-FAB116101,,,,,,,,,,2025-09-22 08:00,2025-09-22 17:00,2025-09-22 08:00,2025-09-22 17:00,2025-11-20 17:00,2025-11-20 17:00,2025-11-24 10:00,2025-11-24 10:00,0,8,100
ZX-6380,Complete Fire Caulk & Inspect - OAC Mechanical RM-1F-FAB116101,Complete,OAC Mechanical RM - 1F -FIZ-FAB116101,,,,,,,,,,2025-09-19 08:00,2025-09-22 17:00,2025-09-19 08:00,2025-09-22 17:00,2025-11-20 17:00,2025-11-20 17:00,2025-12-05 17:00,2025-12-05 17:00,0,16,100
ZX-6390,Complete Control Joint & Inspect - OAC Mechanical RM-1F-FAB116101,Complete,OAC Mechanical RM - 1F -FIZ-FAB116101,,,,,,,,,,2025-09-19 08:00,2025-09-22 17:00,2025-09-19 08:00,2025-09-22 17:00,2025-11-20 17:00,2025-11-20 17:00,2025-11-24 10:00,2025-11-24 10:00,0,16,100
FAB116101B-02,INSTALL DOOR FRAMES - FAB116101B,Not Started,OAC Mechanical RM - 1F -FIZ-FAB116101,,,,,,,,,,2025-11-28 08:00,2025-11-28 17:00,,,2025-11-28 08:00,2025-11-28 17:00,2025-11-21 10:00,2025-11-24 10:00,8,8,0
FAB116101B-04,INSTALL DOOR & HARDWARE - FAB116101B,Not Started,OAC Mechanical RM - 1F -FIZ-FAB116101,,,,,,,,,,2025-12-02 08:00,2025-12-08 17:00,,,2025-12-02 08:00,2025-12-08 17:00,2025-11-25 10:00,2025-12-02 10:00,40,40,0
FAB116101B-05,PAINT & PROTECT DOORS & FRAMES - FAB116101B,Not Started,OAC Mechanical RM - 1F -FIZ-FAB116101,,,,,,,,,,2026-02-16 08:00,2026-02-19 15:00,,,2026-02-16 08:00,2026-02-19 15:00,2025-12-02 10:00,2025-12-05 17:00,30,30,0
FAB116101E-03,INSTALL DOOR FRAMES - FAB116101E,Not Started,OAC Mechanical RM - 1F -FIZ-FAB116101,,,,,,,,,,2025-11-21 08:00,2025-11-21 17:00,,,2025-11-21 08:00,2025-11-21 17:00,2025-11-24 10:00,2025-11-25 10:00,8,8,0
FAB116101E-04,INSTALL DOOR & HARDWARE - FAB116101E,Not Started,OAC Mechanical RM - 1F -FIZ-FAB116101,,,,,,,,,,2025-11-24 08:00,2025-11-28 17:00,,,2025-11-24 08:00,2025-11-28 17:00,2025-11-25 10:00,2025-12-02 10:00,40,40,0
FAB116101E-05,PAINT & PROTECT DOORS & FRAMES - FAB116101E,Not Started,OAC Mechanical RM - 1F -FIZ-FAB116101,,,,,,,,,,2026-02-16 08:00,2026-02-19 15:00,,,2026-02-16 08:00,2026-02-19 15:00,2025-12-02 10:00,2025-12-05 17:00,30,30,0
FAB116101B-00,IMPACT - PATRIOT CLADDING HEADER FIX - FAB116101B,Active,OAC Mechanical RM - 1F -FIZ-FAB116101,,,,,,,,,,2025-06-13 08:00,2025-07-03 17:00,2025-06-13 08:00,,2025-11-21 08:00,2025-11-27 17:00,2025-11-14 10:00,2025-11-21 10:00,40,120,0
FAB116101B-08,IMPACT - TEMP UTILITY LINE RUNNING TROUGH THE DOOR OPENING - FAB116101B,Active,OAC Mechanical RM - 1F -FIZ-FAB116101,,,,,,,,,,2025-06-13 08:00,2025-07-03 17:00,2025-06-13 08:00,,2025-11-21 08:00,2025-11-27 17:00,2025-11-14 10:00,2025-11-21 10:00,40,120,0
ZX-6580,Complete Drywall & Inspect - Duct Shaft - 1F-SUE-FAB116102,Complete,Duct Shaft - 1F -SUE-FAB116102,,,,,,,,,,2025-09-01 08:00,2025-09-05 17:00,2025-09-01 08:00,2025-09-05 17:00,2025-11-20 17:00,2025-11-20 17:00,2025-11-27 08:00,2025-11-27 08:00,0,40,100
ZX-6590,Complete Fire Caulk & Inspect - Duct Shaft - 1F-SUE-FAB116102,Complete,Duct Shaft - 1F -SUE-FAB116102,,,,,,,,,,2025-09-15 08:00,2025-09-16 17:00,2025-09-15 08:00,2025-09-16 17:00,2025-11-20 17:00,2025-11-20 17:00,2025-12-05 17:00,2025-12-05 17:00,0,16,100
FAB116102A-01,IMPACT - INSTALL/REWORK DRYWALL FRAMING AROUND DOORS - FAB116102A,Complete,Duct Shaft - 1F -SUE-FAB116102,,,,,,,,,,2025-03-25 08:00,2025-04-02 17:00,2025-03-25 08:00,2025-04-02 17:00,2025-11-20 17:00,2025-11-20 17:00,2025-11-27 08:00,2025-11-27 08:00,0,56,100
FAB116102A-02,SECAI ROUGH IN/SECURITY - FAB116102A,Complete,Duct Shaft - 1F -SUE-FAB116102,,,,,,,,,,2025-04-02 08:00,2025-04-02 17:00,2025-04-02 08:00,2025-04-02 17:00,2025-11-20 17:00,2025-11-20 17:00,2025-11-27 08:00,2025-11-27 08:00,0,8,100
FAB116102A-03,INSTALL DOOR FRAMES - FAB116102A,Complete,Duct Shaft - 1F -SUE-FAB116102,,,,,,,,,,2025-09-10 13:00,2025-09-11 12:00,2025-04-02 00:00,2025-04-02 16:00,2025-11-20 17:00,2025-11-20 17:00,2025-11-27 08:00,2025-11-27 08:00,0,8,100
FAB116102A-04,INSTALL DOOR & HARDWARE - FAB116102A,Active,Duct Shaft - 1F -SUE-FAB116102,,,,,,,,,,2025-05-30 08:00,2025-06-05 17:00,2025-05-30 08:00,,2025-11-21 08:00,2025-11-27 17:00,2025-11-27 08:00,2025-12-03 17:00,40,40,0
FAB116102A-05,PAINT & PROTECT DOORS & FRAMES - FAB116102A,Not Started,Duct Shaft - 1F -SUE-FAB116102,,,,,,,,,,2026-02-16 08:00,2026-02-17 17:00,,,2026-02-16 08:00,2026-02-17 17:00,2025-12-04 08:00,2025-12-05 17:00,16,16,0
ZX-6310,SECAI TURNOVER FOR ACELERATION - Drywall & Inspect - Elevator Hall #22 - 1F-FAB116110 BAKER/DESCOPE,Complete,Elevator Hall 22 - 1F -SUE-FAB116110,,,,,,,,,,2025-09-19 08:00,2025-10-02 17:00,2025-06-27 08:00,2025-06-27 16:00,2025-11-20 17:00,2025-11-20 17:00,2025-11-27 08:00,2025-11-27 08:00,0,80,100
ZX-6320,SECAI TURNOVER FOR ACELERATION - Fire Caulk & Inspect - Elevator Hall #22 - 1F-FAB116110 BAKER/DESCOPE,Complete,Elevator Hall 22 - 1F -SUE-FAB116110,,,,,,,,,,2025-10-03 08:00,2025-10-06 17:00,2025-06-27 08:00,2025-06-27 16:00,2025-11-20 17:00,2025-11-20 17:00,2025-12-05 17:00,2025-12-05 17:00,0,16,100
ZX-6330,SECAI TURNOVER FOR ACELERATION - Control Joint & Inspect - Elevator Hall #22 - 1F-FAB116110 BAKER/DESCOPE,Complete,Elevator Hall 22 - 1F -SUE-FAB116110,,,,,,,,,,2025-10-03 08:00,2025-10-06 17:00,2025-06-27 08:00,2025-06-27 16:00,2025-11-20 17:00,2025-11-20 17:00,2025-11-27 08:00,2025-11-27 08:00,0,16,100
FAB116110B-01,IMPACT - REWORK DRYWALL FOR/AND DOOR FRAME INSTALL BY SECAI - FAB116110B,Complete,Elevator Hall 22 - 1F -SUE-FAB116110,,,,,,,,,,2025-09-17 08:00,2025-09-25 17:00,2025-06-27 08:00,2025-06-27 16:00,2025-11-20 17:00,2025-11-20 17:00,2025-12-05 17:00,2025-12-05 17:00,0,56,100
FAB116110B-02,SECAI ROUGH IN/SECURITY - FAB116110B,Complete,Elevator Hall 22 - 1F -SUE-FAB116110,,,,,,,,,,2025-08-14 08:00,2025-08-14 17:00,2025-06-27 08:00,2025-06-27 16:00,2025-11-20 17:00,2025-11-20 17:00,2025-12-05 17:00,2025-12-05 17:00,0,8,100
FAB116110B-05,PAINT & PROTECT DOORS & FRAMES - FAB116110B,Not Started,Elevator Hall 22 - 1F -SUE-FAB116110,,,,,,,,,,2026-02-16 08:00,2026-02-17 17:00,,,2026-02-16 08:00,2026-02-17 17:00,2025-12-04 08:00,2025-12-05 17:00,16,16,0
FAB116110B-04A,INSTALL DOOR & HARDWARE - FAB116110B,Active,Elevator Hall 22 - 1F -SUE-FAB116110,,,,,,,,,,2025-08-21 08:00,2025-08-27 17:00,2025-08-21 08:00,,2025-11-21 08:00,2025-11-27 17:00,2025-11-27 08:00,2025-12-03 17:00,40,40,0
FAB116110B-11,IMPACT - PROCUREMENT - REORDERED DOORS (JAMB DEPTH ISSUE),Complete,Elevator Hall 22 - 1F -SUE-FAB116110,,,,,,,,,,2025-06-09 08:00,2025-07-29 10:00,2025-06-09 08:00,2025-07-14 10:00,2025-11-20 17:00,2025-11-20 17:00,2025-11-27 08:00,2025-11-27 08:00,0,290,100
FAB116105E-01,IMPACT - INSTALL/REWORK DRYWALL FRAMING AROUND DOORS - FAB116105E,Complete,Elevator Hall 22 - 1F -SUE-FAB116110,,,,,,,,,,2025-01-13 08:00,2025-01-13 17:00,2025-01-13 08:00,2025-01-13 17:00,2025-11-20 17:00,2025-11-20 17:00,2025-11-27 08:00,2025-11-27 08:00,0,8,100
FAB116105E-02,SECAI ROUGH IN/SECURITY - FAB116105E,Complete,Elevator Hall 22 - 1F -SUE-FAB116110,,,,,,,,,,2025-01-14 08:00,2025-01-14 17:00,2025-01-14 08:00,2025-01-14 17:00,2025-11-20 17:00,2025-11-20 17:00,2025-11-27 08:00,2025-11-27 08:00,0,8,100
FAB116105E-03,INSTALL DOOR FRAMES - FAB116105E,Complete,Elevator Hall 22 - 1F -SUE-FAB116110,,,,,,,,,,2025-01-14 08:00,2025-01-14 17:00,2025-01-14 08:00,2025-01-14 17:00,2025-11-20 17:00,2025-11-20 17:00,2025-11-27 08:00,2025-11-27 08:00,0,8,100
FAB116105E-04,INSTALL DOOR & HARDWARE - FAB116105E,Active,Elevator Hall 22 - 1F -SUE-FAB116110,,,,,,,,,,2025-01-14 08:00,2025-01-20 17:00,2025-01-14 08:00,,2025-11-21 08:00,2025-11-27 17:00,2025-11-27 08:00,2025-12-03 17:00,40,40,0
FAB116105E-05,PAINT & PROTECT DOORS & FRAMES - FAB116105E,Not Started,Elevator Hall 22 - 1F -SUE-FAB116110,,,,,,,,,,2026-02-16 08:00,2026-02-17 17:00,,,2026-02-16 08:00,2026-02-17 17:00,2025-12-04 08:00,2025-12-05 17:00,16,16,0
FAB116105B-00,IOCC TO BE SUBMITTED (RFI 10986) - FAB116105B,Active,Elevator Hall 22 - 1F -SUE-FAB116110,,,,,,,,,,2025-07-03 08:00,2025-07-29 15:00,2025-07-03 07:00,,2025-11-21 08:00,2025-11-27 17:00,2025-11-13 08:00,2025-11-19 17:00,40,150,0
FAB116105B-01,IOCC APPROVAL - SECAI - FAB116105B,Not Started,Elevator Hall 22 - 1F -SUE-FAB116110,,,,,,,,,,2025-11-28 08:00,2025-12-10 17:00,,,2025-11-28 08:00,2025-12-10 17:00,2025-11-20 08:00,2025-12-02 17:00,72,72,0
FAB116105B-02,INSTALL/REWORK CLADDING AND HEADER - FAB116105B,Not Started,Elevator Hall 22 - 1F -SUE-FAB116110,,,,,,,,,,2025-12-11 08:00,2025-12-11 17:00,,,2025-12-11 08:00,2025-12-11 17:00,2025-12-03 08:00,2025-12-03 17:00,8,8,0
FAB116105B-04,DOOR INSTALL - FAB116105B (OHC),Not Started,Elevator Hall 22 - 1F -SUE-FAB116110,,,,,,,,,,2025-12-12 08:00,2025-12-15 17:00,,,2025-12-12 08:00,2025-12-15 17:00,2025-12-04 08:00,2025-12-05 17:00,16,16,0
FAB116105B-50,IMPACT - A/C UNIT INFRONT OF THE OPENING PREVENTING INSTALLATION - FAB116105B,Active,Elevator Hall 22 - 1F -SUE-FAB116110,,,,,,,,,,2025-07-03 08:00,2025-07-29 15:00,2025-07-03 07:00,,2025-11-21 08:00,2025-11-27 17:00,2025-11-26 08:00,2025-12-02 17:00,40,150,0
FAB116105B-60,IMPACT - TEMP DOORS TO BE REMOVED - FAB116105B,Active,Elevator Hall 22 - 1F -SUE-FAB116110,,,,,,,,,,2025-07-03 08:00,2025-09-02 15:00,2025-07-03 07:00,,2025-11-21 08:00,2025-11-27 17:00,2025-11-26 08:00,2025-12-02 17:00,40,350,0
FAB116105B-70,IMPACT - MEP TRADES WORKING IN FRONT OF OPENING - FAB116105B,Active,Elevator Hall 22 - 1F -SUE-FAB116110,,,,,,,,,,2025-07-03 08:00,2025-07-29 15:00,2025-07-03 07:00,,2025-11-21 08:00,2025-11-27 17:00,2025-11-26 08:00,2025-12-02 17:00,40,150,0
FAB116110B-03A,INSTALL DOOR FRAMES - REORDERED DOORS (JAMB DEPTH ISSUE) - FAB116110B,Complete,Elevator Hall 22 - 1F -SUE-FAB116110,,,,,,,,,,2025-07-25 08:00,2025-07-25 17:00,2025-07-25 08:00,2025-07-25 17:00,2025-11-20 17:00,2025-11-20 17:00,2025-11-27 08:00,2025-11-27 08:00,0,8,100
ZX-6490,Complete Drywall & Inspect - Duct Shaft Vestibule - 1F-SUE-FAB116112 (MK MARLOW),Complete,Duct Shaft Vestibule - 1F -SUE-FAB116112,,,,,,,,,,2025-09-10 08:00,2025-09-23 17:00,2025-05-23 08:00,2025-06-02 16:00,2025-11-20 17:00,2025-11-20 17:00,2025-11-25 10:00,2025-11-25 10:00,0,80,100
ZX-6500,Complete Fire Caulk & Inspect - Duct Shaft Vestibule - 1F-SUE-FAB116112 (MK MARLOW),Complete,Duct Shaft Vestibule - 1F -SUE-FAB116112,,,,,,,,,,2025-09-24 08:00,2025-09-25 17:00,2025-05-22 08:00,2025-09-29 08:00,2025-11-20 17:00,2025-11-20 17:00,2025-12-05 17:00,2025-12-05 17:00,0,16,100
FAB116112A-01,IMPACT - INSTALL/REWORK DRYWALL FRAMING AROUND DOORS - FAB116112A,Complete,Duct Shaft Vestibule - 1F -SUE-FAB116112,,,,,,,,,,2025-05-12 08:00,2025-05-13 17:00,2025-05-12 08:00,2025-05-13 17:00,2025-11-20 17:00,2025-11-20 17:00,2025-11-25 10:00,2025-11-25 10:00,0,16,100
FAB116112A-02,SECAI ROUGH IN/SECURITY - FAB116112A,Complete,Duct Shaft Vestibule - 1F -SUE-FAB116112,,,,,,,,,,2025-05-13 08:00,2025-05-13 17:00,2025-05-13 08:00,2025-05-13 17:00,2025-11-20 17:00,2025-11-20 17:00,2025-11-25 10:00,2025-11-25 10:00,0,8,100
FAB116112A-03,INSTALL DOOR FRAMES - FAB116112A,Complete,Duct Shaft Vestibule - 1F -SUE-FAB116112,,,,,,,,,,2025-09-30 13:00,2025-10-01 12:00,2025-05-13 00:00,2025-05-14 16:00,2025-11-20 17:00,2025-11-20 17:00,2025-11-25 10:00,2025-11-25 10:00,0,8,100
FAB116112A-04,INSTALL DOOR & HARDWARE - FAB116112A,Active,Duct Shaft Vestibule - 1F -SUE-FAB116112,,,,,,,,,,2025-10-01 08:00,2025-10-07 17:00,2025-10-01 08:00,,2025-11-21 08:00,2025-11-27 17:00,2025-11-25 10:00,2025-12-02 10:00,40,40,0
FAB116112A-05,PAINT & PROTECT DOORS & FRAMES - FAB116112A,Not Started,Duct Shaft Vestibule - 1F -SUE-FAB116112,,,,,,,,,,2026-02-16 08:00,2026-02-19 15:00,,,2026-02-16 08:00,2026-02-19 15:00,2025-12-02 10:00,2025-12-05 17:00,30,30,0
ZX-6640,Drywall & Inspect - Mechanical Rm1-1F-SUE-FAB116201,Complete,Mechanical Rm1 - 1F -SUE-FAB116201,,,,,,,,,,2024-09-12 08:00,2024-09-25 17:00,2024-09-12 08:00,2024-09-25 17:00,2025-11-20 17:00,2025-11-20 17:00,2025-11-24 08:00,2025-11-24 08:00,0,80,100
ZX-6650,Fire Caulk & Inspect - Mechanical Rm1-1F-SUE-FAB116201,Complete,Mechanical Rm1 - 1F -SUE-FAB116201,,,,,,,,,,2024-09-30 08:00,2024-10-01 17:00,2024-09-30 08:00,2024-10-01 17:00,2025-11-20 17:00,2025-11-20 17:00,2025-12-05 17:00,2025-12-05 17:00,0,16,100
ZX-6660,Control Joint & Inspect & Inspect - Mechanical Rm1-1F-SUE-FAB116201,Complete,Mechanical Rm1 - 1F -SUE-FAB116201,,,,,,,,,,2024-09-26 08:00,2024-09-27 17:00,2024-09-26 08:00,2024-09-27 17:00,2025-11-20 17:00,2025-11-20 17:00,2025-11-24 08:00,2025-11-24 08:00,0,16,100
FAB116201B-04,INSTALL DOOR & HARDWARE - FAB116201B,Active,Mechanical Rm1 - 1F -SUE-FAB116201,,,,,,,,,,2025-11-07 08:00,2025-11-13 17:00,2025-11-07 08:00,,2025-11-21 08:00,2025-11-27 17:00,2025-11-24 08:00,2025-11-28 17:00,40,40,0
FAB116201B-05,PAINT & PROTECT DOORS & FRAMES - FAB116201B,Not Started,Mechanical Rm1 - 1F -SUE-FAB116201,,,,,,,,,,2026-02-16 08:00,2026-02-20 17:00,,,2026-02-16 08:00,2026-02-20 17:00,2025-12-01 08:00,2025-12-05 17:00,40,40,0
FAB116201C-01,IMPACT - INSTALL/REWORK DRYWALL FRAMING AROUND DOORS - FAB116201C,Complete,Mechanical Rm1 - 1F -SUE-FAB116201,,,,,,,,,,2025-07-07 08:00,2025-07-07 17:00,2025-07-07 08:00,2025-07-07 17:00,2025-11-20 17:00,2025-11-20 17:00,2025-11-24 08:00,2025-11-24 08:00,0,8,100
FAB116201C-02,DOOR FRAME HANDED OVER TO SECAI 07/10 - FAB116201C,Complete,Mechanical Rm1 - 1F -SUE-FAB116201,,,,,,,,,,2025-07-07 08:00,2025-07-07 17:00,2025-07-07 08:00,2025-07-07 17:00,2025-11-20 17:00,2025-11-20 17:00,2025-11-24 08:00,2025-11-24 08:00,0,8,100
FAB116201C-03,INSTALL DOOR FRAME BY SECAI - FAB116201C HANDED OVER 07/10,Complete,Mechanical Rm1 - 1F -SUE-FAB116201,,,,,,,,,,2025-07-07 08:00,2025-07-07 17:00,2025-07-07 08:00,2025-09-18 08:00,2025-11-20 17:00,2025-11-20 17:00,2025-11-24 08:00,2025-11-24 08:00,0,8,100
FAB116201C-04,INSTALL DOOR & HARDWARE - FAB116201C,Active,Mechanical Rm1 - 1F -SUE-FAB116201,,,,,,,,,,2025-09-19 08:00,2025-09-25 17:00,2025-09-19 08:00,,2025-11-21 08:00,2025-11-27 17:00,2025-11-24 08:00,2025-11-28 17:00,40,40,0
FAB116201C-05,PAINT & PROTECT DOORS & FRAMES - FAB116201C,Not Started,Mechanical Rm1 - 1F -SUE-FAB116201,,,,,,,,,,2026-02-16 08:00,2026-02-20 17:00,,,2026-02-16 08:00,2026-02-20 17:00,2025-12-01 08:00,2025-12-05 17:00,40,40,0
 FAB116201A-02,SECAI ROUGH IN/SECURITY - FAB116201A,Complete,Mechanical Rm1 - 1F -SUE-FAB116201,,,,,,,,,,2025-08-11 08:00,2025-08-11 17:00,2025-08-11 08:00,2025-08-11 17:00,2025-11-20 17:00,2025-11-20 17:00,2025-11-25 08:00,2025-11-25 08:00,0,8,100
 FAB116201A-04,INSTALL DOOR & HARDWARE - FAB116201A,Not Started,Mechanical Rm1 - 1F -SUE-FAB116201,,,,,,,,,,2025-11-21 08:00,2025-11-27 17:00,,,2025-11-21 08:00,2025-11-27 17:00,2025-11-25 08:00,2025-12-01 17:00,40,40,0
 FAB116201A-05,PAINT & PROTECT DOORS & FRAMES - FAB116201A,Not Started,Mechanical Rm1 - 1F -SUE-FAB116201,,,,,,,,,,2026-02-16 08:00,2026-02-19 17:00,,,2026-02-16 08:00,2026-02-19 17:00,2025-12-02 08:00,2025-12-05 17:00,32,32,0
 FAB116201D-02,SECAI ROUGH IN/SECURITY - FAB116201D,Complete,Mechanical Rm1 - 1F -SUE-FAB116201,,,,,,,,,,2025-07-10 08:00,2025-07-10 17:00,2025-06-23 08:00,2025-06-23 16:00,2025-11-20 17:00,2025-11-20 17:00,2025-12-05 17:00,2025-12-05 17:00,0,8,100
 FAB116201D-03,INSTALL DOOR FRAMES - FAB116201D,Complete,Mechanical Rm1 - 1F -SUE-FAB116201,,,,,,,,,,2025-07-10 08:00,2025-07-10 17:00,2025-06-23 08:00,2025-06-23 16:00,2025-11-20 17:00,2025-11-20 17:00,2025-11-25 08:00,2025-11-25 08:00,0,8,100
 FAB116201D-04,INSTALL DOOR & HARDWARE - FAB116201D,Active,Mechanical Rm1 - 1F -SUE-FAB116201,,,,,,,,,,2025-08-28 08:00,2025-09-03 17:00,2025-08-28 08:00,,2025-11-21 08:00,2025-11-27 17:00,2025-11-25 08:00,2025-12-01 17:00,40,40,0
 FAB116201D-05,PAINT & PROTECT DOORS & FRAMES - FAB116201D,Not Started,Mechanical Rm1 - 1F -SUE-FAB116201,,,,,,,,,,2026-02-16 08:00,2026-02-19 17:00,,,2026-02-16 08:00,2026-02-19 17:00,2025-12-02 08:00,2025-12-05 17:00,32,32,0
FAB116201A-00,IMPACT - PATRIOT CLADDING HEADER FIX - FAB116201A,Complete,Mechanical Rm1 - 1F -SUE-FAB116201,,,,,,,,,,2025-06-13 08:00,2025-07-03 17:00,2025-06-13 08:00,2025-08-08 17:00,2025-11-20 17:00,2025-11-20 17:00,2025-11-25 08:00,2025-11-25 08:00,0,120,100
FAB116201A-03,INSTALL DOOR FRAMES - FAB116201A,Complete,Mechanical Rm1 - 1F -SUE-FAB116201,,,,,,,,,,2025-08-11 08:00,2025-08-11 17:00,2025-08-11 08:00,2025-08-11 17:00,2025-11-20 17:00,2025-11-20 17:00,2025-11-25 08:00,2025-11-25 08:00,0,8,100
FAB116201B-03,INSTALL DOOR FRAMES - FAB116201B,Complete,Mechanical Rm1 - 1F -SUE-FAB116201,,,,,,,,,,2025-11-06 08:00,2025-11-06 17:00,2025-11-06 08:00,2025-11-06 17:00,2025-11-20 17:00,2025-11-20 17:00,2025-11-24 08:00,2025-11-24 08:00,0,8,100
ZX-6610,SECAI TURNOVER FOR ACELERATION - Drywall & Inspect - Exit Passageway 21-1F-FAB116202 - BAKER/DESCOPE,Complete,Exit Passageway 21 - 1F -SUE-FAB116202,,,,,,,,,,2025-06-10 08:00,2025-06-10 08:00,2025-06-10 08:00,2025-06-10 08:00,2025-11-20 17:00,2025-11-20 17:00,2025-11-25 10:00,2025-11-25 10:00,0,0,100
ZX-6620,SECAI TURNOVER FOR ACELERATION - Fire Caulk & Inspect - Exit Passageway 21-1F-FAB116202 BAKER/DESCOPE,Complete,Exit Passageway 21 - 1F -SUE-FAB116202,,,,,,,,,,2025-06-10 08:00,2025-06-10 08:00,2025-06-10 08:00,2025-06-10 08:00,2025-11-20 17:00,2025-11-20 17:00,2025-12-05 17:00,2025-12-05 17:00,0,0,100
ZX-6630,SECAI TURNOVER FOR ACELERATION - Control Joint & Inspect - Exit Passageway 21-1F-FAB116202 BAKER/DESCOPE,Complete,Exit Passageway 21 - 1F -SUE-FAB116202,,,,,,,,,,2025-06-10 08:00,2025-06-10 08:00,2025-06-10 08:00,2025-06-10 08:00,2025-11-20 17:00,2025-11-20 17:00,2025-11-25 10:00,2025-11-25 10:00,0,0,100
FAB116202B-02,INSTALL DOOR FRAMES - FAB116202B,Complete,Exit Passageway 21 - 1F -SUE-FAB116202,,,,,,,,,,2025-06-26 08:00,2025-06-26 17:00,2025-06-25 08:00,2025-06-25 17:00,2025-11-20 17:00,2025-11-20 17:00,2025-11-25 10:00,2025-11-25 10:00,0,8,100
FAB116202B-03,SECAI ROUGH IN/SECURITY - FAB116202B,Complete,Exit Passageway 21 - 1F -SUE-FAB116202,,,,,,,,,,2025-06-26 08:00,2025-06-26 17:00,2025-06-25 08:00,2025-06-25 17:00,2025-11-20 17:00,2025-11-20 17:00,2025-11-25 10:00,2025-11-25 10:00,0,8,100
FAB116202B-07,DOOR FRAME PAINT & 1ST COAT - FAB116202B,Complete,Exit Passageway 21 - 1F -SUE-FAB116202,,,,,,,,,,2025-08-26 08:00,2025-08-28 17:00,2025-08-26 08:00,2025-08-26 17:00,2025-11-20 17:00,2025-11-20 17:00,2025-11-25 10:00,2025-11-25 10:00,0,24,100
FAB116202B-04,INSTALL DOOR & HARDWARE - FAB116202B,Active,Exit Passageway 21 - 1F -SUE-FAB116202,,,,,,,,,,2025-08-27 08:00,2025-09-02 17:00,2025-08-27 08:00,,2025-11-21 08:00,2025-11-27 17:00,2025-11-25 10:00,2025-12-02 10:00,40,40,0
FAB116202B-05,PAINT & PROTECT DOORS & FRAMES - FAB116202B,Not Started,Exit Passageway 21 - 1F -SUE-FAB116202,,,,,,,,,,2026-02-16 08:00,2026-02-19 15:00,,,2026-02-16 08:00,2026-02-19 15:00,2025-12-02 10:00,2025-12-05 17:00,30,30,0
FAB116202D-01,INSTALL DOOR FRAMES - FAB116202D,Complete,Exit Passageway 21 - 1F -SUE-FAB116202,,,,,,,,,,2025-07-29 08:00,2025-07-29 17:00,2025-07-29 08:00,2025-07-29 08:00,2025-11-20 17:00,2025-11-20 17:00,2025-11-25 10:00,2025-11-25 10:00,0,8,100
FAB116202D-04,INSTALL DOOR & HARDWARE - FAB116202D,Active,Exit Passageway 21 - 1F -SUE-FAB116202,,,,,,,,,,2025-10-06 08:00,2025-10-10 17:00,2025-10-06 08:00,,2025-11-21 08:00,2025-11-27 17:00,2025-11-25 10:00,2025-12-02 10:00,40,40,0
FAB116202D-05,PAINT & PROTECT DOORS & FRAMES - FAB116202D,Not Started,Exit Passageway 21 - 1F -SUE-FAB116202,,,,,,,,,,2026-02-16 08:00,2026-02-19 15:00,,,2026-02-16 08:00,2026-02-19 15:00,2025-12-02 10:00,2025-12-05 17:00,30,30,0
FAB116202D-11,IMPACT - PROCUREMENT - Reordered doors (Wall Thickness and Door Swing Design Changes),Complete,Exit Passageway 21 - 1F -SUE-FAB116202,,,,,,,,,,2025-07-10 08:00,2025-07-31 17:00,2025-06-09 08:00,2025-07-14 17:00,2025-11-20 17:00,2025-11-20 17:00,2025-11-25 10:00,2025-11-25 10:00,0,128,100
ZX-6550,Complete Drywall & Inspect - Duct Shaft - 1F-SUE-FAB116204,Complete,Duct Shaft - 1F -SUE-FAB116204,,,,,,,,,,2025-09-01 08:00,2025-09-05 17:00,2025-09-01 08:00,2025-09-05 17:00,2025-11-20 17:00,2025-11-20 17:00,2025-11-17 10:00,2025-11-17 10:00,0,40,100
ZX-6560,Complete Fire Caulk & Inspect - Duct Shaft - 1F-SUE-FAB116204,Complete,Duct Shaft - 1F -SUE-FAB116204,,,,,,,,,,2025-10-07 08:00,2025-10-07 17:00,2025-10-07 08:00,2025-10-07 17:00,2025-11-20 17:00,2025-11-20 17:00,2025-12-05 17:00,2025-12-05 17:00,0,8,100
FAB116204A-03,INSTALL DOOR FRAMES - FAB116204A,Not Started,Duct Shaft - 1F -SUE-FAB116204,,,,,,,,,,2025-11-21 08:00,2025-11-21 17:00,,,2025-11-21 08:00,2025-11-21 17:00,2025-11-24 10:00,2025-11-25 10:00,8,8,0
FAB116204A-04,INSTALL DOOR & HARDWARE - FAB116204A,Not Started,Duct Shaft - 1F -SUE-FAB116204,,,,,,,,,,2025-11-24 08:00,2025-11-28 17:00,,,2025-11-24 08:00,2025-11-28 17:00,2025-11-25 10:00,2025-12-02 10:00,40,40,0
FAB116204A-05,PAINT & PROTECT DOORS & FRAMES - FAB116204A,Not Started,Duct Shaft - 1F -SUE-FAB116204,,,,,,,,,,2026-02-16 08:00,2026-02-19 15:00,,,2026-02-16 08:00,2026-02-19 15:00,2025-12-02 10:00,2025-12-05 17:00,30,30,0
FAB116204B-01,IMPACT - INSTALL/REWORK DRYWALL FRAMING AROUND DOORS - FAB116204B,Complete,Duct Shaft - 1F -SUE-FAB116204,,,,,,,,,,2025-03-18 08:00,2025-03-26 17:00,2025-03-18 08:00,2025-03-26 17:00,2025-11-20 17:00,2025-11-20 17:00,2025-11-26 10:00,2025-11-26 10:00,0,56,100
FAB116204B-02,SECAI ROUGH IN/SECURITY - FAB116204B,Complete,Duct Shaft - 1F -SUE-FAB116204,,,,,,,,,,2025-03-26 08:00,2025-03-26 17:00,2025-03-26 08:00,2025-03-26 17:00,2025-11-20 17:00,2025-11-20 17:00,2025-11-26 10:00,2025-11-26 10:00,0,8,100
FAB116204B-03,INSTALL DOOR FRAME - FAB116204B,Complete,Duct Shaft - 1F -SUE-FAB116204,,,,,,,,,,2025-03-26 13:00,2025-03-27 12:00,2025-03-26 13:00,2025-03-26 17:00,2025-11-20 17:00,2025-11-20 17:00,2025-11-26 10:00,2025-11-26 10:00,0,8,100
FAB116204B-04,DOOR INSTALL - FAB116204B,Complete,Duct Shaft - 1F -SUE-FAB116204,,,,,,,,,,2025-09-24 08:00,2025-09-24 17:00,2025-09-24 08:00,2025-09-24 17:00,2025-11-20 17:00,2025-11-20 17:00,2025-11-26 10:00,2025-11-26 10:00,0,8,100
FAB116204B-05,PAINT & PROTECT DOORS & FRAMES - FAB116204B,Not Started,Duct Shaft - 1F -SUE-FAB116204,,,,,,,,,,2026-02-16 08:00,2026-02-19 15:00,,,2026-02-16 08:00,2026-02-19 15:00,2025-11-26 10:00,2025-12-01 17:00,30,30,0
ZX-6790,SECAI TOOK OVER FOR ACCELERATION - Complete Drywall & Inspect - CV Room-1F-SUE-FAB116304,Complete,CV Room - 1F -SUE-FAB116304,,,,,,,,,,2025-06-27 08:00,2025-07-10 17:00,2025-06-27 08:00,2025-06-27 17:00,2025-11-20 17:00,2025-11-20 17:00,2025-11-18 10:00,2025-11-18 10:00,0,80,100
ZX-6800,SECAI TOOK OVER ACCELERATION - Complete Fire Caulk & Inspect - CV Room-1F-SUE-FAB116304,Complete,CV Room - 1F -SUE-FAB116304,,,,,,,,,,2025-06-27 08:00,2025-06-30 17:00,2025-06-27 08:00,2025-06-27 17:00,2025-11-20 17:00,2025-11-20 17:00,2025-12-05 17:00,2025-12-05 17:00,0,16,100
ZX-6810,SECAI TOOK OVER ACCELERATION - Complete Control Joint & Inspect - CV Room-1F-SUE-FAB116304,Complete,CV Room - 1F -SUE-FAB116304,,,,,,,,,,2025-06-27 08:00,2025-06-30 17:00,2025-06-27 08:00,2025-06-27 17:00,2025-11-20 17:00,2025-11-20 17:00,2025-11-18 10:00,2025-11-18 10:00,0,16,100
FAB116304A-02,SECAI ROUGH IN/SECURITY - FAB116304A,Complete,CV Room - 1F -SUE-FAB116304,,,,,,,,,,2025-07-21 08:00,2025-07-21 17:00,2025-07-21 08:00,2025-07-21 17:00,2025-11-20 17:00,2025-11-20 17:00,2025-11-25 10:00,2025-11-25 10:00,0,8,100
FAB116304A-03,INSTALL DOOR FRAMES - FAB116304A,Complete,CV Room - 1F -SUE-FAB116304,,,,,,,,,,2025-08-11 08:00,2025-08-11 17:00,2025-08-11 08:00,2025-08-11 08:00,2025-11-20 17:00,2025-11-20 17:00,2025-11-25 10:00,2025-11-25 10:00,0,8,100
FAB116304A-04,INSTALL DOOR & HARDWARE - FAB116304A,Not Started,CV Room - 1F -SUE-FAB116304,,,,,,,,,,2025-11-21 08:00,2025-11-27 17:00,,,2025-11-21 08:00,2025-11-27 17:00,2025-11-25 10:00,2025-12-02 10:00,40,40,0
FAB116304A-05,PAINT & PROTECT DOORS & FRAMES - FAB116304A,Not Started,CV Room - 1F -SUE-FAB116304,,,,,,,,,,2026-02-16 08:00,2026-02-19 15:00,,,2026-02-16 08:00,2026-02-19 15:00,2025-12-02 10:00,2025-12-05 17:00,30,30,0
FAB116304B-02,SECAI ROUGH IN/SECURITY - FAB116304B,Complete,CV Room - 1F -SUE-FAB116304,,,,,,,,,,2025-07-25 08:00,2025-07-25 17:00,2025-07-21 08:00,2025-07-21 17:00,2025-11-20 17:00,2025-11-20 17:00,2025-12-04 08:00,2025-12-04 08:00,0,8,100
FAB116304B-03,INSTALL DOOR FRAMES - FAB116304B,Complete,CV Room - 1F -SUE-FAB116304,,,,,,,,,,2025-07-28 08:00,2025-07-28 17:00,2025-07-21 08:00,2025-07-21 17:00,2025-11-20 17:00,2025-11-20 17:00,2025-11-25 10:00,2025-11-25 10:00,0,8,100
FAB116304B-04,DOOR INSTALL - FAB116304B,Complete,CV Room - 1F -SUE-FAB116304,,,,,,,,,,2025-08-29 08:00,2025-08-29 17:00,2025-08-27 08:00,2025-08-27 17:00,2025-11-20 17:00,2025-11-20 17:00,2025-12-04 08:00,2025-12-04 08:00,0,8,100
FAB116304B-05,PAINT & PROTECT DOORS & FRAMES - FAB116304B,Complete,CV Room - 1F -SUE-FAB116304,,,,,,,,,,2025-08-20 08:00,2025-08-25 15:00,2025-08-20 08:00,2025-08-25 15:00,2025-11-20 17:00,2025-11-20 17:00,2025-12-04 08:00,2025-12-04 08:00,0,30,100
FAB116304B-06,INSTALL DOOR HARDWARE - FAB116304B,Not Started,CV Room - 1F -SUE-FAB116304,,,,,,,,,,2025-11-21 08:00,2025-11-24 17:00,,,2025-11-21 08:00,2025-11-24 17:00,2025-12-04 08:00,2025-12-05 17:00,16,16,0
FAB116304C-60,DOOR FRAME HANDED OVER TO SECAI ON 07/18 - FAB116304C,Complete,CV Room - 1F -SUE-FAB116304,,,,,,,,,,2025-07-18 08:00,2025-07-18 17:00,2025-07-18 08:00,2025-07-18 17:00,2025-11-20 17:00,2025-11-20 17:00,2025-11-18 10:00,2025-11-18 10:00,0,8,100
FAB116304C-03,INSTALL DOOR FRAME BY SECAI - FAB116304C HANDED OVER ON 07/18,Complete,CV Room - 1F -SUE-FAB116304,,,,,,,,,,2025-07-18 08:00,2025-07-24 17:00,2025-07-18 08:00,2025-09-11 08:00,2025-11-20 17:00,2025-11-20 17:00,2025-11-18 10:00,2025-11-18 10:00,0,40,100
FAB116304C-04,INSTALL DOOR & HARDWARE - FAB116304C,Not Started,CV Room - 1F -SUE-FAB116304,,,,,,,,,,2025-11-28 08:00,2025-12-04 17:00,,,2025-11-28 08:00,2025-12-04 17:00,2025-11-25 10:00,2025-12-02 10:00,40,40,0
FAB116304C-05,PAINT & PROTECT DOORS & FRAMES - FAB116304C,Not Started,CV Room - 1F -SUE-FAB116304,,,,,,,,,,2026-02-16 08:00,2026-02-19 15:00,,,2026-02-16 08:00,2026-02-19 15:00,2025-12-02 10:00,2025-12-05 17:00,30,30,0
FAB116304A-00,IMPACT - PATRIOT CLADDING HEADER FIX - FAB116304A,Complete,CV Room - 1F -SUE-FAB116304,,,,,,,,,,2025-06-13 08:00,2025-07-03 17:00,2025-06-13 08:00,2025-07-18 17:00,2025-11-20 17:00,2025-11-20 17:00,2025-11-25 10:00,2025-11-25 10:00,0,120,100
FAB116304B-07,DOOR FRAME PAINT & 1ST COAT - FAB116304B,Complete,CV Room - 1F -SUE-FAB116304,,,,,,,,,,2025-07-25 08:00,2025-07-29 17:00,2025-07-22 08:00,2025-07-23 17:00,2025-11-20 17:00,2025-11-20 17:00,2025-12-04 08:00,2025-12-04 08:00,0,24,100
FAB116304B-10,IMPACT CONCRETE SLOPE - FAB116304B,Complete,CV Room - 1F -SUE-FAB116304,,,,,,,,,,2025-06-09 08:00,2025-06-13 17:00,2025-06-24 08:00,2025-07-18 17:00,2025-11-20 17:00,2025-11-20 17:00,2025-11-25 10:00,2025-11-25 10:00,0,40,100
ZX-6820,Complete Drywall & Inspect - I/O Rm 2-1F-SUE-FAB116303,Complete,I/O Rm 2 - 1F -SUE-FAB116303,,,,,,,,,,2025-09-09 08:00,2025-09-15 17:00,2025-09-09 08:00,2025-09-15 17:00,2025-11-20 17:00,2025-11-20 17:00,2025-11-14 08:00,2025-11-14 08:00,0,40,100
ZX-6830,Complete Fire Caulk & Inspect - I/O Rm 2-1F-SUE-FAB116303,Complete,I/O Rm 2 - 1F -SUE-FAB116303,,,,,,,,,,2025-09-25 08:00,2025-09-26 17:00,2025-09-25 08:00,2025-09-26 17:00,2025-11-20 17:00,2025-11-20 17:00,2025-12-05 17:00,2025-12-05 17:00,0,16,100
ZX-6840,Complete Control Joint & Inspect - I/O Rm 2-1F-SUE-FAB116303,Complete,I/O Rm 2 - 1F -SUE-FAB116303,,,,,,,,,,2025-09-12 08:00,2025-09-15 17:00,2025-09-12 08:00,2025-09-15 17:00,2025-11-20 17:00,2025-11-20 17:00,2025-11-14 08:00,2025-11-14 08:00,0,16,100
FAB116303A-02,SECAI ROUGH IN/SECURITY - FAB116303A,Complete,I/O Rm 2 - 1F -SUE-FAB116303,,,,,,,,,,2025-08-14 08:00,2025-08-14 17:00,2025-06-09 08:00,2025-06-11 16:00,2025-11-20 17:00,2025-11-20 17:00,2025-11-25 10:00,2025-11-25 10:00,0,8,100
FAB116303A-03,INSTALL DOOR FRAMES - FAB116303A,Complete,I/O Rm 2 - 1F -SUE-FAB116303,,,,,,,,,,2025-08-15 08:00,2025-08-15 17:00,2025-06-12 08:00,2025-06-12 16:00,2025-11-20 17:00,2025-11-20 17:00,2025-11-25 10:00,2025-11-25 10:00,0,8,100
FAB116303A-04,INSTALL DOOR & HARDWARE - FAB116303A,Active,I/O Rm 2 - 1F -SUE-FAB116303,,,,,,,,,,2025-06-12 08:00,2025-06-18 17:00,2025-06-12 08:00,,2025-11-21 08:00,2025-11-27 17:00,2025-11-25 10:00,2025-12-02 10:00,40,40,0
FAB116303A-05,PAINT & PROTECT DOORS & FRAMES - FAB116303A,Not Started,I/O Rm 2 - 1F -SUE-FAB116303,,,,,,,,,,2026-02-16 08:00,2026-02-19 15:00,,,2026-02-16 08:00,2026-02-19 15:00,2025-12-02 10:00,2025-12-05 17:00,30,30,0
FAB116303A-11,IMPACT - SECAI - DIRECTIVE TO HOLD FRAME INSTALLATION,Complete,I/O Rm 2 - 1F -SUE-FAB116303,,,,,,,,,,2025-06-20 08:00,2025-06-30 10:00,2025-06-09 08:00,2025-06-11 10:00,2025-11-20 17:00,2025-11-20 17:00,2025-11-25 10:00,2025-11-25 10:00,0,50,100
ZX-7120,SECAI TURNOVER FOR ACELERATION - Drywall & Inspect - Elevator Hall #20 - 1F-FAB116305 BAKER/DESCOPE,Complete,Elevator Hall 20 - 1F -SUE-FAB116305,,,,,,,,,,2025-06-27 08:00,2025-07-10 17:00,2025-06-27 08:00,2025-06-27 16:00,2025-11-20 17:00,2025-11-20 17:00,2025-11-25 10:00,2025-11-25 10:00,0,80,100
ZX-7130,SECAI TURNOVER FOR ACELERATION - Fire Caulk & Inspect - Elevator Hall #20 - 1F-FAB116305 BAKER/DESCOPE,Complete,Elevator Hall 20 - 1F -SUE-FAB116305,,,,,,,,,,2025-10-06 08:00,2025-10-07 17:00,2025-06-27 08:00,2025-06-27 16:00,2025-11-20 17:00,2025-11-20 17:00,2025-12-05 17:00,2025-12-05 17:00,0,16,100
ZX-7140,SECAI TURNOVER FOR ACELERATION - Control Joint & Inspect - Elevator Hall #20 - 1F-FAB116305 BAKER/DESCOPE,Complete,Elevator Hall 20 - 1F -SUE-FAB116305,,,,,,,,,,2025-10-06 08:00,2025-10-07 17:00,2025-06-27 08:00,2025-06-27 16:00,2025-11-20 17:00,2025-11-20 17:00,2025-11-25 10:00,2025-11-25 10:00,0,16,100
FAB116305A-25,DOOR FRAME HANDED OVER TO SECAI ON 07/07 - FAB116305A,Complete,Elevator Hall 20 - 1F -SUE-FAB116305,,,,,,,,,,2025-07-07 08:00,2025-07-07 17:00,2025-07-07 08:00,2025-07-07 17:00,2025-11-20 17:00,2025-11-20 17:00,2025-11-25 10:00,2025-11-25 10:00,0,8,100
FAB116305A-03,INSTALL DOOR FRAME BY SECAI - FAB116305A HANDED OVER ON 07/07,Complete,Elevator Hall 20 - 1F -SUE-FAB116305,,,,,,,,,,2025-07-17 08:00,2025-08-20 17:00,2025-07-17 08:00,2025-10-20 17:00,2025-11-20 17:00,2025-11-20 17:00,2025-11-25 10:00,2025-11-25 10:00,0,200,100
FAB116305A-04,INSTALL DOOR & HARDWARE - FAB116305A,Active,Elevator Hall 20 - 1F -SUE-FAB116305,,,,,,,,,,2025-10-27 08:00,2025-10-31 17:00,2025-10-27 08:00,,2025-11-21 08:00,2025-11-27 17:00,2025-11-25 10:00,2025-12-02 10:00,40,40,0
FAB116305A-05,PAINT & PROTECT DOORS & FRAMES - FAB116305A,Not Started,Elevator Hall 20 - 1F -SUE-FAB116305,,,,,,,,,,2026-02-16 08:00,2026-02-19 15:00,,,2026-02-16 08:00,2026-02-19 15:00,2025-12-02 10:00,2025-12-05 17:00,30,30,0
FAB116305B-01,IMPACT - INSTALL/REWORK DRYWALL FRAMING AROUND DOORS - FAB116305B,Complete,Elevator Hall 20 - 1F -SUE-FAB116305,,,,,,,,,,2025-10-08 08:00,2025-10-16 17:00,2025-03-12 08:00,2025-03-21 16:00,2025-11-20 17:00,2025-11-20 17:00,2025-11-25 10:00,2025-11-25 10:00,0,56,100
FAB116305B-02,SECAI ROUGH IN/SECURITY - FAB116305B,Complete,Elevator Hall 20 - 1F -SUE-FAB116305,,,,,,,,,,2025-10-17 08:00,2025-10-17 17:00,2025-03-21 08:00,2025-03-21 16:00,2025-11-20 17:00,2025-11-20 17:00,2025-11-25 10:00,2025-11-25 10:00,0,8,100
FAB116305B-03,INSTALL DOOR FRAMES - FAB116305B,Complete,Elevator Hall 20 - 1F -SUE-FAB116305,,,,,,,,,,2025-09-19 13:00,2025-09-22 12:00,2025-03-21 00:00,2025-03-21 16:00,2025-11-20 17:00,2025-11-20 17:00,2025-11-25 10:00,2025-11-25 10:00,0,8,100
FAB116305B-04,INSTALL DOOR & HARDWARE - FAB116305B,Not Started,Elevator Hall 20 - 1F -SUE-FAB116305,,,,,,,,,,2025-11-28 08:00,2025-12-04 17:00,,,2025-11-28 08:00,2025-12-04 17:00,2025-11-25 10:00,2025-12-02 10:00,40,40,0
FAB116305B-05,PAINT & PROTECT DOORS & FRAMES - FAB116305B,Not Started,Elevator Hall 20 - 1F -SUE-FAB116305,,,,,,,,,,2026-02-16 08:00,2026-02-19 15:00,,,2026-02-16 08:00,2026-02-19 15:00,2025-12-02 10:00,2025-12-05 17:00,30,30,0
FAB116305C-04,INSTALL DOOR & HARDWARE - FAB116305C,Active,Elevator Hall 20 - 1F -SUE-FAB116305,,,,,,,,,,2025-10-07 08:00,2025-10-13 17:00,2025-10-07 08:00,,2025-11-21 08:00,2025-11-27 17:00,2025-11-25 10:00,2025-12-02 10:00,40,40,0
FAB116305C-05,PAINT & PROTECT DOORS & FRAMES - FAB116305C,Not Started,Elevator Hall 20 - 1F -SUE-FAB116305,,,,,,,,,,2026-02-16 08:00,2026-02-19 15:00,,,2026-02-16 08:00,2026-02-19 15:00,2025-12-02 10:00,2025-12-05 17:00,30,30,0
FAB116305C-11,IMPACT - PROCUREMENT - Reordered doors (Wall Thickness and Door Swing Design Changes),Complete,Elevator Hall 20 - 1F -SUE-FAB116305,,,,,,,,,,2025-06-09 08:00,2025-08-04 17:00,2025-06-09 08:00,2025-07-14 17:00,2025-11-20 17:00,2025-11-20 17:00,2025-12-05 17:00,2025-12-05 17:00,0,328,100
FAB116306C-04,INSTALL DOOR & HARDWARE - FAB116306C,Active,Elevator Hall 20 - 1F -SUE-FAB116305,,,,,,,,,,2025-10-01 08:00,2025-10-07 17:00,2025-10-01 08:00,,2025-11-21 08:00,2025-11-27 17:00,2025-11-25 10:00,2025-12-02 10:00,40,40,0
FAB116306C-05,PAINT & PROTECT DOORS & FRAMES - FAB116306C,Not Started,Elevator Hall 20 - 1F -SUE-FAB116305,,,,,,,,,,2026-02-16 08:00,2026-02-19 15:00,,,2026-02-16 08:00,2026-02-19 15:00,2025-12-02 10:00,2025-12-05 17:00,30,30,0
FAB116306B-00,IOCC TO BE SUBMITTED (RFI 10986) - FAB116306B,Not Started,Elevator Hall 20 - 1F -SUE-FAB116305,,,,,,,,,,2025-11-21 08:00,2025-12-03 17:00,,,2025-11-21 08:00,2025-12-03 17:00,2025-10-27 08:00,2025-11-06 17:00,72,72,0
FAB116306B-01,IOCC APPROVAL - SECAI - FAB116306B,Not Started,Elevator Hall 20 - 1F -SUE-FAB116305,,,,,,,,,,2025-12-04 08:00,2025-12-23 17:00,,,2025-12-04 08:00,2025-12-23 17:00,2025-11-07 08:00,2025-11-26 17:00,112,112,0
FAB116306B-02,INSTALL/REWORK CLADDING AND HEADER - FAB116306B,Not Started,Elevator Hall 20 - 1F -SUE-FAB116305,,,,,,,,,,2025-12-24 08:00,2025-12-26 17:00,,,2025-12-24 08:00,2025-12-26 17:00,2025-11-27 08:00,2025-12-01 17:00,24,24,0
FAB116306B-03,SECAI DOOR ROUGH IN/SECURITY - FAB116306B,Not Started,Elevator Hall 20 - 1F -SUE-FAB116305,,,,,,,,,,2025-12-29 08:00,2025-12-30 17:00,,,2025-12-29 08:00,2025-12-30 17:00,2025-12-02 08:00,2025-12-03 17:00,16,16,0
FAB116306B-04,DOOR INSTALL - FAB116306B (OHC),Not Started,Elevator Hall 20 - 1F -SUE-FAB116305,,,,,,,,,,2025-12-31 08:00,2026-01-01 17:00,,,2025-12-31 08:00,2026-01-01 17:00,2025-12-04 08:00,2025-12-05 17:00,16,16,0
FAB116306B-50,IMPACT - SO CORDS RUNNING TROUGH OPENING - FAB116306B,Active,Elevator Hall 20 - 1F -SUE-FAB116305,,,,,,,,,,2025-07-03 08:00,2025-07-29 15:00,2025-07-03 07:00,,2025-11-21 08:00,2025-11-27 17:00,2025-11-27 08:00,2025-12-03 17:00,40,150,0
FAB116306B-60,IMPACT - TEMP CURTAIN TO BE REMOVED - FAB116306B,Active,Elevator Hall 20 - 1F -SUE-FAB116305,,,,,,,,,,2025-07-03 08:00,2025-07-29 15:00,2025-07-03 07:00,,2025-11-21 08:00,2025-11-27 17:00,2025-11-20 08:00,2025-11-26 17:00,40,150,0
FAB116306C-25,DOOR FRAME HANDED OVER TO SECAI ON 07/07 - FAB116306C,Complete,Elevator Hall 20 - 1F -SUE-FAB116305,,,,,,,,,,2025-07-07 08:00,2025-07-07 17:00,2025-07-07 08:00,2025-07-07 17:00,2025-11-20 17:00,2025-11-20 17:00,2025-11-25 10:00,2025-11-25 10:00,0,8,100
FAB116306C-03,INSTALL DOOR FRAME BY SECAI - FAB116306C HANDED OVER ON 07/07,Complete,Elevator Hall 20 - 1F -SUE-FAB116305,,,,,,,,,,2025-07-09 08:00,2025-07-22 17:00,2025-07-09 08:00,2025-09-09 08:00,2025-11-20 17:00,2025-11-20 17:00,2025-11-25 10:00,2025-11-25 10:00,0,80,100
ZX-7420,SECAI TURNOVER FOR ACELERATION - Complete Drywall & Inspect - Elevator Hall #20 - 1F-1FAB-EL20,Complete,Elevator 20 - 1F -SUE-FAB1-EL20,,,,,,,,,,2025-05-05 08:00,2025-05-16 17:00,2025-05-05 08:00,2025-06-05 17:00,2025-11-20 17:00,2025-11-20 17:00,2025-12-05 17:00,2025-12-05 17:00,0,80,100
ZX-7430,SECAI TURNOVER FOR ACELERATION - Complete Fire Caulk & Inspect - Elevator #20 - 1F-1FAB-EL20,Complete,Elevator 20 - 1F -SUE-FAB1-EL20,,,,,,,,,,2025-06-05 08:00,2025-06-06 17:00,2025-06-05 08:00,2025-06-05 17:00,2025-11-20 17:00,2025-11-20 17:00,2025-12-05 17:00,2025-12-05 17:00,0,16,100
ZX-7440,SECAI TURNOVER FOR ACELERATION - Complete Control Joint & Inspect - Elevator #20-1F-1FAB-EL20,Complete,Elevator 20 - 1F -SUE-FAB1-EL20,,,,,,,,,,2025-09-08 08:00,2025-09-09 17:00,2025-06-05 08:00,2025-06-05 17:00,2025-11-20 17:00,2025-11-20 17:00,2025-12-05 17:00,2025-12-05 17:00,0,16,100
ZX-18390,IMPACT - SECAI ELEVATOR TEAM TOOK OVER - Elevator #20 - 1F-1FAB-EL20,Complete,Elevator 20 - 1F -SUE-FAB1-EL20,,,,,,,,,,2025-05-05 08:00,2025-05-16 17:00,2025-06-05 08:00,2025-06-05 17:00,2025-11-20 17:00,2025-11-20 17:00,2025-12-05 17:00,2025-12-05 17:00,0,80,100
ZX-6760,Complete Drywall & Inspect - Elevator Mech Rm #20 - 1F-FAB116302,Complete,Elevator Mech.Rm 20 - 1F -SUE-FAB116302,,,,,,,,,,2025-07-11 08:00,2025-07-24 17:00,2025-05-26 08:00,2025-06-02 16:00,2025-11-20 17:00,2025-11-20 17:00,2025-12-05 17:00,2025-12-05 17:00,0,80,100
ZX-6770,Complete Fire Caulk & Inspect - Elevator Mech Rm #20 - 1F-FAB116302,Complete,Elevator Mech.Rm 20 - 1F -SUE-FAB116302,,,,,,,,,,2025-07-25 08:00,2025-07-28 17:00,2025-06-04 08:00,2025-06-05 16:00,2025-11-20 17:00,2025-11-20 17:00,2025-12-05 17:00,2025-12-05 17:00,0,16,100
ZX-6780,Complete Control Joint & Inspect - Elevator Mech Rm #20 - 1F-FAB116302,Complete,Elevator Mech.Rm 20 - 1F -SUE-FAB116302,,,,,,,,,,2025-07-25 08:00,2025-07-28 17:00,2025-05-30 08:00,2025-06-03 16:00,2025-11-20 17:00,2025-11-20 17:00,2025-12-05 17:00,2025-12-05 17:00,0,16,100
FAB116302A-01,IMPACT - INSTALL/REWORK DRYWALL FRAMING AROUND DOORS - FAB116302A - HANDED OVER TO SECAI ON 08/20,Complete,Elevator Mech.Rm 20 - 1F -SUE-FAB116302,,,,,,,,,,2025-10-06 08:00,2025-10-14 17:00,2025-08-20 13:00,2025-08-20 17:00,2025-11-20 17:00,2025-11-20 17:00,2025-11-27 08:00,2025-11-27 08:00,0,56,100
FAB116302A-02,SECAI ROUGH IN/SECURITY - FAB116302A,Complete,Elevator Mech.Rm 20 - 1F -SUE-FAB116302,,,,,,,,,,2025-10-16 08:00,2025-10-16 17:00,2025-08-20 08:00,2025-08-20 17:00,2025-11-20 17:00,2025-11-20 17:00,2025-11-27 08:00,2025-11-27 08:00,0,8,100
FAB116302A-03,INSTALL DOOR FRAME BY SECAI - FAB116302A - HANDED OVER TO SECAI ON 08/20,Complete,Elevator Mech.Rm 20 - 1F -SUE-FAB116302,,,,,,,,,,2025-10-15 08:00,2025-10-15 17:00,2025-08-20 08:00,2025-08-20 17:00,2025-11-20 17:00,2025-11-20 17:00,2025-11-27 08:00,2025-11-27 08:00,0,8,100
FAB116302A-04,INSTALL DOOR & HARDWARE - FAB116302A,Active,Elevator Mech.Rm 20 - 1F -SUE-FAB116302,,,,,,,,,,2025-08-27 08:00,2025-09-02 17:00,2025-08-27 08:00,,2025-11-21 08:00,2025-11-27 17:00,2025-11-27 08:00,2025-12-03 17:00,40,40,0
FAB116302A-05,PAINT & PROTECT DOORS & FRAMES - FAB116302A,Not Started,Elevator Mech.Rm 20 - 1F -SUE-FAB116302,,,,,,,,,,2026-02-16 08:00,2026-02-17 17:00,,,2026-02-16 08:00,2026-02-17 17:00,2025-12-04 08:00,2025-12-05 17:00,16,16,0
ZX-6910,SECAI TURNOVER FOR ACELERATION - Drywall & Inspect - Airlock 20-1F-FAB116301 - BAKER/DESCOPE,Complete,Air Lock 20 - 1F -SUE-FAB116301,,,,,,,,,,2025-07-30 08:00,2025-07-30 08:00,2025-06-03 08:00,2025-06-04 16:00,2025-11-20 17:00,2025-11-20 17:00,2025-11-18 10:00,2025-11-18 10:00,0,0,100
ZX-6920,SECAI TURNOVER FOR ACELERATION - Fire Caulk & Inspect - Airlock 20-1F-FAB116301 - BAKER/DESCOPE,Complete,Air Lock 20 - 1F -SUE-FAB116301,,,,,,,,,,2025-08-13 08:00,2025-08-14 17:00,2025-06-05 08:00,2025-06-06 16:00,2025-11-20 17:00,2025-11-20 17:00,2025-11-18 10:00,2025-11-18 10:00,0,16,100
ZX-6930,SECAI TURNOVER FOR ACELERATION - Control Joint & Inspect - Airlock 20-1F-FAB116301 - BAKER/DESCOPE,Complete,Air Lock 20 - 1F -SUE-FAB116301,,,,,,,,,,2025-08-13 08:00,2025-08-14 17:00,2025-06-03 08:00,2025-06-04 16:00,2025-11-20 17:00,2025-11-20 17:00,2025-11-25 10:00,2025-11-25 10:00,0,16,100
FAB116301A-03,INSTALL DOOR FRAMES - FAB116301A,Complete,Air Lock 20 - 1F -SUE-FAB116301,,,,,,,,,,2025-08-28 13:00,2025-08-29 12:00,2025-04-22 00:00,2025-04-22 16:00,2025-11-20 17:00,2025-11-20 17:00,2025-11-25 10:00,2025-11-25 10:00,0,8,100
FAB116301A-04,INSTALL DOOR & HARDWARE - FAB116301A,Active,Air Lock 20 - 1F -SUE-FAB116301,,,,,,,,,,2025-09-19 08:00,2025-09-25 17:00,2025-09-19 08:00,,2025-11-21 08:00,2025-11-27 17:00,2025-11-25 10:00,2025-12-02 10:00,40,40,0
FAB116301A-05,PAINT & PROTECT DOORS & FRAMES - FAB116301A,Not Started,Air Lock 20 - 1F -SUE-FAB116301,,,,,,,,,,2026-02-16 08:00,2026-02-19 15:00,,,2026-02-16 08:00,2026-02-19 15:00,2025-12-02 10:00,2025-12-05 17:00,30,30,0
FAB116301B-04,INSTALL DOOR & HARDWARE - FAB116301B,Not Started,Air Lock 20 - 1F -SUE-FAB116301,,,,,,,,,,2025-11-28 08:00,2025-12-04 17:00,,,2025-11-28 08:00,2025-12-04 17:00,2025-11-25 10:00,2025-12-02 10:00,40,40,0
FAB116301B-05,PAINT & PROTECT DOORS & FRAMES - FAB116301B,Not Started,Air Lock 20 - 1F -SUE-FAB116301,,,,,,,,,,2026-02-16 08:00,2026-02-19 15:00,,,2026-02-16 08:00,2026-02-19 15:00,2025-12-02 10:00,2025-12-05 17:00,30,30,0
FAB116301C-04,INSTALL DOOR & HARDWARE - FAB116301C,Active,Air Lock 20 - 1F -SUE-FAB116301,,,,,,,,,,2025-10-22 08:00,2025-10-28 17:00,2025-10-22 08:00,,2025-11-21 08:00,2025-11-27 17:00,2025-11-25 10:00,2025-12-02 10:00,40,40,0
FAB116301C-05,PAINT & PROTECT DOORS & FRAMES - FAB116301C,Not Started,Air Lock 20 - 1F -SUE-FAB116301,,,,,,,,,,2026-02-16 08:00,2026-02-19 15:00,,,2026-02-16 08:00,2026-02-19 15:00,2025-12-02 10:00,2025-12-05 17:00,30,30,0
ZX-7210,SECAI TURNOVER FOR ACELERATION - Drywall & Inspect - Exit Passageway 20-1F-FAB116307,Complete,Exit Passageway 20 - 1F -SUE-FAB116307,,,,,,,,,,2025-06-10 08:00,2025-06-10 08:00,2025-06-10 08:00,2025-06-10 08:00,2025-11-20 17:00,2025-11-20 17:00,2025-11-25 10:00,2025-11-25 10:00,0,0,100
ZX-7220,SECAI TURNOVER FOR ACELERATION - Fire Caulk & Inspect - Exit Passageway 20-1F-FAB116307,Complete,Exit Passageway 20 - 1F -SUE-FAB116307,,,,,,,,,,2025-06-10 08:00,2025-06-10 08:00,2025-06-10 08:00,2025-06-10 08:00,2025-11-20 17:00,2025-11-20 17:00,2025-12-05 17:00,2025-12-05 17:00,0,0,100
ZX-7230,SECAI TURNOVER FOR ACELERATION - Control Joint & Inspect - Exit Passageway 20-1F-FAB116307,Complete,Exit Passageway 20 - 1F -SUE-FAB116307,,,,,,,,,,2025-06-10 08:00,2025-06-10 08:00,2025-06-10 08:00,2025-06-10 08:00,2025-11-20 17:00,2025-11-20 17:00,2025-11-25 10:00,2025-11-25 10:00,0,0,100
FAB116307A-01,INSTALL DOOR FRAMES BY SECAI - FAB116307A,Complete,Exit Passageway 20 - 1F -SUE-FAB116307,,,,,,,,,,2025-10-15 08:00,2025-10-15 17:00,2025-10-15 08:00,2025-10-15 17:00,2025-11-20 17:00,2025-11-20 17:00,2025-11-25 10:00,2025-11-25 10:00,0,8,100
FAB116307A-04,INSTALL DOOR & HARDWARE - FAB116307A,Active,Exit Passageway 20 - 1F -SUE-FAB116307,,,,,,,,,,2025-10-24 08:00,2025-10-30 17:00,2025-10-24 08:00,,2025-11-21 08:00,2025-11-27 17:00,2025-11-25 10:00,2025-12-02 10:00,40,40,0
FAB116307A-05,PAINT & PROTECT DOORS & FRAMES - FAB116307A,Not Started,Exit Passageway 20 - 1F -SUE-FAB116307,,,,,,,,,,2026-02-16 08:00,2026-02-19 15:00,,,2026-02-16 08:00,2026-02-19 15:00,2025-12-02 10:00,2025-12-05 17:00,30,30,0
FAB116307B-02,SECAI ROUGH IN/SECURITY - FAB116307B,Complete,Exit Passageway 20 - 1F -SUE-FAB116307,,,,,,,,,,2025-06-20 08:00,2025-06-20 17:00,2025-05-14 08:00,2025-05-14 16:00,2025-11-20 17:00,2025-11-20 17:00,2025-11-28 08:00,2025-11-28 08:00,0,8,100
FAB116307B-03,INSTALL DOOR FRAMES - FAB116307B,Complete,Exit Passageway 20 - 1F -SUE-FAB116307,,,,,,,,,,2025-06-20 08:00,2025-06-20 17:00,2025-05-14 08:00,2025-05-14 16:00,2025-11-20 17:00,2025-11-20 17:00,2025-11-28 08:00,2025-11-28 08:00,0,8,100
FAB116307B-04,INSTALL DOOR & HARDWARE - FAB116307B,Active,Exit Passageway 20 - 1F -SUE-FAB116307,,,,,,,,,,2025-08-13 08:00,2025-08-19 17:00,2025-08-13 08:00,,2025-11-21 08:00,2025-11-27 17:00,2025-11-28 08:00,2025-12-04 17:00,40,40,0
FAB116307B-05,PAINT & PROTECT DOORS & FRAMES - FAB116307B,Not Started,Exit Passageway 20 - 1F -SUE-FAB116307,,,,,,,,,,2026-02-16 08:00,2026-02-16 17:00,,,2026-02-16 08:00,2026-02-16 17:00,2025-12-05 08:00,2025-12-05 17:00,8,8,0
FAB116307B-07,DOOR FRAME PAINT & 1ST COAT - FAB116307B,Complete,Exit Passageway 20 - 1F -SUE-FAB116307,,,,,,,,,,2025-08-19 08:00,2025-08-25 17:00,2025-08-11 08:00,2025-08-11 17:00,2025-11-20 17:00,2025-11-20 17:00,2025-11-28 08:00,2025-11-28 08:00,0,40,100
ZX-7510,Complete Drywall & Inspect - IT/Security 20-1F-TR-FAB116315,Complete,IT/Security 20 - 1F -SUE-TR-FAB116315,,,,,,,,,,2025-09-08 08:00,2025-09-12 17:00,2025-09-08 08:00,2025-09-12 17:00,2025-11-20 17:00,2025-11-20 17:00,2025-11-14 08:00,2025-11-14 08:00,0,40,100
ZX-7520,Complete Fire Caulk & Inspect - IT/Security 20-1F-TR-FAB116315,Complete,IT/Security 20 - 1F -SUE-TR-FAB116315,,,,,,,,,,2025-09-29 08:00,2025-09-30 17:00,2025-09-29 08:00,2025-09-30 17:00,2025-11-20 17:00,2025-11-20 17:00,2025-12-05 17:00,2025-12-05 17:00,0,16,100
ZX-7530,Complete Control Joint & Inspect - IT/Security 20-1F-TR-FAB116315,Complete,IT/Security 20 - 1F -SUE-TR-FAB116315,,,,,,,,,,2025-09-29 08:00,2025-09-30 17:00,2025-09-29 08:00,2025-09-30 17:00,2025-11-20 17:00,2025-11-20 17:00,2025-11-14 08:00,2025-11-14 08:00,0,16,100
TR-FAB116315A-01,IMPACT - INSTALL/REWORK DRYWALL FRAMING AROUND DOORS - TR - FAB116315A,Complete,IT/Security 20 - 1F -SUE-TR-FAB116315,,,,,,,,,,2025-07-25 08:00,2025-08-04 17:00,2025-07-25 08:00,2025-08-04 17:00,2025-11-20 17:00,2025-11-20 17:00,2025-11-25 10:00,2025-11-25 10:00,0,56,100
TR-FAB116315A-02,SECAI ROUGH IN/SECURITY - TR - FAB116315A,Complete,IT/Security 20 - 1F -SUE-TR-FAB116315,,,,,,,,,,2025-08-04 08:00,2025-08-04 17:00,2025-08-05 08:00,2025-08-05 17:00,2025-11-20 17:00,2025-11-20 17:00,2025-11-25 10:00,2025-11-25 10:00,0,8,100
TR-FAB116315A-03,INSTALL DOOR FRAMES - TR - FAB116315A,Complete,IT/Security 20 - 1F -SUE-TR-FAB116315,,,,,,,,,,2025-08-04 08:00,2025-08-04 17:00,2025-08-05 08:00,2025-08-05 17:00,2025-11-20 17:00,2025-11-20 17:00,2025-11-25 10:00,2025-11-25 10:00,0,8,100
TR-FAB116315A-04,INSTALL DOOR & HARDWARE - TR - FAB116315A,Active,IT/Security 20 - 1F -SUE-TR-FAB116315,,,,,,,,,,2025-11-10 08:00,2025-11-14 17:00,2025-11-10 08:00,,2025-11-21 08:00,2025-11-27 17:00,2025-11-25 10:00,2025-12-02 10:00,40,40,0
TR-FAB116315A-05,PAINT & PROTECT DOORS & FRAMES - TR - FAB116315A,Not Started,IT/Security 20 - 1F -SUE-TR-FAB116315,,,,,,,,,,2026-02-16 08:00,2026-02-19 15:00,,,2026-02-16 08:00,2026-02-19 15:00,2025-12-02 10:00,2025-12-05 17:00,30,30,0
ZX-6730,Complete Drywall & Inspect - Fire Alarm 20-1F-FAB116312,Complete,Fire Alarm 20 - 1F -SUE-FAB116312,,,,,,,,,,2025-09-09 08:00,2025-09-15 17:00,2025-09-09 08:00,2025-09-15 17:00,2025-11-20 17:00,2025-11-20 17:00,2025-12-05 17:00,2025-12-05 17:00,0,40,100
ZX-6740,Complete Fire Caulk & Inspect - Fire Alarm 20-1F-FAB116312,Complete,Fire Alarm 20 - 1F -SUE-FAB116312,,,,,,,,,,2025-09-29 08:00,2025-09-30 17:00,2025-09-29 08:00,2025-09-30 17:00,2025-11-20 17:00,2025-11-20 17:00,2025-12-05 17:00,2025-12-05 17:00,0,16,100
ZX-6750,Complete Control Joint & Inspect - Fire Alarm 20-1F-FAB116312,Complete,Fire Alarm 20 - 1F -SUE-FAB116312,,,,,,,,,,2025-09-29 08:00,2025-09-30 17:00,2025-09-29 08:00,2025-09-30 17:00,2025-11-20 17:00,2025-11-20 17:00,2025-12-05 17:00,2025-12-05 17:00,0,16,100
FAB116312A-01,IMPACT - INSTALL/REWORK DRYWALL FRAMING AROUND DOORS - FAB116312A,Complete,Fire Alarm 20 - 1F -SUE-FAB116312,,,,,,,,,,2025-04-22 08:00,2025-04-30 17:00,2025-04-22 08:00,2025-04-30 17:00,2025-11-20 17:00,2025-11-20 17:00,2025-11-25 10:00,2025-11-25 10:00,0,56,100
FAB116312A-02,SECAI ROUGH IN/SECURITY - FAB116312A,Complete,Fire Alarm 20 - 1F -SUE-FAB116312,,,,,,,,,,2025-04-30 08:00,2025-04-30 17:00,2025-04-30 08:00,2025-04-30 17:00,2025-11-20 17:00,2025-11-20 17:00,2025-11-25 10:00,2025-11-25 10:00,0,8,100
FAB116312A-03,INSTALL DOOR FRAMES - FAB116312A,Complete,Fire Alarm 20 - 1F -SUE-FAB116312,,,,,,,,,,2025-08-26 08:00,2025-08-26 17:00,2025-04-30 00:00,2025-04-30 16:00,2025-11-20 17:00,2025-11-20 17:00,2025-11-25 10:00,2025-11-25 10:00,0,8,100
FAB116312A-04,INSTALL DOOR & HARDWARE - FAB116312A,Active,Fire Alarm 20 - 1F -SUE-FAB116312,,,,,,,,,,2025-04-30 08:00,2025-05-06 17:00,2025-04-30 08:00,,2025-11-21 08:00,2025-11-27 17:00,2025-11-25 10:00,2025-12-02 10:00,40,40,0
FAB116312A-05,PAINT & PROTECT DOORS & FRAMES - FAB116312A,Not Started,Fire Alarm 20 - 1F -SUE-FAB116312,,,,,,,,,,2026-02-16 08:00,2026-02-19 15:00,,,2026-02-16 08:00,2026-02-19 15:00,2025-12-02 10:00,2025-12-05 17:00,30,30,0
ZX-6970,Complete Drywall & Inspect - Duct Shaft Vestibule - 1F-SUE-FAB116310,Complete,Duct Shaft Vestibule - 1F -SUE-FAB116310,,,,,,,,,,2025-09-01 08:00,2025-09-05 17:00,2025-09-01 08:00,2025-09-05 17:00,2025-11-20 17:00,2025-11-20 17:00,2025-11-17 10:00,2025-11-17 10:00,0,40,100
ZX-6980,Complete Fire Caulk & Inspect - Duct Shaft Vestibule - 1F-SUE-FAB116310,Complete,Duct Shaft Vestibule - 1F -SUE-FAB116310,,,,,,,,,,2025-10-10 08:00,2025-10-13 17:00,2025-10-10 08:00,2025-10-13 17:00,2025-11-20 17:00,2025-11-20 17:00,2025-12-05 17:00,2025-12-05 17:00,0,16,100
FAB116310A-03,IMPACT - INSTALL DOOR FRAMES - FAB116310A,Complete,Duct Shaft Vestibule - 1F -SUE-FAB116310,,,,,,,,,,2025-05-09 08:00,2025-05-12 17:00,2025-05-09 08:00,2025-05-09 17:00,2025-11-20 17:00,2025-11-20 17:00,2025-11-27 08:00,2025-11-27 08:00,0,16,100
FAB116310A-02,SECAI ROUGH IN/SECURITY - FAB116310A,Complete,Duct Shaft Vestibule - 1F -SUE-FAB116310,,,,,,,,,,2025-05-09 08:00,2025-05-09 17:00,2025-05-09 08:00,2025-05-09 17:00,2025-11-20 17:00,2025-11-20 17:00,2025-11-27 08:00,2025-11-27 08:00,0,8,100
FAB116310A-04,INSTALL DOOR & HARDWARE - FAB116310A,Active,Duct Shaft Vestibule - 1F -SUE-FAB116310,,,,,,,,,,2025-08-27 08:00,2025-09-02 17:00,2025-08-27 08:00,,2025-11-21 08:00,2025-11-27 17:00,2025-11-27 08:00,2025-12-03 17:00,40,40,0
FAB116310A-05,PAINT & PROTECT DOORS & FRAMES - FAB116310A,Not Started,Duct Shaft Vestibule - 1F -SUE-FAB116310,,,,,,,,,,2026-02-16 08:00,2026-02-17 17:00,,,2026-02-16 08:00,2026-02-17 17:00,2025-12-04 08:00,2025-12-05 17:00,16,16,0
ZX-7270,Complete Drywall & Inspect - Duct Shaft - 1F-SUE-FAB116401,Complete,Duct Shaft - 1F -SUE-FAB116401,,,,,,,,,,2025-09-01 08:00,2025-09-05 17:00,2025-09-01 08:00,2025-09-05 17:00,2025-11-20 17:00,2025-11-20 17:00,2025-11-17 10:00,2025-11-17 10:00,0,40,100
ZX-7280,Complete Fire Caulk & Inspect - Duct Shaft - 1F-SUE-FAB116401,Complete,Duct Shaft - 1F -SUE-FAB116401,,,,,,,,,,2025-09-29 08:00,2025-09-29 17:00,2025-09-29 08:00,2025-09-29 08:00,2025-11-20 17:00,2025-11-20 17:00,2025-12-05 17:00,2025-12-05 17:00,0,8,100
FAB116401A-01,IMPACT - INSTALL/REWORK DRYWALL FRAMING AROUND DOORS - FAB116401A,Complete,Duct Shaft - 1F -SUE-FAB116401,,,,,,,,,,2025-03-25 08:00,2025-04-02 17:00,2025-03-25 08:00,2025-04-02 17:00,2025-11-20 17:00,2025-11-20 17:00,2025-11-27 08:00,2025-11-27 08:00,0,56,100
FAB116401A-02,SECAI ROUGH IN/SECURITY - FAB116401A,Complete,Duct Shaft - 1F -SUE-FAB116401,,,,,,,,,,2025-04-02 08:00,2025-04-02 17:00,2025-04-02 08:00,2025-04-02 17:00,2025-11-20 17:00,2025-11-20 17:00,2025-11-27 08:00,2025-11-27 08:00,0,8,100
FAB116401A-03,INSTALL DOOR FRAMES - FAB116401A,Complete,Duct Shaft - 1F -SUE-FAB116401,,,,,,,,,,2025-08-18 13:00,2025-08-19 12:00,2025-04-02 00:00,2025-04-02 16:00,2025-11-20 17:00,2025-11-20 17:00,2025-11-27 08:00,2025-11-27 08:00,0,8,100
FAB116401A-04,INSTALL DOOR & HARDWARE - FAB116401A,Active,Duct Shaft - 1F -SUE-FAB116401,,,,,,,,,,2025-08-22 08:00,2025-08-28 17:00,2025-08-22 08:00,,2025-11-21 08:00,2025-11-27 17:00,2025-11-27 08:00,2025-12-03 17:00,40,40,0
FAB116401A-05,PAINT & PROTECT DOORS & FRAMES - FAB116401A,Not Started,Duct Shaft - 1F -SUE-FAB116401,,,,,,,,,,2026-02-16 08:00,2026-02-17 17:00,,,2026-02-16 08:00,2026-02-17 17:00,2025-12-04 08:00,2025-12-05 17:00,16,16,0
FAB116401B-01,IMPACT - INSTALL/REWORK DRYWALL FRAMING AROUND DOORS - FAB116401B,Complete,Duct Shaft - 1F -SUE-FAB116401,,,,,,,,,,2025-08-15 08:00,2025-08-15 08:00,2025-08-15 08:00,2025-08-15 08:00,2025-11-20 17:00,2025-11-20 17:00,2025-11-17 10:00,2025-11-17 10:00,0,0,100
FAB116401B-02,SECAI ROUGH IN/SECURITY - FAB116401B,Complete,Duct Shaft - 1F -SUE-FAB116401,,,,,,,,,,2025-08-15 08:00,2025-08-15 17:00,2025-08-15 08:00,2025-08-15 17:00,2025-11-20 17:00,2025-11-20 17:00,2025-11-17 10:00,2025-11-17 10:00,0,8,100
FAB116401B-03,INSTALL DOOR FRAME BY SECAI - FAB116401B,Active,Duct Shaft - 1F -SUE-FAB116401,,,,,,,,,,2025-08-15 08:00,2025-08-15 17:00,2025-08-15 08:00,,2025-11-21 08:00,2025-11-28 17:00,2025-11-17 10:00,2025-11-25 10:00,48,8,0
FAB116401B-04,INSTALL DOOR & HARDWARE - FAB116401B,Not Started,Duct Shaft - 1F -SUE-FAB116401,,,,,,,,,,2025-12-01 08:00,2025-12-05 17:00,,,2025-12-01 08:00,2025-12-05 17:00,2025-11-25 10:00,2025-12-02 10:00,40,40,0
FAB116401B-05,PAINT & PROTECT DOORS & FRAMES - FAB116401B,Not Started,Duct Shaft - 1F -SUE-FAB116401,,,,,,,,,,2026-02-16 08:00,2026-02-19 15:00,,,2026-02-16 08:00,2026-02-19 15:00,2025-12-02 10:00,2025-12-05 17:00,30,30,0
FAB116401B-11,IMPACT - SECAI - DIRECTIVE TO HOLD FRAME INSTALLATION,Complete,Duct Shaft - 1F -SUE-FAB116401,,,,,,,,,,2025-08-15 08:00,2025-08-15 08:00,2025-08-15 08:00,2025-08-15 08:00,2025-11-20 17:00,2025-11-20 17:00,2025-11-17 10:00,2025-11-17 10:00,0,0,100
FAB116408A-01,IMPACT - INSTALL/REWORK DRYWALL FRAMING AROUND DOORS - FAB116408A,Complete,Duct Shaft - 1F -SUE-FAB116401,,,,,,,,,,2025-03-25 08:00,2025-04-02 17:00,2025-03-25 08:00,2025-04-02 17:00,2025-11-20 17:00,2025-11-20 17:00,2025-11-25 10:00,2025-11-25 10:00,0,56,100
FAB116408A-02,SECAI ROUGH IN/SECURITY - FAB116408A,Complete,Duct Shaft - 1F -SUE-FAB116401,,,,,,,,,,2025-04-02 08:00,2025-04-02 17:00,2025-04-02 08:00,2025-04-02 17:00,2025-11-20 17:00,2025-11-20 17:00,2025-11-25 10:00,2025-11-25 10:00,0,8,100
FAB116408A-03,INSTALL DOOR FRAMES - FAB116408A,Complete,Duct Shaft - 1F -SUE-FAB116401,,,,,,,,,,2025-04-02 08:00,2025-04-02 17:00,2025-04-02 08:00,2025-04-02 17:00,2025-11-20 17:00,2025-11-20 17:00,2025-11-25 10:00,2025-11-25 10:00,0,8,100
FAB116408A-04,INSTALL DOOR & HARDWARE - FAB116408A,Not Started,Duct Shaft - 1F -SUE-FAB116401,,,,,,,,,,2025-11-21 08:00,2025-11-27 17:00,,,2025-11-21 08:00,2025-11-27 17:00,2025-11-25 10:00,2025-12-02 10:00,40,40,0
FAB116408A-05,PAINT & PROTECT DOORS & FRAMES -  FAB116408A,Not Started,Duct Shaft - 1F -SUE-FAB116401,,,,,,,,,,2026-02-16 08:00,2026-02-19 15:00,,,2026-02-16 08:00,2026-02-19 15:00,2025-12-02 10:00,2025-12-05 17:00,30,30,0
ZX-7570,Complete Drywall & Inspect - Mechanical Rm 3-1F-SUE-FAB116308,Complete,Mechanical Rm 3 - 1F -SUE-FAB116308,,,,,,,,,,2024-09-25 08:00,2024-10-01 17:00,2024-09-25 08:00,2024-10-01 17:00,2025-11-20 17:00,2025-11-20 17:00,2025-11-25 10:00,2025-11-25 10:00,0,40,100
ZX-7580,Complete Fire Caulk & Inspect - Mechanical Rm 3-1F-SUE-FAB116308,Complete,Mechanical Rm 3 - 1F -SUE-FAB116308,,,,,,,,,,2024-10-07 08:00,2024-10-08 17:00,2024-10-07 08:00,2024-10-08 17:00,2025-11-20 17:00,2025-11-20 17:00,2025-12-05 17:00,2025-12-05 17:00,0,16,100
ZX-7590,Complete Control Joint & Inspect - Mechanical Rm 3-1F-SUE-FAB116308,Complete,Mechanical Rm 3 - 1F -SUE-FAB116308,,,,,,,,,,2024-10-02 08:00,2024-10-03 17:00,2024-10-02 08:00,2024-10-03 17:00,2025-11-20 17:00,2025-11-20 17:00,2025-11-25 10:00,2025-11-25 10:00,0,16,100
FAB116308A-01,IMPACT - INSTALL/REWORK DRYWALL FRAMING AROUND DOORS - FAB116308A,Complete,Mechanical Rm 3 - 1F -SUE-FAB116308,,,,,,,,,,2025-08-12 08:00,2025-08-12 17:00,2025-08-12 08:00,2025-08-12 17:00,2025-11-20 17:00,2025-11-20 17:00,2025-11-25 10:00,2025-11-25 10:00,0,8,100
FAB116308A-02,SECAI ROUGH IN/SECURITY - FAB116308A,Complete,Mechanical Rm 3 - 1F -SUE-FAB116308,,,,,,,,,,2025-08-21 08:00,2025-08-21 17:00,2025-08-21 08:00,2025-08-21 17:00,2025-11-20 17:00,2025-11-20 17:00,2025-11-25 10:00,2025-11-25 10:00,0,8,100
FAB116308A-04,INSTALL DOOR & HARDWARE - FAB116308A,Active,Mechanical Rm 3 - 1F -SUE-FAB116308,,,,,,,,,,2025-08-22 08:00,2025-08-28 17:00,2025-08-22 08:00,,2025-11-21 08:00,2025-11-27 17:00,2025-11-25 10:00,2025-12-02 10:00,40,40,0
FAB116308A-05,PAINT & PROTECT DOORS & FRAMES - FAB116308A,Not Started,Mechanical Rm 3 - 1F -SUE-FAB116308,,,,,,,,,,2026-02-16 08:00,2026-02-19 15:00,,,2026-02-16 08:00,2026-02-19 15:00,2025-12-02 10:00,2025-12-05 17:00,30,30,0
FAB116308B-03,SECAI - INSTALL DOOR FRAMES - FAB116308B TO HAND OVER 07/07,Complete,Mechanical Rm 3 - 1F -SUE-FAB116308,,,,,,,,,,2025-07-09 08:00,2025-07-22 17:00,2025-07-09 08:00,2025-09-15 17:00,2025-11-20 17:00,2025-11-20 17:00,2025-11-25 10:00,2025-11-25 10:00,0,80,100
FAB116308B-04,INSTALL DOOR & HARDWARE - FAB116308B,Active,Mechanical Rm 3 - 1F -SUE-FAB116308,,,,,,,,,,2025-10-08 08:00,2025-10-14 17:00,2025-10-08 08:00,,2025-11-21 08:00,2025-11-27 17:00,2025-11-25 10:00,2025-12-02 10:00,40,40,0
FAB116308B-05,PAINT & PROTECT DOORS & FRAMES - FAB116308B,Not Started,Mechanical Rm 3 - 1F -SUE-FAB116308,,,,,,,,,,2026-02-16 08:00,2026-02-19 15:00,,,2026-02-16 08:00,2026-02-19 15:00,2025-12-02 10:00,2025-12-05 17:00,30,30,0
FAB116308C-02,SECAI ROUGH IN/SECURITY - FAB116308C,Complete,Mechanical Rm 3 - 1F -SUE-FAB116308,,,,,,,,,,2025-08-06 08:00,2025-08-06 17:00,2025-08-06 08:00,2025-08-06 17:00,2025-11-20 17:00,2025-11-20 17:00,2025-11-24 10:00,2025-11-24 10:00,0,8,100
FAB116308C-04,INSTALL DOOR & HARDWARE - FAB116308C,Not Started,Mechanical Rm 3 - 1F -SUE-FAB116308,,,,,,,,,,2025-11-24 08:00,2025-11-28 17:00,,,2025-11-24 08:00,2025-11-28 17:00,2025-11-25 10:00,2025-12-02 10:00,40,40,0
FAB116308C-05,PAINT & PROTECT DOORS & FRAMES - FAB116308C,Not Started,Mechanical Rm 3 - 1F -SUE-FAB116308,,,,,,,,,,2026-02-16 08:00,2026-02-19 15:00,,,2026-02-16 08:00,2026-02-19 15:00,2025-12-02 10:00,2025-12-05 17:00,30,30,0
FAB116308D-02,SECAI ROUGH IN/SECURITY - FAB116308D,Complete,Mechanical Rm 3 - 1F -SUE-FAB116308,,,,,,,,,,2025-07-10 08:00,2025-07-10 17:00,2025-06-19 08:00,2025-06-19 16:00,2025-11-20 17:00,2025-11-20 17:00,2025-11-25 08:00,2025-11-25 08:00,0,8,100
FAB116308D-03,INSTALL DOOR FRAMES - FAB116308D,Complete,Mechanical Rm 3 - 1F -SUE-FAB116308,,,,,,,,,,2025-07-10 08:00,2025-07-10 17:00,2025-06-19 08:00,2025-06-19 16:00,2025-11-20 17:00,2025-11-20 17:00,2025-11-25 08:00,2025-11-25 08:00,0,8,100
FAB116308D-04,INSTALL DOOR & HARDWARE - FAB116308D,Active,Mechanical Rm 3 - 1F -SUE-FAB116308,,,,,,,,,,2025-08-27 08:00,2025-09-02 17:00,2025-08-27 08:00,,2025-11-21 08:00,2025-11-27 17:00,2025-11-25 08:00,2025-12-01 17:00,40,40,0
FAB116308D-05,PAINT & PROTECT DOORS & FRAMES - FAB116308D,Not Started,Mechanical Rm 3 - 1F -SUE-FAB116308,,,,,,,,,,2026-02-16 08:00,2026-02-19 17:00,,,2026-02-16 08:00,2026-02-19 17:00,2025-12-02 08:00,2025-12-05 17:00,32,32,0
FAB116308E-02,SECAI ROUGH IN/SECURITY - FAB116308E,Complete,Mechanical Rm 3 - 1F -SUE-FAB116308,,,,,,,,,,2025-08-11 08:00,2025-08-11 17:00,2025-08-11 08:00,2025-08-11 17:00,2025-11-20 17:00,2025-11-20 17:00,2025-11-24 10:00,2025-11-24 10:00,0,8,100
FAB116308E-04,INSTALL DOOR & HARDWARE - FAB116308E,Not Started,Mechanical Rm 3 - 1F -SUE-FAB116308,,,,,,,,,,2025-11-28 08:00,2025-12-04 17:00,,,2025-11-28 08:00,2025-12-04 17:00,2025-11-25 10:00,2025-12-02 10:00,40,40,0
FAB116308E-05,PAINT & PROTECT DOORS & FRAMES - FAB116308E,Not Started,Mechanical Rm 3 - 1F -SUE-FAB116308,,,,,,,,,,2026-02-16 08:00,2026-02-19 15:00,,,2026-02-16 08:00,2026-02-19 15:00,2025-12-02 10:00,2025-12-05 17:00,30,30,0
FAB116308G-02,SECAI ROUGH IN/SECURITY - FAB116308G,Complete,Mechanical Rm 3 - 1F -SUE-FAB116308,,,,,,,,,,2025-07-18 08:00,2025-07-18 17:00,2025-06-19 08:00,2025-06-19 16:00,2025-11-20 17:00,2025-11-20 17:00,2025-11-25 10:00,2025-11-25 10:00,0,8,100
FAB116308G-03,INSTALL DOOR FRAMES - FAB116308G,Complete,Mechanical Rm 3 - 1F -SUE-FAB116308,,,,,,,,,,2025-06-19 08:00,2025-06-19 17:00,2025-06-19 08:00,2025-06-19 17:00,2025-11-20 17:00,2025-11-20 17:00,2025-11-25 10:00,2025-11-25 10:00,0,8,100
FAB116308G-04,INSTALL DOOR & HARDWARE - FAB116308G,Active,Mechanical Rm 3 - 1F -SUE-FAB116308,,,,,,,,,,2025-08-27 08:00,2025-09-02 17:00,2025-08-27 08:00,,2025-11-21 08:00,2025-11-27 17:00,2025-11-25 10:00,2025-12-02 10:00,40,40,0
FAB116308G-05,PAINT & PROTECT DOORS & FRAMES - FAB116308G,Not Started,Mechanical Rm 3 - 1F -SUE-FAB116308,,,,,,,,,,2026-02-16 08:00,2026-02-19 15:00,,,2026-02-16 08:00,2026-02-19 15:00,2025-12-02 10:00,2025-12-05 17:00,30,30,0
FAB116308H-02,DOOR FRAME HANDED OVER TO SECAI ON 07/10 - FAB116308H,Complete,Mechanical Rm 3 - 1F -SUE-FAB116308,,,,,,,,,,2025-07-10 08:00,2025-07-10 17:00,2025-07-10 08:00,2025-07-10 17:00,2025-11-20 17:00,2025-11-20 17:00,2025-11-25 10:00,2025-11-25 10:00,0,8,100
FAB116308H-03,INSTALL DOOR FRAME BY SECAI - FAB116308H HANDED OVER ON 07/10,Complete,Mechanical Rm 3 - 1F -SUE-FAB116308,,,,,,,,,,2025-07-07 08:00,2025-08-08 17:00,2025-07-10 08:00,2025-10-03 17:00,2025-11-20 17:00,2025-11-20 17:00,2025-11-25 10:00,2025-11-25 10:00,0,200,100
FAB116308H-04,INSTALL DOOR & HARDWARE - FAB116308H,Active,Mechanical Rm 3 - 1F -SUE-FAB116308,,,,,,,,,,2025-10-15 08:00,2025-10-21 17:00,2025-10-15 08:00,,2025-11-21 08:00,2025-11-27 17:00,2025-11-25 10:00,2025-12-02 10:00,40,40,0
FAB116308H-05,PAINT & PROTECT DOORS & FRAMES - FAB116308H,Not Started,Mechanical Rm 3 - 1F -SUE-FAB116308,,,,,,,,,,2026-02-16 08:00,2026-02-19 15:00,,,2026-02-16 08:00,2026-02-19 15:00,2025-12-02 10:00,2025-12-05 17:00,30,30,0
FAB116308J-01,IMPACT - INSTALL/REWORK DRYWALL FRAMING AROUND DOORS - FAB116308J,Complete,Mechanical Rm 3 - 1F -SUE-FAB116308,,,,,,,,,,2025-08-11 08:00,2025-08-19 17:00,2025-08-11 08:00,2025-08-19 17:00,2025-11-20 17:00,2025-11-20 17:00,2025-11-25 10:00,2025-11-25 10:00,0,56,100
FAB116308J-02,SECAI ROUGH IN/SECURITY - FAB116308J,Complete,Mechanical Rm 3 - 1F -SUE-FAB116308,,,,,,,,,,2025-08-19 08:00,2025-08-19 17:00,2025-08-19 08:00,2025-08-19 17:00,2025-11-20 17:00,2025-11-20 17:00,2025-11-25 10:00,2025-11-25 10:00,0,8,100
FAB116308J-03,INSTALL DOOR FRAMES - FAB116308J,Complete,Mechanical Rm 3 - 1F -SUE-FAB116308,,,,,,,,,,2025-08-19 08:00,2025-08-19 17:00,2025-08-19 08:00,2025-08-19 17:00,2025-11-20 17:00,2025-11-20 17:00,2025-11-25 10:00,2025-11-25 10:00,0,8,100
FAB116308J-04,INSTALL DOOR & HARDWARE - FAB116308J,Active,Mechanical Rm 3 - 1F -SUE-FAB116308,,,,,,,,,,2025-10-15 08:00,2025-10-21 17:00,2025-10-15 08:00,,2025-11-21 08:00,2025-11-27 17:00,2025-11-25 10:00,2025-12-02 10:00,40,40,0
FAB116308J-05,PAINT & PROTECT DOORS & FRAMES - FAB116308J,Not Started,Mechanical Rm 3 - 1F -SUE-FAB116308,,,,,,,,,,2026-02-16 08:00,2026-02-19 15:00,,,2026-02-16 08:00,2026-02-19 15:00,2025-12-02 10:00,2025-12-05 17:00,30,30,0
FAB116308J-11,IMPACT - PROCUREMENT - REORDERED DOORS (JAMB DEPTH ISSUE),Complete,Mechanical Rm 3 - 1F -SUE-FAB116308,,,,,,,,,,2025-06-20 08:00,2025-08-14 17:00,2025-06-20 08:00,2025-06-30 17:00,2025-11-20 17:00,2025-11-20 17:00,2025-11-25 10:00,2025-11-25 10:00,0,320,100
FAB116308D-07,DOOR FRAME PAINT & 1ST COAT - FAB116308D,Complete,Mechanical Rm 3 - 1F -SUE-FAB116308,,,,,,,,,,2025-08-27 08:00,2025-08-29 17:00,2025-08-26 08:00,2025-08-26 17:00,2025-11-20 17:00,2025-11-20 17:00,2025-11-25 08:00,2025-11-25 08:00,0,24,100
FAB116308G-07,DOOR FRAME PAINT & 1ST COAT - FAB116308G,Complete,Mechanical Rm 3 - 1F -SUE-FAB116308,,,,,,,,,,2025-07-28 08:00,2025-07-30 17:00,2025-07-28 08:00,2025-07-30 17:00,2025-11-20 17:00,2025-11-20 17:00,2025-11-25 10:00,2025-11-25 10:00,0,24,100
FAB116308C-00,IMPACT - PATRIOT CLADDING HEADER FIX - FAB116308C,Complete,Mechanical Rm 3 - 1F -SUE-FAB116308,,,,,,,,,,2025-06-13 08:00,2025-07-03 17:00,2025-06-13 08:00,2025-08-05 17:00,2025-11-20 17:00,2025-11-20 17:00,2025-11-24 10:00,2025-11-24 10:00,0,120,100
FAB116308C-03,INSTALL DOOR FRAMES - FAB116308C,Complete,Mechanical Rm 3 - 1F -SUE-FAB116308,,,,,,,,,,2025-08-06 08:00,2025-08-06 17:00,2025-08-06 08:00,2025-08-06 17:00,2025-11-20 17:00,2025-11-20 17:00,2025-11-24 10:00,2025-11-24 10:00,0,8,100
FAB116308E-00,IMPACT - PATRIOT CLADDING HEADER FIX - FAB116308E,Complete,Mechanical Rm 3 - 1F -SUE-FAB116308,,,,,,,,,,2025-06-13 08:00,2025-07-03 17:00,2025-06-13 08:00,2025-08-05 17:00,2025-11-20 17:00,2025-11-20 17:00,2025-11-24 10:00,2025-11-24 10:00,0,120,100
FAB116308E-03,INSTALL DOOR FRAMES - FAB116308E,Complete,Mechanical Rm 3 - 1F -SUE-FAB116308,,,,,,,,,,2025-08-11 08:00,2025-08-11 17:00,2025-08-06 08:00,2025-08-06 17:00,2025-11-20 17:00,2025-11-20 17:00,2025-11-24 10:00,2025-11-24 10:00,0,8,100
FAB116308B-13,DOOR FRAME HANDED OVER TO SECAI ON 07/07- FAB116308B,Complete,Mechanical Rm 3 - 1F -SUE-FAB116308,,,,,,,,,,2025-07-07 08:00,2025-07-07 17:00,2025-07-07 08:00,2025-07-07 16:00,2025-11-20 17:00,2025-11-20 17:00,2025-11-25 10:00,2025-11-25 10:00,0,8,100
ZX-6700,SECAI TURNOVER FOR ACELERATION - Complete Drywall & Inspect - Fire Riser Rm 4-1F-SUE-FAB116309,Complete,Fire Riser Rm 4 - 1F -SUE-FAB116309,,,,,,,,,,2025-07-07 08:00,2025-07-11 17:00,2025-07-07 08:00,2025-07-07 17:00,2025-11-20 17:00,2025-11-20 17:00,2025-12-05 17:00,2025-12-05 17:00,0,40,100
ZX-6710,SECAI TURNOVER FOR ACELERATION - Complete Fire Caulk & Inspect - Fire Riser Rm 4-1F-SUE-FAB116309,Complete,Fire Riser Rm 4 - 1F -SUE-FAB116309,,,,,,,,,,2025-07-07 08:00,2025-07-08 17:00,2025-07-07 08:00,2025-07-07 17:00,2025-11-20 17:00,2025-11-20 17:00,2025-12-05 17:00,2025-12-05 17:00,0,16,100
ZX-6720,SECAI TURNOVER FOR ACELERATION - Complete Control Joint & Inspect - Fire Riser Rm 4-1F-SUE-FAB116309,Complete,Fire Riser Rm 4 - 1F -SUE-FAB116309,,,,,,,,,,2025-07-07 08:00,2025-07-08 17:00,2025-07-07 08:00,2025-07-07 17:00,2025-11-20 17:00,2025-11-20 17:00,2025-12-05 17:00,2025-12-05 17:00,0,16,100
FAB116309A-02,SECAI ROUGH IN/SECURITY - FAB116309A,Complete,Fire Riser Rm 4 - 1F -SUE-FAB116309,,,,,,,,,,2025-06-20 08:00,2025-06-20 17:00,2025-06-12 08:00,2025-06-12 16:00,2025-11-20 17:00,2025-11-20 17:00,2025-11-27 08:00,2025-11-27 08:00,0,8,100
FAB116309A-03,INSTALL DOOR FRAMES - FAB116309A,Complete,Fire Riser Rm 4 - 1F -SUE-FAB116309,,,,,,,,,,2025-06-20 08:00,2025-06-20 17:00,2025-06-12 08:00,2025-06-12 16:00,2025-11-20 17:00,2025-11-20 17:00,2025-11-27 08:00,2025-11-27 08:00,0,8,100
FAB116309A-04,INSTALL DOOR & HARDWARE - FAB116309A,Active,Fire Riser Rm 4 - 1F -SUE-FAB116309,,,,,,,,,,2025-08-08 08:00,2025-08-14 17:00,2025-08-08 08:00,,2025-11-21 08:00,2025-11-27 17:00,2025-11-27 08:00,2025-12-03 17:00,40,40,0
FAB116309A-05,PAINT & PROTECT DOORS & FRAMES - FAB116309A,Not Started,Fire Riser Rm 4 - 1F -SUE-FAB116309,,,,,,,,,,2026-02-16 08:00,2026-02-17 17:00,,,2026-02-16 08:00,2026-02-17 17:00,2025-12-04 08:00,2025-12-05 17:00,16,16,0
FAB116309A-07,DOOR FRAME PAINT & 1ST COAT - FAB116309A,Complete,Fire Riser Rm 4 - 1F -SUE-FAB116309,,,,,,,,,,2025-08-05 08:00,2025-08-07 17:00,2025-08-05 08:00,2025-08-07 17:00,2025-11-20 17:00,2025-11-20 17:00,2025-11-27 08:00,2025-11-27 08:00,0,24,100
ZX-6880,Complete Drywall & Inspect - Toilet (W)-1-1F-SUE-FAB116402 WALL THIKNESS ISSUE (NON RATED WALLS),Complete,Toilet (W) 1 - 1F -SUE-FAB116402,,,,,,,,,,2025-06-10 08:00,2025-06-18 17:00,2025-06-10 08:00,2025-08-26 17:00,2025-11-20 17:00,2025-11-20 17:00,2025-11-25 10:00,2025-11-25 10:00,0,56,100
FAB116402A-03,INSTALL DOOR FRAMES - FAB116402A,Complete,Toilet (W) 1 - 1F -SUE-FAB116402,,,,,,,,,,2025-09-19 08:00,2025-09-19 17:00,2025-09-20 08:00,2025-09-20 17:00,2025-11-20 17:00,2025-11-20 17:00,2025-11-25 10:00,2025-11-25 10:00,0,8,100
FAB116402A-04,INSTALL DOOR & HARDWARE - FAB116402A,Active,Toilet (W) 1 - 1F -SUE-FAB116402,,,,,,,,,,2025-10-31 08:00,2025-11-06 17:00,2025-10-31 08:00,,2025-11-21 08:00,2025-11-27 17:00,2025-11-25 10:00,2025-12-02 10:00,40,40,0
FAB116402A-05,PAINT & PROTECT DOORS & FRAMES - FAB116402A,Not Started,Toilet (W) 1 - 1F -SUE-FAB116402,,,,,,,,,,2026-02-16 08:00,2026-02-19 15:00,,,2026-02-16 08:00,2026-02-19 15:00,2025-12-02 10:00,2025-12-05 17:00,30,30,0
ZX-18720,IMPACT SECAI MEP WORK - Toilet (W)-1-1F-SUE-FAB116402,Complete,Toilet (W) 1 - 1F -SUE-FAB116402,,,,,,,,,,2025-06-13 08:00,2025-06-26 17:00,2025-06-13 08:00,2025-06-27 16:00,2025-11-20 17:00,2025-11-20 17:00,2025-11-25 10:00,2025-11-25 10:00,0,80,100
ZX-18930,IMPACT - DRAWINGS NOT UPDATED /WRONG CURB SIZE - Toilet (W)-1-1F-SUE-FAB116402,Complete,Toilet (W) 1 - 1F -SUE-FAB116402,,,,,,,,,,2025-06-23 08:00,2025-07-11 17:00,2025-06-23 08:00,2025-07-02 16:00,2025-11-20 17:00,2025-11-20 17:00,2025-11-25 10:00,2025-11-25 10:00,0,120,100
ZX-7180,Complete Drywall & Inspect - Toilet(M)-1-1F-SUE-FAB116404 WALL THIKNESS ISSUE (NON RATED WALLS),Complete,Toilet(M) 1 - 1F -SUE-FAB116404,,,,,,,,,,2025-06-27 08:00,2025-07-07 17:00,2025-06-27 08:00,2025-08-26 08:00,2025-11-20 17:00,2025-11-20 17:00,2025-11-25 10:00,2025-11-25 10:00,0,56,100
FAB116404A-01,IMPACT - INSTALL/REWORK DRYWALL FRAMING AROUND DOORS - FAB116404A,Complete,Toilet(M) 1 - 1F -SUE-FAB116404,,,,,,,,,,2025-08-01 08:00,2025-08-11 17:00,2025-08-01 08:00,2025-08-08 17:00,2025-11-20 17:00,2025-11-20 17:00,2025-11-25 10:00,2025-11-25 10:00,0,56,100
FAB116404A-02,SECAI ROUGH IN/SECURITY - FAB116404A,Complete,Toilet(M) 1 - 1F -SUE-FAB116404,,,,,,,,,,2025-08-08 08:00,2025-08-08 17:00,2025-08-09 08:00,2025-08-09 17:00,2025-11-20 17:00,2025-11-20 17:00,2025-11-25 10:00,2025-11-25 10:00,0,8,100
FAB116404A-03,INSTALL DOOR FRAMES - FAB116404A,Complete,Toilet(M) 1 - 1F -SUE-FAB116404,,,,,,,,,,2025-08-08 08:00,2025-08-08 17:00,2025-08-09 08:00,2025-08-09 17:00,2025-11-20 17:00,2025-11-20 17:00,2025-11-25 10:00,2025-11-25 10:00,0,8,100
FAB116404A-04,INSTALL DOOR & HARDWARE - FAB116404A,Active,Toilet(M) 1 - 1F -SUE-FAB116404,,,,,,,,,,2025-09-08 08:00,2025-09-12 17:00,2025-09-08 08:00,,2025-11-21 08:00,2025-11-27 17:00,2025-11-25 10:00,2025-12-02 10:00,40,40,0
FAB116404A-05,PAINT & PROTECT DOORS & FRAMES - FAB116404A,Not Started,Toilet(M) 1 - 1F -SUE-FAB116404,,,,,,,,,,2026-02-16 08:00,2026-02-19 15:00,,,2026-02-16 08:00,2026-02-19 15:00,2025-12-02 10:00,2025-12-05 17:00,30,30,0
ZX-18440,IMPACT - MEP INSPECTIONS - Toilet(M)-1-1F-SUE-FAB116404,Complete,Toilet(M) 1 - 1F -SUE-FAB116404,,,,,,,,,,2025-06-10 08:00,2025-06-23 17:00,2025-06-10 08:00,2025-06-19 16:00,2025-11-20 17:00,2025-11-20 17:00,2025-11-25 10:00,2025-11-25 10:00,0,80,100
ZX-18940,IMPACT - DRAWINGS NOT UPDATED /WRONG CURB SIZE - Toilet(M)-1-1F-SUE-FAB116404,Complete,Toilet(M) 1 - 1F -SUE-FAB116404,,,,,,,,,,2025-06-30 08:00,2025-07-18 17:00,2025-06-30 08:00,2025-07-02 16:00,2025-11-20 17:00,2025-11-20 17:00,2025-11-25 10:00,2025-11-25 10:00,0,120,100
ZX-7480,Complete Drywall & Inspect - Toilet Vestibule - 1-1F-SUE-FAB116403 WALL THIKNESS ISSUE NON RATED WALLS,Complete,Toilet Vestibule 1 - 1F -SUE-FAB116403,,,,,,,,,,2025-08-11 08:00,2025-08-19 17:00,2025-08-11 08:00,2025-09-22 17:00,2025-11-20 17:00,2025-11-20 17:00,2025-12-05 17:00,2025-12-05 17:00,0,56,100
FAB116403A-03,INSTALL DOOR FRAMES - FAB116403A,Complete,Toilet Vestibule 1 - 1F -SUE-FAB116403,,,,,,,,,,2025-06-20 08:00,2025-06-20 17:00,2025-06-09 08:00,2025-06-09 16:00,2025-11-20 17:00,2025-11-20 17:00,2025-11-25 10:00,2025-11-25 10:00,0,8,100
FAB116403A-02,SECAI ROUGH IN/SECURITY - FAB116403A,Complete,Toilet Vestibule 1 - 1F -SUE-FAB116403,,,,,,,,,,2025-06-20 08:00,2025-06-20 17:00,2025-06-09 08:00,2025-06-09 16:00,2025-11-20 17:00,2025-11-20 17:00,2025-11-25 10:00,2025-11-25 10:00,0,8,100
FAB116403A-07,DOOR FRAME PAINT & 1ST COAT - FAB116403A,Complete,Toilet Vestibule 1 - 1F -SUE-FAB116403,,,,,,,,,,2025-08-27 08:00,2025-08-29 17:00,2025-08-27 08:00,2025-08-29 17:00,2025-11-20 17:00,2025-11-20 17:00,2025-11-25 10:00,2025-11-25 10:00,0,24,100
FAB116403A-04,INSTALL DOOR & HARDWARE - FAB116403A,Active,Toilet Vestibule 1 - 1F -SUE-FAB116403,,,,,,,,,,2025-09-02 08:00,2025-09-08 17:00,2025-09-02 08:00,,2025-11-21 08:00,2025-11-27 17:00,2025-11-25 10:00,2025-12-02 10:00,40,40,0
FAB116403A-05,PAINT & PROTECT DOORS & FRAMES - FAB116403A,Not Started,Toilet Vestibule 1 - 1F -SUE-FAB116403,,,,,,,,,,2026-02-16 08:00,2026-02-19 15:00,,,2026-02-16 08:00,2026-02-19 15:00,2025-12-02 10:00,2025-12-05 17:00,30,30,0
ZX-18450,IMPACT - MEP INSPECTIONS -Toilet Vestibule - 1-1F-SUE-FAB116403,Complete,Toilet Vestibule 1 - 1F -SUE-FAB116403,,,,,,,,,,2025-06-10 08:00,2025-06-23 17:00,2025-06-10 08:00,2025-06-19 16:00,2025-11-20 17:00,2025-11-20 17:00,2025-12-05 17:00,2025-12-05 17:00,0,80,100
ZX-18950,IMPACT - DRAWINGS NOT UPDATED /WRONG CURB SIZE - Toilet Vestibule - 1-1F-SUE-FAB116403,Complete,Toilet Vestibule 1 - 1F -SUE-FAB116403,,,,,,,,,,2025-06-30 08:00,2025-07-18 17:00,2025-06-30 08:00,2025-08-08 17:00,2025-11-20 17:00,2025-11-20 17:00,2025-12-05 17:00,2025-12-05 17:00,0,120,100
ZX-7030,Complete Drywall & Inspect - Janitor Rm 1-1F-SUE-FAB116405,Complete,Janitor Rm 1 - 1F -SUE-FAB116405,,,,,,,,,,2025-08-27 08:00,2025-08-28 17:00,2025-08-27 08:00,2025-08-28 17:00,2025-11-20 17:00,2025-11-20 17:00,2025-11-25 10:00,2025-11-25 10:00,0,16,100
FAB116405A-01,IMPACT - INSTALL/REWORK DRYWALL FRAMING AROUND DOORS - FAB116405A,Complete,Janitor Rm 1 - 1F -SUE-FAB116405,,,,,,,,,,2025-08-11 08:00,2025-08-19 17:00,2025-08-11 08:00,2025-08-12 17:00,2025-11-20 17:00,2025-11-20 17:00,2025-11-25 10:00,2025-11-25 10:00,0,56,100
FAB116405A-02,SECAI ROUGH IN/SECURITY - FAB116405A,Complete,Janitor Rm 1 - 1F -SUE-FAB116405,,,,,,,,,,2025-08-12 08:00,2025-08-12 17:00,2025-08-12 08:00,2025-08-12 17:00,2025-11-20 17:00,2025-11-20 17:00,2025-11-25 10:00,2025-11-25 10:00,0,8,100
FAB116405A-03,INSTALL DOOR FRAMES - FAB116405A,Complete,Janitor Rm 1 - 1F -SUE-FAB116405,,,,,,,,,,2025-08-12 08:00,2025-08-12 17:00,2025-08-12 08:00,2025-08-12 17:00,2025-11-20 17:00,2025-11-20 17:00,2025-11-25 10:00,2025-11-25 10:00,0,8,100
FAB116405A-04,INSTALL DOOR & HARDWARE - FAB116405A,Active,Janitor Rm 1 - 1F -SUE-FAB116405,,,,,,,,,,2025-10-14 08:00,2025-10-20 17:00,2025-10-14 08:00,,2025-11-21 08:00,2025-11-27 17:00,2025-11-25 10:00,2025-12-02 10:00,40,40,0
FAB116405A-05,PAINT & PROTECT DOORS & FRAMES - FAB116405A,Not Started,Janitor Rm 1 - 1F -SUE-FAB116405,,,,,,,,,,2026-02-16 08:00,2026-02-19 15:00,,,2026-02-16 08:00,2026-02-19 15:00,2025-12-02 10:00,2025-12-05 17:00,30,30,0
FAB116405A-11,IMPACT - SECAI - MEP SCAFFOLD,Complete,Janitor Rm 1 - 1F -SUE-FAB116405,,,,,,,,,,2025-07-07 08:00,2025-07-15 10:00,2025-07-07 08:00,2025-08-11 10:00,2025-11-20 17:00,2025-11-20 17:00,2025-11-25 10:00,2025-11-25 10:00,0,50,100
ZX-7330,Complete Drywall & Inspect CEILING - Maint Rm 1-1F-SUE-FAB116406,Complete,Maint Rm 1 - 1F -SUE-FAB116406,,,,,,,,,,2025-08-22 08:00,2025-08-28 17:00,2025-08-22 08:00,2025-08-28 17:00,2025-11-20 17:00,2025-11-20 17:00,2025-11-25 10:00,2025-11-25 10:00,0,40,100
FAB116406A-01,IMPACT - INSTALL/REWORK DRYWALL FRAMING AROUND DOORS - FAB116406A,Complete,Maint Rm 1 - 1F -SUE-FAB116406,,,,,,,,,,2025-03-17 08:00,2025-03-25 17:00,2025-03-17 08:00,2025-03-25 17:00,2025-11-20 17:00,2025-11-20 17:00,2025-11-25 10:00,2025-11-25 10:00,0,56,100
FAB116406A-02,SECAI ROUGH IN/SECURITY - FAB116406A,Complete,Maint Rm 1 - 1F -SUE-FAB116406,,,,,,,,,,2025-03-25 08:00,2025-03-25 17:00,2025-03-25 08:00,2025-03-25 17:00,2025-11-20 17:00,2025-11-20 17:00,2025-11-25 10:00,2025-11-25 10:00,0,8,100
FAB116406A-03,INSTALL DOOR FRAMES - FAB116406A,Complete,Maint Rm 1 - 1F -SUE-FAB116406,,,,,,,,,,2025-09-19 13:00,2025-09-22 12:00,2025-03-25 00:00,2025-03-25 16:00,2025-11-20 17:00,2025-11-20 17:00,2025-11-25 10:00,2025-11-25 10:00,0,8,100
FAB116406A-04,INSTALL DOOR & HARDWARE - FAB116406A,Not Started,Maint Rm 1 - 1F -SUE-FAB116406,,,,,,,,,,2025-11-28 08:00,2025-12-04 17:00,,,2025-11-28 08:00,2025-12-04 17:00,2025-11-25 10:00,2025-12-02 10:00,40,40,0
FAB116406A-05,PAINT & PROTECT DOORS & FRAMES -  FAB116406A,Not Started,Maint Rm 1 - 1F -SUE-FAB116406,,,,,,,,,,2026-02-16 08:00,2026-02-19 15:00,,,2026-02-16 08:00,2026-02-19 15:00,2025-12-02 10:00,2025-12-05 17:00,30,30,0
ZX-7630,SECAI TURNOVER FOR ACELERATION - Drywall & Inspect - Exit Passageway 19-1F-FAB116407 - BAKER/DESCOPE,Complete,Exit Passageway 19 - 1F -SUE-FAB116407,,,,,,,,,,2025-09-24 10:00,2025-09-24 10:00,2025-06-10 10:00,2025-06-10 10:00,2025-11-20 17:00,2025-11-20 17:00,2025-11-25 10:00,2025-11-25 10:00,0,0,100
ZX-7640,SECAI TURNOVER FOR ACELERATION - Fire Caulk & Inspect - Exit Passageway 19-1F-FAB116407 - BAKER/DESCOPE,Complete,Exit Passageway 19 - 1F -SUE-FAB116407,,,,,,,,,,2025-10-08 10:00,2025-10-08 10:00,2025-06-10 10:00,2025-06-10 10:00,2025-11-20 17:00,2025-11-20 17:00,2025-12-05 17:00,2025-12-05 17:00,0,0,100
ZX-7650,SECAI TURNOVER FOR ACELERATION - Control Joint & Inspect - Exit Passageway 19-1F-FAB116407 - BAKER/DESCOPE,Complete,Exit Passageway 19 - 1F -SUE-FAB116407,,,,,,,,,,2025-10-08 10:00,2025-10-08 10:00,2025-06-10 10:00,2025-06-10 10:00,2025-11-20 17:00,2025-11-20 17:00,2025-11-25 10:00,2025-11-25 10:00,0,0,100
FAB116407A-03,INSTALL DOOR FRAMES - FAB116407A,Complete,Exit Passageway 19 - 1F -SUE-FAB116407,,,,,,,,,,2025-10-21 13:00,2025-10-22 12:00,2025-04-02 00:00,2025-04-02 16:00,2025-11-20 17:00,2025-11-20 17:00,2025-11-25 10:00,2025-11-25 10:00,0,8,100
FAB116407A-04,INSTALL DOOR & HARDWARE - FAB116407A,Active,Exit Passageway 19 - 1F -SUE-FAB116407,,,,,,,,,,2025-09-24 08:00,2025-09-30 17:00,2025-09-24 08:00,,2025-11-21 08:00,2025-11-27 17:00,2025-11-25 10:00,2025-12-02 10:00,40,40,0
FAB116407A-05,PAINT & PROTECT DOORS & FRAMES -  FAB116407A,Not Started,Exit Passageway 19 - 1F -SUE-FAB116407,,,,,,,,,,2026-02-16 08:00,2026-02-19 15:00,,,2026-02-16 08:00,2026-02-19 15:00,2025-12-02 10:00,2025-12-05 17:00,30,30,0
FAB116407B-03,INSTALL DOOR FRAMES - FAB116407B,Complete,Exit Passageway 19 - 1F -SUE-FAB116407,,,,,,,,,,2025-10-21 13:00,2025-10-22 12:00,2025-04-02 00:00,2025-04-02 16:00,2025-11-20 17:00,2025-11-20 17:00,2025-11-25 10:00,2025-11-25 10:00,0,8,100
FAB116407B-04,INSTALL DOOR & HARDWARE - FAB116407B,Active,Exit Passageway 19 - 1F -SUE-FAB116407,,,,,,,,,,2025-10-14 08:00,2025-10-20 17:00,2025-10-14 08:00,,2025-11-21 08:00,2025-11-27 17:00,2025-11-25 10:00,2025-12-02 10:00,40,40,0
FAB116407B-05,PAINT & PROTECT DOORS & FRAMES -  FAB116407B,Not Started,Exit Passageway 19 - 1F -SUE-FAB116407,,,,,,,,,,2026-02-16 08:00,2026-02-19 15:00,,,2026-02-16 08:00,2026-02-19 15:00,2025-12-02 10:00,2025-12-05 17:00,30,30,0
FAB116414A-04,INSTALL DOOR & HARDWARE - FAB116414A,Active,Exit Passageway 19 - 1F -SUE-FAB116407,,,,,,,,,,2025-09-19 08:00,2025-09-25 17:00,2025-09-19 08:00,,2025-11-21 08:00,2025-11-27 17:00,2025-11-25 10:00,2025-12-02 10:00,40,40,0
FAB116414A-05,PAINT & PROTECT DOORS & FRAMES -  FAB116414A,Not Started,Exit Passageway 19 - 1F -SUE-FAB116407,,,,,,,,,,2026-02-16 08:00,2026-02-19 15:00,,,2026-02-16 08:00,2026-02-19 15:00,2025-12-02 10:00,2025-12-05 17:00,30,30,0
FAB116414B-04,INSTALL DOOR & HARDWARE - FAB116414B,Active,Exit Passageway 19 - 1F -SUE-FAB116407,,,,,,,,,,2025-11-12 08:00,2025-11-18 17:00,2025-11-12 08:00,,2025-11-21 08:00,2025-11-27 17:00,2025-11-25 10:00,2025-12-02 10:00,40,40,0
FAB116414B-05,PAINT & PROTECT DOORS & FRAMES -  FAB116414B,Not Started,Exit Passageway 19 - 1F -SUE-FAB116407,,,,,,,,,,2026-02-16 08:00,2026-02-19 15:00,,,2026-02-16 08:00,2026-02-19 15:00,2025-12-02 10:00,2025-12-05 17:00,30,30,0
ZX-7150,SECAI TURNOVER FOR ACELERATION - Complete Drywall & Inspect - Fire Riser Rm 5-1F-SUE-FAB116507,Complete,Fire Riser Rm 5 - 1F -SUE-FAB116507,,,,,,,,,,2025-07-07 08:00,2025-07-11 17:00,2025-07-07 08:00,2025-07-07 17:00,2025-11-20 17:00,2025-11-20 17:00,2025-11-24 10:00,2025-11-24 10:00,0,40,100
ZX-7160,SECAI TURNOVER FOR ACELERATION - Complete Fire Caulk & Inspect - Fire Riser Rm 5-1F-SUE-FAB116507,Complete,Fire Riser Rm 5 - 1F -SUE-FAB116507,,,,,,,,,,2025-07-07 08:00,2025-07-08 17:00,2025-07-07 08:00,2025-07-07 17:00,2025-11-20 17:00,2025-11-20 17:00,2025-12-05 17:00,2025-12-05 17:00,0,16,100
ZX-7170,SECAI TURNOVER FOR ACELERATION - Complete Control Joint & Inspect - Fire Riser Rm 5-1F-SUE-FAB116507,Complete,Fire Riser Rm 5 - 1F -SUE-FAB116507,,,,,,,,,,2025-07-07 08:00,2025-07-08 17:00,2025-07-07 08:00,2025-07-07 17:00,2025-11-20 17:00,2025-11-20 17:00,2025-12-05 17:00,2025-12-05 17:00,0,16,100
FAB116507A-02,SECAI ROUGH IN/SECURITY - FAB116507A,Complete,Fire Riser Rm 5 - 1F -SUE-FAB116507,,,,,,,,,,2025-06-20 08:00,2025-06-20 17:00,2025-03-14 08:00,2025-03-14 16:00,2025-11-20 17:00,2025-11-20 17:00,2025-11-27 08:00,2025-11-27 08:00,0,8,100
FAB116507A-03,INSTALL DOOR FRAMES - FAB116507A,Complete,Fire Riser Rm 5 - 1F -SUE-FAB116507,,,,,,,,,,2025-09-05 13:00,2025-09-08 12:00,2025-03-14 00:00,2025-03-14 16:00,2025-11-20 17:00,2025-11-20 17:00,2025-11-27 08:00,2025-11-27 08:00,0,8,100
FAB116507A-04,INSTALL DOOR & HARDWARE - FAB116507A,Active,Fire Riser Rm 5 - 1F -SUE-FAB116507,,,,,,,,,,2025-08-12 08:00,2025-08-18 17:00,2025-08-12 08:00,,2025-11-21 08:00,2025-11-27 17:00,2025-11-27 08:00,2025-12-03 17:00,40,40,0
FAB116507A-05,PAINT & PROTECT DOORS & FRAMES -  FAB116507A,Not Started,Fire Riser Rm 5 - 1F -SUE-FAB116507,,,,,,,,,,2026-02-16 08:00,2026-02-17 17:00,,,2026-02-16 08:00,2026-02-17 17:00,2025-12-04 08:00,2025-12-05 17:00,16,16,0
FAB116507A-07,DOOR FRAME PAINT & 1ST COAT - FAB116507A,Complete,Fire Riser Rm 5 - 1F -SUE-FAB116507,,,,,,,,,,2025-08-06 08:00,2025-08-08 17:00,2025-08-06 08:00,2025-08-08 17:00,2025-11-20 17:00,2025-11-20 17:00,2025-11-27 08:00,2025-11-27 08:00,0,24,100
ZX-7450,Complete Drywall & Inspect - Wafer I/O -1F-SUE-FAB116501,Complete,Wafer I/O - 1F -SUE-FAB116501,,,,,,,,,,2025-08-01 08:00,2025-08-07 17:00,2025-08-01 08:00,2025-08-07 17:00,2025-11-20 17:00,2025-11-20 17:00,2025-11-24 10:00,2025-11-24 10:00,0,40,100
ZX-7460,Complete Fire Caulk & Inspect - Wafer I/O -1F-SUE-FAB116501,Complete,Wafer I/O - 1F -SUE-FAB116501,,,,,,,,,,2025-08-06 08:00,2025-08-07 17:00,2025-08-06 08:00,2025-08-07 17:00,2025-11-20 17:00,2025-11-20 17:00,2025-12-05 17:00,2025-12-05 17:00,0,16,100
ZX-7470,Complete Control Joint & Inspect - Wafer I/O -1F-SUE-FAB116501,Complete,Wafer I/O - 1F -SUE-FAB116501,,,,,,,,,,2025-08-06 08:00,2025-08-07 17:00,2025-08-06 08:00,2025-08-07 17:00,2025-11-20 17:00,2025-11-20 17:00,2025-11-25 10:00,2025-11-25 10:00,0,16,100
FAB116414C-01,IMPACT - INSTALL/REWORK DRYWALL FRAMING AROUND DOORS - FAB116414C,Complete,Wafer I/O - 1F -SUE-FAB116501,,,,,,,,,,2025-04-01 08:00,2025-04-09 17:00,2025-04-01 08:00,2025-04-07 17:00,2025-11-20 17:00,2025-11-20 17:00,2025-11-25 10:00,2025-11-25 10:00,0,56,100
FAB116414C-02,SECAI ROUGH IN/SECURITY - FAB116414C,Complete,Wafer I/O - 1F -SUE-FAB116501,,,,,,,,,,2025-04-07 08:00,2025-04-07 17:00,2025-04-07 08:00,2025-04-07 17:00,2025-11-20 17:00,2025-11-20 17:00,2025-11-25 10:00,2025-11-25 10:00,0,8,100
FAB116414C-03,INSTALL DOOR FRAMES - FAB116414C,Complete,Wafer I/O - 1F -SUE-FAB116501,,,,,,,,,,2025-04-07 08:00,2025-04-07 17:00,2025-04-07 08:00,2025-04-07 17:00,2025-11-20 17:00,2025-11-20 17:00,2025-11-25 10:00,2025-11-25 10:00,0,8,100
FAB116414C-04,INSTALL DOOR & HARDWARE - FAB116414C,Active,Wafer I/O - 1F -SUE-FAB116501,,,,,,,,,,2025-09-25 08:00,2025-10-01 17:00,2025-09-25 08:00,,2025-11-21 08:00,2025-11-27 17:00,2025-11-25 10:00,2025-12-02 10:00,40,40,0
FAB116414C-05,PAINT & PROTECT DOORS & FRAMES - FAB116414C,Not Started,Wafer I/O - 1F -SUE-FAB116501,,,,,,,,,,2026-02-16 08:00,2026-02-19 15:00,,,2026-02-16 08:00,2026-02-19 15:00,2025-12-02 10:00,2025-12-05 17:00,30,30,0
FAB116501A-00,SECAI SCP WALL FINISH - FAB116501A,Complete,Wafer I/O - 1F -SUE-FAB116501,,,,,,,,,,2025-10-29 08:00,2025-10-29 17:00,2025-08-06 08:00,2025-10-29 17:00,2025-11-20 17:00,2025-11-20 17:00,2025-11-26 08:00,2025-11-26 08:00,0,8,100
FAB116501A-01,DOOR ASSEMBLY - FAB116501A,Complete,Wafer I/O - 1F -SUE-FAB116501,,,,,,,,,,2025-10-29 08:00,2025-10-30 17:00,2025-10-29 08:00,2025-10-30 17:00,2025-11-20 17:00,2025-11-20 17:00,2025-12-02 08:00,2025-12-02 08:00,0,16,100
FAB116501A-02,DOOR PACKAGE INSTALL - FAB116501A,Complete,Wafer I/O - 1F -SUE-FAB116501,,,,,,,,,,2025-10-29 08:00,2025-10-30 17:00,2025-10-29 08:00,2025-10-30 17:00,2025-11-20 17:00,2025-11-20 17:00,2025-12-05 17:00,2025-12-05 17:00,0,16,100
ZX-6940,Complete Drywall & Inspect - Duct Shaft - 1F-SUE-FAB116413,Complete,Duct Shaft - 1F -SUE-FAB116413,,,,,,,,,,2025-08-29 08:00,2025-09-04 17:00,2025-08-29 08:00,2025-09-04 17:00,2025-11-20 17:00,2025-11-20 17:00,2025-11-18 10:00,2025-11-18 10:00,0,40,100
ZX-6950,Complete Fire Caulk & Inspect - Duct Shaft - 1F-SUE-FAB116413,Not Started,Duct Shaft - 1F -SUE-FAB116413,,,,,,,,,,2025-12-05 08:00,2025-12-05 17:00,,,2025-12-05 08:00,2025-12-05 17:00,2025-12-05 08:00,2025-12-05 17:00,8,8,0
FAB116413A-01,IMPACT - INSTALL/REWORK DRYWALL FRAMING AROUND DOORS - FAB116413A,Complete,Duct Shaft - 1F -SUE-FAB116413,,,,,,,,,,2025-09-26 08:00,2025-09-26 17:00,2025-09-26 08:00,2025-09-26 17:00,2025-11-20 17:00,2025-11-20 17:00,2025-11-18 10:00,2025-11-18 10:00,0,8,100
FAB116413A-02,SECAI ROUGH IN/SECURITY - FAB116413A,Complete,Duct Shaft - 1F -SUE-FAB116413,,,,,,,,,,2025-09-26 08:00,2025-09-26 17:00,2025-09-26 08:00,2025-09-26 17:00,2025-11-20 17:00,2025-11-20 17:00,2025-11-18 10:00,2025-11-18 10:00,0,8,100
FAB116413A-03,INSTALL DOOR FRAMES - FAB116413A,Complete,Duct Shaft - 1F -SUE-FAB116413,,,,,,,,,,2025-09-26 08:00,2025-09-26 17:00,2025-09-27 08:00,2025-09-27 17:00,2025-11-20 17:00,2025-11-20 17:00,2025-11-18 10:00,2025-11-18 10:00,0,8,100
FAB116413A-04,INSTALL DOOR & HARDWARE - FAB116413A,Not Started,Duct Shaft - 1F -SUE-FAB116413,,,,,,,,,,2025-11-28 08:00,2025-12-04 17:00,,,2025-11-28 08:00,2025-12-04 17:00,2025-11-25 10:00,2025-12-02 10:00,40,40,0
FAB116413A-05,PAINT & PROTECT DOORS & FRAMES -  FAB116413A,Not Started,Duct Shaft - 1F -SUE-FAB116413,,,,,,,,,,2026-02-16 08:00,2026-02-19 15:00,,,2026-02-16 08:00,2026-02-19 15:00,2025-12-02 10:00,2025-12-05 17:00,30,30,0
FAB116413A-11,IMPACT - PROCUREMENT - NEW WALL THICKNESS ISSUE - 116413A,Complete,Duct Shaft - 1F -SUE-FAB116413,,,,,,,,,,2025-06-09 08:00,2025-08-20 17:00,2025-06-09 08:00,2025-09-25 17:00,2025-11-20 17:00,2025-11-20 17:00,2025-11-18 10:00,2025-11-18 10:00,0,424,100
FAB116412A-01,IMPACT - INSTALL/REWORK DRYWALL FRAMING AROUND DOORS - FAB116412A,Complete,Duct Shaft - 1F -SUE-FAB116413,,,,,,,,,,2025-03-24 08:00,2025-04-01 17:00,2025-03-24 08:00,2025-04-01 17:00,2025-11-20 17:00,2025-11-20 17:00,2025-11-28 08:00,2025-11-28 08:00,0,56,100
FAB116412A-02,SECAI ROUGH IN/SECURITY - FAB116412A,Complete,Duct Shaft - 1F -SUE-FAB116413,,,,,,,,,,2025-04-01 08:00,2025-04-01 17:00,2025-04-01 08:00,2025-04-01 17:00,2025-11-20 17:00,2025-11-20 17:00,2025-11-28 08:00,2025-11-28 08:00,0,8,100
FAB116412A-03,INSTALL DOOR FRAMES - FAB116412A,Complete,Duct Shaft - 1F -SUE-FAB116413,,,,,,,,,,2025-04-01 08:00,2025-04-01 17:00,2025-04-01 08:00,2025-04-01 17:00,2025-11-20 17:00,2025-11-20 17:00,2025-11-28 08:00,2025-11-28 08:00,0,8,100
FAB116412A-04,INSTALL DOOR & HARDWARE - FAB116412A,Active,Duct Shaft - 1F -SUE-FAB116413,,,,,,,,,,2025-07-10 08:00,2025-07-16 17:00,2025-07-10 08:00,,2025-11-21 08:00,2025-11-27 17:00,2025-11-28 08:00,2025-12-04 17:00,40,40,0
FAB116412A-05,PAINT & PROTECT DOORS & FRAMES -  FAB116412A,Not Started,Duct Shaft - 1F -SUE-FAB116413,,,,,,,,,,2026-02-16 08:00,2026-02-16 17:00,,,2026-02-16 08:00,2026-02-16 17:00,2025-12-05 08:00,2025-12-05 17:00,8,8,0
ZX-7240,Complete Drywall & Inspect - Elevator #19-1F-1FAB-EL19,Complete,Elevator 19 - 1F -SUE-FAB1-EL19,,,,,,,,,,2025-05-16 08:00,2025-05-29 17:00,2025-05-16 08:00,2025-06-26 16:00,2025-11-20 17:00,2025-11-20 17:00,2025-11-25 10:00,2025-11-25 10:00,0,80,100
ZX-7250,Complete Fire Caulk & Inspect - Elevator #19-1F-1FAB-EL19,Complete,Elevator 19 - 1F -SUE-FAB1-EL19,,,,,,,,,,2025-07-08 08:00,2025-07-09 17:00,2025-06-27 08:00,2025-06-30 16:00,2025-11-20 17:00,2025-11-20 17:00,2025-12-05 17:00,2025-12-05 17:00,0,16,100
ZX-7260,Complete Control Joint & Inspect - Elevator #19 - 1F-1FAB-EL19,Complete,Elevator 19 - 1F -SUE-FAB1-EL19,,,,,,,,,,2025-07-03 08:00,2025-07-04 17:00,2025-06-27 08:00,2025-06-30 16:00,2025-11-20 17:00,2025-11-20 17:00,2025-11-25 10:00,2025-11-25 10:00,0,16,100
ZX-7540,Complete Drywall & Inspect - Elevator Mech Rm #19 - FAB116526,Complete,Elevator Mech.Rm 19 - 1F -SUE-FAB116526,,,,,,,,,,2025-06-20 08:00,2025-07-03 17:00,2025-06-13 08:00,2025-09-03 17:00,2025-11-20 17:00,2025-11-20 17:00,2025-11-25 10:00,2025-11-25 10:00,0,80,100
ZX-7550,Complete Fire Caulk & Inspect - Elevator Mech Rm #19 - FAB116526,Complete,Elevator Mech.Rm 19 - 1F -SUE-FAB116526,,,,,,,,,,2025-09-25 08:00,2025-09-26 17:00,2025-09-25 08:00,2025-09-26 17:00,2025-11-20 17:00,2025-11-20 17:00,2025-12-05 17:00,2025-12-05 17:00,0,16,100
ZX-7560,Complete Control Joint & Inspect - Elevator Mech Rm #19 - FAB116526,Complete,Elevator Mech.Rm 19 - 1F -SUE-FAB116526,,,,,,,,,,2025-09-04 08:00,2025-09-05 17:00,2025-09-04 08:00,2025-09-05 17:00,2025-11-20 17:00,2025-11-20 17:00,2025-11-25 10:00,2025-11-25 10:00,0,16,100
FAB116526A-03,INSTALL DOOR FRAMES - FAB116526A,Complete,Elevator Mech.Rm 19 - 1F -SUE-FAB116526,,,,,,,,,,2025-10-20 13:00,2025-10-21 12:00,2025-10-20 13:00,2025-10-21 12:00,2025-11-20 17:00,2025-11-20 17:00,2025-11-25 10:00,2025-11-25 10:00,0,8,100
FAB116526A-04,INSTALL DOOR & HARDWARE - FAB116526A,Active,Elevator Mech.Rm 19 - 1F -SUE-FAB116526,,,,,,,,,,2025-11-14 08:00,2025-11-20 17:00,2025-11-14 08:00,,2025-11-21 08:00,2025-11-27 17:00,2025-11-25 10:00,2025-12-02 10:00,40,40,0
FAB116526A-05,PAINT & PROTECT DOORS & FRAMES -  FAB116526A,Not Started,Elevator Mech.Rm 19 - 1F -SUE-FAB116526,,,,,,,,,,2026-02-16 08:00,2026-02-19 15:00,,,2026-02-16 08:00,2026-02-19 15:00,2025-12-02 10:00,2025-12-05 17:00,30,30,0
ZX-7090,Complete Drywall & Inspect - PR Airlock Vestibule - 1F-SUE-FAB116520,Complete,PR Air Lock Vestibule - 1F -SUE-FAB116520,,,,,,,,,,2025-08-28 08:00,2025-09-03 17:00,2025-08-28 08:00,2025-09-04 17:00,2025-11-20 17:00,2025-11-20 17:00,2025-11-25 10:00,2025-11-25 10:00,0,40,100
ZX-7100,SECAI TOOK OVER FOR ACCELERATION - Fire Caulk & Inspect - PR Airlock Vestibule - 1F-SUE-FAB116520,Complete,PR Air Lock Vestibule - 1F -SUE-FAB116520,,,,,,,,,,2025-09-18 08:00,2025-09-19 17:00,2025-09-19 08:00,2025-09-19 17:00,2025-11-20 17:00,2025-11-20 17:00,2025-12-05 17:00,2025-12-05 17:00,0,16,100
ZX-7110,Complete Control Joint & Inspect - PR Airlock Vestibule - 1F-SUE-FAB116520,Complete,PR Air Lock Vestibule - 1F -SUE-FAB116520,,,,,,,,,,2025-09-03 08:00,2025-09-04 17:00,2025-09-03 08:00,2025-09-04 17:00,2025-11-20 17:00,2025-11-20 17:00,2025-11-25 10:00,2025-11-25 10:00,0,16,100
FAB116520A-01,INSTALL DOOR FRAMES - FAB116520A,Complete,PR Air Lock Vestibule - 1F -SUE-FAB116520,,,,,,,,,,2025-10-21 08:00,2025-10-21 17:00,2025-10-21 08:00,2025-10-21 17:00,2025-11-20 17:00,2025-11-20 17:00,2025-11-25 10:00,2025-11-25 10:00,0,8,100
FAB116520A-04,INSTALL DOOR & HARDWARE - FAB116520A,Not Started,PR Air Lock Vestibule - 1F -SUE-FAB116520,,,,,,,,,,2025-11-21 08:00,2025-11-27 17:00,,,2025-11-21 08:00,2025-11-27 17:00,2025-11-25 10:00,2025-12-02 10:00,40,40,0
FAB116520A-05,PAINT & PROTECT DOORS & FRAMES -  FAB116520A,Not Started,PR Air Lock Vestibule - 1F -SUE-FAB116520,,,,,,,,,,2026-02-16 08:00,2026-02-19 15:00,,,2026-02-16 08:00,2026-02-19 15:00,2025-12-02 10:00,2025-12-05 17:00,30,30,0
ZX-7390,SECAI TOOK OVER FOR ACCELERATION - Drywall & Inspect - PR Airlock-1F-SUE-FAB116519,Complete,PR Air Lock - 1F -SUE-FAB116519,,,,,,,,,,2025-10-01 08:00,2025-10-07 17:00,2025-10-07 08:00,2025-10-07 17:00,2025-11-20 17:00,2025-11-20 17:00,2025-12-05 17:00,2025-12-05 17:00,0,40,100
ZX-7400,SECAI TOOK OVER FOR ACCELERATION - Fire Caulk & Inspect - PR Airlock-1F-SUE-FAB116519,Complete,PR Air Lock - 1F -SUE-FAB116519,,,,,,,,,,2025-10-06 08:00,2025-10-07 17:00,2025-10-06 08:00,2025-10-07 17:00,2025-11-20 17:00,2025-11-20 17:00,2025-12-05 17:00,2025-12-05 17:00,0,16,100
ZX-7410,SECAI TOOK OVER FOR ACCELERATION - Control Joint & Inspect - PR Airlock-1F-SUE-FAB116519,Complete,PR Air Lock - 1F -SUE-FAB116519,,,,,,,,,,2025-10-06 08:00,2025-10-07 17:00,2025-10-07 08:00,2025-10-07 17:00,2025-11-20 17:00,2025-11-20 17:00,2025-12-05 17:00,2025-12-05 17:00,0,16,100
FAB116519A-03,INSTALL DOOR FRAMES - FAB116519A,Complete,PR Air Lock - 1F -SUE-FAB116519,,,,,,,,,,2025-04-09 08:00,2025-04-10 17:00,2025-04-09 08:00,2025-04-11 17:00,2025-11-20 17:00,2025-11-20 17:00,2025-11-25 10:00,2025-11-25 10:00,0,16,100
FAB116519A-04,INSTALL DOOR & HARDWARE - FAB116519A,Active,PR Air Lock - 1F -SUE-FAB116519,,,,,,,,,,2025-11-05 08:00,2025-11-11 17:00,2025-11-05 08:00,,2025-11-21 08:00,2025-11-27 17:00,2025-11-25 10:00,2025-12-02 10:00,40,40,0
FAB116519A-05,PAINT & PROTECT DOORS & FRAMES -  FAB116519A,Not Started,PR Air Lock - 1F -SUE-FAB116519,,,,,,,,,,2026-02-16 08:00,2026-02-19 15:00,,,2026-02-16 08:00,2026-02-19 15:00,2025-12-02 10:00,2025-12-05 17:00,30,30,0
FAB116519B-01,DOOR ASSEMBLY - FAB116519B,Not Started,PR Air Lock - 1F -SUE-FAB116519,,,,,,,,,,2025-11-21 08:00,2025-11-24 17:00,,,2025-11-21 08:00,2025-11-24 17:00,2025-12-02 08:00,2025-12-03 17:00,16,16,0
FAB116519B-02,DOOR PACKAGE INSTALL - FAB116519B,Not Started,PR Air Lock - 1F -SUE-FAB116519,,,,,,,,,,2025-11-21 08:00,2025-11-24 17:00,,,2025-11-21 08:00,2025-11-24 17:00,2025-12-04 08:00,2025-12-05 17:00,16,16,0
FAB116519D-00,SHOP DRAWINGS (RFI 9565) - PATRIOT - FAB116519D,Complete,PR Air Lock - 1F -SUE-FAB116519,,INTERIOR STAIRS,L1 - Fndn Slab,,,,,,,2025-09-19 08:00,2025-09-19 17:00,2025-07-03 08:00,2025-09-11 17:00,2025-11-20 17:00,2025-11-20 17:00,2025-11-20 08:00,2025-11-20 08:00,0,8,100
FAB116519D-01,SHOP DRAWINGS APPROVAL - JACOBS/SECAI - FAB116519D - C/29.5  SECAI SWITCHED TO KING STUDS,Complete,PR Air Lock - 1F -SUE-FAB116519,,INTERIOR STAIRS,L1 - Fndn Slab,,,,,,,2025-10-01 08:00,2025-10-07 17:00,2025-09-11 08:00,2025-10-09 17:00,2025-11-20 17:00,2025-11-20 17:00,2025-11-20 08:00,2025-11-20 08:00,0,40,100
FAB116519D-02,HEADER/GOAL POST FABRICATION - PATRIOT - FAB116519D - C/29.5,Not Started,PR Air Lock - 1F -SUE-FAB116519,,INTERIOR STAIRS,L1 - Fndn Slab,,,,,,,2025-11-28 08:00,2025-12-02 17:00,,,2025-11-28 08:00,2025-12-02 17:00,2025-11-27 08:00,2025-12-01 17:00,24,24,0
FAB116519D-04,HEADER/GOAL POST INSTALL - PATRIOT - FAB116519D - C/29.5,Not Started,PR Air Lock - 1F -SUE-FAB116519,,INTERIOR STAIRS,L1 - Fndn Slab,,,,,,,2025-12-03 08:00,2025-12-04 17:00,,,2025-12-03 08:00,2025-12-04 17:00,2025-12-02 08:00,2025-12-03 17:00,16,16,0
FAB116519D-07,DOOR INSTALL - FAB116519D (OHC),Not Started,PR Air Lock - 1F -SUE-FAB116519,,,,,,,,,,2025-12-05 08:00,2025-12-08 17:00,,,2025-12-05 08:00,2025-12-08 17:00,2025-12-04 08:00,2025-12-05 17:00,16,16,0
ZX-7690,Complete Drywall & Inspect - Duct Shaft - 1F-SUE-FAB116518,Complete,Duct Shaft - 1F -SUE-FAB116518,,,,,,,,,,2025-09-22 08:00,2025-09-24 17:00,2025-09-22 08:00,2025-09-24 17:00,2025-11-20 17:00,2025-11-20 17:00,2025-12-05 17:00,2025-12-05 17:00,0,24,100
ZX-7700,Complete Fire Caulk & Inspect - Duct Shaft - 1F-SUE-FAB116518,Complete,Duct Shaft - 1F -SUE-FAB116518,,,,,,,,,,2025-10-30 08:00,2025-10-31 17:00,2025-10-30 08:00,2025-10-31 17:00,2025-11-20 17:00,2025-11-20 17:00,2025-12-05 17:00,2025-12-05 17:00,0,16,100
ZX-7710,Complete Control Joint & Inspect - Duct Shaft - 1F-SUE-FAB116518,Complete,Duct Shaft - 1F -SUE-FAB116518,,,,,,,,,,2025-09-23 08:00,2025-09-24 17:00,2025-09-23 08:00,2025-09-24 17:00,2025-11-20 17:00,2025-11-20 17:00,2025-12-05 17:00,2025-12-05 17:00,0,16,100
FAB116518A-01,INSTALL/REWORK DRYWALL FRAMING AROUND DOORS - FAB116518A,Complete,Duct Shaft - 1F -SUE-FAB116518,,,,,,,,,,2025-06-16 08:00,2025-06-24 17:00,2025-06-16 08:00,2025-06-24 17:00,2025-11-20 17:00,2025-11-20 17:00,2025-11-25 10:00,2025-11-25 10:00,0,56,100
FAB116518A-02,SECAI ROUGH IN/SECURITY - FAB116518A,Complete,Duct Shaft - 1F -SUE-FAB116518,,,,,,,,,,2025-06-25 08:00,2025-06-25 17:00,2025-06-25 08:00,2025-06-25 17:00,2025-11-20 17:00,2025-11-20 17:00,2025-11-25 10:00,2025-11-25 10:00,0,8,100
FAB116518A-03,INSTALL DOOR FRAMES - FAB116518A,Complete,Duct Shaft - 1F -SUE-FAB116518,,,,,,,,,,2025-06-25 08:00,2025-06-25 17:00,2025-06-25 08:00,2025-06-25 17:00,2025-11-20 17:00,2025-11-20 17:00,2025-11-25 10:00,2025-11-25 10:00,0,8,100
FAB116518A-04,INSTALL DOOR & HARDWARE - FAB116518A,Active,Duct Shaft - 1F -SUE-FAB116518,,,,,,,,,,2025-09-24 08:00,2025-09-30 17:00,2025-09-24 08:00,,2025-11-21 08:00,2025-11-27 17:00,2025-11-25 10:00,2025-12-02 10:00,40,40,0
FAB116518A-05,PAINT & PROTECT DOORS & FRAMES -  FAB116518A,Not Started,Duct Shaft - 1F -SUE-FAB116518,,,,,,,,,,2026-02-16 08:00,2026-02-19 15:00,,,2026-02-16 08:00,2026-02-19 15:00,2025-12-02 10:00,2025-12-05 17:00,30,30,0
ZX-7060,Complete Drywall & Inspect - PR Room-1F-SUE-FAB116509,Complete,PR Room - 1F -SUE-FAB116509,,,,,,,,,,2025-08-11 08:00,2025-08-15 17:00,2025-08-11 08:00,2025-08-15 17:00,2025-11-20 17:00,2025-11-20 17:00,2025-11-24 10:00,2025-11-24 10:00,0,40,100
ZX-7070,Complete Fire Caulk & Inspect - PR Room-1F-SUE-FAB116509,Complete,PR Room - 1F -SUE-FAB116509,,,,,,,,,,2025-09-26 08:00,2025-09-29 17:00,2025-09-26 08:00,2025-09-29 17:00,2025-11-20 17:00,2025-11-20 17:00,2025-12-05 17:00,2025-12-05 17:00,0,16,100
ZX-7080,SECAI TOOK OVER FOR ACCELERATION - Control Joint & Inspect - PR Room-1F-SUE-FAB116509,Complete,PR Room - 1F -SUE-FAB116509,,,,,,,,,,2025-09-19 08:00,2025-09-22 17:00,2025-09-19 08:00,2025-09-19 17:00,2025-11-20 17:00,2025-11-20 17:00,2025-11-24 10:00,2025-11-24 10:00,0,16,100
FAB116509A-02,SECAI ROUGH IN/SECURITY - FAB116509A,Complete,PR Room - 1F -SUE-FAB116509,,,,,,,,,,2025-08-12 08:00,2025-08-12 17:00,2025-08-12 08:00,2025-08-12 17:00,2025-11-20 17:00,2025-11-20 17:00,2025-11-25 10:00,2025-11-25 10:00,0,8,100
FAB116509A-03,INSTALL DOOR FRAMES - FAB116509A,Complete,PR Room - 1F -SUE-FAB116509,,,,,,,,,,2025-08-12 08:00,2025-08-12 17:00,2025-08-12 08:00,2025-08-12 17:00,2025-11-20 17:00,2025-11-20 17:00,2025-11-25 10:00,2025-11-25 10:00,0,8,100
FAB116509A-04,INSTALL DOOR & HARDWARE - FAB116509A,Active,PR Room - 1F -SUE-FAB116509,,,,,,,,,,2025-10-21 08:00,2025-10-27 17:00,2025-10-21 08:00,,2025-11-21 08:00,2025-11-27 17:00,2025-11-25 10:00,2025-12-02 10:00,40,40,0
FAB116509A-05,PAINT & PROTECT DOORS & FRAMES -  FAB116509A,Not Started,PR Room - 1F -SUE-FAB116509,,,,,,,,,,2026-02-16 08:00,2026-02-19 15:00,,,2026-02-16 08:00,2026-02-19 15:00,2025-12-02 10:00,2025-12-05 17:00,30,30,0
FAB116509B-02,INSTALL DOOR FRAMES - FAB116509B,Complete,PR Room - 1F -SUE-FAB116509,,,,,,,,,,2025-06-20 08:00,2025-06-20 17:00,2025-03-19 08:00,2025-03-19 16:00,2025-11-20 17:00,2025-11-20 17:00,2025-11-25 10:00,2025-11-25 10:00,0,8,100
FAB116509B-03,SECAI ROUGH IN/SECURITY - FAB116509B,Complete,PR Room - 1F -SUE-FAB116509,,,,,,,,,,2025-06-20 08:00,2025-06-20 17:00,2025-03-19 08:00,2025-03-19 16:00,2025-11-20 17:00,2025-11-20 17:00,2025-11-25 10:00,2025-11-25 10:00,0,8,100
FAB116509B-04,INSTALL DOOR & HARDWARE - FAB116509B,Active,PR Room - 1F -SUE-FAB116509,,,,,,,,,,2025-10-01 08:00,2025-10-07 17:00,2025-10-01 08:00,,2025-11-21 08:00,2025-11-27 17:00,2025-11-25 10:00,2025-12-02 10:00,40,40,0
FAB116509B-05,PAINT & PROTECT DOORS & FRAMES -  FAB116509B,Not Started,PR Room - 1F -SUE-FAB116509,,,,,,,,,,2026-02-16 08:00,2026-02-19 15:00,,,2026-02-16 08:00,2026-02-19 15:00,2025-12-02 10:00,2025-12-05 17:00,30,30,0
FAB116509F-03,INSTALL DOOR FRAMES - FAB116509F,Complete,PR Room - 1F -SUE-FAB116509,,,,,,,,,,2025-10-28 08:00,2025-10-28 17:00,2025-10-28 08:00,2025-10-28 17:00,2025-11-20 17:00,2025-11-20 17:00,2025-11-25 10:00,2025-11-25 10:00,0,8,100
FAB116509F-04,INSTALL DOOR & HARDWARE - FAB116509F,Active,PR Room - 1F -SUE-FAB116509,,,,,,,,,,2025-10-29 08:00,2025-11-04 17:00,2025-10-29 08:00,,2025-11-21 08:00,2025-11-27 17:00,2025-11-25 10:00,2025-12-02 10:00,40,40,0
FAB116509F-05,PAINT & PROTECT DOORS & FRAMES -  FAB116509F,Not Started,PR Room - 1F -SUE-FAB116509,,,,,,,,,,2026-02-16 08:00,2026-02-19 15:00,,,2026-02-16 08:00,2026-02-19 15:00,2025-12-02 10:00,2025-12-05 17:00,30,30,0
FAB116509C-03,INSTALL DOOR FRAMES - FAB116509C,Not Started,PR Room - 1F -SUE-FAB116509,,,,,,,,,,2025-11-21 08:00,2025-11-21 17:00,,,2025-11-21 08:00,2025-11-21 17:00,2025-11-24 10:00,2025-11-25 10:00,8,8,0
FAB116509C-04,INSTALL DOOR & HARDWARE - FAB116509C,Not Started,PR Room - 1F -SUE-FAB116509,,,,,,,,,,2025-11-24 08:00,2025-11-28 17:00,,,2025-11-24 08:00,2025-11-28 17:00,2025-11-25 10:00,2025-12-02 10:00,40,40,0
FAB116509C-05,PAINT & PROTECT DOORS & FRAMES -  FAB116509C,Not Started,PR Room - 1F -SUE-FAB116509,,,,,,,,,,2026-02-16 08:00,2026-02-19 15:00,,,2026-02-16 08:00,2026-02-19 15:00,2025-12-02 10:00,2025-12-05 17:00,30,30,0
FAB116509A-00,IMPACT - FLOOD & TIDY REMEDIATION / PATRIOT CLADDING FIX - FAB116509A,Complete,PR Room - 1F -SUE-FAB116509,,,,,,,,,,2025-06-13 08:00,2025-07-03 17:00,2025-06-13 08:00,2025-08-08 17:00,2025-11-20 17:00,2025-11-20 17:00,2025-11-25 10:00,2025-11-25 10:00,0,120,100
FAB116523B-00,SECAI SCP WALL FINISH - FAB116523B,Active,PR Vestibule - 1F -SUE-FAB116523,,,,,,,,,,2025-08-20 08:00,2025-08-20 17:00,2025-08-20 08:00,,2025-11-21 08:00,2025-11-28 17:00,2025-11-26 08:00,2025-12-03 17:00,48,8,0
FAB116523B-01,DOOR ASSEMBLY - FAB116523B,Not Started,PR Vestibule - 1F -SUE-FAB116523,,,,,,,,,,2025-12-01 08:00,2025-12-02 17:00,,,2025-12-01 08:00,2025-12-02 17:00,2025-12-04 08:00,2025-12-05 17:00,16,16,0
FAB116523B-02,DOOR PACKAGE INSTALL - FAB116523B,Not Started,PR Vestibule - 1F -SUE-FAB116523,,,,,,,,,,2025-12-01 08:00,2025-12-02 17:00,,,2025-12-01 08:00,2025-12-02 17:00,2025-12-04 08:00,2025-12-05 17:00,16,16,0
ZX-7300,Complete Drywall & Inspect - UPW MCC Rm-1F-SUE-FAB116521,Complete,UPW MCC Rm - 1F -SUE-FAB116521,,,,,,,,,,2025-08-01 08:00,2025-08-07 17:00,2025-08-01 08:00,2025-08-07 17:00,2025-11-20 17:00,2025-11-20 17:00,2025-11-24 10:00,2025-11-24 10:00,0,40,100
ZX-7310,Complete Fire Caulk & Inspect - UPW MCC Rm-1F-SUE-FAB116521,Complete,UPW MCC Rm - 1F -SUE-FAB116521,,,,,,,,,,2025-09-25 08:00,2025-09-26 17:00,2025-09-25 08:00,2025-09-26 17:00,2025-11-20 17:00,2025-11-20 17:00,2025-12-05 17:00,2025-12-05 17:00,0,16,100
ZX-7320,Complete Control Joint & Inspect - UPW MCC Rm-1F-SUE-FAB116521,Complete,UPW MCC Rm - 1F -SUE-FAB116521,,,,,,,,,,2025-08-06 08:00,2025-08-07 17:00,2025-08-06 08:00,2025-08-07 17:00,2025-11-20 17:00,2025-11-20 17:00,2025-11-25 08:00,2025-11-25 08:00,0,16,100
FAB116521A-01,IMPACT - INSTALL/REWORK DRYWALL FRAMING AROUND DOORS - FAB116521A,Complete,UPW MCC Rm - 1F -SUE-FAB116521,,,,,,,,,,2025-09-01 08:00,2025-09-02 17:00,2025-09-01 08:00,2025-09-02 17:00,2025-11-20 17:00,2025-11-20 17:00,2025-11-25 08:00,2025-11-25 08:00,0,16,100
FAB116521A-02,SECAI ROUGH IN/SECURITY - FAB116521A,Complete,UPW MCC Rm - 1F -SUE-FAB116521,,,,,,,,,,2025-09-02 08:00,2025-09-02 17:00,2025-09-02 08:00,2025-09-02 17:00,2025-11-20 17:00,2025-11-20 17:00,2025-11-25 08:00,2025-11-25 08:00,0,8,100
FAB116521A-03,INSTALL DOOR FRAMES - FAB116521A,Complete,UPW MCC Rm - 1F -SUE-FAB116521,,,,,,,,,,2025-09-02 08:00,2025-09-02 17:00,2025-09-02 08:00,2025-09-02 17:00,2025-11-20 17:00,2025-11-20 17:00,2025-11-25 08:00,2025-11-25 08:00,0,8,100
FAB116521A-04,INSTALL DOOR & HARDWARE - FAB116521A,Active,UPW MCC Rm - 1F -SUE-FAB116521,,,,,,,,,,2025-10-07 08:00,2025-10-13 17:00,2025-10-07 08:00,,2025-11-21 08:00,2025-11-27 17:00,2025-11-25 08:00,2025-12-01 17:00,40,40,0
FAB116521A-05,PAINT & PROTECT DOORS & FRAMES -  FAB116521A,Not Started,UPW MCC Rm - 1F -SUE-FAB116521,,,,,,,,,,2026-02-16 08:00,2026-02-19 15:00,,,2026-02-16 08:00,2026-02-19 15:00,2025-12-02 10:00,2025-12-05 17:00,30,30,0
ZX-7600,Complete Drywall & Inspect - Duct Shaft - 1F-SUE-FAB116516,Complete,Duct Shaft - 1F -SUE-FAB116516,,,,,,,,,,2025-09-01 08:00,2025-09-05 17:00,2025-09-01 08:00,2025-09-05 17:00,2025-11-20 17:00,2025-11-20 17:00,2025-11-25 10:00,2025-11-25 10:00,0,40,100
ZX-7610,Complete Fire Caulk & Inspect - Duct Shaft - 1F-SUE-FAB116516,Complete,Duct Shaft - 1F -SUE-FAB116516,,,,,,,,,,2025-09-29 08:00,2025-09-30 17:00,2025-09-29 08:00,2025-09-30 17:00,2025-11-20 17:00,2025-11-20 17:00,2025-12-05 17:00,2025-12-05 17:00,0,16,100
FAB116516A-03,INSTALL DOOR FRAMES - FAB116516A,Complete,Duct Shaft - 1F -SUE-FAB116516,,,,,,,,,,2025-11-12 08:00,2025-11-12 17:00,2025-11-12 08:00,2025-11-12 17:00,2025-11-20 17:00,2025-11-20 17:00,2025-11-25 10:00,2025-11-25 10:00,0,8,100
FAB116516A-04,INSTALL DOOR & HARDWARE - FAB116516A,Active,Duct Shaft - 1F -SUE-FAB116516,,,,,,,,,,2025-11-12 08:00,2025-11-18 17:00,2025-11-12 08:00,,2025-11-21 08:00,2025-11-27 17:00,2025-11-25 10:00,2025-12-02 10:00,40,40,0
FAB116516A-05,PAINT & PROTECT DOORS & FRAMES -  FAB116516A,Not Started,Duct Shaft - 1F -SUE-FAB116516,,,,,,,,,,2026-02-16 08:00,2026-02-19 15:00,,,2026-02-16 08:00,2026-02-19 15:00,2025-12-02 10:00,2025-12-05 17:00,30,30,0
ZX-7810,Complete Drywall & Inspect - Elevator Mech Rm #18 - FAB116514 MK MARLOW,Complete,Elevator Mech. Rm - 1F -SUE18-FAB116514,,,,,,,,,,2025-06-20 08:00,2025-07-03 17:00,2025-06-13 08:00,2025-09-03 17:00,2025-11-20 17:00,2025-11-20 17:00,2025-11-21 10:00,2025-11-21 10:00,0,80,100
ZX-7820,Complete Fire Caulk & Inspect - Elevator Mech Rm #18 - FAB116514 MK MARLOW,Complete,Elevator Mech. Rm - 1F -SUE18-FAB116514,,,,,,,,,,2025-09-02 08:00,2025-09-03 17:00,2025-09-02 08:00,2025-09-03 17:00,2025-11-20 17:00,2025-11-20 17:00,2025-12-05 17:00,2025-12-05 17:00,0,16,100
ZX-7830,Complete Control Joint & Inspect - Elevator Mech Rm #18 - FAB116514 MK MARLOW,Complete,Elevator Mech. Rm - 1F -SUE18-FAB116514,,,,,,,,,,2025-09-02 08:00,2025-09-03 17:00,2025-09-02 08:00,2025-09-03 17:00,2025-11-20 17:00,2025-11-20 17:00,2025-11-21 10:00,2025-11-21 10:00,0,16,100
FAB116514A-04,INSTALL DOOR & HARDWARE - FAB116514A,Not Started,Elevator Mech. Rm - 1F -SUE18-FAB116514,,,,,,,,,,2025-12-02 08:00,2025-12-08 17:00,,,2025-12-02 08:00,2025-12-08 17:00,2025-11-25 10:00,2025-12-02 10:00,40,40,0
FAB116514A-05,PAINT & PROTECT DOORS & FRAMES -  FAB116514A,Not Started,Elevator Mech. Rm - 1F -SUE18-FAB116514,,,,,,,,,,2026-02-16 08:00,2026-02-19 15:00,,,2026-02-16 08:00,2026-02-19 15:00,2025-12-02 10:00,2025-12-05 17:00,30,30,0
FAB116514A-03,INSTALL DOOR FRAMES - FAB116514A,Not Started,Elevator Mech. Rm - 1F -SUE18-FAB116514,,,,,,,,,,2025-11-28 08:00,2025-12-01 17:00,,,2025-11-28 08:00,2025-12-01 17:00,2025-11-21 10:00,2025-11-25 10:00,16,16,0
ZX-7840,Complete Drywall & Inspect - Elevator #18 - 1F-1FAB-EL18,Complete,Elevator 18 - 1F -SUE-FAB1-EL18,,,,,,,,,,2025-06-10 08:00,2025-06-18 17:00,2025-06-10 08:00,2025-06-26 16:00,2025-11-20 17:00,2025-11-20 17:00,2025-11-25 10:00,2025-11-25 10:00,0,56,100
ZX-7850,Complete Fire Caulk & Inspect - Elevator #18 - 1F-1FAB-EL18,Complete,Elevator 18 - 1F -SUE-FAB1-EL18,,,,,,,,,,2025-06-30 08:00,2025-07-01 17:00,2025-06-30 08:00,2025-07-01 16:00,2025-11-20 17:00,2025-11-20 17:00,2025-12-05 17:00,2025-12-05 17:00,0,16,100
ZX-7860,Complete Control Joint & Inspect - Elevator #18 - 1F-1FAB-EL18,Complete,Elevator 18 - 1F -SUE-FAB1-EL18,,,,,,,,,,2025-06-25 08:00,2025-06-26 17:00,2025-06-25 08:00,2025-06-27 16:00,2025-11-20 17:00,2025-11-20 17:00,2025-11-25 10:00,2025-11-25 10:00,0,16,100
ZX-8140,Complete Drywall & Inspect - Fire Alarm Rm 18-1F-FAB116527,Complete,Fire Alarm Rm 18 - 1F -SUE-FAB116527,,,,,,,,,,2025-08-20 08:00,2025-08-26 17:00,2025-08-20 08:00,2025-08-26 17:00,2025-11-20 17:00,2025-11-20 17:00,2025-11-25 10:00,2025-11-25 10:00,0,40,100
ZX-8150,Complete Fire Caulk & Inspect - Fire Alarm Rm 18-1F-FAB116527,Complete,Fire Alarm Rm 18 - 1F -SUE-FAB116527,,,,,,,,,,2025-09-01 08:00,2025-09-02 17:00,2025-09-01 08:00,2025-09-02 17:00,2025-11-20 17:00,2025-11-20 17:00,2025-12-05 17:00,2025-12-05 17:00,0,16,100
ZX-8160,Complete Control Joint & Inspect - Fire Alarm Rm 18-1F-FAB116527,Complete,Fire Alarm Rm 18 - 1F -SUE-FAB116527,,,,,,,,,,2025-08-25 08:00,2025-08-26 17:00,2025-08-25 08:00,2025-08-26 17:00,2025-11-20 17:00,2025-11-20 17:00,2025-11-25 10:00,2025-11-25 10:00,0,16,100
FAB116527A-01,IMPACT - INSTALL/REWORK DRYWALL FRAMING AROUND DOORS - FAB116527A,Complete,Fire Alarm Rm 18 - 1F -SUE-FAB116527,,,,,,,,,,2025-10-03 08:00,2025-10-07 17:00,2025-10-03 08:00,2025-10-07 17:00,2025-11-20 17:00,2025-11-20 17:00,2025-11-25 10:00,2025-11-25 10:00,0,24,100
FAB116527A-02,SECAI ROUGH IN/SECURITY - FAB116527A,Complete,Fire Alarm Rm 18 - 1F -SUE-FAB116527,,,,,,,,,,2025-10-07 08:00,2025-10-07 17:00,2025-10-07 08:00,2025-10-07 17:00,2025-11-20 17:00,2025-11-20 17:00,2025-11-25 10:00,2025-11-25 10:00,0,8,100
FAB116527A-03,INSTALL DOOR FRAMES - FAB116527A,Complete,Fire Alarm Rm 18 - 1F -SUE-FAB116527,,,,,,,,,,2025-10-07 08:00,2025-10-07 17:00,2025-10-07 08:00,2025-10-07 17:00,2025-11-20 17:00,2025-11-20 17:00,2025-11-25 10:00,2025-11-25 10:00,0,8,100
FAB116527A-04,INSTALL DOOR & HARDWARE - FAB116527A,Active,Fire Alarm Rm 18 - 1F -SUE-FAB116527,,,,,,,,,,2025-10-08 08:00,2025-10-14 17:00,2025-10-08 08:00,,2025-11-21 08:00,2025-11-27 17:00,2025-11-25 10:00,2025-12-02 10:00,40,40,0
FAB116527A-05,PAINT & PROTECT DOORS & FRAMES -  FAB116527A,Not Started,Fire Alarm Rm 18 - 1F -SUE-FAB116527,,,,,,,,,,2026-02-16 08:00,2026-02-19 15:00,,,2026-02-16 08:00,2026-02-19 15:00,2025-12-02 10:00,2025-12-05 17:00,30,30,0
ZX-8440,SECAI TOOK OVER FOR ACCELERATION - Complete Drywall & Inspect - Elevator Hall 18-1F-FAB116512,Complete,Elevator Hall 18 - 1F -SUE-FAB116512,,,,,,,,,,2025-08-20 08:00,2025-08-26 17:00,2025-06-27 08:00,2025-06-27 17:00,2025-11-20 17:00,2025-11-20 17:00,2025-11-25 08:00,2025-11-25 08:00,0,40,100
ZX-8450,SECAI TOOK OVER FOR ACCELERATION - Complete Fire Caulk & Inspect - Elevator Hall 18-1F-FAB116512,Complete,Elevator Hall 18 - 1F -SUE-FAB116512,,,,,,,,,,2025-06-26 08:00,2025-06-27 17:00,2025-06-27 08:00,2025-06-27 17:00,2025-11-20 17:00,2025-11-20 17:00,2025-12-05 17:00,2025-12-05 17:00,0,16,100
ZX-8460,SECAI TOOK OVER FOR ACCELERATION - Complete Control Joint & Inspect - Elevator Hall 18-1F-FAB116512,Complete,Elevator Hall 18 - 1F -SUE-FAB116512,,,,,,,,,,2025-06-26 08:00,2025-06-27 17:00,2025-06-27 08:00,2025-06-27 17:00,2025-11-20 17:00,2025-11-20 17:00,2025-11-25 08:00,2025-11-25 08:00,0,16,100
FAB116512C-01,IMPACT - INSTALL/REWORK DRYWALL FRAMING AROUND DOORS - FAB116512C HANDED OVER TO SECAI ON 08/20,Complete,Elevator Hall 18 - 1F -SUE-FAB116512,,,,,,,,,,2025-08-20 08:00,2025-08-21 17:00,2025-08-20 08:00,2025-08-20 17:00,2025-11-20 17:00,2025-11-20 17:00,2025-11-25 08:00,2025-11-25 08:00,0,16,100
FAB116512C-02,SECAI ROUGH IN/SECURITY - FAB116512C HANDED OVER TO SECAI ON 08/20,Complete,Elevator Hall 18 - 1F -SUE-FAB116512,,,,,,,,,,2025-08-20 08:00,2025-08-20 17:00,2025-08-20 08:00,2025-08-20 17:00,2025-11-20 17:00,2025-11-20 17:00,2025-11-25 08:00,2025-11-25 08:00,0,8,100
FAB116512C-03,INSTALL DOOR FRAME BY SECAI - FAB116512C HANDED OVER TO SECAI ON 08/20,Complete,Elevator Hall 18 - 1F -SUE-FAB116512,,,,,,,,,,2025-08-20 08:00,2025-08-20 17:00,2025-08-20 08:00,2025-09-06 17:00,2025-11-20 17:00,2025-11-20 17:00,2025-11-25 08:00,2025-11-25 08:00,0,8,100
FAB116512C-04,INSTALL DOOR & HARDWARE - FAB116512C,Active,Elevator Hall 18 - 1F -SUE-FAB116512,,,,,,,,,,2025-10-30 08:00,2025-11-05 17:00,2025-10-30 08:00,,2025-11-21 08:00,2025-11-27 17:00,2025-11-25 08:00,2025-12-01 17:00,40,40,0
FAB116512C-05,PAINT & PROTECT DOORS & FRAMES -  FAB116512C,Not Started,Elevator Hall 18 - 1F -SUE-FAB116512,,,,,,,,,,2026-02-16 08:00,2026-02-19 17:00,,,2026-02-16 08:00,2026-02-19 17:00,2025-12-02 08:00,2025-12-05 17:00,32,32,0
ZX-7780,SECAI TURNOVER FOR ACELERATION - Drywall & Inspect - Airlock 18-1F-FAB116513 - BAKER/DESCOPE,Complete,Air Lock 18 - 1F -SUE-FAB116513,,,,,,,,,,2025-08-27 08:00,2025-09-09 17:00,2025-05-19 08:00,2025-06-02 16:00,2025-11-20 17:00,2025-11-20 17:00,2025-11-17 08:00,2025-11-17 08:00,0,80,100
ZX-7790,SECAI TURNOVER FOR ACELERATION - Fire Caulk & Inspect - Airlock 18-1F-FAB116513 - BAKER/DESCOPE,Complete,Air Lock 18 - 1F -SUE-FAB116513,,,,,,,,,,2025-09-10 08:00,2025-09-11 17:00,2025-06-03 08:00,2025-06-05 16:00,2025-11-20 17:00,2025-11-20 17:00,2025-12-05 17:00,2025-12-05 17:00,0,16,100
ZX-7800,SECAI TURNOVER FOR ACELERATION - Control Joint & Inspect - Airlock 18-1F-FAB116513 - BAKER/DESCOPE,Complete,Air Lock 18 - 1F -SUE-FAB116513,,,,,,,,,,2025-09-10 08:00,2025-09-11 17:00,2025-06-05 08:00,2025-06-06 16:00,2025-11-20 17:00,2025-11-20 17:00,2025-11-17 08:00,2025-11-17 08:00,0,16,100
FAB116513F-04,INSTALL DOOR & HARDWARE - FAB116513F,Not Started,Air Lock 18 - 1F -SUE-FAB116513,,,,,,,,,,2025-12-01 08:00,2025-12-05 17:00,,,2025-12-01 08:00,2025-12-05 17:00,2025-11-25 10:00,2025-12-02 10:00,40,40,0
FAB116513F-05,PAINT & PROTECT DOORS & FRAMES -  FAB116513F,Not Started,Air Lock 18 - 1F -SUE-FAB116513,,,,,,,,,,2026-02-16 08:00,2026-02-19 15:00,,,2026-02-16 08:00,2026-02-19 15:00,2025-12-02 10:00,2025-12-05 17:00,30,30,0
FAB116513H-04,INSTALL DOOR & HARDWARE - FAB116513H,Not Started,Air Lock 18 - 1F -SUE-FAB116513,,,,,,,,,,2025-11-28 08:00,2025-12-04 17:00,,,2025-11-28 08:00,2025-12-04 17:00,2025-11-25 10:00,2025-12-02 10:00,40,40,0
FAB116513H-05,PAINT & PROTECT DOORS & FRAMES -  FAB116513H,Not Started,Air Lock 18 - 1F -SUE-FAB116513,,,,,,,,,,2026-02-16 08:00,2026-02-19 15:00,,,2026-02-16 08:00,2026-02-19 15:00,2025-12-02 10:00,2025-12-05 17:00,30,30,0
FAB116513C-04,INSTALL DOOR & HARDWARE - FAB116513C,Active,Air Lock 18 - 1F -SUE-FAB116513,,,,,,,,,,2025-10-29 08:00,2025-11-04 17:00,2025-10-29 08:00,,2025-11-21 08:00,2025-11-27 17:00,2025-11-25 08:00,2025-12-01 17:00,40,40,0
FAB116513C-05,PAINT & PROTECT DOORS & FRAMES -  FAB116513C,Not Started,Air Lock 18 - 1F -SUE-FAB116513,,,,,,,,,,2026-02-16 08:00,2026-02-19 17:00,,,2026-02-16 08:00,2026-02-19 17:00,2025-12-02 08:00,2025-12-05 17:00,32,32,0
FAB116513D-04,INSTALL DOOR & HARDWARE - FAB116513D,Not Started,Air Lock 18 - 1F -SUE-FAB116513,,,,,,,,,,2025-12-01 08:00,2025-12-05 17:00,,,2025-12-01 08:00,2025-12-05 17:00,2025-11-25 08:00,2025-12-01 17:00,40,40,0
FAB116513D-05,PAINT & PROTECT DOORS & FRAMES -  FAB116513D,Not Started,Air Lock 18 - 1F -SUE-FAB116513,,,,,,,,,,2026-02-16 08:00,2026-02-19 17:00,,,2026-02-16 08:00,2026-02-19 17:00,2025-12-02 08:00,2025-12-05 17:00,32,32,0
FAB116513E-04,INSTALL DOOR & HARDWARE - FAB116513E,Active,Air Lock 18 - 1F -SUE-FAB116513,,,,,,,,,,2025-10-14 08:00,2025-10-20 17:00,2025-10-14 08:00,,2025-11-21 08:00,2025-11-27 17:00,2025-11-25 08:00,2025-12-01 17:00,40,40,0
FAB116513E-05,PAINT & PROTECT DOORS & FRAMES -  FAB116513E,Not Started,Air Lock 18 - 1F -SUE-FAB116513,,,,,,,,,,2026-02-16 08:00,2026-02-19 17:00,,,2026-02-16 08:00,2026-02-19 17:00,2025-12-02 08:00,2025-12-05 17:00,32,32,0
FAB116513G-04,INSTALL DOOR & HARDWARE - FAB116513G,Active,Air Lock 18 - 1F -SUE-FAB116513,,,,,,,,,,2025-10-08 08:00,2025-10-14 17:00,2025-10-08 08:00,,2025-11-21 08:00,2025-11-27 17:00,2025-11-25 08:00,2025-12-01 17:00,40,40,0
FAB116513G-05,PAINT & PROTECT DOORS & FRAMES -  FAB116513G,Not Started,Air Lock 18 - 1F -SUE-FAB116513,,,,,,,,,,2026-02-16 08:00,2026-02-19 17:00,,,2026-02-16 08:00,2026-02-19 17:00,2025-12-02 08:00,2025-12-05 17:00,32,32,0
FAB116513E-11,IMPACT - PROCUREMENT - Reordered doors (Wall Thickness and Door Swing Design Changes) FAB116513E/F/G,Complete,Air Lock 18 - 1F -SUE-FAB116513,,,,,,,,,,2025-07-10 08:00,2025-09-16 15:00,2025-06-09 08:00,2025-07-14 15:00,2025-11-20 17:00,2025-11-20 17:00,2025-11-25 08:00,2025-11-25 08:00,0,390,100
FAB116513F-03,INSTALL DOOR FRAME BY SECAI - FAB116513F HANDED OVER ON 08/20,Active,Air Lock 18 - 1F -SUE-FAB116513,,,,,,,,,,2025-08-20 08:00,2025-08-20 17:00,2025-08-20 08:00,,2025-11-21 08:00,2025-11-28 17:00,2025-11-17 10:00,2025-11-25 10:00,48,8,0
FAB116513C-03,INSTALL DOOR FRAME - FAB116513C,Complete,Air Lock 18 - 1F -SUE-FAB116513,,,,,,,,,,2025-10-28 08:00,2025-10-28 17:00,2025-10-28 08:00,2025-10-28 17:00,2025-11-20 17:00,2025-11-20 17:00,2025-11-25 08:00,2025-11-25 08:00,0,8,100
FAB116513D-03,INSTALL DOOR FRAME BY SECAI - FAB116513D HANDED OVER TO SECAI ON 08/20,Active,Air Lock 18 - 1F -SUE-FAB116513,,,,,,,,,,2025-08-20 08:00,2025-08-20 17:00,2025-08-20 08:00,,2025-11-21 08:00,2025-11-28 17:00,2025-11-17 08:00,2025-11-24 17:00,48,8,0
FAB116513E-03,INSTALL DOOR FRAME BY SECAI - FAB116513E HANDED OVER TO SECAI ON 07/17,Complete,Air Lock 18 - 1F -SUE-FAB116513,,,,,,,,,,2025-07-17 08:00,2025-08-20 17:00,2025-07-17 08:00,2025-09-22 08:00,2025-11-20 17:00,2025-11-20 17:00,2025-11-25 08:00,2025-11-25 08:00,0,200,100
FAB116513G-03,INSTALL DOOR FRAME BY SECAI - FAB116513G HANDED OVER TO SECAI ON 07/17,Complete,Air Lock 18 - 1F -SUE-FAB116513,,,,,,,,,,2025-07-17 08:00,2025-08-20 17:00,2025-07-17 08:00,2025-09-08 08:00,2025-11-20 17:00,2025-11-20 17:00,2025-11-25 08:00,2025-11-25 08:00,0,200,100
ZX-7930,SECAI TURNOVER FOR ACELERATION - Drywall & Inspect - Exit Passageway 18-1F-FAB116511 BAKER/DESCOPE,Complete,Exit Passageway 18 - 1F -SUE-FAB116511,,,,,,,,,,2025-08-12 08:00,2025-08-25 17:00,2025-06-10 08:00,2025-06-10 16:00,2025-11-20 17:00,2025-11-20 17:00,2025-11-25 10:00,2025-11-25 10:00,0,80,100
ZX-7940,SECAI TURNOVER FOR ACELERATION - Fire Caulk & Inspect - Exit Passageway 18-1F-FAB116511 BAKER/DESCOPE,Complete,Exit Passageway 18 - 1F -SUE-FAB116511,,,,,,,,,,2025-06-10 08:00,2025-06-10 17:00,2025-06-10 08:00,2025-06-10 16:00,2025-11-20 17:00,2025-11-20 17:00,2025-12-05 17:00,2025-12-05 17:00,0,8,100
ZX-7950,SECAI TURNOVER FOR ACELERATION - Control Joint & Inspect - Exit Passageway 18-1F-FAB116511 BAKER/DESCOPE,Complete,Exit Passageway 18 - 1F -SUE-FAB116511,,,,,,,,,,2025-06-10 08:00,2025-06-10 17:00,2025-06-10 08:00,2025-06-10 16:00,2025-11-20 17:00,2025-11-20 17:00,2025-11-25 10:00,2025-11-25 10:00,0,8,100
FAB116511A-02,SECAI ROUGH IN/SECURITY - FAB116511A,Complete,Exit Passageway 18 - 1F -SUE-FAB116511,,,,,,,,,,2025-06-10 08:00,2025-06-10 17:00,2025-05-21 08:00,2025-05-21 16:00,2025-11-20 17:00,2025-11-20 17:00,2025-11-25 10:00,2025-11-25 10:00,0,8,100
FAB116511A-03,INSTALL DOOR FRAMES - FAB116511A,Complete,Exit Passageway 18 - 1F -SUE-FAB116511,,,,,,,,,,2025-08-25 13:00,2025-08-26 12:00,2025-05-21 00:00,2025-05-21 16:00,2025-11-20 17:00,2025-11-20 17:00,2025-11-25 10:00,2025-11-25 10:00,0,8,100
FAB116511A-04,INSTALL DOOR & HARDWARE - FAB116511A,Not Started,Exit Passageway 18 - 1F -SUE-FAB116511,,,,,,,,,,2025-11-21 08:00,2025-11-27 17:00,,,2025-11-21 08:00,2025-11-27 17:00,2025-11-25 10:00,2025-12-02 10:00,40,40,0
FAB116511A-05,PAINT & PROTECT DOORS & FRAMES -  FAB116511A,Not Started,Exit Passageway 18 - 1F -SUE-FAB116511,,,,,,,,,,2026-02-16 08:00,2026-02-19 15:00,,,2026-02-16 08:00,2026-02-19 15:00,2025-12-02 10:00,2025-12-05 17:00,30,30,0
FAB116511B-01,IMPACT - INSTALL/REWORK DRYWALL FRAMING AROUND DOORS - FAB116511B BAKER/DESCOPE,Complete,Exit Passageway 18 - 1F -SUE-FAB116511,,,,,,,,,,2025-06-10 08:00,2025-06-10 17:00,2025-06-10 08:00,2025-06-10 16:00,2025-11-20 17:00,2025-11-20 17:00,2025-11-25 10:00,2025-11-25 10:00,0,8,100
FAB116511B-02,SECAI ROUGH IN/SECURITY - FAB116511B BAKER/DESCOPE,Complete,Exit Passageway 18 - 1F -SUE-FAB116511,,,,,,,,,,2025-06-10 08:00,2025-06-10 17:00,2025-06-10 08:00,2025-06-10 16:00,2025-11-20 17:00,2025-11-20 17:00,2025-11-25 10:00,2025-11-25 10:00,0,8,100
FAB116511B-03,INSTALL DOOR FRAMES - FAB116511B,Complete,Exit Passageway 18 - 1F -SUE-FAB116511,,,,,,,,,,2025-07-28 08:00,2025-07-28 17:00,2025-07-28 08:00,2025-07-28 17:00,2025-11-20 17:00,2025-11-20 17:00,2025-11-25 10:00,2025-11-25 10:00,0,8,100
FAB116511B-04,INSTALL DOOR & HARDWARE - FAB116511B,Active,Exit Passageway 18 - 1F -SUE-FAB116511,,,,,,,,,,2025-10-01 08:00,2025-10-07 17:00,2025-10-01 08:00,,2025-11-21 08:00,2025-11-27 17:00,2025-11-25 10:00,2025-12-02 10:00,40,40,0
FAB116511B-05,PAINT & PROTECT DOORS & FRAMES -  FAB116511B,Not Started,Exit Passageway 18 - 1F -SUE-FAB116511,,,,,,,,,,2026-02-16 08:00,2026-02-19 15:00,,,2026-02-16 08:00,2026-02-19 15:00,2025-12-02 10:00,2025-12-05 17:00,30,30,0
FAB116511G-02,SECAI ROUGH IN/SECURITY - FAB116511G,Complete,Exit Passageway 18 - 1F -SUE-FAB116511,,,,,,,,,,2025-08-04 08:00,2025-08-04 17:00,2025-08-04 08:00,2025-08-04 17:00,2025-11-20 17:00,2025-11-20 17:00,2025-11-21 10:00,2025-11-21 10:00,0,8,100
FAB116511G-03,INSTALL DOOR FRAMES - FAB116511G,Complete,Exit Passageway 18 - 1F -SUE-FAB116511,,,,,,,,,,2025-08-04 08:00,2025-08-04 17:00,2025-08-04 08:00,2025-08-04 17:00,2025-11-20 17:00,2025-11-20 17:00,2025-11-21 10:00,2025-11-21 10:00,0,8,100
FAB116511G-04,INSTALL DOOR & HARDWARE - FAB116511G,Not Started,Exit Passageway 18 - 1F -SUE-FAB116511,,,,,,,,,,2025-11-21 08:00,2025-11-27 17:00,,,2025-11-21 08:00,2025-11-27 17:00,2025-11-25 10:00,2025-12-02 10:00,40,40,0
FAB116511G-05,PAINT & PROTECT DOORS & FRAMES -  FAB116511G,Not Started,Exit Passageway 18 - 1F -SUE-FAB116511,,,,,,,,,,2026-02-16 08:00,2026-02-19 15:00,,,2026-02-16 08:00,2026-02-19 15:00,2025-12-02 10:00,2025-12-05 17:00,30,30,0
FAB116511B-11,IMPACT - PROCUREMENT - Reordered doors (Wall Thickness and Door Swing Design Changes),Complete,Exit Passageway 18 - 1F -SUE-FAB116511,,,,,,,,,,2025-06-09 08:00,2025-08-04 17:00,2025-06-09 08:00,2025-07-14 17:00,2025-11-20 17:00,2025-11-20 17:00,2025-11-25 10:00,2025-11-25 10:00,0,328,100
FAB1165110B-00,IOCC TO BE SUBMITTED (RFI 10986) - FAB1165110B,Active,Exit Passageway 18 - 1F -SUE-FAB116511,,,,,,,,,,2025-07-03 08:00,2025-07-29 15:00,2025-07-03 07:00,,2025-11-21 08:00,2025-11-27 17:00,2025-11-13 08:00,2025-11-19 17:00,40,150,0
FAB1165110B-01,IOCC APPROVAL - SECAI - FAB1165110B,Not Started,Exit Passageway 18 - 1F -SUE-FAB116511,,,,,,,,,,2025-11-28 08:00,2025-12-10 17:00,,,2025-11-28 08:00,2025-12-10 17:00,2025-11-20 08:00,2025-12-02 17:00,72,72,0
FAB1165110B-02,INSTALL/REWORK CLADDING AND HEADER - FAB1165110B,Not Started,Exit Passageway 18 - 1F -SUE-FAB116511,,,,,,,,,,2025-12-11 08:00,2025-12-11 17:00,,,2025-12-11 08:00,2025-12-11 17:00,2025-12-03 08:00,2025-12-03 17:00,8,8,0
FAB1165110B-04,DOOR INSTALL - FAB1165110B (OHC),Not Started,Exit Passageway 18 - 1F -SUE-FAB116511,,,,,,,,,,2025-12-12 08:00,2025-12-15 17:00,,,2025-12-12 08:00,2025-12-15 17:00,2025-12-04 08:00,2025-12-05 17:00,16,16,0
FAB1165110B-60,IMPACT - LVL 2 CONCRETE BEAM IN CONFLICT WITH SHOP DRAWINGS (14FT VS 14FT 1IN) - FAB1165110B,Active,Exit Passageway 18 - 1F -SUE-FAB116511,,,,,,,,,,2025-07-03 08:00,2025-07-29 15:00,2025-07-03 07:00,,2025-11-21 08:00,2025-11-27 17:00,2025-11-26 08:00,2025-12-02 17:00,40,150,0
ZX-8230,Complete Drywall & Inspect - D-G/33-1F,Complete,D-G/33 - 1F -FAB,,,,,,,,,,2025-05-28 08:00,2025-06-10 17:00,2025-05-23 08:00,2025-05-28 16:00,2025-11-20 17:00,2025-11-20 17:00,2025-12-05 17:00,2025-12-05 17:00,0,80,100
ZX-8240,Complete Fire Caulk & Inspect - D-G/33-1F BY MK MARLOW,Complete,D-G/33 - 1F -FAB,,,,,,,,,,2025-06-27 08:00,2025-06-30 17:00,2025-06-24 08:00,2025-08-13 17:00,2025-11-20 17:00,2025-11-20 17:00,2025-12-05 17:00,2025-12-05 17:00,0,16,100
ZX-16530,IMPACT - Complete Drywall & Inspect - D-G/33-1F N&b APPROVAL,Complete,D-G/33 - 1F -FAB,,,,,,,,,,2025-05-05 08:00,2025-05-16 17:00,2025-05-05 08:00,2025-05-22 16:00,2025-11-20 17:00,2025-11-20 17:00,2025-12-05 17:00,2025-12-05 17:00,0,80,100
ZX-18350,IMPACT - SECAI SCAFFOLD-D-G/33-1F,Complete,D-G/33 - 1F -FAB,,,,,,,,,,2025-06-10 08:00,2025-06-23 17:00,2025-06-10 08:00,2025-08-01 17:00,2025-11-20 17:00,2025-11-20 17:00,2025-12-05 17:00,2025-12-05 17:00,0,80,100
ZX-8530,SECAI TURNOVER FOR ACELERATION - Drywall & Inspect - Bunker Rm 14-1F-FAB114404 BAKER/DESCOPE,Complete,Bunker Rm 14 - 1F -FAB-FAB114404,,,,,,,,,,2025-06-10 08:00,2025-06-10 08:00,2025-06-10 08:00,2025-06-10 08:00,2025-11-20 17:00,2025-11-20 17:00,2025-11-25 10:00,2025-11-25 10:00,0,0,100
ZX-8540,SECAI TURNOVER FOR ACELERATION - Fire Caulk & Inspect - Bunker Rm 14-1F-FAB114404 BAKER/DESCOPE,Complete,Bunker Rm 14 - 1F -FAB-FAB114404,,,,,,,,,,2025-06-10 08:00,2025-06-10 08:00,2025-06-10 08:00,2025-06-10 08:00,2025-11-20 17:00,2025-11-20 17:00,2025-12-05 17:00,2025-12-05 17:00,0,0,100
ZX-8550,SECAI TURNOVER FOR ACELERATION - Control Joint & Inspect - Bunker Rm 14-1F-FAB114404 BAKER/DESCOPE,Complete,Bunker Rm 14 - 1F -FAB-FAB114404,,,,,,,,,,2025-06-10 08:00,2025-06-10 08:00,2025-06-10 08:00,2025-06-10 08:00,2025-11-20 17:00,2025-11-20 17:00,2025-11-25 10:00,2025-11-25 10:00,0,0,100
FAB114404A-01,IMPACT - INSTALL/REWORK DRYWALL FRAMING AROUND DOORS - FAB114404A,Complete,Bunker Rm 14 - 1F -FAB-FAB114404,,,,,,,,,,2025-06-10 08:00,2025-06-10 08:00,2025-03-17 08:00,2025-03-24 08:00,2025-11-20 17:00,2025-11-20 17:00,2025-11-25 10:00,2025-11-25 10:00,0,0,100
FAB114404A-02,SECAI ROUGH IN/SECURITY - FAB114404A,Complete,Bunker Rm 14 - 1F -FAB-FAB114404,,,,,,,,,,2025-06-10 08:00,2025-06-10 08:00,2025-03-24 08:00,2025-03-24 08:00,2025-11-20 17:00,2025-11-20 17:00,2025-11-25 10:00,2025-11-25 10:00,0,0,100
FAB114404A-03,INSTALL DOOR FRAMES - FAB114404A,Complete,Bunker Rm 14 - 1F -FAB-FAB114404,,,,,,,,,,2025-09-11 13:00,2025-09-12 12:00,2025-03-24 00:00,2025-03-24 16:00,2025-11-20 17:00,2025-11-20 17:00,2025-11-25 10:00,2025-11-25 10:00,0,8,100
FAB114404A-04,INSTALL DOOR & HARDWARE - FAB114404A,Not Started,Bunker Rm 14 - 1F -FAB-FAB114404,,,,,,,,,,2025-12-05 08:00,2025-12-11 17:00,,,2025-12-05 08:00,2025-12-11 17:00,2025-11-25 10:00,2025-12-02 10:00,40,40,0
FAB114404A-05,PAINT & PROTECT DOORS & FRAMES - FAB114404A,Not Started,Bunker Rm 14 - 1F -FAB-FAB114404,,,,,,,,,,2026-02-16 08:00,2026-02-19 15:00,,,2026-02-16 08:00,2026-02-19 15:00,2025-12-02 10:00,2025-12-05 17:00,30,30,0
FAB114404B-01,IMPACT - INSTALL/REWORK DRYWALL FRAMING AROUND DOORS - FAB114404B,Complete,Bunker Rm 14 - 1F -FAB-FAB114404,,,,,,,,,,2025-06-10 08:00,2025-06-10 08:00,2025-03-03 08:00,2025-03-11 08:00,2025-11-20 17:00,2025-11-20 17:00,2025-11-25 10:00,2025-11-25 10:00,0,0,100
FAB114404B-02,SECAI ROUGH IN/SECURITY - FAB114404B,Complete,Bunker Rm 14 - 1F -FAB-FAB114404,,,,,,,,,,2025-06-10 08:00,2025-06-10 08:00,2025-03-11 08:00,2025-03-11 08:00,2025-11-20 17:00,2025-11-20 17:00,2025-11-25 10:00,2025-11-25 10:00,0,0,100
FAB114404B-03,INSTALL DOOR FRAMES - FAB114404B,Complete,Bunker Rm 14 - 1F -FAB-FAB114404,,,,,,,,,,2025-09-11 13:00,2025-09-12 12:00,2025-03-11 00:00,2025-03-11 16:00,2025-11-20 17:00,2025-11-20 17:00,2025-11-25 10:00,2025-11-25 10:00,0,8,100
FAB114404B-04,INSTALL DOOR & HARDWARE - FAB114404B,Active,Bunker Rm 14 - 1F -FAB-FAB114404,,,,,,,,,,2025-11-07 08:00,2025-11-13 17:00,2025-11-07 08:00,,2025-11-21 08:00,2025-11-27 17:00,2025-11-25 10:00,2025-12-02 10:00,40,40,0
FAB114404B-05,PAINT & PROTECT DOORS & FRAMES - FAB114404B,Not Started,Bunker Rm 14 - 1F -FAB-FAB114404,,,,,,,,,,2026-02-16 08:00,2026-02-19 15:00,,,2026-02-16 08:00,2026-02-19 15:00,2025-12-02 10:00,2025-12-05 17:00,30,30,0
ZX-7750,SECAI TURNOVER FOR ACELERATION - Drywall & Inspect - Bunker Rm 13-FAB114403 BAKER/DESCOPE,Complete,Bunker Rm 13 - 1F -FAB-FAB114403,,,,,,,,,,2025-08-28 08:00,2025-08-28 08:00,2025-06-10 08:00,2025-06-10 08:00,2025-11-20 17:00,2025-11-20 17:00,2025-11-25 10:00,2025-11-25 10:00,0,0,100
ZX-7760,SECAI TURNOVER FOR ACELERATION - Fire Caulk & Inspect - Bunker Rm 13-FAB114403 BAKER/DESCOPE,Complete,Bunker Rm 13 - 1F -FAB-FAB114403,,,,,,,,,,2025-06-10 08:00,2025-06-10 08:00,2025-06-10 08:00,2025-06-10 08:00,2025-11-20 17:00,2025-11-20 17:00,2025-12-05 17:00,2025-12-05 17:00,0,0,100
ZX-7770,SECAI TURNOVER FOR ACELERATION - Control Joint & Inspect - Bunker Rm 13-FAB114403 BAKER/DESCOPE,Complete,Bunker Rm 13 - 1F -FAB-FAB114403,,,,,,,,,,2025-06-10 08:00,2025-06-10 08:00,2025-06-10 08:00,2025-06-10 08:00,2025-11-20 17:00,2025-11-20 17:00,2025-11-25 10:00,2025-11-25 10:00,0,0,100
FAB114403A-01,IMPACT - INSTALL/REWORK DRYWALL FRAMING AROUND DOORS - FAB114403A,Complete,Bunker Rm 13 - 1F -FAB-FAB114403,,,,,,,,,,2025-06-10 08:00,2025-06-10 08:00,2025-03-03 08:00,2025-03-12 08:00,2025-11-20 17:00,2025-11-20 17:00,2025-11-25 10:00,2025-11-25 10:00,0,0,100
FAB114403A-02,SECAI ROUGH IN/SECURITY - FAB114403A,Complete,Bunker Rm 13 - 1F -FAB-FAB114403,,,,,,,,,,2025-06-10 08:00,2025-06-10 08:00,2025-03-12 08:00,2025-03-12 08:00,2025-11-20 17:00,2025-11-20 17:00,2025-11-25 10:00,2025-11-25 10:00,0,0,100
FAB114403A-03,INSTALL DOOR FRAMES - FAB114403A,Complete,Bunker Rm 13 - 1F -FAB-FAB114403,,,,,,,,,,2025-09-10 13:00,2025-09-11 12:00,2025-03-12 00:00,2025-03-12 08:00,2025-11-20 17:00,2025-11-20 17:00,2025-11-25 10:00,2025-11-25 10:00,0,8,100
FAB114403A-04,INSTALL DOOR & HARDWARE - FAB114403A,Active,Bunker Rm 13 - 1F -FAB-FAB114403,,,,,,,,,,2025-11-06 08:00,2025-11-12 17:00,2025-11-06 08:00,,2025-11-21 08:00,2025-11-27 17:00,2025-11-25 10:00,2025-12-02 10:00,40,40,0
FAB114403A-05,PAINT & PROTECT DOORS & FRAMES - FAB114403A,Not Started,Bunker Rm 13 - 1F -FAB-FAB114403,,,,,,,,,,2026-02-16 08:00,2026-02-19 15:00,,,2026-02-16 08:00,2026-02-19 15:00,2025-12-02 10:00,2025-12-05 17:00,30,30,0
FAB114403B-01,IMPACT - INSTALL/REWORK DRYWALL FRAMING AROUND DOORS - FAB114403B,Complete,Bunker Rm 13 - 1F -FAB-FAB114403,,,,,,,,,,2025-06-10 08:00,2025-06-10 08:00,2025-03-05 08:00,2025-03-14 08:00,2025-11-20 17:00,2025-11-20 17:00,2025-12-02 10:00,2025-12-02 10:00,0,0,100
FAB114403B-02,SECAI ROUGH IN/SECURITY - FAB114403B,Complete,Bunker Rm 13 - 1F -FAB-FAB114403,,,,,,,,,,2025-06-10 08:00,2025-06-10 08:00,2025-03-14 08:00,2025-03-14 08:00,2025-11-20 17:00,2025-11-20 17:00,2025-12-02 10:00,2025-12-02 10:00,0,0,100
FAB114403B-03,INSTALL DOOR FRAMES - FAB114403B,Complete,Bunker Rm 13 - 1F -FAB-FAB114403,,,,,,,,,,2025-09-10 13:00,2025-09-11 12:00,2025-03-14 00:00,2025-03-14 16:00,2025-11-20 17:00,2025-11-20 17:00,2025-12-02 10:00,2025-12-02 10:00,0,8,100
FAB114403B-04,DOOR INSTALL - FAB114403B,Complete,Bunker Rm 13 - 1F -FAB-FAB114403,,,,,,,,,,2025-09-25 08:00,2025-09-25 17:00,2025-09-25 08:00,2025-09-25 17:00,2025-11-20 17:00,2025-11-20 17:00,2025-12-02 10:00,2025-12-02 10:00,0,8,100
FAB114403B-05,PAINT & PROTECT DOORS & FRAMES - FAB114403B,Complete,Bunker Rm 13 - 1F -FAB-FAB114403,,,,,,,,,,2025-09-23 08:00,2025-09-26 15:00,2025-09-23 08:00,2025-09-26 15:00,2025-11-20 17:00,2025-11-20 17:00,2025-12-02 10:00,2025-12-02 10:00,0,30,100
FAB114403B-06,INSTALL DOOR HARDWARE - FAB114403B,Not Started,Bunker Rm 13 - 1F -FAB-FAB114403,,,,,,,,,,2025-11-21 08:00,2025-11-26 15:00,,,2025-11-21 08:00,2025-11-26 15:00,2025-12-02 10:00,2025-12-05 17:00,30,30,0
ZX-7990,SECAI TURNOVER FOR ACELERATION - Drywall & Inspect - Bunker Rm 12-FAB114402 BAKER/DESCOPE,Complete,Bunker Rm 12 -1F -FAB-FAB114402,,,,,,,,,,2025-08-15 08:00,2025-08-15 08:00,2025-06-10 08:00,2025-06-10 08:00,2025-11-20 17:00,2025-11-20 17:00,2025-11-25 10:00,2025-11-25 10:00,0,0,100
ZX-8000,SECAI TURNOVER FOR ACELERATION - Fire Caulk & Inspect - Bunker Rm 12-FAB114402 BAKER/DESCOPE,Complete,Bunker Rm 12 -1F -FAB-FAB114402,,,,,,,,,,2025-06-10 08:00,2025-06-10 08:00,2025-06-10 08:00,2025-06-10 08:00,2025-11-20 17:00,2025-11-20 17:00,2025-12-05 17:00,2025-12-05 17:00,0,0,100
ZX-8010,SECAI TURNOVER FOR ACELERATION - Control Joint & Inspect - Bunker Rm 12-FAB114402 BAKER/DESCOPE,Complete,Bunker Rm 12 -1F -FAB-FAB114402,,,,,,,,,,2025-06-10 08:00,2025-06-10 08:00,2025-06-10 08:00,2025-06-10 08:00,2025-11-20 17:00,2025-11-20 17:00,2025-11-25 10:00,2025-11-25 10:00,0,0,100
FAB114402A-01,IMPACT - INSTALL/REWORK DRYWALL FRAMING AROUND DOORS BY SECAI - FAB114402A BAKER/DESCOPE,Complete,Bunker Rm 12 -1F -FAB-FAB114402,,,,,,,,,,2025-06-10 08:00,2025-06-10 08:00,2025-06-10 08:00,2025-06-10 08:00,2025-11-20 17:00,2025-11-20 17:00,2025-11-25 10:00,2025-11-25 10:00,0,0,100
FAB114402A-02,SECAI ROUGH IN/SECURITY - FAB114402A BAKER/DESCOPE,Complete,Bunker Rm 12 -1F -FAB-FAB114402,,,,,,,,,,2025-06-10 08:00,2025-06-10 08:00,2025-06-10 08:00,2025-06-10 08:00,2025-11-20 17:00,2025-11-20 17:00,2025-11-25 10:00,2025-11-25 10:00,0,0,100
FAB114402A-03,INSTALL DOOR FRAMES - FAB114402A,Complete,Bunker Rm 12 -1F -FAB-FAB114402,,,,,,,,,,2025-06-10 08:00,2025-06-10 08:00,2025-06-17 08:00,2025-06-17 08:00,2025-11-20 17:00,2025-11-20 17:00,2025-11-25 10:00,2025-11-25 10:00,0,0,100
FAB114402A-04,INSTALL DOOR & HARDWARE - FAB114402A,Active,Bunker Rm 12 -1F -FAB-FAB114402,,,,,,,,,,2025-10-29 08:00,2025-11-04 17:00,2025-10-29 08:00,,2025-11-21 08:00,2025-11-27 17:00,2025-11-25 10:00,2025-12-02 10:00,40,40,0
FAB114402A-05,PAINT & PROTECT DOORS & FRAMES - FAB114402A,Not Started,Bunker Rm 12 -1F -FAB-FAB114402,,,,,,,,,,2026-02-16 08:00,2026-02-19 15:00,,,2026-02-16 08:00,2026-02-19 15:00,2025-12-02 10:00,2025-12-05 17:00,30,30,0
FAB114402B-01,IMPACT - INSTALL/REWORK DRYWALL FRAMING AROUND DOORS - FAB114402B,Complete,Bunker Rm 12 -1F -FAB-FAB114402,,,,,,,,,,2025-06-10 08:00,2025-06-10 08:00,2025-03-04 08:00,2025-03-12 08:00,2025-11-20 17:00,2025-11-20 17:00,2025-11-25 10:00,2025-11-25 10:00,0,0,100
FAB114402B-02,SECAI ROUGH IN/SECURITY - FAB114402B,Complete,Bunker Rm 12 -1F -FAB-FAB114402,,,,,,,,,,2025-06-10 08:00,2025-06-10 08:00,2025-03-12 08:00,2025-03-12 08:00,2025-11-20 17:00,2025-11-20 17:00,2025-11-25 10:00,2025-11-25 10:00,0,0,100
FAB114402B-03,INSTALL DOOR FRAMES - FAB114402B,Complete,Bunker Rm 12 -1F -FAB-FAB114402,,,,,,,,,,2025-09-16 13:00,2025-09-17 12:00,2025-03-12 00:00,2025-03-12 16:00,2025-11-20 17:00,2025-11-20 17:00,2025-11-25 10:00,2025-11-25 10:00,0,8,100
FAB114402B-04,INSTALL DOOR & HARDWARE - FAB114402B,Active,Bunker Rm 12 -1F -FAB-FAB114402,,,,,,,,,,2025-09-25 08:00,2025-10-01 17:00,2025-09-25 08:00,,2025-11-21 08:00,2025-11-27 17:00,2025-11-25 10:00,2025-12-02 10:00,40,40,0
FAB114402B-05,PAINT & PROTECT DOORS & FRAMES - FAB114402B,Not Started,Bunker Rm 12 -1F -FAB-FAB114402,,,,,,,,,,2026-02-16 08:00,2026-02-19 15:00,,,2026-02-16 08:00,2026-02-19 15:00,2025-12-02 10:00,2025-12-05 17:00,30,30,0
FAB114402A-11,IMPACT - SECAI - MEP CONDUIT BLOCKING FRAME INSTALLATION,Complete,Bunker Rm 12 -1F -FAB-FAB114402,,,,,,,,,,2025-06-20 08:00,2025-06-30 10:00,2025-05-19 08:00,2025-06-13 10:00,2025-11-20 17:00,2025-11-20 17:00,2025-11-25 10:00,2025-11-25 10:00,0,50,100
ZX-8290,SECAI TURNOVER FOR ACELERATION - Drywall & Inspect - Bunker Rm 11-FAB114203 BAKER/DESCOPE,Complete,Bunker Rm 11- 1F -FAB-FAB114203,,,,,,,,,,2025-08-28 08:00,2025-08-28 08:00,2025-06-10 08:00,2025-06-10 08:00,2025-11-20 17:00,2025-11-20 17:00,2025-11-25 10:00,2025-11-25 10:00,0,0,100
ZX-8300,SECAI TURNOVER FOR ACELERATION - Fire Caulk & Inspect - Bunker Rm 11-FAB114203 BAKER/DESCOPE,Complete,Bunker Rm 11- 1F -FAB-FAB114203,,,,,,,,,,2025-06-10 08:00,2025-06-10 08:00,2025-06-10 08:00,2025-06-10 08:00,2025-11-20 17:00,2025-11-20 17:00,2025-12-05 17:00,2025-12-05 17:00,0,0,100
ZX-8310,SECAI TURNOVER FOR ACELERATION - Control Joint & Inspect - Bunker Rm 11-FAB114203 BAKER/DESCOPE,Complete,Bunker Rm 11- 1F -FAB-FAB114203,,,,,,,,,,2025-06-10 08:00,2025-06-10 08:00,2025-06-10 08:00,2025-06-10 08:00,2025-11-20 17:00,2025-11-20 17:00,2025-11-25 10:00,2025-11-25 10:00,0,0,100
FAB114203A-01,IMPACT - INSTALL/REWORK DRYWALL FRAMING AROUND DOORS - FAB114203A,Complete,Bunker Rm 11- 1F -FAB-FAB114203,,,,,,,,,,2025-06-10 08:00,2025-06-10 08:00,2025-03-04 08:00,2025-03-13 08:00,2025-11-20 17:00,2025-11-20 17:00,2025-11-25 10:00,2025-11-25 10:00,0,0,100
FAB114203A-02,SECAI ROUGH IN/SECURITY - FAB114203A,Complete,Bunker Rm 11- 1F -FAB-FAB114203,,,,,,,,,,2025-06-10 08:00,2025-06-10 08:00,2025-03-13 08:00,2025-03-13 08:00,2025-11-20 17:00,2025-11-20 17:00,2025-11-25 10:00,2025-11-25 10:00,0,0,100
FAB114203A-03,INSTALL DOOR FRAMES - FAB114203A,Complete,Bunker Rm 11- 1F -FAB-FAB114203,,,,,,,,,,2025-09-19 13:00,2025-09-22 12:00,2025-03-13 00:00,2025-03-13 16:00,2025-11-20 17:00,2025-11-20 17:00,2025-11-25 10:00,2025-11-25 10:00,0,8,100
FAB114203A-04,INSTALL DOOR & HARDWARE - FAB114203A,Active,Bunker Rm 11- 1F -FAB-FAB114203,,,,,,,,,,2025-11-07 08:00,2025-11-13 17:00,2025-11-07 08:00,,2025-11-21 08:00,2025-11-27 17:00,2025-11-25 10:00,2025-12-02 10:00,40,40,0
FAB114203A-05,PAINT & PROTECT DOORS & FRAMES - FAB114203A,Not Started,Bunker Rm 11- 1F -FAB-FAB114203,,,,,,,,,,2026-02-16 08:00,2026-02-19 15:00,,,2026-02-16 08:00,2026-02-19 15:00,2025-12-02 10:00,2025-12-05 17:00,30,30,0
FAB114203B-01,IMPACT - INSTALL/REWORK DRYWALL FRAMING AROUND DOORS - FAB114203B,Complete,Bunker Rm 11- 1F -FAB-FAB114203,,,,,,,,,,2025-06-10 08:00,2025-06-10 08:00,2025-03-04 08:00,2025-06-13 08:00,2025-11-20 17:00,2025-11-20 17:00,2025-11-27 08:00,2025-11-27 08:00,0,0,100
FAB114203B-02,SECAI ROUGH IN/SECURITY - FAB114203B,Complete,Bunker Rm 11- 1F -FAB-FAB114203,,,,,,,,,,2025-06-10 08:00,2025-06-10 08:00,2025-03-13 08:00,2025-03-13 08:00,2025-11-20 17:00,2025-11-20 17:00,2025-11-27 08:00,2025-11-27 08:00,0,0,100
FAB114203B-03,INSTALL DOOR FRAMES - FAB114203B,Complete,Bunker Rm 11- 1F -FAB-FAB114203,,,,,,,,,,2025-09-19 13:00,2025-09-22 12:00,2025-03-13 00:00,2025-03-13 16:00,2025-11-20 17:00,2025-11-20 17:00,2025-11-27 08:00,2025-11-27 08:00,0,8,100
FAB114203B-04,INSTALL DOOR & HARDWARE - FAB114203B,Active,Bunker Rm 11- 1F -FAB-FAB114203,,,,,,,,,,2025-07-29 08:00,2025-08-04 17:00,2025-07-29 08:00,,2025-11-21 08:00,2025-11-27 17:00,2025-11-27 08:00,2025-12-03 17:00,40,40,0
FAB114203B-05,PAINT & PROTECT DOORS & FRAMES - FAB114203B,Not Started,Bunker Rm 11- 1F -FAB-FAB114203,,,,,,,,,,2026-02-16 08:00,2026-02-17 17:00,,,2026-02-16 08:00,2026-02-17 17:00,2025-12-04 08:00,2025-12-05 17:00,16,16,0
ZX-8590,SECAI TURNOVER FOR ACELERATION - Drywall & Inspect - Bunker Rm 10-FAB114155 BAKER/DESCOPE,Complete,Bunker Rm 10- 1F -FAB-FAB114155,,,,,,,,,,2025-09-05 08:00,2025-09-18 17:00,2025-06-10 08:00,2025-06-10 16:00,2025-11-20 17:00,2025-11-20 17:00,2025-11-25 10:00,2025-11-25 10:00,0,80,100
ZX-8600,SECAI TURNOVER FOR ACELERATION - Fire Caulk & Inspect - Bunker Rm 10-FAB114155 BAKER/DESCOPE,Complete,Bunker Rm 10- 1F -FAB-FAB114155,,,,,,,,,,2025-09-19 08:00,2025-09-22 17:00,2025-06-10 08:00,2025-06-10 16:00,2025-11-20 17:00,2025-11-20 17:00,2025-12-05 17:00,2025-12-05 17:00,0,16,100
ZX-8610,SECAI TURNOVER FOR ACELERATION - Control Joint & Inspect - Bunker Rm 10-FAB114155 BAKER/DESCOPE,Complete,Bunker Rm 10- 1F -FAB-FAB114155,,,,,,,,,,2025-09-19 08:00,2025-09-22 17:00,2025-06-10 08:00,2025-06-10 16:00,2025-11-20 17:00,2025-11-20 17:00,2025-11-25 10:00,2025-11-25 10:00,0,16,100
FAB114155A-01,IMPACT - INSTALL/REWORK DRYWALL FRAMING AROUND DOORS BY SECAI - FAB114155A,Complete,Bunker Rm 10- 1F -FAB-FAB114155,,,,,,,,,,2025-09-23 08:00,2025-10-01 17:00,2025-03-05 08:00,2025-03-13 16:00,2025-11-20 17:00,2025-11-20 17:00,2025-11-25 10:00,2025-11-25 10:00,0,56,100
FAB114155A-02,SECAI ROUGH IN/SECURITY - FAB114155A,Complete,Bunker Rm 10- 1F -FAB-FAB114155,,,,,,,,,,2025-10-02 08:00,2025-10-02 17:00,2025-03-13 08:00,2025-03-13 16:00,2025-11-20 17:00,2025-11-20 17:00,2025-11-25 10:00,2025-11-25 10:00,0,8,100
FAB114155A-03,INSTALL DOOR FRAMES - FAB114155A,Complete,Bunker Rm 10- 1F -FAB-FAB114155,,,,,,,,,,2025-09-16 13:00,2025-09-17 12:00,2025-03-13 00:00,2025-03-13 08:00,2025-11-20 17:00,2025-11-20 17:00,2025-11-25 10:00,2025-11-25 10:00,0,8,100
FAB114155A-04,INSTALL DOOR & HARDWARE - FAB114155A,Active,Bunker Rm 10- 1F -FAB-FAB114155,,,,,,,,,,2025-09-12 08:00,2025-09-18 17:00,2025-09-12 08:00,,2025-11-21 08:00,2025-11-27 17:00,2025-11-25 10:00,2025-12-02 10:00,40,40,0
FAB114155A-05,PAINT & PROTECT DOORS & FRAMES - FAB114155A,Not Started,Bunker Rm 10- 1F -FAB-FAB114155,,,,,,,,,,2026-02-16 08:00,2026-02-19 15:00,,,2026-02-16 08:00,2026-02-19 15:00,2025-12-02 10:00,2025-12-05 17:00,30,30,0
FAB114155B-01,IMPACT - INSTALL/REWORK DRYWALL FRAMING AROUND DOORS BY SECAI - FAB114155B,Complete,Bunker Rm 10- 1F -FAB-FAB114155,,,,,,,,,,2025-09-23 08:00,2025-10-01 17:00,2025-03-18 08:00,2025-03-26 16:00,2025-11-20 17:00,2025-11-20 17:00,2025-11-25 10:00,2025-11-25 10:00,0,56,100
FAB114155B-02,SECAI ROUGH IN/SECURITY - FAB114155B,Complete,Bunker Rm 10- 1F -FAB-FAB114155,,,,,,,,,,2025-10-02 08:00,2025-10-02 17:00,2025-03-26 08:00,2025-03-26 16:00,2025-11-20 17:00,2025-11-20 17:00,2025-11-25 10:00,2025-11-25 10:00,0,8,100
FAB114155B-03,INSTALL DOOR FRAMES - FAB114155B,Complete,Bunker Rm 10- 1F -FAB-FAB114155,,,,,,,,,,2025-09-16 13:00,2025-09-17 12:00,2025-03-26 00:00,2025-03-26 16:00,2025-11-20 17:00,2025-11-20 17:00,2025-11-25 10:00,2025-11-25 10:00,0,8,100
FAB114155B-04,INSTALL DOOR & HARDWARE - FAB114155B,Active,Bunker Rm 10- 1F -FAB-FAB114155,,,,,,,,,,2025-10-13 08:00,2025-10-17 17:00,2025-10-13 08:00,,2025-11-21 08:00,2025-11-27 17:00,2025-11-25 10:00,2025-12-02 10:00,40,40,0
FAB114155B-05,PAINT & PROTECT DOORS & FRAMES - FAB114155B,Not Started,Bunker Rm 10- 1F -FAB-FAB114155,,,,,,,,,,2026-02-16 08:00,2026-02-19 15:00,,,2026-02-16 08:00,2026-02-19 15:00,2025-12-02 10:00,2025-12-05 17:00,30,30,0
ZX-7720,SECAI TURNOVER FOR ACELERATION - Drywall & Inspect - Bunker Rm 9-FAB114154 BAKER/DESCOPE,Complete,Bunker Rm 9 - 1F -FAB-FAB114154,,,,,,,,,,2025-08-29 08:00,2025-08-29 08:00,2025-06-10 08:00,2025-06-10 08:00,2025-11-20 17:00,2025-11-20 17:00,2025-11-24 08:00,2025-11-24 08:00,0,0,100
ZX-7730,SECAI TURNOVER FOR ACELERATION - Fire Caulk & Inspect - Bunker Rm 9-FAB114154 BAKER/DESCOPE,Complete,Bunker Rm 9 - 1F -FAB-FAB114154,,,,,,,,,,2025-06-10 08:00,2025-06-10 08:00,2025-06-10 08:00,2025-06-10 08:00,2025-11-20 17:00,2025-11-20 17:00,2025-12-05 17:00,2025-12-05 17:00,0,0,100
ZX-7740,SECAI TURNOVER FOR ACELERATION - Control Joint & Inspect - Bunker Rm 9-FAB114154 BAKER/DESCOPE,Complete,Bunker Rm 9 - 1F -FAB-FAB114154,,,,,,,,,,2025-06-10 08:00,2025-06-10 08:00,2025-06-10 08:00,2025-06-10 08:00,2025-11-20 17:00,2025-11-20 17:00,2025-11-25 10:00,2025-11-25 10:00,0,0,100
FAB114154A-01,IMPACT - INSTALL/REWORK DRYWALL FRAMING AROUND DOORS - FAB114154A,Complete,Bunker Rm 9 - 1F -FAB-FAB114154,,,,,,,,,,2025-03-04 08:00,2025-03-04 08:00,2025-03-04 08:00,2025-03-11 17:00,2025-11-20 17:00,2025-11-20 17:00,2025-11-27 08:00,2025-11-27 08:00,0,0,100
FAB114154A-02,SECAI ROUGH IN/SECURITY - FAB114154A BAKER/DESCOPE,Complete,Bunker Rm 9 - 1F -FAB-FAB114154,,,,,,,,,,2025-06-10 08:00,2025-06-10 08:00,2025-03-11 08:00,2025-03-11 08:00,2025-11-20 17:00,2025-11-20 17:00,2025-11-27 08:00,2025-11-27 08:00,0,0,100
FAB114154A-03,INSTALL DOOR FRAMES - FAB114154A,Complete,Bunker Rm 9 - 1F -FAB-FAB114154,,,,,,,,,,2025-03-11 08:00,2025-03-11 08:00,2025-03-11 08:00,2025-03-11 08:00,2025-11-20 17:00,2025-11-20 17:00,2025-11-27 08:00,2025-11-27 08:00,0,0,100
FAB114154A-04,INSTALL DOOR & HARDWARE - FAB114154A,Active,Bunker Rm 9 - 1F -FAB-FAB114154,,,,,,,,,,2025-08-22 08:00,2025-08-28 17:00,2025-08-22 08:00,,2025-11-21 08:00,2025-11-27 17:00,2025-11-27 08:00,2025-12-03 17:00,40,40,0
FAB114154A-05,PAINT & PROTECT DOORS & FRAMES - FAB114154A,Not Started,Bunker Rm 9 - 1F -FAB-FAB114154,,,,,,,,,,2026-02-16 08:00,2026-02-17 17:00,,,2026-02-16 08:00,2026-02-17 17:00,2025-12-04 08:00,2025-12-05 17:00,16,16,0
FAB114154B-01,IMPACT - INSTALL/REWORK DRYWALL FRAMING AROUND DOORS - FAB114154B,Complete,Bunker Rm 9 - 1F -FAB-FAB114154,,,,,,,,,,2025-03-03 08:00,2025-03-03 08:00,2025-03-04 08:00,2025-03-11 17:00,2025-11-20 17:00,2025-11-20 17:00,2025-11-25 10:00,2025-11-25 10:00,0,0,100
FAB114154B-02,SECAI ROUGH IN/SECURITY - FAB114154B,Complete,Bunker Rm 9 - 1F -FAB-FAB114154,,,,,,,,,,2025-06-10 08:00,2025-06-10 08:00,2025-03-11 08:00,2025-03-11 08:00,2025-11-20 17:00,2025-11-20 17:00,2025-11-25 10:00,2025-11-25 10:00,0,0,100
FAB114154B-03,INSTALL DOOR FRAMES - FAB114154B,Complete,Bunker Rm 9 - 1F -FAB-FAB114154,,,,,,,,,,2025-06-10 08:00,2025-06-10 08:00,2025-03-11 08:00,2025-03-11 08:00,2025-11-20 17:00,2025-11-20 17:00,2025-11-25 10:00,2025-11-25 10:00,0,0,100
FAB114154B-04,INSTALL DOOR & HARDWARE - FAB114154B,Active,Bunker Rm 9 - 1F -FAB-FAB114154,,,,,,,,,,2025-10-21 08:00,2025-10-27 17:00,2025-10-21 08:00,,2025-11-21 08:00,2025-11-27 17:00,2025-11-25 10:00,2025-12-02 10:00,40,40,0
FAB114154B-05,PAINT & PROTECT DOORS & FRAMES - FAB114154B,Not Started,Bunker Rm 9 - 1F -FAB-FAB114154,,,,,,,,,,2026-02-16 08:00,2026-02-19 15:00,,,2026-02-16 08:00,2026-02-19 15:00,2025-12-02 10:00,2025-12-05 17:00,30,30,0
ZX-7900,SECAI TURNOVER FOR ACELERATION - Drywall & Inspect - Bunker Rm 8-FAB114153 BAKER/DESCOPE,Complete,Bunker Rm 8 - 1F -FAB-FAB114153,,,,,,,,,,2025-06-10 08:00,2025-06-10 08:00,2025-06-10 08:00,2025-06-10 08:00,2025-11-20 17:00,2025-11-20 17:00,2025-11-25 10:00,2025-11-25 10:00,0,0,100
ZX-7910,SECAI TURNOVER FOR ACELERATION - Fire Caulk & Inspect - Bunker Rm 8-FAB114153 BAKER/DESCOPE,Complete,Bunker Rm 8 - 1F -FAB-FAB114153,,,,,,,,,,2025-06-10 08:00,2025-06-10 08:00,2025-06-10 08:00,2025-06-10 08:00,2025-11-20 17:00,2025-11-20 17:00,2025-12-05 17:00,2025-12-05 17:00,0,0,100
ZX-7920,SECAI TURNOVER FOR ACELERATION - Control Joint & Inspect - Bunker Rm 8-FAB114153 BAKER/DESCOPE,Complete,Bunker Rm 8 - 1F -FAB-FAB114153,,,,,,,,,,2025-06-10 08:00,2025-06-10 08:00,2025-06-10 08:00,2025-06-10 08:00,2025-11-20 17:00,2025-11-20 17:00,2025-11-25 10:00,2025-11-25 10:00,0,0,100
FAB114153A-01,IMPACT - INSTALL/REWORK DRYWALL FRAMING AROUND DOORS BY SECAI - FAB114153A,Complete,Bunker Rm 8 - 1F -FAB-FAB114153,,,,,,,,,,2025-06-10 08:00,2025-06-10 08:00,2025-03-03 08:00,2025-03-11 08:00,2025-11-20 17:00,2025-11-20 17:00,2025-11-25 10:00,2025-11-25 10:00,0,0,100
FAB114153A-02,SECAI ROUGH IN/SECURITY - FAB114153A,Complete,Bunker Rm 8 - 1F -FAB-FAB114153,,,,,,,,,,2025-06-10 08:00,2025-06-10 08:00,2025-03-11 08:00,2025-06-11 08:00,2025-11-20 17:00,2025-11-20 17:00,2025-11-25 10:00,2025-11-25 10:00,0,0,100
FAB114153A-03,INSTALL DOOR FRAMES - FAB114153A,Complete,Bunker Rm 8 - 1F -FAB-FAB114153,,,,,,,,,,2025-10-16 13:00,2025-10-17 12:00,2025-03-11 00:00,2025-03-11 16:00,2025-11-20 17:00,2025-11-20 17:00,2025-11-25 10:00,2025-11-25 10:00,0,8,100
FAB114153A-04,INSTALL DOOR & HARDWARE - FAB114153A,Active,Bunker Rm 8 - 1F -FAB-FAB114153,,,,,,,,,,2025-11-07 08:00,2025-11-13 17:00,2025-11-07 08:00,,2025-11-21 08:00,2025-11-27 17:00,2025-11-25 10:00,2025-12-02 10:00,40,40,0
FAB114153A-05,PAINT & PROTECT DOORS & FRAMES - FAB114153A,Not Started,Bunker Rm 8 - 1F -FAB-FAB114153,,,,,,,,,,2026-02-16 08:00,2026-02-19 15:00,,,2026-02-16 08:00,2026-02-19 15:00,2025-12-02 10:00,2025-12-05 17:00,30,30,0
FAB114153B-01,IMPACT - INSTALL/REWORK DRYWALL FRAMING AROUND DOORS BY SECAI - FAB114153B,Complete,Bunker Rm 8 - 1F -FAB-FAB114153,,,,,,,,,,2025-06-10 08:00,2025-06-10 08:00,2025-03-25 08:00,2025-03-25 08:00,2025-11-20 17:00,2025-11-20 17:00,2025-11-27 08:00,2025-11-27 08:00,0,0,100
FAB114153B-02,SECAI ROUGH IN/SECURITY - FAB114153B,Complete,Bunker Rm 8 - 1F -FAB-FAB114153,,,,,,,,,,2025-06-10 08:00,2025-06-10 08:00,2025-03-25 08:00,2025-03-25 08:00,2025-11-20 17:00,2025-11-20 17:00,2025-11-27 08:00,2025-11-27 08:00,0,0,100
FAB114153B-03,INSTALL DOOR FRAMES - FAB114153B,Complete,Bunker Rm 8 - 1F -FAB-FAB114153,,,,,,,,,,2025-10-16 13:00,2025-10-17 12:00,2025-03-25 00:00,2025-03-25 16:00,2025-11-20 17:00,2025-11-20 17:00,2025-11-27 08:00,2025-11-27 08:00,0,8,100
FAB114153B-04,INSTALL DOOR & HARDWARE - FAB114153B,Active,Bunker Rm 8 - 1F -FAB-FAB114153,,,,,,,,,,2025-08-22 08:00,2025-08-28 17:00,2025-08-22 08:00,,2025-11-21 08:00,2025-11-27 17:00,2025-11-27 08:00,2025-12-03 17:00,40,40,0
FAB114153B-05,PAINT & PROTECT DOORS & FRAMES - FAB114153B,Not Started,Bunker Rm 8 - 1F -FAB-FAB114153,,,,,,,,,,2026-02-16 08:00,2026-02-17 17:00,,,2026-02-16 08:00,2026-02-17 17:00,2025-12-04 08:00,2025-12-05 17:00,16,16,0
ZX-8200,SECAI TURNOVER FOR ACELERATION - Drywall & Inspect - Bunker Rm 7-FAB114152 BAKER/DESCOPE,Complete,Bunker Rm 7 - 1F -FAB-FAB114152,,,,,,,,,,2025-06-10 08:00,2025-06-10 08:00,2025-06-10 08:00,2025-06-10 08:00,2025-11-20 17:00,2025-11-20 17:00,2025-11-25 10:00,2025-11-25 10:00,0,0,100
ZX-8210,SECAI TURNOVER FOR ACELERATION - Fire Caulk & Inspect - Bunker Rm 7-FAB114152 BAKER/DESCOPE,Complete,Bunker Rm 7 - 1F -FAB-FAB114152,,,,,,,,,,2025-06-10 08:00,2025-06-10 08:00,2025-06-10 08:00,2025-06-10 08:00,2025-11-20 17:00,2025-11-20 17:00,2025-12-05 17:00,2025-12-05 17:00,0,0,100
ZX-8220,SECAI TURNOVER FOR ACELERATION - Control Joint & Inspect - Bunker Rm 7-FAB114152 BAKER/DESCOPE,Complete,Bunker Rm 7 - 1F -FAB-FAB114152,,,,,,,,,,2025-06-10 08:00,2025-06-10 08:00,2025-06-10 08:00,2025-06-10 08:00,2025-11-20 17:00,2025-11-20 17:00,2025-11-25 10:00,2025-11-25 10:00,0,0,100
FAB114152A-01,IMPACT - INSTALL/REWORK DRYWALL FRAMING AROUND DOORS - FAB114152A,Complete,Bunker Rm 7 - 1F -FAB-FAB114152,,,,,,,,,,2025-06-10 08:00,2025-06-10 08:00,2025-03-11 08:00,2025-03-20 08:00,2025-11-20 17:00,2025-11-20 17:00,2025-11-25 10:00,2025-11-25 10:00,0,0,100
FAB114152A-02,SECAI ROUGH IN/SECURITY - FAB114152A,Complete,Bunker Rm 7 - 1F -FAB-FAB114152,,,,,,,,,,2025-06-10 08:00,2025-06-10 08:00,2025-03-20 08:00,2025-03-20 08:00,2025-11-20 17:00,2025-11-20 17:00,2025-11-25 10:00,2025-11-25 10:00,0,0,100
FAB114152A-03,INSTALL DOOR FRAMES - FAB114152A,Complete,Bunker Rm 7 - 1F -FAB-FAB114152,,,,,,,,,,2025-09-17 13:00,2025-09-18 12:00,2025-03-20 00:00,2025-03-20 16:00,2025-11-20 17:00,2025-11-20 17:00,2025-11-25 10:00,2025-11-25 10:00,0,8,100
FAB114152A-04,INSTALL DOOR & HARDWARE - FAB114152A,Active,Bunker Rm 7 - 1F -FAB-FAB114152,,,,,,,,,,2025-09-12 08:00,2025-09-18 17:00,2025-11-07 08:00,,2025-11-21 08:00,2025-11-27 17:00,2025-11-25 10:00,2025-12-02 10:00,40,40,0
FAB114152A-05,PAINT & PROTECT DOORS & FRAMES - FAB114152A,Not Started,Bunker Rm 7 - 1F -FAB-FAB114152,,,,,,,,,,2026-02-16 08:00,2026-02-19 15:00,,,2026-02-16 08:00,2026-02-19 15:00,2025-12-02 10:00,2025-12-05 17:00,30,30,0
FAB114152B-01,IMPACT - INSTALL/REWORK DRYWALL FRAMING AROUND DOORS - FAB114152B,Complete,Bunker Rm 7 - 1F -FAB-FAB114152,,,,,,,,,,2025-06-10 08:00,2025-06-10 08:00,2025-03-11 08:00,2025-03-20 08:00,2025-11-20 17:00,2025-11-20 17:00,2025-11-25 10:00,2025-11-25 10:00,0,0,100
FAB114152B-02,SECAI ROUGH IN/SECURITY - FAB114152B,Complete,Bunker Rm 7 - 1F -FAB-FAB114152,,,,,,,,,,2025-06-10 08:00,2025-06-10 08:00,2025-03-20 08:00,2025-03-20 08:00,2025-11-20 17:00,2025-11-20 17:00,2025-11-25 10:00,2025-11-25 10:00,0,0,100
FAB114152B-03,INSTALL DOOR FRAMES - FAB114152B,Complete,Bunker Rm 7 - 1F -FAB-FAB114152,,,,,,,,,,2025-09-17 13:00,2025-09-18 12:00,2025-03-20 00:00,2025-03-20 16:00,2025-11-20 17:00,2025-11-20 17:00,2025-11-25 10:00,2025-11-25 10:00,0,8,100
FAB114152B-04,INSTALL DOOR & HARDWARE - FAB114152B,Not Started,Bunker Rm 7 - 1F -FAB-FAB114152,,,,,,,,,,2025-11-21 08:00,2025-11-27 17:00,,,2025-11-21 08:00,2025-11-27 17:00,2025-11-25 10:00,2025-12-02 10:00,40,40,0
FAB114152B-05,PAINT & PROTECT DOORS & FRAMES - FAB114152B,Not Started,Bunker Rm 7 - 1F -FAB-FAB114152,,,,,,,,,,2026-02-16 08:00,2026-02-19 15:00,,,2026-02-16 08:00,2026-02-19 15:00,2025-12-02 10:00,2025-12-05 17:00,30,30,0
ZX-8500,Complete Drywall & Inspect - D-G/3-1F MK MARLOW,Complete,D-G/3 - 1F - FIZ,,,,,,,,,,2025-09-04 08:00,2025-09-04 08:00,2025-09-04 08:00,2025-09-04 08:00,2025-11-20 17:00,2025-11-20 17:00,2025-12-05 17:00,2025-12-05 17:00,0,0,100
ZX-8510,Complete Fire Caulk & Inspect - D-G/3-1F MK MARLOW,Complete,D-G/3 - 1F - FIZ,,,,,,,,,,2025-09-04 08:00,2025-09-05 17:00,2025-09-04 08:00,2025-09-05 17:00,2025-11-20 17:00,2025-11-20 17:00,2025-12-05 17:00,2025-12-05 17:00,0,16,100
ZX-8050,Complete Drywall & Inspect - G.3-J/3-1F MK MARLOW,Complete,G.3-J/3 - 1F - FIZ,,,,,,,,,,2025-08-04 08:00,2025-08-15 17:00,2025-08-04 08:00,2025-08-15 17:00,2025-11-20 17:00,2025-11-20 17:00,2025-12-05 17:00,2025-12-05 17:00,0,80,100
ZX-8350,Complete Drywall & Inspect - PCS Monitoring Rm-1F-FAB112155 NON RATED WALLS,Complete,PCS Monitoring Rm - 1F - FAB-FAB112155,,,,,,,,,,2024-08-19 08:00,2024-08-30 17:00,2024-08-19 08:00,2024-08-30 16:00,2025-11-20 17:00,2025-11-20 17:00,2025-11-25 10:00,2025-11-25 10:00,0,80,100
ZX-8370,SECAI TURNOVER FOR ACELERATION - Control Joint & Inspect - PCS Monitoring Rm-1F-FAB112155B BAKER/DESCOPE,Complete,PCS Monitoring Rm - 1F - FAB-FAB112155,,,,,,,,,,2025-08-01 08:00,2025-08-04 17:00,2025-06-27 08:00,2025-06-27 16:00,2025-11-20 17:00,2025-11-20 17:00,2025-11-25 10:00,2025-11-25 10:00,0,16,100
FAB112155A-25,DOOR FRAME HANDED OVER TO SECAI 08/14 - FAB112155A,Complete,PCS Monitoring Rm - 1F - FAB-FAB112155,,,,,,,,,,2025-08-05 08:00,2025-08-13 17:00,2025-08-14 08:00,2025-08-14 16:00,2025-11-20 17:00,2025-11-20 17:00,2025-11-25 10:00,2025-11-25 10:00,0,56,100
FAB112155A-35,INSTALL DOOR FRAME BY SECAI - FAB112155A HANDED OVER 08/14,Complete,PCS Monitoring Rm - 1F - FAB-FAB112155,,,,,,,,,,2025-09-18 08:00,2025-09-24 17:00,2025-08-15 08:00,2025-08-22 17:00,2025-11-20 17:00,2025-11-20 17:00,2025-11-25 10:00,2025-11-25 10:00,0,40,100
FAB112155A-04,INSTALL DOOR & HARDWARE - FAB112155A,Active,PCS Monitoring Rm - 1F - FAB-FAB112155,,,,,,,,,,2025-09-24 08:00,2025-09-30 17:00,2025-09-24 08:00,,2025-11-21 08:00,2025-11-27 17:00,2025-11-25 10:00,2025-12-02 10:00,40,40,0
FAB112155A-05,PAINT & PROTECT DOORS & FRAMES - FAB112155A,Not Started,PCS Monitoring Rm - 1F - FAB-FAB112155,,,,,,,,,,2026-02-16 08:00,2026-02-19 15:00,,,2026-02-16 08:00,2026-02-19 15:00,2025-12-02 10:00,2025-12-05 17:00,30,30,0
FAB112155B-01,IMPACT - REWORK DRYWALL FOR/AND INSTALL DOOR FRAMES - FAB112155B,Complete,PCS Monitoring Rm - 1F - FAB-FAB112155,,,,,,,,,,2025-08-05 08:00,2025-08-13 17:00,2025-03-10 08:00,2025-03-19 16:00,2025-11-20 17:00,2025-11-20 17:00,2025-11-25 10:00,2025-11-25 10:00,0,56,100
FAB112155B-02,SECAI ROUGH IN/SECURITY - FAB112155B,Complete,PCS Monitoring Rm - 1F - FAB-FAB112155,,,,,,,,,,2025-08-14 08:00,2025-08-14 17:00,2025-03-19 08:00,2025-03-19 16:00,2025-11-20 17:00,2025-11-20 17:00,2025-11-25 10:00,2025-11-25 10:00,0,8,100
FAB112155B-03,INSTALL DOOR FRAMES - FAB112155B,Complete,PCS Monitoring Rm - 1F - FAB-FAB112155,,,,,,,,,,2025-09-22 13:00,2025-09-23 12:00,2025-03-19 00:00,2025-03-19 16:00,2025-11-20 17:00,2025-11-20 17:00,2025-11-25 10:00,2025-11-25 10:00,0,8,100
FAB112155B-04,INSTALL DOOR & HARDWARE - FAB112155B,Not Started,PCS Monitoring Rm - 1F - FAB-FAB112155,,,,,,,,,,2025-11-21 08:00,2025-11-27 17:00,,,2025-11-21 08:00,2025-11-27 17:00,2025-11-25 10:00,2025-12-02 10:00,40,40,0
FAB112155B-05,PAINT & PROTECT DOORS & FRAMES - FAB112155B,Not Started,PCS Monitoring Rm - 1F - FAB-FAB112155,,,,,,,,,,2026-02-16 08:00,2026-02-19 15:00,,,2026-02-16 08:00,2026-02-19 15:00,2025-12-02 10:00,2025-12-05 17:00,30,30,0
ZX-8650,SECAI TURNOVER FOR ACELERATION - Drywall & Inspect - PCS Cleaning Rm-1F-FAB112157 BAKER/DESCOPE,Complete,PCS Cleaning Rm - 1F -FAB-FAB112157,,,,,,,,,,2025-09-19 08:00,2025-10-02 17:00,2025-06-27 08:00,2025-06-27 16:00,2025-11-20 17:00,2025-11-20 17:00,2025-12-05 17:00,2025-12-05 17:00,0,80,100
ZX-8670,SECAI TURNOVER FOR ACELERATION - Control Joint & Inspect - PCS Cleaning Rm-1F-FAB112157 BAKER/DESCOPE,Complete,PCS Cleaning Rm - 1F -FAB-FAB112157,,,,,,,,,,2025-10-03 08:00,2025-10-06 17:00,2025-06-27 08:00,2025-06-27 16:00,2025-11-20 17:00,2025-11-20 17:00,2025-12-05 17:00,2025-12-05 17:00,0,16,100
ZX-7870,Complete Drywall & Inspect - Manufacturing Storage 1-1F-FAB112157 NON RATED WALLS,Complete,Manufacturing Storage 1 - 1F -FAB-FAB112157,,,,,,,,,,2025-10-02 08:00,2025-10-15 17:00,2024-08-19 08:00,2024-08-30 16:00,2025-11-20 17:00,2025-11-20 17:00,2025-12-05 17:00,2025-12-05 17:00,0,80,100
ZX-7880,Complete Control Joint & Inspect - Manufacturing Storage 1-1F-FAB112157,Complete,Manufacturing Storage 1 - 1F -FAB-FAB112157,,,,,,,,,,2024-08-28 08:00,2024-08-29 17:00,2024-08-28 08:00,2024-08-29 16:00,2025-11-20 17:00,2025-11-20 17:00,2025-12-05 17:00,2025-12-05 17:00,0,16,100
ZX-8170,SECAI TURNOVER FOR ACELERATION - Complete Drywall & Inspect - MCC Rm 1-1F-FAB112159,Complete,MCC Rm 1 - 1F -FAB-FAB112159,,,,,,,,,,2025-06-27 08:00,2025-07-10 17:00,2025-06-27 08:00,2025-06-27 17:00,2025-11-20 17:00,2025-11-20 17:00,2025-11-25 10:00,2025-11-25 10:00,0,80,100
ZX-8190,SECAI TURNOVER FOR ACELERATION - Complete Control Joint & Inspect - MCC Rm 1-1F-FAB112159,Complete,MCC Rm 1 - 1F -FAB-FAB112159,,,,,,,,,,2025-06-27 08:00,2025-06-30 17:00,2025-06-27 08:00,2025-06-27 17:00,2025-11-20 17:00,2025-11-20 17:00,2025-11-25 10:00,2025-11-25 10:00,0,16,100
FAB112159A-01,IMPACT - INSTALL/REWORK DRYWALL FRAMING AROUND DOORS - FAB112159A,Complete,MCC Rm 1 - 1F -FAB-FAB112159,,,,,,,,,,2025-09-24 08:00,2025-09-24 17:00,2025-09-24 08:00,2025-09-24 17:00,2025-11-20 17:00,2025-11-20 17:00,2025-11-25 10:00,2025-11-25 10:00,0,8,100
FAB112159A-02,SECAI ROUGH IN/SECURITY - FAB112159A,Complete,MCC Rm 1 - 1F -FAB-FAB112159,,,,,,,,,,2025-09-24 08:00,2025-09-24 17:00,2025-09-24 08:00,2025-09-24 17:00,2025-11-20 17:00,2025-11-20 17:00,2025-11-25 10:00,2025-11-25 10:00,0,8,100
FAB112159A-03,INSTALL DOOR FRAMES - FAB112159A,Complete,MCC Rm 1 - 1F -FAB-FAB112159,,,,,,,,,,2025-09-24 08:00,2025-09-24 17:00,2025-09-24 08:00,2025-09-24 17:00,2025-11-20 17:00,2025-11-20 17:00,2025-11-25 10:00,2025-11-25 10:00,0,8,100
FAB112159A-04,INSTALL DOOR & HARDWARE - FAB112159A,Active,MCC Rm 1 - 1F -FAB-FAB112159,,,,,,,,,,2025-10-31 08:00,2025-11-06 17:00,2025-10-31 08:00,,2025-11-21 08:00,2025-11-27 17:00,2025-11-25 10:00,2025-12-02 10:00,40,40,0
FAB112159A-05,PAINT & PROTECT DOORS & FRAMES - FAB112159A,Not Started,MCC Rm 1 - 1F -FAB-FAB112159,,,,,,,,,,2026-02-16 08:00,2026-02-19 15:00,,,2026-02-16 08:00,2026-02-19 15:00,2025-12-02 10:00,2025-12-05 17:00,30,30,0
FAB112159B-01,IMPACT - INSTALL/REWORK DRYWALL FRAMING AROUND DOORS - FAB112159B,Complete,MCC Rm 1 - 1F -FAB-FAB112159,,,,,,,,,,2025-03-19 08:00,2025-03-27 17:00,2025-03-19 08:00,2025-03-27 17:00,2025-11-20 17:00,2025-11-20 17:00,2025-11-25 10:00,2025-11-25 10:00,0,56,100
FAB112159B-02,SECAI ROUGH IN/SECURITY - FAB112159B,Complete,MCC Rm 1 - 1F -FAB-FAB112159,,,,,,,,,,2025-03-27 08:00,2025-03-27 17:00,2025-03-27 08:00,2025-03-27 17:00,2025-11-20 17:00,2025-11-20 17:00,2025-11-25 10:00,2025-11-25 10:00,0,8,100
FAB112159B-03,INSTALL DOOR FRAMES - FAB112159B,Complete,MCC Rm 1 - 1F -FAB-FAB112159,,,,,,,,,,2025-08-04 13:00,2025-08-05 12:00,2025-03-27 00:00,2025-03-27 08:00,2025-11-20 17:00,2025-11-20 17:00,2025-11-25 10:00,2025-11-25 10:00,0,8,100
FAB112159B-04,INSTALL DOOR & HARDWARE - FAB112159B,Active,MCC Rm 1 - 1F -FAB-FAB112159,,,,,,,,,,2025-09-25 08:00,2025-10-01 17:00,2025-09-25 08:00,,2025-11-21 08:00,2025-11-27 17:00,2025-11-25 10:00,2025-12-02 10:00,40,40,0
FAB112159B-05,PAINT & PROTECT DOORS & FRAMES - FAB112159B,Not Started,MCC Rm 1 - 1F -FAB-FAB112159,,,,,,,,,,2026-02-16 08:00,2026-02-19 15:00,,,2026-02-16 08:00,2026-02-19 15:00,2025-12-02 10:00,2025-12-05 17:00,30,30,0
ZX-8470,SECAI TURNOVER FOR ACELERATION - Complete Drywall & Inspect - I/O Rm 1-1F-FAB112160,Complete,I/O Rm 1 - 1F -FAB-FAB112160,,,,,,,,,,2025-06-27 08:00,2025-07-10 17:00,2025-06-27 08:00,2025-06-27 17:00,2025-11-20 17:00,2025-11-20 17:00,2025-11-25 10:00,2025-11-25 10:00,0,80,100
ZX-8490,SECAI TURNOVER FOR ACELERATION - Complete Control Joint & Inspect - I/O Rm 1-1F-FAB112160,Complete,I/O Rm 1 - 1F -FAB-FAB112160,,,,,,,,,,2025-06-27 08:00,2025-06-30 17:00,2025-06-27 08:00,2025-06-27 17:00,2025-11-20 17:00,2025-11-20 17:00,2025-11-25 10:00,2025-11-25 10:00,0,16,100
FAB112160A-01,IMPACT - INSTALL/REWORK DRYWALL FRAMING AROUND DOORS - FAB112160A,Complete,I/O Rm 1 - 1F -FAB-FAB112160,,,,,,,,,,2025-04-07 08:00,2025-04-15 17:00,2025-04-07 08:00,2025-04-15 17:00,2025-11-20 17:00,2025-11-20 17:00,2025-11-25 10:00,2025-11-25 10:00,0,56,100
FAB112160A-02,SECAI ROUGH IN/SECURITY - FAB112160A,Complete,I/O Rm 1 - 1F -FAB-FAB112160,,,,,,,,,,2025-04-15 08:00,2025-04-15 17:00,2025-04-15 08:00,2025-04-15 17:00,2025-11-20 17:00,2025-11-20 17:00,2025-11-25 10:00,2025-11-25 10:00,0,8,100
FAB112160A-03,INSTALL DOOR FRAMES FAB112160A,Complete,I/O Rm 1 - 1F -FAB-FAB112160,,,,,,,,,,2025-08-07 13:00,2025-08-08 12:00,2025-04-15 00:00,2025-04-15 16:00,2025-11-20 17:00,2025-11-20 17:00,2025-11-25 10:00,2025-11-25 10:00,0,8,100
FAB112160A-04,INSTALL DOOR & HARDWARE - FAB112160A,Active,I/O Rm 1 - 1F -FAB-FAB112160,,,,,,,,,,2025-09-24 08:00,2025-09-30 17:00,2025-09-24 08:00,,2025-11-21 08:00,2025-11-27 17:00,2025-11-25 10:00,2025-12-02 10:00,40,40,0
FAB112160A-05,PAINT & PROTECT DOORS & FRAMES - FAB112160A,Not Started,I/O Rm 1 - 1F -FAB-FAB112160,,,,,,,,,,2026-02-16 08:00,2026-02-19 15:00,,,2026-02-16 08:00,2026-02-19 15:00,2025-12-02 10:00,2025-12-05 17:00,30,30,0
ZX-7960,Complete Drywall & Inspect - I/O Rm 2-1F-FAB112202 NON RATED WALLS,Complete,I/O Rm 2 - 1F -FAB-FAB112202,,,,,,,,,,2025-08-29 08:00,2025-09-11 17:00,2024-05-20 08:00,2024-05-27 16:00,2025-11-20 17:00,2025-11-20 17:00,2025-11-25 10:00,2025-11-25 10:00,0,80,100
ZX-7980,SECAI TURNOVER FOR ACELERATION - Control Joint & Inspect - I/O Rm 2-1F-FAB112202 BAKER/DESCOPE,Complete,I/O Rm 2 - 1F -FAB-FAB112202,,,,,,,,,,2025-08-29 08:00,2025-09-01 17:00,2025-06-27 08:00,2025-06-27 16:00,2025-11-20 17:00,2025-11-20 17:00,2025-12-05 17:00,2025-12-05 17:00,0,16,100
FAB112202A-03,INSTALL DOOR FRAMES - FAB112202A P-1,Complete,I/O Rm 2 - 1F -FAB-FAB112202,,,,,,,,,,2025-07-03 08:00,2025-07-03 17:00,2025-07-03 08:00,2025-07-03 16:00,2025-11-20 17:00,2025-11-20 17:00,2025-11-25 10:00,2025-11-25 10:00,0,8,100
FAB112202A-04,INSTALL DOOR & HARDWARE - FAB112202A - P1,Active,I/O Rm 2 - 1F -FAB-FAB112202,,,,,,,,,,2025-07-08 08:00,2025-07-14 17:00,2025-07-08 08:00,,2025-11-21 08:00,2025-11-27 17:00,2025-11-25 10:00,2025-12-02 10:00,40,40,0
FAB112202A-05,PAINT & PROTECT DOORS & FRAMES - FAB112202A,Not Started,I/O Rm 2 - 1F -FAB-FAB112202,,,,,,,,,,2026-02-16 08:00,2026-02-19 15:00,,,2026-02-16 08:00,2026-02-19 15:00,2025-12-02 10:00,2025-12-05 17:00,30,30,0
ZX-8260,SECAI TURNOVER FOR ACELERATION - Drywall & Inspect - Bunker Rm 1-1F-FAB112203 BAKER/DESCOPE,Complete,Bunker Rm 1 - 1F -FAB-FAB112203,,,,,,,,,,2025-08-25 08:00,2025-08-25 08:00,2025-06-10 08:00,2025-06-10 08:00,2025-11-20 17:00,2025-11-20 17:00,2025-11-25 10:00,2025-11-25 10:00,0,0,100
ZX-8270,SECAI TURNOVER FOR ACELERATION - Fire Caulk & Inspect - Bunker Rm 1-1F-FAB112203 BAKER/DESCOPE,Complete,Bunker Rm 1 - 1F -FAB-FAB112203,,,,,,,,,,2025-06-10 08:00,2025-06-10 08:00,2025-06-10 08:00,2025-06-10 08:00,2025-11-20 17:00,2025-11-20 17:00,2025-12-05 17:00,2025-12-05 17:00,0,0,100
ZX-8280,SECAI TURNOVER FOR ACELERATION - Control Joint & Inspect - Bunker Rm 1-1F-FAB112203 BAKER/DESCOPE,Complete,Bunker Rm 1 - 1F -FAB-FAB112203,,,,,,,,,,2025-06-10 08:00,2025-06-10 08:00,2025-06-10 08:00,2025-06-10 08:00,2025-11-20 17:00,2025-11-20 17:00,2025-11-25 10:00,2025-11-25 10:00,0,0,100
FAB112203A-01,IMPACT - INSTALL/REWORK DRYWALL FRAMING AROUND DOORS - FAB112203A,Complete,Bunker Rm 1 - 1F -FAB-FAB112203,,,,,,,,,,2025-06-10 08:00,2025-06-10 08:00,2025-03-01 08:00,2025-03-10 08:00,2025-11-20 17:00,2025-11-20 17:00,2025-11-25 10:00,2025-11-25 10:00,0,0,100
FAB112203A-02,SECAI ROUGH IN/SECURITY - FAB112203A,Complete,Bunker Rm 1 - 1F -FAB-FAB112203,,,,,,,,,,2025-06-10 08:00,2025-06-10 08:00,2025-03-10 08:00,2025-03-10 08:00,2025-11-20 17:00,2025-11-20 17:00,2025-11-25 10:00,2025-11-25 10:00,0,0,100
FAB112203A-03,INSTALL DOOR FRAMES - FAB112203A,Complete,Bunker Rm 1 - 1F -FAB-FAB112203,,,,,,,,,,2025-09-23 13:00,2025-09-24 12:00,2025-03-10 00:00,2025-03-10 16:00,2025-11-20 17:00,2025-11-20 17:00,2025-11-25 10:00,2025-11-25 10:00,0,8,100
FAB112203A-04,INSTALL DOOR & HARDWARE - FAB112203A,Active,Bunker Rm 1 - 1F -FAB-FAB112203,,,,,,,,,,2025-10-03 08:00,2025-10-09 17:00,2025-10-03 08:00,,2025-11-21 08:00,2025-11-27 17:00,2025-11-25 10:00,2025-12-02 10:00,40,40,0
FAB112203A-05,PAINT & PROTECT DOORS & FRAMES - FAB112203A,Not Started,Bunker Rm 1 - 1F -FAB-FAB112203,,,,,,,,,,2026-02-16 08:00,2026-02-19 15:00,,,2026-02-16 08:00,2026-02-19 15:00,2025-12-02 10:00,2025-12-05 17:00,30,30,0
FAB112203B-01,IMPACT - INSTALL/REWORK DRYWALL FRAMING AROUND DOORS - FAB112203B,Complete,Bunker Rm 1 - 1F -FAB-FAB112203,,,,,,,,,,2025-06-10 08:00,2025-06-10 08:00,2025-03-01 08:00,2025-03-10 08:00,2025-11-20 17:00,2025-11-20 17:00,2025-11-25 10:00,2025-11-25 10:00,0,0,100
FAB112203B-02,SECAI ROUGH IN/SECURITY - FAB112203B,Complete,Bunker Rm 1 - 1F -FAB-FAB112203,,,,,,,,,,2025-06-10 08:00,2025-06-10 08:00,2025-03-10 08:00,2025-03-10 08:00,2025-11-20 17:00,2025-11-20 17:00,2025-11-25 10:00,2025-11-25 10:00,0,0,100
FAB112203B-03,INSTALL DOOR FRAMES - FAB112203B,Complete,Bunker Rm 1 - 1F -FAB-FAB112203,,,,,,,,,,2025-09-23 13:00,2025-09-24 12:00,2025-03-10 00:00,2025-03-10 16:00,2025-11-20 17:00,2025-11-20 17:00,2025-11-25 08:00,2025-11-25 08:00,0,8,100
FAB112203B-04,INSTALL DOOR & HARDWARE - FAB112203B,Active,Bunker Rm 1 - 1F -FAB-FAB112203,,,,,,,,,,2025-08-21 08:00,2025-08-27 17:00,2025-08-21 08:00,,2025-11-21 08:00,2025-11-27 17:00,2025-11-25 08:00,2025-12-01 17:00,40,40,0
FAB112203B-05,PAINT & PROTECT DOORS & FRAMES - FAB112203B,Not Started,Bunker Rm 1 - 1F -FAB-FAB112203,,,,,,,,,,2026-02-16 08:00,2026-02-19 17:00,,,2026-02-16 08:00,2026-02-19 17:00,2025-12-02 08:00,2025-12-05 17:00,32,32,0
ZX-8560,SECAI TURNOVER FOR ACELERATION - Drywall & Inspect - Bunker Rm 2-1F-FAB112205 BAKER/DESCOPE,Complete,Bunker Rm 2 - 1F -FAB-FAB112205,,,,,,,,,,2025-06-10 08:00,2025-06-10 08:00,2025-06-10 08:00,2025-06-10 08:00,2025-11-20 17:00,2025-11-20 17:00,2025-11-25 10:00,2025-11-25 10:00,0,0,100
ZX-8570,SECAI TURNOVER FOR ACELERATION - Fire Caulk & Inspect - Bunker Rm 2-1F-FAB112205 BAKER/DESCOPE,Complete,Bunker Rm 2 - 1F -FAB-FAB112205,,,,,,,,,,2025-06-10 08:00,2025-06-10 08:00,2025-06-10 08:00,2025-06-10 08:00,2025-11-20 17:00,2025-11-20 17:00,2025-12-05 17:00,2025-12-05 17:00,0,0,100
ZX-8580,SECAI TURNOVER FOR ACELERATION - Control Joint & Inspect - Bunker Rm 2-1F-FAB112205 BAKER/DESCOPE,Complete,Bunker Rm 2 - 1F -FAB-FAB112205,,,,,,,,,,2025-06-10 08:00,2025-06-10 08:00,2025-06-10 08:00,2025-06-10 08:00,2025-11-20 17:00,2025-11-20 17:00,2025-11-25 10:00,2025-11-25 10:00,0,0,100
FAB112205A-01,IMPACT - INSTALL/REWORK DRYWALL FRAMING AROUND DOORS BY SECAI - FAB112205A BAKER/DESCOPE,Complete,Bunker Rm 2 - 1F -FAB-FAB112205,,,,,,,,,,2025-06-10 08:00,2025-06-10 08:00,2025-03-17 08:00,2025-03-24 08:00,2025-11-20 17:00,2025-11-20 17:00,2025-11-27 08:00,2025-11-27 08:00,0,0,100
FAB112205A-02,SECAI ROUGH IN/SECURITY - FAB112205A,Complete,Bunker Rm 2 - 1F -FAB-FAB112205,,,,,,,,,,2025-06-10 08:00,2025-06-10 08:00,2025-03-24 08:00,2025-03-24 08:00,2025-11-20 17:00,2025-11-20 17:00,2025-11-27 08:00,2025-11-27 08:00,0,0,100
FAB112205A-03,INSTALL DOOR FRAMES - FAB112205A,Complete,Bunker Rm 2 - 1F -FAB-FAB112205,,,,,,,,,,2025-09-08 13:00,2025-09-09 12:00,2025-03-24 00:00,2025-03-24 16:00,2025-11-20 17:00,2025-11-20 17:00,2025-11-27 08:00,2025-11-27 08:00,0,8,100
FAB112205A-04,INSTALL DOOR & HARDWARE - FAB112205A,Active,Bunker Rm 2 - 1F -FAB-FAB112205,,,,,,,,,,2025-09-29 08:00,2025-10-03 17:00,2025-09-29 08:00,,2025-11-21 08:00,2025-11-27 17:00,2025-11-27 08:00,2025-12-03 17:00,40,40,0
FAB112205A-05,PAINT & PROTECT DOORS & FRAMES - FAB112205A,Not Started,Bunker Rm 2 - 1F -FAB-FAB112205,,,,,,,,,,2026-02-16 08:00,2026-02-17 17:00,,,2026-02-16 08:00,2026-02-17 17:00,2025-12-04 08:00,2025-12-05 17:00,16,16,0
FAB112205B-01,IMPACT - INSTALL/REWORK DRYWALL FRAMING AROUND DOORS - FAB112205B,Complete,Bunker Rm 2 - 1F -FAB-FAB112205,,,,,,,,,,2025-06-10 08:00,2025-06-10 08:00,2025-03-17 08:00,2025-03-24 08:00,2025-11-20 17:00,2025-11-20 17:00,2025-11-25 10:00,2025-11-25 10:00,0,0,100
FAB112205B-02,SECAI ROUGH IN/SECURITY - FAB112205B,Complete,Bunker Rm 2 - 1F -FAB-FAB112205,,,,,,,,,,2025-06-10 08:00,2025-06-10 08:00,2025-03-24 08:00,2025-03-24 08:00,2025-11-20 17:00,2025-11-20 17:00,2025-11-25 10:00,2025-11-25 10:00,0,0,100
FAB112205B-03,INSTALL DOOR FRAMES - FAB112205B,Complete,Bunker Rm 2 - 1F -FAB-FAB112205,,,,,,,,,,2025-09-08 13:00,2025-09-09 12:00,2025-03-24 00:00,2025-03-24 16:00,2025-11-20 17:00,2025-11-20 17:00,2025-11-25 10:00,2025-11-25 10:00,0,8,100
FAB112205B-04,INSTALL DOOR & HARDWARE - FAB112205B,Active,Bunker Rm 2 - 1F -FAB-FAB112205,,,,,,,,,,2025-10-03 08:00,2025-10-09 17:00,2025-10-03 08:00,,2025-11-21 08:00,2025-11-27 17:00,2025-11-25 10:00,2025-12-02 10:00,40,40,0
FAB112205B-05,PAINT & PROTECT DOORS & FRAMES - FAB112205B,Not Started,Bunker Rm 2 - 1F -FAB-FAB112205,,,,,,,,,,2026-02-16 08:00,2026-02-19 15:00,,,2026-02-16 08:00,2026-02-19 15:00,2025-12-02 10:00,2025-12-05 17:00,30,30,0
ZX-8410,Complete Drywall & Inspect - Bunker Rm 3-1F-FAB112302 BAKER/DESCOPE,Complete,Bunker Rm 3 -1F -FAB-FAB112302,,,,,,,,,,2025-06-10 08:00,2025-06-10 08:00,2025-06-10 08:00,2025-06-10 08:00,2025-11-20 17:00,2025-11-20 17:00,2025-11-25 10:00,2025-11-25 10:00,0,0,100
ZX-8420,Complete Fire Caulk & Inspect - Bunker Rm #03 -1F-FAB112302 BAKER/DESCOPE,Complete,Bunker Rm 3 -1F -FAB-FAB112302,,,,,,,,,,2025-06-10 08:00,2025-06-10 08:00,2025-06-10 08:00,2025-06-10 08:00,2025-11-20 17:00,2025-11-20 17:00,2025-12-05 17:00,2025-12-05 17:00,0,0,100
ZX-8430,Complete Control Joint & Inspect - Bunker Rm #03 - 1F-FAB112302 BAKER/DESCOPE,Complete,Bunker Rm 3 -1F -FAB-FAB112302,,,,,,,,,,2025-06-10 08:00,2025-06-10 08:00,2025-06-10 08:00,2025-06-10 08:00,2025-11-20 17:00,2025-11-20 17:00,2025-11-25 10:00,2025-11-25 10:00,0,0,100
FAB112302A-01,IMPACT - INSTALL/REWORK DRYWALL FRAMING AROUND DOORS - FAB112302A,Complete,Bunker Rm 3 -1F -FAB-FAB112302,,,,,,,,,,2025-06-10 08:00,2025-06-10 08:00,2025-03-04 08:00,2025-03-13 08:00,2025-11-20 17:00,2025-11-20 17:00,2025-11-25 10:00,2025-11-25 10:00,0,0,100
FAB112302A-02,SECAI ROUGH IN/SECURITY - FAB112302A,Complete,Bunker Rm 3 -1F -FAB-FAB112302,,,,,,,,,,2025-06-10 08:00,2025-06-10 08:00,2025-03-13 08:00,2025-03-13 08:00,2025-11-20 17:00,2025-11-20 17:00,2025-11-25 10:00,2025-11-25 10:00,0,0,100
FAB112302A-03,INSTALL DOOR FRAMES - FAB112302A,Complete,Bunker Rm 3 -1F -FAB-FAB112302,,,,,,,,,,2025-09-19 13:00,2025-09-22 12:00,2025-03-13 00:00,2025-03-13 16:00,2025-11-20 17:00,2025-11-20 17:00,2025-11-25 10:00,2025-11-25 10:00,0,8,100
FAB112302A-04,INSTALL DOOR & HARDWARE - FAB112302A,Active,Bunker Rm 3 -1F -FAB-FAB112302,,,,,,,,,,2025-10-13 08:00,2025-10-17 17:00,2025-10-13 08:00,,2025-11-21 08:00,2025-11-27 17:00,2025-11-25 10:00,2025-12-02 10:00,40,40,0
FAB112302A-05,PAINT & PROTECT DOORS & FRAMES - FAB112302A,Not Started,Bunker Rm 3 -1F -FAB-FAB112302,,,,,,,,,,2026-02-16 08:00,2026-02-19 15:00,,,2026-02-16 08:00,2026-02-19 15:00,2025-12-02 10:00,2025-12-05 17:00,30,30,0
FAB112302B-01,IMPACT - INSTALL/REWORK DRYWALL FRAMING AROUND DOORS - FAB112302B,Complete,Bunker Rm 3 -1F -FAB-FAB112302,,,,,,,,,,2025-06-10 08:00,2025-06-10 08:00,2025-03-20 08:00,2025-03-20 08:00,2025-11-20 17:00,2025-11-20 17:00,2025-11-25 10:00,2025-11-25 10:00,0,0,100
FAB112302B-02,SECAI ROUGH IN/SECURITY - FAB112302B,Complete,Bunker Rm 3 -1F -FAB-FAB112302,,,,,,,,,,2025-06-10 08:00,2025-06-10 08:00,2025-03-20 08:00,2025-03-20 08:00,2025-11-20 17:00,2025-11-20 17:00,2025-11-25 10:00,2025-11-25 10:00,0,0,100
FAB112302B-03,INSTALL DOOR FRAMES - FAB112302B,Complete,Bunker Rm 3 -1F -FAB-FAB112302,,,,,,,,,,2025-09-19 13:00,2025-09-22 12:00,2025-03-20 00:00,2025-03-20 16:00,2025-11-20 17:00,2025-11-20 17:00,2025-11-25 10:00,2025-11-25 10:00,0,8,100
FAB112302B-04,INSTALL DOOR & HARDWARE - FAB112302B,Active,Bunker Rm 3 -1F -FAB-FAB112302,,,,,,,,,,2025-08-21 08:00,2025-08-27 17:00,2025-08-21 08:00,,2025-11-21 08:00,2025-11-27 17:00,2025-11-25 10:00,2025-12-02 10:00,40,40,0
FAB112302B-05,PAINT & PROTECT DOORS & FRAMES - FAB112302B,Not Started,Bunker Rm 3 -1F -FAB-FAB112302,,,,,,,,,,2026-02-16 08:00,2026-02-19 15:00,,,2026-02-16 08:00,2026-02-19 15:00,2025-12-02 10:00,2025-12-05 17:00,30,30,0
ZX-8710,SECAI TURNOVER FOR ACELERATION - Drywall & Inspect - Bunker Rm 4-1F-FAB112303 BAKER/DESCOPE,Complete,Bunker Rm 4 - 1F -FAB-FAB112303,,,,,,,,,,2025-06-10 08:00,2025-06-10 08:00,2025-06-10 08:00,2025-06-10 08:00,2025-11-20 17:00,2025-11-20 17:00,2025-11-25 10:00,2025-11-25 10:00,0,0,100
ZX-8720,SECAI TURNOVER FOR ACELERATION - Fire Caulk & Inspect - Bunker Rm 4-1F-FAB112303 BAKER/DESCOPE,Complete,Bunker Rm 4 - 1F -FAB-FAB112303,,,,,,,,,,2025-06-10 08:00,2025-06-10 08:00,2025-06-10 08:00,2025-06-10 08:00,2025-11-20 17:00,2025-11-20 17:00,2025-12-05 17:00,2025-12-05 17:00,0,0,100
ZX-8730,SECAI TURNOVER FOR ACELERATION - Control Joint & Inspect - Bunker Rm 4-1F-FAB112303 BAKER/DESCOPE,Complete,Bunker Rm 4 - 1F -FAB-FAB112303,,,,,,,,,,2025-06-10 08:00,2025-06-10 08:00,2025-06-10 08:00,2025-06-10 08:00,2025-11-20 17:00,2025-11-20 17:00,2025-11-25 10:00,2025-11-25 10:00,0,0,100
FAB112303A-01,IMPACT - INSTALL/REWORK DRYWALL FRAMING AROUND DOORS BY SECAI - FAB112303A,Complete,Bunker Rm 4 - 1F -FAB-FAB112303,,,,,,,,,,2025-03-17 08:00,2025-03-17 08:00,2025-03-17 08:00,2025-03-27 17:00,2025-11-20 17:00,2025-11-20 17:00,2025-11-25 10:00,2025-11-25 10:00,0,0,100
FAB112303A-02,SECAI ROUGH IN/SECURITY - FAB112303A,Complete,Bunker Rm 4 - 1F -FAB-FAB112303,,,,,,,,,,2025-06-10 08:00,2025-06-10 08:00,2025-03-27 08:00,2025-03-27 08:00,2025-11-20 17:00,2025-11-20 17:00,2025-11-25 10:00,2025-11-25 10:00,0,0,100
FAB112303A-03,INSTALL DOOR FRAMES - FAB112303A,Complete,Bunker Rm 4 - 1F -FAB-FAB112303,,,,,,,,,,2025-09-04 13:00,2025-09-05 12:00,2025-03-27 00:00,2025-03-27 16:00,2025-11-20 17:00,2025-11-20 17:00,2025-11-25 10:00,2025-11-25 10:00,0,8,100
FAB112303A-04,INSTALL DOOR & HARDWARE - FAB112303A,Active,Bunker Rm 4 - 1F -FAB-FAB112303,,,,,,,,,,2025-11-03 08:00,2025-11-07 17:00,2025-11-03 08:00,,2025-11-21 08:00,2025-11-27 17:00,2025-11-25 10:00,2025-12-02 10:00,40,40,0
FAB112303A-05,PAINT & PROTECT DOORS & FRAMES - FAB112303A,Not Started,Bunker Rm 4 - 1F -FAB-FAB112303,,,,,,,,,,2026-02-16 08:00,2026-02-19 15:00,,,2026-02-16 08:00,2026-02-19 15:00,2025-12-02 10:00,2025-12-05 17:00,30,30,0
FAB112303B-01,IMPACT - INSTALL/REWORK DRYWALL FRAMING AROUND DOORS BY SECAI - FAB112303B,Complete,Bunker Rm 4 - 1F -FAB-FAB112303,,,,,,,,,,2025-06-10 08:00,2025-06-10 08:00,2025-03-11 08:00,2025-03-20 08:00,2025-11-20 17:00,2025-11-20 17:00,2025-11-25 10:00,2025-11-25 10:00,0,0,100
FAB112303B-02,SECAI ROUGH IN/SECURITY - FAB112303B BAKER/DESCOPE,Complete,Bunker Rm 4 - 1F -FAB-FAB112303,,,,,,,,,,2025-06-10 08:00,2025-06-10 08:00,2025-03-20 08:00,2025-03-20 08:00,2025-11-20 17:00,2025-11-20 17:00,2025-11-25 10:00,2025-11-25 10:00,0,0,100
FAB112303B-03,INSTALL DOOR FRAMES - FAB112303B,Complete,Bunker Rm 4 - 1F -FAB-FAB112303,,,,,,,,,,2025-09-04 13:00,2025-09-05 12:00,2025-03-20 00:00,2025-03-20 16:00,2025-11-20 17:00,2025-11-20 17:00,2025-11-25 10:00,2025-11-25 10:00,0,8,100
FAB112303B-04,INSTALL DOOR & HARDWARE - FAB112303B,Active,Bunker Rm 4 - 1F -FAB-FAB112303,,,,,,,,,,2025-11-03 08:00,2025-11-07 17:00,2025-11-03 08:00,,2025-11-21 08:00,2025-11-27 17:00,2025-11-25 10:00,2025-12-02 10:00,40,40,0
FAB112303B-05,PAINT & PROTECT DOORS & FRAMES - FAB112303B,Not Started,Bunker Rm 4 - 1F -FAB-FAB112303,,,,,,,,,,2026-02-16 08:00,2026-02-19 15:00,,,2026-02-16 08:00,2026-02-19 15:00,2025-12-02 10:00,2025-12-05 17:00,30,30,0
ZX-8080,SECAI TURNOVER FOR ACELERATION - Drywall & Inspect - Bunker Rm 5-1F-FAB112305 BAKER/DESCOPE,Complete,Bunker Rm 5 - 1F -FAB-FAB112305,,,,,,,,,,2025-06-10 08:00,2025-06-10 08:00,2025-06-10 08:00,2025-06-10 08:00,2025-11-20 17:00,2025-11-20 17:00,2025-11-25 10:00,2025-11-25 10:00,0,0,100
ZX-8090,SECAI TURNOVER FOR ACELERATION - Fire Caulk & Inspect - Bunker Rm 5-1F-FAB112305 BAKER/DESCOPE,Complete,Bunker Rm 5 - 1F -FAB-FAB112305,,,,,,,,,,2025-06-10 08:00,2025-06-10 08:00,2025-06-10 08:00,2025-06-10 08:00,2025-11-20 17:00,2025-11-20 17:00,2025-12-05 17:00,2025-12-05 17:00,0,0,100
ZX-8100,SECAI TURNOVER FOR ACELERATION - Control Joint & Inspect - Bunker Rm 5-1F-FAB112305 BAKER/DESCOPE,Complete,Bunker Rm 5 - 1F -FAB-FAB112305,,,,,,,,,,2025-06-10 08:00,2025-06-10 08:00,2025-06-10 08:00,2025-06-10 08:00,2025-11-20 17:00,2025-11-20 17:00,2025-11-25 10:00,2025-11-25 10:00,0,0,100
FAB112305A-01,IMPACT - INSTALL/REWORK DRYWALL FRAMING AROUND DOORS - FAB112305A,Complete,Bunker Rm 5 - 1F -FAB-FAB112305,,,,,,,,,,2025-06-10 08:00,2025-06-18 17:00,2025-03-03 08:00,2025-03-11 08:00,2025-11-20 17:00,2025-11-20 17:00,2025-11-25 10:00,2025-11-25 10:00,0,56,100
FAB112305A-02,SECAI ROUGH IN/SECURITY - FAB112305A,Complete,Bunker Rm 5 - 1F -FAB-FAB112305,,,,,,,,,,2025-06-10 08:00,2025-06-10 17:00,2025-03-11 08:00,2025-03-11 08:00,2025-11-20 17:00,2025-11-20 17:00,2025-11-25 10:00,2025-11-25 10:00,0,8,100
FAB112305A-03,INSTALL DOOR FRAMES - FAB112305A,Complete,Bunker Rm 5 - 1F -FAB-FAB112305,,,,,,,,,,2025-09-15 13:00,2025-09-16 12:00,2025-03-11 00:00,2025-03-11 16:00,2025-11-20 17:00,2025-11-20 17:00,2025-11-25 10:00,2025-11-25 10:00,0,8,100
FAB112305A-04,INSTALL DOOR & HARDWARE - FAB112305A,Active,Bunker Rm 5 - 1F -FAB-FAB112305,,,,,,,,,,2025-09-24 08:00,2025-09-30 17:00,2025-09-24 08:00,,2025-11-21 08:00,2025-11-27 17:00,2025-11-25 10:00,2025-12-02 10:00,40,40,0
FAB112305A-05,PAINT & PROTECT DOORS & FRAMES - FAB112305A,Not Started,Bunker Rm 5 - 1F -FAB-FAB112305,,,,,,,,,,2026-02-16 08:00,2026-02-19 15:00,,,2026-02-16 08:00,2026-02-19 15:00,2025-12-02 10:00,2025-12-05 17:00,30,30,0
FAB112305B-01,IMPACT - INSTALL/REWORK DRYWALL FRAMING AROUND DOORS - FAB112305B,Complete,Bunker Rm 5 - 1F -FAB-FAB112305,,,,,,,,,,2025-10-01 08:00,2025-10-01 17:00,2025-10-01 08:00,2025-10-01 17:00,2025-11-20 17:00,2025-11-20 17:00,2025-11-25 10:00,2025-11-25 10:00,0,8,100
FAB112305B-02,SECAI ROUGH IN/SECURITY - FAB112305B,Complete,Bunker Rm 5 - 1F -FAB-FAB112305,,,,,,,,,,2025-10-01 08:00,2025-10-01 17:00,2025-10-01 08:00,2025-10-01 17:00,2025-11-20 17:00,2025-11-20 17:00,2025-11-25 10:00,2025-11-25 10:00,0,8,100
FAB112305B-03,INSTALL DOOR FRAMES - FAB112305B,Complete,Bunker Rm 5 - 1F -FAB-FAB112305,,,,,,,,,,2025-10-01 08:00,2025-10-01 17:00,2025-10-01 08:00,2025-10-01 17:00,2025-11-20 17:00,2025-11-20 17:00,2025-11-25 10:00,2025-11-25 10:00,0,8,100
FAB112305B-04,INSTALL DOOR & HARDWARE - FAB112305B,Not Started,Bunker Rm 5 - 1F -FAB-FAB112305,,,,,,,,,,2025-11-21 08:00,2025-11-27 17:00,,,2025-11-21 08:00,2025-11-27 17:00,2025-11-25 10:00,2025-12-02 10:00,40,40,0
FAB112305B-05,PAINT & PROTECT DOORS & FRAMES - FAB112305B,Not Started,Bunker Rm 5 - 1F -FAB-FAB112305,,,,,,,,,,2026-02-16 08:00,2026-02-19 15:00,,,2026-02-16 08:00,2026-02-19 15:00,2025-12-02 10:00,2025-12-05 17:00,30,30,0
ZX-8680,Complete Drywall & Inspect - I/O Rm 3-1F-FAB112408,Complete,I/O Rm 3 - 1F -FAB-FAB112408,,,,,,,,,,2025-08-08 08:00,2025-08-21 17:00,2024-03-11 08:00,2024-03-22 16:00,2025-11-20 17:00,2025-11-20 17:00,2025-11-24 10:00,2025-11-24 10:00,0,80,100
ZX-8700,SECAI TURNOVER FOR ACELERATION - Control Joint & Inspect - I/O Rm 3-1F-FAB112408 BAKER/DESCOPE,Complete,I/O Rm 3 - 1F -FAB-FAB112408,,,,,,,,,,2025-08-22 08:00,2025-08-25 17:00,2025-06-27 08:00,2025-06-27 16:00,2025-11-20 17:00,2025-11-20 17:00,2025-11-24 10:00,2025-11-24 10:00,0,16,100
FAB112408A-01,IMPACT - OPEN DRYWALL TO/AND INSTALL DOOR FRAME BY SECAI - FAB112408A,Complete,I/O Rm 3 - 1F -FAB-FAB112408,,,,,,,,,,2025-08-26 08:00,2025-09-03 17:00,2025-06-27 08:00,2025-06-27 16:00,2025-11-20 17:00,2025-11-20 17:00,2025-11-25 10:00,2025-11-25 10:00,0,56,100
FAB112408A-02,SECAI ROUGH IN/SECURITY - FAB112408A,Complete,I/O Rm 3 - 1F -FAB-FAB112408,,,,,,,,,,2025-09-04 08:00,2025-09-04 17:00,2025-06-27 08:00,2025-06-27 16:00,2025-11-20 17:00,2025-11-20 17:00,2025-11-25 10:00,2025-11-25 10:00,0,8,100
FAB112408A-03,INSTALL DOOR FRAMES - FAB112408A,Complete,I/O Rm 3 - 1F -FAB-FAB112408,,,,,,,,,,2025-09-05 08:00,2025-09-05 17:00,2025-06-27 08:00,2025-06-27 16:00,2025-11-20 17:00,2025-11-20 17:00,2025-11-25 10:00,2025-11-25 10:00,0,8,100
FAB112408A-04,INSTALL DOOR & HARDWARE - FAB112408A,Active,I/O Rm 3 - 1F -FAB-FAB112408,,,,,,,,,,2025-09-02 08:00,2025-09-08 17:00,2025-09-02 08:00,,2025-11-21 08:00,2025-11-27 17:00,2025-11-25 10:00,2025-12-02 10:00,40,40,0
FAB112408A-05,PAINT & PROTECT DOORS & FRAMES - FAB112408A,Not Started,I/O Rm 3 - 1F -FAB-FAB112408,,,,,,,,,,2026-02-16 08:00,2026-02-19 15:00,,,2026-02-16 08:00,2026-02-19 15:00,2025-12-02 10:00,2025-12-05 17:00,30,30,0
ZX-8020,SECAI TURNOVER FOR ACELERATION - Complete Drywall & Inspect - MCC Rm 2-1F-FAB112407,Complete,MCC Rm 2 - 1F -FAB-FAB112407,,,,,,,,,,2025-06-27 08:00,2025-07-10 17:00,2025-06-27 08:00,2025-06-27 17:00,2025-11-20 17:00,2025-11-20 17:00,2025-11-25 10:00,2025-11-25 10:00,0,80,100
ZX-8040,SECAI TURNOVER FOR ACELERATION - Complete Control Joint & Inspect - MCC Rm 2-1F-FAB112407,Complete,MCC Rm 2 - 1F -FAB-FAB112407,,,,,,,,,,2025-06-27 08:00,2025-06-30 17:00,2025-06-27 08:00,2025-06-27 17:00,2025-11-20 17:00,2025-11-20 17:00,2025-11-25 10:00,2025-11-25 10:00,0,16,100
FAB112407A-25,DOOR FRAME HANDED OVER TO SECAI 08/13 - FAB112407A,Complete,MCC Rm 2 - 1F -FAB-FAB112407,,,,,,,,,,2025-08-13 08:00,2025-08-13 17:00,2025-08-13 08:00,2025-08-13 17:00,2025-11-20 17:00,2025-11-20 17:00,2025-11-25 10:00,2025-11-25 10:00,0,8,100
FAB112407A-03,INSTALL DOOR FRAME BY SECAI - FAB112407A HANDED OVER 08/13,Complete,MCC Rm 2 - 1F -FAB-FAB112407,,,,,,,,,,2025-08-13 08:00,2025-08-19 17:00,2025-08-13 08:00,2025-08-21 17:00,2025-11-20 17:00,2025-11-20 17:00,2025-11-25 10:00,2025-11-25 10:00,0,40,100
FAB112407A-04,INSTALL DOOR & HARDWARE - FAB112407A,Active,MCC Rm 2 - 1F -FAB-FAB112407,,,,,,,,,,2025-10-29 08:00,2025-11-04 17:00,2025-10-29 08:00,,2025-11-21 08:00,2025-11-27 17:00,2025-11-25 10:00,2025-12-02 10:00,40,40,0
FAB112407A-05,PAINT & PROTECT DOORS & FRAMES - FAB112407A,Not Started,MCC Rm 2 - 1F -FAB-FAB112407,,,,,,,,,,2026-02-16 08:00,2026-02-19 15:00,,,2026-02-16 08:00,2026-02-19 15:00,2025-12-02 10:00,2025-12-05 17:00,30,30,0
FAB112407B-01,IMPACT - INSTALL/REWORK DRYWALL FRAMING AROUND DOORS - FAB112407B,Complete,MCC Rm 2 - 1F -FAB-FAB112407,,,,,,,,,,2025-04-07 08:00,2025-04-15 17:00,2025-04-07 08:00,2025-04-15 17:00,2025-11-20 17:00,2025-11-20 17:00,2025-11-25 10:00,2025-11-25 10:00,0,56,100
FAB112407B-02,SECAI ROUGH IN/SECURITY - FAB112407B,Complete,MCC Rm 2 - 1F -FAB-FAB112407,,,,,,,,,,2025-04-15 08:00,2025-04-15 17:00,2025-04-15 08:00,2025-04-15 17:00,2025-11-20 17:00,2025-11-20 17:00,2025-11-25 10:00,2025-11-25 10:00,0,8,100
FAB112407B-03,INSTALL DOOR FRAMES - FAB112407B,Complete,MCC Rm 2 - 1F -FAB-FAB112407,,,,,,,,,,2025-08-18 13:00,2025-08-19 12:00,2025-04-15 00:00,2025-04-15 16:00,2025-11-20 17:00,2025-11-20 17:00,2025-11-25 10:00,2025-11-25 10:00,0,8,100
FAB112407B-04,INSTALL DOOR & HARDWARE - FAB112407B,Active,MCC Rm 2 - 1F -FAB-FAB112407,,,,,,,,,,2025-09-25 08:00,2025-10-01 17:00,2025-09-25 08:00,,2025-11-21 08:00,2025-11-27 17:00,2025-11-25 10:00,2025-12-02 10:00,40,40,0
FAB112407B-05,PAINT & PROTECT DOORS & FRAMES - FAB112407B,Not Started,MCC Rm 2 - 1F -FAB-FAB112407,,,,,,,,,,2026-02-16 08:00,2026-02-19 15:00,,,2026-02-16 08:00,2026-02-19 15:00,2025-12-02 10:00,2025-12-05 17:00,30,30,0
FAB112407A-11,IMPACT - INTERNAL - GOAL POST TO BE INSTALLED,Complete,MCC Rm 2 - 1F -FAB-FAB112407,,,,,,,,,,2025-06-20 08:00,2025-06-26 17:00,2024-11-14 08:00,2024-11-21 16:00,2025-11-20 17:00,2025-11-20 17:00,2025-11-25 10:00,2025-11-25 10:00,0,40,100
ZX-8320,Complete Drywall & Inspect - Manufacturing Storage 5-1F-FAB112410 NON RATED WALLS,Complete,Manufacturing Storage 5 - 1F -FAB-FAB112410,,,,,,,,,,2024-08-05 08:00,2024-08-16 17:00,2024-08-05 08:00,2024-08-16 16:00,2025-11-20 17:00,2025-11-20 17:00,2025-12-05 17:00,2025-12-05 17:00,0,80,100
ZX-8340,Complete Control Joint & Inspect - Manufacturing Storage 5-1F-FAB112410,Complete,Manufacturing Storage 5 - 1F -FAB-FAB112410,,,,,,,,,,2025-10-15 08:00,2025-10-16 17:00,2024-08-15 08:00,2024-08-16 16:00,2025-11-20 17:00,2025-11-20 17:00,2025-12-05 17:00,2025-12-05 17:00,0,16,100
ZX-8620,SECAI TURNOVER FOR ACELERATION - Drywall & Inspect - Bunker Rm 6-1F-FAB112403 BAKER/DESCOPE,Complete,Bunker Rm 6 - 1F -FAB-FAB112403,,,,,,,,,,2025-06-10 08:00,2025-06-10 08:00,2025-06-10 08:00,2025-06-10 08:00,2025-11-20 17:00,2025-11-20 17:00,2025-11-27 08:00,2025-11-27 08:00,0,0,100
ZX-8630,SECAI TURNOVER FOR ACELERATION - Fire Caulk & Inspect - Bunker Rm 6-1F-FAB112403 BAKER/DESCOPE,Complete,Bunker Rm 6 - 1F -FAB-FAB112403,,,,,,,,,,2025-06-10 08:00,2025-06-10 08:00,2025-06-10 08:00,2025-06-10 08:00,2025-11-20 17:00,2025-11-20 17:00,2025-12-05 17:00,2025-12-05 17:00,0,0,100
ZX-8640,SECAI TURNOVER FOR ACELERATION - Control Joint & Inspect - Bunker Rm 6-1F-FAB112403 BAKER/DESCOPE,Complete,Bunker Rm 6 - 1F -FAB-FAB112403,,,,,,,,,,2025-06-10 08:00,2025-06-10 08:00,2025-06-10 08:00,2025-06-10 08:00,2025-11-20 17:00,2025-11-20 17:00,2025-11-27 08:00,2025-11-27 08:00,0,0,100
FAB112403A-01,IMPACT - INSTALL/REWORK DRYWALL FRAMING AROUND DOORS - FAB112403A,Complete,Bunker Rm 6 - 1F -FAB-FAB112403,,,,,,,,,,2025-06-10 08:00,2025-06-10 08:00,2025-03-11 08:00,2025-03-20 08:00,2025-11-20 17:00,2025-11-20 17:00,2025-11-27 08:00,2025-11-27 08:00,0,0,100
FAB112403A-02,SECAI ROUGH IN/SECURITY - FAB112403A,Complete,Bunker Rm 6 - 1F -FAB-FAB112403,,,,,,,,,,2025-06-10 08:00,2025-06-10 08:00,2025-03-20 08:00,2025-03-20 08:00,2025-11-20 17:00,2025-11-20 17:00,2025-11-27 08:00,2025-11-27 08:00,0,0,100
FAB112403A-03,INSTALL DOOR FRAMES - FAB112403A,Complete,Bunker Rm 6 - 1F -FAB-FAB112403,,,,,,,,,,2025-09-29 13:00,2025-09-30 12:00,2025-03-20 00:00,2025-03-20 16:00,2025-11-20 17:00,2025-11-20 17:00,2025-11-27 08:00,2025-11-27 08:00,0,8,100
FAB112403A-04,INSTALL DOOR & HARDWARE - FAB112403A,Active,Bunker Rm 6 - 1F -FAB-FAB112403,,,,,,,,,,2025-08-22 08:00,2025-08-28 17:00,2025-08-22 08:00,,2025-11-21 08:00,2025-11-27 17:00,2025-11-27 08:00,2025-12-03 17:00,40,40,0
FAB112403A-05,PAINT & PROTECT DOORS & FRAMES - FAB112403A,Not Started,Bunker Rm 6 - 1F -FAB-FAB112403,,,,,,,,,,2026-02-16 08:00,2026-02-17 17:00,,,2026-02-16 08:00,2026-02-17 17:00,2025-12-04 08:00,2025-12-05 17:00,16,16,0
FAB112403B-01,IMPACT - INSTALL/REWORK DRYWALL FRAMING AROUND DOORS - FAB112403B,Complete,Bunker Rm 6 - 1F -FAB-FAB112403,,,,,,,,,,2025-06-10 08:00,2025-06-10 08:00,2025-05-01 08:00,2025-05-09 08:00,2025-11-20 17:00,2025-11-20 17:00,2025-11-27 08:00,2025-11-27 08:00,0,0,100
FAB112403B-02,SECAI ROUGH IN/SECURITY - FAB112403B,Complete,Bunker Rm 6 - 1F -FAB-FAB112403,,,,,,,,,,2025-06-10 08:00,2025-06-10 08:00,2025-05-09 08:00,2025-05-09 08:00,2025-11-20 17:00,2025-11-20 17:00,2025-11-27 08:00,2025-11-27 08:00,0,0,100
FAB112403B-03,INSTALL DOOR FRAMES - FAB112403B,Complete,Bunker Rm 6 - 1F -FAB-FAB112403,,,,,,,,,,2025-09-29 13:00,2025-09-30 12:00,2025-05-08 00:00,2025-05-09 16:00,2025-11-20 17:00,2025-11-20 17:00,2025-11-27 08:00,2025-11-27 08:00,0,8,100
FAB112403B-04,INSTALL DOOR & HARDWARE - FAB112403B,Active,Bunker Rm 6 - 1F -FAB-FAB112403,,,,,,,,,,2025-08-21 08:00,2025-08-27 17:00,2025-08-21 08:00,,2025-11-21 08:00,2025-11-27 17:00,2025-11-27 08:00,2025-12-03 17:00,40,40,0
FAB112403B-05,PAINT & PROTECT DOORS & FRAMES - FAB112403B,Not Started,Bunker Rm 6 - 1F -FAB-FAB112403,,,,,,,,,,2026-02-16 08:00,2026-02-17 17:00,,,2026-02-16 08:00,2026-02-17 17:00,2025-12-04 08:00,2025-12-05 17:00,16,16,0
ZX-8830,SECAI TURNOVER FOR ACELERATION - Complete Drywall & Inspect - I/O Rm 4-1F-FAB112404,Complete,I/O Rm 4 -1F -FAB-FAB112404,,,,,,,,,,2025-06-27 08:00,2025-07-10 17:00,2025-06-27 08:00,2025-06-27 17:00,2025-11-20 17:00,2025-11-20 17:00,2025-11-25 10:00,2025-11-25 10:00,0,80,100
ZX-8850,SECAI TURNOVER FOR ACELERATION - Complete Control Joint & Inspect - I/O Rm 4-1F-FAB112404,Complete,I/O Rm 4 -1F -FAB-FAB112404,,,,,,,,,,2025-06-27 08:00,2025-06-30 17:00,2025-06-27 08:00,2025-06-27 17:00,2025-11-20 17:00,2025-11-20 17:00,2025-11-25 10:00,2025-11-25 10:00,0,16,100
FAB112404A-01,IMPACT - INSTALL/REWORK DRYWALL FRAMING AROUND DOORS - FAB112404A,Complete,I/O Rm 4 -1F -FAB-FAB112404,,,,,,,,,,2025-03-07 08:00,2025-03-17 17:00,2025-03-07 08:00,2025-03-17 17:00,2025-11-20 17:00,2025-11-20 17:00,2025-11-27 08:00,2025-11-27 08:00,0,56,100
FAB112404A-02,SECAI ROUGH IN/SECURITY  - FAB112404A,Complete,I/O Rm 4 -1F -FAB-FAB112404,,,,,,,,,,2025-03-17 08:00,2025-03-17 17:00,2025-03-17 08:00,2025-03-17 17:00,2025-11-20 17:00,2025-11-20 17:00,2025-11-27 08:00,2025-11-27 08:00,0,8,100
FAB112404A-03,INSTALL DOOR FRAMES - FAB112404A,Complete,I/O Rm 4 -1F -FAB-FAB112404,,,,,,,,,,2025-08-22 13:00,2025-08-25 12:00,2025-03-17 00:00,2025-03-17 16:00,2025-11-20 17:00,2025-11-20 17:00,2025-11-27 08:00,2025-11-27 08:00,0,8,100
FAB112404A-04,INSTALL DOOR & HARDWARE - FAB112404A,Active,I/O Rm 4 -1F -FAB-FAB112404,,,,,,,,,,2025-07-08 08:00,2025-07-14 17:00,2025-07-08 08:00,,2025-11-21 08:00,2025-11-27 17:00,2025-11-27 08:00,2025-12-03 17:00,40,40,0
FAB112404A-05,PAINT & PROTECT DOORS & FRAMES - FAB112404A,Not Started,I/O Rm 4 -1F -FAB-FAB112404,,,,,,,,,,2026-02-16 08:00,2026-02-17 17:00,,,2026-02-16 08:00,2026-02-17 17:00,2025-12-04 08:00,2025-12-05 17:00,16,16,0
FAB112404B-01,IMPACT - INSTALL/REWORK DRYWALL FRAMING AROUND DOORS - FAB112404B,Complete,I/O Rm 4 -1F -FAB-FAB112404,,,,,,,,,,2025-09-03 08:00,2025-09-04 17:00,2025-09-03 08:00,2025-09-04 17:00,2025-11-20 17:00,2025-11-20 17:00,2025-11-25 10:00,2025-11-25 10:00,0,16,100
FAB112404B-02,SECAI ROUGH IN/SECURITY - FAB112404B,Complete,I/O Rm 4 -1F -FAB-FAB112404,,,,,,,,,,2025-09-05 08:00,2025-09-05 17:00,2025-09-05 08:00,2025-09-05 17:00,2025-11-20 17:00,2025-11-20 17:00,2025-11-25 10:00,2025-11-25 10:00,0,8,100
FAB112404B-03,INSTALL DOOR FRAMES - FAB112404B,Complete,I/O Rm 4 -1F -FAB-FAB112404,,,,,,,,,,2025-09-05 08:00,2025-09-05 17:00,2025-09-05 08:00,2025-09-05 17:00,2025-11-20 17:00,2025-11-20 17:00,2025-11-25 10:00,2025-11-25 10:00,0,8,100
FAB112404B-04,INSTALL DOOR & HARDWARE - FAB112404B,Active,I/O Rm 4 -1F -FAB-FAB112404,,,,,,,,,,2025-09-15 08:00,2025-09-19 17:00,2025-09-15 08:00,,2025-11-21 08:00,2025-11-27 17:00,2025-11-25 10:00,2025-12-02 10:00,40,40,0
FAB112404B-05,PAINT & PROTECT DOORS & FRAMES - FAB112404B,Not Started,I/O Rm 4 -1F -FAB-FAB112404,,,,,,,,,,2026-02-16 08:00,2026-02-19 15:00,,,2026-02-16 08:00,2026-02-19 15:00,2025-12-02 10:00,2025-12-05 17:00,30,30,0
ZX-8860,Complete Drywall & Inspect - G.3-J/33-1F,Complete,G.3-J/33- 1F - FAB,,,,,,,,,,2025-06-27 08:00,2025-07-10 17:00,2025-05-27 08:00,2025-06-09 16:00,2025-11-20 17:00,2025-11-20 17:00,2025-12-05 17:00,2025-12-05 17:00,0,80,100
ZX-8870,Complete Fire Caulk & Inspect - G.3-J/33-1F BY MK MARLOW,Complete,G.3-J/33- 1F - FAB,,,,,,,,,,2025-06-27 08:00,2025-06-30 17:00,2025-06-24 08:00,2025-08-13 17:00,2025-11-20 17:00,2025-11-20 17:00,2025-12-05 17:00,2025-12-05 17:00,0,16,100
ZX-8880,Complete Control Joint & Inspect - G.3-J/33-1F,Complete,G.3-J/33- 1F - FAB,,,,,,,,,,2025-07-16 08:00,2025-07-17 17:00,2025-06-10 08:00,2025-06-12 16:00,2025-11-20 17:00,2025-11-20 17:00,2025-12-05 17:00,2025-12-05 17:00,0,16,100
ZX-16560,IMPACT - Complete Drywall & Inspect - G.3-J/33-1F N&B APPROVAL,Complete,G.3-J/33- 1F - FAB,,,,,,,,,,2025-05-05 08:00,2025-05-16 17:00,2025-05-05 08:00,2025-05-15 16:00,2025-11-20 17:00,2025-11-20 17:00,2025-12-05 17:00,2025-12-05 17:00,0,80,100
ZX-18360,IMPACT - SECAI SCAFFOLD-D-G/33-1F,Complete,G.3-J/33- 1F - FAB,,,,,,,,,,2025-06-10 08:00,2025-06-23 17:00,2025-06-10 08:00,2025-08-01 17:00,2025-11-20 17:00,2025-11-20 17:00,2025-12-05 17:00,2025-12-05 17:00,0,80,100
ZX-9160,SECAI TURNOVER FOR ACELERATION - Drywall & Inspect - Exit Passageway 5-1F-FAB110506 BAKER/DESCOPE,Complete,Exit Passageway 5 - 1F -SUW-FAB110506,,,,,,,,,,2025-05-28 08:00,2025-06-16 17:00,2025-05-22 08:00,2025-05-22 16:00,2025-11-20 17:00,2025-11-20 17:00,2025-11-25 10:00,2025-11-25 10:00,0,112,100
ZX-9170,SECAI TURNOVER FOR ACELERATION - Fire Caulk & Inspect - Exit Passageway 5-1F-FAB110506 BAKER/DESCOPE,Complete,Exit Passageway 5 - 1F -SUW-FAB110506,,,,,,,,,,2025-06-19 08:00,2025-06-20 17:00,2025-05-22 08:00,2025-05-22 16:00,2025-11-20 17:00,2025-11-20 17:00,2025-12-05 17:00,2025-12-05 17:00,0,16,100
ZX-9180,SECAI TURNOVER FOR ACELERATION - Control Joint & Inspect & Inspect - Exit Passageway 5-1F-FAB110506 BAKER/DESCOPE,Complete,Exit Passageway 5 - 1F -SUW-FAB110506,,,,,,,,,,2025-06-17 08:00,2025-06-18 17:00,2025-05-22 08:00,2025-05-22 16:00,2025-11-20 17:00,2025-11-20 17:00,2025-11-25 10:00,2025-11-25 10:00,0,16,100
ZX-17490,IMPACT - SECAI DENIAL OF ACCEL COST FOR BERG - Drywall & Inspect - Exit Passageway 5-1F-FAB110506,Complete,Exit Passageway 5 - 1F -SUW-FAB110506,,,,,,,,,,2025-05-13 08:00,2025-05-30 17:00,2025-05-05 08:00,2025-05-22 16:00,2025-11-20 17:00,2025-11-20 17:00,2025-11-25 10:00,2025-11-25 10:00,0,112,100
FAB110506A-03,INSTALL DOOR FRAMES - FAB110506A,Complete,Exit Passageway 5 - 1F -SUW-FAB110506,,,,,,,,,,2025-08-08 08:00,2025-08-08 17:00,2025-08-08 08:00,2025-08-08 17:00,2025-11-20 17:00,2025-11-20 17:00,2025-11-25 10:00,2025-11-25 10:00,0,8,100
FAB110506A-04,INSTALL DOOR & HARDWARE - FAB110506A,Active,Exit Passageway 5 - 1F -SUW-FAB110506,,,,,,,,,,2025-11-06 08:00,2025-11-12 17:00,2025-11-06 08:00,,2025-11-21 08:00,2025-11-27 17:00,2025-11-25 10:00,2025-12-02 10:00,40,40,0
FAB110506A-05,PAINT & PROTECT DOORS & FRAMES - FAB110506A,Not Started,Exit Passageway 5 - 1F -SUW-FAB110506,,,,,,,,,,2026-02-16 08:00,2026-02-19 15:00,,,2026-02-16 08:00,2026-02-19 15:00,2025-12-02 10:00,2025-12-05 17:00,30,30,0
FAB110506B-03,INSTALL DOOR FRAMES - FAB110506B,Complete,Exit Passageway 5 - 1F -SUW-FAB110506,,,,,,,,,,2025-07-17 08:00,2025-07-17 17:00,2025-05-23 08:00,2025-05-23 08:00,2025-11-20 17:00,2025-11-20 17:00,2025-12-05 17:00,2025-12-05 17:00,0,8,100
FAB110506B-04,DOOR INSTALL - FAB110506B,Complete,Exit Passageway 5 - 1F -SUW-FAB110506,,,,,,,,,,2025-10-02 08:00,2025-10-02 17:00,2025-10-02 08:00,2025-10-02 17:00,2025-11-20 17:00,2025-11-20 17:00,2025-12-05 17:00,2025-12-05 17:00,0,8,100
FAB110506B-05,PAINT & PROTECT DOORS & FRAMES - FAB110506B,Complete,Exit Passageway 5 - 1F -SUW-FAB110506,,,,,,,,,,2025-10-08 08:00,2025-10-13 15:00,2025-10-08 08:00,2025-10-12 15:00,2025-11-20 17:00,2025-11-20 17:00,2025-12-05 17:00,2025-12-05 17:00,0,30,100
FAB110506B-06,INSTALL DOOR HARDWARE - FAB110506B,Complete,Exit Passageway 5 - 1F -SUW-FAB110506,,,,,,,,,,2025-10-23 08:00,2025-10-28 15:00,2025-10-23 08:00,2025-10-28 15:00,2025-11-20 17:00,2025-11-20 17:00,2025-12-05 17:00,2025-12-05 17:00,0,30,100
FAB110506C-03,INSTALL DOOR FRAMES - FAB110506C,Complete,Exit Passageway 5 - 1F -SUW-FAB110506,,,,,,,,,,2025-06-05 13:00,2025-06-06 12:00,2025-03-18 00:00,2025-03-18 16:00,2025-11-20 17:00,2025-11-20 17:00,2025-11-28 08:00,2025-11-28 08:00,0,8,100
FAB110506C-04,INSTALL DOOR & HARDWARE - FAB110506C,Active,Exit Passageway 5 - 1F -SUW-FAB110506,,,,,,,,,,2025-06-17 08:00,2025-06-23 17:00,2025-06-17 08:00,,2025-11-21 08:00,2025-11-27 17:00,2025-11-28 08:00,2025-12-04 17:00,40,40,0
FAB110506C-05,PAINT & PROTECT DOORS & FRAMES - FAB110506C,Not Started,Exit Passageway 5 - 1F -SUW-FAB110506,,,,,,,,,,2026-02-16 08:00,2026-02-16 17:00,,,2026-02-16 08:00,2026-02-16 17:00,2025-12-05 08:00,2025-12-05 17:00,8,8,0
FAB110506D-03,INSTALL DOOR FRAMES - FAB110506D,Complete,Exit Passageway 5 - 1F -SUW-FAB110506,,,,,,,,,,2025-06-05 13:00,2025-06-06 12:00,2025-03-31 00:00,2025-03-31 16:00,2025-11-20 17:00,2025-11-20 17:00,2025-11-28 08:00,2025-11-28 08:00,0,8,100
FAB110506D-04,INSTALL DOOR & HARDWARE - FAB110506D,Active,Exit Passageway 5 - 1F -SUW-FAB110506,,,,,,,,,,2025-06-17 08:00,2025-06-23 17:00,2025-06-17 08:00,,2025-11-21 08:00,2025-11-27 17:00,2025-11-28 08:00,2025-12-04 17:00,40,40,0
FAB110506D-05,PAINT & PROTECT DOORS & FRAMES - FAB110506D,Not Started,Exit Passageway 5 - 1F -SUW-FAB110506,,,,,,,,,,2026-02-16 08:00,2026-02-16 17:00,,,2026-02-16 08:00,2026-02-16 17:00,2025-12-05 08:00,2025-12-05 17:00,8,8,0
FAB110506E-03,INSTALL DOOR FRAMES - FAB110506E,Complete,Exit Passageway 5 - 1F -SUW-FAB110506,,,,,,,,,,2025-06-06 08:00,2025-06-19 17:00,2025-06-03 08:00,2025-06-03 16:00,2025-11-20 17:00,2025-11-20 17:00,2025-11-25 10:00,2025-11-25 10:00,0,80,100
FAB110506E-04,INSTALL DOOR & HARDWARE - FAB110506E,Active,Exit Passageway 5 - 1F -SUW-FAB110506,,,,,,,,,,2025-10-22 08:00,2025-10-28 17:00,2025-10-22 08:00,,2025-11-21 08:00,2025-11-27 17:00,2025-11-25 10:00,2025-12-02 10:00,40,40,0
FAB110506E-05,PAINT & PROTECT DOORS & FRAMES - FAB110506E,Not Started,Exit Passageway 5 - 1F -SUW-FAB110506,,,,,,,,,,2026-02-16 08:00,2026-02-19 15:00,,,2026-02-16 08:00,2026-02-19 15:00,2025-12-02 10:00,2025-12-05 17:00,30,30,0
FAB110506B-02,SECAI ROUGH IN/SECURITY - FAB110506B,Complete,Exit Passageway 5 - 1F -SUW-FAB110506,,,,,,,,,,2025-07-17 08:00,2025-07-17 17:00,2025-05-23 08:00,2025-05-23 16:00,2025-11-20 17:00,2025-11-20 17:00,2025-12-05 17:00,2025-12-05 17:00,0,8,100
FAB110506B-07,DOOR FRAME PAINT & 1ST COAT - FAB110506B,Complete,Exit Passageway 5 - 1F -SUW-FAB110506,,,,,,,,,,2025-10-01 08:00,2025-10-01 08:00,2025-10-01 08:00,2025-10-01 08:00,2025-11-20 17:00,2025-11-20 17:00,2025-12-05 17:00,2025-12-05 17:00,0,0,100
ZX-8800,SECAI TURNOVER FOR ACELERATION - Drywall & Inspect - Elevator Hall #05 - 1F-FAB110507,Complete,Elevator Hall 5 - 1F -SUW-FAB110507,,,,,,,,,,2025-06-27 08:00,2025-07-10 17:00,2025-06-27 08:00,2025-06-27 16:00,2025-11-20 17:00,2025-11-20 17:00,2025-11-25 10:00,2025-11-25 10:00,0,80,100
ZX-8810,SECAI TURNOVER FOR ACELERATION - Fire Caulk & Inspect - Elevator Hall #05 - 1F-FAB110507,Complete,Elevator Hall 5 - 1F -SUW-FAB110507,,,,,,,,,,2025-07-23 08:00,2025-07-24 17:00,2025-06-27 08:00,2025-06-27 16:00,2025-11-20 17:00,2025-11-20 17:00,2025-12-05 17:00,2025-12-05 17:00,0,16,100
ZX-8820,SECAI TURNOVER FOR ACELERATION - Control Joint & Inspect - Elevator Hall #05 - 1F-FAB110507,Complete,Elevator Hall 5 - 1F -SUW-FAB110507,,,,,,,,,,2025-07-23 08:00,2025-07-24 17:00,2025-06-27 08:00,2025-06-27 16:00,2025-11-20 17:00,2025-11-20 17:00,2025-11-25 10:00,2025-11-25 10:00,0,16,100
FAB110507A-03A,INSTALL DOOR FRAMES - FAB110507A,Complete,Elevator Hall 5 - 1F -SUW-FAB110507,,,,,,,,,,2025-10-27 13:00,2025-10-28 12:00,2025-10-27 13:00,2025-10-28 12:00,2025-11-20 17:00,2025-11-20 17:00,2025-11-25 10:00,2025-11-25 10:00,0,8,100
FAB110507A-03,INSTALL DOOR FRAMES - FAB110507A,Complete,Elevator Hall 5 - 1F -SUW-FAB110507,,,,,,,,,,2025-08-19 08:00,2025-08-19 17:00,2025-08-19 08:00,2025-08-19 17:00,2025-11-20 17:00,2025-11-20 17:00,2025-11-25 10:00,2025-11-25 10:00,0,8,100
FAB110507A-05,PAINT & PROTECT DOORS & FRAMES - FAB110507A,Not Started,Elevator Hall 5 - 1F -SUW-FAB110507,,,,,,,,,,2026-02-16 08:00,2026-02-19 15:00,,,2026-02-16 08:00,2026-02-19 15:00,2025-12-02 10:00,2025-12-05 17:00,30,30,0
FAB110507B-01,SECAI TURNOVER FOR ACELERATION - INSTALL/REWORK DRYWALL FRAMING AROUND DOORS - FAB110507B,Complete,Elevator Hall 5 - 1F -SUW-FAB110507,,,,,,,,,,2025-07-25 08:00,2025-08-04 17:00,2025-06-27 08:00,2025-06-27 16:00,2025-11-20 17:00,2025-11-20 17:00,2025-11-25 10:00,2025-11-25 10:00,0,56,100
FAB110507B-02,SECAI ROUGH IN/SECURITY - FAB110507B,Complete,Elevator Hall 5 - 1F -SUW-FAB110507,,,,,,,,,,2025-08-05 08:00,2025-08-05 17:00,2025-06-27 08:00,2025-06-27 16:00,2025-11-20 17:00,2025-11-20 17:00,2025-11-25 10:00,2025-11-25 10:00,0,8,100
FAB110507B-03,SECAI TURNOVER FOR ACELERATION - INSTALL FRAME & DRYWALL AROUND DOORS - FAB110507B,Complete,Elevator Hall 5 - 1F -SUW-FAB110507,,,,,,,,,,2025-08-01 08:00,2025-08-01 17:00,2025-08-01 08:00,2025-08-01 17:00,2025-11-20 17:00,2025-11-20 17:00,2025-11-25 10:00,2025-11-25 10:00,0,8,100
FAB110507B-04,INSTALL DOOR & HARDWARE - FAB110507B,Active,Elevator Hall 5 - 1F -SUW-FAB110507,,,,,,,,,,2025-10-15 08:00,2025-10-21 17:00,2025-10-15 08:00,,2025-11-21 08:00,2025-11-27 17:00,2025-11-25 10:00,2025-12-02 10:00,40,40,0
FAB110507B-05,PAINT & PROTECT DOORS & FRAMES - FAB110507B,Not Started,Elevator Hall 5 - 1F -SUW-FAB110507,,,,,,,,,,2026-02-16 08:00,2026-02-19 15:00,,,2026-02-16 08:00,2026-02-19 15:00,2025-12-02 10:00,2025-12-05 17:00,30,30,0
FAB110508C-00,IOCC TO BE SUBMITTED (RFI 10986) - FAB110508C,Active,Elevator Hall 5 - 1F -SUW-FAB110507,,,,,,,,,,2025-07-03 08:00,2025-07-25 10:00,2025-07-03 07:00,,2025-11-21 08:00,2025-11-27 17:00,2025-11-04 08:00,2025-11-10 17:00,40,130,0
FAB110508C-01,IOCC APPROVAL - SECAI - FAB110508C,Not Started,Elevator Hall 5 - 1F -SUW-FAB110507,,,,,,,,,,2025-11-28 08:00,2025-12-10 17:00,,,2025-11-28 08:00,2025-12-10 17:00,2025-11-11 08:00,2025-11-21 17:00,72,72,0
FAB110508C-80,INSTALL/REWORK CLADDING AND HEADER - FAB110508C,Not Started,Elevator Hall 5 - 1F -SUW-FAB110507,,,,,,,,,,2025-12-11 08:00,2025-12-11 17:00,,,2025-12-11 08:00,2025-12-11 17:00,2025-11-24 08:00,2025-11-24 17:00,8,8,0
FAB110508C-04,INSTALL DOOR & HARDWARE - FAB110508C,Not Started,Elevator Hall 5 - 1F -SUW-FAB110507,,,,,,,,,,2025-12-16 08:00,2025-12-22 17:00,,,2025-12-16 08:00,2025-12-22 17:00,2025-11-27 08:00,2025-12-03 17:00,40,40,0
FAB110508C-50,IMPACT - MEP MATERIAL IN FRONT OF OPENING - FAB110508C,Active,Elevator Hall 5 - 1F -SUW-FAB110507,,,,,,,,,,2025-07-03 08:00,2025-07-29 15:00,2025-07-03 07:00,,2025-11-21 08:00,2025-11-27 17:00,2025-11-17 08:00,2025-11-21 17:00,40,150,0
FAB110508C-60,IMPACT - ELECTRICAL CONDUIT INSTALLED IN OHC LOCATION - FAB110508C,Active,Elevator Hall 5 - 1F -SUW-FAB110507,,,,,,,,,,2025-07-03 08:00,2025-07-29 15:00,2025-07-03 07:00,,2025-11-21 08:00,2025-11-27 17:00,2025-11-17 08:00,2025-11-21 17:00,40,150,0
ZX-8950,Complete Drywall & Inspect - Elevator Mech Rm #05 - 1F-FAB110504 MK MARLOW,Complete,Elevator Mech. Rm 5 - 1F -SUW-FAB110504,,,,,,,,,,2025-08-07 08:00,2025-08-15 17:00,2025-08-07 08:00,2025-08-15 17:00,2025-11-20 17:00,2025-11-20 17:00,2025-11-25 10:00,2025-11-25 10:00,0,56,100
ZX-8960,Complete Fire Caulk & Inspect - Elevator Mech Rm #05 - 1F-FAB110504 MK MARLOW,Complete,Elevator Mech. Rm 5 - 1F -SUW-FAB110504,,,,,,,,,,2025-08-15 08:00,2025-08-18 17:00,2025-08-15 08:00,2025-08-18 17:00,2025-11-20 17:00,2025-11-20 17:00,2025-12-05 17:00,2025-12-05 17:00,0,16,100
ZX-8970,Complete Control Joint & Inspect - Elevator Mech Rm #05 - 1F-FAB110504 MK MARLOW,Complete,Elevator Mech. Rm 5 - 1F -SUW-FAB110504,,,,,,,,,,2025-08-14 08:00,2025-08-15 17:00,2025-08-14 08:00,2025-08-16 17:00,2025-11-20 17:00,2025-11-20 17:00,2025-11-25 10:00,2025-11-25 10:00,0,16,100
FAB110504A-01,IMPACT - INSTALL/REWORK DRYWALL FRAMING AROUND DOORS - FAB110504A,Complete,Elevator Mech. Rm 5 - 1F -SUW-FAB110504,,,,,,,,,,2025-10-14 08:00,2025-10-20 17:00,2025-10-14 08:00,2025-10-20 17:00,2025-11-20 17:00,2025-11-20 17:00,2025-11-25 10:00,2025-11-25 10:00,0,40,100
FAB110504A-02,SECAI ROUGH IN/SECURITY - FAB110504A,Complete,Elevator Mech. Rm 5 - 1F -SUW-FAB110504,,,,,,,,,,2025-10-20 08:00,2025-10-20 17:00,2025-10-20 08:00,2025-10-20 17:00,2025-11-20 17:00,2025-11-20 17:00,2025-11-25 10:00,2025-11-25 10:00,0,8,100
FAB110504A-03,INSTALL DOOR FRAMES - FAB110504A,Complete,Elevator Mech. Rm 5 - 1F -SUW-FAB110504,,,,,,,,,,2025-10-21 08:00,2025-10-21 17:00,2025-10-21 08:00,2025-10-21 17:00,2025-11-20 17:00,2025-11-20 17:00,2025-11-25 10:00,2025-11-25 10:00,0,8,100
FAB110504A-04,INSTALL DOOR & HARDWARE - FAB110504A,Active,Elevator Mech. Rm 5 - 1F -SUW-FAB110504,,,,,,,,,,2025-10-22 08:00,2025-10-28 17:00,2025-10-22 08:00,,2025-11-21 08:00,2025-11-27 17:00,2025-11-25 10:00,2025-12-02 10:00,40,40,0
FAB110504A-05,PAINT & PROTECT DOORS & FRAMES - FAB110504A,Not Started,Elevator Mech. Rm 5 - 1F -SUW-FAB110504,,,,,,,,,,2026-02-16 08:00,2026-02-19 15:00,,,2026-02-16 08:00,2026-02-19 15:00,2025-12-02 10:00,2025-12-05 17:00,30,30,0
ZX-9250,SECAI TOOK OVER FOR ACCELERATION - Drywall & Inspect - Elevator #05 - 1F-1FAB-EL5,Complete,Elevator 5 - 1F -SUW-FAB1-EL05,,,,,,,,,,2025-10-02 08:00,2025-10-03 17:00,2025-10-03 08:00,2025-10-03 17:00,2025-11-20 17:00,2025-11-20 17:00,2025-12-05 17:00,2025-12-05 17:00,0,16,100
ZX-9260,SECAI TOOK OVER FOR ACCELERATION - Fire Caulk & Inspect - Elevator #05 - 1F-1FAB-EL5,Complete,Elevator 5 - 1F -SUW-FAB1-EL05,,,,,,,,,,2025-10-02 08:00,2025-10-03 17:00,2025-10-03 08:00,2025-10-03 17:00,2025-11-20 17:00,2025-11-20 17:00,2025-12-05 17:00,2025-12-05 17:00,0,16,100
ZX-9270,SECAI TOOK OVER FOR ACCELERATION - Control Joint & Inspect - Elevator #05 - 1F-1FAB-EL5,Complete,Elevator 5 - 1F -SUW-FAB1-EL05,,,,,,,,,,2025-10-02 08:00,2025-10-03 17:00,2025-10-03 08:00,2025-10-03 17:00,2025-11-20 17:00,2025-11-20 17:00,2025-12-05 17:00,2025-12-05 17:00,0,16,100
ZX-9550,SECAI TURNOVER FOR ACELERATION - Drywall & Inspect - S.GCS Storage Rm-1F-SUW-FAB110509 BAKER/DESCOPE,Complete,S.GCS Storage Rm - 1F -SUW-FAB110509,,,,,,,,,,2025-06-25 08:00,2025-07-08 17:00,2025-06-17 08:00,2025-06-27 16:00,2025-11-20 17:00,2025-11-20 17:00,2025-11-24 10:00,2025-11-24 10:00,0,80,100
ZX-9560,SECAI TURNOVER FOR ACELERATION - Fire Caulk & Inspect - S.GCS Storage Rm-1F-SUW-FAB110509 BAKER/DESOPE,Complete,S.GCS Storage Rm - 1F -SUW-FAB110509,,,,,,,,,,2025-06-30 08:00,2025-07-01 17:00,2025-06-27 08:00,2025-06-27 16:00,2025-11-20 17:00,2025-11-20 17:00,2025-11-25 10:00,2025-11-25 10:00,0,16,100
ZX-9570,SECAI TURNOVER FOR ACELERATION - Control Joint & Inspect - S.GCS Storage Rm-1F-SUW-FAB110509 BAKER/DESCOPE,Complete,S.GCS Storage Rm - 1F -SUW-FAB110509,,,,,,,,,,2025-06-30 08:00,2025-07-01 17:00,2025-06-27 08:00,2025-06-27 16:00,2025-11-20 17:00,2025-11-20 17:00,2025-11-24 10:00,2025-11-24 10:00,0,16,100
FAB110509A-03,INSTALL DOOR FRAMES - FAB110509A,Complete,S.GCS Storage Rm - 1F -SUW-FAB110509,,,,,,,,,,2025-07-31 08:00,2025-07-31 17:00,2025-07-31 08:00,2025-07-31 17:00,2025-11-20 17:00,2025-11-20 17:00,2025-12-02 10:00,2025-12-02 10:00,0,8,100
FAB110509A-02,SECAI ROUGH IN/SECURITY - FAB110509A,Complete,S.GCS Storage Rm - 1F -SUW-FAB110509,,,,,,,,,,2025-07-31 08:00,2025-07-31 17:00,2025-07-31 08:00,2025-07-31 17:00,2025-11-20 17:00,2025-11-20 17:00,2025-12-02 10:00,2025-12-02 10:00,0,8,100
FAB110509A-07,DOOR FRAME PAINT & 1ST COAT - FAB110509A,Complete,S.GCS Storage Rm - 1F -SUW-FAB110509,,,,,,,,,,2025-08-25 08:00,2025-08-27 17:00,2025-08-25 08:00,2025-08-27 17:00,2025-11-20 17:00,2025-11-20 17:00,2025-12-02 10:00,2025-12-02 10:00,0,24,100
FAB110509A-04,DOOR INSTALL - FAB110509A,Complete,S.GCS Storage Rm - 1F -SUW-FAB110509,,,,,,,,,,2025-08-29 08:00,2025-08-29 17:00,2025-08-29 08:00,2025-08-29 17:00,2025-11-20 17:00,2025-11-20 17:00,2025-12-02 10:00,2025-12-02 10:00,0,8,100
FAB110509A-05,PAINT & PROTECT DOORS & FRAMES - FAB110509A,Complete,S.GCS Storage Rm - 1F -SUW-FAB110509,,,,,,,,,,2025-10-15 08:00,2025-10-20 15:00,2025-10-15 08:00,2025-10-20 15:00,2025-11-20 17:00,2025-11-20 17:00,2025-12-02 10:00,2025-12-02 10:00,0,30,100
FAB110509A-06,INSTALL DOOR HARDWARE - FAB110509A,Not Started,S.GCS Storage Rm - 1F -SUW-FAB110509,,,,,,,,,,2025-11-21 08:00,2025-11-26 15:00,,,2025-11-21 08:00,2025-11-26 15:00,2025-12-02 10:00,2025-12-05 17:00,30,30,0
FAB110509B-02,SECAI ROUGH IN/SECURITY - FAB110509B,Complete,S.GCS Storage Rm - 1F -SUW-FAB110509,,,,,,,,,,2025-06-20 08:00,2025-06-20 17:00,2025-04-10 08:00,2025-04-10 16:00,2025-11-20 17:00,2025-11-20 17:00,2025-11-25 10:00,2025-11-25 10:00,0,8,100
FAB110509B-03,INSTALL DOOR FRAMES - FAB110509B,Complete,S.GCS Storage Rm - 1F -SUW-FAB110509,,,,,,,,,,2025-07-14 13:00,2025-07-15 12:00,2025-04-10 00:00,2025-04-10 16:00,2025-11-20 17:00,2025-11-20 17:00,2025-11-25 10:00,2025-11-25 10:00,0,8,100
FAB110509B-04,INSTALL DOOR & HARDWARE - FAB110509B,Active,S.GCS Storage Rm - 1F -SUW-FAB110509,,,,,,,,,,2025-09-03 08:00,2025-09-09 17:00,2025-09-03 08:00,,2025-11-21 08:00,2025-11-27 17:00,2025-11-25 10:00,2025-12-02 10:00,40,40,0
FAB110509B-05,PAINT & PROTECT DOORS & FRAMES - FAB110509B,Not Started,S.GCS Storage Rm - 1F -SUW-FAB110509,,,,,,,,,,2026-02-16 08:00,2026-02-19 15:00,,,2026-02-16 08:00,2026-02-19 15:00,2025-12-02 10:00,2025-12-05 17:00,30,30,0
FAB110509A-00,IMPACT - PATRIOT CLADDING HEADER FIX - FAB110509A,Complete,S.GCS Storage Rm - 1F -SUW-FAB110509,,,,,,,,,,2025-06-13 08:00,2025-07-03 17:00,2025-06-13 08:00,2025-07-09 17:00,2025-11-20 17:00,2025-11-20 17:00,2025-12-02 10:00,2025-12-02 10:00,0,120,100
FAB110509A-08,IMPACT - MATRIAL TAKEN BY THIRD PARTY - FAB110509A,Complete,S.GCS Storage Rm - 1F -SUW-FAB110509,,,,,,,,,,2025-06-13 08:00,2025-07-03 17:00,2025-06-13 08:00,2025-07-16 17:00,2025-11-20 17:00,2025-11-20 17:00,2025-12-02 10:00,2025-12-02 10:00,0,120,100
FAB110509A-09,IMPACT DOOR FRAME REMEDIATION - FAB110509A,Complete,S.GCS Storage Rm - 1F -SUW-FAB110509,,,,,,,,,,2025-08-20 08:00,2025-08-20 17:00,2025-07-30 08:00,2025-07-30 17:00,2025-11-20 17:00,2025-11-20 17:00,2025-12-02 10:00,2025-12-02 10:00,0,8,100
ZX-8770,Complete Drywall & Inspect - Fire Riser Rm 2-1F-SUW-FAB110510,Complete,Fire Riser Rm 2 - 1F -SUW-FAB110510,,,,,,,,,,2025-08-15 08:00,2025-08-25 17:00,2025-08-08 08:00,2025-08-22 17:00,2025-11-20 17:00,2025-11-20 17:00,2025-11-24 10:00,2025-11-24 10:00,0,56,100
ZX-8780,Complete Fire Caulk & Inspect - Fire Riser Rm 2-1F-SUW-FAB110510,Complete,Fire Riser Rm 2 - 1F -SUW-FAB110510,,,,,,,,,,2025-08-26 08:00,2025-08-27 17:00,2025-08-14 08:00,2025-08-15 17:00,2025-11-20 17:00,2025-11-20 17:00,2025-12-05 17:00,2025-12-05 17:00,0,16,100
ZX-8790,Complete Control Joint & Inspect - Fire Riser Rm 2-1F-SUW-FAB110510,Complete,Fire Riser Rm 2 - 1F -SUW-FAB110510,,,,,,,,,,2025-08-21 08:00,2025-08-22 17:00,2025-08-21 08:00,2025-08-22 17:00,2025-11-20 17:00,2025-11-20 17:00,2025-11-24 10:00,2025-11-24 10:00,0,16,100
FAB110510A-02,INSTALL DOOR FRAMES - FAB110510A,Complete,Fire Riser Rm 2 - 1F -SUW-FAB110510,,,,,,,,,,2025-08-05 08:00,2025-08-05 17:00,2025-08-05 08:00,2025-08-05 17:00,2025-11-20 17:00,2025-11-20 17:00,2025-12-02 10:00,2025-12-02 10:00,0,8,100
FAB110510A-07,DOOR FRAME PAINT & 1ST COAT - FAB110510A,Complete,Fire Riser Rm 2 - 1F -SUW-FAB110510,,,,,,,,,,2025-08-07 08:00,2025-08-13 17:00,2025-08-07 08:00,2025-08-13 17:00,2025-11-20 17:00,2025-11-20 17:00,2025-12-02 10:00,2025-12-02 10:00,0,40,100
FAB110510A-04,DOOR INSTALL - FAB110510A,Complete,Fire Riser Rm 2 - 1F -SUW-FAB110510,,,,,,,,,,2025-08-14 08:00,2025-08-14 17:00,2025-08-14 08:00,2025-08-14 17:00,2025-11-20 17:00,2025-11-20 17:00,2025-12-02 10:00,2025-12-02 10:00,0,8,100
FAB110510A-05,PAINT & PROTECT DOORS & FRAMES - FAB110510A,Complete,Fire Riser Rm 2 - 1F -SUW-FAB110510,,,,,,,,,,2025-10-15 08:00,2025-10-20 15:00,2025-10-15 08:00,2025-10-20 15:00,2025-11-20 17:00,2025-11-20 17:00,2025-12-02 10:00,2025-12-02 10:00,0,30,100
FAB110510A-06,INSTALL DOOR HARDWARE - FAB110510A,Not Started,Fire Riser Rm 2 - 1F -SUW-FAB110510,,,,,,,,,,2025-11-21 08:00,2025-11-26 15:00,,,2025-11-21 08:00,2025-11-26 15:00,2025-12-02 10:00,2025-12-05 17:00,30,30,0
FAB110510A-00,IMPACT - PATRIOT CLADDING HEADER FIX - FAB110510A,Complete,Fire Riser Rm 2 - 1F -SUW-FAB110510,,,,,,,,,,2025-06-13 08:00,2025-07-03 17:00,2025-06-13 08:00,2025-08-01 17:00,2025-11-20 17:00,2025-11-20 17:00,2025-12-02 10:00,2025-12-02 10:00,0,120,100
FAB110510A-03,SECAI IN/SECURITY - FAB110510A,Complete,Fire Riser Rm 2 - 1F -SUW-FAB110510,,,,,,,,,,2025-08-05 08:00,2025-08-05 17:00,2025-08-05 08:00,2025-08-05 17:00,2025-11-20 17:00,2025-11-20 17:00,2025-12-02 10:00,2025-12-02 10:00,0,8,100
ZX-9310,Complete Drywall & Inspect - Vestibule - 1F-SUW-FAB110508,Complete,Fire Alarm Rm 5 - 1F -SUW-FAB110508,,,,,,,,,,2025-05-05 08:00,2025-05-13 17:00,2025-05-05 08:00,2025-05-13 16:00,2025-11-20 17:00,2025-11-20 17:00,2025-11-18 10:00,2025-11-18 10:00,0,56,100
ZX-9320,Complete Fire Caulk & Inspect - Vestibule - 1F-SUW-FAB110508,Complete,Fire Alarm Rm 5 - 1F -SUW-FAB110508,,,,,,,,,,2025-08-15 08:00,2025-08-18 17:00,2025-08-15 08:00,2025-08-18 17:00,2025-11-20 17:00,2025-11-20 17:00,2025-12-05 17:00,2025-12-05 17:00,0,16,100
ZX-9330,Drywall Catch-up inspections - Vestibule - 1F-SUW-FAB110508,Complete,Fire Alarm Rm 5 - 1F -SUW-FAB110508,,,,,,,,,,2025-07-31 08:00,2025-08-08 17:00,2025-07-31 08:00,2025-08-08 17:00,2025-11-20 17:00,2025-11-20 17:00,2025-12-02 10:00,2025-12-02 10:00,0,56,100
ZX-17430,Control Drywall & Inspect & Inspect - Vestibule - 1F-SUW-FAB110508,Complete,Fire Alarm Rm 5 - 1F -SUW-FAB110508,,,,,,,,,,2025-05-27 08:00,2025-05-28 17:00,2025-05-27 08:00,2025-05-28 16:00,2025-11-20 17:00,2025-11-20 17:00,2025-11-18 10:00,2025-11-18 10:00,0,16,100
FAB110508A-01,IMPACT - INSTALL/REWORK DRYWALL FRAMING AROUND DOORS - FAB110508A,Complete,Fire Alarm Rm 5 - 1F -SUW-FAB110508,,,,,,,,,,2025-09-02 08:00,2025-09-03 17:00,2025-09-02 08:00,2025-09-03 17:00,2025-11-20 17:00,2025-11-20 17:00,2025-12-02 10:00,2025-12-02 10:00,0,16,100
FAB110508A-02,SECAI ROUGH IN/SECURITY - FAB110508A,Complete,Fire Alarm Rm 5 - 1F -SUW-FAB110508,,,,,,,,,,2025-09-04 08:00,2025-09-04 17:00,2025-09-04 08:00,2025-09-04 17:00,2025-11-20 17:00,2025-11-20 17:00,2025-12-02 10:00,2025-12-02 10:00,0,8,100
FAB110508A-03,INSTALL DOOR FRAMES - FAB110508A,Complete,Fire Alarm Rm 5 - 1F -SUW-FAB110508,,,,,,,,,,2025-09-04 08:00,2025-09-04 17:00,2025-09-04 08:00,2025-09-04 17:00,2025-11-20 17:00,2025-11-20 17:00,2025-12-02 10:00,2025-12-02 10:00,0,8,100
FAB110508A-04,DOOR INSTALL - FAB110508A,Complete,Fire Alarm Rm 5 - 1F -SUW-FAB110508,,,,,,,,,,2025-10-07 08:00,2025-10-07 17:00,2025-10-07 08:00,2025-10-07 17:00,2025-11-20 17:00,2025-11-20 17:00,2025-12-02 10:00,2025-12-02 10:00,0,8,100
FAB110508A-05,PAINT & PROTECT DOORS & FRAMES - FAB110508A,Complete,Fire Alarm Rm 5 - 1F -SUW-FAB110508,,,,,,,,,,2025-10-14 15:00,2025-10-20 12:00,2025-10-14 15:00,2025-10-17 15:00,2025-11-20 17:00,2025-11-20 17:00,2025-12-02 10:00,2025-12-02 10:00,0,30,100
FAB110508A-06,INSTALL DOOR HARDWARE - FAB110508A,Not Started,Fire Alarm Rm 5 - 1F -SUW-FAB110508,,,,,,,,,,2025-11-21 08:00,2025-11-26 15:00,,,2025-11-21 08:00,2025-11-26 15:00,2025-12-02 10:00,2025-12-05 17:00,30,30,0
FAB110508A-11,IMPACT - PROCUREMENT - Reordered doors (Wall Thickness and Door Swing Design Changes),Complete,Fire Alarm Rm 5 - 1F -SUW-FAB110508,,,,,,,,,,2025-06-20 08:00,2025-08-14 17:00,2025-06-20 08:00,2025-07-14 17:00,2025-11-20 17:00,2025-11-20 17:00,2025-12-02 10:00,2025-12-02 10:00,0,320,100
ZX-17800,IMPACT - SECAI DENIAL OF ACCEL COST FOR BERG - Drywall & Inspect Vestibule - 1F-SUW-FAB110508,Complete,Fire Alarm Rm 5 - 1F -SUW-FAB110508,,,,,,,,,,2025-05-13 08:00,2025-05-21 17:00,2025-05-13 08:00,2025-06-10 16:00,2025-11-20 17:00,2025-11-20 17:00,2025-12-02 10:00,2025-12-02 10:00,0,56,100
ZX-18620,IMPACT MEP STORAGE - Vestibule - 1F-SUW-FAB110508,Complete,Fire Alarm Rm 5 - 1F -SUW-FAB110508,,,,,,,,,,2025-06-20 08:00,2025-07-03 17:00,2025-06-16 08:00,2025-07-30 08:00,2025-11-20 17:00,2025-11-20 17:00,2025-12-02 10:00,2025-12-02 10:00,0,80,100
ZX-9610,Complete Drywall & Inspect - Duct Shaft - 1F-SUW-FAB110516,Complete,Duct Shaft - 1F -SUW-FAB110516,,,,,,,,,,2025-09-17 08:00,2025-09-18 17:00,2025-09-19 08:00,2025-09-19 17:00,2025-11-20 17:00,2025-11-20 17:00,2025-12-05 17:00,2025-12-05 17:00,0,16,100
ZX-9620,Complete Fire Caulk & Inspect - Duct Shaft - 1F-SUW-FAB110516,Complete,Duct Shaft - 1F -SUW-FAB110516,,,,,,,,,,2025-09-17 08:00,2025-09-18 17:00,2025-09-17 08:00,2025-09-18 17:00,2025-11-20 17:00,2025-11-20 17:00,2025-12-05 17:00,2025-12-05 17:00,0,16,100
ZX-9630,Complete Control Joint & Inspect - Duct Shaft - 1F-SUW-FAB110516,Complete,Duct Shaft - 1F -SUW-FAB110516,,,,,,,,,,2025-09-17 08:00,2025-09-18 17:00,2025-09-17 08:00,2025-09-18 17:00,2025-11-20 17:00,2025-11-20 17:00,2025-12-05 17:00,2025-12-05 17:00,0,16,100
FAB110516A-01,IMPACT - INSTALL/REWORK DRYWALL FRAMING AROUND DOORS - FAB110516A,Complete,Duct Shaft - 1F -SUW-FAB110516,,,,,,,,,,2025-03-07 08:00,2025-03-17 17:00,2025-03-07 08:00,2025-03-17 17:00,2025-11-20 17:00,2025-11-20 17:00,2025-11-25 10:00,2025-11-25 10:00,0,56,100
FAB110516A-02,SECAI ROUGH IN/SECURITY - FAB110516A,Complete,Duct Shaft - 1F -SUW-FAB110516,,,,,,,,,,2025-03-17 08:00,2025-03-17 17:00,2025-03-17 08:00,2025-03-17 17:00,2025-11-20 17:00,2025-11-20 17:00,2025-11-25 10:00,2025-11-25 10:00,0,8,100
FAB110516A-03,INSTALL DOOR FRAMES - FAB110516A,Complete,Duct Shaft - 1F -SUW-FAB110516,,,,,,,,,,2025-10-03 13:00,2025-10-06 12:00,2025-03-17 00:00,2025-03-17 16:00,2025-11-20 17:00,2025-11-20 17:00,2025-11-25 10:00,2025-11-25 10:00,0,8,100
FAB110516A-04,INSTALL DOOR & HARDWARE - FAB110516A,Active,Duct Shaft - 1F -SUW-FAB110516,,,,,,,,,,2025-09-29 08:00,2025-10-03 17:00,2025-09-27 08:00,,2025-11-21 08:00,2025-11-27 17:00,2025-11-25 10:00,2025-12-02 10:00,40,40,0
FAB110516A-05,PAINT & PROTECT DOORS & FRAMES - FAB110516A,Not Started,Duct Shaft - 1F -SUW-FAB110516,,,,,,,,,,2026-02-16 08:00,2026-02-19 15:00,,,2026-02-16 08:00,2026-02-19 15:00,2025-12-02 10:00,2025-12-05 17:00,30,30,0
ZX-8740,Complete Drywall & Inspect - Duct Shaft Vestibule - 1F-SUW-FAB110502,Complete,Duct Shaft Vestibule - 1F -SUW-FAB110502,,,,,,,,,,2025-06-10 08:00,2025-06-18 17:00,2025-06-10 08:00,2025-10-13 08:00,2025-11-20 17:00,2025-11-20 17:00,2025-12-05 17:00,2025-12-05 17:00,0,56,100
ZX-8750,Complete Fire Caulk & Inspect - Duct Shaft Vestibule - 1F-SUW-FAB110502,Complete,Duct Shaft Vestibule - 1F -SUW-FAB110502,,,,,,,,,,2025-10-14 08:00,2025-10-15 17:00,2025-10-14 08:00,2025-10-15 17:00,2025-11-20 17:00,2025-11-20 17:00,2025-12-05 17:00,2025-12-05 17:00,0,16,100
ZX-8760,Complete Control Joint & Inspect - Duct Shaft Vestibule - 1F-SUW-FAB110502,Complete,Duct Shaft Vestibule - 1F -SUW-FAB110502,,,,,,,,,,2025-10-10 08:00,2025-10-13 17:00,2025-10-10 08:00,2025-10-13 17:00,2025-11-20 17:00,2025-11-20 17:00,2025-12-05 17:00,2025-12-05 17:00,0,16,100
ZX-17440,IMPACT - SECAI DENIAL OF ACCEL COST FOR BERG - Complete Drywall & Inspect - Duct Shaft Vestibule - 1F-SUW-FAB110502,Complete,Duct Shaft Vestibule - 1F -SUW-FAB110502,,,,,,,,,,2025-05-05 08:00,2025-05-13 17:00,2025-05-05 08:00,2025-06-10 16:00,2025-11-20 17:00,2025-11-20 17:00,2025-12-05 17:00,2025-12-05 17:00,0,56,100
FAB110502A-02,SECAI ROUGH IN/SECURITY - FAB110502A,Complete,Duct Shaft Vestibule - 1F -SUW-FAB110502,,,,,,,,,,2025-03-25 08:00,2025-03-25 17:00,2025-03-26 08:00,2025-03-26 16:00,2025-11-20 17:00,2025-11-20 17:00,2025-12-05 17:00,2025-12-05 17:00,0,8,100
FAB110502A-03,INSTALL DOOR FRAMES - FAB110502A,Complete,Duct Shaft Vestibule - 1F -SUW-FAB110502,,,,,,,,,,2025-06-19 13:00,2025-06-20 12:00,2025-03-26 00:00,2025-03-26 16:00,2025-11-20 17:00,2025-11-20 17:00,2025-11-25 10:00,2025-11-25 10:00,0,8,100
FAB110502A-04,INSTALL DOOR & HARDWARE - FAB110502A,Not Started,Duct Shaft Vestibule - 1F -SUW-FAB110502,,,,,,,,,,2025-11-28 08:00,2025-12-04 17:00,,,2025-11-28 08:00,2025-12-04 17:00,2025-11-25 10:00,2025-12-02 10:00,40,40,0
FAB110502A-05,PAINT & PROTECT DOORS & FRAMES - FAB110502A,Not Started,Duct Shaft Vestibule - 1F -SUW-FAB110502,,,,,,,,,,2026-02-16 08:00,2026-02-19 15:00,,,2026-02-16 08:00,2026-02-19 15:00,2025-12-02 10:00,2025-12-05 17:00,30,30,0
FAB110502B-02,SECAI ROUGH IN/SECURITY - FAB110502B,Complete,Duct Shaft Vestibule - 1F -SUW-FAB110502,,,,,,,,,,2025-04-08 08:00,2025-04-08 17:00,2025-04-08 08:00,2025-04-08 17:00,2025-11-20 17:00,2025-11-20 17:00,2025-11-18 10:00,2025-11-18 10:00,0,8,100
FAB110502B-03,INSTALL DOOR FRAMES - FAB110502B,Complete,Duct Shaft Vestibule - 1F -SUW-FAB110502,,,,,,,,,,2025-06-19 13:00,2025-06-20 12:00,2025-04-08 00:00,2025-04-08 16:00,2025-11-20 17:00,2025-11-20 17:00,2025-11-18 10:00,2025-11-18 10:00,0,8,100
FAB110502B-04,INSTALL DOOR & HARDWARE - FAB110502B,Active,Duct Shaft Vestibule - 1F -SUW-FAB110502,,,,,,,,,,2025-10-15 08:00,2025-10-21 17:00,2025-10-15 08:00,,2025-11-21 08:00,2025-11-27 17:00,2025-11-25 10:00,2025-12-02 10:00,40,40,0
FAB110502B-05,PAINT & PROTECT DOORS & FRAMES - FAB110502B,Not Started,Duct Shaft Vestibule - 1F -SUW-FAB110502,,,,,,,,,,2026-02-16 08:00,2026-02-19 15:00,,,2026-02-16 08:00,2026-02-19 15:00,2025-12-02 10:00,2025-12-05 17:00,30,30,0
ZX-18630,IMPACT AXIOS SCAFFOLDING - Duct Shaft Vestibule - 1F-SUW-FAB110502,Complete,Duct Shaft Vestibule - 1F -SUW-FAB110502,,,,,,,,,,2025-06-10 08:00,2025-06-30 17:00,2025-06-10 08:00,2025-10-03 08:00,2025-11-20 17:00,2025-11-20 17:00,2025-12-05 17:00,2025-12-05 17:00,0,120,100
ZX-8920,Complete Drywall & Inspect - Duct Shaft - 1F-SUW-FAB110503,Complete,Duct Shaft - 1F -SUW-FAB110503,,,,,,,,,,2025-08-14 08:00,2025-08-27 17:00,2025-08-14 08:00,2025-08-18 17:00,2025-11-20 17:00,2025-11-20 17:00,2025-11-24 10:00,2025-11-24 10:00,0,80,100
ZX-8930,Complete Fire Caulk & Inspect - Duct Shaft - 1F-SUW-FAB110503,Complete,Duct Shaft - 1F -SUW-FAB110503,,,,,,,,,,2025-08-21 08:00,2025-08-22 17:00,2025-08-21 08:00,2025-08-22 17:00,2025-11-20 17:00,2025-11-20 17:00,2025-12-05 17:00,2025-12-05 17:00,0,16,100
ZX-8940,Complete Control Joint & Inspect - Duct Shaft - 1F-SUW-FAB110503,Complete,Duct Shaft - 1F -SUW-FAB110503,,,,,,,,,,2025-08-21 08:00,2025-08-22 17:00,2025-08-21 08:00,2025-08-22 17:00,2025-11-20 17:00,2025-11-20 17:00,2025-12-05 17:00,2025-12-05 17:00,0,16,100
FAB110503B-01,IMPACT - INSTALL/REWORK DRYWALL FRAMING AROUND DOORS - FAB110503B,Complete,Duct Shaft - 1F -SUW-FAB110503,,,,,,,,,,2025-09-16 08:00,2025-09-17 17:00,2025-09-16 08:00,2025-09-17 17:00,2025-11-20 17:00,2025-11-20 17:00,2025-11-25 10:00,2025-11-25 10:00,0,16,100
FAB110503B-02,SECAI ROUGH IN/SECURITY - FAB110503B,Complete,Duct Shaft - 1F -SUW-FAB110503,,,,,,,,,,2025-09-18 08:00,2025-09-18 17:00,2025-09-18 08:00,2025-09-18 17:00,2025-11-20 17:00,2025-11-20 17:00,2025-11-25 10:00,2025-11-25 10:00,0,8,100
FAB110503B-03,INSTALL DOOR FRAMES - FAB110503B,Complete,Duct Shaft - 1F -SUW-FAB110503,,,,,,,,,,2025-09-19 08:00,2025-09-19 17:00,2025-09-19 08:00,2025-09-19 17:00,2025-11-20 17:00,2025-11-20 17:00,2025-11-25 10:00,2025-11-25 10:00,0,8,100
FAB110503B-04,INSTALL DOOR & HARDWARE - FAB110503B,Not Started,Duct Shaft - 1F -SUW-FAB110503,,,,,,,,,,2025-11-21 08:00,2025-11-27 17:00,,,2025-11-21 08:00,2025-11-27 17:00,2025-11-25 10:00,2025-12-02 10:00,40,40,0
FAB110503B-05,PAINT & PROTECT DOORS & FRAMES - FAB110503B,Not Started,Duct Shaft - 1F -SUW-FAB110503,,,,,,,,,,2026-02-16 08:00,2026-02-19 15:00,,,2026-02-16 08:00,2026-02-19 15:00,2025-12-02 10:00,2025-12-05 17:00,30,30,0
FAB110503B-11,IMPACT - PROCUREMENT - NEW WALL THICKNESS ISSUE - 110503B,Complete,Duct Shaft - 1F -SUW-FAB110503,,,,,,,,,,2025-06-06 08:00,2025-09-02 12:00,2025-05-26 08:00,2025-09-15 08:00,2025-11-20 17:00,2025-11-20 17:00,2025-11-25 10:00,2025-11-25 10:00,0,500,100
ZX-19040,IMPACT - SECAI MEP SCAFFOLD ON THE WAY - Duct Shaft - 1F-SUW-FAB110503,Complete,Duct Shaft - 1F -SUW-FAB110503,,,,,,,,,,2025-07-03 08:00,2025-07-23 17:00,2025-07-03 08:00,2025-08-14 17:00,2025-11-20 17:00,2025-11-20 17:00,2025-11-24 10:00,2025-11-24 10:00,0,120,100
ZX-9220,Complete Drywall & Inspect - Rated Chase West - 1F-SUW-FAB110513 - 7/14 DESIGN CHANGE TAKE ON OVER BY SECAI,Complete,Rated Chase West - 1F - SUW-FAB110513,,,,,,,,,,2025-09-23 08:00,2025-10-06 17:00,2025-07-07 08:00,2025-07-09 17:00,2025-11-20 17:00,2025-11-20 17:00,2025-11-24 10:00,2025-11-24 10:00,0,80,100
ZX-9230,Complete Fire Caulk & Inspect - Rated Chase West - 1F-SUW-FAB110513,Complete,Rated Chase West - 1F - SUW-FAB110513,,,,,,,,,,2025-10-07 08:00,2025-10-08 17:00,2025-07-10 08:00,2025-07-10 17:00,2025-11-20 17:00,2025-11-20 17:00,2025-12-05 17:00,2025-12-05 17:00,0,16,100
ZX-9240,Complete Control Joint & Inspect - Rated Chase West - 1F-SUW-FAB110513,Complete,Rated Chase West - 1F - SUW-FAB110513,,,,,,,,,,2025-10-07 08:00,2025-10-08 17:00,2025-07-14 08:00,2025-07-14 17:00,2025-11-20 17:00,2025-11-20 17:00,2025-11-24 10:00,2025-11-24 10:00,0,16,100
FAB110513A-01,IMPACT - INSTALL/REWORK DRYWALL FRAMING AROUND DOORS - FAB110513A,Complete,Rated Chase West - 1F - SUW-FAB110513,,,,,,,,,,2025-10-09 08:00,2025-10-17 17:00,2025-07-14 08:00,2025-07-14 17:00,2025-11-20 17:00,2025-11-20 17:00,2025-11-24 10:00,2025-11-24 10:00,0,56,100
FAB110513A-02,SECAI ROUGH IN/SECURITY - FAB110513A,Complete,Rated Chase West - 1F - SUW-FAB110513,,,,,,,,,,2025-10-20 08:00,2025-10-20 17:00,2025-07-14 08:00,2025-07-14 17:00,2025-11-20 17:00,2025-11-20 17:00,2025-11-24 10:00,2025-11-24 10:00,0,8,100
FAB110513A-03,INSTALL DOOR FRAMES - FAB110513A,Not Started,Rated Chase West - 1F - SUW-FAB110513,,,,,,,,,,2025-11-21 08:00,2025-11-21 17:00,,,2025-11-21 08:00,2025-11-21 17:00,2025-11-24 10:00,2025-11-25 10:00,8,8,0
FAB110513A-04,INSTALL DOOR & HARDWARE - FAB110513A,Not Started,Rated Chase West - 1F - SUW-FAB110513,,,,,,,,,,2025-11-24 08:00,2025-11-28 17:00,,,2025-11-24 08:00,2025-11-28 17:00,2025-11-25 10:00,2025-12-02 10:00,40,40,0
FAB110513A-05,PAINT & PROTECT DOORS & FRAMES - FAB110513A,Not Started,Rated Chase West - 1F - SUW-FAB110513,,,,,,,,,,2026-02-16 08:00,2026-02-19 15:00,,,2026-02-16 08:00,2026-02-19 15:00,2025-12-02 10:00,2025-12-05 17:00,30,30,0
ZX-9520,IMPACT - SECAI DENIAL OF ACCEL COST FOR BERG - Drywall & Inspect - Duct Shaft Vestibule - 1F-SUW-FAB110123,Complete,Duct Shaft Vestibule - 1F -SUW-FAB110123,,,,,,,,,,2025-05-05 08:00,2025-05-13 17:00,2025-05-05 08:00,2025-06-10 16:00,2025-11-20 17:00,2025-11-20 17:00,2025-12-05 17:00,2025-12-05 17:00,0,56,100
ZX-9530,Complete Fire Caulk & Inspect - Duct Shaft Vestibule - 1F-SUW-FAB110123,Complete,Duct Shaft Vestibule - 1F -SUW-FAB110123,,,,,,,,,,2025-08-27 08:00,2025-08-28 17:00,2025-08-27 08:00,2025-08-28 17:00,2025-11-20 17:00,2025-11-20 17:00,2025-12-05 17:00,2025-12-05 17:00,0,16,100
ZX-9540,Complete Control Joint & Inspect - Duct Shaft Vestibule - 1F-SUW-FAB110123 MK MARLOW,Complete,Duct Shaft Vestibule - 1F -SUW-FAB110123,,,,,,,,,,2025-09-18 08:00,2025-09-18 17:00,2025-09-18 08:00,2025-09-18 17:00,2025-11-20 17:00,2025-11-20 17:00,2025-12-05 17:00,2025-12-05 17:00,0,8,100
ZX-17450,Complete Drywall & Inspect - Duct Shaft Vestibule - 1F-SUW-FAB110123,Complete,Duct Shaft Vestibule - 1F -SUW-FAB110123,,,,,,,,,,2025-06-20 08:00,2025-06-30 17:00,2025-06-20 08:00,2025-07-03 16:00,2025-11-20 17:00,2025-11-20 17:00,2025-12-05 17:00,2025-12-05 17:00,0,56,100
FAB110123A-01,IMPACT - INSTALL/REWORK DRYWALL FRAMING AROUND DOORS - FAB110123A,Complete,Duct Shaft Vestibule - 1F -SUW-FAB110123,,,,,,,,,,2025-08-11 08:00,2025-08-19 17:00,2025-07-15 08:00,2025-07-16 17:00,2025-11-20 17:00,2025-11-20 17:00,2025-11-28 08:00,2025-11-28 08:00,0,56,100
FAB110123A-02,SECAI ROUGH IN/SECURITY - FAB110123A,Complete,Duct Shaft Vestibule - 1F -SUW-FAB110123,,,,,,,,,,2025-08-20 08:00,2025-08-20 17:00,2025-07-17 08:00,2025-07-18 17:00,2025-11-20 17:00,2025-11-20 17:00,2025-11-28 08:00,2025-11-28 08:00,0,8,100
FAB110123A-03,INSTALL DOOR FRAMES - FAB110123A,Complete,Duct Shaft Vestibule - 1F -SUW-FAB110123,,,,,,,,,,2025-08-21 08:00,2025-08-21 17:00,2025-07-21 08:00,2025-07-21 17:00,2025-11-20 17:00,2025-11-20 17:00,2025-11-28 08:00,2025-11-28 08:00,0,8,100
FAB110123A-04,INSTALL DOOR & HARDWARE - FAB110123A,Active,Duct Shaft Vestibule - 1F -SUW-FAB110123,,,,,,,,,,2025-07-25 08:00,2025-07-31 17:00,2025-07-25 08:00,,2025-11-21 08:00,2025-11-27 17:00,2025-11-28 08:00,2025-12-04 17:00,40,40,0
FAB110123A-05,PAINT & PROTECT DOORS & FRAMES - FAB110123A,Not Started,Duct Shaft Vestibule - 1F -SUW-FAB110123,,,,,,,,,,2026-02-16 08:00,2026-02-16 17:00,,,2026-02-16 08:00,2026-02-16 17:00,2025-12-05 08:00,2025-12-05 17:00,8,8,0
FAB110123B-01,INSTALL DOOR FRAMES - FAB110123B,Complete,Duct Shaft Vestibule - 1F -SUW-FAB110123,,,,,,,,,,2025-09-08 08:00,2025-09-16 17:00,2025-07-16 08:00,2025-07-21 17:00,2025-11-20 17:00,2025-11-20 17:00,2025-11-25 10:00,2025-11-25 10:00,0,56,100
FAB110123B-04,INSTALL DOOR & HARDWARE - FAB110123B,Active,Duct Shaft Vestibule - 1F -SUW-FAB110123,,,,,,,,,,2025-09-09 08:00,2025-09-15 17:00,2025-09-09 08:00,,2025-11-21 08:00,2025-11-27 17:00,2025-11-25 10:00,2025-12-02 10:00,40,40,0
FAB110123B-05,PAINT & PROTECT DOORS & FRAMES - FAB110123B,Not Started,Duct Shaft Vestibule - 1F -SUW-FAB110123,,,,,,,,,,2026-02-16 08:00,2026-02-19 15:00,,,2026-02-16 08:00,2026-02-19 15:00,2025-12-02 10:00,2025-12-05 17:00,30,30,0
FAB110123A-11,IMPACT - PROCUREMENT - Reordered doors (Wall Thickness and Door Swing Design Changes),Complete,Duct Shaft Vestibule - 1F -SUW-FAB110123,,,,,,,,,,2025-06-20 08:00,2025-08-28 17:00,2025-06-20 08:00,2025-07-14 17:00,2025-11-20 17:00,2025-11-20 17:00,2025-11-28 08:00,2025-11-28 08:00,0,400,100
FAB110123B-11,IMPACT - PROCUREMENT - Reordered doors (Wall Thickness and Door Swing Design Changes),Complete,Duct Shaft Vestibule - 1F -SUW-FAB110123,,,,,,,,,,2025-06-20 08:00,2025-08-28 17:00,2025-06-20 08:00,2025-07-14 17:00,2025-11-20 17:00,2025-11-20 17:00,2025-11-25 10:00,2025-11-25 10:00,0,400,100
ZX-18380,IMPACT - MEP SCAFFOLD - Duct Shaft Vestibule - 1F-SUW-FAB110123,Complete,Duct Shaft Vestibule - 1F -SUW-FAB110123,,,,,,,,,,2025-06-10 08:00,2025-06-23 17:00,2025-06-10 08:00,2025-06-19 16:00,2025-11-20 17:00,2025-11-20 17:00,2025-12-05 17:00,2025-12-05 17:00,0,80,100
ZX-9070,SECAI TURNOVER FOR ACELERATION - Drywall & Inspect - Exit Passageway 4-1F-FAB110402 BAKER/DESCOPE,Complete,Exit Passageway 4 - 1F -SUW-FAB110402,,,,,,,,,,2025-05-28 08:00,2025-06-10 17:00,2025-05-22 08:00,2025-05-22 16:00,2025-11-20 17:00,2025-11-20 17:00,2025-11-24 10:00,2025-11-24 10:00,0,80,100
ZX-9080,SECAI TURNOVER FOR ACELERATION - Fire Caulk & Inspect - Exit Passageway 4-1F-FAB110402 BAKER/DESCOPE,Complete,Exit Passageway 4 - 1F -SUW-FAB110402,,,,,,,,,,2025-06-13 08:00,2025-06-16 17:00,2025-05-22 08:00,2025-05-22 16:00,2025-11-20 17:00,2025-11-20 17:00,2025-12-05 17:00,2025-12-05 17:00,0,16,100
ZX-9090,SECAI TURNOVER FOR ACELERATION - Control Joint & Inspect & Inspect - Exit Passageway 4-1F-FAB110402 BAKER/DESCOPE,Complete,Exit Passageway 4 - 1F -SUW-FAB110402,,,,,,,,,,2025-06-11 08:00,2025-06-12 17:00,2025-05-22 08:00,2025-05-22 16:00,2025-11-20 17:00,2025-11-20 17:00,2025-11-24 10:00,2025-11-24 10:00,0,16,100
ZX-17460,IMPACT - SECAI DENIAL OF ACCEL COST FOR BERG - Complete Drywall & Inspect - Exit Passageway 4-1F-FAB110402,Complete,Exit Passageway 4 - 1F -SUW-FAB110402,,,,,,,,,,2025-05-05 08:00,2025-05-16 17:00,2025-05-05 08:00,2025-05-22 16:00,2025-11-20 17:00,2025-11-20 17:00,2025-11-24 10:00,2025-11-24 10:00,0,80,100
FAB110402A-05,PAINT & PROTECT DOORS & FRAMES - FAB110402A,Complete,Exit Passageway 4 - 1F -SUW-FAB110402,,,,,,,,,,2025-10-15 08:00,2025-10-20 17:00,2025-10-15 08:00,2025-10-20 17:00,2025-11-20 17:00,2025-11-20 17:00,2025-12-02 10:00,2025-12-02 10:00,0,32,100
FAB110402A-06,INSTALL DOOR HARDWARE - FAB110402A,Not Started,Exit Passageway 4 - 1F -SUW-FAB110402,,,,,,,,,,2025-11-21 08:00,2025-11-26 15:00,,,2025-11-21 08:00,2025-11-26 15:00,2025-12-02 10:00,2025-12-05 17:00,30,30,0
FAB110402C-04,INSTALL DOOR & HARDWARE - FAB110402C,Active,Exit Passageway 4 - 1F -SUW-FAB110402,,,,,,,,,,2025-10-06 08:00,2025-10-10 17:00,2025-10-06 08:00,,2025-11-21 08:00,2025-11-27 17:00,2025-11-25 10:00,2025-12-02 10:00,40,40,0
FAB110402C-05,PAINT & PROTECT DOORS & FRAMES - FAB110402C,Not Started,Exit Passageway 4 - 1F -SUW-FAB110402,,,,,,,,,,2026-02-16 08:00,2026-02-19 15:00,,,2026-02-16 08:00,2026-02-19 15:00,2025-12-02 10:00,2025-12-05 17:00,30,30,0
FAB110402C-6,IMPACT - SECAI DIRECTIVE HOLD FRAME - FAB110402C - UNTIL 6/20,Complete,Exit Passageway 4 - 1F -SUW-FAB110402,,,,,,,,,,2025-06-06 08:00,2025-06-06 17:00,2025-05-05 08:00,2025-09-19 17:00,2025-11-20 17:00,2025-11-20 17:00,2025-11-25 10:00,2025-11-25 10:00,0,8,100
FAB110402A-04,DOOR INSTALL - FAB110402A,Complete,Exit Passageway 4 - 1F -SUW-FAB110402,,,,,,,,,,2025-08-19 08:00,2025-08-19 17:00,2025-08-19 08:00,2025-08-19 17:00,2025-11-20 17:00,2025-11-20 17:00,2025-12-02 10:00,2025-12-02 10:00,0,8,100
FAB110402A-00,IMPACT - PATRIOT CLADDING HEADER FIX - FAB110402A,Complete,Exit Passageway 4 - 1F -SUW-FAB110402,,,,,,,,,,2025-06-13 08:00,2025-07-03 17:00,2025-06-13 08:00,2025-07-01 16:00,2025-11-20 17:00,2025-11-20 17:00,2025-12-02 10:00,2025-12-02 10:00,0,120,100
FAB110402A-02,INSTALL DOOR FRAMES - FAB110402A,Complete,Exit Passageway 4 - 1F -SUW-FAB110402,,,,,,,,,,2025-07-02 08:00,2025-07-02 17:00,2025-07-02 08:00,2025-07-02 16:00,2025-11-20 17:00,2025-11-20 17:00,2025-12-02 10:00,2025-12-02 10:00,0,8,100
FAB110402A-03,SECAI ROUGH IN/SECURITY - FAB110402A,Complete,Exit Passageway 4 - 1F -SUW-FAB110402,,,,,,,,,,2025-06-27 08:00,2025-06-27 17:00,2025-07-02 08:00,2025-07-02 16:00,2025-11-20 17:00,2025-11-20 17:00,2025-12-02 10:00,2025-12-02 10:00,0,8,100
FAB110402A-07,DOOR FRAME PAINT & 1ST COAT - FAB110402A,Complete,Exit Passageway 4 - 1F -SUW-FAB110402,,,,,,,,,,2025-07-25 08:00,2025-07-29 17:00,2025-07-25 08:00,2025-07-29 17:00,2025-11-20 17:00,2025-11-20 17:00,2025-12-02 10:00,2025-12-02 10:00,0,24,100
ZX-9370,Complete Drywall & Inspect - Duct Shaft - 1F-SUW-FAB110306,Complete,Duct Shaft - 1F -SUW-FAB110306,,,,,,,,,,2025-08-04 08:00,2025-08-15 17:00,2025-08-04 08:00,2025-08-15 17:00,2025-11-20 17:00,2025-11-20 17:00,2025-11-17 10:00,2025-11-17 10:00,0,80,100
ZX-9380,Complete Fire Caulk & Inspect - Duct Shaft - 1F-SUW-FAB110306,Complete,Duct Shaft - 1F -SUW-FAB110306,,,,,,,,,,2025-08-21 08:00,2025-08-22 17:00,2025-08-21 08:00,2025-08-22 17:00,2025-11-20 17:00,2025-11-20 17:00,2025-12-05 17:00,2025-12-05 17:00,0,16,100
ZX-9390,Complete Control Joint & Inspect - Duct Shaft - 1F-SUW-FAB110306,Complete,Duct Shaft - 1F -SUW-FAB110306,,,,,,,,,,2025-08-21 08:00,2025-08-22 17:00,2025-08-21 08:00,2025-08-22 17:00,2025-11-20 17:00,2025-11-20 17:00,2025-11-17 10:00,2025-11-17 10:00,0,16,100
FAB110306A-02,SECAI ROUGH IN/SECURITY - FAB110306A,Complete,Duct Shaft - 1F -SUW-FAB110306,,,,,,,,,,2025-06-24 08:00,2025-06-24 17:00,2025-06-03 08:00,2025-06-03 16:00,2025-11-20 17:00,2025-11-20 17:00,2025-11-28 08:00,2025-11-28 08:00,0,8,100
FAB110306A-03,INSTALL DOOR FRAMES - FAB110306A,Complete,Duct Shaft - 1F -SUW-FAB110306,,,,,,,,,,2025-08-25 08:00,2025-08-25 17:00,2025-07-22 08:00,2025-07-23 16:00,2025-11-20 17:00,2025-11-20 17:00,2025-11-28 08:00,2025-11-28 08:00,0,8,100
FAB110306A-04,INSTALL DOOR & HARDWARE - FAB110306A,Active,Duct Shaft - 1F -SUW-FAB110306,,,,,,,,,,2025-07-24 08:00,2025-07-30 17:00,2025-07-24 08:00,,2025-11-21 08:00,2025-11-27 17:00,2025-11-28 08:00,2025-12-04 17:00,40,40,0
FAB110306A-05,PAINT & PROTECT DOORS & FRAMES - FAB110306A,Not Started,Duct Shaft - 1F -SUW-FAB110306,,,,,,,,,,2026-02-16 08:00,2026-02-16 17:00,,,2026-02-16 08:00,2026-02-16 17:00,2025-12-05 08:00,2025-12-05 17:00,8,8,0
FAB110306A-11,IMPACT - PROCUREMENT - Reordered doors (Wall Thickness and Door Swing Design Changes),Complete,Duct Shaft - 1F -SUW-FAB110306,,,,,,,,,,2025-06-09 08:00,2025-07-21 17:00,2025-06-09 08:00,2025-07-14 17:00,2025-11-20 17:00,2025-11-20 17:00,2025-11-28 08:00,2025-11-28 08:00,0,248,100
FAB110514A-04,INSTALL DOOR & HARDWARE - FAB110514A,Active,Duct Shaft - 1F -SUW-FAB110306,,,,,,,,,,2025-08-19 08:00,2025-08-25 17:00,2025-08-19 08:00,,2025-11-21 08:00,2025-11-27 17:00,2025-11-28 08:00,2025-12-04 17:00,40,40,0
FAB110514A-05,PAINT & PROTECT DOORS & FRAMES - FAB110514A,Not Started,Duct Shaft - 1F -SUW-FAB110306,,,,,,,,,,2026-02-16 08:00,2026-02-16 17:00,,,2026-02-16 08:00,2026-02-16 17:00,2025-12-05 08:00,2025-12-05 17:00,8,8,0
FAB110514B-04,INSTALL DOOR & HARDWARE - FAB110514B,Active,Duct Shaft - 1F -SUW-FAB110306,,,,,,,,,,2025-08-19 08:00,2025-08-25 17:00,2025-08-19 08:00,,2025-11-21 08:00,2025-11-27 17:00,2025-11-25 10:00,2025-12-02 10:00,40,40,0
FAB110514B-05,PAINT & PROTECT DOORS & FRAMES - FAB110514B,Not Started,Duct Shaft - 1F -SUW-FAB110306,,,,,,,,,,2026-02-16 08:00,2026-02-19 15:00,,,2026-02-16 08:00,2026-02-19 15:00,2025-12-02 10:00,2025-12-05 17:00,30,30,0
ZX-9670,Catchup - Complete Drywall & Inspect - GCS Training Rm-1F-SUW-FAB110401,Complete,GCS Training Rm - 1F -SUW-FAB110401,,,,,,,,,,2025-08-08 08:00,2025-08-18 17:00,2025-08-04 08:00,2025-08-08 17:00,2025-11-20 17:00,2025-11-20 17:00,2025-11-24 10:00,2025-11-24 10:00,0,56,100
ZX-9680,Catchup - Fire Caulk & Inspect - GCS Training Rm-1F-SUW-FAB110401,Complete,GCS Training Rm - 1F -SUW-FAB110401,,,,,,,,,,2025-08-13 08:00,2025-08-13 17:00,2025-08-13 08:00,2025-08-13 17:00,2025-11-20 17:00,2025-11-20 17:00,2025-12-05 17:00,2025-12-05 17:00,0,8,100
ZX-9690,Catchup - Control Joint & Inspect & Inspect - GCS Training Rm-1F-SUW-FAB110401,Complete,GCS Training Rm - 1F -SUW-FAB110401,,,,,,,,,,2025-08-11 08:00,2025-08-12 17:00,2025-08-11 08:00,2025-08-12 17:00,2025-11-20 17:00,2025-11-20 17:00,2025-11-24 10:00,2025-11-24 10:00,0,16,100
FAB110401A-02,SECAI ROUGH IN/SECURITY - FAB110401A,Complete,GCS Training Rm - 1F -SUW-FAB110401,,,,,,,,,,2025-06-20 08:00,2025-06-20 17:00,2025-05-20 08:00,2025-05-20 16:00,2025-11-20 17:00,2025-11-20 17:00,2025-12-02 10:00,2025-12-02 10:00,0,8,100
FAB110401A-03,INSTALL DOOR FRAMES - FAB110401A,Complete,GCS Training Rm - 1F -SUW-FAB110401,,,,,,,,,,2025-06-20 08:00,2025-06-20 17:00,2025-05-20 08:00,2025-05-20 08:00,2025-11-20 17:00,2025-11-20 17:00,2025-12-02 10:00,2025-12-02 10:00,0,8,100
FAB110401A-04,DOOR INSTALL - FAB110401A,Complete,GCS Training Rm - 1F -SUW-FAB110401,,,,,,,,,,2025-09-17 08:00,2025-09-17 17:00,2025-09-17 08:00,2025-09-17 17:00,2025-11-20 17:00,2025-11-20 17:00,2025-12-02 10:00,2025-12-02 10:00,0,8,100
FAB110401A-05,PAINT & PROTECT DOORS & FRAMES - FAB110401A,Complete,GCS Training Rm - 1F -SUW-FAB110401,,,,,,,,,,2025-10-08 08:00,2025-10-13 15:00,2025-10-08 08:00,2025-10-12 15:00,2025-11-20 17:00,2025-11-20 17:00,2025-12-02 10:00,2025-12-02 10:00,0,30,100
FAB110401A-06,INSTALL DOOR HARDWARE - FAB110401A,Not Started,GCS Training Rm - 1F -SUW-FAB110401,,,,,,,,,,2025-11-21 08:00,2025-11-26 15:00,,,2025-11-21 08:00,2025-11-26 15:00,2025-12-02 10:00,2025-12-05 17:00,30,30,0
FAB110401B-02,SECAI ROUGH IN/SECURITY - FAB110401B,Complete,GCS Training Rm - 1F -SUW-FAB110401,,,,,,,,,,2025-06-20 08:00,2025-06-20 17:00,2025-05-21 08:00,2025-05-21 16:00,2025-11-20 17:00,2025-11-20 17:00,2025-11-25 10:00,2025-11-25 10:00,0,8,100
FAB110401B-03,INSTALL DOOR FRAMES - FAB110401B,Complete,GCS Training Rm - 1F -SUW-FAB110401,,,,,,,,,,2025-06-20 08:00,2025-06-20 17:00,2025-05-21 08:00,2025-05-21 16:00,2025-11-20 17:00,2025-11-20 17:00,2025-11-25 10:00,2025-11-25 10:00,0,8,100
FAB110401B-04,INSTALL DOOR & HARDWARE - FAB110401B,Active,GCS Training Rm - 1F -SUW-FAB110401,,,,,,,,,,2025-08-29 08:00,2025-09-04 17:00,2025-08-29 08:00,,2025-11-21 08:00,2025-11-27 17:00,2025-11-25 10:00,2025-12-02 10:00,40,40,0
FAB110401B-05,PAINT & PROTECT DOORS & FRAMES - FAB110401B,Not Started,GCS Training Rm - 1F -SUW-FAB110401,,,,,,,,,,2026-02-16 08:00,2026-02-19 15:00,,,2026-02-16 08:00,2026-02-19 15:00,2025-12-02 10:00,2025-12-05 17:00,30,30,0
FAB110401C-01,INSTALL DOOR FRAME BY SECAI - FAB110401C HANDED OVER 06/27,Complete,GCS Training Rm - 1F -SUW-FAB110401,,,,,,,,,,2025-06-27 08:00,2025-07-10 17:00,2025-06-28 08:00,2025-08-12 17:00,2025-11-20 17:00,2025-11-20 17:00,2025-11-25 10:00,2025-11-25 10:00,0,80,100
FAB110401C-04,INSTALL DOOR & HARDWARE - FAB110401C,Active,GCS Training Rm - 1F -SUW-FAB110401,,,,,,,,,,2025-09-25 08:00,2025-10-01 17:00,2025-09-25 08:00,,2025-11-21 08:00,2025-11-27 17:00,2025-11-25 10:00,2025-12-02 10:00,40,40,0
FAB110401C-05,PAINT & PROTECT DOORS & FRAMES - FAB110401C,Not Started,GCS Training Rm - 1F -SUW-FAB110401,,,,,,,,,,2026-02-16 08:00,2026-02-19 15:00,,,2026-02-16 08:00,2026-02-19 15:00,2025-12-02 10:00,2025-12-05 17:00,30,30,0
FAB110401A-07,DOOR FRAME PAINT & 1ST COAT - FAB110401A,Complete,GCS Training Rm - 1F -SUW-FAB110401,,,,,,,,,,2025-07-25 08:00,2025-07-29 17:00,2025-07-25 08:00,2025-07-29 17:00,2025-11-20 17:00,2025-11-20 17:00,2025-12-02 10:00,2025-12-02 10:00,0,24,100
FAB110401B-07,DOOR FRAME PAINT & 1ST COAT - FAB110401B,Complete,GCS Training Rm - 1F -SUW-FAB110401,,,,,,,,,,2025-08-25 08:00,2025-08-27 17:00,2025-08-25 08:00,2025-08-27 17:00,2025-11-20 17:00,2025-11-20 17:00,2025-11-25 10:00,2025-11-25 10:00,0,24,100
FAB110401C-13,DOOR FRAME HANDED OVER TO SECAI ON 06/27 - FAB110401C,Complete,GCS Training Rm - 1F -SUW-FAB110401,,,,,,,,,,2025-07-03 08:00,2025-07-03 17:00,2025-06-27 08:00,2025-06-27 16:00,2025-11-20 17:00,2025-11-20 17:00,2025-11-25 10:00,2025-11-25 10:00,0,8,100
ZX-8890,Complete Drywall & Inspect - H2 Purifier Analyzer Rm-1F-SUW-FAB110309,Complete,H2 Purifier Analyzer Rm - 1F -SUW-FAB110309,,,,,,,,,,2025-06-16 08:00,2025-06-17 17:00,2025-05-12 08:00,2025-05-22 16:00,2025-11-20 17:00,2025-11-20 17:00,2025-11-17 10:00,2025-11-17 10:00,0,16,100
ZX-8900,Complete Fire Caulk & Inspect - H2 Purifier Analyzer Rm-1F-SUW-FAB110309,Complete,H2 Purifier Analyzer Rm - 1F -SUW-FAB110309,,,,,,,,,,2025-08-12 08:00,2025-08-13 17:00,2025-08-12 08:00,2025-08-15 17:00,2025-11-20 17:00,2025-11-20 17:00,2025-12-05 17:00,2025-12-05 17:00,0,16,100
ZX-8910,Complete Control Joint & Inspect - H2 Purifier Analyzer Rm-1F-SUW-FAB110309,Complete,H2 Purifier Analyzer Rm - 1F -SUW-FAB110309,,,,,,,,,,2025-06-12 08:00,2025-06-13 17:00,2025-05-26 08:00,2025-08-08 17:00,2025-11-20 17:00,2025-11-20 17:00,2025-11-17 10:00,2025-11-17 10:00,0,16,100
ZX-16580,IMPACT - Complete Drywall & Inspect - H2 Purifier Analyzer Rm-1F-SUW-FAB110309 SECAI DENIAL OF ACCEL COST FOR BERG,Complete,H2 Purifier Analyzer Rm - 1F -SUW-FAB110309,,,,,,,,,,2025-05-05 08:00,2025-05-13 17:00,2025-05-05 08:00,2025-05-09 16:00,2025-11-20 17:00,2025-11-20 17:00,2025-11-17 10:00,2025-11-17 10:00,0,56,100
FAB110309A-03,INSTALL DOOR FRAMES - FAB110309A,Complete,H2 Purifier Analyzer Rm - 1F -SUW-FAB110309,,,,,,,,,,2025-06-25 13:00,2025-06-26 12:00,2025-04-08 00:00,2025-04-08 12:00,2025-11-20 17:00,2025-11-20 17:00,2025-12-02 10:00,2025-12-02 10:00,0,8,100
FAB110309A-04,DOOR INSTALL - FAB110309A,Complete,H2 Purifier Analyzer Rm - 1F -SUW-FAB110309,,,,,,,,,,2025-08-14 08:00,2025-08-14 17:00,2025-08-14 08:00,2025-08-14 17:00,2025-11-20 17:00,2025-11-20 17:00,2025-12-02 10:00,2025-12-02 10:00,0,8,100
FAB110309A-05,PAINT & PROTECT DOORS & FRAMES - FAB110309A,Complete,H2 Purifier Analyzer Rm - 1F -SUW-FAB110309,,,,,,,,,,2025-10-14 08:00,2025-10-17 15:00,2025-10-14 08:00,2025-10-16 15:00,2025-11-20 17:00,2025-11-20 17:00,2025-12-02 10:00,2025-12-02 10:00,0,30,100
FAB110309A-06,INSTALL DOOR HARDWARE - FAB110309A,Not Started,H2 Purifier Analyzer Rm - 1F -SUW-FAB110309,,,,,,,,,,2025-11-21 08:00,2025-11-26 15:00,,,2025-11-21 08:00,2025-11-26 15:00,2025-12-02 10:00,2025-12-05 17:00,30,30,0
ZX-18300,IMPACT - SECAI DENIAL OF ACCEL COST FOR BERG - H2 Purifier Analyzer Rm-1F-SUW-FAB110309,Complete,H2 Purifier Analyzer Rm - 1F -SUW-FAB110309,,,,,,,,,,2025-06-12 08:00,2025-06-13 17:00,2025-05-26 08:00,2025-06-10 16:00,2025-11-20 17:00,2025-11-20 17:00,2025-11-17 10:00,2025-11-17 10:00,0,16,100
ZX-9190,Complete Drywall & Inspect - H2 Purifier Rm-1F-SUW-FAB110307,Complete,H2 Purifier Rm - 1F -SUW-FAB110307,,,,,,,,,,2025-05-05 08:00,2025-05-13 17:00,2025-05-05 08:00,2025-05-13 16:00,2025-11-20 17:00,2025-11-20 17:00,2025-11-17 10:00,2025-11-17 10:00,0,56,100
ZX-9200,Complete Fire Caulk & Inspect - H2 Purifier Rm-1F-SUW-FAB110307,Complete,H2 Purifier Rm - 1F -SUW-FAB110307,,,,,,,,,,2025-08-19 08:00,2025-08-20 17:00,2025-08-12 08:00,2025-08-15 17:00,2025-11-20 17:00,2025-11-20 17:00,2025-12-05 17:00,2025-12-05 17:00,0,16,100
ZX-9210,Complete Control Joint & Inspect - H2 Purifier Rm-1F-SUW-FAB110307,Complete,H2 Purifier Rm - 1F -SUW-FAB110307,,,,,,,,,,2025-05-14 08:00,2025-05-15 17:00,2025-05-14 08:00,2025-08-22 08:00,2025-11-20 17:00,2025-11-20 17:00,2025-11-17 10:00,2025-11-17 10:00,0,16,100
FAB110307A-03,INSTALL DOOR FRAMES - FAB110307A,Complete,H2 Purifier Rm - 1F -SUW-FAB110307,,,,,,,,,,2025-08-05 08:00,2025-08-05 17:00,2025-08-05 08:00,2025-08-05 17:00,2025-11-20 17:00,2025-11-20 17:00,2025-11-25 10:00,2025-11-25 10:00,0,8,100
FAB110307A-02,SECAI ROUGH IN/SECURITY - FAB110307A,Complete,H2 Purifier Rm - 1F -SUW-FAB110307,,,,,,,,,,2025-08-05 08:00,2025-08-05 17:00,2025-08-05 08:00,2025-08-05 17:00,2025-11-20 17:00,2025-11-20 17:00,2025-11-25 10:00,2025-11-25 10:00,0,8,100
FAB110307A-07,DOOR FRAME PAINT & 1ST COAT - FAB110307A,Complete,H2 Purifier Rm - 1F -SUW-FAB110307,,,,,,,,,,2025-08-07 08:00,2025-08-11 17:00,2025-08-07 08:00,2025-08-11 17:00,2025-11-20 17:00,2025-11-20 17:00,2025-11-25 10:00,2025-11-25 10:00,0,24,100
FAB110307A-04,INSTALL DOOR & HARDWARE - FAB110307A,Active,H2 Purifier Rm - 1F -SUW-FAB110307,,,,,,,,,,2025-08-29 08:00,2025-09-04 17:00,2025-08-29 08:00,,2025-11-21 08:00,2025-11-27 17:00,2025-11-25 10:00,2025-12-02 10:00,40,40,0
FAB110307A-05,PAINT & PROTECT DOORS & FRAMES - FAB110307A,Not Started,H2 Purifier Rm - 1F -SUW-FAB110307,,,,,,,,,,2026-02-16 08:00,2026-02-19 15:00,,,2026-02-16 08:00,2026-02-19 15:00,2025-12-02 10:00,2025-12-05 17:00,30,30,0
FAB110307A-00,IMPACT - PATRIOT CLADDING HEADER FIX - FAB110307A,Complete,H2 Purifier Rm - 1F -SUW-FAB110307,,,,,,,,,,2025-06-13 08:00,2025-07-03 17:00,2025-06-13 08:00,2025-08-01 17:00,2025-11-20 17:00,2025-11-20 17:00,2025-11-25 10:00,2025-11-25 10:00,0,120,100
FAB110307A-08,IMPACT - MATRIAL TAKEN BY THIRD PARTY - FAB110307A,Complete,H2 Purifier Rm - 1F -SUW-FAB110307,,,,,,,,,,2025-06-13 08:00,2025-07-03 17:00,2025-06-13 08:00,2025-08-01 17:00,2025-11-20 17:00,2025-11-20 17:00,2025-11-25 10:00,2025-11-25 10:00,0,120,100
FAB110307A-09,IMPACT DOOR FRAME REMEDIATION - FAB110307A,Complete,H2 Purifier Rm - 1F -SUW-FAB110307,,,,,,,,,,2025-08-04 08:00,2025-08-04 17:00,2025-08-04 08:00,2025-08-04 17:00,2025-11-20 17:00,2025-11-20 17:00,2025-11-25 10:00,2025-11-25 10:00,0,8,100
ZX-18850,IMPACT - SECAI MEP ACTIVITIES - H2 Purifier Rm-1F-SUW-FAB110307,Complete,H2 Purifier Rm - 1F -SUW-FAB110307,,,,,,,,,,2025-06-20 08:00,2025-07-10 17:00,2025-06-20 08:00,2025-08-08 17:00,2025-11-20 17:00,2025-11-20 17:00,2025-11-17 10:00,2025-11-17 10:00,0,120,100
ZX-9490,Complete Drywall & Inspect - Fire Alarm Rm 3-1F-FAB110312,Complete,Fire Alarm Rm 3 - 1F -SUW-FAB110312,,,,,,,,,,2025-08-19 08:00,2025-08-22 17:00,2025-08-19 08:00,2025-08-22 17:00,2025-11-20 17:00,2025-11-20 17:00,2025-11-28 08:00,2025-11-28 08:00,0,32,100
ZX-9500,Complete Fire Caulk & Inspect - Fire Alarm Rm 3-1F-FAB110312,Complete,Fire Alarm Rm 3 - 1F -SUW-FAB110312,,,,,,,,,,2025-08-25 08:00,2025-08-26 17:00,2025-08-25 08:00,2025-08-26 17:00,2025-11-20 17:00,2025-11-20 17:00,2025-12-05 17:00,2025-12-05 17:00,0,16,100
ZX-9510,Complete Control Joint & Inspect - Fire Alarm Rm 3-1F-FAB110312,Complete,Fire Alarm Rm 3 - 1F -SUW-FAB110312,,,,,,,,,,2025-08-21 08:00,2025-08-22 17:00,2025-08-21 08:00,2025-08-22 17:00,2025-11-20 17:00,2025-11-20 17:00,2025-11-28 08:00,2025-11-28 08:00,0,16,100
FAB110312A-03,INSTALL DOOR FRAMES - FAB110312A,Complete,Fire Alarm Rm 3 - 1F -SUW-FAB110312,,,,,,,,,,2025-08-18 13:00,2025-08-19 12:00,2024-07-09 00:00,2024-07-10 12:00,2025-11-20 17:00,2025-11-20 17:00,2025-11-28 08:00,2025-11-28 08:00,0,8,100
FAB110312A-04,INSTALL DOOR & HARDWARE - FAB110312A,Active,Fire Alarm Rm 3 - 1F -SUW-FAB110312,,,,,,,,,,2025-08-14 08:00,2025-08-20 17:00,2025-08-14 08:00,,2025-11-21 08:00,2025-11-27 17:00,2025-11-28 08:00,2025-12-04 17:00,40,40,0
FAB110312A-05,PAINT & PROTECT DOORS & FRAMES - FAB110312A,Not Started,Fire Alarm Rm 3 - 1F -SUW-FAB110312,,,,,,,,,,2026-02-16 08:00,2026-02-16 17:00,,,2026-02-16 08:00,2026-02-16 17:00,2025-12-05 08:00,2025-12-05 17:00,8,8,0
ZX-8980,Complete Drywall & Inspect - Equip Platform-1F-SUW-FAB110308,Complete,Equip Platform - 1F -SUW-FAB110308,,,,,,,,,,2025-09-01 08:00,2025-09-02 17:00,2025-09-01 08:00,2025-09-02 17:00,2025-11-20 17:00,2025-11-20 17:00,2025-12-05 17:00,2025-12-05 17:00,0,16,100
ZX-8990,Complete Fire Caulk & Inspect - Equip Platform-1F-SUW-FAB110308,Complete,Equip Platform - 1F -SUW-FAB110308,,,,,,,,,,2025-09-01 08:00,2025-09-02 17:00,2025-09-01 08:00,2025-09-02 17:00,2025-11-20 17:00,2025-11-20 17:00,2025-12-05 17:00,2025-12-05 17:00,0,16,100
ZX-9000,Complete Control Joint & Inspect - Equip Platform - 1F-SUW-FAB110308,Complete,Equip Platform - 1F -SUW-FAB110308,,,,,,,,,,2025-09-01 08:00,2025-09-02 17:00,2025-09-01 08:00,2025-09-02 17:00,2025-11-20 17:00,2025-11-20 17:00,2025-12-05 17:00,2025-12-05 17:00,0,16,100
FAB110308A-02,SECAI ROUGH IN/SECURITY  - FAB110308A,Complete,Equip Platform - 1F -SUW-FAB110308,,,,,,,,,,2025-08-08 08:00,2025-08-08 17:00,2025-08-08 08:00,2025-08-08 17:00,2025-11-20 17:00,2025-11-20 17:00,2025-12-02 10:00,2025-12-02 10:00,0,8,100
FAB110308A-03,INSTALL DOOR FRAMES - FAB110308A,Complete,Equip Platform - 1F -SUW-FAB110308,,,,,,,,,,2025-08-08 08:00,2025-08-08 17:00,2025-08-08 08:00,2025-08-08 17:00,2025-11-20 17:00,2025-11-20 17:00,2025-12-02 10:00,2025-12-02 10:00,0,8,100
FAB110308A-04,DOOR INSTALL - FAB110308A,Complete,Equip Platform - 1F -SUW-FAB110308,,,,,,,,,,2025-10-10 08:00,2025-10-10 17:00,2025-10-10 08:00,2025-10-10 17:00,2025-11-20 17:00,2025-11-20 17:00,2025-12-02 10:00,2025-12-02 10:00,0,8,100
FAB110308A-05,PAINT & PROTECT DOORS & FRAMES - FAB110308A,Complete,Equip Platform - 1F -SUW-FAB110308,,,,,,,,,,2025-10-14 08:00,2025-10-17 15:00,2025-10-14 08:00,2025-10-17 15:00,2025-11-20 17:00,2025-11-20 17:00,2025-12-02 10:00,2025-12-02 10:00,0,30,100
FAB110308A-06,INSTALL DOOR HARDWARE - FAB110308A,Not Started,Equip Platform - 1F -SUW-FAB110308,,,,,,,,,,2025-11-21 08:00,2025-11-26 15:00,,,2025-11-21 08:00,2025-11-26 15:00,2025-12-02 10:00,2025-12-05 17:00,30,30,0
FAB110308A-00,IMPACT - PATRIOT CLADDING HEADER FIX - FAB110308A,Complete,Equip Platform - 1F -SUW-FAB110308,,,,,,,,,,2025-06-13 08:00,2025-07-03 17:00,2025-06-13 08:00,2025-07-16 17:00,2025-11-20 17:00,2025-11-20 17:00,2025-12-02 10:00,2025-12-02 10:00,0,120,100
FAB110308A-07,DOOR FRAME PAINT & 1ST COAT - FAB110308A,Complete,Equip Platform - 1F -SUW-FAB110308,,,,,,,,,,2025-10-06 08:00,2025-10-08 17:00,2025-10-06 08:00,2025-10-08 17:00,2025-11-20 17:00,2025-11-20 17:00,2025-12-02 10:00,2025-12-02 10:00,0,24,100
FAB110308A-08,IMPACT - MATERIAL TAKEN BY THIRD PARTY - FAB110308A,Complete,Equip Platform - 1F -SUW-FAB110308,,,,,,,,,,2025-06-13 08:00,2025-07-03 17:00,2025-06-13 08:00,2025-08-05 17:00,2025-11-20 17:00,2025-11-20 17:00,2025-12-02 10:00,2025-12-02 10:00,0,120,100
FAB110308A-09,IMPACT DOOR FRAME REMEDIATION  - FAB110308A,Complete,Equip Platform - 1F -SUW-FAB110308,,,,,,,,,,2025-08-20 08:00,2025-08-20 17:00,2025-08-06 08:00,2025-08-06 17:00,2025-11-20 17:00,2025-11-20 17:00,2025-12-02 10:00,2025-12-02 10:00,0,8,100
ZX-9280,Complete Drywall & Inspect - MCC Rm-1F-SUW-FAB110314,Complete,MCC Rm - 1F -SUW-FAB110314,,,,,,,,,,2025-05-13 08:00,2025-05-15 17:00,2025-05-13 08:00,2025-05-15 16:00,2025-11-20 17:00,2025-11-20 17:00,2025-12-05 17:00,2025-12-05 17:00,0,24,100
ZX-9290,SECAI TOOK OVER FOR ACCELERATION - Fire Caulk & Inspect - MCC Rm-1F-SUW-FAB110314,Complete,MCC Rm - 1F -SUW-FAB110314,,,,,,,,,,2025-08-15 08:00,2025-08-18 17:00,2025-08-15 08:00,2025-08-15 17:00,2025-11-20 17:00,2025-11-20 17:00,2025-12-05 17:00,2025-12-05 17:00,0,16,100
ZX-9300,Complete Control Joint & Inspect - MCC Rm-1F-SUW-FAB110314,Complete,MCC Rm - 1F -SUW-FAB110314,,,,,,,,,,2025-10-13 08:00,2025-10-14 17:00,2025-10-13 08:00,2025-10-14 17:00,2025-11-20 17:00,2025-11-20 17:00,2025-12-05 17:00,2025-12-05 17:00,0,16,100
ZX-16590,IMPACT - CONTROL JOINT - MCC Rm-1F-SUW-FAB110314 - SECAI DENIAL OF ACCEL COST FOR BERG,Complete,MCC Rm - 1F -SUW-FAB110314,,,,,,,,,,2025-05-05 08:00,2025-05-07 17:00,2025-05-05 08:00,2025-06-10 16:00,2025-11-20 17:00,2025-11-20 17:00,2025-12-05 17:00,2025-12-05 17:00,0,24,100
FAB110314A-03,INSTALL DOOR FRAMES - FAB110314A,Complete,MCC Rm - 1F -SUW-FAB110314,,,,,,,,,,2025-06-20 13:00,2025-06-23 12:00,2025-04-14 00:00,2025-04-14 12:00,2025-11-20 17:00,2025-11-20 17:00,2025-11-25 10:00,2025-11-25 10:00,0,8,100
FAB110314A-04,INSTALL DOOR & HARDWARE - FAB110314A,Active,MCC Rm - 1F -SUW-FAB110314,,,,,,,,,,2025-09-17 08:00,2025-09-23 17:00,2025-09-17 08:00,,2025-11-21 08:00,2025-11-27 17:00,2025-11-25 10:00,2025-12-02 10:00,40,40,0
FAB110314A-05,PAINT & PROTECT DOORS & FRAMES - FAB110314A,Not Started,MCC Rm - 1F -SUW-FAB110314,,,,,,,,,,2026-02-16 08:00,2026-02-19 15:00,,,2026-02-16 08:00,2026-02-19 15:00,2025-12-02 10:00,2025-12-05 17:00,30,30,0
FAB110314B-01,IMPACT - INSTALL/REWORK DRYWALL FRAMING AROUND DOORS - FAB110314B,Complete,MCC Rm - 1F -SUW-FAB110314,,,,,,,,,,2025-09-16 08:00,2025-09-17 17:00,2025-09-16 08:00,2025-09-17 17:00,2025-11-20 17:00,2025-11-20 17:00,2025-11-25 10:00,2025-11-25 10:00,0,16,100
FAB110314B-02,SECAI ROUGH IN/SECURITY - FAB110314B,Complete,MCC Rm - 1F -SUW-FAB110314,,,,,,,,,,2025-09-17 08:00,2025-09-17 17:00,2025-09-17 08:00,2025-09-17 17:00,2025-11-20 17:00,2025-11-20 17:00,2025-11-25 10:00,2025-11-25 10:00,0,8,100
FAB110314B-03,INSTALL DOOR FRAMES - FAB110314B,Complete,MCC Rm - 1F -SUW-FAB110314,,,,,,,,,,2025-09-17 08:00,2025-09-17 17:00,2025-09-17 08:00,2025-09-17 17:00,2025-11-20 17:00,2025-11-20 17:00,2025-11-25 10:00,2025-11-25 10:00,0,8,100
FAB110314B-04,INSTALL DOOR & HARDWARE - FAB110314B,Active,MCC Rm - 1F -SUW-FAB110314,,,,,,,,,,2025-09-24 08:00,2025-09-30 17:00,2025-09-24 08:00,,2025-11-21 08:00,2025-11-27 17:00,2025-11-25 10:00,2025-12-02 10:00,40,40,0
FAB110314B-05,PAINT & PROTECT DOORS & FRAMES - FAB110314B,Not Started,MCC Rm - 1F -SUW-FAB110314,,,,,,,,,,2026-02-16 08:00,2026-02-19 15:00,,,2026-02-16 08:00,2026-02-19 15:00,2025-12-02 10:00,2025-12-05 17:00,30,30,0
ZX-18860,IMPACT - SECAI SCP CEILING - MCC Rm-1F-SUW-FAB110314,Complete,MCC Rm - 1F -SUW-FAB110314,,,,,,,,,,2025-07-01 08:00,2025-07-14 17:00,2025-07-01 08:00,2025-10-10 17:00,2025-11-20 17:00,2025-11-20 17:00,2025-12-05 17:00,2025-12-05 17:00,0,80,100
ZX-9580,Complete Drywall & Inspect - I/O Rm-1F-SUW-FAB110313,Complete,I/O Rm - 1F -SUW-FAB110313,,,,,,,,,,2025-08-14 08:00,2025-08-22 17:00,2025-08-14 08:00,2025-08-22 17:00,2025-11-20 17:00,2025-11-20 17:00,2025-11-25 10:00,2025-11-25 10:00,0,56,100
ZX-9590,SECAI TOOK OVER FOR ACCELERATION - Fire Caulk & Inspect - I/O Rm-1F-SUW-FAB110313,Complete,I/O Rm - 1F -SUW-FAB110313,,,,,,,,,,2025-08-15 08:00,2025-08-18 17:00,2025-08-15 08:00,2025-08-15 17:00,2025-11-20 17:00,2025-11-20 17:00,2025-12-05 17:00,2025-12-05 17:00,0,16,100
ZX-9600,Complete Control Joint & Inspect - I/O Rm-1F-SUW-FAB110313,Complete,I/O Rm - 1F -SUW-FAB110313,,,,,,,,,,2025-08-21 08:00,2025-08-22 17:00,2025-08-21 08:00,2025-08-22 17:00,2025-11-20 17:00,2025-11-20 17:00,2025-11-25 10:00,2025-11-25 10:00,0,16,100
FAB110313A-01,IMPACT - INSTALL/REWORK DRYWALL FRAMING AROUND DOORS - FAB110313A,Complete,I/O Rm - 1F -SUW-FAB110313,,,,,,,,,,2025-09-01 08:00,2025-09-01 17:00,2025-09-01 08:00,2025-09-01 17:00,2025-11-20 17:00,2025-11-20 17:00,2025-12-02 10:00,2025-12-02 10:00,0,8,100
FAB110313A-02,SECAI ROUGH IN/SECURITY - FAB110313A,Complete,I/O Rm - 1F -SUW-FAB110313,,,,,,,,,,2025-09-02 08:00,2025-09-02 17:00,2025-09-02 08:00,2025-09-02 17:00,2025-11-20 17:00,2025-11-20 17:00,2025-12-02 10:00,2025-12-02 10:00,0,8,100
FAB110313A-03,INSTALL DOOR FRAMES - FAB110313A,Complete,I/O Rm - 1F -SUW-FAB110313,,,,,,,,,,2025-09-03 08:00,2025-09-03 17:00,2025-09-03 08:00,2025-09-03 17:00,2025-11-20 17:00,2025-11-20 17:00,2025-12-02 10:00,2025-12-02 10:00,0,8,100
FAB110313A-04,DOOR INSTALL - FAB110313A,Complete,I/O Rm - 1F -SUW-FAB110313,,,,,,,,,,2025-09-17 08:00,2025-09-17 17:00,2025-09-17 08:00,2025-09-17 17:00,2025-11-20 17:00,2025-11-20 17:00,2025-12-02 10:00,2025-12-02 10:00,0,8,100
FAB110313A-05,PAINT & PROTECT DOORS & FRAMES - FAB110313A,Complete,I/O Rm - 1F -SUW-FAB110313,,,,,,,,,,2025-10-14 08:00,2025-10-17 15:00,2025-10-14 08:00,2025-10-17 15:00,2025-11-20 17:00,2025-11-20 17:00,2025-12-02 10:00,2025-12-02 10:00,0,30,100
FAB110313A-06,INSTALL DOOR HARDWARE - FAB110313A,Not Started,I/O Rm - 1F -SUW-FAB110313,,,,,,,,,,2025-11-21 08:00,2025-11-26 15:00,,,2025-11-21 08:00,2025-11-26 15:00,2025-12-02 10:00,2025-12-05 17:00,30,30,0
FAB110313B-03,INSTALL DOOR FRAMES - FAB110313B,Complete,I/O Rm - 1F -SUW-FAB110313,,,,,,,,,,2025-10-17 08:00,2025-10-17 17:00,2025-10-17 08:00,2025-10-17 17:00,2025-11-20 17:00,2025-11-20 17:00,2025-11-25 10:00,2025-11-25 10:00,0,8,100
FAB110313B-04,INSTALL DOOR & HARDWARE - FAB110313B,Active,I/O Rm - 1F -SUW-FAB110313,,,,,,,,,,2025-10-20 08:00,2025-10-24 17:00,2025-10-20 08:00,,2025-11-21 08:00,2025-11-27 17:00,2025-11-25 10:00,2025-12-02 10:00,40,40,0
FAB110313B-05,PAINT & PROTECT DOORS & FRAMES - FAB110313B,Not Started,I/O Rm - 1F -SUW-FAB110313,,,,,,,,,,2026-02-16 08:00,2026-02-19 15:00,,,2026-02-16 08:00,2026-02-19 15:00,2025-12-02 10:00,2025-12-05 17:00,30,30,0
ZX-9130,Complete Drywall & Inspect - IT/Security Rm-1F-SUW-FAB110311,Complete,IT/Security Rm - 1F -SUW-FAB110311,,,,,,,,,,2025-09-01 08:00,2025-09-09 17:00,2025-07-31 08:00,2025-08-01 17:00,2025-11-20 17:00,2025-11-20 17:00,2025-11-27 08:00,2025-11-27 08:00,0,56,100
ZX-9140,Complete Fire Caulk & Inspect - IT/Security Rm-1F-SUW-FAB110311,Complete,IT/Security Rm - 1F -SUW-FAB110311,,,,,,,,,,2025-09-10 08:00,2025-09-11 17:00,2025-08-04 08:00,2025-08-04 17:00,2025-11-20 17:00,2025-11-20 17:00,2025-12-05 17:00,2025-12-05 17:00,0,16,100
ZX-9150,Complete Control Joint & Inspect - IT/Security Rm-1F-SUW-FAB110311,Complete,IT/Security Rm - 1F -SUW-FAB110311,,,,,,,,,,2025-08-22 08:00,2025-08-25 17:00,2025-08-22 08:00,2025-08-25 08:00,2025-11-20 17:00,2025-11-20 17:00,2025-11-27 08:00,2025-11-27 08:00,0,16,100
TR-FAB110311A-03,INSTALL DOOR FRAMES - TR - FAB110311A,Complete,IT/Security Rm - 1F -SUW-FAB110311,,,,,,,,,,2025-07-15 13:00,2025-07-16 12:00,2024-05-22 00:00,2024-05-23 12:00,2025-11-20 17:00,2025-11-20 17:00,2025-11-27 08:00,2025-11-27 08:00,0,8,100
TR-FAB110311A-04,INSTALL DOOR & HARDWARE - TR - FAB110311A,Active,IT/Security Rm - 1F -SUW-FAB110311,,,,,,,,,,2025-09-03 08:00,2025-09-09 17:00,2025-09-03 08:00,,2025-11-21 08:00,2025-11-27 17:00,2025-11-27 08:00,2025-12-03 17:00,40,40,0
TR-FAB110311A-05,PAINT & PROTECT DOORS & FRAMES -  TR - FAB110311A,Not Started,IT/Security Rm - 1F -SUW-FAB110311,,,,,,,,,,2026-02-16 08:00,2026-02-17 17:00,,,2026-02-16 08:00,2026-02-17 17:00,2025-12-04 08:00,2025-12-05 17:00,16,16,0
ZX-9730,SECAI TURNOVER FOR ACELERATION - Drywall & Inspect - Exit Passageway 3-1F-FAB110305 BAKER/DESCOPE,Complete,Exit Passageway 3 - 1F -SUW-FAB110305,,,,,,,,,,2025-05-13 08:00,2025-05-13 08:00,2025-05-05 08:00,2025-05-05 08:00,2025-11-20 17:00,2025-11-20 17:00,2025-11-25 10:00,2025-11-25 10:00,0,0,100
ZX-9740,SECAI TURNOVER FOR ACELERATION - Fire Caulk & Inspect - Exit Passageway 3-1F-FAB110305 BAKER/DESCOPE,Complete,Exit Passageway 3 - 1F -SUW-FAB110305,,,,,,,,,,2025-05-15 08:00,2025-05-15 08:00,2025-05-05 08:00,2025-05-05 08:00,2025-11-20 17:00,2025-11-20 17:00,2025-12-05 17:00,2025-12-05 17:00,0,0,100
ZX-9750,SECAI TURNOVER FOR ACELERATION - Control Joint & Inspect & Inspect - Exit Passageway 3-1F-FAB110305 BAKER/DESCOPE,Complete,Exit Passageway 3 - 1F -SUW-FAB110305,,,,,,,,,,2025-05-15 08:00,2025-05-15 08:00,2025-05-05 08:00,2025-05-05 08:00,2025-11-20 17:00,2025-11-20 17:00,2025-11-25 10:00,2025-11-25 10:00,0,0,100
FAB110305B-02,INSTALL DOOR FRAMES BY SECAI - FAB110305B,Complete,Exit Passageway 3 - 1F -SUW-FAB110305,,,,,,,,,,2025-07-02 13:00,2025-07-03 12:00,2025-07-02 12:00,2025-07-02 12:00,2025-11-20 17:00,2025-11-20 17:00,2025-12-02 10:00,2025-12-02 10:00,0,8,100
FAB110305B-04,DOOR INSTALL - FAB110305B,Complete,Exit Passageway 3 - 1F -SUW-FAB110305,,,,,,,,,,2025-08-18 08:00,2025-08-18 17:00,2025-08-18 08:00,2025-08-18 17:00,2025-11-20 17:00,2025-11-20 17:00,2025-12-02 10:00,2025-12-02 10:00,0,8,100
FAB110305A-01,INSTALL/REWORK DRYWALL FRAMING AROUND DOORS - FAB110305A,Complete,Exit Passageway 3 - 1F -SUW-FAB110305,,,,,,,,,,2025-10-06 08:00,2025-10-14 17:00,2025-10-06 08:00,2025-10-14 17:00,2025-11-20 17:00,2025-11-20 17:00,2025-11-25 10:00,2025-11-25 10:00,0,56,100
FAB110305A-02,SECAI ROUGH IN/SECURITY - FAB110305A,Complete,Exit Passageway 3 - 1F -SUW-FAB110305,,,,,,,,,,2025-10-15 08:00,2025-10-15 17:00,2025-10-15 08:00,2025-10-15 17:00,2025-11-20 17:00,2025-11-20 17:00,2025-11-25 10:00,2025-11-25 10:00,0,8,100
FAB110305A-03,INSTALL DOOR FRAMES - FAB110305A,Complete,Exit Passageway 3 - 1F -SUW-FAB110305,,,,,,,,,,2025-10-15 08:00,2025-10-15 17:00,2025-10-15 08:00,2025-10-15 17:00,2025-11-20 17:00,2025-11-20 17:00,2025-11-25 10:00,2025-11-25 10:00,0,8,100
FAB110305A-04,INSTALL DOOR & HARDWARE - FAB110305A,Active,Exit Passageway 3 - 1F -SUW-FAB110305,,,,,,,,,,2025-10-30 08:00,2025-11-05 17:00,2025-10-30 08:00,,2025-11-21 08:00,2025-11-27 17:00,2025-11-25 10:00,2025-12-02 10:00,40,40,0
FAB110305A-05,PAINT & PROTECT DOORS & FRAMES - FAB110305A,Not Started,Exit Passageway 3 - 1F -SUW-FAB110305,,,,,,,,,,2026-02-16 08:00,2026-02-19 15:00,,,2026-02-16 08:00,2026-02-19 15:00,2025-12-02 10:00,2025-12-05 17:00,30,30,0
FAB110305B-00,IMPACT - PATRIOT CLADDING HEADER FIX - FAB110305B,Complete,Exit Passageway 3 - 1F -SUW-FAB110305,,,,,,,,,,2025-06-13 08:00,2025-07-03 17:00,2025-06-13 08:00,2025-07-01 12:00,2025-11-20 17:00,2025-11-20 17:00,2025-12-02 10:00,2025-12-02 10:00,0,120,100
FAB110305B-03,SECAI ROUGH IN/SECURITY - FAB110305B,Complete,Exit Passageway 3 - 1F -SUW-FAB110305,,,,,,,,,,2025-07-02 08:00,2025-07-02 17:00,2025-07-02 08:00,2025-07-02 17:00,2025-11-20 17:00,2025-11-20 17:00,2025-12-02 10:00,2025-12-02 10:00,0,8,100
FAB110305B-07,DOOR FRAME PAINT & 1ST COAT - FAB110305B,Complete,Exit Passageway 3 - 1F -SUW-FAB110305,,,,,,,,,,2025-07-25 08:00,2025-07-29 17:00,2025-07-25 08:00,2025-07-29 17:00,2025-11-20 17:00,2025-11-20 17:00,2025-12-02 10:00,2025-12-02 10:00,0,24,100
FAB110305B-05,PAINT & PROTECT DOORS & FRAMES - FAB110305B,Complete,Exit Passageway 3 - 1F -SUW-FAB110305,,,,,,,,,,2025-10-15 08:00,2025-10-20 17:00,2025-10-15 08:00,2025-10-20 17:00,2025-11-20 17:00,2025-11-20 17:00,2025-12-02 10:00,2025-12-02 10:00,0,32,100
FAB110305B-06,INSTALL DOOR HARDWARE - FAB110305B,Not Started,Exit Passageway 3 - 1F -SUW-FAB110305,,,,,,,,,,2025-11-21 08:00,2025-11-26 15:00,,,2025-11-21 08:00,2025-11-26 15:00,2025-12-02 10:00,2025-12-05 17:00,30,30,0
ZX-9100,SECAI TURNOVER FOR ACELERATION - Drywall & Inspect - Airlock 3-1F-FAB110304 BAKER/DESCOPE,Complete,Air Lock 3 - 1F -SUW-FAB110304,,,,,,,,,,2025-05-28 08:00,2025-06-06 17:00,2025-05-22 08:00,2025-05-22 16:00,2025-11-20 17:00,2025-11-20 17:00,2025-11-18 10:00,2025-11-18 10:00,0,64,100
ZX-9110,SECAI TURNOVER FOR ACELERATION - Fire Caulk & Inspect - Airlock 3-1F-FAB110304 BAKER/DESCOPE,Complete,Air Lock 3 - 1F -SUW-FAB110304,,,,,,,,,,2025-06-11 08:00,2025-06-12 17:00,2025-05-22 08:00,2025-05-22 16:00,2025-11-20 17:00,2025-11-20 17:00,2025-12-05 17:00,2025-12-05 17:00,0,16,100
ZX-9120,SECAI TURNOVER FOR ACELERATION - Control Joint & Inspect & Inspect - Airlock 3-1F-FAB110304 BAKER/DESCOPE,Complete,Air Lock 3 - 1F -SUW-FAB110304,,,,,,,,,,2025-06-09 08:00,2025-06-10 17:00,2025-05-22 08:00,2025-05-22 16:00,2025-11-20 17:00,2025-11-20 17:00,2025-11-18 10:00,2025-11-18 10:00,0,16,100
ZX-17400,IMPACT - SECAI DENIAL OF ACCEL COST FOR BERG - Drywall & Inspect - Airlock 3-1F-FAB110304,Complete,Air Lock 3 - 1F -SUW-FAB110304,,,,,,,,,,2025-05-05 08:00,2025-05-14 17:00,2025-05-05 08:00,2025-05-22 08:00,2025-11-20 17:00,2025-11-20 17:00,2025-11-18 10:00,2025-11-18 10:00,0,64,100
FAB110304A-03,INSTALL DOOR FRAME BY SECAI - FAB110304A HANDED OVER TO SECAI 07/18,Complete,Air Lock 3 - 1F -SUW-FAB110304,,,,,,,,,,2025-07-18 08:00,2025-07-31 17:00,2025-07-21 08:00,2025-10-14 08:00,2025-11-20 17:00,2025-11-20 17:00,2025-11-18 10:00,2025-11-18 10:00,0,80,100
FAB110304C-03,INSTALL DOOR FRAMES - FAB110304C,Complete,Air Lock 3 - 1F -SUW-FAB110304,,,,,,,,,,2025-06-20 13:00,2025-06-23 12:00,2025-04-11 00:00,2025-04-11 12:00,2025-11-20 17:00,2025-11-20 17:00,2025-11-18 10:00,2025-11-18 10:00,0,8,100
FAB110304D-03,INSTALL DOOR FRAMES - FAB110304D,Complete,Air Lock 3 - 1F -SUW-FAB110304,,,,,,,,,,2025-06-06 13:00,2025-06-09 12:00,2025-04-03 00:00,2025-04-03 12:00,2025-11-20 17:00,2025-11-20 17:00,2025-11-25 10:00,2025-11-25 10:00,0,8,100
FAB110304E-03,INSTALL DOOR FRAMES - FAB110304E,Complete,Air Lock 3 - 1F -SUW-FAB110304,,,,,,,,,,2025-06-06 13:00,2025-06-09 12:00,2025-04-10 00:00,2025-04-10 12:00,2025-11-20 17:00,2025-11-20 17:00,2025-11-25 10:00,2025-11-25 10:00,0,8,100
FAB110304A-04,INSTALL DOOR & HARDWARE - FAB110304A,Not Started,Air Lock 3 - 1F -SUW-FAB110304,,,,,,,,,,2025-11-28 08:00,2025-12-04 17:00,,,2025-11-28 08:00,2025-12-04 17:00,2025-11-25 10:00,2025-12-02 10:00,40,40,0
FAB110304B-03,INSTALL DOOR FRAMES - FAB110304B (REMOVED DURING DRYWALL REMEDIATION),Complete,Air Lock 3 - 1F -SUW-FAB110304,,,,,,,,,,2025-10-15 08:00,2025-10-15 17:00,2025-10-15 08:00,2025-10-15 17:00,2025-11-20 17:00,2025-11-20 17:00,2025-11-25 10:00,2025-11-25 10:00,0,8,100
FAB110304B-04,INSTALL DOOR & HARDWARE - FAB110304B,Active,Air Lock 3 - 1F -SUW-FAB110304,,,,,,,,,,2025-10-30 08:00,2025-11-05 17:00,2025-10-30 08:00,,2025-11-21 08:00,2025-11-27 17:00,2025-11-25 10:00,2025-12-02 10:00,40,40,0
FAB110304C-04,INSTALL DOOR & HARDWARE - FAB110304C,Not Started,Air Lock 3 - 1F -SUW-FAB110304,,,,,,,,,,2025-11-28 08:00,2025-12-04 17:00,,,2025-11-28 08:00,2025-12-04 17:00,2025-11-25 10:00,2025-12-02 10:00,40,40,0
FAB110304D-04,INSTALL DOOR & HARDWARE - FAB110304D,Active,Air Lock 3 - 1F -SUW-FAB110304,,,,,,,,,,2025-11-11 08:00,2025-11-17 17:00,2025-11-11 08:00,,2025-11-21 08:00,2025-11-27 17:00,2025-11-25 10:00,2025-12-02 10:00,40,40,0
FAB110304E-04,INSTALL DOOR & HARDWARE - FAB110304E,Not Started,Air Lock 3 - 1F -SUW-FAB110304,,,,,,,,,,2025-11-28 08:00,2025-12-04 17:00,,,2025-11-28 08:00,2025-12-04 17:00,2025-11-25 10:00,2025-12-02 10:00,40,40,0
FAB110304C-16,IMPACT - SECAI TRADE DAMAGED DOOR FRAMES - REWORK - REPAIR FRAME - FAB110304C,Active,Air Lock 3 - 1F -SUW-FAB110304,,,,,,,,,,2025-06-13 08:00,2025-06-17 17:00,2025-05-27 08:00,,2025-11-21 08:00,2025-11-27 17:00,2025-11-18 10:00,2025-11-25 10:00,40,24,0
FAB110304A-05,PAINT & PROTECT DOORS & FRAMES - FAB110304A,Not Started,Air Lock 3 - 1F -SUW-FAB110304,,,,,,,,,,2026-02-16 08:00,2026-02-19 15:00,,,2026-02-16 08:00,2026-02-19 15:00,2025-12-02 10:00,2025-12-05 17:00,30,30,0
FAB110304B-05,PAINT & PROTECT DOORS & FRAMES - FAB110304B,Not Started,Air Lock 3 - 1F -SUW-FAB110304,,,,,,,,,,2026-02-16 08:00,2026-02-19 15:00,,,2026-02-16 08:00,2026-02-19 15:00,2025-12-02 10:00,2025-12-05 17:00,30,30,0
FAB110304C-05,PAINT & PROTECT DOORS & FRAMES - FAB110304C,Not Started,Air Lock 3 - 1F -SUW-FAB110304,,,,,,,,,,2026-02-16 08:00,2026-02-19 15:00,,,2026-02-16 08:00,2026-02-19 15:00,2025-12-02 10:00,2025-12-05 17:00,30,30,0
FAB110304D-05,PAINT & PROTECT DOORS & FRAMES - FAB110304D,Not Started,Air Lock 3 - 1F -SUW-FAB110304,,,,,,,,,,2026-02-16 08:00,2026-02-19 15:00,,,2026-02-16 08:00,2026-02-19 15:00,2025-12-02 10:00,2025-12-05 17:00,30,30,0
FAB110304E-05,PAINT & PROTECT DOORS & FRAMES - FAB110304E,Not Started,Air Lock 3 - 1F -SUW-FAB110304,,,,,,,,,,2026-02-16 08:00,2026-02-19 15:00,,,2026-02-16 08:00,2026-02-19 15:00,2025-12-02 10:00,2025-12-05 17:00,30,30,0
ZX-9400,Complete Drywall & Inspect - Elevator Hall #03 - 1F-FAB110302,Complete,Elevator Hall 3 - 1F -SUW-FAB110302,,,,,,,,,,2025-05-28 08:00,2025-06-10 17:00,2025-05-28 08:00,2025-06-12 16:00,2025-11-20 17:00,2025-11-20 17:00,2025-11-18 10:00,2025-11-18 10:00,0,80,100
ZX-9410,Complete Fire Caulk & Inspect - Elevator Hall #03 - 1F-FAB110302,Complete,Elevator Hall 3 - 1F -SUW-FAB110302,,,,,,,,,,2025-06-27 08:00,2025-06-30 17:00,2025-06-12 08:00,2025-06-12 16:00,2025-11-20 17:00,2025-11-20 17:00,2025-12-05 17:00,2025-12-05 17:00,0,16,100
ZX-9420,Complete Control Joint & Inspect - Elevator Hall #03 - 1F-FAB110302,Complete,Elevator Hall 3 - 1F -SUW-FAB110302,,,,,,,,,,2025-06-25 08:00,2025-06-26 17:00,2025-06-10 08:00,2025-06-12 16:00,2025-11-20 17:00,2025-11-20 17:00,2025-11-18 10:00,2025-11-18 10:00,0,16,100
ZX-17410,IMPACT - SECAI DENIAL OF ACCEL COST FOR BERG Drywall & Inspect - Elevator Hall 3-1F-FAB110302,Complete,Elevator Hall 3 - 1F -SUW-FAB110302,,,,,,,,,,2025-05-05 08:00,2025-05-16 17:00,2025-05-05 08:00,2025-06-10 16:00,2025-11-20 17:00,2025-11-20 17:00,2025-11-18 10:00,2025-11-18 10:00,0,80,100
FAB110301C-03,SECAI - INSTALL DOOR FRAMES - FAB110301C,Complete,Elevator Hall 3 - 1F -SUW-FAB110302,,,,,,,,,,2025-06-20 08:00,2025-06-20 17:00,2025-05-08 08:00,2025-05-08 16:00,2025-11-20 17:00,2025-11-20 17:00,2025-11-25 10:00,2025-11-25 10:00,0,8,100
FAB110301C-02,SECAI ROUGH IN/SECURITY - FAB110301C,Complete,Elevator Hall 3 - 1F -SUW-FAB110302,,,,,,,,,,2025-07-01 08:00,2025-07-01 17:00,2025-05-08 08:00,2025-05-08 16:00,2025-11-20 17:00,2025-11-20 17:00,2025-11-26 13:00,2025-11-26 13:00,0,8,100
FAB110301C-04,DOOR INSTALL - FAB110301C,Complete,Elevator Hall 3 - 1F -SUW-FAB110302,,,,,,,,,,2025-05-22 08:00,2025-05-22 17:00,2025-05-22 08:00,2025-05-22 17:00,2025-11-20 17:00,2025-11-20 17:00,2025-11-26 13:00,2025-11-26 13:00,0,8,100
FAB110301C-05,PAINT & PROTECT DOORS & FRAMES - FAB110301C,Active,Elevator Hall 3 - 1F -SUW-FAB110302,,,,,,,,,,2025-10-14 08:00,2025-10-17 15:00,2025-10-14 08:00,,2025-11-21 08:00,2025-11-26 15:00,2025-11-26 13:00,2025-12-02 10:00,30,30,0
FAB110301C-06,INSTALL DOOR HARDWARE - FAB110301C,Not Started,Elevator Hall 3 - 1F -SUW-FAB110302,,,,,,,,,,2025-11-26 15:00,2025-12-02 12:00,,,2025-11-26 15:00,2025-12-02 12:00,2025-12-02 10:00,2025-12-05 17:00,30,30,0
ZX-18760,SECAI TURNOVER FOR ACELERATION - NORTH WALL Drywall & Inspect - Elevator Hall #03 - 1F-FAB110302 AXIOS/DESCOPE,Complete,Elevator Hall 3 - 1F -SUW-FAB110302,,,,,,,,,,2025-05-28 08:00,2025-06-10 17:00,2025-06-12 08:00,2025-06-12 16:00,2025-11-20 17:00,2025-11-20 17:00,2025-12-05 17:00,2025-12-05 17:00,0,80,100
FAB110301B-00,IOCC TO BE SUBMITTED (RFI 10986) - FAB110301B,Active,Elevator Hall 3 - 1F -SUW-FAB110302,,,,,,,,,,2025-07-03 08:00,2025-07-21 12:00,2025-07-03 07:00,,2025-11-21 08:00,2025-11-21 17:00,2025-11-10 08:00,2025-11-10 17:00,8,100,0
FAB110301B-01,IOCC APPROVAL - SECAI - FAB110301B,Not Started,Elevator Hall 3 - 1F -SUW-FAB110302,,,,,,,,,,2025-11-24 08:00,2025-12-04 17:00,,,2025-11-24 08:00,2025-12-04 17:00,2025-11-11 08:00,2025-11-21 17:00,72,72,0
FAB110301B-80,INSTALL/REWORK CLADDING AND HEADER - FAB110301B,Not Started,Elevator Hall 3 - 1F -SUW-FAB110302,,,,,,,,,,2025-12-05 08:00,2025-12-05 17:00,,,2025-12-05 08:00,2025-12-05 17:00,2025-11-24 08:00,2025-11-24 17:00,8,8,0
FAB110301B-04,INSTALL DOOR & HARDWARE - FAB110301B,Not Started,Elevator Hall 3 - 1F -SUW-FAB110302,,,,,,,,,,2025-12-10 08:00,2025-12-16 17:00,,,2025-12-10 08:00,2025-12-16 17:00,2025-11-27 08:00,2025-12-03 17:00,40,40,0
FAB110301B-50,IMPACT - ROOF DRAIN LINES CONFLICT WITH SPACE REQUIRED FOR OHC MOTOR AND HOUSING - FAB110301B,Active,Elevator Hall 3 - 1F -SUW-FAB110302,,,,,,,,,,2025-07-03 08:00,2025-07-29 15:00,2025-07-03 07:00,,2025-11-21 08:00,2025-11-27 17:00,2025-11-18 08:00,2025-11-24 17:00,40,150,0
FAB110301B-60,IMPACT - LVL 2 CONCRETE BEAM IN CONFLICT WITH SHOP DRAWINGS (14FT VS 14FT 1IN) - FAB110301B,Active,Elevator Hall 3 - 1F -SUW-FAB110302,,,,,,,,,,2025-07-03 08:00,2025-07-29 15:00,2025-07-03 07:00,,2025-11-21 08:00,2025-11-27 17:00,2025-11-17 08:00,2025-11-21 17:00,40,150,0
ZX-9700,Complete Drywall & Inspect - Elvator Mech Rm-1F-FAB110303,Complete,Elvator Mech Rm #3 - 1F -SUW-FAB110303,,,,,,,,,,2025-06-10 08:00,2025-06-18 17:00,2025-06-10 08:00,2025-06-13 16:00,2025-11-20 17:00,2025-11-20 17:00,2025-11-18 10:00,2025-11-18 10:00,0,56,100
ZX-9710,Complete Fire Caulk & Inspect - Elvator Mech Rm-1F-FAB110303,Complete,Elvator Mech Rm #3 - 1F -SUW-FAB110303,,,,,,,,,,2025-08-22 08:00,2025-09-01 17:00,2025-08-11 08:00,2025-08-14 17:00,2025-11-20 17:00,2025-11-20 17:00,2025-12-05 17:00,2025-12-05 17:00,0,56,100
ZX-9720,Complete Control Joint & Inspect - Elvator Mech Rm-1F-FAB110303,Complete,Elvator Mech Rm #3 - 1F -SUW-FAB110303,,,,,,,,,,2025-06-24 08:00,2025-06-25 17:00,2025-06-11 08:00,2025-06-13 16:00,2025-11-20 17:00,2025-11-20 17:00,2025-11-18 10:00,2025-11-18 10:00,0,16,100
ZX-16570,IMPACT - Complete Drywall & Inspect - Elvator Mech Rm-1F-FAB110303 - SECAI DENIAL OF ACCEL COST FOR BERG,Complete,Elvator Mech Rm #3 - 1F -SUW-FAB110303,,,,,,,,,,2025-05-05 08:00,2025-05-13 17:00,2025-05-05 08:00,2025-05-27 16:00,2025-11-20 17:00,2025-11-20 17:00,2025-11-18 10:00,2025-11-18 10:00,0,56,100
FAB110303A-03,INSTALL DOOR FRAMES - FAB110303A,Complete,Elvator Mech Rm #3 - 1F -SUW-FAB110303,,,,,,,,,,2024-10-24 08:00,2024-10-24 17:00,2024-10-24 08:00,2024-10-24 17:00,2025-11-20 17:00,2025-11-20 17:00,2025-11-25 10:00,2025-11-25 10:00,0,8,100
FAB110303A-04,INSTALL DOOR & HARDWARE - FAB110303A,Active,Elvator Mech Rm #3 - 1F -SUW-FAB110303,,,,,,,,,,2024-10-24 08:00,2024-10-30 17:00,2024-10-24 08:00,,2025-11-21 08:00,2025-11-27 17:00,2025-11-25 10:00,2025-12-02 10:00,40,40,0
FAB110303A-05,PAINT & PROTECT DOORS & FRAMES - FAB110303A,Not Started,Elvator Mech Rm #3 - 1F -SUW-FAB110303,,,,,,,,,,2026-02-16 08:00,2026-02-19 15:00,,,2026-02-16 08:00,2026-02-19 15:00,2025-12-02 10:00,2025-12-05 17:00,30,30,0
ZX-9040,Complete Drywall & Inspect - Elevator #03 - 1F-1FAB-EL3,Complete,Elevator 3 - 1F -SUW-FAB1-EL03,,,,,,,,,,2025-05-05 08:00,2025-05-13 17:00,2025-05-05 08:00,2025-05-13 16:00,2025-11-20 17:00,2025-11-20 17:00,2025-12-05 17:00,2025-12-05 17:00,0,56,100
ZX-9050,SECAI TURNOVER FOR ACELERATION - Complete Fire Caulk & Inspect - Elevator #03 - 1F-1FAB-EL3,Complete,Elevator 3 - 1F -SUW-FAB1-EL03,,,,,,,,,,2025-05-16 08:00,2025-05-19 17:00,2025-05-16 08:00,2025-05-16 17:00,2025-11-20 17:00,2025-11-20 17:00,2025-12-05 17:00,2025-12-05 17:00,0,16,100
ZX-9060,Complete Control Joint & Inspect - Elevator #03 - 1F-1FAB-EL3,Complete,Elevator 3 - 1F -SUW-FAB1-EL03,,,,,,,,,,2025-05-27 08:00,2025-05-28 17:00,2025-05-09 08:00,2025-05-15 16:00,2025-11-20 17:00,2025-11-20 17:00,2025-12-05 17:00,2025-12-05 17:00,0,16,100
ZX-17770,IMPACT - SECAI ELEVATOR TM TOOKOVER - Complete Fire Caulk & Inspect - Elevator 3-1F-1FAB-EL3,Complete,Elevator 3 - 1F -SUW-FAB1-EL03,,,,,,,,,,2025-05-27 08:00,2025-05-28 17:00,2025-05-16 08:00,2025-05-16 17:00,2025-11-20 17:00,2025-11-20 17:00,2025-12-05 17:00,2025-12-05 17:00,0,16,100
ZX-9340,Complete Drywall & Inspect - Duct Shaft - 1F-SUW-FAB110206,Complete,Duct Shaft - 1F -SUW-FAB110206,,,,,,,,,,2025-08-27 08:00,2025-09-11 17:00,2025-08-15 08:00,2025-10-27 08:00,2025-11-20 17:00,2025-11-20 17:00,2025-12-05 17:00,2025-12-05 17:00,0,96,100
ZX-9350,Complete Fire Caulk & Inspect - Duct Shaft - 1F-SUW-FAB110206,Complete,Duct Shaft - 1F -SUW-FAB110206,,,,,,,,,,2025-08-28 08:00,2025-08-29 17:00,2025-08-28 08:00,2025-08-29 17:00,2025-11-20 17:00,2025-11-20 17:00,2025-11-18 10:00,2025-11-18 10:00,0,16,100
FAB110206A-04,INSTALL DOOR & HARDWARE - FAB110206A,Active,Duct Shaft - 1F -SUW-FAB110206,,,,,,,,,,2025-10-03 08:00,2025-10-09 17:00,2025-10-03 08:00,,2025-11-21 08:00,2025-11-27 17:00,2025-11-25 10:00,2025-12-02 10:00,40,40,0
FAB110206A-05,PAINT & PROTECT DOORS & FRAMES - FAB110206A,Not Started,Duct Shaft - 1F -SUW-FAB110206,,,,,,,,,,2026-02-16 08:00,2026-02-19 15:00,,,2026-02-16 08:00,2026-02-19 15:00,2025-12-02 10:00,2025-12-05 17:00,30,30,0
FAB110206B-04,INSTALL DOOR & HARDWARE - FAB110206B,Active,Duct Shaft - 1F -SUW-FAB110206,,,,,,,,,,2025-08-18 08:00,2025-08-22 17:00,2025-08-18 08:00,,2025-11-21 08:00,2025-11-27 17:00,2025-11-25 10:00,2025-12-02 10:00,40,40,0
FAB110206B-05,PAINT & PROTECT DOORS & FRAMES - FAB110206B,Not Started,Duct Shaft - 1F -SUW-FAB110206,,,,,,,,,,2026-02-16 08:00,2026-02-19 15:00,,,2026-02-16 08:00,2026-02-19 15:00,2025-12-02 10:00,2025-12-05 17:00,30,30,0
FAB110206A-11,IMPACT - PROCUREMENT - Reordered doors (Wall Thickness and Door Swing Design Changes),Complete,Duct Shaft - 1F -SUW-FAB110206,,,,,,,,,,2025-07-10 08:00,2025-08-21 17:00,2025-06-09 08:00,2025-07-14 17:00,2025-11-20 17:00,2025-11-20 17:00,2025-11-25 10:00,2025-11-25 10:00,0,248,100
FAB110206B-11,IMPACT - PROCUREMENT - Reordered doors (Wall Thickness and Door Swing Design Changes),Complete,Duct Shaft - 1F -SUW-FAB110206,,,,,,,,,,2025-06-09 08:00,2025-07-21 17:00,2025-06-09 08:00,2025-07-14 17:00,2025-11-20 17:00,2025-11-20 17:00,2025-11-25 10:00,2025-11-25 10:00,0,248,100
FAB110122A-01,IMPACT - INSTALL/REWORK DRYWALL FRAMING AROUND DOORS - FAB110122A,Complete,Duct Shaft - 1F -SUW-FAB110206,,,,,,,,,,2025-07-25 08:00,2025-08-04 17:00,2025-07-08 13:00,2025-07-16 17:00,2025-11-20 17:00,2025-11-20 17:00,2025-11-25 10:00,2025-11-25 10:00,0,56,100
FAB110122A-02,SECAI ROUGH IN/SECURITY - FAB110122A,Complete,Duct Shaft - 1F -SUW-FAB110206,,,,,,,,,,2025-08-05 08:00,2025-08-05 17:00,2025-07-17 08:00,2025-07-18 17:00,2025-11-20 17:00,2025-11-20 17:00,2025-11-25 10:00,2025-11-25 10:00,0,8,100
FAB110122A-03,INSTALL DOOR FRAMES - FAB110122A,Complete,Duct Shaft - 1F -SUW-FAB110206,,,,,,,,,,2025-08-06 08:00,2025-08-06 17:00,2025-07-23 08:00,2025-07-23 17:00,2025-11-20 17:00,2025-11-20 17:00,2025-11-25 10:00,2025-11-25 10:00,0,8,100
FAB110122A-04,INSTALL DOOR & HARDWARE - FAB110122A,Active,Duct Shaft - 1F -SUW-FAB110206,,,,,,,,,,2025-07-25 08:00,2025-07-31 17:00,2025-07-25 08:00,,2025-11-21 08:00,2025-11-27 17:00,2025-11-25 10:00,2025-12-02 10:00,40,40,0
FAB110122A-05,PAINT & PROTECT DOORS & FRAMES - FAB110122A,Not Started,Duct Shaft - 1F -SUW-FAB110206,,,,,,,,,,2026-02-16 08:00,2026-02-19 15:00,,,2026-02-16 08:00,2026-02-19 15:00,2025-12-02 10:00,2025-12-05 17:00,30,30,0
ZX-9760,SECAI TURNOVER FOR ACELERATION - Drywall & Inspect - SOUTH PIT - BAKER/DESCOPE,Complete,SOUTH/NORTH PIT - 1F - SUW,,,,,,,,,,2025-05-07 13:00,2025-05-16 12:00,2025-05-07 12:00,2025-06-10 12:00,2025-11-20 17:00,2025-11-20 17:00,2025-12-05 17:00,2025-12-05 17:00,0,56,100
ZX-9770,SECAI TURNOVER FOR ACELERATION - Fire Caulk & Inspect - SOUTH PIT - BAKER/DESCOPE,Complete,SOUTH/NORTH PIT - 1F - SUW,,,,,,,,,,2025-07-23 13:00,2025-07-25 12:00,2025-06-10 12:00,2025-06-10 12:00,2025-11-20 17:00,2025-11-20 17:00,2025-12-05 17:00,2025-12-05 17:00,0,16,100
ZX-9780,SECAI TURNOVER FOR ACELERATION - Control Joint & Inspect & Inspect - SOUTH PIT - BAKER/DESCOPE,Complete,SOUTH/NORTH PIT - 1F - SUW,,,,,,,,,,2025-07-21 13:00,2025-07-23 12:00,2025-06-10 12:00,2025-06-10 12:00,2025-11-20 17:00,2025-11-20 17:00,2025-12-05 17:00,2025-12-05 17:00,0,16,100
ZX-17790,IMPACT - SECAI TO PROVIDE DESIGN - SOUTH PIT,Complete,SOUTH/NORTH PIT - 1F - SUW,,,,,,,,,,2025-06-10 08:00,2025-07-14 17:00,2025-06-10 08:00,2025-06-10 16:00,2025-11-20 17:00,2025-11-20 17:00,2025-12-05 17:00,2025-12-05 17:00,0,200,100
ZX-9880,SECAI TURNOVER FOR ACELERATION - Drywall & Inspect - Exit Passageway 2-1F-FAB110211 BAKER/DESCOPE,Complete,Exit Passageway 2 - 1F -FAB110211,,,,,,,,,,2025-05-19 13:00,2025-05-19 13:00,2025-05-06 12:00,2025-05-06 12:00,2025-11-20 17:00,2025-11-20 17:00,2025-11-25 08:00,2025-11-25 08:00,0,0,100
ZX-9890,SECAI TURNOVER FOR ACELERATION - Fire Caulk & Inspect - Exit Passageway 2-1F-FAB110211 BAKER/DESCOPE,Complete,Exit Passageway 2 - 1F -FAB110211,,,,,,,,,,2025-06-06 13:00,2025-06-06 13:00,2025-05-06 12:00,2025-05-06 12:00,2025-11-20 17:00,2025-11-20 17:00,2025-12-05 17:00,2025-12-05 17:00,0,0,100
ZX-9900,SECAI TURNOVER FOR ACELERATION - Control Joint & Inspect & Inspect - Exit Passageway 2-1F-FAB110211 BAKER/DESCOPE,Complete,Exit Passageway 2 - 1F -FAB110211,,,,,,,,,,2025-06-06 13:00,2025-06-06 13:00,2025-05-06 12:00,2025-05-06 12:00,2025-11-20 17:00,2025-11-20 17:00,2025-12-05 17:00,2025-12-05 17:00,0,0,100
FAB110211A-03,INSTALL DOOR FRAMES - FAB110211A,Complete,Exit Passageway 2 - 1F -FAB110211,,,,,,,,,,2025-06-24 08:00,2025-06-24 17:00,2025-06-18 08:00,2025-06-18 16:00,2025-11-20 17:00,2025-11-20 17:00,2025-12-02 10:00,2025-12-02 10:00,0,8,100
FAB110211A-04,DOOR INSTALL - FAB110211A,Complete,Exit Passageway 2 - 1F -FAB110211,,,,,,,,,,2025-08-05 08:00,2025-08-05 17:00,2025-08-05 08:00,2025-08-05 17:00,2025-11-20 17:00,2025-11-20 17:00,2025-12-02 10:00,2025-12-02 10:00,0,8,100
FAB110211B-03,INSTALL DOOR FRAME BY SECAI - FAB110211B HANDED OVER 06/27,Complete,Exit Passageway 2 - 1F -FAB110211,,,,,,,,,,2025-07-03 08:00,2025-07-16 17:00,2025-06-28 08:00,2025-09-19 17:00,2025-11-20 17:00,2025-11-20 17:00,2025-11-25 08:00,2025-11-25 08:00,0,80,100
FAB110211B-04,INSTALL DOOR & HARDWARE - FAB110211B,Active,Exit Passageway 2 - 1F -FAB110211,,,,,,,,,,2025-09-29 08:00,2025-10-03 17:00,2025-09-29 08:00,,2025-11-21 08:00,2025-11-27 17:00,2025-11-25 08:00,2025-12-01 17:00,40,40,0
FAB110211B-31,PROCUREMENT - RE-ORDER FRAME - FAB110211B,Complete,Exit Passageway 2 - 1F -FAB110211,,,,,,,,,,2025-06-20 08:00,2025-08-07 17:00,2025-06-20 08:00,2025-06-27 17:00,2025-11-20 17:00,2025-11-20 17:00,2025-11-25 08:00,2025-11-25 08:00,0,280,100
FAB110211A-05,PAINT & PROTECT DOORS & FRAMES - FAB110211A,Complete,Exit Passageway 2 - 1F -FAB110211,,,,,,,,,,2025-10-08 08:00,2025-10-13 17:00,2025-10-08 08:00,2025-10-12 17:00,2025-11-20 17:00,2025-11-20 17:00,2025-12-02 10:00,2025-12-02 10:00,0,32,100
FAB110211A-06,INSTALL DOOR HARDWARE - FAB110211A,Not Started,Exit Passageway 2 - 1F -FAB110211,,,,,,,,,,2025-11-21 08:00,2025-11-26 15:00,,,2025-11-21 08:00,2025-11-26 15:00,2025-12-02 10:00,2025-12-05 17:00,30,30,0
FAB110211A-07,DOOR FRAME PAINT & 1ST COAT - FAB110211A,Complete,Exit Passageway 2 - 1F -FAB110211,,,,,,,,,,2025-07-25 08:00,2025-07-30 17:00,2025-07-25 08:00,2025-07-29 17:00,2025-11-20 17:00,2025-11-20 17:00,2025-12-02 10:00,2025-12-02 10:00,0,32,100
FAB110211A-02,SECAI ROUGH IN FRAME - FAB110211A,Complete,Exit Passageway 2 - 1F -FAB110211,,,,,,,,,,2025-06-23 08:00,2025-06-23 17:00,2025-06-18 08:00,2025-06-18 16:00,2025-11-20 17:00,2025-11-20 17:00,2025-12-02 10:00,2025-12-02 10:00,0,8,100
FAB110211B-05,PAINT & PROTECT DOORS & FRAMES - FAB110211B,Not Started,Exit Passageway 2 - 1F -FAB110211,,,,,,,,,,2026-02-16 08:00,2026-02-19 17:00,,,2026-02-16 08:00,2026-02-19 17:00,2025-12-02 08:00,2025-12-05 17:00,32,32,0
FAB110211B-25,DOOR FRAME HANDED OVER TO SECAI ON 06/27 - FAB110211B,Complete,Exit Passageway 2 - 1F -FAB110211,,,,,,,,,,2025-06-27 08:00,2025-06-27 17:00,2025-06-27 08:00,2025-06-27 16:00,2025-11-20 17:00,2025-11-20 17:00,2025-11-25 08:00,2025-11-25 08:00,0,8,100
ZX-9910,Complete Drywall & Inspect - Elevator Mech Rm #02 - 1F-FAB110205,Complete,Elevator Mech. Rm 2 - 1F -SUW-FAB110205,,,,,,,,,,2025-08-11 08:00,2025-08-22 17:00,2025-08-11 08:00,2025-08-15 17:00,2025-11-20 17:00,2025-11-20 17:00,2025-11-18 10:00,2025-11-18 10:00,0,80,100
ZX-9920,Complete Fire Caulk & Inspect - Elevator Mech Rm #02 - 1F-FAB110205,Complete,Elevator Mech. Rm 2 - 1F -SUW-FAB110205,,,,,,,,,,2025-08-11 08:00,2025-08-13 17:00,2025-08-11 08:00,2025-08-13 17:00,2025-11-20 17:00,2025-11-20 17:00,2025-12-05 17:00,2025-12-05 17:00,0,24,100
ZX-9930,Complete Control Joint & Inspect - Elevator Mech Rm #02 - 1F-FAB110205,Complete,Elevator Mech. Rm 2 - 1F -SUW-FAB110205,,,,,,,,,,2025-09-02 08:00,2025-09-03 17:00,2025-08-16 08:00,2025-08-18 17:00,2025-11-20 17:00,2025-11-20 17:00,2025-11-18 10:00,2025-11-18 10:00,0,16,100
FAB110205A-03,INSTALL DOOR FRAMES - FAB110205A,Complete,Elevator Mech. Rm 2 - 1F -SUW-FAB110205,,,,,,,,,,2025-09-19 08:00,2025-09-19 17:00,2025-09-19 08:00,2025-09-19 17:00,2025-11-20 17:00,2025-11-20 17:00,2025-11-25 10:00,2025-11-25 10:00,0,8,100
FAB110205A-04,INSTALL DOOR & HARDWARE - FAB110205A,Active,Elevator Mech. Rm 2 - 1F -SUW-FAB110205,,,,,,,,,,2025-09-19 08:00,2025-09-25 17:00,2025-09-19 08:00,,2025-11-21 08:00,2025-11-27 17:00,2025-11-25 10:00,2025-12-02 10:00,40,40,0
FAB110205A-05,PAINT & PROTECT DOORS & FRAMES - FAB110205A,Not Started,Elevator Mech. Rm 2 - 1F -SUW-FAB110205,,,,,,,,,,2026-02-16 08:00,2026-02-19 15:00,,,2026-02-16 08:00,2026-02-19 15:00,2025-12-02 10:00,2025-12-05 17:00,30,30,0
FAB110205A-11,IMPACT - PROCUREMENT - NEW WALL THICKNESS ISSUE,Complete,Elevator Mech. Rm 2 - 1F -SUW-FAB110205,,,,,,,,,,2025-06-10 08:00,2025-09-04 12:00,2025-06-10 08:00,2025-09-15 17:00,2025-11-20 17:00,2025-11-20 17:00,2025-11-25 10:00,2025-11-25 10:00,0,500,100
ZX-17810,IMPACT - PENDING EJ DETAIL - Elevator Mech Rm #02 - 1F-FAB110205,Complete,Elevator Mech. Rm 2 - 1F -SUW-FAB110205,,,,,,,,,,2025-06-06 08:00,2025-06-10 17:00,2025-05-26 08:00,2025-06-13 16:00,2025-11-20 17:00,2025-11-20 17:00,2025-11-18 10:00,2025-11-18 10:00,0,24,100
ZX-18730,IMPACT - SECAI MEP STORAGE- Elevator Mech Rm #02 - 1F-FAB110205,Complete,Elevator Mech. Rm 2 - 1F -SUW-FAB110205,,,,,,,,,,2025-06-06 08:00,2025-06-19 17:00,2025-06-16 08:00,2025-08-01 17:00,2025-11-20 17:00,2025-11-20 17:00,2025-11-18 10:00,2025-11-18 10:00,0,80,100
ZX-10210,Complete - Drywall & Inspect - Fire Riser Rm - 1F-SUW-FAB110212 - Catchup inspection pending,Complete,Fire Riser Rm - 1F -SUW-FAB110212,,,,,,,,,,2025-08-19 08:00,2025-08-21 11:00,2025-08-12 08:00,2025-08-22 17:00,2025-11-20 17:00,2025-11-20 17:00,2025-11-25 10:00,2025-11-25 10:00,0,19,100
ZX-10220,Complete - Fire Caulk & Inspect - Fire Riser Rm - 1F-SUW-FAB110212,Complete,Fire Riser Rm - 1F -SUW-FAB110212,,,,,,,,,,2025-08-21 11:00,2025-08-25 11:00,2025-08-13 11:00,2025-08-15 11:00,2025-11-20 17:00,2025-11-20 17:00,2025-12-05 17:00,2025-12-05 17:00,0,16,100
ZX-10230,Complete - Control Joint & Inspect - Fire Riser Rm - 1F-SUW-FAB110212,Complete,Fire Riser Rm - 1F -SUW-FAB110212,,,,,,,,,,2025-08-21 08:00,2025-08-22 17:00,2025-08-21 08:00,2025-08-22 17:00,2025-11-20 17:00,2025-11-20 17:00,2025-11-25 10:00,2025-11-25 10:00,0,16,100
FAB110212A-03,INSTALL DOOR FRAMES - FAB110212A,Complete,Fire Riser Rm - 1F -SUW-FAB110212,,,,,,,,,,2025-06-20 08:00,2025-06-20 17:00,2025-06-20 08:00,2025-06-20 16:00,2025-11-20 17:00,2025-11-20 17:00,2025-12-02 10:00,2025-12-02 10:00,0,8,100
FAB110212A-04,DOOR INSTALL - FAB110212A,Complete,Fire Riser Rm - 1F -SUW-FAB110212,,,,,,,,,,2025-08-05 08:00,2025-08-05 17:00,2025-08-01 08:00,2025-08-01 17:00,2025-11-20 17:00,2025-11-20 17:00,2025-12-02 10:00,2025-12-02 10:00,0,8,100
FAB110212A-05,PAINT & PROTECT DOORS & FRAMES - FAB110212A,Complete,Fire Riser Rm - 1F -SUW-FAB110212,,,,,,,,,,2025-10-08 08:00,2025-10-13 17:00,2025-10-08 08:00,2025-10-12 17:00,2025-11-20 17:00,2025-11-20 17:00,2025-12-02 10:00,2025-12-02 10:00,0,32,100
FAB110212A-06,INSTALL DOOR HARDWARE - FAB110212A,Not Started,Fire Riser Rm - 1F -SUW-FAB110212,,,,,,,,,,2025-11-21 08:00,2025-11-26 15:00,,,2025-11-21 08:00,2025-11-26 15:00,2025-12-02 10:00,2025-12-05 17:00,30,30,0
FAB110212A-07,DOOR FRAME PAINT & 1ST COAT - FAB110212A,Complete,Fire Riser Rm - 1F -SUW-FAB110212,,,,,,,,,,2025-07-23 08:00,2025-07-28 17:00,2025-07-23 08:00,2025-07-28 17:00,2025-11-20 17:00,2025-11-20 17:00,2025-12-02 10:00,2025-12-02 10:00,0,32,100
ZX-10510,Complete Drywall & Inspect - Toilet Corridor-1F-SUW-FAB110213,Complete,Toilet Corridor - 1F -SUW-FAB110213,,,,,,,,,,2025-09-22 08:00,2025-10-03 17:00,2025-07-18 08:00,2025-07-24 11:00,2025-11-20 17:00,2025-11-20 17:00,2025-11-25 10:00,2025-11-25 10:00,0,80,100
ZX-10530,Complete Control Joint & Inspect - Toilet Corridor-1F-SUW-FAB110213,Complete,Toilet Corridor - 1F -SUW-FAB110213,,,,,,,,,,2025-10-06 08:00,2025-10-07 17:00,2025-07-30 08:00,2025-08-01 17:00,2025-11-20 17:00,2025-11-20 17:00,2025-11-25 10:00,2025-11-25 10:00,0,16,100
FAB110213A-00,IMPACT - PATRIOT CLADDING HEADER FIX - FAB110213A,Complete,Toilet Corridor - 1F -SUW-FAB110213,,,,,,,,,,2025-06-13 08:00,2025-06-19 15:09,2025-06-09 08:00,2025-06-12 14:09,2025-11-20 17:00,2025-11-20 17:00,2025-12-02 10:00,2025-12-02 10:00,0,38.15,100
FAB110213A-03,INSTALL DOOR FRAMES - FAB110213A,Complete,Toilet Corridor - 1F -SUW-FAB110213,,,,,,,,,,2025-06-26 08:00,2025-06-26 17:00,2025-06-13 08:00,2025-06-13 16:00,2025-11-20 17:00,2025-11-20 17:00,2025-12-02 10:00,2025-12-02 10:00,0,8,100
FAB110213A-04,DOOR INSTALL - FAB110213A,Complete,Toilet Corridor - 1F -SUW-FAB110213,,,,,,,,,,2025-08-06 08:00,2025-08-06 17:00,2025-08-05 08:00,2025-08-05 17:00,2025-11-20 17:00,2025-11-20 17:00,2025-12-02 10:00,2025-12-02 10:00,0,8,100
FAB110213A-05,PAINT & PROTECT DOORS & FRAMES - FAB110213A,Complete,Toilet Corridor - 1F -SUW-FAB110213,,,,,,,,,,2025-10-14 08:00,2025-10-15 17:00,2025-10-14 08:00,2025-10-16 17:00,2025-11-20 17:00,2025-11-20 17:00,2025-12-02 10:00,2025-12-02 10:00,0,16,100
FAB110213A-06,INSTALL DOOR HARDWARE - FAB110213A,Not Started,Toilet Corridor - 1F -SUW-FAB110213,,,,,,,,,,2025-11-21 08:00,2025-11-26 15:00,,,2025-11-21 08:00,2025-11-26 15:00,2025-12-02 10:00,2025-12-05 17:00,30,30,0
FAB110213A-07,DOOR FRAME PAINT & 1ST COAT - FAB110213A,Complete,Toilet Corridor - 1F -SUW-FAB110213,,,,,,,,,,2025-07-23 08:00,2025-07-28 17:00,2025-07-23 08:00,2025-07-29 17:00,2025-11-20 17:00,2025-11-20 17:00,2025-12-02 10:00,2025-12-02 10:00,0,32,100
ZX-9850,Complete Drywall & Inspect - Toilet (M) 2-1F-SUW-FAB110202,Complete,Toilet (M) 2 - 1F -SUW-FAB110202,,,,,,,,,,2025-08-04 08:00,2025-08-15 17:00,2025-07-07 08:00,2025-08-05 17:00,2025-11-20 17:00,2025-11-20 17:00,2025-11-25 10:00,2025-11-25 10:00,0,80,100
FAB110202B-01,IMPACT - INSTALL/REWORK DRYWALL FRAMING AROUND DOORS - FAB110202B,Complete,Toilet (M) 2 - 1F -SUW-FAB110202,,,,,,,,,,2025-08-11 08:00,2025-08-19 17:00,2025-08-11 08:00,2025-08-19 17:00,2025-11-20 17:00,2025-11-20 17:00,2025-11-27 08:00,2025-11-27 08:00,0,56,100
FAB110202B-02,SECAI ROUGH IN/SECURITY - FAB110202B,Complete,Toilet (M) 2 - 1F -SUW-FAB110202,,,,,,,,,,2025-08-19 08:00,2025-08-19 17:00,2025-08-19 08:00,2025-08-19 17:00,2025-11-20 17:00,2025-11-20 17:00,2025-11-27 08:00,2025-11-27 08:00,0,8,100
FAB110202B-03,INSTALL DOOR FRAMES - FAB110202B,Complete,Toilet (M) 2 - 1F -SUW-FAB110202,,,,,,,,,,2025-08-19 08:00,2025-08-19 17:00,2025-08-19 08:00,2025-08-19 17:00,2025-11-20 17:00,2025-11-20 17:00,2025-11-27 08:00,2025-11-27 08:00,0,8,100
FAB110202B-04,INSTALL DOOR & HARDWARE - FAB110202B,Active,Toilet (M) 2 - 1F -SUW-FAB110202,,,,,,,,,,2025-10-13 08:00,2025-10-17 17:00,2025-10-13 08:00,,2025-11-21 08:00,2025-11-27 17:00,2025-11-27 08:00,2025-12-03 17:00,40,40,0
FAB110202B-05,PAINT & PROTECT DOORS & FRAMES - FAB110202B,Not Started,Toilet (M) 2 - 1F -SUW-FAB110202,,,,,,,,,,2026-02-16 08:00,2026-02-17 17:00,,,2026-02-16 08:00,2026-02-17 17:00,2025-12-04 08:00,2025-12-05 17:00,16,16,0
FAB110202B-11,IMPACT - SECAI - MEP TRADES WORKING IN RESTROOMS,Complete,Toilet (M) 2 - 1F -SUW-FAB110202,,,,,,,,,,2025-06-27 08:00,2025-07-07 10:00,2025-06-27 08:00,2025-07-22 17:00,2025-11-20 17:00,2025-11-20 17:00,2025-11-27 08:00,2025-11-27 08:00,0,50,100
ZX-17910,IMPACT - MEP - Complete Drywall & Inspect - Toilet (M) 2-1F-SUW-FAB110202,Complete,Toilet (M) 2 - 1F -SUW-FAB110202,,,,,,,,,,2025-06-20 08:00,2025-07-03 17:00,2025-05-06 08:00,2025-05-28 16:00,2025-11-20 17:00,2025-11-20 17:00,2025-11-25 10:00,2025-11-25 10:00,0,80,100
ZX-18980,IMPACT - SECAI REMOVED DRYWALL - Toilet (M) 2-1F-SUW-FAB110202,Complete,Toilet (M) 2 - 1F -SUW-FAB110202,,,,,,,,,,2025-06-27 08:00,2025-07-17 17:00,2025-06-27 08:00,2025-07-22 17:00,2025-11-20 17:00,2025-11-20 17:00,2025-11-25 10:00,2025-11-25 10:00,0,120,100
ZX-10000,Complete Drywall & Inspect - Toilet (W) 2-1F-SUW-FAB110203 NON RATED WALLS,Complete,Toilet (W) 2 - 1F -SUW-FAB110203,,,,,,,,,,2025-06-10 08:00,2025-06-23 17:00,2025-06-10 08:00,2025-06-19 16:00,2025-11-20 17:00,2025-11-20 17:00,2025-11-25 10:00,2025-11-25 10:00,0,80,100
ZX-10020,Complete Control Joint & Inspect - Toilet (W) 2-1F-SUW-FAB110203,Complete,Toilet (W) 2 - 1F -SUW-FAB110203,,,,,,,,,,2025-06-20 08:00,2025-06-23 17:00,2025-06-18 08:00,2025-06-20 16:00,2025-11-20 17:00,2025-11-20 17:00,2025-11-25 10:00,2025-11-25 10:00,0,16,100
FAB110203A-01,IMPACT - INSTALL/REWORK DRYWALL FRAMING AROUND DOORS - FAB110203A,Complete,Toilet (W) 2 - 1F -SUW-FAB110203,,,,,,,,,,2025-08-11 08:00,2025-08-19 17:00,2025-08-11 08:00,2025-08-19 17:00,2025-11-20 17:00,2025-11-20 17:00,2025-11-25 10:00,2025-11-25 10:00,0,56,100
FAB110203A-02,SECAI ROUGH IN/SECURITY - FAB110203A,Complete,Toilet (W) 2 - 1F -SUW-FAB110203,,,,,,,,,,2025-08-19 08:00,2025-08-19 17:00,2025-08-19 08:00,2025-08-19 17:00,2025-11-20 17:00,2025-11-20 17:00,2025-11-25 10:00,2025-11-25 10:00,0,8,100
FAB110203A-03,INSTALL DOOR FRAMES - FAB110203A,Complete,Toilet (W) 2 - 1F -SUW-FAB110203,,,,,,,,,,2025-08-19 08:00,2025-08-19 17:00,2025-08-19 08:00,2025-08-19 17:00,2025-11-20 17:00,2025-11-20 17:00,2025-11-25 10:00,2025-11-25 10:00,0,8,100
FAB110203A-04,INSTALL DOOR & HARDWARE - FAB110203A,Not Started,Toilet (W) 2 - 1F -SUW-FAB110203,,,,,,,,,,2025-11-28 08:00,2025-12-04 17:00,,,2025-11-28 08:00,2025-12-04 17:00,2025-11-25 10:00,2025-12-02 10:00,40,40,0
FAB110203A-05,PAINT & PROTECT DOORS & FRAMES - FAB110203A,Not Started,Toilet (W) 2 - 1F -SUW-FAB110203,,,,,,,,,,2026-02-16 08:00,2026-02-19 15:00,,,2026-02-16 08:00,2026-02-19 15:00,2025-12-02 10:00,2025-12-05 17:00,30,30,0
FAB110203A-11,IMPACT - SECAI - MEP TRADES WORKING IN RESTROOMS,Complete,Toilet (W) 2 - 1F -SUW-FAB110203,,,,,,,,,,2025-06-20 08:00,2025-06-30 10:00,2025-06-13 08:00,2025-06-16 10:00,2025-11-20 17:00,2025-11-20 17:00,2025-11-25 10:00,2025-11-25 10:00,0,50,100
ZX-17900,IMPACT - MEP - Complete Drywall & Inspect - Toilet (W) 2-1F-SUW-FAB110203,Complete,Toilet (W) 2 - 1F -SUW-FAB110203,,,,,,,,,,2025-05-30 08:00,2025-06-12 17:00,2025-05-06 08:00,2025-05-23 16:00,2025-11-20 17:00,2025-11-20 17:00,2025-11-25 10:00,2025-11-25 10:00,0,80,100
ZX-10300,Complete Drywall & Inspect - Maint Rm 2-1F-SUW-FAB110201,Complete,Maint Rm 2 - 1F -SUW-FAB110201,,,,,,,,,,2025-10-06 08:00,2025-10-07 17:00,2025-10-06 08:00,2025-10-07 17:00,2025-11-20 17:00,2025-11-20 17:00,2025-11-25 10:00,2025-11-25 10:00,0,16,100
ZX-10600,Complete Drywall & Inspect - Gas Purifier Analyzer Rm-1F-SUW-FAB110207,Complete,Gas Purifier Analyzer Rm - 1F -SUW-FAB110207,,,,,,,,,,2025-07-09 08:00,2025-07-22 17:00,2025-07-03 08:00,2025-07-07 16:00,2025-11-20 17:00,2025-11-20 17:00,2025-11-25 08:00,2025-11-25 08:00,0,80,100
ZX-10620,Complete Control Joint & Inspect - Gas Purifier Analyzer Rm-1F-SUW-FAB110207 NON RATED,Complete,Gas Purifier Analyzer Rm - 1F -SUW-FAB110207,,,,,,,,,,2025-07-18 08:00,2025-07-21 17:00,2025-07-11 08:00,2025-08-12 17:00,2025-11-20 17:00,2025-11-20 17:00,2025-11-25 08:00,2025-11-25 08:00,0,16,100
FAB110207A-01,IMPACT - INSTALL/REWORK DRYWALL FRAMING AROUND DOORS - FAB110207A,Complete,Gas Purifier Analyzer Rm - 1F -SUW-FAB110207,,,,,,,,,,2025-08-29 08:00,2025-09-01 17:00,2025-08-29 08:00,2025-09-01 17:00,2025-11-20 17:00,2025-11-20 17:00,2025-11-25 10:00,2025-11-25 10:00,0,16,100
FAB110207A-02,SECAI ROUGH IN/SECURITY - FAB110207A,Complete,Gas Purifier Analyzer Rm - 1F -SUW-FAB110207,,,,,,,,,,2025-09-03 08:00,2025-09-03 17:00,2025-09-02 08:00,2025-09-02 17:00,2025-11-20 17:00,2025-11-20 17:00,2025-11-25 10:00,2025-11-25 10:00,0,8,100
FAB110207A-03,INSTALL DOOR FRAMES - FAB110207A,Complete,Gas Purifier Analyzer Rm - 1F -SUW-FAB110207,,,,,,,,,,2025-09-02 08:00,2025-09-02 17:00,2025-09-02 08:00,2025-09-02 17:00,2025-11-20 17:00,2025-11-20 17:00,2025-11-25 10:00,2025-11-25 10:00,0,8,100
FAB110207A-04,INSTALL DOOR & HARDWARE - FAB110207A,Active,Gas Purifier Analyzer Rm - 1F -SUW-FAB110207,,,,,,,,,,2025-09-03 08:00,2025-09-09 17:00,2025-09-03 08:00,,2025-11-21 08:00,2025-11-27 17:00,2025-11-25 10:00,2025-12-02 10:00,40,40,0
FAB110207A-05,PAINT & PROTECT DOORS & FRAMES - FAB110207A,Not Started,Gas Purifier Analyzer Rm - 1F -SUW-FAB110207,,,,,,,,,,2026-02-16 08:00,2026-02-19 15:00,,,2026-02-16 08:00,2026-02-19 15:00,2025-12-02 10:00,2025-12-05 17:00,30,30,0
FAB110207B-01,IMPACT - INSTALL/REWORK DRYWALL FRAMING AROUND DOORS - FAB110207B,Complete,Gas Purifier Analyzer Rm - 1F -SUW-FAB110207,,,,,,,,,,2025-08-29 08:00,2025-09-01 17:00,2025-08-29 08:00,2025-09-01 17:00,2025-11-20 17:00,2025-11-20 17:00,2025-11-25 10:00,2025-11-25 10:00,0,16,100
FAB110207B-02,SECAI ROUGH IN/SECURITY - FAB110207B,Complete,Gas Purifier Analyzer Rm - 1F -SUW-FAB110207,,,,,,,,,,2025-09-02 08:00,2025-09-02 17:00,2025-09-02 08:00,2025-09-02 17:00,2025-11-20 17:00,2025-11-20 17:00,2025-11-25 10:00,2025-11-25 10:00,0,8,100
FAB110207B-03,INSTALL DOOR FRAMES - FAB110207B,Complete,Gas Purifier Analyzer Rm - 1F -SUW-FAB110207,,,,,,,,,,2025-09-02 08:00,2025-09-02 17:00,2025-09-02 08:00,2025-09-02 17:00,2025-11-20 17:00,2025-11-20 17:00,2025-11-25 10:00,2025-11-25 10:00,0,8,100
FAB110207B-04,INSTALL DOOR & HARDWARE - FAB110207B,Active,Gas Purifier Analyzer Rm - 1F -SUW-FAB110207,,,,,,,,,,2025-09-03 08:00,2025-09-09 17:00,2025-09-03 08:00,,2025-11-21 08:00,2025-11-27 17:00,2025-11-25 10:00,2025-12-02 10:00,40,40,0
FAB110207B-05,PAINT & PROTECT DOORS & FRAMES - FAB110207B,Not Started,Gas Purifier Analyzer Rm - 1F -SUW-FAB110207,,,,,,,,,,2026-02-16 08:00,2026-02-19 15:00,,,2026-02-16 08:00,2026-02-19 15:00,2025-12-02 10:00,2025-12-05 17:00,30,30,0
FAB110207C-03,INSTALL DOOR FRAMES - FAB110207C,Complete,Gas Purifier Analyzer Rm - 1F -SUW-FAB110207,,,,,,,,,,2025-09-02 08:00,2025-09-02 17:00,2025-09-02 08:00,2025-09-02 17:00,2025-11-20 17:00,2025-11-20 17:00,2025-11-25 10:00,2025-11-25 10:00,0,8,100
FAB110207C-02,SECAI ROUGH IN/SECURITY - FAB110207C,Complete,Gas Purifier Analyzer Rm - 1F -SUW-FAB110207,,,,,,,,,,2025-09-02 08:00,2025-09-02 17:00,2025-09-02 08:00,2025-09-02 17:00,2025-11-20 17:00,2025-11-20 17:00,2025-11-25 10:00,2025-11-25 10:00,0,8,100
FAB110207C-04,INSTALL DOOR & HARDWARE - FAB110207C,Active,Gas Purifier Analyzer Rm - 1F -SUW-FAB110207,,,,,,,,,,2025-09-03 08:00,2025-09-09 17:00,2025-09-03 08:00,,2025-11-21 08:00,2025-11-27 17:00,2025-11-25 10:00,2025-12-02 10:00,40,40,0
FAB110207C-05,PAINT & PROTECT DOORS & FRAMES - FAB110207C,Not Started,Gas Purifier Analyzer Rm - 1F -SUW-FAB110207,,,,,,,,,,2026-02-16 08:00,2026-02-19 15:00,,,2026-02-16 08:00,2026-02-19 15:00,2025-12-02 10:00,2025-12-05 17:00,30,30,0
ZX-9820,Complete Drywall & Inspect - Gas Purifier Rm-1F-SUW-FAB110204 NON RATED WALLS,Complete,Gas Purifier Rm - 1F -SUW-FAB110204,,,,,,,,,,2025-05-07 13:00,2025-05-21 12:00,2025-05-07 12:00,2025-05-14 16:00,2025-11-20 17:00,2025-11-20 17:00,2025-11-21 08:00,2025-11-21 08:00,0,80,100
ZX-9840,Complete Control Joint & Inspect - Gas Purifier Rm-1F-SUW-FAB110204,Complete,Gas Purifier Rm - 1F -SUW-FAB110204,,,,,,,,,,2025-06-20 08:00,2025-06-24 17:00,2025-06-20 08:00,2025-08-08 17:00,2025-11-20 17:00,2025-11-20 17:00,2025-11-25 08:00,2025-11-25 08:00,0,24,100
ZX-17480,IMPACT - SECAI ACCESS - Control Joint & Inspect & Inspect - Gas Purifier Rm-1F-SUW-FAB110204,Complete,Gas Purifier Rm - 1F -SUW-FAB110204,,,,,,,,,,2025-06-09 08:00,2025-06-30 17:00,2025-05-16 08:00,2025-06-19 16:00,2025-11-20 17:00,2025-11-20 17:00,2025-11-25 08:00,2025-11-25 08:00,0,128,100
FAB110204A-03,INSTALL DOOR FRAMES - FAB110204A,Complete,Gas Purifier Rm - 1F -SUW-FAB110204,,,,,,,,,,2025-07-11 08:00,2025-07-11 17:00,2025-07-11 08:00,2025-07-11 17:00,2025-11-20 17:00,2025-11-20 17:00,2025-12-02 10:00,2025-12-02 10:00,0,8,100
FAB110204A-04,INSTALL DOOR & HARDWARE - FAB110204A,Active,Gas Purifier Rm - 1F -SUW-FAB110204,,,,,,,,,,2025-07-11 08:00,2025-07-17 17:00,2025-07-11 08:00,,2025-11-21 08:00,2025-11-27 17:00,2025-11-25 10:00,2025-12-02 10:00,40,40,0
FAB110204A-05,PAINT & PROTECT DOORS & FRAMES - FAB110204A,Not Started,Gas Purifier Rm - 1F -SUW-FAB110204,,,,,,,,,,2026-02-16 08:00,2026-02-19 15:00,,,2026-02-16 08:00,2026-02-19 15:00,2025-12-02 10:00,2025-12-05 17:00,30,30,0
FAB110204B-03,INSTALL DOOR FRAMES - FAB110204B - P1,Complete,Gas Purifier Rm - 1F -SUW-FAB110204,,,,,,,,,,2025-07-01 08:00,2025-07-01 17:00,2025-07-01 08:00,2025-07-01 16:00,2025-11-20 17:00,2025-11-20 17:00,2025-11-21 08:00,2025-11-21 08:00,0,8,100
FAB110204B-04,DOOR INSTALL - FAB110204B - P1,Complete,Gas Purifier Rm - 1F -SUW-FAB110204,,,,,,,,,,2025-09-03 08:00,2025-09-03 17:00,2025-09-03 08:00,2025-09-03 17:00,2025-11-20 17:00,2025-11-20 17:00,2025-12-02 10:00,2025-12-02 10:00,0,8,100
FAB110204B-05,PAINT & PROTECT DOORS & FRAMES - FAB110204B,Complete,Gas Purifier Rm - 1F -SUW-FAB110204,,,,,,,,,,2025-10-15 08:00,2025-10-20 15:00,2025-10-15 08:00,2025-10-20 15:00,2025-11-20 17:00,2025-11-20 17:00,2025-12-02 10:00,2025-12-02 10:00,0,30,100
FAB110204B-06,INSTALL DOOR HARDWARE - FAB110204B,Not Started,Gas Purifier Rm - 1F -SUW-FAB110204,,,,,,,,,,2025-11-21 08:00,2025-11-26 15:00,,,2025-11-21 08:00,2025-11-26 15:00,2025-12-02 10:00,2025-12-05 17:00,30,30,0
FAB110204C-03,INSTALL DOOR FRAMES - FAB110204C,Complete,Gas Purifier Rm - 1F -SUW-FAB110204,,,,,,,,,,2025-08-08 08:00,2025-08-08 17:00,2025-08-08 08:00,2025-08-08 17:00,2025-11-20 17:00,2025-11-20 17:00,2025-11-25 10:00,2025-11-25 10:00,0,8,100
FAB110204C-04,INSTALL DOOR & HARDWARE - FAB110204C,Active,Gas Purifier Rm - 1F -SUW-FAB110204,,,,,,,,,,2025-09-02 08:00,2025-09-08 17:00,2025-09-02 08:00,,2025-11-21 08:00,2025-11-27 17:00,2025-11-25 10:00,2025-12-02 10:00,40,40,0
FAB110204C-05,PAINT & PROTECT DOORS & FRAMES - FAB110204C,Not Started,Gas Purifier Rm - 1F -SUW-FAB110204,,,,,,,,,,2026-02-16 08:00,2026-02-19 15:00,,,2026-02-16 08:00,2026-02-19 15:00,2025-12-02 10:00,2025-12-05 17:00,30,30,0
FAB110204C-00,IMPACT - PATRIOT CLADDING HEADER FIX - FAB110204C,Complete,Gas Purifier Rm - 1F -SUW-FAB110204,,,,,,,,,,2025-06-13 08:00,2025-07-03 17:00,2025-06-13 08:00,2025-06-30 16:00,2025-11-20 17:00,2025-11-20 17:00,2025-11-25 10:00,2025-11-25 10:00,0,120,100
FAB110204B-02,SECAI ROUGH IN/SECURITY - FAB110204B - P1,Complete,Gas Purifier Rm - 1F -SUW-FAB110204,,,,,,,,,,2025-06-27 08:00,2025-06-27 17:00,2025-06-27 08:00,2025-06-27 16:00,2025-11-20 17:00,2025-11-20 17:00,2025-12-05 17:00,2025-12-05 17:00,0,8,100
FAB110204B-07,PREP DOOR - FAB110204B,Complete,Gas Purifier Rm - 1F -SUW-FAB110204,,,,,,,,,,2025-06-18 08:00,2025-06-24 17:00,2025-06-11 08:00,2025-06-18 16:00,2025-11-20 17:00,2025-11-20 17:00,2025-12-05 17:00,2025-12-05 17:00,0,40,100
FAB110204C-02,SECAI ROUGH IN/SECURITY - FAB110204C,Complete,Gas Purifier Rm - 1F -SUW-FAB110204,,,,,,,,,,2025-08-08 08:00,2025-08-08 17:00,2025-08-08 08:00,2025-08-08 17:00,2025-11-20 17:00,2025-11-20 17:00,2025-11-25 10:00,2025-11-25 10:00,0,8,100
FAB110204C-07,DOOR PREP - FAB110204C,Complete,Gas Purifier Rm - 1F -SUW-FAB110204,,,,,,,,,,2025-08-11 08:00,2025-08-15 17:00,2025-08-11 08:00,2025-08-15 17:00,2025-11-20 17:00,2025-11-20 17:00,2025-11-25 10:00,2025-11-25 10:00,0,40,100
FAB110204B-08,IMPACT SECAI TEMP DUCT WORK TROUGH OPENING - FAB110204B,Complete,Gas Purifier Rm - 1F -SUW-FAB110204,,,,,,,,,,2025-06-02 08:00,2025-06-23 17:00,2025-06-02 08:00,2025-07-01 16:00,2025-11-20 17:00,2025-11-20 17:00,2025-11-21 08:00,2025-11-21 08:00,0,128,100
FAB110204B-80,IMPACT SECAI TEMP DOOR - FAB110204B,Complete,Gas Purifier Rm - 1F -SUW-FAB110204,,,,,,,,,,2025-06-20 08:00,2025-06-27 17:00,2025-06-20 08:00,2025-07-01 16:00,2025-11-20 17:00,2025-11-20 17:00,2025-11-21 08:00,2025-11-21 08:00,0,48,100
FAB110204B-20,DOOR FRAME GROUT - FAB110204B - P1 (INCLUDE MOBILIZATION AND CURE TIME),Complete,Gas Purifier Rm - 1F -SUW-FAB110204,,,,,,,,,,2025-07-07 08:00,2025-07-14 17:00,2025-07-14 08:00,2025-07-14 17:00,2025-11-20 17:00,2025-11-20 17:00,2025-12-02 10:00,2025-12-02 10:00,0,48,100
ZX-10060,Complete Drywall & Inspect - Duct Shaft Vestibule - 1F-SUW-FAB110109,Complete,Duct Shaft Vestibule - 1F -SUW-FAB110109,,,,,,,,,,2025-08-19 08:00,2025-09-11 12:00,2025-08-11 08:00,2025-08-18 12:00,2025-11-20 17:00,2025-11-20 17:00,2025-11-18 10:00,2025-11-18 10:00,0,140,100
ZX-10070,Complete Fire Caulk & Inspect - Duct Shaft Vestibule - 1F-SUW-FAB110109,Complete,Duct Shaft Vestibule - 1F -SUW-FAB110109,,,,,,,,,,2025-08-22 08:00,2025-08-25 17:00,2025-08-22 08:00,2025-08-25 17:00,2025-11-20 17:00,2025-11-20 17:00,2025-12-05 17:00,2025-12-05 17:00,0,16,100
ZX-10080,Complete Control Joint & Inspect - Duct Shaft Vestibule - 1F-SUW-FAB110109,Complete,Duct Shaft Vestibule - 1F -SUW-FAB110109,,,,,,,,,,2025-09-01 08:00,2025-09-02 17:00,2025-09-01 08:00,2025-09-02 17:00,2025-11-20 17:00,2025-11-20 17:00,2025-11-18 10:00,2025-11-18 10:00,0,16,100
FAB110109A-02,SECAI ROUGH IN/SECURITY - FAB110109A,Complete,Duct Shaft Vestibule - 1F -SUW-FAB110109,,,,,,,,,,2025-04-11 13:00,2025-04-14 12:00,2025-04-10 13:00,2025-04-11 12:00,2025-11-20 17:00,2025-11-20 17:00,2025-11-25 10:00,2025-11-25 10:00,0,8,100
FAB110109A-03,INSTALL DOOR FRAMES - FAB110109A,Complete,Duct Shaft Vestibule - 1F -SUW-FAB110109,,,,,,,,,,2025-07-03 08:00,2025-07-03 17:00,2025-04-11 00:00,2025-04-11 16:00,2025-11-20 17:00,2025-11-20 17:00,2025-11-25 10:00,2025-11-25 10:00,0,8,100
FAB110109A-04,INSTALL DOOR & HARDWARE - FAB110109A,Not Started,Duct Shaft Vestibule - 1F -SUW-FAB110109,,,,,,,,,,2025-11-21 08:00,2025-11-27 17:00,,,2025-11-21 08:00,2025-11-27 17:00,2025-11-25 10:00,2025-12-02 10:00,40,40,0
FAB110109A-05,PAINT & PROTECT DOORS & FRAMES - FAB110109A,Not Started,Duct Shaft Vestibule - 1F -SUW-FAB110109,,,,,,,,,,2026-02-16 08:00,2026-02-19 15:00,,,2026-02-16 08:00,2026-02-19 15:00,2025-12-02 10:00,2025-12-05 17:00,30,30,0
FAB110109B-01,IMPACT - INSTALL/REWORK DRYWALL FRAMING AROUND DOORS - FAB110109B DOOR FRAME HANDED OVER TO SECAI,Complete,Duct Shaft Vestibule - 1F -SUW-FAB110109,,,,,,,,,,2025-07-17 13:00,2025-07-18 12:00,2025-07-17 13:00,2025-07-18 12:00,2025-11-20 17:00,2025-11-20 17:00,2025-12-02 10:00,2025-12-02 10:00,0,8,100
FAB110109B-13,DOOR FRAME HANDED OVER TO SECAI 07/17 - FAB110109B,Complete,Duct Shaft Vestibule - 1F -SUW-FAB110109,,,,,,,,,,2025-07-17 13:00,2025-07-18 12:00,2025-07-17 13:00,2025-07-18 12:00,2025-11-20 17:00,2025-11-20 17:00,2025-12-02 10:00,2025-12-02 10:00,0,8,100
FAB110109B-03,INSTALL DOOR FRAME BY SECAI - FAB110109B HANDED OVER 07/17,Complete,Duct Shaft Vestibule - 1F -SUW-FAB110109,,,,,,,,,,2025-07-17 13:00,2025-08-07 12:00,2025-07-17 13:00,2025-07-18 12:00,2025-11-20 17:00,2025-11-20 17:00,2025-12-02 10:00,2025-12-02 10:00,0,120,100
FAB110109B-04,DOOR INSTALL - FAB110109B,Complete,Duct Shaft Vestibule - 1F -SUW-FAB110109,,,,,,,,,,2025-08-13 08:00,2025-08-13 17:00,2025-08-13 08:00,2025-08-13 17:00,2025-11-20 17:00,2025-11-20 17:00,2025-12-02 10:00,2025-12-02 10:00,0,8,100
FAB110109B-05,PAINT & PROTECT DOORS & FRAMES - FAB110109B,Complete,Duct Shaft Vestibule - 1F -SUW-FAB110109,,,,,,,,,,2025-10-14 08:00,2025-10-17 15:00,2025-10-14 08:00,2025-10-17 15:00,2025-11-20 17:00,2025-11-20 17:00,2025-12-02 10:00,2025-12-02 10:00,0,30,100
FAB110109B-06,INSTALL DOOR HARDWARE - FAB110109B,Not Started,Duct Shaft Vestibule - 1F -SUW-FAB110109,,,,,,,,,,2025-11-21 08:00,2025-11-26 15:00,,,2025-11-21 08:00,2025-11-26 15:00,2025-12-02 10:00,2025-12-05 17:00,30,30,0
FAB110109B-11,IMPACT - PROCUREMENT - Reordered doors (Wall Thickness and Door Swing Design Changes),Complete,Duct Shaft Vestibule - 1F -SUW-FAB110109,,,,,,,,,,2025-06-20 08:00,2025-08-28 17:00,2025-06-20 08:00,2025-07-14 17:00,2025-11-20 17:00,2025-11-20 17:00,2025-11-25 10:00,2025-11-25 10:00,0,400,100
ZX-17850,IMPACT - SECAI DENIAL OF ACCEL COST FOR BERG - Duct Shaft Vestibule - 1F-SUW-FAB110109,Complete,Duct Shaft Vestibule - 1F -SUW-FAB110109,,,,,,,,,,2025-05-27 08:00,2025-05-29 17:00,2025-05-19 08:00,2025-06-10 16:00,2025-11-20 17:00,2025-11-20 17:00,2025-11-18 10:00,2025-11-18 10:00,0,24,100
ZX-18650,IMPACT MEP SECAI SCAFFOLD IN THE AREA - Duct Shaft Vestibule - 1F-SUW-FAB110109,Complete,Duct Shaft Vestibule - 1F -SUW-FAB110109,,,,,,,,,,2025-06-13 08:00,2025-06-26 17:00,2025-06-13 08:00,2025-08-08 17:00,2025-11-20 17:00,2025-11-20 17:00,2025-11-18 10:00,2025-11-18 10:00,0,80,100
ZX-10360,Complete Drywall & Inspect - Duct Shaft - 1F-SUW-FAB110112,Complete,Duct Shaft - 1F -SUW-FAB110112,,,,,,,,,,2025-09-02 08:00,2025-09-17 17:00,2025-08-15 08:00,2025-08-18 17:00,2025-11-20 17:00,2025-11-20 17:00,2025-11-18 10:00,2025-11-18 10:00,0,96,100
ZX-10370,Complete Fire Caulk & Inspect - Duct Shaft - 1F-SUW-FAB110112,Complete,Duct Shaft - 1F -SUW-FAB110112,,,,,,,,,,2025-08-19 08:00,2025-08-25 17:00,2025-08-19 08:00,2025-08-25 17:00,2025-11-20 17:00,2025-11-20 17:00,2025-12-05 17:00,2025-12-05 17:00,0,40,100
ZX-17500,IMPACT - BERG ALLOCATION - Drywall & Inspect - Duct Shaft - 1F-SUW-FAB110112,Complete,Duct Shaft - 1F -SUW-FAB110112,,,,,,,,,,2025-05-13 08:00,2025-05-28 17:00,2025-05-05 08:00,2025-05-27 16:00,2025-11-20 17:00,2025-11-20 17:00,2025-11-18 10:00,2025-11-18 10:00,0,96,100
ZX-10660,Complete Drywall & Inspect - Duct Shaft Vestibule - 1F-SUW-FAB110108,Complete,Duct Shaft Vestibule - 1F -SUW-FAB110108,,,,,,,,,,2025-05-27 08:00,2025-06-11 17:00,2025-05-27 08:00,2025-06-20 16:00,2025-11-20 17:00,2025-11-20 17:00,2025-11-25 10:00,2025-11-25 10:00,0,96,100
ZX-10670,Complete Fire Caulk & Inspect - Duct Shaft Vestibule - 1F-SUW-FAB110108,Complete,Duct Shaft Vestibule - 1F -SUW-FAB110108,,,,,,,,,,2025-09-02 08:00,2025-09-17 17:00,2025-08-15 08:00,2025-08-26 08:00,2025-11-20 17:00,2025-11-20 17:00,2025-12-05 17:00,2025-12-05 17:00,0,96,100
ZX-10680,Complete Control Joint & Inspect - Duct Shaft Vestibule - 1F-SUW-FAB110108,Complete,Duct Shaft Vestibule - 1F -SUW-FAB110108,,,,,,,,,,2025-06-27 08:00,2025-06-30 17:00,2025-06-18 08:00,2025-06-20 16:00,2025-11-20 17:00,2025-11-20 17:00,2025-11-25 10:00,2025-11-25 10:00,0,16,100
FAB110108A-03,INSTALL DOOR FRAMES - FAB110108A,Complete,Duct Shaft Vestibule - 1F -SUW-FAB110108,,,,,,,,,,2025-06-25 13:00,2025-06-26 12:00,2025-05-07 00:00,2025-05-09 10:00,2025-11-20 17:00,2025-11-20 17:00,2025-11-25 10:00,2025-11-25 10:00,0,8,100
FAB110108A-04,INSTALL DOOR & HARDWARE - FAB110108A,Not Started,Duct Shaft Vestibule - 1F -SUW-FAB110108,,,,,,,,,,2025-11-21 08:00,2025-11-27 17:00,,,2025-11-21 08:00,2025-11-27 17:00,2025-11-25 10:00,2025-12-02 10:00,40,40,0
FAB110108A-05,PAINT & PROTECT DOORS & FRAMES - FAB110108A,Not Started,Duct Shaft Vestibule - 1F -SUW-FAB110108,,,,,,,,,,2026-02-16 08:00,2026-02-19 15:00,,,2026-02-16 08:00,2026-02-19 15:00,2025-12-02 10:00,2025-12-05 17:00,30,30,0
ZX-18200,IMPACT - SECAI DENIAL OF ACCEL COST FOR BERG - Duct Shaft Vestibule - 1F-SUW-FAB110108,Complete,Duct Shaft Vestibule - 1F -SUW-FAB110108,,,,,,,,,,2025-05-27 08:00,2025-06-11 17:00,2025-05-27 08:00,2025-06-10 16:00,2025-11-20 17:00,2025-11-20 17:00,2025-11-25 10:00,2025-11-25 10:00,0,96,100
ZX-18790,IMPACT - AFTER FINISHED THE DRYWALL SECAI MEP MADE HOLES -Duct Shaft Vestibule - 1F-SUW-FAB110108,Complete,Duct Shaft Vestibule - 1F -SUW-FAB110108,,,,,,,,,,2025-05-27 08:00,2025-05-27 17:00,2025-06-23 08:00,2025-06-23 16:00,2025-11-20 17:00,2025-11-20 17:00,2025-12-05 17:00,2025-12-05 17:00,0,8,100
ZX-9790,SECAI TURNOVER FOR ACELERATION - Drywall & Inspect - Exit Passageway 1-1F-FAB110111 BAKER/DESCOPE,Complete,Exit Passageway 1 - 1F -SUW-FAB110111,,,,,,,,,,2025-05-27 08:00,2025-06-13 17:00,2025-05-22 08:00,2025-05-22 16:00,2025-11-20 17:00,2025-11-20 17:00,2025-11-24 08:00,2025-11-24 08:00,0,112,100
ZX-9800,SECAI TURNOVER FOR ACELERATION - Fire Caulk & Inspect - Exit Passageway 1-1F-FAB110111 BAKER/DESCOPE,Complete,Exit Passageway 1 - 1F -SUW-FAB110111,,,,,,,,,,2025-06-19 08:00,2025-06-20 17:00,2025-05-22 08:00,2025-05-22 16:00,2025-11-20 17:00,2025-11-20 17:00,2025-12-05 17:00,2025-12-05 17:00,0,16,100
ZX-9810,SECAI TURNOVER FOR ACELERATION - Control Joint & Inspect & Inspect - Exit Passageway 1-1F-FAB110111 BAKER/DESCOPE,Complete,Exit Passageway 1 - 1F -SUW-FAB110111,,,,,,,,,,2025-06-16 08:00,2025-06-18 17:00,2025-05-22 08:00,2025-05-22 16:00,2025-11-20 17:00,2025-11-20 17:00,2025-11-24 08:00,2025-11-24 08:00,0,24,100
FAB110111A-01,INSTALL DOOR FRAMES - FAB110111A,Complete,Exit Passageway 1 - 1F -SUW-FAB110111,,,,,,,,,,2025-06-20 08:00,2025-06-20 17:00,2025-06-24 08:00,2025-06-24 16:00,2025-11-20 17:00,2025-11-20 17:00,2025-12-02 08:00,2025-12-02 08:00,0,8,100
FAB110111A-04,INSTALL DOOR - FAB110111A,Complete,Exit Passageway 1 - 1F -SUW-FAB110111,,,,,,,,,,2025-09-17 08:00,2025-09-17 17:00,2025-09-17 08:00,2025-09-17 17:00,2025-11-20 17:00,2025-11-20 17:00,2025-12-02 08:00,2025-12-02 08:00,0,8,100
FAB110111B-03,INSTALL DOOR FRAMES - FAB110111B SECAI REMOVED DURING DRYWALL REMEDIATION WORK,Complete,Exit Passageway 1 - 1F -SUW-FAB110111,,,,,,,,,,2025-07-17 08:00,2025-07-25 17:00,2025-06-10 08:00,2025-06-10 16:00,2025-11-20 17:00,2025-11-20 17:00,2025-11-24 08:00,2025-11-24 08:00,0,56,100
FAB110111B-04,INSTALL DOOR & HARDWARE - FAB110111B,Active,Exit Passageway 1 - 1F -SUW-FAB110111,,,,,,,,,,2025-10-15 08:00,2025-10-21 17:00,2025-10-15 08:00,,2025-11-21 08:00,2025-11-27 17:00,2025-11-24 08:00,2025-11-28 17:00,40,40,0
FAB110111A-02,SECAI ROUGH IN/SECURITY - FAB110111A,Complete,Exit Passageway 1 - 1F -SUW-FAB110111,,,,,,,,,,2025-06-20 08:00,2025-06-20 17:00,2025-06-24 08:00,2025-06-24 16:00,2025-11-20 17:00,2025-11-20 17:00,2025-12-02 08:00,2025-12-02 08:00,0,8,100
FAB110111A-05,PAINT & PROTECT DOORS & FRAMES - FAB110111A,Complete,Exit Passageway 1 - 1F -SUW-FAB110111,,,,,,,,,,2025-09-22 08:00,2025-09-25 15:00,2025-09-22 08:00,2025-09-25 15:00,2025-11-20 17:00,2025-11-20 17:00,2025-12-02 08:00,2025-12-02 08:00,0,30,100
FAB110111A-07,DOOR FRAME PAINT & 1ST COAT - FAB110111A,Complete,Exit Passageway 1 - 1F -SUW-FAB110111,,,,,,,,,,2025-09-11 08:00,2025-09-15 17:00,2025-09-11 08:00,2025-09-15 17:00,2025-11-20 17:00,2025-11-20 17:00,2025-12-02 08:00,2025-12-02 08:00,0,24,100
FAB110111A-90,DOOR FRAME GROUT - FAB110111A (INCLUDES MOBILIZATION AND CURE TIME),Complete,Exit Passageway 1 - 1F -SUW-FAB110111,,,,,,,,,,2025-07-14 08:00,2025-07-14 17:00,2025-07-14 08:00,2025-07-14 17:00,2025-11-20 17:00,2025-11-20 17:00,2025-12-02 08:00,2025-12-02 08:00,0,8,100
FAB110111B-05,PAINT & PROTECT DOORS & FRAMES - FAB110111B,Not Started,Exit Passageway 1 - 1F -SUW-FAB110111,,,,,,,,,,2026-02-16 08:00,2026-02-20 17:00,,,2026-02-16 08:00,2026-02-20 17:00,2025-12-01 08:00,2025-12-05 17:00,40,40,0
ZX-9970,SECAI TURNOVER FOR ACELERATION - Drywall & Inspect - Airlock 1-1F-FAB110110 BAKER/DESCOPE,Complete,Air Lock 1 - 1F -SUW-FAB110110,,,,,,,,,,2025-05-29 08:00,2025-06-06 17:00,2025-05-22 08:00,2025-05-22 16:00,2025-11-20 17:00,2025-11-20 17:00,2025-11-24 08:00,2025-11-24 08:00,0,56,100
ZX-9980,SECAI TURNOVER FOR ACELERATION - Fire Caulk & Inspect - Airlock 1-1F-FAB110110 BAKER/DESCOPE,Complete,Air Lock 1 - 1F -SUW-FAB110110,,,,,,,,,,2025-06-12 08:00,2025-06-16 17:00,2025-05-22 08:00,2025-05-22 16:00,2025-11-20 17:00,2025-11-20 17:00,2025-12-05 17:00,2025-12-05 17:00,0,24,100
ZX-9990,SECAI TURNOVER FOR ACELERATION - Control Joint & Inspect & Inspect - Airlock 1-1F-FAB110110 BAKER/DESCOPE,Complete,Air Lock 1 - 1F -SUW-FAB110110,,,,,,,,,,2025-06-09 08:00,2025-06-11 17:00,2025-05-22 08:00,2025-05-22 16:00,2025-11-20 17:00,2025-11-20 17:00,2025-11-24 08:00,2025-11-24 08:00,0,24,100
FAB110110A-03,INSTALL DOOR FRAMES - FAB110110A,Complete,Air Lock 1 - 1F -SUW-FAB110110,,,,,,,,,,2025-06-16 08:00,2025-06-16 17:00,2025-06-16 08:00,2025-06-16 17:00,2025-11-20 17:00,2025-11-20 17:00,2025-11-25 08:00,2025-11-25 08:00,0,8,100
FAB110110C-03,INSTALL DOOR FRAMES - FAB110110C,Complete,Air Lock 1 - 1F -SUW-FAB110110,,,,,,,,,,2025-06-23 13:00,2025-06-24 12:00,2025-03-20 12:00,2025-03-20 12:00,2025-11-20 17:00,2025-11-20 17:00,2025-11-25 08:00,2025-11-25 08:00,0,8,100
FAB110110D-03,INSTALL DOOR FRAMES - FAB110110D,Complete,Air Lock 1 - 1F -SUW-FAB110110,,,,,,,,,,2025-06-23 13:00,2025-06-24 12:00,2025-04-04 00:00,2025-04-04 12:00,2025-11-20 17:00,2025-11-20 17:00,2025-11-25 08:00,2025-11-25 08:00,0,8,100
FAB110110E-03,INSTALL DOOR FRAMES - FAB110110E,Complete,Air Lock 1 - 1F -SUW-FAB110110,,,,,,,,,,2025-06-23 13:00,2025-06-24 12:00,2025-05-08 00:00,2025-05-08 12:00,2025-11-20 17:00,2025-11-20 17:00,2025-11-25 08:00,2025-11-25 08:00,0,8,100
FAB110110A-04,INSTALL DOOR & HARDWARE - FAB110110A,Active,Air Lock 1 - 1F -SUW-FAB110110,,,,,,,,,,2025-08-29 08:00,2025-09-04 17:00,2025-08-29 08:00,,2025-11-21 08:00,2025-11-27 17:00,2025-11-25 08:00,2025-12-01 17:00,40,40,0
FAB110110B-03,INSTALL DOOR FRAME BY SECAI - FAB110110B,Complete,Air Lock 1 - 1F -SUW-FAB110110,,,,,,,,,,2025-08-27 08:00,2025-08-27 17:00,2025-08-12 08:00,2025-08-12 17:00,2025-11-20 17:00,2025-11-20 17:00,2025-11-25 08:00,2025-11-25 08:00,0,8,100
FAB110110B-04,INSTALL DOOR & HARDWARE - FAB110110B,Active,Air Lock 1 - 1F -SUW-FAB110110,,,,,,,,,,2025-10-08 08:00,2025-10-14 17:00,2025-10-08 08:00,,2025-11-21 08:00,2025-11-27 17:00,2025-11-25 08:00,2025-12-01 17:00,40,40,0
FAB110110C-04,INSTALL DOOR & HARDWARE - FAB110110C,Active,Air Lock 1 - 1F -SUW-FAB110110,,,,,,,,,,2025-10-03 08:00,2025-10-09 17:00,2025-10-03 08:00,,2025-11-21 08:00,2025-11-27 17:00,2025-11-25 08:00,2025-12-01 17:00,40,40,0
FAB110110D-04,INSTALL DOOR & HARDWARE - FAB110110D,Active,Air Lock 1 - 1F -SUW-FAB110110,,,,,,,,,,2025-09-09 08:00,2025-09-15 17:00,2025-09-09 08:00,,2025-11-21 08:00,2025-11-27 17:00,2025-11-25 08:00,2025-12-01 17:00,40,40,0
FAB110110E-04,INSTALL DOOR & HARDWARE - FAB110110E,Active,Air Lock 1 - 1F -SUW-FAB110110,,,,,,,,,,2025-09-05 08:00,2025-09-11 17:00,2025-09-05 08:00,,2025-11-21 08:00,2025-11-27 17:00,2025-11-25 08:00,2025-12-01 17:00,40,40,0
FAB110110A-05,PAINT & PROTECT DOORS & FRAMES - FAB110110A,Not Started,Air Lock 1 - 1F -SUW-FAB110110,,,,,,,,,,2026-02-16 08:00,2026-02-19 17:00,,,2026-02-16 08:00,2026-02-19 17:00,2025-12-02 08:00,2025-12-05 17:00,32,32,0
FAB110110B-05,PAINT & PROTECT DOORS & FRAMES - FAB110110B,Not Started,Air Lock 1 - 1F -SUW-FAB110110,,,,,,,,,,2026-02-16 08:00,2026-02-19 17:00,,,2026-02-16 08:00,2026-02-19 17:00,2025-12-02 08:00,2025-12-05 17:00,32,32,0
FAB110110C-05,PAINT & PROTECT DOORS & FRAMES - FAB110110C,Not Started,Air Lock 1 - 1F -SUW-FAB110110,,,,,,,,,,2026-02-16 08:00,2026-02-19 17:00,,,2026-02-16 08:00,2026-02-19 17:00,2025-12-02 08:00,2025-12-05 17:00,32,32,0
FAB110110D-05,PAINT & PROTECT DOORS & FRAMES - FAB110110D,Not Started,Air Lock 1 - 1F -SUW-FAB110110,,,,,,,,,,2026-02-16 08:00,2026-02-19 17:00,,,2026-02-16 08:00,2026-02-19 17:00,2025-12-02 08:00,2025-12-05 17:00,32,32,0
FAB110110E-05,PAINT & PROTECT DOORS & FRAMES - FAB110110E,Not Started,Air Lock 1 - 1F -SUW-FAB110110,,,,,,,,,,2026-02-16 08:00,2026-02-19 17:00,,,2026-02-16 08:00,2026-02-19 17:00,2025-12-02 08:00,2025-12-05 17:00,32,32,0
ZX-10270,SECAI TURNOVER FOR ACELERATION - Drywall & Inspect - Elevator Hall #01 - 1F-FAB110113 BAKER/DESCOPE,Complete,Elevator Hall 1 - 1F -SUW-FAB110113,,,,,,,,,,2025-06-10 08:00,2025-06-10 08:00,2025-06-10 08:00,2025-06-10 08:00,2025-11-20 17:00,2025-11-20 17:00,2025-11-25 10:00,2025-11-25 10:00,0,0,100
ZX-10280,SECAI TURNOVER FOR ACELERATION - Fire Caulk & Inspect - Elevator Hall #01 - 1F-FAB110113 BAKER/DESCOPE,Complete,Elevator Hall 1 - 1F -SUW-FAB110113,,,,,,,,,,2025-06-10 08:00,2025-06-12 17:00,2025-06-10 08:00,2025-06-10 16:00,2025-11-20 17:00,2025-11-20 17:00,2025-12-05 17:00,2025-12-05 17:00,0,24,100
ZX-10290,SECAI TURNOVER FOR ACELERATION - Control Joint & Inspect - Elevator Hall #01 - 1F-FAB110113 BAKER/DESCOPE,Complete,Elevator Hall 1 - 1F -SUW-FAB110113,,,,,,,,,,2025-06-10 08:00,2025-06-12 17:00,2025-06-10 08:00,2025-06-10 16:00,2025-11-20 17:00,2025-11-20 17:00,2025-11-25 10:00,2025-11-25 10:00,0,24,100
FAB110113A-01,IMPACT - INSTALL/REWORK DRYWALL FRAMING AROUND DOORS - FAB110113A,Complete,Elevator Hall 1 - 1F -SUW-FAB110113,,,,,,,,,,2025-07-08 08:00,2025-07-16 17:00,2025-07-08 08:00,2025-07-08 17:00,2025-11-20 17:00,2025-11-20 17:00,2025-11-25 10:00,2025-11-25 10:00,0,56,100
FAB110113A-02,SECAI ROUGH IN/SECURITY - FAB110113A,Complete,Elevator Hall 1 - 1F -SUW-FAB110113,,,,,,,,,,2025-09-24 08:00,2025-09-24 17:00,2025-07-08 08:00,2025-07-08 17:00,2025-11-20 17:00,2025-11-20 17:00,2025-11-25 10:00,2025-11-25 10:00,0,8,100
FAB110113A-03,INSTALL DOOR FRAMES - FAB110113A,Complete,Elevator Hall 1 - 1F -SUW-FAB110113,,,,,,,,,,2025-07-08 08:00,2025-07-08 17:00,2025-07-08 08:00,2025-07-08 17:00,2025-11-20 17:00,2025-11-20 17:00,2025-11-25 10:00,2025-11-25 10:00,0,8,100
FAB110113A-04,INSTALL DOOR & HARDWARE - FAB110113A,Active,Elevator Hall 1 - 1F -SUW-FAB110113,,,,,,,,,,2025-07-08 08:00,2025-07-14 17:00,2025-07-08 08:00,,2025-11-21 08:00,2025-11-27 17:00,2025-11-25 10:00,2025-12-02 10:00,40,40,0
FAB110113A-05,PAINT & PROTECT DOORS & FRAMES - FAB110113A,Not Started,Elevator Hall 1 - 1F -SUW-FAB110113,,,,,,,,,,2026-02-16 08:00,2026-02-19 15:00,,,2026-02-16 08:00,2026-02-19 15:00,2025-12-02 10:00,2025-12-05 17:00,30,30,0
FAB110113A-11,IMPACT - PROCUREMENT - REORDERED DOORS (JAMB DEPTH ISSUE),Complete,Elevator Hall 1 - 1F -SUW-FAB110113,,,,,,,,,,2025-06-09 08:00,2025-08-12 17:00,2025-06-09 08:00,2025-07-07 17:00,2025-11-20 17:00,2025-11-20 17:00,2025-11-25 10:00,2025-11-25 10:00,0,376,100
FAB110114B-04,DOOR INSTALL - FAB110114B,Complete,Elevator Hall 1 - 1F -SUW-FAB110113,,,,,,,,,,2025-09-05 08:00,2025-09-05 17:00,2025-09-05 00:00,2025-09-05 00:00,2025-11-20 17:00,2025-11-20 17:00,2025-12-02 10:00,2025-12-02 10:00,0,8,100
FAB110114B-05,PAINT & PROTECT DOORS & FRAMES - FAB110114B,Complete,Elevator Hall 1 - 1F -SUW-FAB110113,,,,,,,,,,2025-10-14 08:00,2025-10-17 15:00,2025-10-14 08:00,2025-10-16 15:00,2025-11-20 17:00,2025-11-20 17:00,2025-12-02 10:00,2025-12-02 10:00,0,30,100
FAB110114B-06,INSTALL DOOR HARDWARE - FAB110114B,Not Started,Elevator Hall 1 - 1F -SUW-FAB110113,,,,,,,,,,2025-11-21 08:00,2025-11-26 15:00,,,2025-11-21 08:00,2025-11-26 15:00,2025-12-02 10:00,2025-12-05 17:00,30,30,0
FAB110114A-00,IOCC TO BE SUBMITTED (RFI 10986) - FAB110114A,Complete,Elevator Hall 1 - 1F -SUW-FAB110113,,INTERIOR STAIRS,L1 - Fndn Slab,,,,,,,2025-07-03 08:00,2025-07-21 12:00,2025-07-03 07:00,2025-09-15 17:00,2025-11-20 17:00,2025-11-20 17:00,2025-11-25 08:00,2025-11-25 08:00,0,100,100
FAB110114A-01,IOCC APPROVAL - SECAI - FAB110114A,Complete,Elevator Hall 1 - 1F -SUW-FAB110113,,INTERIOR STAIRS,L1 - Fndn Slab,,,,,,,2025-09-16 08:00,2025-09-18 17:00,2025-09-16 08:00,2025-09-19 17:00,2025-11-20 17:00,2025-11-20 17:00,2025-11-25 08:00,2025-11-25 08:00,0,24,100
FAB110114A-50,IMPACT - TRAPS AND TEMP DOOR TO BE REMOVED - FAB110114A,Active,Elevator Hall 1 - 1F -SUW-FAB110113,,,,,,,,,,2025-07-03 08:00,2025-07-29 17:00,2025-07-03 07:00,,2025-11-21 08:00,2025-11-21 08:00,2025-11-24 17:00,2025-11-24 17:00,0,152,0
FAB110114A-80,INSTALL/REWORK CLADDING AND HEADER - FAB110114A,Complete,Elevator Hall 1 - 1F -SUW-FAB110113,,INTERIOR STAIRS,L1 - Fndn Slab,,,,,,,2025-09-22 08:00,2025-09-26 17:00,2025-09-22 08:00,2025-09-26 17:00,2025-11-20 17:00,2025-11-20 17:00,2025-11-25 08:00,2025-11-25 08:00,0,40,100
FAB110114A-04,INSTALL DOOR & HARDWARE - FAB110114A,Not Started,Elevator Hall 1 - 1F -SUW-FAB110113,,,,,,,,,,2025-11-25 08:00,2025-12-01 17:00,,,2025-11-25 08:00,2025-12-01 17:00,2025-11-27 08:00,2025-12-03 17:00,40,40,0
FAB110114A-60,IMPACT - ROOF DRAIN LINES CONFLICT WITH SPACE REQUIRED FOR OHC MOTOR AND HOUSING - FAB110114A,Active,Elevator Hall 1 - 1F -SUW-FAB110113,,,,,,,,,,2025-07-03 08:00,2025-07-29 17:00,2025-07-03 07:00,,2025-11-21 08:00,2025-11-21 08:00,2025-11-26 17:00,2025-11-26 17:00,0,152,0
FAB110114A-70,IMPACT - MEP MATERIAL BLOCKING ACCESS - FAB110114A,Active,Elevator Hall 1 - 1F -SUW-FAB110113,,,,,,,,,,2025-07-03 08:00,2025-07-29 17:00,2025-07-03 07:00,,2025-11-21 08:00,2025-11-21 08:00,2025-11-24 17:00,2025-11-24 17:00,0,152,0
ZX-10570,Complete Drywall & Inspect - Toilet Corridor-1F-SUW-FAB110116,Complete,Toilet Corridor - 1F -SUW-FAB110116,,,,,,,,,,2025-06-26 08:00,2025-07-15 17:00,2025-06-10 08:00,2025-07-21 17:00,2025-11-20 17:00,2025-11-20 17:00,2025-11-24 08:00,2025-11-24 08:00,0,112,100
ZX-10590,Complete Control Joint & Inspect - Toilet Corridor-1F-SUW-FAB110116,Complete,Toilet Corridor - 1F -SUW-FAB110116,,,,,,,,,,2025-07-28 08:00,2025-07-30 17:00,2025-07-22 08:00,2025-07-23 17:00,2025-11-20 17:00,2025-11-20 17:00,2025-11-24 08:00,2025-11-24 08:00,0,24,100
FAB110116A-01,INSTALL DOOR FRAMES - FAB110116A,Complete,Toilet Corridor - 1F -SUW-FAB110116,,,,,,,,,,2025-06-16 08:00,2025-06-16 17:00,2025-06-16 08:00,2025-06-16 16:00,2025-11-20 17:00,2025-11-20 17:00,2025-11-21 08:00,2025-11-21 08:00,0,8,100
FAB110116A-04,INSTALL DOOR & HARDWARE - FAB110116A,Active,Toilet Corridor - 1F -SUW-FAB110116,,,,,,,,,,2025-10-10 08:00,2025-10-16 17:00,2025-10-10 08:00,,2025-11-21 08:00,2025-11-27 17:00,2025-11-25 10:00,2025-12-02 10:00,40,40,0
FAB110116A-05,PAINT & PROTECT DOORS & FRAMES - FAB110116A,Not Started,Toilet Corridor - 1F -SUW-FAB110116,,,,,,,,,,2026-02-16 08:00,2026-02-19 15:00,,,2026-02-16 08:00,2026-02-19 15:00,2025-12-02 10:00,2025-12-05 17:00,30,30,0
FAB110116A-07,DOOR FRAME PAINT & 1ST COAT - FAB110116A,Complete,Toilet Corridor - 1F -SUW-FAB110116,,,,,,,,,,2025-07-25 08:00,2025-07-29 17:00,2025-07-25 08:00,2025-07-29 17:00,2025-11-20 17:00,2025-11-20 17:00,2025-11-25 10:00,2025-11-25 10:00,0,24,100
ZX-18920,IMPACT - SECAI REMOVED DRYWALL - Toilet Corridor-1F-SUW-FAB110116,Complete,Toilet Corridor - 1F -SUW-FAB110116,,,,,,,,,,2025-06-23 08:00,2025-07-11 17:00,2025-06-23 08:00,2025-07-04 17:00,2025-11-20 17:00,2025-11-20 17:00,2025-11-24 08:00,2025-11-24 08:00,0,120,100
FAB110116A-90,DOOR FRAME GROUT - FAB110116A (INCLUDE MOBILIZATION AND CURE TIME),Complete,Toilet Corridor - 1F -SUW-FAB110116,,,,,,,,,,2025-07-17 08:00,2025-07-17 17:00,2025-07-17 08:00,2025-07-17 17:00,2025-11-20 17:00,2025-11-20 17:00,2025-11-25 10:00,2025-11-25 10:00,0,8,100
ZX-10120,Complete Drywall & Inspect - Janitor Rm 1-1F-SUW-FAB110119,Complete,Janitor Rm 1 - 1F -SUW-FAB110119,,,,,,,,,,2025-08-19 08:00,2025-08-26 17:00,2025-08-18 08:00,2025-08-27 08:00,2025-11-20 17:00,2025-11-20 17:00,2025-11-24 08:00,2025-11-24 08:00,0,48,100
ZX-10140,Complete Control Joint & Inspect - Janitor Rm 1-1F-SUW-FAB110119 - TILES - VOID,Complete,Janitor Rm 1 - 1F -SUW-FAB110119,,,,,,,,,,2025-08-25 08:00,2025-08-26 17:00,2025-08-25 08:00,2025-08-26 17:00,2025-11-20 17:00,2025-11-20 17:00,2025-11-24 08:00,2025-11-24 08:00,0,16,100
FAB110119A-01,IMPACT - INSTALL/REWORK DRYWALL FRAMING AROUND DOORS - FAB110119A,Complete,Janitor Rm 1 - 1F -SUW-FAB110119,,,,,,,,,,2025-08-26 08:00,2025-08-27 17:00,2025-08-26 08:00,2025-08-27 17:00,2025-11-20 17:00,2025-11-20 17:00,2025-12-02 10:00,2025-12-02 10:00,0,16,100
FAB110119A-02,SECAI ROUGH IN/SECURITY - FAB110119A,Complete,Janitor Rm 1 - 1F -SUW-FAB110119,,,,,,,,,,2025-08-28 08:00,2025-08-28 17:00,2025-08-28 08:00,2025-08-28 17:00,2025-11-20 17:00,2025-11-20 17:00,2025-12-02 10:00,2025-12-02 10:00,0,8,100
FAB110119A-03,INSTALL DOOR FRAMES - FAB110119A,Complete,Janitor Rm 1 - 1F -SUW-FAB110119,,,,,,,,,,2025-08-28 08:00,2025-08-28 17:00,2025-08-28 08:00,2025-08-28 17:00,2025-11-20 17:00,2025-11-20 17:00,2025-12-02 10:00,2025-12-02 10:00,0,8,100
FAB110119A-04,DOOR INSTALL - FAB110119A,Complete,Janitor Rm 1 - 1F -SUW-FAB110119,,,,,,,,,,2025-09-18 08:00,2025-09-18 17:00,2025-09-18 08:00,2025-09-18 17:00,2025-11-20 17:00,2025-11-20 17:00,2025-12-02 10:00,2025-12-02 10:00,0,8,100
FAB110119A-05,PAINT & PROTECT DOORS & FRAMES - FAB110119A,Complete,Janitor Rm 1 - 1F -SUW-FAB110119,,,,,,,,,,2025-10-14 08:00,2025-10-17 15:00,2025-10-14 08:00,2025-10-17 15:00,2025-11-20 17:00,2025-11-20 17:00,2025-12-02 10:00,2025-12-02 10:00,0,30,100
FAB110119A-06,INSTALL DOOR HARDWARE - FAB110119A,Not Started,Janitor Rm 1 - 1F -SUW-FAB110119,,,,,,,,,,2025-11-21 08:00,2025-11-26 15:00,,,2025-11-21 08:00,2025-11-26 15:00,2025-12-02 10:00,2025-12-05 17:00,30,30,0
FAB110119A-11,IMPACT - SECAI - MEP TRADES WORKING IN RESTROOMS,Complete,Janitor Rm 1 - 1F -SUW-FAB110119,,,,,,,,,,2025-08-25 08:00,2025-08-25 17:00,2025-08-25 08:00,2025-08-25 17:00,2025-11-20 17:00,2025-11-20 17:00,2025-12-02 10:00,2025-12-02 10:00,0,8,100
ZX-10420,Complete Drywall & Inspect - Maint. Rm-1F-SUW-FAB110120,Complete,Maint. Rm - 1F -SUW-FAB110120,,,,,,,,,,2025-08-01 08:00,2025-08-11 17:00,2025-08-01 08:00,2025-08-13 17:00,2025-11-20 17:00,2025-11-20 17:00,2025-12-02 10:00,2025-12-02 10:00,0,56,100
ZX-10440,Complete Control Joint & Inspect - Maint. Rm-1F-SUW-FAB110120 - NR - Tile wall - VOID,Complete,Maint. Rm - 1F -SUW-FAB110120,,,,,,,,,,2025-08-21 08:00,2025-08-22 17:00,2025-08-12 08:00,2025-08-12 17:00,2025-11-20 17:00,2025-11-20 17:00,2025-12-02 10:00,2025-12-02 10:00,0,16,100
FAB110120A-01,IMPACT - INSTALL/REWORK DRYWALL FRAMING AROUND DOORS - FAB110120A,Complete,Maint. Rm - 1F -SUW-FAB110120,,,,,,,,,,2025-08-12 08:00,2025-08-20 17:00,2025-08-12 08:00,2025-08-20 17:00,2025-11-20 17:00,2025-11-20 17:00,2025-12-02 10:00,2025-12-02 10:00,0,56,100
FAB110120A-02,SECAI ROUGH IN/SECURITY - FAB110120A,Complete,Maint. Rm - 1F -SUW-FAB110120,,,,,,,,,,2025-08-20 08:00,2025-08-20 17:00,2025-08-20 08:00,2025-08-20 17:00,2025-11-20 17:00,2025-11-20 17:00,2025-12-02 10:00,2025-12-02 10:00,0,8,100
FAB110120A-03,INSTALL DOOR FRAMES - FAB110120A,Complete,Maint. Rm - 1F -SUW-FAB110120,,,,,,,,,,2025-08-20 08:00,2025-08-20 17:00,2025-08-20 08:00,2025-08-20 17:00,2025-11-20 17:00,2025-11-20 17:00,2025-12-02 10:00,2025-12-02 10:00,0,8,100
FAB110120A-04,DOOR INSTALL - FAB110120A,Complete,Maint. Rm - 1F -SUW-FAB110120,,,,,,,,,,2025-09-18 08:00,2025-09-18 17:00,2025-09-18 08:00,2025-09-18 17:00,2025-11-20 17:00,2025-11-20 17:00,2025-12-02 10:00,2025-12-02 10:00,0,8,100
FAB110120A-05,PAINT & PROTECT DOORS & FRAMES - FAB110120A,Complete,Maint. Rm - 1F -SUW-FAB110120,,,,,,,,,,2025-10-14 08:00,2025-10-17 15:00,2025-10-14 08:00,2025-10-17 15:00,2025-11-20 17:00,2025-11-20 17:00,2025-12-02 10:00,2025-12-02 10:00,0,30,100
FAB110120A-06,INSTALL DOOR HARDWARE - FAB110120A,Not Started,Maint. Rm - 1F -SUW-FAB110120,,,,,,,,,,2025-11-21 08:00,2025-11-26 15:00,,,2025-11-21 08:00,2025-11-26 15:00,2025-12-02 10:00,2025-12-05 17:00,30,30,0
ZX-10720,Complete Drywall & Inspect - Duct Shaft - 1F-SUW-FAB110101,Complete,Duct Shaft - 1F -SUW-FAB110101,,,,,,,,,,2025-08-12 08:00,2025-08-27 17:00,2025-08-12 08:00,2025-08-26 17:00,2025-11-20 17:00,2025-11-20 17:00,2025-11-24 08:00,2025-11-24 08:00,0,96,100
ZX-10730,Complete Fire Caulk & Inspect - Duct Shaft - 1F-SUW-FAB110101,Complete,Duct Shaft - 1F -SUW-FAB110101,,,,,,,,,,2025-08-25 08:00,2025-08-26 17:00,2025-08-25 08:00,2025-08-26 17:00,2025-11-20 17:00,2025-11-20 17:00,2025-12-05 17:00,2025-12-05 17:00,0,16,100
ZX-10740,Complete Control Joint & Inspect - Duct Shaft - 1F-SUW-FAB110101,Complete,Duct Shaft - 1F -SUW-FAB110101,,,,,,,,,,2025-08-25 08:00,2025-08-26 17:00,2025-08-25 08:00,2025-08-26 17:00,2025-11-20 17:00,2025-11-20 17:00,2025-11-24 08:00,2025-11-24 08:00,0,16,100
FAB110101A-02,SECAI ROUGH IN/SECURITY - FAB110101A,Complete,Duct Shaft - 1F -SUW-FAB110101,,,,,,,,,,2025-07-23 08:00,2025-07-23 17:00,2025-07-23 08:00,2025-07-23 17:00,2025-11-20 17:00,2025-11-20 17:00,2025-11-25 10:00,2025-11-25 10:00,0,8,100
FAB110101A-04,INSTALL DOOR & HARDWARE - FAB110101A,Active,Duct Shaft - 1F -SUW-FAB110101,,,,,,,,,,2025-08-14 08:00,2025-08-20 17:00,2025-08-14 08:00,,2025-11-21 08:00,2025-11-27 17:00,2025-11-25 10:00,2025-12-02 10:00,40,40,0
FAB110101A-05,PAINT & PROTECT DOORS & FRAMES - FAB110101A,Not Started,Duct Shaft - 1F -SUW-FAB110101,,,,,,,,,,2026-02-16 08:00,2026-02-19 15:00,,,2026-02-16 08:00,2026-02-19 15:00,2025-12-02 10:00,2025-12-05 17:00,30,30,0
FAB110101A-08,IMPACT - SECAI - DIRECTIVE TO HOLD FRAME INSTALLATION,Complete,Duct Shaft - 1F -SUW-FAB110101,,,,,,,,,,2025-06-13 08:00,2025-06-23 10:00,2025-06-13 08:00,2025-07-21 17:00,2025-11-20 17:00,2025-11-20 17:00,2025-11-25 10:00,2025-11-25 10:00,0,50,100
FAB110101A-03,INSTALL DOOR FRAMES - FAB110101A,Complete,Duct Shaft - 1F -SUW-FAB110101,,,,,,,,,,2025-07-25 08:00,2025-07-25 17:00,2025-07-23 08:00,2025-07-23 17:00,2025-11-20 17:00,2025-11-20 17:00,2025-11-25 10:00,2025-11-25 10:00,0,8,100
FAB110101A-07,DOOR FRAME PAINT & 1ST COAT - FAB110101A,Complete,Duct Shaft - 1F -SUW-FAB110101,,,,,,,,,,2025-08-19 08:00,2025-08-21 17:00,2025-08-13 08:00,2025-08-13 17:00,2025-11-20 17:00,2025-11-20 17:00,2025-11-25 10:00,2025-11-25 10:00,0,24,100
ZX-9940,Complete Drywall & Inspect - Toilet (M) 1-1F-SUW-FAB110118 NON RATED WALLS,Complete,Toilet (M) 1 - 1F -SUW-FAB110118,,,,,,,,,,2025-06-20 08:00,2025-07-03 17:00,2025-06-13 08:00,2025-06-20 16:00,2025-11-20 17:00,2025-11-20 17:00,2025-11-24 08:00,2025-11-24 08:00,0,80,100
ZX-9960,Complete Control Joint & Inspect - Toilet (M) 1-1F-SUW-FAB110118,Complete,Toilet (M) 1 - 1F -SUW-FAB110118,,,,,,,,,,2025-06-20 08:00,2025-06-23 17:00,2025-06-18 08:00,2025-06-20 16:00,2025-11-20 17:00,2025-11-20 17:00,2025-11-24 08:00,2025-11-24 08:00,0,16,100
FAB110118A-01,IMPACT - INSTALL/REWORK DRYWALL FRAMING AROUND DOORS - FAB110118A,Complete,Toilet (M) 1 - 1F -SUW-FAB110118,,,,,,,,,,2025-08-01 08:00,2025-08-11 17:00,2025-08-01 08:00,2025-08-09 17:00,2025-11-20 17:00,2025-11-20 17:00,2025-11-25 10:00,2025-11-25 10:00,0,56,100
FAB110118A-02,SECAI ROUGH IN/SECURITY - FAB110118A,Complete,Toilet (M) 1 - 1F -SUW-FAB110118,,,,,,,,,,2025-08-08 08:00,2025-08-08 17:00,2025-08-09 08:00,2025-08-09 17:00,2025-11-20 17:00,2025-11-20 17:00,2025-11-25 10:00,2025-11-25 10:00,0,8,100
FAB110118A-03,INSTALL DOOR FRAMES - FAB110118A,Complete,Toilet (M) 1 - 1F -SUW-FAB110118,,,,,,,,,,2025-08-08 08:00,2025-08-08 17:00,2025-08-09 08:00,2025-08-09 17:00,2025-11-20 17:00,2025-11-20 17:00,2025-11-25 10:00,2025-11-25 10:00,0,8,100
FAB110118A-04,INSTALL DOOR & HARDWARE - FAB110118A,Active,Toilet (M) 1 - 1F -SUW-FAB110118,,,,,,,,,,2025-08-19 08:00,2025-08-25 17:00,2025-08-19 08:00,,2025-11-21 08:00,2025-11-27 17:00,2025-11-25 10:00,2025-12-02 10:00,40,40,0
FAB110118A-05,PAINT & PROTECT DOORS & FRAMES - FAB110118A,Not Started,Toilet (M) 1 - 1F -SUW-FAB110118,,,,,,,,,,2026-02-16 08:00,2026-02-19 15:00,,,2026-02-16 08:00,2026-02-19 15:00,2025-12-02 10:00,2025-12-05 17:00,30,30,0
FAB110118A-11,IMPACT - SECAI - MEP TRADES WORKING IN RESTROOMS,Complete,Toilet (M) 1 - 1F -SUW-FAB110118,,,,,,,,,,2025-06-20 08:00,2025-06-30 10:00,2025-06-13 08:00,2025-06-16 10:00,2025-11-20 17:00,2025-11-20 17:00,2025-11-25 10:00,2025-11-25 10:00,0,50,100
ZX-17930,IMPACT - MEP OBSTRUCTION - Toilet (M) 1-1F-SUW-FAB110118,Complete,Toilet (M) 1 - 1F -SUW-FAB110118,,,,,,,,,,2025-07-15 08:00,2025-07-28 17:00,2025-05-07 08:00,2025-05-28 16:00,2025-11-20 17:00,2025-11-20 17:00,2025-11-24 08:00,2025-11-24 08:00,0,80,100
ZX-10240,Complete Drywall & Inspect - Toilet (W) 1-1F-FAB110117,Complete,Toilet (W) 1 -1F -SUW-FAB110117,,,,,,,,,,2025-06-10 08:00,2025-06-23 17:00,2025-06-10 08:00,2025-07-18 17:00,2025-11-20 17:00,2025-11-20 17:00,2025-11-24 08:00,2025-11-24 08:00,0,80,100
FAB110117A-01,IMPACT - INSTALL/REWORK DRYWALL FRAMING AROUND DOORS - FAB110117A,Complete,Toilet (W) 1 -1F -SUW-FAB110117,,,,,,,,,,2025-08-08 08:00,2025-08-08 17:00,2025-08-08 08:00,2025-08-08 17:00,2025-11-20 17:00,2025-11-20 17:00,2025-11-25 10:00,2025-11-25 10:00,0,8,100
FAB110117A-02,SECAI ROUGH IN/SECURITY - FAB110117A,Complete,Toilet (W) 1 -1F -SUW-FAB110117,,,,,,,,,,2025-08-08 08:00,2025-08-08 17:00,2025-08-09 08:00,2025-08-09 17:00,2025-11-20 17:00,2025-11-20 17:00,2025-11-25 10:00,2025-11-25 10:00,0,8,100
FAB110117A-03,INSTALL DOOR FRAMES - FAB110117A,Complete,Toilet (W) 1 -1F -SUW-FAB110117,,,,,,,,,,2025-08-08 08:00,2025-08-08 17:00,2025-08-09 08:00,2025-08-09 17:00,2025-11-20 17:00,2025-11-20 17:00,2025-11-25 10:00,2025-11-25 10:00,0,8,100
FAB110117A-04,INSTALL DOOR & HARDWARE - FAB110117A,Active,Toilet (W) 1 -1F -SUW-FAB110117,,,,,,,,,,2025-10-10 08:00,2025-10-16 17:00,2025-10-10 08:00,,2025-11-21 08:00,2025-11-27 17:00,2025-11-25 10:00,2025-12-02 10:00,40,40,0
FAB110117A-05,PAINT & PROTECT DOORS & FRAMES - FAB110117A,Not Started,Toilet (W) 1 -1F -SUW-FAB110117,,,,,,,,,,2026-02-16 08:00,2026-02-19 15:00,,,2026-02-16 08:00,2026-02-19 15:00,2025-12-02 10:00,2025-12-05 17:00,30,30,0
ZX-17920,IMPACT - MEP OBSTRUCTION - Toilet (W) 1-1F-FAB110117,Complete,Toilet (W) 1 -1F -SUW-FAB110117,,,,,,,,,,2025-06-23 08:00,2025-07-04 17:00,2025-05-07 08:00,2025-05-28 16:00,2025-11-20 17:00,2025-11-20 17:00,2025-11-24 08:00,2025-11-24 08:00,0,80,100
ZX-18960,IMPACT - SECAI REMOVED DRYWALL - Toilet (W) 1-1F-FAB110117,Complete,Toilet (W) 1 -1F -SUW-FAB110117,,,,,,,,,,2025-06-27 08:00,2025-07-17 17:00,2025-06-27 08:00,2025-07-08 17:00,2025-11-20 17:00,2025-11-20 17:00,2025-11-24 08:00,2025-11-24 08:00,0,120,100
ZX-10540,Complete Drywall & Inspect - Elevator Mech Rm #01 - 1F-FAB110115,Complete,Elevator Mech Rm 1 - 1F -SUW-FAB110115,,,,,,,,,,2025-05-27 08:00,2025-06-02 17:00,2025-05-22 08:00,2025-05-27 16:00,2025-11-20 17:00,2025-11-20 17:00,2025-11-24 08:00,2025-11-24 08:00,0,40,100
ZX-10550,Complete Fire Caulk & Inspect - Elevator Mech Rm #01 - 1F-FAB110115,Complete,Elevator Mech Rm 1 - 1F -SUW-FAB110115,,,,,,,,,,2025-06-27 08:00,2025-06-30 17:00,2025-06-27 08:00,2025-06-30 16:00,2025-11-20 17:00,2025-11-20 17:00,2025-12-05 17:00,2025-12-05 17:00,0,16,100
ZX-10560,Complete Control Joint & Inspect - Elevator Mech Rm #01 - 1F-FAB110115,Complete,Elevator Mech Rm 1 - 1F -SUW-FAB110115,,,,,,,,,,2025-06-20 08:00,2025-06-23 17:00,2025-06-18 08:00,2025-06-19 16:00,2025-11-20 17:00,2025-11-20 17:00,2025-11-24 08:00,2025-11-24 08:00,0,16,100
FAB110115A-03,INSTALL DOOR FRAMES - FAB110115A,Complete,Elevator Mech Rm 1 - 1F -SUW-FAB110115,,,,,,,,,,2025-10-15 08:00,2025-10-15 17:00,2025-10-15 08:00,2025-10-15 17:00,2025-11-20 17:00,2025-11-20 17:00,2025-11-25 10:00,2025-11-25 10:00,0,8,100
FAB110115A-04,INSTALL DOOR & HARDWARE - FAB110115A,Active,Elevator Mech Rm 1 - 1F -SUW-FAB110115,,,,,,,,,,2025-10-24 08:00,2025-10-30 17:00,2025-10-24 08:00,,2025-11-21 08:00,2025-11-27 17:00,2025-11-25 10:00,2025-12-02 10:00,40,40,0
FAB110115A-05,PAINT & PROTECT DOORS & FRAMES - FAB110115A,Not Started,Elevator Mech Rm 1 - 1F -SUW-FAB110115,,,,,,,,,,2026-02-16 08:00,2026-02-19 15:00,,,2026-02-16 08:00,2026-02-19 15:00,2025-12-02 10:00,2025-12-05 17:00,30,30,0
ZX-18210,IMPACT - SECAI DENIAL OF ACCEL COST FOR BERG - Elevator Mech Rm #01 - 1F-FAB110115,Complete,Elevator Mech Rm 1 - 1F -SUW-FAB110115,,,,,,,,,,2025-05-27 08:00,2025-06-02 17:00,2025-05-28 08:00,2025-06-10 10:00,2025-11-20 17:00,2025-11-20 17:00,2025-11-24 08:00,2025-11-24 08:00,0,40,100
ZX-10030,Complete Drywall & Inspect - Elevator #1B-1F-1FAB-EL1B FRONTS BY MK MARLOW,Complete,Elevator 1B - 1F -SUW-FAB1-EL01B,,,,,,,,,,2025-06-10 08:00,2025-06-25 17:00,2025-06-10 08:00,2025-07-18 17:00,2025-11-20 17:00,2025-11-20 17:00,2025-12-05 17:00,2025-12-05 17:00,0,96,100
ZX-10040,Complete Fire Caulk & Inspect - Elevator #01B-1F-1FAB-EL1B- FRONTS BY MK MARLOW,Complete,Elevator 1B - 1F -SUW-FAB1-EL01B,,,,,,,,,,2025-07-17 08:00,2025-07-18 17:00,2025-07-17 08:00,2025-07-18 17:00,2025-11-20 17:00,2025-11-20 17:00,2025-12-05 17:00,2025-12-05 17:00,0,16,100
ZX-10050,Complete Control Joint & Inspect - Elevator #01B - 1F-1FAB-EL1B-FRONTS BY MK MARLOW,Complete,Elevator 1B - 1F -SUW-FAB1-EL01B,,,,,,,,,,2025-07-17 08:00,2025-07-18 17:00,2025-07-17 08:00,2025-07-18 17:00,2025-11-20 17:00,2025-11-20 17:00,2025-12-05 17:00,2025-12-05 17:00,0,16,100
ZX-17510,IMPACT - DESIGN WALL THCKNESS Drywall & Inspect - Elevator #1B-1F-1FAB-EL1B,Complete,Elevator 1B - 1F -SUW-FAB1-EL01B,,,,,,,,,,2025-05-07 08:00,2025-05-22 17:00,2025-05-07 08:00,2025-06-10 16:00,2025-11-20 17:00,2025-11-20 17:00,2025-12-05 17:00,2025-12-05 17:00,0,96,100
ZX-10330,Complete Drywall & Inspect - Elevator #01A - 1F-1FAB-EL1A,Complete,Elevator 1A - 1F -SUW-FAB1-EL01A,,,,,,,,,,2025-05-05 08:00,2025-05-23 17:00,2025-05-05 08:00,2025-05-30 16:00,2025-11-20 17:00,2025-11-20 17:00,2025-12-05 17:00,2025-12-05 17:00,0,120,100
ZX-10340,Complete Fire Caulk & Inspect - Elevator #01A - 1F-1FAB-EL1A,Complete,Elevator 1A - 1F -SUW-FAB1-EL01A,,,,,,,,,,2025-06-27 08:00,2025-06-30 17:00,2025-06-27 08:00,2025-06-30 16:00,2025-11-20 17:00,2025-11-20 17:00,2025-12-05 17:00,2025-12-05 17:00,0,16,100
ZX-10350,Complete Control Joint & Inspect - Elevator #01A - 1F-1FAB-EL1A,Complete,Elevator 1A - 1F -SUW-FAB1-EL01A,,,,,,,,,,2025-06-10 08:00,2025-06-11 17:00,2025-06-02 08:00,2025-06-03 16:00,2025-11-20 17:00,2025-11-20 17:00,2025-12-05 17:00,2025-12-05 17:00,0,16,100
ZX-10630,Complete Drywall & Inspect - Elevator Mech Rm #01A - 1F-FAB110102,Complete,Elevator Mech. Rm 1A - 1F -SUW-FAB110102,,,,,,,,,,2025-06-13 08:00,2025-06-19 17:00,2025-06-13 08:00,2025-06-16 16:00,2025-11-20 17:00,2025-11-20 17:00,2025-11-24 08:00,2025-11-24 08:00,0,40,100
ZX-10640,Complete Fire Caulk & Inspect - Elevator Mech Rm #01A - 1F-FAB110102,Complete,Elevator Mech. Rm 1A - 1F -SUW-FAB110102,,,,,,,,,,2025-06-27 08:00,2025-06-30 17:00,2025-06-27 08:00,2025-06-30 16:00,2025-11-20 17:00,2025-11-20 17:00,2025-12-05 17:00,2025-12-05 17:00,0,16,100
ZX-10650,Complete Control Joint & Inspect - Elevator Mech Rm #01A - 1F-FAB110102,Complete,Elevator Mech. Rm 1A - 1F -SUW-FAB110102,,,,,,,,,,2025-06-20 08:00,2025-06-30 17:00,2025-06-17 08:00,2025-06-19 16:00,2025-11-20 17:00,2025-11-20 17:00,2025-11-24 08:00,2025-11-24 08:00,0,56,100
FAB110102A-03,INSTALL DOOR FRAMES - FAB110102A,Complete,Elevator Mech. Rm 1A - 1F -SUW-FAB110102,,,,,,,,,,2025-06-16 13:00,2025-06-17 12:00,2025-03-18 00:00,2025-03-18 08:00,2025-11-20 17:00,2025-11-20 17:00,2025-11-25 10:00,2025-11-25 10:00,0,8,100
FAB110102A-04,INSTALL DOOR & HARDWARE - FAB110102A,Active,Elevator Mech. Rm 1A - 1F -SUW-FAB110102,,,,,,,,,,2025-09-25 08:00,2025-10-01 17:00,2025-09-25 08:00,,2025-11-21 08:00,2025-11-27 17:00,2025-11-25 10:00,2025-12-02 10:00,40,40,0
FAB110102A-05,PAINT & PROTECT DOORS & FRAMES - FAB110102A,Not Started,Elevator Mech. Rm 1A - 1F -SUW-FAB110102,,,,,,,,,,2026-02-16 08:00,2026-02-19 15:00,,,2026-02-16 08:00,2026-02-19 15:00,2025-12-02 10:00,2025-12-05 17:00,30,30,0
ZX-18220,IMPACT - SECAI DENIAL OF ACCEL COST FOR BERG - Elevator Mech Rm 1A-1F-FAB110102,Complete,Elevator Mech. Rm 1A - 1F -SUW-FAB110102,,,,,,,,,,2025-06-06 08:00,2025-06-12 17:00,2025-05-26 08:00,2025-06-10 16:00,2025-11-20 17:00,2025-11-20 17:00,2025-11-24 08:00,2025-11-24 08:00,0,40,100
ZX-10180,Complete Drywall & Inspect-Duct Shaft - 1F-SUW-FAB110103,Complete,Duct Shaft - 1F -SUW-FAB110103,,,,,,,,,,2025-08-19 08:00,2025-08-22 17:00,2025-08-07 08:00,2025-08-12 17:00,2025-11-20 17:00,2025-11-20 17:00,2025-11-24 08:00,2025-11-24 08:00,0,32,100
ZX-10190,Complete Fire Caulk & Inspect - Duct Shaft - 1F-SUW-FAB110103,Complete,Duct Shaft - 1F -SUW-FAB110103,,,,,,,,,,2025-08-25 08:00,2025-08-26 17:00,2025-08-13 08:00,2025-08-15 17:00,2025-11-20 17:00,2025-11-20 17:00,2025-12-05 17:00,2025-12-05 17:00,0,16,100
FAB110103A-01,IMPACT - INSTALL/REWORK DRYWALL FRAMING AROUND DOORS - FAB110103A,Complete,Duct Shaft - 1F -SUW-FAB110103,,,,,,,,,,2025-07-09 08:00,2025-07-17 17:00,2025-07-09 08:00,2025-07-17 17:00,2025-11-20 17:00,2025-11-20 17:00,2025-11-25 10:00,2025-11-25 10:00,0,56,100
FAB110103A-02,SECAI ROUGH IN/SECURITY - FAB110103A,Complete,Duct Shaft - 1F -SUW-FAB110103,,,,,,,,,,2025-07-17 08:00,2025-07-17 17:00,2025-07-17 08:00,2025-07-17 17:00,2025-11-20 17:00,2025-11-20 17:00,2025-11-25 10:00,2025-11-25 10:00,0,8,100
FAB110103A-03,INSTALL DOOR FRAMES - FAB110103A,Complete,Duct Shaft - 1F -SUW-FAB110103,,,,,,,,,,2025-07-17 08:00,2025-07-17 17:00,2025-07-17 08:00,2025-07-17 17:00,2025-11-20 17:00,2025-11-20 17:00,2025-11-25 10:00,2025-11-25 10:00,0,8,100
FAB110103A-04,INSTALL DOOR & HARDWARE - FAB110103A,Active,Duct Shaft - 1F -SUW-FAB110103,,,,,,,,,,2025-09-19 08:00,2025-09-25 17:00,2025-09-19 08:00,,2025-11-21 08:00,2025-11-27 17:00,2025-11-25 10:00,2025-12-02 10:00,40,40,0
FAB110103A-05,PAINT & PROTECT DOORS & FRAMES - FAB110103A,Not Started,Duct Shaft - 1F -SUW-FAB110103,,,,,,,,,,2026-02-16 08:00,2026-02-19 15:00,,,2026-02-16 08:00,2026-02-19 15:00,2025-12-02 10:00,2025-12-05 17:00,30,30,0
FAB110103A-11,IMPACT - PROCUREMENT - Reordered doors (Wall Thickness and Door Swing Design Changes),Complete,Duct Shaft - 1F -SUW-FAB110103,,,,,,,,,,2025-06-06 08:00,2025-08-14 17:00,2025-05-26 08:00,2025-07-14 17:00,2025-11-20 17:00,2025-11-20 17:00,2025-11-25 10:00,2025-11-25 10:00,0,400,100
ZX-10480,Complete Drywall & Inspect - Fire Alarm 1-1F-FAB110105,Complete,Fire Alarm 1 - 1F -SUW-FAB110105,,,,,,,,,,2025-09-30 08:00,2025-10-08 17:00,2025-06-04 16:00,2025-06-11 17:00,2025-11-20 17:00,2025-11-20 17:00,2025-11-24 08:00,2025-11-24 08:00,0,56,100
ZX-10490,Complete Fire Caulk & Inspect - Fire Alarm 1-1F-FAB110105,Complete,Fire Alarm 1 - 1F -SUW-FAB110105,,,,,,,,,,2025-10-09 08:00,2025-10-10 17:00,2025-06-04 16:00,2025-06-11 17:00,2025-11-20 17:00,2025-11-20 17:00,2025-12-05 17:00,2025-12-05 17:00,0,16,100
ZX-10500,Complete Control Joint & Inspect - Fire Alarm 1-1F-FAB110105,Complete,Fire Alarm 1 - 1F -SUW-FAB110105,,,,,,,,,,2025-10-09 08:00,2025-10-10 17:00,2025-06-04 16:00,2025-06-11 17:00,2025-11-20 17:00,2025-11-20 17:00,2025-11-24 08:00,2025-11-24 08:00,0,16,100
ZX-10780,Complete Drywall & Inspect - IT/Security 1-1F-FAB110109,Complete,IT/Security 1 - 1F -SUW-FAB110109,,,,,,,,,,2025-09-22 08:00,2025-09-30 17:00,2025-04-11 00:00,2025-04-17 17:00,2025-11-20 17:00,2025-11-20 17:00,2025-11-24 08:00,2025-11-24 08:00,0,56,100
ZX-10790,Complete Fire Caulk & Inspect - IT/Security 1-1F-FAB110109,Complete,IT/Security 1 - 1F -SUW-FAB110109,,,,,,,,,,2025-10-01 08:00,2025-10-02 17:00,2025-04-11 00:00,2025-04-17 17:00,2025-11-20 17:00,2025-11-20 17:00,2025-12-05 17:00,2025-12-05 17:00,0,16,100
ZX-10800,Complete Control Joint & Inspect - IT/Security 1-1F-FAB110109,Complete,IT/Security 1 - 1F -SUW-FAB110109,,,,,,,,,,2025-10-01 08:00,2025-10-02 17:00,2025-04-11 00:00,2025-04-17 17:00,2025-11-20 17:00,2025-11-20 17:00,2025-11-24 08:00,2025-11-24 08:00,0,16,100
TR-FAB110109A-03,INSTALL DOOR FRAMES - TR - FAB110109A,Complete,IT/Security 1 - 1F -SUW-FAB110109,,,,,,,,,,2025-08-04 13:00,2025-08-05 12:00,2025-05-07 12:00,2025-05-07 12:00,2025-11-20 17:00,2025-11-20 17:00,2025-11-25 10:00,2025-11-25 10:00,0,8,100
TR-FAB110109A-04,INSTALL DOOR & HARDWARE - TR - FAB110109A,Active,IT/Security 1 - 1F -SUW-FAB110109,,,,,,,,,,2025-09-26 08:00,2025-10-02 17:00,2025-09-26 08:00,,2025-11-21 08:00,2025-11-27 17:00,2025-11-25 10:00,2025-12-02 10:00,40,40,0
TR-FAB110109A-05,PAINT & PROTECT DOORS & FRAMES -  TR - FAB110109A,Not Started,IT/Security 1 - 1F -SUW-FAB110109,,,,,,,,,,2026-02-16 08:00,2026-02-19 15:00,,,2026-02-16 08:00,2026-02-19 15:00,2025-12-02 10:00,2025-12-05 17:00,30,30,0
ZX-10150,Complete Drywall & Inspect - Lab Vestibule - 1F-SUW-FAB112101,Complete,Lab Vestibule- 1F -FIZ-FAB112101,,,,,,,,,,2025-10-13 08:00,2025-10-17 17:00,2025-10-13 08:00,2025-11-04 08:00,2025-11-20 17:00,2025-11-20 17:00,2025-12-05 17:00,2025-12-05 17:00,0,40,100
ZX-10160,Complete Fire Caulk & Inspect - Lab Vestibule - 1F-SUW-FAB112101,Not Started,Lab Vestibule- 1F -FIZ-FAB112101,,,,,,,,,,2025-11-21 08:00,2025-11-24 17:00,,,2025-11-21 08:00,2025-11-24 17:00,2025-12-04 08:00,2025-12-05 17:00,16,16,0
ZX-10170,Complete Control Joint & Inspect - Lab Vestibule - 1F-SUW-FAB112101,Complete,Lab Vestibule- 1F -FIZ-FAB112101,,,,,,,,,,2025-10-30 08:00,2025-10-31 17:00,2025-10-30 08:00,2025-10-31 17:00,2025-11-20 17:00,2025-11-20 17:00,2025-12-05 17:00,2025-12-05 17:00,0,16,100
FAB112104A-00,SECAI SCP WALL FINISH - FAB112104A,Active,Lab Vestibule- 1F -FIZ-FAB112101,,,,,,,,,,2025-08-22 13:00,2025-08-25 12:00,2025-08-22 13:00,,2025-12-11 08:00,2025-12-18 17:00,2025-11-25 08:00,2025-12-02 17:00,48,8,0
FAB112104A-01,DOOR ASSEMBLY - FAB112104A,Not Started,Lab Vestibule- 1F -FIZ-FAB112101,,,,,,,,,,2025-12-19 08:00,2025-12-22 17:00,,,2025-12-19 08:00,2025-12-22 17:00,2025-12-03 08:00,2025-12-04 17:00,16,16,0
FAB112104A-02,DOOR PACKAGE INSTALL - FAB112104A,Not Started,Lab Vestibule- 1F -FIZ-FAB112101,,,,,,,,,,2025-12-22 08:00,2025-12-23 17:00,,,2025-12-22 08:00,2025-12-23 17:00,2025-12-04 08:00,2025-12-05 17:00,16,16,0
FAB112101A-00,SHOP DRAWINGS (RFI 9565) - PATRIOT - FAB112101A,Complete,Lab Vestibule- 1F -FIZ-FAB112101,,INTERIOR STAIRS,L1 - Fndn Slab,,,,,,,2025-07-03 08:00,2025-07-21 12:00,2025-07-03 07:00,2025-09-11 08:00,2025-11-20 17:00,2025-11-20 17:00,2025-11-06 17:00,2025-11-06 17:00,0,100,100
FAB112101A-01,SHOP DRAWINGS APPROVAL - JACOBS/SECAI - FAB112101A - N/1,Complete,Lab Vestibule- 1F -FIZ-FAB112101,,INTERIOR STAIRS,L1 - Fndn Slab,,,,,,,2025-09-11 08:00,2025-09-23 17:00,2025-09-11 08:00,2025-09-29 17:00,2025-11-20 17:00,2025-11-20 17:00,2025-11-06 17:00,2025-11-06 17:00,0,72,100
FAB112101A-02,HEADER/GOAL POST FABRICATION - PATRIOT - FAB112101A,Complete,Lab Vestibule- 1F -FIZ-FAB112101,,INTERIOR STAIRS,L1 - Fndn Slab,,,,,,,2025-10-08 08:00,2025-10-10 17:00,2025-09-30 08:00,2025-10-02 17:00,2025-11-20 17:00,2025-11-20 17:00,2025-11-06 17:00,2025-11-06 17:00,0,24,100
FAB112101A-03,HEADER/GOAL POST INSTALL - PATRIOT - FAB112101A - N/1,Complete,Lab Vestibule- 1F -FIZ-FAB112101,,INTERIOR STAIRS,L1 - Fndn Slab,,,,,,,2025-10-08 08:00,2025-10-09 17:00,2025-10-08 08:00,2025-10-09 17:00,2025-11-20 17:00,2025-11-20 17:00,2025-11-06 17:00,2025-11-06 17:00,0,16,100
FAB112101A-20,IMPACT - SCAFFOLD RAMP INSTALLED AT OPENING - FAB112101A,Complete,Lab Vestibule- 1F -FIZ-FAB112101,,,,,,,,,,2025-07-03 08:00,2025-07-29 15:00,2025-07-03 07:00,2025-07-30 17:00,2025-11-20 17:00,2025-11-20 17:00,2025-11-06 17:00,2025-11-06 17:00,0,150,100
FAB112101A-07,DOOR INSTALL - FAB112101A (OHC),Not Started,Lab Vestibule- 1F -FIZ-FAB112101,,,,,,,,,,2025-11-21 08:00,2025-11-24 17:00,,,2025-11-21 08:00,2025-11-24 17:00,2025-12-04 08:00,2025-12-05 17:00,16,16,0
ZX-11410,Complete Drywall & Inspect - Janitor Rm-1F-SUW-FAB110214,Complete,Janitor Rm - 1F -SUW-FAB110214,,,,,,,,,,2025-10-06 08:00,2025-10-07 17:00,2025-10-06 08:00,2025-10-07 17:00,2025-11-20 17:00,2025-11-20 17:00,2025-11-25 10:00,2025-11-25 10:00,0,16,100
FAB110214A-01,IMPACT - INSTALL/REWORK DRYWALL FRAMING AROUND DOORS - FAB110214A,Complete,Janitor Rm - 1F -SUW-FAB110214,,,,,,,,,,2025-10-03 08:00,2025-10-06 17:00,2025-10-03 08:00,2025-10-06 17:00,2025-11-20 17:00,2025-11-20 17:00,2025-11-25 10:00,2025-11-25 10:00,0,16,100
FAB110214A-02,SECAI ROUGH IN/SECURITY - FAB110214A,Complete,Janitor Rm - 1F -SUW-FAB110214,,,,,,,,,,2025-10-07 08:00,2025-10-07 17:00,2025-10-07 08:00,2025-10-07 17:00,2025-11-20 17:00,2025-11-20 17:00,2025-11-25 10:00,2025-11-25 10:00,0,8,100
FAB110214A-03,INSTALL DOOR FRAMES - FAB110214A,Complete,Janitor Rm - 1F -SUW-FAB110214,,,,,,,,,,2025-10-07 08:00,2025-10-07 17:00,2025-10-07 08:00,2025-10-07 17:00,2025-11-20 17:00,2025-11-20 17:00,2025-11-25 10:00,2025-11-25 10:00,0,8,100
FAB110214A-04,INSTALL DOOR & HARDWARE - FAB110214A,Active,Janitor Rm - 1F -SUW-FAB110214,,,,,,,,,,2025-09-09 08:00,2025-09-15 17:00,2025-09-09 08:00,,2025-11-21 08:00,2025-11-27 17:00,2025-11-25 10:00,2025-12-02 10:00,40,40,0
FAB110214A-05,PAINT & PROTECT DOORS & FRAMES - FAB110214A,Not Started,Janitor Rm - 1F -SUW-FAB110214,,,,,,,,,,2026-02-16 08:00,2026-02-19 15:00,,,2026-02-16 08:00,2026-02-19 15:00,2025-12-02 10:00,2025-12-05 17:00,30,30,0
FAB110214A-11,IMPACT - SECAI - MEP TRADES WORKING IN RESTROOMS,Complete,Janitor Rm - 1F -SUW-FAB110214,,,,,,,,,,2025-10-02 08:00,2025-10-02 17:00,2025-10-02 08:00,2025-10-02 17:00,2025-11-20 17:00,2025-11-20 17:00,2025-11-25 10:00,2025-11-25 10:00,0,8,100
ZX-16090,Complete Drywall & Inspect - Vestibule - 1F-SUW-FAB110515,Complete,Vestibule - 1F -SUW-FAB110515,,,,,,,,,,2025-06-20 08:00,2025-07-07 17:00,2025-06-16 08:00,2025-06-27 16:00,2025-11-20 17:00,2025-11-20 17:00,2025-11-18 10:00,2025-11-18 10:00,0,96,100
ZX-16100,Complete Fire Caulk & Inspect - Vestibule - 1F-SUW-FAB110515,Complete,Vestibule - 1F -SUW-FAB110515,,,,,,,,,,2025-08-21 08:00,2025-08-22 17:00,2025-08-21 08:00,2025-08-22 17:00,2025-11-20 17:00,2025-11-20 17:00,2025-12-05 17:00,2025-12-05 17:00,0,16,100
ZX-16110,Complete Control Joint & Inspect - Vestibule - 1F-SUW-FAB110515,Complete,Vestibule - 1F -SUW-FAB110515,,,,,,,,,,2025-06-30 08:00,2025-07-01 17:00,2025-06-30 08:00,2025-07-01 16:00,2025-11-20 17:00,2025-11-20 17:00,2025-11-18 10:00,2025-11-18 10:00,0,16,100
ZX-17860,IMPACT - SECAI DENIAL OF ACCEL COST FOR BERG - Vestibule - 1F-SUW-FAB110515,Complete,Vestibule - 1F -SUW-FAB110515,,,,,,,,,,2025-05-27 08:00,2025-05-29 17:00,2025-05-19 08:00,2025-06-10 16:00,2025-11-20 17:00,2025-11-20 17:00,2025-11-18 10:00,2025-11-18 10:00,0,24,100
ZX-16680,Complete Drywall & Inspect - Stair #02 SUW- 1F- FAB1-ST02,Complete,Stair 2 - 1F -SUW-FAB1-ST02,,,,,,,,,,2025-05-13 08:00,2025-05-26 17:00,2025-05-13 08:00,2025-08-18 08:00,2025-11-20 17:00,2025-11-20 17:00,2025-11-18 10:00,2025-11-18 10:00,0,80,100
ZX-16690,SECAI TOOK OVER FOR ACELERATION - Complete Fire Caulk & Inspect - Stair #02 SUW- 1F- FAB1-ST02,Complete,Stair 2 - 1F -SUW-FAB1-ST02,,,,,,,,,,2025-08-18 08:00,2025-08-19 17:00,2025-08-18 08:00,2025-08-18 17:00,2025-11-20 17:00,2025-11-20 17:00,2025-12-05 17:00,2025-12-05 17:00,0,16,100
ZX-16700,Complete Control Joint & Inspect - Stair #02 SUW- 1F- FAB1-ST02,Complete,Stair 2 - 1F -SUW-FAB1-ST02,,,,,,,,,,2025-08-15 08:00,2025-08-18 17:00,2025-08-15 08:00,2025-08-18 17:00,2025-11-20 17:00,2025-11-20 17:00,2025-12-05 17:00,2025-12-05 17:00,0,16,100
ZX-17980,IMPACT - ONGOING WORK INSIDE CHASE - Stair #02 SUW- 1F- FAB1-ST02,Complete,Stair 2 - 1F -SUW-FAB1-ST02,,,,,,,,,,2025-05-13 08:00,2025-05-26 17:00,2025-05-13 08:00,2025-08-08 08:00,2025-11-20 17:00,2025-11-20 17:00,2025-11-18 10:00,2025-11-18 10:00,0,80,100
FAB1-ST02A-01,IMPACT - INSTALL/REWORK DRYWALL FRAMING AROUND DOORS - FAB1-ST02A,Complete,Stair 2 - 1F -SUW-FAB1-ST02,,,,,,,,,,2025-05-01 08:00,2025-05-09 17:00,2025-05-01 08:00,2025-05-06 17:00,2025-11-20 17:00,2025-11-20 17:00,2025-11-25 08:00,2025-11-25 08:00,0,56,100
FAB1-ST02A-02,SECAI ROUGH IN/SECURITY - FAB1-ST02A,Complete,Stair 2 - 1F -SUW-FAB1-ST02,,,,,,,,,,2025-05-06 08:00,2025-05-06 17:00,2025-05-06 08:00,2025-05-06 17:00,2025-11-20 17:00,2025-11-20 17:00,2025-12-02 08:00,2025-12-02 08:00,0,8,100
FAB1-ST02A-03,INSTALL DOOR FRAMES - FAB1-ST02A,Complete,Stair 2 - 1F -SUW-FAB1-ST02,,,,,,,,,,2025-05-06 08:00,2025-05-06 17:00,2025-05-06 08:00,2025-05-06 17:00,2025-11-20 17:00,2025-11-20 17:00,2025-12-02 08:00,2025-12-02 08:00,0,8,100
FAB1-ST02A-04,DOOR INSTALL - FAB1-ST02A,Complete,Stair 2 - 1F -SUW-FAB1-ST02,,,,,,,,,,2025-09-16 08:00,2025-09-16 17:00,2025-09-16 08:00,2025-09-16 17:00,2025-11-20 17:00,2025-11-20 17:00,2025-12-02 08:00,2025-12-02 08:00,0,8,100
FAB1-ST02A-05,PAINT & PROTECT DOORS & FRAMES - FAB1-ST02A,Complete,Stair 2 - 1F -SUW-FAB1-ST02,,,,,,,,,,2025-10-14 08:00,2025-10-17 17:00,2025-10-14 08:00,2025-10-17 17:00,2025-11-20 17:00,2025-11-20 17:00,2025-12-02 08:00,2025-12-02 08:00,0,32,100
FAB1-ST02A-06,INSTALL DOOR HARDWARE - FAB1-ST02A,Not Started,Stair 2 - 1F -SUW-FAB1-ST02,,,,,,,,,,2025-11-21 08:00,2025-11-26 17:00,,,2025-11-21 08:00,2025-11-26 17:00,2025-12-02 08:00,2025-12-05 17:00,32,32,0
ZX-16820,Complete Drywall & Inspect - Stair #03 SUW- 1F- FAB1-ST03,Complete,Stair 3 - 1F -SUW-FAB1-ST03,,,,,,,,,,2025-05-13 08:00,2025-05-26 17:00,2025-05-13 08:00,2025-10-13 08:00,2025-11-20 17:00,2025-11-20 17:00,2025-12-05 17:00,2025-12-05 17:00,0,80,100
ZX-16830,Complete Fire Caulk & Inspect - Stair #03 SUW- 1F- FAB1-ST03,Complete,Stair 3 - 1F -SUW-FAB1-ST03,,,,,,,,,,2025-10-10 08:00,2025-10-13 17:00,2025-10-10 08:00,2025-10-13 17:00,2025-11-20 17:00,2025-11-20 17:00,2025-12-05 17:00,2025-12-05 17:00,0,16,100
ZX-16840,Complete Control Joint & Inspect - Stair #03 SUW- 1F- FAB1-ST03,Complete,Stair 3 - 1F -SUW-FAB1-ST03,,,,,,,,,,2025-10-10 08:00,2025-10-13 17:00,2025-10-10 08:00,2025-10-13 17:00,2025-11-20 17:00,2025-11-20 17:00,2025-12-05 17:00,2025-12-05 17:00,0,16,100
ZX-17990,COMPLETE WORK INSIDE CHASE - Stair #03 SUW- 1F- FAB1-ST03,Complete,Stair 3 - 1F -SUW-FAB1-ST03,,,,,,,,,,2025-05-13 08:00,2025-05-26 17:00,2025-05-13 08:00,2025-10-10 17:00,2025-11-20 17:00,2025-11-20 17:00,2025-12-05 17:00,2025-12-05 17:00,0,80,100
ZX-18500,IMPACT - SECAI ISSUED STOP WORK NOTICE,Complete,Stair 3 - 1F -SUW-FAB1-ST03,,,,,,,,,,2025-06-12 08:00,2025-06-25 17:00,2025-06-12 08:00,2025-09-19 08:00,2025-11-20 17:00,2025-11-20 17:00,2025-12-05 17:00,2025-12-05 17:00,0,80,100
FAB1-ST03A-01,IMPACT - INSTALL/REWORK DRYWALL FRAMING AROUND DOORS - FAB1-ST03A,Complete,Stair 3 - 1F -SUW-FAB1-ST03,,,,,,,,,,2025-09-26 08:00,2025-09-29 17:00,2025-09-26 08:00,2025-09-29 17:00,2025-11-20 17:00,2025-11-20 17:00,2025-11-25 08:00,2025-11-25 08:00,0,16,100
FAB1-ST03A-02,SECAI ROUGH IN/SECURITY - FAB1-ST03AA,Complete,Stair 3 - 1F -SUW-FAB1-ST03,,,,,,,,,,2025-09-29 08:00,2025-09-29 17:00,2025-09-29 08:00,2025-09-29 17:00,2025-11-20 17:00,2025-11-20 17:00,2025-11-25 08:00,2025-11-25 08:00,0,8,100
FAB1-ST03A-03,INSTALL DOOR FRAMES - FAB1-ST03A,Complete,Stair 3 - 1F -SUW-FAB1-ST03,,,,,,,,,,2025-09-29 08:00,2025-09-29 17:00,2025-09-29 08:00,2025-09-29 17:00,2025-11-20 17:00,2025-11-20 17:00,2025-11-25 08:00,2025-11-25 08:00,0,8,100
FAB1-ST03A-04,INSTALL DOOR & HARDWARE - FAB1-ST03A,Active,Stair 3 - 1F -SUW-FAB1-ST03,,,,,,,,,,2025-10-13 08:00,2025-10-17 17:00,2025-10-13 08:00,,2025-11-21 08:00,2025-11-27 17:00,2025-11-25 08:00,2025-12-01 17:00,40,40,0
FAB1-ST03A-05,PAINT & PROTECT DOORS & FRAMES - FAB1-ST03A,Not Started,Stair 3 - 1F -SUW-FAB1-ST03,,,,,,,,,,2026-02-16 08:00,2026-02-19 17:00,,,2026-02-16 08:00,2026-02-19 17:00,2025-12-02 08:00,2025-12-05 17:00,32,32,0
ZX-16910,Complete Drywall & Inspect - Stair #20 SUE- 1F- FAB1-ST20,Complete,Stair 20 - 1F -SUE- FAB1-ST20,,,,,,,,,,2025-05-13 08:00,2025-05-26 17:00,2025-05-13 08:00,2025-09-15 08:00,2025-11-20 17:00,2025-11-20 17:00,2025-12-05 17:00,2025-12-05 17:00,0,80,100
ZX-16920,Complete Fire Caulk & Inspect - Stair #20 SUE- 1F- FAB1-ST20,Complete,Stair 20 - 1F -SUE- FAB1-ST20,,,,,,,,,,2025-10-13 08:00,2025-10-14 17:00,2025-10-13 08:00,2025-10-14 17:00,2025-11-20 17:00,2025-11-20 17:00,2025-12-05 17:00,2025-12-05 17:00,0,16,100
ZX-16930,Complete Control Joint & Inspect - Stair #20 SUE- 1F- FAB1-ST20,Complete,Stair 20 - 1F -SUE- FAB1-ST20,,,,,,,,,,2025-09-12 08:00,2025-09-15 17:00,2025-09-12 08:00,2025-09-15 17:00,2025-11-20 17:00,2025-11-20 17:00,2025-12-05 17:00,2025-12-05 17:00,0,16,100
ZX-18000,IMPACT - ONGOING WORK INSIDE CHASE - Stair #20 SUE- 1F- FAB1-ST20,Complete,Stair 20 - 1F -SUE- FAB1-ST20,,,,,,,,,,2025-05-13 08:00,2025-05-26 17:00,2025-05-13 08:00,2025-09-04 08:00,2025-11-20 17:00,2025-11-20 17:00,2025-12-05 17:00,2025-12-05 17:00,0,80,100
FAB1-ST20A-01,IMPACT - INSTALL/REWORK DRYWALL FRAMING AROUND DOORS - FAB1-ST20A HANDED OVER TO SECAI ON 09/02,Complete,Stair 20 - 1F -SUE- FAB1-ST20,,,,,,,,,,2025-09-01 08:00,2025-09-02 17:00,2025-09-02 08:00,2025-09-02 17:00,2025-11-20 17:00,2025-11-20 17:00,2025-11-25 08:00,2025-11-25 08:00,0,16,100
FAB1-ST20A-02,SECAI ROUGH IN/SECURITY - FAB1-ST20A HANDED OVER TO SECAI ON 09/02,Complete,Stair 20 - 1F -SUE- FAB1-ST20,,,,,,,,,,2025-09-02 08:00,2025-09-02 17:00,2025-09-02 08:00,2025-09-02 17:00,2025-11-20 17:00,2025-11-20 17:00,2025-11-25 08:00,2025-11-25 08:00,0,8,100
FAB1-ST20A-03,INSTALL DOOR FRAME BY SECAI - FAB1-ST20A HANDED OVER ON 09/02,Complete,Stair 20 - 1F -SUE- FAB1-ST20,,,,,,,,,,2025-09-02 08:00,2025-09-02 17:00,2025-09-02 08:00,2025-10-27 17:00,2025-11-20 17:00,2025-11-20 17:00,2025-11-25 08:00,2025-11-25 08:00,0,8,100
FAB1-ST20A-04,INSTALL DOOR & HARDWARE - FAB1-ST20A,Active,Stair 20 - 1F -SUE- FAB1-ST20,,,,,,,,,,2025-10-28 08:00,2025-11-03 17:00,2025-10-28 08:00,,2025-11-21 08:00,2025-11-27 17:00,2025-11-25 08:00,2025-12-01 17:00,40,40,0
FAB1-ST20A-05,PAINT & PROTECT DOORS & FRAMES - FAB1-ST20A,Not Started,Stair 20 - 1F -SUE- FAB1-ST20,,,,,,,,,,2026-02-16 08:00,2026-02-19 17:00,,,2026-02-16 08:00,2026-02-19 17:00,2025-12-02 08:00,2025-12-05 17:00,32,32,0
ZX-17050,Complete Drywall & Inspect - Stair #21 SUE- 1F- FAB1-ST20,Complete,Stair 21 - 1F -SUE- FAB1-ST21,,,,,,,,,,2025-05-13 08:00,2025-05-26 17:00,2025-05-13 08:00,2025-09-15 08:00,2025-11-20 17:00,2025-11-20 17:00,2025-11-25 08:00,2025-11-25 08:00,0,80,100
ZX-17060,Complete Fire Caulk & Inspect - Stair #21 SUE- 1F- FAB1-ST20,Complete,Stair 21 - 1F -SUE- FAB1-ST21,,,,,,,,,,2025-09-29 08:00,2025-09-30 17:00,2025-09-29 08:00,2025-09-30 17:00,2025-11-20 17:00,2025-11-20 17:00,2025-12-05 17:00,2025-12-05 17:00,0,16,100
ZX-17070,Complete Control Joint & Inspect - Stair #21 SUE- 1F- FAB1-ST20,Complete,Stair 21 - 1F -SUE- FAB1-ST21,,,,,,,,,,2025-09-12 08:00,2025-09-15 17:00,2025-09-12 08:00,2025-09-15 17:00,2025-11-20 17:00,2025-11-20 17:00,2025-11-25 08:00,2025-11-25 08:00,0,16,100
ZX-18010,IMPACT - ONGOING WORK INSIDE CHASE - Stair #21 SUE- 1F- FAB1-ST20,Complete,Stair 21 - 1F -SUE- FAB1-ST21,,,,,,,,,,2025-05-13 08:00,2025-05-26 17:00,2025-05-13 08:00,2025-08-08 17:00,2025-11-20 17:00,2025-11-20 17:00,2025-11-25 08:00,2025-11-25 08:00,0,80,100
FAB1-ST21A-03,INSTALL DOOR FRAMES - FAB1-ST21A,Complete,Stair 21 - 1F -SUE- FAB1-ST21,,,,,,,,,,2025-11-06 08:00,2025-11-06 17:00,2025-11-06 08:00,2025-11-06 17:00,2025-11-20 17:00,2025-11-20 17:00,2025-11-25 08:00,2025-11-25 08:00,0,8,100
FAB1-ST21A-04,INSTALL DOOR & HARDWARE - FAB1-ST21A,Active,Stair 21 - 1F -SUE- FAB1-ST21,,,,,,,,,,2025-11-07 08:00,2025-11-13 17:00,2025-11-07 08:00,,2025-11-21 08:00,2025-11-27 17:00,2025-11-25 08:00,2025-12-01 17:00,40,40,0
FAB1-ST21A-05,PAINT & PROTECT DOORS & FRAMES - FAB1-ST21A,Not Started,Stair 21 - 1F -SUE- FAB1-ST21,,,,,,,,,,2026-02-16 08:00,2026-02-19 17:00,,,2026-02-16 08:00,2026-02-19 17:00,2025-12-02 08:00,2025-12-05 17:00,32,32,0
ZX-17140,Complete Drywall & Inspect - Stair #04 SUW- 1F- FAB1-ST04 - MKMARLOW,Complete,Stair 4 - 1F -SUW-FAB1-ST04,,,,,,,,,,2025-06-10 08:00,2025-06-23 17:00,2025-06-10 08:00,2025-08-28 17:00,2025-11-20 17:00,2025-11-20 17:00,2025-12-05 17:00,2025-12-05 17:00,0,80,100
ZX-17150,Complete Fire Caulk & Inspect - Stair #04 SUW- 1F- FAB1-ST04 - MKMARLOW,Complete,Stair 4 - 1F -SUW-FAB1-ST04,,,,,,,,,,2025-08-27 08:00,2025-08-28 17:00,2025-08-27 08:00,2025-08-28 17:00,2025-11-20 17:00,2025-11-20 17:00,2025-12-05 17:00,2025-12-05 17:00,0,16,100
ZX-17160,Complete Control Joint & Inspect - Stair #04 SUW- 1F- FAB1-ST04 - MKMARLOW,Complete,Stair 4 - 1F -SUW-FAB1-ST04,,,,,,,,,,2025-08-27 08:00,2025-08-28 17:00,2025-08-27 08:00,2025-08-28 17:00,2025-11-20 17:00,2025-11-20 17:00,2025-12-05 17:00,2025-12-05 17:00,0,16,100
FAB1-ST04A-01,IMPACT - INSTALL/REWORK DRYWALL FRAMING AROUND DOORS - FAB1-ST04A,Complete,Stair 4 - 1F -SUW-FAB1-ST04,,,,,,,,,,2025-05-23 08:00,2025-06-02 17:00,2025-05-23 08:00,2025-05-27 17:00,2025-11-20 17:00,2025-11-20 17:00,2025-11-25 08:00,2025-11-25 08:00,0,56,100
FAB1-ST04A-02,SECAI ROUGH IN/SECURITY - FAB1-ST04A,Complete,Stair 4 - 1F -SUW-FAB1-ST04,,,,,,,,,,2025-05-27 08:00,2025-05-27 17:00,2025-05-27 08:00,2025-05-27 17:00,2025-11-20 17:00,2025-11-20 17:00,2025-11-25 08:00,2025-11-25 08:00,0,8,100
FAB1-ST04A-03,INSTALL DOOR FRAMES - FAB1-ST04A,Complete,Stair 4 - 1F -SUW-FAB1-ST04,,,,,,,,,,2025-05-27 08:00,2025-05-27 17:00,2025-05-27 08:00,2025-05-27 17:00,2025-11-20 17:00,2025-11-20 17:00,2025-11-25 08:00,2025-11-25 08:00,0,8,100
FAB1-ST04A-04,INSTALL DOOR & HARDWARE - FAB1-ST04A,Active,Stair 4 - 1F -SUW-FAB1-ST04,,,,,,,,,,2025-09-29 08:00,2025-10-03 17:00,2025-09-29 08:00,,2025-11-21 08:00,2025-11-27 17:00,2025-11-25 08:00,2025-12-01 17:00,40,40,0
FAB1-ST04A-05,PAINT & PROTECT DOORS & FRAMES - FAB1-ST04A,Not Started,Stair 4 - 1F -SUW-FAB1-ST04,,,,,,,,,,2026-02-16 08:00,2026-02-19 17:00,,,2026-02-16 08:00,2026-02-19 17:00,2025-12-02 08:00,2025-12-05 17:00,32,32,0
ZX-17280,SECAI TURNOVER FOR ACELERATION - Drywall & Inspect - Stair #19 SUE- 1F- FAB1-ST19 BAKER/DESCOPE,Complete,Stair 19 - 1F -SUE- FAB1-ST19,,,,,,,,,,2025-06-10 08:00,2025-06-23 17:00,2025-06-10 08:00,2025-06-10 16:00,2025-11-20 17:00,2025-11-20 17:00,2025-12-05 17:00,2025-12-05 17:00,0,80,100
ZX-17290,SECAI TURNOVER FOR ACELERATION - Fire Caulk & Inspect - Stair #19 SUE- 1F- FAB1-ST19 BAKER/DESCOPE,Complete,Stair 19 - 1F -SUE- FAB1-ST19,,,,,,,,,,2025-06-10 08:00,2025-06-11 17:00,2025-06-10 08:00,2025-06-10 17:00,2025-11-20 17:00,2025-11-20 17:00,2025-12-05 17:00,2025-12-05 17:00,0,16,100
ZX-17300,SECAI TURNOVER FOR ACELERATION - Control Joint & Inspect - Stair #19 SUE- 1F- FAB1-ST19 BAKER/DESCOPE,Complete,Stair 19 - 1F -SUE- FAB1-ST19,,,,,,,,,,2025-06-10 08:00,2025-06-11 17:00,2025-06-10 08:00,2025-06-10 16:00,2025-11-20 17:00,2025-11-20 17:00,2025-12-05 17:00,2025-12-05 17:00,0,16,100
ZX-18340,SECAI TURNOVER FOR ACELERATION - Stair #19 SUE- 3F- FAB1-ST19 BAKER/DESCOPE,Complete,Stair 19 - 1F -SUE- FAB1-ST19,,,,,,,,,,2025-06-06 08:00,2025-06-19 17:00,2025-06-10 08:00,2025-06-10 08:00,2025-11-20 17:00,2025-11-20 17:00,2025-12-05 17:00,2025-12-05 17:00,0,80,100
FAB1-ST19A-04,INSTALL DOOR & HARDWARE - FAB1-ST19A,Active,Stair 19 - 1F -SUE- FAB1-ST19,,,,,,,,,,2025-11-07 08:00,2025-11-13 17:00,2025-11-07 08:00,,2025-11-21 08:00,2025-11-27 17:00,2025-11-25 08:00,2025-12-01 17:00,40,40,0
FAB1-ST19A-05,PAINT & PROTECT DOORS & FRAMES - FAB1-ST19A,Not Started,Stair 19 - 1F -SUE- FAB1-ST19,,,,,,,,,,2026-02-16 08:00,2026-02-19 17:00,,,2026-02-16 08:00,2026-02-19 17:00,2025-12-02 08:00,2025-12-05 17:00,32,32,0
ZX-17580,Complete Drywall & Inspect - D-J/33-1F,Complete,D-J/33 - 1F - FAB,,,,,,,,,,2025-06-10 08:00,2025-06-23 17:00,2025-05-23 08:00,2025-06-04 16:00,2025-11-20 17:00,2025-11-20 17:00,2025-12-05 17:00,2025-12-05 17:00,0,80,100
ZX-17620,Complete Fire Caulk & Inspect - Duct Shaft Vestibule - 1F-SUW-FAB110514,Complete,Duct Shaft Vestibule - 1F -SUW-FAB110514,,,,,,,,,,2025-08-22 08:00,2025-08-25 17:00,2025-08-22 08:00,2025-08-25 08:00,2025-11-20 17:00,2025-11-20 17:00,2025-12-05 17:00,2025-12-05 17:00,0,16,100
ZX-17630,Complete Control Joint & Inspect - Duct Shaft Vestibule - 1F-SUW-FAB110514,Complete,Duct Shaft Vestibule - 1F -SUW-FAB110514,,,,,,,,,,2025-06-24 08:00,2025-06-25 17:00,2025-06-18 08:00,2025-06-19 16:00,2025-11-20 17:00,2025-11-20 17:00,2025-11-24 10:00,2025-11-24 10:00,0,16,100
ZX-17640,Complete Drywall & Inspect - Duct Shaft Vestibule - 1F-SUW-FAB110514,Complete,Duct Shaft Vestibule - 1F -SUW-FAB110514,,,,,,,,,,2025-06-10 08:00,2025-06-18 17:00,2025-06-10 08:00,2025-06-19 16:00,2025-11-20 17:00,2025-11-20 17:00,2025-11-24 10:00,2025-11-24 10:00,0,56,100
ZX-17820,IMPACT - SECAI DENIAL OF ACCEL COST FOR BERG - Duct Shaft Vestibule - 1F-SUW-FAB110514,Complete,Duct Shaft Vestibule - 1F -SUW-FAB110514,,,,,,,,,,2025-06-06 08:00,2025-06-12 17:00,2025-06-02 08:00,2025-06-10 16:00,2025-11-20 17:00,2025-11-20 17:00,2025-11-24 10:00,2025-11-24 10:00,0,40,100
ZX-17650,Complete Fire Caulk & Inspect - Duct Shaft Vestibule - 1F-SUW-FAB110310,Complete,Duct Shaft Vestibule - 1F -SUW-FAB110310,,,,,,,,,,2025-08-25 08:00,2025-08-26 17:00,2025-08-22 08:00,2025-08-25 17:00,2025-11-20 17:00,2025-11-20 17:00,2025-12-05 17:00,2025-12-05 17:00,0,16,100
ZX-17660,Complete Control Joint & Inspect - Duct Shaft Vestibule - 1F-SUW-FAB110310,Complete,Duct Shaft Vestibule - 1F -SUW-FAB110310,,,,,,,,,,2025-08-21 08:00,2025-08-22 17:00,2025-08-21 08:00,2025-08-22 17:00,2025-11-20 17:00,2025-11-20 17:00,2025-12-05 17:00,2025-12-05 17:00,0,16,100
ZX-17670,Complete Drywall & Inspect - Duct Shaft Vestibule - 1F-SUW-FAB110310,Complete,Duct Shaft Vestibule - 1F -SUW-FAB110310,,,,,,,,,,2025-09-02 08:00,2025-09-10 17:00,2025-08-16 08:00,2025-08-18 17:00,2025-11-20 17:00,2025-11-20 17:00,2025-12-05 17:00,2025-12-05 17:00,0,56,100
ZX-17830,IMPACT - SECAI DENIAL OF ACCEL COST FOR BERG - Duct Shaft Vestibule - 1F-SUW-FAB110310,Complete,Duct Shaft Vestibule - 1F -SUW-FAB110310,,,,,,,,,,2025-06-06 08:00,2025-06-12 17:00,2025-06-02 08:00,2025-06-10 16:00,2025-11-20 17:00,2025-11-20 17:00,2025-11-25 08:00,2025-11-25 08:00,0,40,100
ZX-17710,Complete Fire Caulk & Inspect - Duct Shaft Vestibule - 1F-SUW-FAB110122,Complete,Duct Shaft Vestibule - 1F -SUW-FAB110122,,,,,,,,,,2025-09-03 08:00,2025-09-04 17:00,2025-08-25 08:00,2025-08-26 17:00,2025-11-20 17:00,2025-11-20 17:00,2025-12-05 17:00,2025-12-05 17:00,0,16,100
ZX-17720,Complete Control Joint & Inspect - Duct Shaft Vestibule - 1F-SUW-FAB110122,Complete,Duct Shaft Vestibule - 1F -SUW-FAB110122,,,,,,,,,,2025-09-04 08:00,2025-09-05 17:00,2025-09-04 08:00,2025-09-05 17:00,2025-11-20 17:00,2025-11-20 17:00,2025-11-18 10:00,2025-11-18 10:00,0,16,100
ZX-17730,Complete Drywall & Inspect - Duct Shaft Vestibule - 1F-SUW-FAB110122,Complete,Duct Shaft Vestibule - 1F -SUW-FAB110122,,,,,,,,,,2025-08-15 08:00,2025-08-25 17:00,2025-08-07 08:00,2025-08-25 08:00,2025-11-20 17:00,2025-11-20 17:00,2025-11-18 10:00,2025-11-18 10:00,0,56,100
ZX-17840,IMPACT - SECAI DENIAL OF ACCEL COST FOR BERG - Duct Shaft Vestibule - 1F-SUW-FAB110122 AXIOS/DESCOPE,Complete,Duct Shaft Vestibule - 1F -SUW-FAB110122,,,,,,,,,,2025-06-06 08:00,2025-06-12 17:00,2025-06-02 08:00,2025-06-05 16:00,2025-11-20 17:00,2025-11-20 17:00,2025-11-18 10:00,2025-11-18 10:00,0,40,100
ZX-18120,Complete Drywall & Inspect - Stair 18 SUE- 1F- FAB1-ST18,Complete,Stair 18 - 1F -SUE- FAB1-ST18,,,,,,,,,,2025-09-29 08:00,2025-10-03 17:00,2025-09-29 08:00,2025-10-03 17:00,2025-11-20 17:00,2025-11-20 17:00,2025-12-05 17:00,2025-12-05 17:00,0,40,100
ZX-18130,Complete Fire Caulk & Inspect - Stair 18 SUE- 1F- FAB1-ST18,Complete,Stair 18 - 1F -SUE- FAB1-ST18,,,,,,,,,,2025-10-27 08:00,2025-10-28 17:00,2025-10-27 08:00,2025-10-28 17:00,2025-11-20 17:00,2025-11-20 17:00,2025-12-05 17:00,2025-12-05 17:00,0,16,100
ZX-18140,Complete Control Joint & Inspect - Stair #18 SUE- 1F- FAB1-ST18,Complete,Stair 18 - 1F -SUE- FAB1-ST18,,,,,,,,,,2025-10-02 08:00,2025-10-03 17:00,2025-10-02 08:00,2025-10-03 17:00,2025-11-20 17:00,2025-11-20 17:00,2025-12-05 17:00,2025-12-05 17:00,0,16,100
FAB110204D-03,INSTALL DOOR FRAMES - FAB110204D,Complete,Gas Purifier Rm - 1F -SUW-FAB110204,,,,,,,,,,2025-06-20 08:00,2025-06-20 17:00,2025-06-20 08:00,2025-06-20 16:00,2025-11-20 17:00,2025-11-20 17:00,2025-12-02 10:00,2025-12-02 10:00,0,8,100
FAB110204D-04,DOOR INSTALL - FAB110204D,Complete,Gas Purifier Rm - 1F -SUW-FAB110204,,,,,,,,,,2025-08-05 08:00,2025-08-05 17:00,2025-08-05 08:00,2025-08-05 17:00,2025-11-20 17:00,2025-11-20 17:00,2025-12-05 17:00,2025-12-05 17:00,0,8,100
FAB110204D-00,IMPACT - PATRIOT CLADDING HEADER FIX - FAB110204D,Complete,Gas Purifier Rm - 1F -SUW-FAB110204,,,,,,,,,,2025-06-13 08:00,2025-06-23 17:00,2025-06-02 09:51,2025-06-06 16:00,2025-11-20 17:00,2025-11-20 17:00,2025-12-02 10:00,2025-12-02 10:00,0,56,100
FAB110204D-02,SECAI ROUGH IN FRAME - FAB110204D,Complete,Gas Purifier Rm - 1F -SUW-FAB110204,,,,,,,,,,2025-06-23 08:00,2025-06-23 17:00,2025-06-20 08:00,2025-06-20 16:00,2025-11-20 17:00,2025-11-20 17:00,2025-12-05 17:00,2025-12-05 17:00,0,8,100
FAB110204D-07,DOOR FRAME PAINT & 1ST COAT - FAB110204D,Complete,Gas Purifier Rm - 1F -SUW-FAB110204,,,,,,,,,,2025-07-23 08:00,2025-07-29 17:00,2025-07-23 08:00,2025-07-29 17:00,2025-11-20 17:00,2025-11-20 17:00,2025-12-05 17:00,2025-12-05 17:00,0,40,100
FAB110204D-05,PAINT & PROTECT DOORS & FRAMES - FAB110204D,Complete,Gas Purifier Rm - 1F -SUW-FAB110204,,,,,,,,,,2025-10-08 08:00,2025-10-13 15:00,2025-10-08 08:00,2025-10-12 15:00,2025-11-20 17:00,2025-11-20 17:00,2025-12-05 17:00,2025-12-05 17:00,0,30,100
FAB110204D-06,INSTALL DOOR HARDWARE - FAB110204D,Complete,Gas Purifier Rm - 1F -SUW-FAB110204,,,,,,,,,,2025-10-23 08:00,2025-10-28 15:00,2025-10-23 08:00,2025-10-28 15:00,2025-11-20 17:00,2025-11-20 17:00,2025-12-05 17:00,2025-12-05 17:00,0,30,100
FAB110208A-03,INSTALL DOOR FRAMES - FAB110208A,Complete,Equip Platform - 1F -SUW-FAB110208,,,,,,,,,,2025-06-23 08:00,2025-06-23 17:00,2025-06-18 08:00,2025-06-18 16:00,2025-11-20 17:00,2025-11-20 17:00,2025-12-05 17:00,2025-12-05 17:00,0,8,100
FAB110208A-04,DOOR INSTALL - FAB110208A,Complete,Equip Platform - 1F -SUW-FAB110208,,,,,,,,,,2025-08-06 08:00,2025-08-06 17:00,2025-08-12 08:00,2025-08-12 17:00,2025-11-20 17:00,2025-11-20 17:00,2025-12-05 17:00,2025-12-05 17:00,0,8,100
FAB110208A-00,IMPACT - PATRIOT CLADDING HEADER FIX - FAB110208A,Complete,Equip Platform - 1F -SUW-FAB110208,,,,,,,,,,2025-06-02 09:51,2025-06-06 17:00,2025-06-02 09:51,2025-06-06 16:00,2025-11-20 17:00,2025-11-20 17:00,2025-12-05 17:00,2025-12-05 17:00,0,38.15,100
FAB110208A-02,SECAI ROUGH IN FRAME - FAB110208A,Complete,Equip Platform - 1F -SUW-FAB110208,,,,,,,,,,2025-06-20 08:00,2025-06-20 17:00,2025-06-18 08:00,2025-06-18 16:00,2025-11-20 17:00,2025-11-20 17:00,2025-12-05 17:00,2025-12-05 17:00,0,8,100
FAB110208A-05,PAINT & PROTECT DOORS & FRAMES - FAB110208A,Complete,Equip Platform - 1F -SUW-FAB110208,,,,,,,,,,2025-10-14 08:00,2025-10-17 15:00,2025-10-14 08:00,2025-10-16 15:00,2025-11-20 17:00,2025-11-20 17:00,2025-12-05 17:00,2025-12-05 17:00,0,30,100
FAB110208A-06,INSTALL DOOR HARDWARE - FAB110208A,Complete,Equip Platform - 1F -SUW-FAB110208,,,,,,,,,,2025-10-20 08:00,2025-10-23 15:00,2025-10-20 08:00,2025-10-23 15:00,2025-11-20 17:00,2025-11-20 17:00,2025-12-05 17:00,2025-12-05 17:00,0,30,100
FAB110208A-07,DOOR FRAME PAINT & 1ST COAT - FAB110208A,Complete,Equip Platform - 1F -SUW-FAB110208,,,,,,,,,,2025-08-01 08:00,2025-08-04 17:00,2025-08-01 08:00,2025-08-08 17:00,2025-11-20 17:00,2025-11-20 17:00,2025-12-05 17:00,2025-12-05 17:00,0,16,100
FAB110208B-00,IOCC TO BE SUBMITTED (RFI 10986) - FAB110208B,Active,Equip Platform - 1F -SUW-FAB110208,,,,,,,,,,2025-07-03 08:00,2025-07-21 12:00,2025-07-03 07:00,,2025-11-21 08:00,2025-11-21 17:00,2025-11-24 08:00,2025-11-24 17:00,8,100,0
FAB110208BB-01,IOCC APPROVAL - SECAI - FAB110208B,Not Started,Equip Platform - 1F -SUW-FAB110208,,,,,,,,,,2025-11-24 08:00,2025-11-28 17:00,,,2025-11-24 08:00,2025-11-28 17:00,2025-11-25 08:00,2025-12-01 17:00,40,40,0
FAB110208B-50,IMPACT - TRAPS TO BE REMOVED - FAB110208B,Active,Equip Platform - 1F -SUW-FAB110208,,,,,,,,,,2025-07-03 08:00,2025-07-29 15:00,2025-07-03 07:00,,2025-11-21 08:00,2025-11-27 17:00,2025-11-25 08:00,2025-12-01 17:00,40,150,0
FAB110208B-02,INSTALL/REWORK CLADDING AND HEADER - FAB110208B,Not Started,Equip Platform - 1F -SUW-FAB110208,,,,,,,,,,2025-12-01 08:00,2025-12-02 17:00,,,2025-12-01 08:00,2025-12-02 17:00,2025-12-02 08:00,2025-12-03 17:00,16,16,0
FAB110208B-04,DOOR INSTALL - FAB110208B (OHC),Not Started,Equip Platform - 1F -SUW-FAB110208,,,,,,,,,,2025-12-03 08:00,2025-12-04 17:00,,,2025-12-03 08:00,2025-12-04 17:00,2025-12-04 08:00,2025-12-05 17:00,16,16,0
FAB110208B-60,IMPACT - MEP LINES CONFLICT WITH SPACE REQUIRED FOR OHC MOTOR AND HOUSING - FAB110208B,Active,Equip Platform - 1F -SUW-FAB110208,,,,,,,,,,2025-07-03 08:00,2025-07-29 15:00,2025-07-03 07:00,,2025-11-21 08:00,2025-11-27 17:00,2025-11-27 08:00,2025-12-03 17:00,40,150,0
FAB110208B-55,IMPACT - LVL 2 CONCRETE BEAM IN CONFLICT WITH SHOP DRAWINGS (14FT VS 14FT 1IN) - FAB110208B,Active,Equip Platform - 1F -SUW-FAB110208,,,,,,,,,,2025-07-03 08:00,2025-07-29 15:00,2025-07-03 07:00,,2025-11-21 08:00,2025-11-27 17:00,2025-11-25 08:00,2025-12-01 17:00,40,150,0
FAB110208B-70,IMPACT - EXTERIOR CIVIL WORK IN CONFLICT IN FRONT OF OPENING - FAB110208B,Active,Equip Platform - 1F -SUW-FAB110208,,,,,,,,,,2025-07-03 08:00,2025-07-29 15:00,2025-07-03 07:00,,2025-11-21 08:00,2025-11-27 17:00,2025-11-25 08:00,2025-12-01 17:00,40,150,0
FAB110501A-03,INSTALL DOOR FRAMES - FAB110501A,Complete,PLATFORM (N/27-27.5) - 1F -SUW-FAB110501,,,,,,,,,,2025-08-22 08:00,2025-08-22 17:00,2025-08-22 08:00,2025-08-22 17:00,2025-11-20 17:00,2025-11-20 17:00,2025-11-25 10:00,2025-11-25 10:00,0,8,100
FAB110501A-04,INSTALL DOOR & HARDWARE - FAB110501A,Active,PLATFORM (N/27-27.5) - 1F -SUW-FAB110501,,,,,,,,,,2025-10-22 08:00,2025-10-28 17:00,2025-10-22 08:00,,2025-11-21 08:00,2025-11-27 17:00,2025-11-25 10:00,2025-12-02 10:00,40,40,0
FAB110501A--02,SECAI ROUGH IN FRAME - FAB110501A,Complete,PLATFORM (N/27-27.5) - 1F -SUW-FAB110501,,,,,,,,,,2025-08-22 08:00,2025-08-22 17:00,2025-08-22 08:00,2025-08-22 17:00,2025-11-20 17:00,2025-11-20 17:00,2025-11-25 10:00,2025-11-25 10:00,0,8,100
FAB110501A-07,DOOR FRAME PAINT & 1ST COAT - FAB110501A,Complete,PLATFORM (N/27-27.5) - 1F -SUW-FAB110501,,,,,,,,,,2025-09-02 08:00,2025-09-04 17:00,2025-09-02 08:00,2025-09-04 17:00,2025-11-20 17:00,2025-11-20 17:00,2025-11-25 10:00,2025-11-25 10:00,0,24,100
FAB110501A-05,PAINT & PROTECT DOORS & FRAMES - FAB110501A,Not Started,PLATFORM (N/27-27.5) - 1F -SUW-FAB110501,,,,,,,,,,2026-02-16 08:00,2026-02-19 15:00,,,2026-02-16 08:00,2026-02-19 15:00,2025-12-02 10:00,2025-12-05 17:00,30,30,0
FAB110511E-02,INSTALL DOOR FRAMES - FAB110511E,Complete,W-SOLVENT RM (N/27.5-29) - 1F -SUW-FAB110511,,,,,,,,,,2025-07-09 08:00,2025-07-09 17:00,2025-06-18 08:00,2025-06-19 16:00,2025-11-20 17:00,2025-11-20 17:00,2025-11-25 08:00,2025-11-25 08:00,0,8,100
FAB110511E-04,DOOR INSTALL - FAB110511E,Complete,W-SOLVENT RM (N/27.5-29) - 1F -SUW-FAB110511,,,,,,,,,,2025-08-29 08:00,2025-08-29 17:00,2025-08-29 08:00,2025-08-29 17:00,2025-11-20 17:00,2025-11-20 17:00,2025-12-02 10:00,2025-12-02 10:00,0,8,100
FAB110511E-00,IMPACT - PATRIOT CLADDING HEADER FIX - FAB110511E,Complete,W-SOLVENT RM (N/27.5-29) - 1F -SUW-FAB110511,,,,,,,,,,2025-06-02 09:51,2025-06-06 17:00,2025-06-02 09:51,2025-06-06 16:00,2025-11-20 17:00,2025-11-20 17:00,2025-11-25 08:00,2025-11-25 08:00,0,38.15,100
FAB110511E-03,SECAI ROUGH IN FRAME - FAB110511E,Complete,W-SOLVENT RM (N/27.5-29) - 1F -SUW-FAB110511,,,,,,,,,,2025-07-09 08:00,2025-07-09 17:00,2025-06-17 08:00,2025-06-18 16:00,2025-11-20 17:00,2025-11-20 17:00,2025-12-02 10:00,2025-12-02 10:00,0,8,100
FAB110511E-05,PAINT & PROTECT DOORS & FRAMES - FAB110511E,Complete,W-SOLVENT RM (N/27.5-29) - 1F -SUW-FAB110511,,,,,,,,,,2025-10-15 08:00,2025-10-20 15:00,2025-10-15 08:00,2025-10-20 15:00,2025-11-20 17:00,2025-11-20 17:00,2025-12-02 10:00,2025-12-02 10:00,0,30,100
FAB110511E-06,INSTALL DOOR HARDWARE - FAB110511E,Not Started,W-SOLVENT RM (N/27.5-29) - 1F -SUW-FAB110511,,,,,,,,,,2025-11-21 08:00,2025-11-26 15:00,,,2025-11-21 08:00,2025-11-26 15:00,2025-12-02 10:00,2025-12-05 17:00,30,30,0
FAB110511E-07,DOOR FRAME PAINT & 1ST COAT - FAB110511E,Complete,W-SOLVENT RM (N/27.5-29) - 1F -SUW-FAB110511,,,,,,,,,,2025-08-25 08:00,2025-08-27 17:00,2025-08-25 08:00,2025-08-27 17:00,2025-11-20 17:00,2025-11-20 17:00,2025-12-02 10:00,2025-12-02 10:00,0,24,100
FAB116104A-03,INSTALL DOOR FRAMES - FAB116104A,Complete,OAC Mechanical RM - 1F -FIZ-FAB116101,,,,,,,,,,2025-08-07 08:00,2025-08-07 17:00,2025-08-07 08:00,2025-08-07 17:00,2025-11-20 17:00,2025-11-20 17:00,2025-11-25 10:00,2025-11-25 10:00,0,8,100
FAB116104A-04,INSTALL DOOR & HARDWARE - FAB116104A,Not Started,OAC Mechanical RM - 1F -FIZ-FAB116101,,,,,,,,,,2026-02-09 08:00,2026-02-13 17:00,,,2026-02-09 08:00,2026-02-13 17:00,2025-11-25 10:00,2025-12-02 10:00,40,40,0
FAB116104A-02,SECAI ROUGH IN FRAME - FAB116104A,Complete,OAC Mechanical RM - 1F -FIZ-FAB116101,,,,,,,,,,2025-08-07 08:00,2025-08-07 17:00,2025-08-07 08:00,2025-08-07 17:00,2025-11-20 17:00,2025-11-20 17:00,2025-11-25 10:00,2025-11-25 10:00,0,8,100
FAB116104A-05,PAINT & PROTECT DOORS & FRAMES - FAB116104A,Not Started,OAC Mechanical RM - 1F -FIZ-FAB116101,,,,,,,,,,2026-02-16 08:00,2026-02-19 15:00,,,2026-02-16 08:00,2026-02-19 15:00,2025-12-02 10:00,2025-12-05 17:00,30,30,0
FAB110403A-02,INSTALL DOOR FRAMES - FAB110403A HANDED OVER TO SECAI,Complete,NaOH ACQC (N/23-24.3) - 1F -SUW-FAB110403,,,,,,,,,,2025-08-22 08:00,2025-08-22 17:00,2025-08-22 08:00,2025-08-22 17:00,2025-11-20 17:00,2025-11-20 17:00,2025-12-05 17:00,2025-12-05 17:00,0,8,100
FAB110403A-04,DOOR INSTALL - FAB110403A HANDED OVER TO SECAI,Complete,NaOH ACQC (N/23-24.3) - 1F -SUW-FAB110403,,,,,,,,,,2025-08-22 08:00,2025-08-22 17:00,2025-08-22 08:00,2025-08-22 17:00,2025-11-20 17:00,2025-11-20 17:00,2025-12-05 17:00,2025-12-05 17:00,0,8,100
FAB110403A-01,IMPACT - PATRIOT CLADDING HEADER FIX (RFI1789) - FAB110403A,Complete,NaOH ACQC (N/23-24.3) - 1F -SUW-FAB110403,,,,,,,,,,2025-06-20 08:00,2025-06-26 15:09,2025-05-05 08:00,2025-08-22 17:00,2025-11-20 17:00,2025-11-20 17:00,2025-12-05 17:00,2025-12-05 17:00,0,38.15,100
FAB110403B-02,INSTALL DOOR FRAMES - FAB110403B HANDED OVER TO SECAI,Complete,NaOH ACQC (N/23-24.3) - 1F -SUW-FAB110403,,,,,,,,,,2025-08-22 08:00,2025-08-22 17:00,2025-08-22 08:00,2025-08-22 17:00,2025-11-20 17:00,2025-11-20 17:00,2025-12-05 17:00,2025-12-05 17:00,0,8,100
FAB110403B-04,DOOR INSTALL - FAB110403B HANDED OVER TO SECAI,Complete,NaOH ACQC (N/23-24.3) - 1F -SUW-FAB110403,,,,,,,,,,2025-08-22 08:00,2025-08-22 17:00,2025-08-22 08:00,2025-08-22 17:00,2025-11-20 17:00,2025-11-20 17:00,2025-12-05 17:00,2025-12-05 17:00,0,8,100
FAB110403B-01,IMPACT - PATRIOT CLADDING HEADER FIX (RFI1789) - FAB110403B,Complete,NaOH ACQC (N/23-24.3) - 1F -SUW-FAB110403,,,,,,,,,,2025-07-09 08:00,2025-07-24 17:00,2025-06-30 08:00,2025-08-22 17:00,2025-11-20 17:00,2025-11-20 17:00,2025-12-05 17:00,2025-12-05 17:00,0,96,100
FAB110403C-02,INSTALL DOOR FRAMES - FAB110403C,Complete,NaOH ACQC (N/23-24.3) - 1F -SUW-FAB110403,,,,,,,,,,2025-06-13 08:00,2025-06-16 17:00,2025-05-20 08:00,2025-05-20 16:00,2025-11-20 17:00,2025-11-20 17:00,2025-12-05 17:00,2025-12-05 17:00,0,16,100
FAB110403C-04,DOOR INSTALL - FAB110403C,Complete,NaOH ACQC (N/23-24.3) - 1F -SUW-FAB110403,,,,,,,,,,2025-07-28 08:00,2025-07-28 17:00,2025-07-28 08:00,2025-07-28 17:00,2025-11-20 17:00,2025-11-20 17:00,2025-12-05 17:00,2025-12-05 17:00,0,8,100
FAB110403D-02,INSTALL DOOR FRAMES - FAB110403D HANDED OVER TO SECAI,Complete,NaOH ACQC (N/23-24.3) - 1F -SUW-FAB110403,,,,,,,,,,2025-08-22 08:00,2025-08-22 17:00,2025-08-22 08:00,2025-08-22 17:00,2025-11-20 17:00,2025-11-20 17:00,2025-12-05 17:00,2025-12-05 17:00,0,8,100
FAB110403D-04,DOOR INSTALL - FAB110403D HANDED OVER TO SECAI,Complete,NaOH ACQC (N/23-24.3) - 1F -SUW-FAB110403,,,,,,,,,,2025-08-22 08:00,2025-08-22 17:00,2025-08-22 08:00,2025-08-22 17:00,2025-11-20 17:00,2025-11-20 17:00,2025-12-05 17:00,2025-12-05 17:00,0,8,100
FAB110403D-01,IMPACT - PATRIOT CLADDING HEADER FIX (RFI1789) - FAB110403D,Complete,NaOH ACQC (N/23-24.3) - 1F -SUW-FAB110403,,,,,,,,,,2025-07-09 08:00,2025-07-10 17:00,2025-06-30 08:00,2025-08-22 17:00,2025-11-20 17:00,2025-11-20 17:00,2025-12-05 17:00,2025-12-05 17:00,0,16,100
FAB110403C-07,DOOR FRAME PAINT & 1ST COAT - FAB110403C,Complete,NaOH ACQC (N/23-24.3) - 1F -SUW-FAB110403,,,,,,,,,,2025-07-25 08:00,2025-07-28 17:00,2025-07-28 08:00,2025-07-28 17:00,2025-11-20 17:00,2025-11-20 17:00,2025-12-05 17:00,2025-12-05 17:00,0,16,100
FAB110403C-05,PAINT & PROTECT DOORS & FRAMES - FAB110403C,Complete,NaOH ACQC (N/23-24.3) - 1F -SUW-FAB110403,,,,,,,,,,2025-10-14 08:00,2025-10-17 15:00,2025-10-14 08:00,2025-10-16 15:00,2025-11-20 17:00,2025-11-20 17:00,2025-12-05 17:00,2025-12-05 17:00,0,30,100
FAB110403C-06,INSTALL DOOR HARDWARE - FAB110403C,Complete,NaOH ACQC (N/23-24.3) - 1F -SUW-FAB110403,,,,,,,,,,2025-10-20 08:00,2025-10-23 15:00,2025-10-20 08:00,2025-10-23 15:00,2025-11-20 17:00,2025-11-20 17:00,2025-12-05 17:00,2025-12-05 17:00,0,30,100
FAB110404B-03,INSTALL DOOR FRAMES - FAB110404B HANDED OVER TO SECAI,Complete,W-CuS04-ACQC RM (N/24.3-25) - 1F- SUW-FAB110404,,,,,,,,,,2025-08-22 08:00,2025-08-22 17:00,2025-08-22 08:00,2025-08-22 17:00,2025-11-20 17:00,2025-11-20 17:00,2025-12-05 17:00,2025-12-05 17:00,0,8,100
FAB110404B-04,DOOR INSTALL - FAB110404B HANDED OVER TO SECAI,Complete,W-CuS04-ACQC RM (N/24.3-25) - 1F- SUW-FAB110404,,,,,,,,,,2025-08-22 08:00,2025-08-22 17:00,2025-08-22 08:00,2025-08-22 17:00,2025-11-20 17:00,2025-11-20 17:00,2025-12-05 17:00,2025-12-05 17:00,0,8,100
FAB110404B-01,IMPACT - PATRIOT CLADDING HEADER FIX (RFI1789) - FAB110404B,Complete,W-CuS04-ACQC RM (N/24.3-25) - 1F- SUW-FAB110404,,,,,,,,,,2025-06-30 08:00,2025-07-15 17:00,2025-06-30 08:00,2025-08-22 17:00,2025-11-20 17:00,2025-11-20 17:00,2025-12-05 17:00,2025-12-05 17:00,0,96,100
FAB110404C-03,INSTALL DOOR FRAMES - FAB110404C,Complete,W-CuS04-ACQC RM (N/24.3-25) - 1F- SUW-FAB110404,,,,,,,,,,2025-06-13 08:00,2025-06-16 17:00,2025-05-20 08:00,2025-05-20 16:00,2025-11-20 17:00,2025-11-20 17:00,2025-12-05 17:00,2025-12-05 17:00,0,16,100
FAB110404C-04,DOOR INSTALL - FAB110404C,Complete,W-CuS04-ACQC RM (N/24.3-25) - 1F- SUW-FAB110404,,,,,,,,,,2025-07-28 08:00,2025-07-28 17:00,2025-07-30 08:00,2025-07-30 17:00,2025-11-20 17:00,2025-11-20 17:00,2025-12-05 17:00,2025-12-05 17:00,0,8,100
FAB110404E-03,INSTALL DOOR FRAMES - FAB110404E HANDED OVER TO SECAI,Complete,W-CuS04-ACQC RM (N/24.3-25) - 1F- SUW-FAB110404,,,,,,,,,,2025-08-22 08:00,2025-08-22 17:00,2025-08-22 08:00,2025-08-22 17:00,2025-11-20 17:00,2025-11-20 17:00,2025-12-05 17:00,2025-12-05 17:00,0,8,100
FAB110404E-04,DOOR INSTALL - FAB110404E HANDED OVER TO SECAI,Complete,W-CuS04-ACQC RM (N/24.3-25) - 1F- SUW-FAB110404,,,,,,,,,,2025-08-22 08:00,2025-08-22 17:00,2025-08-22 08:00,2025-08-22 17:00,2025-11-20 17:00,2025-11-20 17:00,2025-12-05 17:00,2025-12-05 17:00,0,8,100
FAB110404E-01,IMPACT - PATRIOT CLADDING HEADER FIX (RFI1789) - FAB110404E,Complete,W-CuS04-ACQC RM (N/24.3-25) - 1F- SUW-FAB110404,,,,,,,,,,2025-06-30 08:00,2025-07-01 17:00,2025-06-30 08:00,2025-08-22 17:00,2025-11-20 17:00,2025-11-20 17:00,2025-12-05 17:00,2025-12-05 17:00,0,16,100
FAB110404C-05,PAINT & PROTECT DOORS & FRAMES - FAB110403C,Complete,W-CuS04-ACQC RM (N/24.3-25) - 1F- SUW-FAB110404,,,,,,,,,,2025-10-14 08:00,2025-10-17 15:00,2025-10-14 08:00,2025-10-16 15:00,2025-11-20 17:00,2025-11-20 17:00,2025-12-05 17:00,2025-12-05 17:00,0,30,100
FAB110404C-06,INSTALL DOOR HARDWARE - FAB110403C,Complete,W-CuS04-ACQC RM (N/24.3-25) - 1F- SUW-FAB110404,,,,,,,,,,2025-10-20 08:00,2025-10-23 15:00,2025-10-20 08:00,2025-10-23 15:00,2025-11-20 17:00,2025-11-20 17:00,2025-12-05 17:00,2025-12-05 17:00,0,30,100
FAB110404C-07,DOOR FRAME PAINT & 1ST COAT - FAB110404C,Complete,W-CuS04-ACQC RM (N/24.3-25) - 1F- SUW-FAB110404,,,,,,,,,,2025-07-28 08:00,2025-07-30 17:00,2025-07-24 08:00,2025-07-27 08:00,2025-11-20 17:00,2025-11-20 17:00,2025-12-05 17:00,2025-12-05 17:00,0,24,100
FAB110405B-02,INSTALL DOOR FRAMES - FAB110405B,Complete,PLATFORM (N/25-25.4) - 1F -SUW-FAB110405,,,,,,,,,,2025-08-29 08:00,2025-08-29 17:00,2025-08-26 08:00,2025-08-26 17:00,2025-11-20 17:00,2025-11-20 17:00,2025-12-02 10:00,2025-12-02 10:00,0,8,100
FAB110405B-04,DOOR INSTALL - FAB110405B,Complete,PLATFORM (N/25-25.4) - 1F -SUW-FAB110405,,,,,,,,,,2025-10-10 08:00,2025-10-10 17:00,2025-10-10 08:00,2025-10-10 17:00,2025-11-20 17:00,2025-11-20 17:00,2025-12-02 10:00,2025-12-02 10:00,0,8,100
FAB110405B-05,PAINT & PROTECT DOORS & FRAMES - FAB110405B,Complete,PLATFORM (N/25-25.4) - 1F -SUW-FAB110405,,,,,,,,,,2025-10-14 08:00,2025-10-17 15:00,2025-10-14 08:00,2025-10-17 15:00,2025-11-20 17:00,2025-11-20 17:00,2025-12-02 10:00,2025-12-02 10:00,0,30,100
FAB110405B-06,INSTALL DOOR HARDWARE - FAB110405B,Not Started,PLATFORM (N/25-25.4) - 1F -SUW-FAB110405,,,,,,,,,,2025-11-21 08:00,2025-11-26 15:00,,,2025-11-21 08:00,2025-11-26 15:00,2025-12-02 10:00,2025-12-05 17:00,30,30,0
FAB110409A-02,INSTALL DOOR FRAMES - FAB110409A,Complete,W-H3PO4 RM (N/25.4-26.2) - 1F -SUW-FAB110409,,,,,,,,,,2025-08-07 08:00,2025-08-07 17:00,2025-08-07 08:00,2025-08-07 17:00,2025-11-20 17:00,2025-11-20 17:00,2025-12-05 17:00,2025-12-05 17:00,0,8,100
FAB110409A-04,DOOR INSTALL - FAB110409A,Complete,W-H3PO4 RM (N/25.4-26.2) - 1F -SUW-FAB110409,,,,,,,,,,2025-09-05 08:00,2025-09-05 17:00,2025-09-05 08:00,2025-09-05 17:00,2025-11-20 17:00,2025-11-20 17:00,2025-12-05 17:00,2025-12-05 17:00,0,8,100
FAB110409A-03,SECAI ROUGH IN FRAME - FAB110409A,Complete,W-H3PO4 RM (N/25.4-26.2) - 1F -SUW-FAB110409,,,,,,,,,,2025-08-07 08:00,2025-08-07 17:00,2025-08-07 08:00,2025-08-07 17:00,2025-11-20 17:00,2025-11-20 17:00,2025-12-05 17:00,2025-12-05 17:00,0,8,100
FAB110409B-02,INSTALL DOOR FRAMES - FAB110409B HANDED OVER TO SECAI,Complete,W-H3PO4 RM (N/25.4-26.2) - 1F -SUW-FAB110409,,,,,,,,,,2025-08-22 08:00,2025-08-22 17:00,2025-08-22 08:00,2025-08-22 17:00,2025-11-20 17:00,2025-11-20 17:00,2025-12-05 17:00,2025-12-05 17:00,0,8,100
FAB110409B-00,IMPACT - PATRIOT CLADDING HEADER FIX (RFI1789) - FAB110409B,Complete,W-H3PO4 RM (N/25.4-26.2) - 1F -SUW-FAB110409,,,,,,,,,,2025-07-09 08:00,2025-07-09 17:00,2025-06-30 08:00,2025-08-22 17:00,2025-11-20 17:00,2025-11-20 17:00,2025-12-05 17:00,2025-12-05 17:00,0,8,100
FAB110409B-03,SECAI ROUGH IN FRAME - FAB110409B HANDED OVER TO SECAI,Complete,W-H3PO4 RM (N/25.4-26.2) - 1F -SUW-FAB110409,,,,,,,,,,2025-08-22 08:00,2025-08-22 17:00,2025-08-22 08:00,2025-08-22 17:00,2025-11-20 17:00,2025-11-20 17:00,2025-12-05 17:00,2025-12-05 17:00,0,8,100
FAB110409E-02,INSTALL DOOR FRAMES - FAB110409E HANDED OVER TO SECAI,Complete,W-H3PO4 RM (N/25.4-26.2) - 1F -SUW-FAB110409,,,,,,,,,,2025-08-22 08:00,2025-08-22 17:00,2025-08-22 08:00,2025-08-22 17:00,2025-11-20 17:00,2025-11-20 17:00,2025-12-05 17:00,2025-12-05 17:00,0,8,100
FAB110409E-04,DOOR INSTALL - FAB110409E HANDED OVER TO SECAI,Complete,W-H3PO4 RM (N/25.4-26.2) - 1F -SUW-FAB110409,,,,,,,,,,2025-08-22 08:00,2025-08-22 17:00,2025-08-22 08:00,2025-08-22 17:00,2025-11-20 17:00,2025-11-20 17:00,2025-12-05 17:00,2025-12-05 17:00,0,8,100
FAB110409E-00,IMPACT - PATRIOT CLADDING HEADER FIX (RFI1789) - FAB110409E,Complete,W-H3PO4 RM (N/25.4-26.2) - 1F -SUW-FAB110409,,,,,,,,,,2025-07-09 08:00,2025-07-09 17:00,2025-06-30 08:00,2025-08-22 17:00,2025-11-20 17:00,2025-11-20 17:00,2025-12-05 17:00,2025-12-05 17:00,0,8,100
FAB110409E-03,SECAI ROUGH IN FRAME - FAB110409E HANDED OVER TO SECAI,Complete,W-H3PO4 RM (N/25.4-26.2) - 1F -SUW-FAB110409,,,,,,,,,,2025-08-22 08:00,2025-08-22 17:00,2025-08-22 08:00,2025-08-22 17:00,2025-11-20 17:00,2025-11-20 17:00,2025-12-05 17:00,2025-12-05 17:00,0,8,100
FAB110409A-07,DOOR FRAME PAINT & 1ST COAT - FAB110409A,Complete,W-H3PO4 RM (N/25.4-26.2) - 1F -SUW-FAB110409,,,,,,,,,,2025-09-01 08:00,2025-09-03 17:00,2025-09-01 08:00,2025-09-03 17:00,2025-11-20 17:00,2025-11-20 17:00,2025-12-05 17:00,2025-12-05 17:00,0,24,100
FAB110409A-05,PAINT & PROTECT DOORS & FRAMES - FAB110409A,Complete,W-H3PO4 RM (N/25.4-26.2) - 1F -SUW-FAB110409,,,,,,,,,,2025-10-14 08:00,2025-10-17 15:00,2025-10-14 08:00,2025-10-16 15:00,2025-11-20 17:00,2025-11-20 17:00,2025-12-05 17:00,2025-12-05 17:00,0,30,100
FAB110409A-06,INSTALL DOOR HARDWARE - FAB110409A,Complete,W-H3PO4 RM (N/25.4-26.2) - 1F -SUW-FAB110409,,,,,,,,,,2025-10-20 08:00,2025-10-23 15:00,2025-10-20 08:00,2025-10-23 15:00,2025-11-20 17:00,2025-11-20 17:00,2025-12-05 17:00,2025-12-05 17:00,0,30,100
FAB110409A-00,IMPACT - PATRIOT CLADDING HEADER FIX (RFI1416) - FAB110409A,Complete,W-H3PO4 RM (N/25.4-26.2) - 1F -SUW-FAB110409,,,,,,,,,,2025-06-20 08:00,2025-07-10 17:00,2025-06-16 08:00,2025-08-06 17:00,2025-11-20 17:00,2025-11-20 17:00,2025-12-05 17:00,2025-12-05 17:00,0,120,100
FAB110409C-02,INSTALL DOOR FRAME BY SECAI - FAB110409C HANDED OVER 06/27,Complete,W-H3PO4 RM (N/25.4-26.2) - 1F -SUW-FAB110409,,,,,,,,,,2025-06-27 08:00,2025-07-10 17:00,2025-06-28 08:00,2025-08-12 17:00,2025-11-20 17:00,2025-11-20 17:00,2025-11-25 10:00,2025-11-25 10:00,0,80,100
FAB110409C-04,INSTALL DOOR & HARDWARE - FAB110409C,Active,W-H3PO4 RM (N/25.4-26.2) - 1F -SUW-FAB110409,,,,,,,,,,2025-11-05 08:00,2025-11-11 17:00,2025-11-05 08:00,,2025-11-21 08:00,2025-11-27 17:00,2025-11-25 10:00,2025-12-02 10:00,40,40,0
FAB110409C-05,PAINT & PROTECT DOORS & FRAMES - FAB110409C,Not Started,W-H3PO4 RM (N/25.4-26.2) - 1F -SUW-FAB110409,,,,,,,,,,2026-02-16 08:00,2026-02-19 15:00,,,2026-02-16 08:00,2026-02-19 15:00,2025-12-02 10:00,2025-12-05 17:00,30,30,0
FAB110409C-00,IMPACT - PATRIOT CLADDING HEADER FIX (RFI1416) - FAB110409C,Complete,W-H3PO4 RM (N/25.4-26.2) - 1F -SUW-FAB110409,,,,,,,,,,2025-06-20 08:00,2025-07-10 17:00,2025-06-16 08:00,2025-06-26 16:00,2025-11-20 17:00,2025-11-20 17:00,2025-11-25 10:00,2025-11-25 10:00,0,120,100
FAB110409D-02,INSTALL DOOR FRAME BY SECAI - FAB110409D HANDED OVER 07/18,Complete,W-H3PO4 RM (N/25.4-26.2) - 1F -SUW-FAB110409,,,,,,,,,,2025-07-21 08:00,2025-08-01 17:00,2025-07-21 08:00,2025-09-16 08:00,2025-11-20 17:00,2025-11-20 17:00,2025-11-25 10:00,2025-11-25 10:00,0,80,100
FAB110409D-04,INSTALL DOOR & HARDWARE - FAB110409D,Active,W-H3PO4 RM (N/25.4-26.2) - 1F -SUW-FAB110409,,,,,,,,,,2025-11-05 08:00,2025-11-11 17:00,2025-11-05 08:00,,2025-11-21 08:00,2025-11-27 17:00,2025-11-25 10:00,2025-12-02 10:00,40,40,0
FAB110409D-05,PAINT & PROTECT DOORS & FRAMES - FAB110409D,Not Started,W-H3PO4 RM (N/25.4-26.2) - 1F -SUW-FAB110409,,,,,,,,,,2026-02-16 08:00,2026-02-19 15:00,,,2026-02-16 08:00,2026-02-19 15:00,2025-12-02 10:00,2025-12-05 17:00,30,30,0
FAB110409D-00,IMPACT - PATRIOT CLADDING HEADER FIX (RFI1416) - FAB110409D,Complete,W-H3PO4 RM (N/25.4-26.2) - 1F -SUW-FAB110409,,,,,,,,,,2025-06-20 08:00,2025-07-10 17:00,2025-06-16 08:00,2025-07-18 17:00,2025-11-20 17:00,2025-11-20 17:00,2025-11-25 10:00,2025-11-25 10:00,0,120,100
FAB110409C-40,DOOR FRAME HANDED OVER TO SECAI ON 06/27 - FAB110409C,Complete,W-H3PO4 RM (N/25.4-26.2) - 1F -SUW-FAB110409,,,,,,,,,,2025-06-27 08:00,2025-06-27 17:00,2025-06-27 08:00,2025-06-27 16:00,2025-11-20 17:00,2025-11-20 17:00,2025-11-25 10:00,2025-11-25 10:00,0,8,100
FAB110409A-90,DOOR FRAME GROUT (RFI1416) - FAB110409A - P1 (INCLUDE MOBILIZATION AND CURE TIME),Complete,W-H3PO4 RM (N/25.4-26.2) - 1F -SUW-FAB110409,,,,,,,,,,2025-08-08 08:00,2025-08-08 17:00,2025-08-08 08:00,2025-08-08 17:00,2025-11-20 17:00,2025-11-20 17:00,2025-12-05 17:00,2025-12-05 17:00,0,8,100
FAB110409B-04,DOOR INSTALL - FAB110409B HANDED OVER TO SECAI,Complete,W-H3PO4 RM (N/25.4-26.2) - 1F -SUW-FAB110409,,,,,,,,,,2025-08-22 08:00,2025-08-22 17:00,2025-08-22 08:00,2025-08-22 17:00,2025-11-20 17:00,2025-11-20 17:00,2025-12-05 17:00,2025-12-05 17:00,0,8,100
FAB110408A-02,INSTALL DOOR FRAMES - FAB110408A,Complete,W-H2S04 ACQC RM (N/26.2-27) - 1F -SUW-FAB110408,,,,,,,,,,2025-09-17 08:00,2025-09-17 17:00,2025-09-17 08:00,2025-09-17 17:00,2025-11-20 17:00,2025-11-20 17:00,2025-12-05 17:00,2025-12-05 17:00,0,8,100
FAB110408A-04,DOOR INSTALL - FAB110408A,Complete,W-H2S04 ACQC RM (N/26.2-27) - 1F -SUW-FAB110408,,,,,,,,,,2025-09-23 08:00,2025-09-23 17:00,2025-09-23 08:00,2025-09-23 17:00,2025-11-20 17:00,2025-11-20 17:00,2025-12-05 17:00,2025-12-05 17:00,0,8,100
FAB110408A-00,IMPACT - PATRIOT CLADDING HEADER FIX (RFI1416) - FAB110408A,Complete,W-H2S04 ACQC RM (N/26.2-27) - 1F -SUW-FAB110408,,,,,,,,,,2025-06-16 09:51,2025-07-07 09:51,2025-06-16 09:51,2025-09-15 08:00,2025-11-20 17:00,2025-11-20 17:00,2025-12-05 17:00,2025-12-05 17:00,0,120,100
FAB110408A-03,SECAI ROUGH IN FRAME - FAB110408A,Complete,W-H2S04 ACQC RM (N/26.2-27) - 1F -SUW-FAB110408,,,,,,,,,,2025-09-17 08:00,2025-09-17 17:00,2025-09-17 08:00,2025-09-17 17:00,2025-11-20 17:00,2025-11-20 17:00,2025-12-05 17:00,2025-12-05 17:00,0,8,100
FAB110408B-02,INSTALL DOOR FRAMES - FAB110408B HANDED OVER TO SECAI,Complete,W-H2S04 ACQC RM (N/26.2-27) - 1F -SUW-FAB110408,,,,,,,,,,2025-08-22 08:00,2025-08-22 17:00,2025-08-22 08:00,2025-08-22 17:00,2025-11-20 17:00,2025-11-20 17:00,2025-12-05 17:00,2025-12-05 17:00,0,8,100
FAB110408B-04,DOOR INSTALL - FAB110408B HANDED OVER TO SECAI,Complete,W-H2S04 ACQC RM (N/26.2-27) - 1F -SUW-FAB110408,,,,,,,,,,2025-08-22 08:00,2025-08-22 17:00,2025-08-22 08:00,2025-08-22 17:00,2025-11-20 17:00,2025-11-20 17:00,2025-12-05 17:00,2025-12-05 17:00,0,8,100
FAB110408B-01,IMPACT - PATRIOT CLADDING HEADER FIX (RFI1789) - FAB110408B,Complete,W-H2S04 ACQC RM (N/26.2-27) - 1F -SUW-FAB110408,,,,,,,,,,2025-08-22 08:00,2025-08-22 17:00,2025-08-22 08:00,2025-08-22 17:00,2025-11-20 17:00,2025-11-20 17:00,2025-12-05 17:00,2025-12-05 17:00,0,8,100
FAB110408B-03,SECAI ROUGH IN FRAME - FAB110408B HANDED OVER TO SECAI,Complete,W-H2S04 ACQC RM (N/26.2-27) - 1F -SUW-FAB110408,,,,,,,,,,2025-08-22 08:00,2025-08-22 17:00,2025-08-22 08:00,2025-08-22 17:00,2025-11-20 17:00,2025-11-20 17:00,2025-12-05 17:00,2025-12-05 17:00,0,8,100
FAB110408D-02,INSTALL DOOR FRAMES - FAB110408D HANDED OVER TO SECAI,Complete,W-H2S04 ACQC RM (N/26.2-27) - 1F -SUW-FAB110408,,,,,,,,,,2025-08-22 08:00,2025-08-22 17:00,2025-08-22 08:00,2025-08-22 17:00,2025-11-20 17:00,2025-11-20 17:00,2025-12-05 17:00,2025-12-05 17:00,0,8,100
FAB110408D-04,DOOR INSTALL - FAB110408D HANDED OVER TO SECAI,Complete,W-H2S04 ACQC RM (N/26.2-27) - 1F -SUW-FAB110408,,,,,,,,,,2025-08-22 08:00,2025-08-22 17:00,2025-08-22 08:00,2025-08-22 17:00,2025-11-20 17:00,2025-11-20 17:00,2025-12-05 17:00,2025-12-05 17:00,0,8,100
FAB110408D-01,IMPACT - PATRIOT CLADDING HEADER FIX (RFI1789) - FAB110408D,Complete,W-H2S04 ACQC RM (N/26.2-27) - 1F -SUW-FAB110408,,,,,,,,,,2025-08-22 08:00,2025-08-22 17:00,2025-08-22 08:00,2025-08-22 17:00,2025-11-20 17:00,2025-11-20 17:00,2025-12-05 17:00,2025-12-05 17:00,0,8,100
FAB110408D-03,SECAI ROUGH IN FRAME - FAB110408D HANDED OVER TO SECAI,Complete,W-H2S04 ACQC RM (N/26.2-27) - 1F -SUW-FAB110408,,,,,,,,,,2025-08-22 08:00,2025-08-22 17:00,2025-08-22 08:00,2025-08-22 17:00,2025-11-20 17:00,2025-11-20 17:00,2025-12-05 17:00,2025-12-05 17:00,0,8,100
FAB110408A-07,DOOR FRAME PAINT & 1ST COAT - FAB110408A,Complete,W-H2S04 ACQC RM (N/26.2-27) - 1F -SUW-FAB110408,,,,,,,,,,2025-09-19 08:00,2025-09-23 17:00,2025-09-19 08:00,2025-09-23 17:00,2025-11-20 17:00,2025-11-20 17:00,2025-12-05 17:00,2025-12-05 17:00,0,24,100
FAB110408A-05,PAINT & PROTECT DOORS & FRAMES - FAB110408A,Complete,W-H2S04 ACQC RM (N/26.2-27) - 1F -SUW-FAB110408,,,,,,,,,,2025-10-13 08:00,2025-10-16 15:00,2025-10-14 08:00,2025-10-16 15:00,2025-11-20 17:00,2025-11-20 17:00,2025-12-05 17:00,2025-12-05 17:00,0,30,100
FAB110408A-06,INSTALL DOOR HARDWARE - FAB110408A,Complete,W-H2S04 ACQC RM (N/26.2-27) - 1F -SUW-FAB110408,,,,,,,,,,2025-10-20 08:00,2025-10-23 15:00,2025-10-20 08:00,2025-10-23 15:00,2025-11-20 17:00,2025-11-20 17:00,2025-12-05 17:00,2025-12-05 17:00,0,30,100
FAB110408C-02,INSTALL DOOR FRAME BY SECAI - FAB110408C HANDED OVER 06/27,Complete,W-H2S04 ACQC RM (N/26.2-27) - 1F -SUW-FAB110408,,,,,,,,,,2025-06-27 08:00,2025-07-10 17:00,2025-06-28 08:00,2025-09-13 08:00,2025-11-20 17:00,2025-11-20 17:00,2025-11-25 10:00,2025-11-25 10:00,0,80,100
FAB110408C-04,INSTALL DOOR & HARDWARE - FAB110408C,Active,W-H2S04 ACQC RM (N/26.2-27) - 1F -SUW-FAB110408,,,,,,,,,,2025-11-14 08:00,2025-11-20 17:00,2025-11-14 08:00,,2025-11-21 08:00,2025-11-27 17:00,2025-11-25 10:00,2025-12-02 10:00,40,40,0
FAB110408C-00,IMPACT - PATRIOT CLADDING HEADER FIX (RFI1416) - FAB110408C,Complete,W-H2S04 ACQC RM (N/26.2-27) - 1F -SUW-FAB110408,,,,,,,,,,2025-06-16 09:51,2025-07-07 09:51,2025-06-16 09:51,2025-06-27 16:00,2025-11-20 17:00,2025-11-20 17:00,2025-11-25 10:00,2025-11-25 10:00,0,120,100
FAB110408C-05,PAINT & PROTECT DOORS & FRAMES - FAB110408C,Not Started,W-H2S04 ACQC RM (N/26.2-27) - 1F -SUW-FAB110408,,,,,,,,,,2026-02-16 08:00,2026-02-19 15:00,,,2026-02-16 08:00,2026-02-19 15:00,2025-12-02 10:00,2025-12-05 17:00,30,30,0
FAB110408C-13,DOOR FRAME HANDED OVER TO SECAI ON 07/18 - FAB110408C,Complete,W-H2S04 ACQC RM (N/26.2-27) - 1F -SUW-FAB110408,,,,,,,,,,2025-06-27 08:00,2025-06-27 17:00,2025-06-27 08:00,2025-06-27 17:00,2025-11-20 17:00,2025-11-20 17:00,2025-11-25 10:00,2025-11-25 10:00,0,8,100
FAB110511B-02,INSTALL DOOR FRAMES - FAB110511B HANDED OVER TO SECAI,Complete,W-SOLVENT RM (N/27.5-29) - 1F -SUW-FAB110511,,,,,,,,,,2025-08-22 08:00,2025-08-22 17:00,2025-08-22 08:00,2025-08-22 17:00,2025-11-20 17:00,2025-11-20 17:00,2025-12-05 17:00,2025-12-05 17:00,0,8,100
FAB110511B-04,DOOR INSTALL - FAB110511B HANDED OVER TO SECAI,Complete,W-SOLVENT RM (N/27.5-29) - 1F -SUW-FAB110511,,,,,,,,,,2025-08-22 08:00,2025-08-22 17:00,2025-08-22 08:00,2025-08-22 17:00,2025-11-20 17:00,2025-11-20 17:00,2025-12-05 17:00,2025-12-05 17:00,0,8,100
FAB110511B-01,IMPACT - PATRIOT CLADDING HEADER FIX (RFI1789) - FAB110511B,Complete,W-SOLVENT RM (N/27.5-29) - 1F -SUW-FAB110511,,,,,,,,,,2025-08-22 08:00,2025-08-22 17:00,2025-08-22 08:00,2025-08-22 17:00,2025-11-20 17:00,2025-11-20 17:00,2025-12-05 17:00,2025-12-05 17:00,0,8,100
FAB110511B-03,SECAI ROUGH IN FRAME - FAB110511B HANDED OVER TO SECAI,Complete,W-SOLVENT RM (N/27.5-29) - 1F -SUW-FAB110511,,,,,,,,,,2025-08-22 08:00,2025-08-22 17:00,2025-08-22 08:00,2025-08-22 17:00,2025-11-20 17:00,2025-11-20 17:00,2025-12-05 17:00,2025-12-05 17:00,0,8,100
FAB110511C-02,INSTALL DOOR FRAMES - FAB110511C HANDED OVER TO SECAI,Complete,W-SOLVENT RM (N/27.5-29) - 1F -SUW-FAB110511,,,,,,,,,,2025-08-22 08:00,2025-08-22 17:00,2025-08-22 08:00,2025-08-22 17:00,2025-11-20 17:00,2025-11-20 17:00,2025-12-05 17:00,2025-12-05 17:00,0,8,100
FAB110511C-04,DOOR INSTALL - FAB110511C HANDED OVER TO SECAI,Complete,W-SOLVENT RM (N/27.5-29) - 1F -SUW-FAB110511,,,,,,,,,,2025-08-22 08:00,2025-08-22 17:00,2025-08-22 08:00,2025-08-22 17:00,2025-11-20 17:00,2025-11-20 17:00,2025-12-05 17:00,2025-12-05 17:00,0,8,100
FAB110511C-01,IMPACT - PATRIOT CLADDING HEADER FIX (RFI1789) - FAB110511C,Complete,W-SOLVENT RM (N/27.5-29) - 1F -SUW-FAB110511,,,,,,,,,,2025-08-22 08:00,2025-08-22 17:00,2025-08-22 08:00,2025-08-22 17:00,2025-11-20 17:00,2025-11-20 17:00,2025-12-05 17:00,2025-12-05 17:00,0,8,100
FAB110511C-03,SECAI ROUGH IN FRAME - FAB110511C HANDED OVER TO SECAI,Complete,W-SOLVENT RM (N/27.5-29) - 1F -SUW-FAB110511,,,,,,,,,,2025-08-22 08:00,2025-08-22 17:00,2025-08-22 08:00,2025-08-22 17:00,2025-11-20 17:00,2025-11-20 17:00,2025-12-05 17:00,2025-12-05 17:00,0,8,100
FAB110511D-02,INSTALL DOOR FRAMES - FAB110511D,Complete,W-SOLVENT RM (N/27.5-29) - 1F -SUW-FAB110511,,,,,,,,,,2025-06-13 08:00,2025-06-16 17:00,2025-05-23 08:00,2025-05-23 16:00,2025-11-20 17:00,2025-11-20 17:00,2025-12-02 10:00,2025-12-02 10:00,0,16,100
FAB110511D-04,DOOR INSTALL - FAB110511D,Complete,W-SOLVENT RM (N/27.5-29) - 1F -SUW-FAB110511,,,,,,,,,,2025-08-29 08:00,2025-08-29 17:00,2025-08-29 08:00,2025-08-29 17:00,2025-11-20 17:00,2025-11-20 17:00,2025-12-02 10:00,2025-12-02 10:00,0,8,100
FAB110511D-01,IMPACT - PATRIOT CLADDING HEADER FIX - FAB110511D,Complete,W-SOLVENT RM (N/27.5-29) - 1F -SUW-FAB110511,,,,,,,,,,2025-06-02 09:51,2025-06-06 17:00,2025-05-19 09:51,2025-05-21 16:00,2025-11-20 17:00,2025-11-20 17:00,2025-12-02 10:00,2025-12-02 10:00,0,38.15,100
FAB110511D-03,SECAI ROUGH IN FRAME - FAB110511D,Complete,W-SOLVENT RM (N/27.5-29) - 1F -SUW-FAB110511,,,,,,,,,,2025-06-13 08:00,2025-06-13 17:00,2025-05-23 08:00,2025-05-23 16:00,2025-11-20 17:00,2025-11-20 17:00,2025-12-02 10:00,2025-12-02 10:00,0,8,100
FAB110511D-07,DOOR FRAME PAINT & 1ST COAT - FAB110511D,Complete,W-SOLVENT RM (N/27.5-29) - 1F -SUW-FAB110511,,,,,,,,,,2025-08-25 08:00,2025-08-27 17:00,2025-08-25 08:00,2025-08-27 17:00,2025-11-20 17:00,2025-11-20 17:00,2025-12-02 10:00,2025-12-02 10:00,0,24,100
FAB110511D-05,PAINT & PROTECT DOORS & FRAMES - FAB110511D,Complete,W-SOLVENT RM (N/27.5-29) - 1F -SUW-FAB110511,,,,,,,,,,2025-10-15 08:00,2025-10-20 15:00,2025-10-15 08:00,2025-10-20 15:00,2025-11-20 17:00,2025-11-20 17:00,2025-12-02 10:00,2025-12-02 10:00,0,30,100
FAB110511D-06,INSTALL DOOR HARDWARE - FAB110511D,Not Started,W-SOLVENT RM (N/27.5-29) - 1F -SUW-FAB110511,,,,,,,,,,2025-11-21 08:00,2025-11-26 15:00,,,2025-11-21 08:00,2025-11-26 15:00,2025-12-02 10:00,2025-12-05 17:00,30,30,0
FAB110511A-02,INSTALL DOOR FRAME BY SECAI - FAB110511A HANDED OVER 06/27,Complete,W-SOLVENT RM (N/27.5-29) - 1F -SUW-FAB110511,,,,,,,,,,2025-06-27 08:00,2025-07-10 17:00,2025-06-28 08:00,2025-08-12 17:00,2025-11-20 17:00,2025-11-20 17:00,2025-11-25 10:00,2025-11-25 10:00,0,80,100
FAB110511A-04,INSTALL DOOR & HARDWARE - FAB110511A,Active,W-SOLVENT RM (N/27.5-29) - 1F -SUW-FAB110511,,,,,,,,,,2025-11-04 08:00,2025-11-10 17:00,2025-11-04 08:00,,2025-11-21 08:00,2025-11-27 17:00,2025-11-25 10:00,2025-12-02 10:00,40,40,0
FAB110511A-01,IMPACT - PATRIOT CLADDING HEADER FIX - FAB110511A,Complete,W-SOLVENT RM (N/27.5-29) - 1F -SUW-FAB110511,,,,,,,,,,2025-06-02 09:51,2025-06-06 17:00,2025-05-19 09:51,2025-05-21 16:00,2025-11-20 17:00,2025-11-20 17:00,2025-11-25 10:00,2025-11-25 10:00,0,38.15,100
FAB110511A-05,PAINT & PROTECT DOORS & FRAMES - FAB110511A,Not Started,W-SOLVENT RM (N/27.5-29) - 1F -SUW-FAB110511,,,,,,,,,,2026-02-16 08:00,2026-02-19 15:00,,,2026-02-16 08:00,2026-02-19 15:00,2025-12-02 10:00,2025-12-05 17:00,30,30,0
FAB110511A-13,DOOR FRAME HANDED OVER TO SECAI ON 06/27 - FAB110511A,Complete,W-SOLVENT RM (N/27.5-29) - 1F -SUW-FAB110511,,,,,,,,,,2025-06-27 08:00,2025-06-27 17:00,2025-06-27 08:00,2025-06-27 16:00,2025-11-20 17:00,2025-11-20 17:00,2025-11-25 10:00,2025-11-25 10:00,0,8,100
ZX-9009,SECAI TURNOVER FOR ACELERATION - Drywall & Inspect - LAB AIRLOCK/SMOCK FAB112103 BAKER/DESCOPE,Complete,LAB AIRLOCK/SMOCK- 1F -FIZ-FAB112103,,,,,,,,,,2025-05-19 13:00,2025-05-19 13:00,2025-05-06 12:00,2025-05-06 12:00,2025-11-20 17:00,2025-11-20 17:00,2025-12-05 17:00,2025-12-05 17:00,0,0,100
ZX-9019,SECAI TURNOVER FOR ACELERATION - Fire Caulk & Inspect - LAB AIRLOCK/SMOCK FAB112103 BAKER/DESCOPE,Complete,LAB AIRLOCK/SMOCK- 1F -FIZ-FAB112103,,,,,,,,,,2025-06-06 13:00,2025-06-06 13:00,2025-05-06 12:00,2025-05-06 12:00,2025-11-20 17:00,2025-11-20 17:00,2025-12-05 17:00,2025-12-05 17:00,0,0,100
ZX-9029,SECAI TURNOVER FOR ACELERATION - Control Joint & Inspect & Inspect - LAB AIRLOCK/SMOCK FAB112103 BAKER/DESCOPE,Complete,LAB AIRLOCK/SMOCK- 1F -FIZ-FAB112103,,,,,,,,,,2025-06-06 13:00,2025-06-06 13:00,2025-05-06 12:00,2025-05-06 12:00,2025-11-20 17:00,2025-11-20 17:00,2025-12-05 17:00,2025-12-05 17:00,0,0,100
FAB112103A-02,INSTALL DOOR FRAMES - FAB112103A,Complete,LAB AIRLOCK/SMOCK- 1F -FIZ-FAB112103,,,,,,,,,,2025-08-08 08:00,2025-08-08 17:00,2025-08-08 08:00,2025-08-08 17:00,2025-11-20 17:00,2025-11-20 17:00,2025-11-25 10:00,2025-11-25 10:00,0,8,100
FAB112103A-04,INSTALL DOOR & HARDWARE - FAB112103A,Active,LAB AIRLOCK/SMOCK- 1F -FIZ-FAB112103,,,,,,,,,,2025-08-19 08:00,2025-08-25 17:00,2025-08-19 08:00,,2025-11-21 08:00,2025-11-27 17:00,2025-11-25 10:00,2025-12-02 10:00,40,40,0
FAB112103A-01,IMPACT - PATRIOT CLADDING HEADER FIX - FAB112103A,Complete,LAB AIRLOCK/SMOCK- 1F -FIZ-FAB112103,,,,,,,,,,2025-06-02 09:51,2025-06-06 17:00,2025-06-02 09:51,2025-08-07 17:00,2025-11-20 17:00,2025-11-20 17:00,2025-11-25 10:00,2025-11-25 10:00,0,38.15,100
FAB112103A-03,SECAI ROUGH IN FRAME - FAB112103A,Complete,LAB AIRLOCK/SMOCK- 1F -FIZ-FAB112103,,,,,,,,,,2025-08-08 08:00,2025-08-08 17:00,2025-08-08 08:00,2025-08-08 17:00,2025-11-20 17:00,2025-11-20 17:00,2025-11-25 10:00,2025-11-25 10:00,0,8,100
FAB112103B-02,INSTALL DOOR FRAMES - FAB112103B,Complete,LAB AIRLOCK/SMOCK- 1F -FIZ-FAB112103,,,,,,,,,,2025-06-13 08:00,2025-06-16 17:00,2025-05-19 08:00,2025-05-19 16:00,2025-11-20 17:00,2025-11-20 17:00,2025-11-21 08:00,2025-11-21 08:00,0,16,100
FAB112103B-04,INSTALL DOOR & HARDWARE - FAB112103B,Active,LAB AIRLOCK/SMOCK- 1F -FIZ-FAB112103,,,,,,,,,,2025-08-12 08:00,2025-08-18 17:00,2025-08-12 08:00,,2025-11-21 08:00,2025-11-27 17:00,2025-11-25 10:00,2025-12-02 10:00,40,40,0
FAB112103B-03,SECAI ROUGH IN FRAME - FAB112103B,Complete,LAB AIRLOCK/SMOCK- 1F -FIZ-FAB112103,,,,,,,,,,2025-06-13 08:00,2025-06-13 17:00,2025-05-19 08:00,2025-05-19 16:00,2025-11-20 17:00,2025-11-20 17:00,2025-11-25 08:00,2025-11-25 08:00,0,8,100
FAB112103B-07,DOOR FRAME PAINT & 1ST COAT - FAB112103B,Complete,LAB AIRLOCK/SMOCK- 1F -FIZ-FAB112103,,,,,,,,,,2025-08-07 08:00,2025-08-11 17:00,2025-08-07 08:00,2025-08-11 17:00,2025-11-20 17:00,2025-11-20 17:00,2025-11-25 10:00,2025-11-25 10:00,0,24,100
FAB112103B-05,PAINT & PROTECT DOORS & FRAMES - FAB112103B,Not Started,LAB AIRLOCK/SMOCK- 1F -FIZ-FAB112103,,,,,,,,,,2026-02-16 08:00,2026-02-19 15:00,,,2026-02-16 08:00,2026-02-19 15:00,2025-12-02 10:00,2025-12-05 17:00,30,30,0
FAB112103A-05,PAINT & PROTECT DOORS & FRAMES - FAB112103A,Not Started,LAB AIRLOCK/SMOCK- 1F -FIZ-FAB112103,,,,,,,,,,2026-02-16 08:00,2026-02-19 15:00,,,2026-02-16 08:00,2026-02-19 15:00,2025-12-02 10:00,2025-12-05 17:00,30,30,0
FAB112103A-90,DOOR FRAME GROUT - FAB112103A (INCLUDE MOBILIZATION AND CURE TIME),Complete,LAB AIRLOCK/SMOCK- 1F -FIZ-FAB112103,,,,,,,,,,2025-08-19 08:00,2025-08-19 17:00,2025-08-15 08:00,2025-08-15 17:00,2025-11-20 17:00,2025-11-20 17:00,2025-11-25 10:00,2025-11-25 10:00,0,8,100
FAB112103C-00,SECAI SCP WALL FINISH - FAB112103C,Active,LAB AIRLOCK/SMOCK- 1F -FIZ-FAB112103,,,,,,,,,,2025-09-01 08:00,2025-09-02 10:00,2025-09-01 08:00,,2025-11-21 08:00,2025-11-28 17:00,2025-11-05 08:00,2025-11-12 17:00,48,10,0
FAB112103C-01,DOOR ASSEMBLY - FAB112103C,Not Started,LAB AIRLOCK/SMOCK- 1F -FIZ-FAB112103,,,,,,,,,,2025-12-01 08:00,2025-12-02 17:00,,,2025-12-01 08:00,2025-12-02 17:00,2025-11-13 08:00,2025-11-14 17:00,16,16,0
FAB112103C-02,DOOR PACKAGE INSTALL - FAB112103C,Not Started,LAB AIRLOCK/SMOCK- 1F -FIZ-FAB112103,,,,,,,,,,2025-12-02 08:00,2025-12-03 17:00,,,2025-12-02 08:00,2025-12-03 17:00,2025-11-26 08:00,2025-11-27 17:00,16,16,0
FAB112103D-00,SECAI SCP WALL FINISH - FAB112103D,Complete,LAB AIRLOCK/SMOCK- 1F -FIZ-FAB112103,,,,,,,,,,2025-10-14 08:00,2025-10-15 10:00,2025-09-03 08:00,2025-10-15 10:00,2025-11-20 17:00,2025-11-20 17:00,2025-11-25 08:00,2025-11-25 08:00,0,10,100
FAB112103D-01,DOOR ASSEMBLY - FAB112103D,Complete,LAB AIRLOCK/SMOCK- 1F -FIZ-FAB112103,,,,,,,,,,2025-10-15 08:00,2025-10-16 17:00,2025-10-15 08:00,2025-10-16 17:00,2025-11-20 17:00,2025-11-20 17:00,2025-12-03 08:00,2025-12-03 08:00,0,16,100
FAB112103D-02,DOOR PACKAGE INSTALL - FAB112103D,Complete,LAB AIRLOCK/SMOCK- 1F -FIZ-FAB112103,,,,,,,,,,2025-10-15 08:00,2025-10-16 17:00,2025-10-15 08:00,2025-10-16 17:00,2025-11-20 17:00,2025-11-20 17:00,2025-12-03 08:00,2025-12-03 08:00,0,16,100
FAB112103B-15,IMPACT - FRAME DAMAGED BY SECAI'S TRADE - FAB112103B,Complete,LAB AIRLOCK/SMOCK- 1F -FIZ-FAB112103,,,,,,,,,,2025-06-27 08:00,2025-07-10 17:00,2025-06-27 08:00,2025-08-05 17:00,2025-11-20 17:00,2025-11-20 17:00,2025-11-25 08:00,2025-11-25 08:00,0,80,100
FAB116410A-02,INSTALL DOOR FRAMES - FAB116410A,Complete,Wafer I/O Vestibule (A/27-28.3) - 1F -SUE-FAB116504,,,,,,,,,,2025-08-01 08:00,2025-08-01 17:00,2025-08-01 08:00,2025-08-01 17:00,2025-11-20 17:00,2025-11-20 17:00,2025-11-25 10:00,2025-11-25 10:00,0,8,100
FAB116410A-04,INSTALL DOOR & HARDWARE - FAB116410A,Active,Wafer I/O Vestibule (A/27-28.3) - 1F -SUE-FAB116504,,,,,,,,,,2025-08-26 08:00,2025-09-01 17:00,2025-08-26 08:00,,2025-11-21 08:00,2025-11-27 17:00,2025-11-25 10:00,2025-12-02 10:00,40,40,0
FAB116410A-01,IMPACT - PATRIOT CLADDING HEADER FIX - FAB116410A,Complete,Wafer I/O Vestibule (A/27-28.3) - 1F -SUE-FAB116504,,,,,,,,,,2025-07-29 08:00,2025-07-31 17:00,2025-07-29 08:00,2025-07-31 17:00,2025-11-20 17:00,2025-11-20 17:00,2025-11-25 10:00,2025-11-25 10:00,0,24,100
FAB116410A-03,SECAI ROUGH IN FRAME - FAB116410A,Complete,Wafer I/O Vestibule (A/27-28.3) - 1F -SUE-FAB116504,,,,,,,,,,2025-08-01 08:00,2025-08-01 17:00,2025-08-01 08:00,2025-08-01 17:00,2025-11-20 17:00,2025-11-20 17:00,2025-11-25 10:00,2025-11-25 10:00,0,8,100
FAB116410B-02,INSTALL DOOR FRAMES - FAB116410B,Complete,Wafer I/O Vestibule (A/27-28.3) - 1F -SUE-FAB116504,,,,,,,,,,2025-07-09 08:00,2025-07-09 17:00,2025-06-20 08:00,2025-06-20 16:00,2025-11-20 17:00,2025-11-20 17:00,2025-11-25 08:00,2025-11-25 08:00,0,8,100
FAB116410B-04,INSTALL DOOR & HARDWARE - FAB116410B,Active,Wafer I/O Vestibule (A/27-28.3) - 1F -SUE-FAB116504,,,,,,,,,,2025-08-13 08:00,2025-08-19 17:00,2025-08-13 08:00,,2025-11-21 08:00,2025-11-27 17:00,2025-11-25 10:00,2025-12-02 10:00,40,40,0
FAB116410B-01,IMPACT - PATRIOT CLADDING HEADER FIX - FAB116410B,Complete,Wafer I/O Vestibule (A/27-28.3) - 1F -SUE-FAB116504,,,,,,,,,,2025-06-13 08:00,2025-06-26 17:00,2025-05-29 08:00,2025-06-10 16:00,2025-11-20 17:00,2025-11-20 17:00,2025-11-25 08:00,2025-11-25 08:00,0,80,100
FAB116410B-03,SECAI ROUGH IN FRAME - FAB116410B,Complete,Wafer I/O Vestibule (A/27-28.3) - 1F -SUE-FAB116504,,,,,,,,,,2025-07-08 08:00,2025-07-08 17:00,2025-06-20 08:00,2025-06-20 16:00,2025-11-20 17:00,2025-11-20 17:00,2025-11-25 10:00,2025-11-25 10:00,0,8,100
FAB116410B-07,DOOR FRAME PAINT & 1ST COAT - FAB116410B,Complete,Wafer I/O Vestibule (A/27-28.3) - 1F -SUE-FAB116504,,,,,,,,,,2025-08-08 08:00,2025-08-12 17:00,2025-08-08 08:00,2025-08-12 17:00,2025-11-20 17:00,2025-11-20 17:00,2025-11-25 10:00,2025-11-25 10:00,0,24,100
FAB116410B-05,PAINT & PROTECT DOORS & FRAMES -  FAB116410B,Not Started,Wafer I/O Vestibule (A/27-28.3) - 1F -SUE-FAB116504,,,,,,,,,,2026-02-16 08:00,2026-02-19 15:00,,,2026-02-16 08:00,2026-02-19 15:00,2025-12-02 10:00,2025-12-05 17:00,30,30,0
FAB116410A-07,DOOR FRAME PAINT & 1ST COAT - FAB116410A,Complete,Wafer I/O Vestibule (A/27-28.3) - 1F -SUE-FAB116504,,,,,,,,,,2025-08-21 08:00,2025-08-25 17:00,2025-08-21 08:00,2025-08-25 08:00,2025-11-20 17:00,2025-11-20 17:00,2025-11-25 10:00,2025-11-25 10:00,0,24,100
FAB116410A-05,PAINT & PROTECT DOORS & FRAMES -  FAB116410A,Not Started,Wafer I/O Vestibule (A/27-28.3) - 1F -SUE-FAB116504,,,,,,,,,,2026-02-16 08:00,2026-02-19 15:00,,,2026-02-16 08:00,2026-02-19 15:00,2025-12-02 10:00,2025-12-05 17:00,30,30,0
FAB116504A-00,SECAI SCP WALL FINISH - FAB116504A,Complete,Wafer I/O Vestibule (A/27-28.3) - 1F -SUE-FAB116504,,,,,,,,,,2025-10-28 08:00,2025-10-28 17:00,2025-08-14 08:00,2025-10-28 17:00,2025-11-20 17:00,2025-11-20 17:00,2025-11-26 08:00,2025-11-26 08:00,0,8,100
FAB116504A-01,DOOR ASSEMBLY - FAB116504A,Complete,Wafer I/O Vestibule (A/27-28.3) - 1F -SUE-FAB116504,,,,,,,,,,2025-10-29 08:00,2025-10-30 17:00,2025-10-29 08:00,2025-10-30 17:00,2025-11-20 17:00,2025-11-20 17:00,2025-12-02 08:00,2025-12-02 08:00,0,16,100
FAB116504A-02,DOOR PACKAGE INSTALL - FAB116504A,Complete,Wafer I/O Vestibule (A/27-28.3) - 1F -SUE-FAB116504,,,,,,,,,,2025-10-29 08:00,2025-10-30 17:00,2025-10-29 08:00,2025-10-30 17:00,2025-11-20 17:00,2025-11-20 17:00,2025-12-05 17:00,2025-12-05 17:00,0,16,100
FAB116504B-00,SECAI SCP WALL FINISH - FAB116504B,Complete,Wafer I/O Vestibule (A/27-28.3) - 1F -SUE-FAB116504,,,,,,,,,,2025-10-28 08:00,2025-10-28 17:00,2025-08-08 08:00,2025-10-28 17:00,2025-11-20 17:00,2025-11-20 17:00,2025-11-26 08:00,2025-11-26 08:00,0,8,100
FAB116504B-01,DOOR ASSEMBLY - FAB116504B,Complete,Wafer I/O Vestibule (A/27-28.3) - 1F -SUE-FAB116504,,,,,,,,,,2025-10-29 08:00,2025-10-30 17:00,2025-10-29 08:00,2025-10-30 17:00,2025-11-20 17:00,2025-11-20 17:00,2025-12-02 08:00,2025-12-02 08:00,0,16,100
FAB116504B-02,DOOR PACKAGE INSTALL - FAB116504B,Complete,Wafer I/O Vestibule (A/27-28.3) - 1F -SUE-FAB116504,,,,,,,,,,2025-10-29 08:00,2025-10-30 17:00,2025-10-29 08:00,2025-10-30 17:00,2025-11-20 17:00,2025-11-20 17:00,2025-12-05 17:00,2025-12-05 17:00,0,16,100
FAB116504F-00,SECAI SCP WALL FINISH - FAB116504F,Complete,Wafer I/O Vestibule (A/27-28.3) - 1F -SUE-FAB116504,,,,,,,,,,2025-10-28 08:00,2025-10-28 17:00,2025-08-12 08:00,2025-10-28 17:00,2025-11-20 17:00,2025-11-20 17:00,2025-11-26 08:00,2025-11-26 08:00,0,8,100
FAB116504F-01,DOOR ASSEMBLY - FAB116504F,Complete,Wafer I/O Vestibule (A/27-28.3) - 1F -SUE-FAB116504,,,,,,,,,,2025-10-29 08:00,2025-10-30 17:00,2025-10-29 08:00,2025-10-30 17:00,2025-11-20 17:00,2025-11-20 17:00,2025-12-02 08:00,2025-12-02 08:00,0,16,100
FAB116504F-02,DOOR PACKAGE INSTALL - FAB116504F,Complete,Wafer I/O Vestibule (A/27-28.3) - 1F -SUE-FAB116504,,,,,,,,,,2025-10-29 08:00,2025-10-30 17:00,2025-10-29 08:00,2025-10-30 17:00,2025-11-20 17:00,2025-11-20 17:00,2025-12-05 17:00,2025-12-05 17:00,0,16,100
FAB116509D-02,INSTALL DOOR FRAMES - FAB116509D,Complete,PR Vestibule - 1F -SUE-FAB116523,,,,,,,,,,2025-06-13 08:00,2025-06-16 17:00,2025-05-17 08:00,2025-05-17 16:00,2025-11-20 17:00,2025-11-20 17:00,2025-11-25 10:00,2025-11-25 10:00,0,16,100
FAB116509D-04,INSTALL DOOR & HARDWARE - FAB116509D,Not Started,PR Vestibule - 1F -SUE-FAB116523,,,,,,,,,,2025-11-25 08:00,2025-12-01 17:00,,,2025-11-25 08:00,2025-12-01 17:00,2025-11-25 10:00,2025-12-02 10:00,40,40,0
FAB116509D-03,SECAI ROUGH IN FRAME - FAB116509D,Complete,PR Vestibule - 1F -SUE-FAB116523,,,,,,,,,,2025-06-13 08:00,2025-06-13 17:00,2025-05-17 08:00,2025-05-17 16:00,2025-11-20 17:00,2025-11-20 17:00,2025-11-25 10:00,2025-11-25 10:00,0,8,100
FAB116509E-02,INSTALL DOOR FRAMES - FAB116509E,Complete,PR Vestibule - 1F -SUE-FAB116523,,,,,,,,,,2025-08-11 08:00,2025-08-11 17:00,2025-08-13 08:00,2025-08-13 17:00,2025-11-20 17:00,2025-11-20 17:00,2025-11-21 10:00,2025-11-21 10:00,0,8,100
FAB116509E-04,INSTALL DOOR & HARDWARE - FAB116509E,Not Started,PR Vestibule - 1F -SUE-FAB116523,,,,,,,,,,2025-11-21 08:00,2025-11-27 17:00,,,2025-11-21 08:00,2025-11-27 17:00,2025-11-25 10:00,2025-12-02 10:00,40,40,0
FAB116509D-05,PAINT & PROTECT DOORS & FRAMES -  FAB116509D,Not Started,PR Vestibule - 1F -SUE-FAB116523,,,,,,,,,,2026-02-16 08:00,2026-02-19 15:00,,,2026-02-16 08:00,2026-02-19 15:00,2025-12-02 10:00,2025-12-05 17:00,30,30,0
FAB116509E-05,PAINT & PROTECT DOORS & FRAMES -  FAB116509E,Not Started,PR Vestibule - 1F -SUE-FAB116523,,,,,,,,,,2026-02-16 08:00,2026-02-19 15:00,,,2026-02-16 08:00,2026-02-19 15:00,2025-12-02 10:00,2025-12-05 17:00,30,30,0
FAB116509E-08,IMPACT - MATRIAL TAKEN BY THIRD PARTY - FAB116509E,Complete,PR Vestibule - 1F -SUE-FAB116523,,,,,,,,,,2025-06-13 08:00,2025-07-03 17:00,2025-06-13 08:00,2025-08-12 17:00,2025-11-20 17:00,2025-11-20 17:00,2025-11-21 10:00,2025-11-21 10:00,0,120,100
FAB116509E-09,IMPACT DOOR FRAME REMEDIATION - FAB116509E,Complete,PR Vestibule - 1F -SUE-FAB116523,,,,,,,,,,2025-08-08 08:00,2025-08-08 17:00,2025-08-08 08:00,2025-08-08 17:00,2025-11-20 17:00,2025-11-20 17:00,2025-11-21 10:00,2025-11-21 10:00,0,8,100
FAB116509D-50,IMPACT - FRAME DAMAGED BY SECAI'S TRADE - FAB116509D,Not Started,PR Vestibule - 1F -SUE-FAB116523,,,,,,,,,,2025-11-21 08:00,2025-11-24 17:00,,,2025-11-21 08:00,2025-11-24 17:00,2025-11-21 10:00,2025-11-25 10:00,16,16,0
FAB114107C-13,DOOR FRAME HANDED OVER TO SECAI ON 06/27 - FAB114107C - P1,Complete,FA Lab-7 - 1F -FIZ-FAB114107,,,,,,,,,,2025-07-03 08:00,2025-07-03 17:00,2025-06-27 08:00,2025-06-27 16:00,2025-11-20 17:00,2025-11-20 17:00,2025-11-25 10:00,2025-11-25 10:00,0,8,100
FAB114107C-02,IMPACT - SECAI HOLD UNTIL RAISE ACCESS FLOOR INSTALL - FAB114107C - P1,Complete,FA Lab-7 - 1F -FIZ-FAB114107,,,,,,,,,,2025-06-27 08:00,2025-06-27 17:00,2025-06-27 08:00,2025-06-27 16:00,2025-11-20 17:00,2025-11-20 17:00,2025-11-25 10:00,2025-11-25 10:00,0,8,100
FAB114107C-03,INSTALL DOOR FRAME BY SECAI - FAB114107C - P1 HANDED OVER 06/27,Complete,FA Lab-7 - 1F -FIZ-FAB114107,,,,,,,,,,2025-07-03 08:00,2025-07-16 17:00,2025-06-28 08:00,2025-09-06 08:00,2025-11-20 17:00,2025-11-20 17:00,2025-11-25 10:00,2025-11-25 10:00,0,80,100
FAB114107C-04,INSTALL DOOR & HARDWARE - FAB114107C - P1,Active,FA Lab-7 - 1F -FIZ-FAB114107,,,,,,,,,,2025-10-30 08:00,2025-11-05 17:00,2025-10-30 08:00,,2025-11-21 08:00,2025-11-27 17:00,2025-11-25 10:00,2025-12-02 10:00,40,40,0
FAB114107C-05,PAINT & PROTECT DOORS & FRAMES - FAB114107C,Not Started,FA Lab-7 - 1F -FIZ-FAB114107,,,,,,,,,,2026-02-16 08:00,2026-02-19 15:00,,,2026-02-16 08:00,2026-02-19 15:00,2025-12-02 10:00,2025-12-05 17:00,30,30,0
FAB114107B-01,IMPACT - INSTALL/REWORK DRYWALL FRAMING AROUND DOORS - FAB114107B,Complete,FA Lab-7 - 1F -FIZ-FAB114107,,,,,,,,,,2025-06-27 08:00,2025-06-27 17:00,2025-03-21 08:00,2025-03-21 16:00,2025-11-20 17:00,2025-11-20 17:00,2025-11-25 10:00,2025-11-25 10:00,0,8,100
FAB114107B-02,SECAI ROUGH IN/SECURITY - FAB114107B,Complete,FA Lab-7 - 1F -FIZ-FAB114107,,,,,,,,,,2025-06-27 08:00,2025-06-27 17:00,2025-03-21 08:00,2025-03-21 16:00,2025-11-20 17:00,2025-11-20 17:00,2025-11-25 10:00,2025-11-25 10:00,0,8,100
FAB114107B-03,INSTALL DOOR FRAMES - FAB114107B,Complete,FA Lab-7 - 1F -FIZ-FAB114107,,,,,,,,,,2025-03-21 08:00,2025-03-21 17:00,2025-03-21 08:00,2025-03-21 17:00,2025-11-20 17:00,2025-11-20 17:00,2025-11-25 10:00,2025-11-25 10:00,0,8,100
FAB114107B-04,INSTALL DOOR & HARDWARE - FAB114107B,Active,FA Lab-7 - 1F -FIZ-FAB114107,,,,,,,,,,2025-08-29 08:00,2025-09-04 17:00,2025-08-29 08:00,,2025-11-21 08:00,2025-11-27 17:00,2025-11-25 10:00,2025-12-02 10:00,40,40,0
FAB114107B-05,PAINT & PROTECT DOORS & FRAMES - FAB114107B,Not Started,FA Lab-7 - 1F -FIZ-FAB114107,,,,,,,,,,2026-02-16 08:00,2026-02-19 15:00,,,2026-02-16 08:00,2026-02-19 15:00,2025-12-02 10:00,2025-12-05 17:00,30,30,0
FAB112102A-00,SECAI SCP WALL FINISH - FAB112102A,Active,Lab Stock - 1F -FIZ-FAB112102,,,,,,,,,,2025-08-26 10:00,2025-08-27 12:00,2025-08-26 10:00,,2025-12-03 08:00,2025-12-10 17:00,2025-11-17 08:00,2025-11-24 17:00,48,10,0
FAB112102A-01,DOOR ASSEMBLY - FAB112102A,Not Started,Lab Stock - 1F -FIZ-FAB112102,,,,,,,,,,2025-12-11 08:00,2025-12-12 17:00,,,2025-12-11 08:00,2025-12-12 17:00,2025-11-28 08:00,2025-12-01 17:00,16,16,0
FAB112102A-02,DOOR PACKAGE INSTALL - FAB112102A,Not Started,Lab Stock - 1F -FIZ-FAB112102,,,,,,,,,,2025-12-12 08:00,2025-12-15 17:00,,,2025-12-12 08:00,2025-12-15 17:00,2025-12-01 08:00,2025-12-02 17:00,16,16,0
FAB112105A-00,SECAI SCP WALL FINISH - FAB112105A,Active,Tem Lab-1 - 1F -FIZ-FAB112105,,,,,,,,,,2025-08-29 08:00,2025-08-29 17:00,2025-08-29 08:00,,2025-11-21 08:00,2025-11-28 17:00,2025-11-25 08:00,2025-12-02 17:00,48,8,0
FAB112105A-01,DOOR ASSEMBLY - FAB112105A,Not Started,Tem Lab-1 - 1F -FIZ-FAB112105,,,,,,,,,,2025-12-01 08:00,2025-12-02 17:00,,,2025-12-01 08:00,2025-12-02 17:00,2025-12-03 08:00,2025-12-04 17:00,16,16,0
FAB112105A-02,DOOR PACKAGE INSTALL - FAB112105A,Not Started,Tem Lab-1 - 1F -FIZ-FAB112105,,,,,,,,,,2025-12-02 08:00,2025-12-03 17:00,,,2025-12-02 08:00,2025-12-03 17:00,2025-12-04 08:00,2025-12-05 17:00,16,16,0
FAB112108A-00,SECAI SCP WALL FINISH - FAB112108A,Complete,Tem Lab-2 - 1F -FIZ-FAB112108,,,,,,,,,,2025-10-13 08:00,2025-10-13 17:00,2025-09-05 08:00,2025-10-13 17:00,2025-11-20 17:00,2025-11-20 17:00,2025-11-05 08:00,2025-11-05 08:00,0,8,100
FAB112108A-01,DOOR ASSEMBLY - FAB112108A,Complete,Tem Lab-2 - 1F -FIZ-FAB112108,,,,,,,,,,2025-10-13 08:00,2025-10-14 17:00,2025-10-13 08:00,2025-10-14 17:00,2025-11-20 17:00,2025-11-20 17:00,2025-11-13 08:00,2025-11-13 08:00,0,16,100
FAB112108A-02,DOOR PACKAGE INSTALL - FAB112108A,Complete,Tem Lab-2 - 1F -FIZ-FAB112108,,,,,,,,,,2025-10-13 08:00,2025-10-14 17:00,2025-10-13 08:00,2025-10-14 17:00,2025-11-20 17:00,2025-11-20 17:00,2025-11-13 08:00,2025-11-13 08:00,0,16,100
FAB112109A-00,SECAI SCP WALL FINISH - FAB112109A,Complete,Tem Lab-3 - 1F -FIZ-FAB112109,,,,,,,,,,2025-10-10 08:00,2025-10-10 17:00,2025-09-09 08:00,2025-10-10 17:00,2025-11-20 17:00,2025-11-20 17:00,2025-11-25 08:00,2025-11-25 08:00,0,8,100
FAB112109A-01,DOOR ASSEMBLY - FAB112109A,Complete,Tem Lab-3 - 1F -FIZ-FAB112109,,,,,,,,,,2025-10-13 08:00,2025-10-14 17:00,2025-10-13 08:00,2025-10-14 17:00,2025-11-20 17:00,2025-11-20 17:00,2025-12-03 08:00,2025-12-03 08:00,0,16,100
FAB112109A-02,DOOR PACKAGE INSTALL - FAB112109A,Complete,Tem Lab-3 - 1F -FIZ-FAB112109,,,,,,,,,,2025-10-13 08:00,2025-10-14 17:00,2025-10-13 08:00,2025-10-14 17:00,2025-11-20 17:00,2025-11-20 17:00,2025-12-03 08:00,2025-12-03 08:00,0,16,100
FAB112110A-00,SECAI SCP WALL FINISH - FAB112110A,Complete,Tem Lab-4 - 1F -FIZ-FAB112110,,,,,,,,,,2025-10-10 08:00,2025-10-10 17:00,2025-09-11 08:00,2025-10-10 17:00,2025-11-20 17:00,2025-11-20 17:00,2025-11-05 08:00,2025-11-05 08:00,0,8,100
FAB112110A-01,DOOR ASSEMBLY - FAB112110A,Complete,Tem Lab-4 - 1F -FIZ-FAB112110,,,,,,,,,,2025-10-13 08:00,2025-10-14 17:00,2025-10-13 08:00,2025-10-14 17:00,2025-11-20 17:00,2025-11-20 17:00,2025-11-13 08:00,2025-11-13 08:00,0,16,100
FAB112110A-02,DOOR PACKAGE INSTALL - FAB112110A,Complete,Tem Lab-4 - 1F -FIZ-FAB112110,,,,,,,,,,2025-10-13 08:00,2025-10-14 17:00,2025-10-13 08:00,2025-10-14 17:00,2025-11-20 17:00,2025-11-20 17:00,2025-11-13 08:00,2025-11-13 08:00,0,16,100
FAB112111A-00,SECAI SCP WALL FINISH - FAB112111A,Complete,Tem Lab-5 - 1F -FIZ-FAB112111,,,,,,,,,,2025-10-09 08:00,2025-10-09 17:00,2025-09-15 08:00,2025-10-09 17:00,2025-11-20 17:00,2025-11-20 17:00,2025-11-25 08:00,2025-11-25 08:00,0,8,100
FAB112111A-01,DOOR ASSEMBLY - FAB112111A,Complete,Tem Lab-5 - 1F -FIZ-FAB112111,,,,,,,,,,2025-10-10 08:00,2025-10-13 17:00,2025-10-10 08:00,2025-10-13 17:00,2025-11-20 17:00,2025-11-20 17:00,2025-12-03 08:00,2025-12-03 08:00,0,16,100
FAB112111A-02,DOOR PACKAGE INSTALL - FAB112111A,Complete,Tem Lab-5 - 1F -FIZ-FAB112111,,,,,,,,,,2025-10-10 08:00,2025-10-13 17:00,2025-10-10 08:00,2025-10-13 17:00,2025-11-20 17:00,2025-11-20 17:00,2025-12-03 08:00,2025-12-03 08:00,0,16,100
FAB112112A-00,SECAI SCP WALL FINISH - FAB112112A,Complete,Tem Lab-6 - 1F -FIZ-FAB112112,,,,,,,,,,2025-10-09 08:00,2025-10-09 17:00,2025-09-17 08:00,2025-10-09 17:00,2025-11-20 17:00,2025-11-20 17:00,2025-11-05 08:00,2025-11-05 08:00,0,8,100
FAB112112A-01,DOOR ASSEMBLY - FAB112112A,Complete,Tem Lab-6 - 1F -FIZ-FAB112112,,,,,,,,,,2025-10-10 08:00,2025-10-13 17:00,2025-10-10 08:00,2025-10-13 17:00,2025-11-20 17:00,2025-11-20 17:00,2025-11-13 08:00,2025-11-13 08:00,0,16,100
FAB112112A-02,DOOR PACKAGE INSTALL - FAB112112A,Complete,Tem Lab-6 - 1F -FIZ-FAB112112,,,,,,,,,,2025-10-10 08:00,2025-10-13 17:00,2025-10-10 08:00,2025-10-13 17:00,2025-11-20 17:00,2025-11-20 17:00,2025-11-13 08:00,2025-11-13 08:00,0,16,100
FAB112113A-00,SECAI SCP WALL FINISH - FAB112113A,Complete,Tem Lab-7 - 1F -FIZ-FAB112113,,,,,,,,,,2025-10-09 08:00,2025-10-09 17:00,2025-09-19 08:00,2025-10-09 17:00,2025-11-20 17:00,2025-11-20 17:00,2025-11-25 08:00,2025-11-25 08:00,0,8,100
FAB112113A-01,DOOR ASSEMBLY - FAB112113A,Complete,Tem Lab-7 - 1F -FIZ-FAB112113,,,,,,,,,,2025-10-10 08:00,2025-10-13 17:00,2025-10-10 08:00,2025-10-13 17:00,2025-11-20 17:00,2025-11-20 17:00,2025-12-03 08:00,2025-12-03 08:00,0,16,100
FAB112113A-02,DOOR PACKAGE INSTALL - FAB112113A,Complete,Tem Lab-7 - 1F -FIZ-FAB112113,,,,,,,,,,2025-10-10 08:00,2025-10-13 17:00,2025-10-10 08:00,2025-10-13 17:00,2025-11-20 17:00,2025-11-20 17:00,2025-12-03 08:00,2025-12-03 08:00,0,16,100
FAB112114A-00,SECAI SCP WALL FINISH - FAB112114A,Complete,Tem Lab-8 - 1F -FIZ-FAB112114,,,,,,,,,,2025-09-26 08:00,2025-09-26 17:00,2025-09-23 08:00,2025-09-26 17:00,2025-11-20 17:00,2025-11-20 17:00,2025-11-05 08:00,2025-11-05 08:00,0,8,100
FAB112114A-01,DOOR ASSEMBLY - FAB112114A,Complete,Tem Lab-8 - 1F -FIZ-FAB112114,,,,,,,,,,2025-09-29 08:00,2025-09-30 17:00,2025-09-29 08:00,2025-09-30 17:00,2025-11-20 17:00,2025-11-20 17:00,2025-11-13 08:00,2025-11-13 08:00,0,16,100
FAB112114A-02,DOOR PACKAGE INSTALL - FAB112114A,Complete,Tem Lab-8 - 1F -FIZ-FAB112114,,,,,,,,,,2025-09-30 08:00,2025-10-01 17:00,2025-09-30 08:00,2025-10-01 17:00,2025-11-20 17:00,2025-11-20 17:00,2025-11-13 08:00,2025-11-13 08:00,0,16,100
FAB112119A-00,SECAI SCP WALL FINISH - FAB112119A,Complete,Tem Lab-9 - 1F -FIZ-FAB112119,,,,,,,,,,2025-09-26 08:00,2025-09-26 17:00,2025-09-25 08:00,2025-09-26 17:00,2025-11-20 17:00,2025-11-20 17:00,2025-11-25 08:00,2025-11-25 08:00,0,8,100
FAB112119A-01,DOOR ASSEMBLY - FAB112119A,Complete,Tem Lab-9 - 1F -FIZ-FAB112119,,,,,,,,,,2025-09-29 08:00,2025-09-30 17:00,2025-09-29 08:00,2025-09-30 17:00,2025-11-20 17:00,2025-11-20 17:00,2025-12-03 08:00,2025-12-03 08:00,0,16,100
FAB112119A-02,DOOR PACKAGE INSTALL - FAB112119A,Complete,Tem Lab-9 - 1F -FIZ-FAB112119,,,,,,,,,,2025-09-30 08:00,2025-10-01 17:00,2025-09-30 08:00,2025-10-01 17:00,2025-11-20 17:00,2025-11-20 17:00,2025-12-03 08:00,2025-12-03 08:00,0,16,100
FAB112120A-00,SECAI SCP WALL FINISH - FAB112120A,Complete,Tem Lab-10 - 1F -FIZ-FAB112120,,,,,,,,,,2025-09-26 08:00,2025-09-26 17:00,2025-09-26 08:00,2025-09-26 17:00,2025-11-20 17:00,2025-11-20 17:00,2025-11-05 08:00,2025-11-05 08:00,0,8,100
FAB112120A-01,DOOR ASSEMBLY - FAB112120A,Complete,Tem Lab-10 - 1F -FIZ-FAB112120,,,,,,,,,,2025-09-29 08:00,2025-09-30 17:00,2025-09-29 08:00,2025-09-30 17:00,2025-11-20 17:00,2025-11-20 17:00,2025-11-13 08:00,2025-11-13 08:00,0,16,100
FAB112120A-02,DOOR PACKAGE INSTALL - FAB112120A,Complete,Tem Lab-10 - 1F -FIZ-FAB112120,,,,,,,,,,2025-09-30 08:00,2025-10-01 17:00,2025-09-30 08:00,2025-10-01 17:00,2025-11-20 17:00,2025-11-20 17:00,2025-11-13 08:00,2025-11-13 08:00,0,16,100
FAB112121A-00,SECAI SCP WALL FINISH - FAB112121A,Complete,Tem Lab-11 - 1F -FIZ-FAB112121,,,,,,,,,,2025-09-19 08:00,2025-09-19 17:00,2025-09-19 08:00,2025-09-19 17:00,2025-11-20 17:00,2025-11-20 17:00,2025-11-25 08:00,2025-11-25 08:00,0,8,100
FAB112121A-01,DOOR ASSEMBLY - FAB112121A,Complete,Tem Lab-11 - 1F -FIZ-FAB112121,,,,,,,,,,2025-09-19 08:00,2025-09-22 17:00,2025-09-19 08:00,2025-09-22 17:00,2025-11-20 17:00,2025-11-20 17:00,2025-12-03 08:00,2025-12-03 08:00,0,16,100
FAB112121A-02,DOOR PACKAGE INSTALL - FAB112121A,Complete,Tem Lab-11 - 1F -FIZ-FAB112121,,,,,,,,,,2025-09-22 08:00,2025-09-23 17:00,2025-09-22 08:00,2025-09-23 17:00,2025-11-20 17:00,2025-11-20 17:00,2025-12-03 08:00,2025-12-03 08:00,0,16,100
FAB112122A-00,SECAI SCP WALL FINISH - FAB112122A,Complete,Tem Lab-12 - 1F -FIZ-FAB112122,,,,,,,,,,2025-09-19 08:00,2025-09-19 17:00,2025-09-19 08:00,2025-09-19 17:00,2025-11-20 17:00,2025-11-20 17:00,2025-11-05 08:00,2025-11-05 08:00,0,8,100
FAB112122A-01,DOOR ASSEMBLY - FAB112122A,Complete,Tem Lab-12 - 1F -FIZ-FAB112122,,,,,,,,,,2025-09-19 08:00,2025-09-22 17:00,2025-09-19 08:00,2025-09-22 17:00,2025-11-20 17:00,2025-11-20 17:00,2025-11-13 08:00,2025-11-13 08:00,0,16,100
FAB112122A-02,DOOR PACKAGE INSTALL - FAB112122A,Complete,Tem Lab-12 - 1F -FIZ-FAB112122,,,,,,,,,,2025-09-22 08:00,2025-09-23 17:00,2025-09-22 08:00,2025-09-23 17:00,2025-11-20 17:00,2025-11-20 17:00,2025-11-13 08:00,2025-11-13 08:00,0,16,100
FAB112123A-00,SECAI SCP WALL FINISH - FAB112123A,Complete,Tem Lab13 - 1F -FIZ-FAB112123,,,,,,,,,,2025-09-19 08:00,2025-09-19 17:00,2025-09-19 08:00,2025-09-19 17:00,2025-11-20 17:00,2025-11-20 17:00,2025-11-25 08:00,2025-11-25 08:00,0,8,100
FAB112123A-01,DOOR ASSEMBLY - FAB112123A,Complete,Tem Lab13 - 1F -FIZ-FAB112123,,,,,,,,,,2025-09-19 08:00,2025-09-22 17:00,2025-09-19 08:00,2025-09-22 17:00,2025-11-20 17:00,2025-11-20 17:00,2025-12-03 08:00,2025-12-03 08:00,0,16,100
FAB112123A-02,DOOR PACKAGE INSTALL - FAB112123A,Complete,Tem Lab13 - 1F -FIZ-FAB112123,,,,,,,,,,2025-09-22 08:00,2025-09-23 17:00,2025-09-22 08:00,2025-09-23 17:00,2025-11-20 17:00,2025-11-20 17:00,2025-12-03 08:00,2025-12-03 08:00,0,16,100
FAB114102A-00,SECAI SCP WALL FINISH - FAB114102A,Complete,FA Lab-2 - 1F -FIZ-FAB114102,,,,,,,,,,2025-10-13 08:00,2025-10-13 17:00,2025-10-13 08:00,2025-10-13 17:00,2025-11-20 17:00,2025-11-20 17:00,2025-11-05 08:00,2025-11-05 08:00,0,8,100
FAB114102A-01,DOOR ASSEMBLY - FAB114102A,Complete,FA Lab-2 - 1F -FIZ-FAB114102,,,,,,,,,,2025-10-14 08:00,2025-10-15 17:00,2025-10-14 08:00,2025-10-15 17:00,2025-11-20 17:00,2025-11-20 17:00,2025-11-13 08:00,2025-11-13 08:00,0,16,100
FAB114102A-02,DOOR PACKAGE INSTALL - FAB114102A,Complete,FA Lab-2 - 1F -FIZ-FAB114102,,,,,,,,,,2025-10-14 08:00,2025-10-15 17:00,2025-10-14 08:00,2025-10-15 17:00,2025-11-20 17:00,2025-11-20 17:00,2025-11-13 08:00,2025-11-13 08:00,0,16,100
FAB114103A-00,SECAI SCP WALL FINISH - FAB114103A,Complete,FA Lab-3 - 1F -FIZ-FAB114103,,,,,,,,,,2025-10-13 08:00,2025-10-13 17:00,2025-10-13 08:00,2025-10-13 17:00,2025-11-20 17:00,2025-11-20 17:00,2025-11-25 08:00,2025-11-25 08:00,0,8,100
FAB114103A-01,DOOR ASSEMBLY - FAB114103A,Complete,FA Lab-3 - 1F -FIZ-FAB114103,,,,,,,,,,2025-10-14 08:00,2025-10-15 17:00,2025-10-14 08:00,2025-10-15 17:00,2025-11-20 17:00,2025-11-20 17:00,2025-12-03 08:00,2025-12-03 08:00,0,16,100
FAB114103A-02,DOOR PACKAGE INSTALL - FAB114103A,Complete,FA Lab-3 - 1F -FIZ-FAB114103,,,,,,,,,,2025-10-14 08:00,2025-10-15 17:00,2025-10-14 08:00,2025-10-15 17:00,2025-11-20 17:00,2025-11-20 17:00,2025-12-03 08:00,2025-12-03 08:00,0,16,100
FAB114105A-00,SECAI SCP WALL FINISH - FAB114105A,Complete,FA Lab-5 - 1F -FIZ-FAB114105,,,,,,,,,,2025-10-13 08:00,2025-10-13 17:00,2025-10-13 08:00,2025-10-13 17:00,2025-11-20 17:00,2025-11-20 17:00,2025-11-05 08:00,2025-11-05 08:00,0,8,100
FAB114105A-01,DOOR ASSEMBLY - FAB114105A,Complete,FA Lab-5 - 1F -FIZ-FAB114105,,,,,,,,,,2025-10-14 08:00,2025-10-15 17:00,2025-10-14 08:00,2025-10-15 17:00,2025-11-20 17:00,2025-11-20 17:00,2025-11-13 08:00,2025-11-13 08:00,0,16,100
FAB114105A-02,DOOR PACKAGE INSTALL - FAB114105A,Complete,FA Lab-5 - 1F -FIZ-FAB114105,,,,,,,,,,2025-10-14 08:00,2025-10-15 17:00,2025-10-14 08:00,2025-10-15 17:00,2025-11-20 17:00,2025-11-20 17:00,2025-11-13 08:00,2025-11-13 08:00,0,16,100
FAB114106A-00,SECAI SCP WALL FINISH - FAB114106A,Complete,FA Lab-6 - 1F -FIZ-FAB114106,,,,,,,,,,2025-10-13 08:00,2025-10-13 17:00,2025-10-13 08:00,2025-10-13 17:00,2025-11-20 17:00,2025-11-20 17:00,2025-12-05 17:00,2025-12-05 17:00,0,8,100
FAB114106A-01,DOOR ASSEMBLY - FAB114106A,Complete,FA Lab-6 - 1F -FIZ-FAB114106,,,,,,,,,,2025-10-14 08:00,2025-10-15 17:00,2025-10-14 08:00,2025-10-15 17:00,2025-11-20 17:00,2025-11-20 17:00,2025-12-05 17:00,2025-12-05 17:00,0,16,100
FAB114106A-02,DOOR PACKAGE INSTALL - FAB114106A,Complete,FA Lab-6 - 1F -FIZ-FAB114106,,,,,,,,,,2025-10-14 08:00,2025-10-15 17:00,2025-10-14 08:00,2025-10-15 17:00,2025-11-20 17:00,2025-11-20 17:00,2025-12-05 17:00,2025-12-05 17:00,0,16,100
ZX-19080,IMPACT - SECAI FIRE SPRINKLER AND COUNDUIT RELOCATION-Toilet (W)-1-1F-SUE-FAB116402,Complete,Toilet (W) 1 - 1F -SUE-FAB116402,,,,,,,,,,2025-08-15 08:00,2025-09-04 17:00,2025-08-08 08:00,2025-09-04 17:00,2025-11-20 17:00,2025-11-20 17:00,2025-11-25 10:00,2025-11-25 10:00,0,120,100
ZX-19090,IMPACT - SECAI FIRE SPRINKLER AND COUNDUIT RELOCATION -1-1F-SUE-FAB116404,Complete,Toilet(M) 1 - 1F -SUE-FAB116404,,,,,,,,,,2025-07-01 08:00,2025-07-21 17:00,2025-07-01 08:00,2025-09-04 17:00,2025-11-20 17:00,2025-11-20 17:00,2025-11-25 10:00,2025-11-25 10:00,0,120,100
ZX-19100,IMPACT - SECAI FIRE SPRINKLER AND CONDUIT RELOCATION -Toilet Vestibule - 1-1F-SUE-FAB116403,Complete,Toilet Vestibule 1 - 1F -SUE-FAB116403,,,,,,,,,,2025-07-01 08:00,2025-07-21 17:00,2025-07-01 08:00,2025-09-04 17:00,2025-11-20 17:00,2025-11-20 17:00,2025-12-05 17:00,2025-12-05 17:00,0,120,100
ZX-19110,IMPACT - WAITING FOR SECAI COORDINATION -Elevator #05 - 1F-1FAB-EL5,Complete,Elevator 5 - 1F -SUW-FAB1-EL05,,,,,,,,,,2025-07-01 08:00,2025-07-28 17:00,2025-07-01 08:00,2025-10-03 17:00,2025-11-20 17:00,2025-11-20 17:00,2025-12-05 17:00,2025-12-05 17:00,0,160,100
ZX-19120,IMPACT - SECAI ISSUED STOP WORK NOTICE,Complete,Stair 20 - 1F -SUE- FAB1-ST20,,,,,,,,,,2025-06-12 08:00,2025-06-25 17:00,2025-06-12 08:00,2025-09-04 08:00,2025-11-20 17:00,2025-11-20 17:00,2025-12-05 17:00,2025-12-05 17:00,0,80,100
ZX-19130,IMPACT - SECAI ISSUED STOP WORK NOTICE,Complete,Stair 20 - 4F-SUE-FAB1-ST20,,,,,,,,,,2025-06-12 08:00,2025-06-25 17:00,2025-06-12 08:00,2025-09-26 08:00,2025-11-20 17:00,2025-11-20 17:00,2025-11-21 08:00,2025-11-21 08:00,0,80,100
A2010,SECAI - IMPACTS- CAUSING DELAY IN THESE AREAS,Not Started,Remobilization and Out-of-Sequence Completion List - DD07-10-2025,,,,,,,,,,2025-12-11 17:00,2025-12-11 17:00,,,2025-12-11 17:00,2025-12-11 17:00,2025-12-05 17:00,2025-12-05 17:00,0,0,0
FAB116513H-03,INSTALL DOOR FRAMES - FAB116513H,Complete,Air Lock 18 - 1F -SUE-FAB116513,,,,,,,,,,2025-06-25 08:00,2025-06-25 17:00,2025-06-25 08:00,2025-06-25 17:00,2025-11-20 17:00,2025-11-20 17:00,2025-11-25 10:00,2025-11-25 10:00,0,8,100
FAB116103A-03,INSTALL DOOR FRAMES - FAB116103A,Not Started,Elevator Mech. Rm 22 - 1F -SUE-FAB116103,,,,,,,,,,2025-11-28 08:00,2025-11-28 17:00,,,2025-11-28 08:00,2025-11-28 17:00,2025-11-24 10:00,2025-11-25 10:00,8,8,0
FAB110114B-03,INSTALL DOOR FRAMES - FAB110114B,Complete,Elevator Hall 1 - 1F -SUW-FAB110113,,,,,,,,,,2025-08-04 08:00,2025-08-04 17:00,2025-08-04 08:00,2025-08-04 17:00,2025-11-20 17:00,2025-11-20 17:00,2025-12-02 10:00,2025-12-02 10:00,0,8,100
FAB110514B-03,INSTALL DOOR FRAMES - FAB110514B,Complete,Duct Shaft - 1F -SUW-FAB110306,,,,,,,,,,2025-06-06 08:00,2025-06-06 17:00,2025-06-03 08:00,2025-06-03 15:00,2025-11-20 17:00,2025-11-20 17:00,2025-11-25 10:00,2025-11-25 10:00,0,8,100
ZX-19140,IMPACT - SECAI MEP OBSTRUCTION - Duct Shaft - 1F-SUW-FAB110112,Complete,Duct Shaft - 1F -SUW-FAB110112,,,,,,,,,,2025-05-13 08:00,2025-05-28 17:00,2025-05-13 08:00,2025-08-14 17:00,2025-11-20 17:00,2025-11-20 17:00,2025-11-18 10:00,2025-11-18 10:00,0,96,100
FAB126106A-14,IMPACT - DOOR FRAME PROCUREMENT- FAB126106A,Complete,Vestibule 22 - 2F -SUE-FAB126106,,,,,,,,,,2025-06-09 08:00,2025-07-25 17:00,2025-06-09 08:00,2025-09-29 08:00,2025-11-20 17:00,2025-11-20 17:00,2025-11-25 10:00,2025-11-25 10:00,0,280,100
FAB116527A-14,IMPACT - DOOR FRAME PROCUREMENT- FAB116527A,Complete,Fire Alarm Rm 18 - 1F -SUE-FAB116527,,,,,,,,,,2025-06-09 08:00,2025-07-25 17:00,2025-06-09 08:00,2025-10-03 08:00,2025-11-20 17:00,2025-11-20 17:00,2025-11-25 10:00,2025-11-25 10:00,0,280,100
FAB1-ST19A-03,INSTALL DOOR FRAMES - FAB1-ST19A,Complete,Stair 19 - 1F -SUE- FAB1-ST19,,,,,,,,,,2025-05-05 08:00,2025-05-05 17:00,2025-05-09 08:00,2025-05-09 17:00,2025-11-20 17:00,2025-11-20 17:00,2025-11-25 08:00,2025-11-25 08:00,0,8,100
FAB116414B-03,INSTALL DOOR FRAMES - FAB116414B,Complete,Exit Passageway 19 - 1F -SUE-FAB116407,,,,,,,,,,2025-04-07 08:00,2025-04-07 17:00,2025-04-07 08:00,2025-04-07 17:00,2025-11-20 17:00,2025-11-20 17:00,2025-11-25 10:00,2025-11-25 10:00,0,8,100
FAB116414A-03,INSTALL DOOR FRAMES - FAB116414A,Complete,Exit Passageway 19 - 1F -SUE-FAB116407,,,,,,,,,,2025-04-07 08:00,2025-04-07 17:00,2025-04-07 08:00,2025-04-07 17:00,2025-11-20 17:00,2025-11-20 17:00,2025-11-25 10:00,2025-11-25 10:00,0,8,100
FAB130502A-03,INSTALL DOOR FRAMES - FAB130502A,Complete,Duct Shaft - 3F -SUW-FAB130502,,,,,,,,,,2025-01-20 08:00,2025-01-20 17:00,2025-01-20 08:00,2025-01-20 17:00,2025-11-20 17:00,2025-11-20 17:00,2025-11-25 10:00,2025-11-25 10:00,0,8,100
FAB130502B-03,INSTALL DOOR FRAMES - FAB130502B,Not Started,Duct Shaft - 3F -SUW-FAB130502,,,,,,,,,,2025-11-24 08:00,2025-11-24 17:00,,,2025-11-24 08:00,2025-11-24 17:00,2025-11-24 10:00,2025-11-25 10:00,8,8,0
FAB130111A-03,INSTALL DOOR FRAMES - FAB130111A (MOCK-UP),Complete,Vestibule 1 - 3F -SUW-FAB130111,,,,,,,,,,2025-01-08 08:00,2025-01-08 17:00,2025-01-08 08:00,2025-01-08 17:00,2025-11-20 17:00,2025-11-20 17:00,2025-12-02 08:00,2025-12-02 08:00,0,8,100
FAB130111A-04,DOOR INSTALL - FAB130111A (MOCK-UP),Complete,Vestibule 1 - 3F -SUW-FAB130111,,,,,,,,,,2025-01-13 08:00,2025-01-17 17:00,2025-01-13 08:00,2025-01-13 17:00,2025-11-20 17:00,2025-11-20 17:00,2025-12-02 08:00,2025-12-02 08:00,0,40,100
FAB130111A-05,PAINT & PROTECT DOORS & FRAMES -  FAB130111A (MOCK-UP),Complete,Vestibule 1 - 3F -SUW-FAB130111,,,,,,,,,,2025-01-14 08:00,2025-01-17 15:00,2025-01-14 08:00,2025-01-17 15:00,2025-11-20 17:00,2025-11-20 17:00,2025-12-02 08:00,2025-12-02 08:00,0,30,100
FAB112103A-07,DOOR FRAME PAINT & 1ST COAT - FAB112103A,Complete,LAB AIRLOCK/SMOCK- 1F -FIZ-FAB112103,,,,,,,,,,2025-08-20 08:00,2025-08-22 17:00,2025-08-18 08:00,2025-08-18 17:00,2025-11-20 17:00,2025-11-20 17:00,2025-11-25 10:00,2025-11-25 10:00,0,24,100
FAB136311B-6,RUST REMEDIATION - DOOR FRAMES - FAB136311B,Complete,Elevator Hall 20 - 3F -SUE-FAB136311,,,,,,,,,,2025-09-22 08:00,2025-09-24 17:00,2025-09-22 08:00,2025-09-24 17:00,2025-11-20 17:00,2025-11-20 17:00,2025-11-25 10:00,2025-11-25 10:00,0,24,100
FAB130310C-40,RUST REMEDIATION - DOOR FRAMES - FAB130310C,Complete,Elevator Hall 3 - 3F -SUW-FAB130310,,,,,,,,,,2025-07-17 08:00,2025-07-25 17:00,2025-07-17 08:00,2025-07-25 17:00,2025-11-20 17:00,2025-11-20 17:00,2025-11-25 10:00,2025-11-25 10:00,0,56,100
FAB110204D-90,DOOR FRAME GROUT - FAB110204D - P1 (INCLUDE MOBILIZATION AND CURE TIME),Complete,Gas Purifier Rm - 1F -SUW-FAB110204,,,,,,,,,,2025-07-16 08:00,2025-07-16 17:00,2025-07-11 08:00,2025-07-11 17:00,2025-11-20 17:00,2025-11-20 17:00,2025-12-05 17:00,2025-12-05 17:00,0,8,100
FAB110212A-90,DOOR FRAME GROUT - FAB110212A - P1 (INCLUDE MOBILIZATION AND CURE TIME),Complete,Fire Riser Rm - 1F -SUW-FAB110212,,,,,,,,,,2025-07-07 08:00,2025-07-07 17:00,2025-07-11 08:00,2025-07-11 08:00,2025-11-20 17:00,2025-11-20 17:00,2025-12-02 10:00,2025-12-02 10:00,0,8,100
FAB112103B-90,DOOR FRAME GROUT - FAB112103B (INCLUDE MOBILIZATION AND CURE TIME),Complete,LAB AIRLOCK/SMOCK- 1F -FIZ-FAB112103,,,,,,,,,,2025-08-06 08:00,2025-08-06 17:00,2025-08-06 08:00,2025-08-06 17:00,2025-11-20 17:00,2025-11-20 17:00,2025-11-25 08:00,2025-11-25 08:00,0,8,100
FAB110213A-90,DOOR FRAME GROUT - FAB110213A - P1 (INCLUDE MOBILIZATION AND CURE TIME),Complete,Toilet Corridor - 1F -SUW-FAB110213,,,,,,,,,,2025-07-15 08:00,2025-07-15 17:00,2025-07-15 08:00,2025-07-15 17:00,2025-11-20 17:00,2025-11-20 17:00,2025-12-02 10:00,2025-12-02 10:00,0,8,100
FAB110211A-90,DOOR FRAME GROUT - FAB110211A - P1 (INCLUDE MOBILIZATION AND CURE TIME),Complete,Exit Passageway 2 - 1F -FAB110211,,,,,,,,,,2025-07-16 08:00,2025-07-16 17:00,2025-07-15 08:00,2025-07-15 17:00,2025-11-20 17:00,2025-11-20 17:00,2025-12-02 10:00,2025-12-02 10:00,0,8,100
FAB110208A-90,DOOR FRAME GROUT - FAB110208A - P1 (INCLUDE MOBILIZATION AND CURE TIME),Complete,Equip Platform - 1F -SUW-FAB110208,,,,,,,,,,2025-07-21 08:00,2025-07-21 17:00,2025-07-21 08:00,2025-07-21 17:00,2025-11-20 17:00,2025-11-20 17:00,2025-12-05 17:00,2025-12-05 17:00,0,8,100
FAB110403C-90,DOOR FRAME GROUT - FAB110403C - P1 (INCLUDE MOBILIZATION AND CURE TIME),Complete,NaOH ACQC (N/23-24.3) - 1F -SUW-FAB110403,,,,,,,,,,2025-07-25 08:00,2025-07-25 17:00,2025-07-24 00:00,2025-07-24 00:00,2025-11-20 17:00,2025-11-20 17:00,2025-12-05 17:00,2025-12-05 17:00,0,8,100
FAB110404C-90,DOOR FRAME GROUT - FAB110404C - P1 (INCLUDE MOBILIZATION AND CURE TIME),Complete,W-CuS04-ACQC RM (N/24.3-25) - 1F- SUW-FAB110404,,,,,,,,,,2025-07-25 08:00,2025-07-25 17:00,2025-07-21 08:00,2025-07-21 17:00,2025-11-20 17:00,2025-11-20 17:00,2025-12-05 17:00,2025-12-05 17:00,0,8,100
FAB110405B-07,DOOR FRAME PAINT & 1ST COAT - FAB110405B,Complete,PLATFORM (N/25-25.4) - 1F -SUW-FAB110405,,,,,,,,,,2025-09-22 08:00,2025-09-24 17:00,2025-09-22 08:00,2025-09-24 17:00,2025-11-20 17:00,2025-11-20 17:00,2025-12-02 10:00,2025-12-02 10:00,0,24,100
FAB110405B-90,DOOR FRAME GROUT - FAB110405B - P1 (INCLUDE MOBILIZATION AND CURE TIME),Complete,PLATFORM (N/25-25.4) - 1F -SUW-FAB110405,,,,,,,,,,2025-09-12 08:00,2025-09-12 17:00,2025-09-12 08:00,2025-09-12 17:00,2025-11-20 17:00,2025-11-20 17:00,2025-12-02 10:00,2025-12-02 10:00,0,8,100
FAB110408A-90,DOOR FRAME GROUT (RFI1416) - FAB110408A - P1 (INCLUDE MOBILIZATION AND CURE TIME),Complete,W-H2S04 ACQC RM (N/26.2-27) - 1F -SUW-FAB110408,,,,,,,,,,2025-09-18 08:00,2025-09-18 17:00,2025-09-18 08:00,2025-09-18 17:00,2025-11-20 17:00,2025-11-20 17:00,2025-12-05 17:00,2025-12-05 17:00,0,8,100
FAB110501A-90,DOOR FRAME GROUT (RFI1416) - FAB110501A - P1 (INCLUDE MOBILIZATION AND CURE TIME),Complete,PLATFORM (N/27-27.5) - 1F -SUW-FAB110501,,,,,,,,,,2025-08-25 08:00,2025-08-25 17:00,2025-08-25 08:00,2025-08-25 17:00,2025-11-20 17:00,2025-11-20 17:00,2025-11-25 10:00,2025-11-25 10:00,0,8,100
FAB110511D-90,DOOR FRAME GROUT (RFI1416) - FAB110511D - P1 (INCLUDE MOBILIZATION AND CURE TIME),Complete,W-SOLVENT RM (N/27.5-29) - 1F -SUW-FAB110511,,,,,,,,,,2025-07-17 08:00,2025-07-17 17:00,2025-07-17 08:00,2025-07-17 17:00,2025-11-20 17:00,2025-11-20 17:00,2025-12-02 10:00,2025-12-02 10:00,0,8,100
FAB110511E-90,DOOR FRAME GROUT (RFI1416) - FAB110511E - P1 (INCLUDE MOBILIZATION AND CURE TIME),Complete,W-SOLVENT RM (N/27.5-29) - 1F -SUW-FAB110511,,,,,,,,,,2025-08-04 08:00,2025-08-04 17:00,2025-08-04 08:00,2025-08-04 17:00,2025-11-20 17:00,2025-11-20 17:00,2025-12-02 10:00,2025-12-02 10:00,0,8,100
FAB116509D-90,DOOR FRAME GROUT (RFI1416) - FAB116509D - P1 (INCLUDE MOBILIZATION AND CURE TIME),Complete,PR Vestibule - 1F -SUE-FAB116523,,,,,,,,,,2025-08-05 08:00,2025-08-05 17:00,2025-08-05 08:00,2025-08-05 17:00,2025-11-20 17:00,2025-11-20 17:00,2025-11-25 10:00,2025-11-25 10:00,0,8,100
FAB116509E-90,DOOR FRAME GROUT (RFI1416) - FAB116509E - P1 (INCLUDE MOBILIZATION AND CURE TIME),Complete,PR Vestibule - 1F -SUE-FAB116523,,,,,,,,,,2025-08-15 08:00,2025-08-15 17:00,2025-08-15 08:00,2025-08-15 17:00,2025-11-20 17:00,2025-11-20 17:00,2025-11-25 10:00,2025-11-25 10:00,0,8,100
FAB116511A-90,DOOR FRAME GROUT (RFI1416) - FAB116511A - P1 (INCLUDE MOBILIZATION AND CURE TIME),Complete,Exit Passageway 18 - 1F -SUE-FAB116511,,,,,,,,,,2025-08-04 08:00,2025-08-04 17:00,2025-08-04 08:00,2025-08-04 17:00,2025-11-20 17:00,2025-11-20 17:00,2025-11-25 10:00,2025-11-25 10:00,0,8,100
FAB116511G-90,DOOR FRAME GROUT (RFI1416) - FAB116511G - P1 (INCLUDE MOBILIZATION AND CURE TIME),Complete,Exit Passageway 18 - 1F -SUE-FAB116511,,,,,,,,,,2025-08-05 08:00,2025-08-05 17:00,2025-08-05 08:00,2025-08-05 17:00,2025-11-20 17:00,2025-11-20 17:00,2025-11-25 10:00,2025-11-25 10:00,0,8,100
FAB116308C-90,DOOR FRAME GROUT (RFI1416) - FAB116308C - P1 (INCLUDE MOBILIZATION AND CURE TIME),Not Started,Mechanical Rm 3 - 1F -SUE-FAB116308,,,,,,,,,,2025-11-21 08:00,2025-11-21 17:00,,,2025-11-21 08:00,2025-11-21 17:00,2025-11-24 10:00,2025-11-25 10:00,8,8,0
FAB116308E-90,DOOR FRAME GROUT (RFI1416) - FAB116308E - P1 (INCLUDE MOBILIZATION AND CURE TIME),Not Started,Mechanical Rm 3 - 1F -SUE-FAB116308,,,,,,,,,,2025-11-21 08:00,2025-11-21 17:00,,,2025-11-21 08:00,2025-11-21 17:00,2025-11-24 10:00,2025-11-25 10:00,8,8,0
FAB116308D-90,DOOR FRAME GROUT (RFI1416) - FAB116308D - P1 (INCLUDE MOBILIZATION AND CURE TIME),Complete,Mechanical Rm 3 - 1F -SUE-FAB116308,,,,,,,,,,2025-08-25 08:00,2025-08-26 17:00,2025-08-25 08:00,2025-08-25 17:00,2025-11-20 17:00,2025-11-20 17:00,2025-11-25 08:00,2025-11-25 08:00,0,16,100
FAB116308G-90,DOOR FRAME GROUT (RFI1416) - FAB116308G - P1 (INCLUDE MOBILIZATION AND CURE TIME),Complete,Mechanical Rm 3 - 1F -SUE-FAB116308,,,,,,,,,,2025-07-25 08:00,2025-07-25 17:00,2025-07-23 08:00,2025-07-23 17:00,2025-11-20 17:00,2025-11-20 17:00,2025-11-25 10:00,2025-11-25 10:00,0,8,100
FAB116106B-90,DOOR FRAME GROUT (RFI1416) - FAB116106B - P1 (INCLUDE MOBILIZATION AND CURE TIME),Complete,Exit Passageway 22 - 1F -SUE-FAB116106,,,,,,,,,,2025-06-16 08:00,2025-06-16 17:00,2025-06-16 08:00,2025-06-16 17:00,2025-11-20 17:00,2025-11-20 17:00,2025-11-25 10:00,2025-11-25 10:00,0,8,100
FAB116101B-90,DOOR FRAME GROUT (RFI1416) - FAB116101B - P1 (INCLUDE MOBILIZATION AND CURE TIME),Not Started,OAC Mechanical RM - 1F -FIZ-FAB116101,,,,,,,,,,2025-12-01 08:00,2025-12-01 17:00,,,2025-12-01 08:00,2025-12-01 17:00,2025-11-24 10:00,2025-11-25 10:00,8,8,0
FAB116201A-90,DOOR FRAME GROUT (RFI1416) - FAB116201A - P1 (INCLUDE MOBILIZATION AND CURE TIME),Complete,Mechanical Rm1 - 1F -SUE-FAB116201,,,,,,,,,,2025-08-12 08:00,2025-08-12 17:00,2025-08-12 08:00,2025-08-12 17:00,2025-11-20 17:00,2025-11-20 17:00,2025-11-25 08:00,2025-11-25 08:00,0,8,100
FAB116201D-07,DOOR FRAME PAINT & 1ST COAT - FAB116201D,Complete,Mechanical Rm1 - 1F -SUE-FAB116201,,,,,,,,,,2025-08-25 08:00,2025-08-27 17:00,2025-08-25 08:00,2025-08-27 17:00,2025-11-20 17:00,2025-11-20 17:00,2025-11-25 08:00,2025-11-25 08:00,0,24,100
FAB116201D-90,DOOR FRAME GROUT (RFI1416) - FAB116201D - P1 (INCLUDE MOBILIZATION AND CURE TIME),Complete,Mechanical Rm1 - 1F -SUE-FAB116201,,,,,,,,,,2025-07-22 08:00,2025-07-22 17:00,2025-07-22 08:00,2025-07-22 17:00,2025-11-20 17:00,2025-11-20 17:00,2025-11-25 08:00,2025-11-25 08:00,0,8,100
FAB116202B-90,DOOR FRAME GROUT (RFI1416) - FAB116202B - P1 (INCLUDE MOBILIZATION AND CURE TIME),Complete,Exit Passageway 21 - 1F -SUE-FAB116202,,,,,,,,,,2025-08-25 08:00,2025-08-25 17:00,2025-08-25 08:00,2025-08-25 17:00,2025-11-20 17:00,2025-11-20 17:00,2025-11-25 10:00,2025-11-25 10:00,0,8,100
FAB116304A-90,DOOR FRAME GROUT (RFI1416) - FAB116304A - P1 (INCLUDE MOBILIZATION AND CURE TIME),Complete,CV Room - 1F -SUE-FAB116304,,,,,,,,,,2025-08-15 08:00,2025-08-15 17:00,2025-08-15 08:00,2025-08-15 17:00,2025-11-20 17:00,2025-11-20 17:00,2025-11-25 10:00,2025-11-25 10:00,0,8,100
FAB116304B-90,DOOR FRAME GROUT (RFI1416) - FAB116304B - P1 (INCLUDE MOBILIZATION AND CURE TIME),Complete,CV Room - 1F -SUE-FAB116304,,,,,,,,,,2025-07-25 08:00,2025-07-25 17:00,2025-07-23 08:00,2025-07-23 17:00,2025-11-20 17:00,2025-11-20 17:00,2025-12-04 08:00,2025-12-04 08:00,0,8,100
FAB116403A-90,DOOR FRAME GROUT (RFI1416) - FAB116403A - P1 (INCLUDE MOBILIZATION AND CURE TIME),Complete,Toilet Vestibule 1 - 1F -SUE-FAB116403,,,,,,,,,,2025-06-12 08:00,2025-06-12 17:00,2025-06-12 08:00,2025-06-12 17:00,2025-11-20 17:00,2025-11-20 17:00,2025-11-25 10:00,2025-11-25 10:00,0,8,100
FAB116509B-90,DOOR FRAME GROUT (RFI1416) - FAB116509B - P1 (INCLUDE MOBILIZATION AND CURE TIME),Complete,PR Room - 1F -SUE-FAB116509,,,,,,,,,,2025-03-20 08:00,2025-03-20 17:00,2025-03-20 08:00,2025-03-20 17:00,2025-11-20 17:00,2025-11-20 17:00,2025-11-25 10:00,2025-11-25 10:00,0,8,100
FAB116509A-90,DOOR FRAME GROUT (RFI1416) - FAB116509A - P1 (INCLUDE MOBILIZATION AND CURE TIME),Complete,PR Room - 1F -SUE-FAB116509,,,,,,,,,,2025-08-15 08:00,2025-08-15 17:00,2025-08-15 08:00,2025-08-15 17:00,2025-11-20 17:00,2025-11-20 17:00,2025-11-25 10:00,2025-11-25 10:00,0,8,100
FAB110509A-90,DOOR FRAME GROUT (RFI1416) - FAB110509A - P1 (INCLUDE MOBILIZATION AND CURE TIME),Complete,S.GCS Storage Rm - 1F -SUW-FAB110509,,,,,,,,,,2025-08-04 08:00,2025-08-04 17:00,2025-08-04 08:00,2025-08-04 17:00,2025-11-20 17:00,2025-11-20 17:00,2025-12-02 10:00,2025-12-02 10:00,0,8,100
FAB110510A-90,DOOR FRAME GROUT (RFI1416) - FAB110510A - P1 (INCLUDE MOBILIZATION AND CURE TIME),Complete,Fire Riser Rm 2 - 1F -SUW-FAB110510,,,,,,,,,,2025-08-06 08:00,2025-08-06 17:00,2025-08-06 08:00,2025-08-06 17:00,2025-11-20 17:00,2025-11-20 17:00,2025-12-02 10:00,2025-12-02 10:00,0,8,100
FAB110402A-90,DOOR FRAME GROUT (RFI1416) - FAB110402A - P1 (INCLUDE MOBILIZATION AND CURE TIME),Complete,Exit Passageway 4 - 1F -SUW-FAB110402,,,,,,,,,,2025-07-17 08:00,2025-07-17 17:00,2025-07-17 08:00,2025-07-17 17:00,2025-11-20 17:00,2025-11-20 17:00,2025-12-02 10:00,2025-12-02 10:00,0,8,100
FAB110401A-90,DOOR FRAME GROUT (RFI1416) - FAB110401A - P1 (INCLUDE MOBILIZATION AND CURE TIME),Complete,GCS Training Rm - 1F -SUW-FAB110401,,,,,,,,,,2025-07-17 08:00,2025-07-17 17:00,2025-07-17 08:00,2025-07-17 17:00,2025-11-20 17:00,2025-11-20 17:00,2025-12-02 10:00,2025-12-02 10:00,0,8,100
FAB110401B-90,DOOR FRAME GROUT (RFI1416) - FAB110401B - P1 (INCLUDE MOBILIZATION AND CURE TIME),Complete,GCS Training Rm - 1F -SUW-FAB110401,,,,,,,,,,2025-07-17 08:00,2025-07-17 17:00,2025-07-18 08:00,2025-07-18 17:00,2025-11-20 17:00,2025-11-20 17:00,2025-11-25 10:00,2025-11-25 10:00,0,8,100
FAB110307A-90,DOOR FRAME GROUT (RFI1416) - FAB110307A - P1 (INCLUDE MOBILIZATION AND CURE TIME),Complete,H2 Purifier Rm - 1F -SUW-FAB110307,,,,,,,,,,2025-08-06 08:00,2025-08-06 17:00,2025-08-06 08:00,2025-08-06 17:00,2025-11-20 17:00,2025-11-20 17:00,2025-11-25 10:00,2025-11-25 10:00,0,8,100
FAB110308A-90,DOOR FRAME GROUT (RFI1416) - FAB110308A - P1 (INCLUDE MOBILIZATION AND CURE TIME),Complete,Equip Platform - 1F -SUW-FAB110308,,,,,,,,,,2025-08-21 08:00,2025-08-21 17:00,2025-08-15 08:00,2025-08-15 17:00,2025-11-20 17:00,2025-11-20 17:00,2025-12-02 10:00,2025-12-02 10:00,0,8,100
FAB110305B-90,DOOR FRAME GROUT (RFI1416) - FAB110305B - P1 (INCLUDE MOBILIZATION AND CURE TIME),Complete,Exit Passageway 3 - 1F -SUW-FAB110305,,,,,,,,,,2025-07-17 08:00,2025-07-17 17:00,2025-07-17 08:00,2025-07-17 17:00,2025-11-20 17:00,2025-11-20 17:00,2025-12-02 10:00,2025-12-02 10:00,0,8,100
FAB110101A-90,DOOR FRAME GROUT (RFI1416) - FAB110101A - P1 (INCLUDE MOBILIZATION AND CURE TIME),Complete,Duct Shaft - 1F -SUW-FAB110101,,,,,,,,,,2025-08-06 08:00,2025-08-06 17:00,2025-08-06 08:00,2025-08-06 17:00,2025-11-20 17:00,2025-11-20 17:00,2025-11-25 10:00,2025-11-25 10:00,0,8,100
FAB116104A-90,DOOR FRAME GROUT (RFI1416) - FAB116104A - P1 (INCLUDE MOBILIZATION AND CURE TIME),Complete,OAC Mechanical RM - 1F -FIZ-FAB116101,,,,,,,,,,2025-08-18 08:00,2025-08-18 17:00,2025-08-18 08:00,2025-08-18 17:00,2025-11-20 17:00,2025-11-20 17:00,2025-11-25 10:00,2025-11-25 10:00,0,8,100
FAB116410A-90,DOOR FRAME GROUT (RFI1416) - FAB116410A - P1 (INCLUDE MOBILIZATION AND CURE TIME),Complete,Wafer I/O Vestibule (A/27-28.3) - 1F -SUE-FAB116504,,,,,,,,,,2025-08-05 08:00,2025-08-05 17:00,2025-08-05 08:00,2025-08-05 17:00,2025-11-20 17:00,2025-11-20 17:00,2025-11-25 10:00,2025-11-25 10:00,0,8,100
FAB116410B-90,DOOR FRAME GROUT (RFI1416) - FAB116410B - P1 (INCLUDE MOBILIZATION AND CURE TIME),Complete,Wafer I/O Vestibule (A/27-28.3) - 1F -SUE-FAB116504,,,,,,,,,,2025-08-05 08:00,2025-08-05 17:00,2025-08-05 08:00,2025-08-05 17:00,2025-11-20 17:00,2025-11-20 17:00,2025-11-25 10:00,2025-11-25 10:00,0,8,100
FAB116107A-90,DOOR FRAME GROUT (RFI1416) - FAB116107A - P1 (INCLUDE MOBILIZATION AND CURE TIME),Complete,Fire Riser Rm 3 - 1F -SUE-FAB116107,,,,,,,,,,2025-08-05 08:00,2025-08-05 17:00,2025-08-05 08:00,2025-08-05 17:00,2025-11-20 17:00,2025-11-20 17:00,2025-11-27 08:00,2025-11-27 08:00,0,8,100
FAB116203B-90,DOOR FRAME GROUT (RFI1416) - FAB116203B - P1 (INCLUDE MOBILIZATION AND CURE TIME),Complete,Mechanical Rm 2 - 1F -SUE-FAB116203,,,,,,,,,,2025-07-22 08:00,2025-07-22 17:00,2025-07-22 08:00,2025-07-22 17:00,2025-11-20 17:00,2025-11-20 17:00,2025-11-25 10:00,2025-11-25 10:00,0,8,100
FAB116203C-90,DOOR FRAME GROUT (RFI1416) - FAB116203C - P1 (INCLUDE MOBILIZATION AND CURE TIME),Complete,Mechanical Rm 2 - 1F -SUE-FAB116203,,,,,,,,,,2025-08-11 08:00,2025-08-11 17:00,2025-08-11 08:00,2025-08-11 17:00,2025-11-20 17:00,2025-11-20 17:00,2025-11-25 10:00,2025-11-25 10:00,0,8,100
FAB110506B-90,DOOR FRAME GROUT (RFI1416) - FAB110506B - P1 (INCLUDE MOBILIZATION AND CURE TIME),Complete,Exit Passageway 5 - 1F -SUW-FAB110506,,,,,,,,,,2025-08-04 08:00,2025-08-04 17:00,2025-08-04 08:00,2025-08-04 17:00,2025-11-20 17:00,2025-11-20 17:00,2025-12-05 17:00,2025-12-05 17:00,0,8,100
FAB116307B-90,DOOR FRAME GROUT (RFI1416) - FAB116307B - P1 (INCLUDE MOBILIZATION AND CURE TIME),Complete,Exit Passageway 20 - 1F -SUE-FAB116307,,,,,,,,,,2025-07-25 08:00,2025-07-25 17:00,2025-07-23 08:00,2025-07-23 17:00,2025-11-20 17:00,2025-11-20 17:00,2025-11-28 08:00,2025-11-28 08:00,0,8,100
FAB116309A-90,DOOR FRAME GROUT (RFI1416) - FAB116309A - P1 (INCLUDE MOBILIZATION AND CURE TIME),Complete,Fire Riser Rm 4 - 1F -SUE-FAB116309,,,,,,,,,,2025-08-04 08:00,2025-08-04 17:00,2025-08-04 08:00,2025-08-04 17:00,2025-11-20 17:00,2025-11-20 17:00,2025-11-27 08:00,2025-11-27 08:00,0,8,100
FAB116507A-90,DOOR FRAME GROUT (RFI1416) - FAB116507A - P1 (INCLUDE MOBILIZATION AND CURE TIME),Complete,Fire Riser Rm 5 - 1F -SUE-FAB116507,,,,,,,,,,2025-08-05 08:00,2025-08-05 17:00,2025-08-05 08:00,2025-08-05 17:00,2025-11-20 17:00,2025-11-20 17:00,2025-11-27 08:00,2025-11-27 08:00,0,8,100
FAB146105A-90,DOOR FRAME GROUT (RFI1416) - FAB146105A - P1 (INCLUDE MOBILIZATION AND CURE TIME),Not Started,Elevator Hall 22 - 4F -SUE-FAB146105,,,,,,,,,,2025-12-11 08:00,2025-12-11 17:00,,,2025-12-11 08:00,2025-12-11 17:00,2025-11-24 10:00,2025-11-25 10:00,8,8,0
FAB146109B-90,DOOR FRAME GROUT (RFI1416) - FAB146109B - P1 (INCLUDE MOBILIZATION AND CURE TIME),Not Started,Elevator Hall 22 - 4F -SUE-FAB146105,,,,,,,,,,2025-12-11 08:00,2025-12-11 17:00,,,2025-12-11 08:00,2025-12-11 17:00,2025-11-24 10:00,2025-11-25 10:00,8,8,0
FAB146109C-90,DOOR FRAME GROUT (RFI1416) - FAB146109C - P1 (INCLUDE MOBILIZATION AND CURE TIME),Not Started,Elevator Hall 22 - 4F -SUE-FAB146105,,,,,,,,,,2025-12-11 08:00,2025-12-11 17:00,,,2025-12-11 08:00,2025-12-11 17:00,2025-11-24 10:00,2025-11-25 10:00,8,8,0
FAB146110B-90,DOOR FRAME GROUT (RFI1416) - FAB146110B - P1 (INCLUDE MOBILIZATION AND CURE TIME),Not Started,Elevator Hall 22 - 4F -SUE-FAB146105,,,,,,,,,,2025-12-11 08:00,2025-12-11 17:00,,,2025-12-11 08:00,2025-12-11 17:00,2025-11-24 10:00,2025-11-25 10:00,8,8,0
FAB146303A-90,DOOR FRAME GROUT (RFI1416) - FAB146303A - P1 (INCLUDE MOBILIZATION AND CURE TIME),Not Started,4F-Vestibule @ ST20 - 4F -SUE-FAB146303,,,,,,,,,,2025-12-12 08:00,2025-12-12 17:00,,,2025-12-12 08:00,2025-12-12 17:00,2025-11-24 10:00,2025-11-25 10:00,8,8,0
FAB146507A-90,DOOR FRAME GROUT (RFI1416) - FAB146507A - P1 (INCLUDE MOBILIZATION AND CURE TIME),Complete,Elevator Hall 18 - 4F -SUE-FAB146507,,,,,,,,,,2025-07-25 08:00,2025-07-25 17:00,2025-07-25 08:00,2025-07-25 17:00,2025-11-20 17:00,2025-11-20 17:00,2025-11-20 10:00,2025-11-20 10:00,0,8,100
FAB146507B-90,DOOR FRAME GROUT (RFI1416) - FAB146507B - P1 (INCLUDE MOBILIZATION AND CURE TIME),Not Started,Elevator Hall 18 - 4F -SUE-FAB146507,,,,,,,,,,2025-12-02 08:00,2025-12-02 17:00,,,2025-12-02 08:00,2025-12-02 17:00,2025-11-24 10:00,2025-11-25 10:00,8,8,0
FAB146503A-90,DOOR FRAME GROUT (RFI1416) - FAB146503A - P1 (INCLUDE MOBILIZATION AND CURE TIME),Not Started,MCC Rm 2 - 4F -SUE-FAB146503,,,,,,,,,,2025-12-11 08:00,2025-12-11 17:00,,,2025-12-11 08:00,2025-12-11 17:00,2025-11-24 10:00,2025-11-25 10:00,8,8,0
FAB140508A-90,DOOR FRAME GROUT (RFI1416) - FAB140508A - P1 (INCLUDE MOBILIZATION AND CURE TIME),Not Started,Elevator Hall 5 - 4F -SUW-FAB140508,,,,,,,,,,2025-12-02 08:00,2025-12-02 17:00,,,2025-12-02 08:00,2025-12-02 17:00,2025-11-24 10:00,2025-11-25 10:00,8,8,0
FAB140508B-90,DOOR FRAME GROUT (RFI1416) - FAB140508B - P1 (INCLUDE MOBILIZATION AND CURE TIME),Complete,Elevator Hall 5 - 4F -SUW-FAB140508,,,,,,,,,,2025-07-14 08:00,2025-07-14 17:00,2025-07-14 08:00,2025-07-14 17:00,2025-11-20 17:00,2025-11-20 17:00,2025-11-25 10:00,2025-11-25 10:00,0,8,100
FAB140509B-90,DOOR FRAME GROUT (RFI1416) - FAB140509B - P1 (INCLUDE MOBILIZATION AND CURE TIME),Not Started,MCC Rm 2 - 4F -SUW-FAB140509,,,,,,,,,,2025-12-11 08:00,2025-12-11 17:00,,,2025-12-11 08:00,2025-12-11 17:00,2025-11-24 10:00,2025-11-25 10:00,8,8,0
FAB140303A-90,DOOR FRAME GROUT (RFI1416) - FAB140303A - P1 (INCLUDE MOBILIZATION AND CURE TIME),Not Started,Vestibule 3 - 4F -SUW-FAB140303,,,,,,,,,,2025-12-11 08:00,2025-12-11 17:00,,,2025-12-11 08:00,2025-12-11 17:00,2025-11-24 10:00,2025-11-25 10:00,8,8,0
FAB140301A-90,DOOR FRAME GROUT (RFI1416) - FAB140301A - P1 (INCLUDE MOBILIZATION AND CURE TIME),Not Started,Voc CTR Rm - 4F -SUW-FAB140301,,,,,,,,,,2025-12-11 08:00,2025-12-11 17:00,,,2025-12-11 08:00,2025-12-11 17:00,2025-11-24 10:00,2025-11-25 10:00,8,8,0
FAB140101A-90,DOOR FRAME GROUT (RFI1416) - FAB140101A - P1 (INCLUDE MOBILIZATION AND CURE TIME),Not Started,Elevator Hall 1 - 4F -SUW-FAB140101,,,,,,,,,,2025-12-11 08:00,2025-12-11 17:00,,,2025-12-11 08:00,2025-12-11 17:00,2025-11-24 10:00,2025-11-25 10:00,8,8,0
FAB140101B-90,DOOR FRAME GROUT (RFI1416) - FAB140101B - P1 (INCLUDE MOBILIZATION AND CURE TIME),Not Started,Elevator Hall 1 - 4F -SUW-FAB140101,,,,,,,,,,2025-12-11 08:00,2025-12-11 17:00,,,2025-12-11 08:00,2025-12-11 17:00,2025-11-24 10:00,2025-11-25 10:00,8,8,0
FAB140601C-90,DOOR FRAME GROUT (RFI1416) - FAB140601C - P1 (INCLUDE MOBILIZATION AND CURE TIME),Not Started,Elevator Hall 1 - 4F -SUW-FAB140101,,,,,,,,,,2025-12-11 08:00,2025-12-11 17:00,,,2025-12-11 08:00,2025-12-11 17:00,2025-11-24 10:00,2025-11-25 10:00,8,8,0
FAB140601B-90,DOOR FRAME GROUT (RFI1416) - FAB140601B - P1 (INCLUDE MOBILIZATION AND CURE TIME),Not Started,Elevator Hall 1 - 4F -SUW-FAB140101,,,,,,,,,,2025-12-11 08:00,2025-12-11 17:00,,,2025-12-11 08:00,2025-12-11 17:00,2025-11-24 10:00,2025-11-25 10:00,8,8,0
FAB140106B-90,DOOR FRAME GROUT (RFI1416) - FAB140106B - P1 (INCLUDE MOBILIZATION AND CURE TIME),Not Started,MCC Rm - 4F -SUW-FAB140106,,,,,,,,,,2025-12-11 08:00,2025-12-11 17:00,,,2025-12-11 08:00,2025-12-11 17:00,2025-11-24 10:00,2025-11-25 10:00,8,8,0
FAB145101C-90,DOOR FRAME GROUT (RFI1416) - FAB145101C - P1 (INCLUDE MOBILIZATION AND CURE TIME),Complete,TRUSS AREA VESTIBULE - 4F -FIZ-FAB142102 (LVL 4G),,,,,,,,,,2025-07-01 08:00,2025-07-01 17:00,2025-07-01 08:00,2025-07-01 17:00,2025-11-20 17:00,2025-11-20 17:00,2025-11-25 10:00,2025-11-25 10:00,0,8,100
FAB166101A-90,DOOR FRAME GROUT (RFI1416) - FAB166101A - P1 (INCLUDE MOBILIZATION AND CURE TIME),Not Started,Mechanical Penthouse - 6F - FIZ-FAB166101,,,,,,,,,,2025-12-11 08:00,2025-12-11 17:00,,,2025-12-11 08:00,2025-12-11 17:00,2025-11-24 08:00,2025-11-24 17:00,8,8,0
FAB120506A-90,DOOR FRAME GROUT (RFI1416) - FAB120506A - P1 (INCLUDE MOBILIZATION AND CURE TIME),Complete,GCS Storage - 2F -SUW-FAB120506,,,,,,,,,,2025-10-10 08:00,2025-10-10 17:00,2025-10-10 08:00,2025-10-10 17:00,2025-11-20 17:00,2025-11-20 17:00,2025-11-25 08:00,2025-11-25 08:00,0,8,100
FAB120506B-90,DOOR FRAME GROUT (RFI1416) - FAB120506B - P1 (INCLUDE MOBILIZATION AND CURE TIME),Complete,GCS Storage - 2F -SUW-FAB120506,,,,,,,,,,2025-10-10 08:00,2025-10-10 17:00,2025-10-10 08:00,2025-10-10 17:00,2025-11-20 17:00,2025-11-20 17:00,2025-11-25 08:00,2025-11-25 08:00,0,8,100
FAB120506C-90,DOOR FRAME GROUT (RFI1416) - FAB120506C - P1 (INCLUDE MOBILIZATION AND CURE TIME),Complete,GCS Storage - 2F -SUW-FAB120506,,,,,,,,,,2025-10-10 08:00,2025-10-10 17:00,2025-10-10 08:00,2025-10-10 17:00,2025-11-20 17:00,2025-11-20 17:00,2025-11-25 08:00,2025-11-25 08:00,0,8,100
FAB120507A-90,DOOR FRAME GROUT (RFI1416) - FAB120507A - P1 (INCLUDE MOBILIZATION AND CURE TIME),Complete,Utility Rm - 2F -SUW-FAB120507,,,,,,,,,,2025-11-12 08:00,2025-11-12 17:00,2025-11-12 08:00,2025-11-12 17:00,2025-11-20 17:00,2025-11-20 17:00,2025-11-25 10:00,2025-11-25 10:00,0,8,100
FAB120507B-90,DOOR FRAME GROUT (RFI1416) - FAB120507B - P1 (INCLUDE MOBILIZATION AND CURE TIME),Not Started,Utility Rm - 2F -SUW-FAB120507,,,,,,,,,,2025-12-02 08:00,2025-12-02 17:00,,,2025-12-02 08:00,2025-12-02 17:00,2025-11-24 10:00,2025-11-25 10:00,8,8,0
CN.SWA4.7430,IMPACT - SECAI MEP WORK - ONGOING PORTER - ONLY 70% AREA AVAIALBLE TO WORK - N30-31 TRESTLE B INFILL,Complete,CONSTRUCTION,,SUWN-5 - 30-33,EXTERIOR SKIN,,CONSTRUCTION,KOVACH,INSULATED METAL PANELS,,,2025-04-21 07:00,2025-05-08 17:00,2025-06-23 07:00,2025-09-09 17:00,2025-11-20 17:00,2025-11-20 17:00,2025-11-04 07:00,2025-11-04 07:00,0,140,100
CN.SWB3.6261,IMPACT - SECAI ELEVATOR ACCESS - GL 19-16 - N LINE,Active,CONSTRUCTION,,SUWN-1 - 18-21,EXTERIOR SKIN,,CONSTRUCTION,,,,,2025-07-18 07:00,2025-07-24 17:00,2025-07-01 07:00,,2025-11-21 07:00,2025-11-26 17:00,2025-11-14 07:00,2025-11-19 17:00,40,50,0
CN.BB51.ST.3482,IMPACT - SECAI MEP HOSES IN THE WAY - GL 33 - L2 - A-B,Complete,Area B-5,North Areas (Team B -Gridlines 17-33),GRIDLINE 33,L2 - SubFab Level,GL33 EXTERIOR AREA (SUE) - A-C,CONSTRUCTION,WATER PROOFING GL33,DRYWALL,AMBER CARO,,2025-07-09 11:00,2025-07-14 11:00,2025-07-08 07:00,2025-08-11 17:00,2025-11-20 17:00,2025-11-20 17:00,2025-12-02 07:00,2025-12-02 07:00,0,30,100
CN.SWB5.11070,IMPACT - SECAI / AXIOS DEMOED LVL 1 WALL - REINSTALL - GL 33 - L1-L3 - L-M LINE,Complete,CONSTRUCTION,,GRIDLINE 33,GL 33- LEAVEOUTS,GL33 EXTERIOR AREA (SUW) - L-N,CONSTRUCTION,BERG,,,,2025-01-13 07:00,2025-02-14 17:00,2025-06-30 07:00,2025-08-21 17:00,2025-11-20 17:00,2025-11-20 17:00,2025-11-24 07:00,2025-11-24 07:00,0,250,100
CN.SWA1.10070,IMPACT - SAFETY STANDOWN-CANCELLED LEVEL 4C PRIMER INSPCTION & LEVEL 4G PREP INSPECTION- L1-L4 - ELEVATOR 22,Complete,SWA - 1,West Support Building,SUWS-1 - 18-15,,ELEVATOR,CONSTRUCTION,W&W,DRYWALL,JAMES LIVELY,INTERIORS,2025-08-01 07:00,2025-08-01 17:00,2025-07-18 07:00,2025-07-18 07:00,2025-11-20 17:00,2025-11-20 17:00,2025-11-26 07:00,2025-11-26 07:00,0,10,100
FAB126507A-01,IMPACT - INSTALL/REWORK DRYWALL FRAMING AROUND DOORS - FAB126507A,Complete,Duct Shaft - 2F -SUE-FAB126507,,,,,,,,,,2025-02-13 08:00,2025-02-21 17:00,2025-02-26 08:00,2025-03-06 17:00,2025-11-20 17:00,2025-11-20 17:00,2025-11-25 10:00,2025-11-25 10:00,0,56,100
FAB126507A-02,SECAI ROUGH IN/SECURITY - FAB126507A,Complete,Duct Shaft - 2F -SUE-FAB126507,,,,,,,,,,2025-02-21 08:00,2025-02-21 17:00,2025-03-06 08:00,2025-03-06 17:00,2025-11-20 17:00,2025-11-20 17:00,2025-11-25 10:00,2025-11-25 10:00,0,8,100
FAB126507A-03,INSTALL DOOR FRAMES - FAB126507A,Complete,Duct Shaft - 2F -SUE-FAB126507,,,,,,,,,,2025-08-18 13:00,2025-08-19 12:00,2025-03-06 00:00,2025-03-06 16:00,2025-11-20 17:00,2025-11-20 17:00,2025-11-25 10:00,2025-11-25 10:00,0,8,100
FAB126507A-04,INSTALL DOOR & HARDWARE - FAB126507A,Active,Duct Shaft - 2F -SUE-FAB126507,,,,,,,,,,2025-05-08 08:00,2025-05-14 17:00,2025-05-08 08:00,,2025-11-21 08:00,2025-11-27 17:00,2025-11-25 10:00,2025-12-02 10:00,40,40,0
FAB126507A-05,PAINT & PROTECT DOORS & FRAMES -  FAB120507C,Not Started,Duct Shaft - 2F -SUE-FAB126507,,,,,,,,,,2026-02-16 08:00,2026-02-19 15:00,,,2026-02-16 08:00,2026-02-19 15:00,2025-12-02 10:00,2025-12-05 17:00,30,30,0
FAB122104A-01,IMPACT - INSTALL/REWORK DRYWALL FRAMING AROUND DOORS - FAB122104A,Complete,Pedestrian Walkway - 2F -FIZ-FAB122105,,,,,,,,,,2025-05-01 08:00,2025-05-09 17:00,2025-03-04 08:00,2025-03-13 08:00,2025-11-20 17:00,2025-11-20 17:00,2025-11-25 10:00,2025-11-25 10:00,0,56,100
FAB122104A-02,SECAI ROUGH IN/SECURITY - FAB122104A,Complete,Pedestrian Walkway - 2F -FIZ-FAB122105,,,,,,,,,,2025-05-05 08:00,2025-05-05 17:00,2025-03-13 08:00,2025-03-13 17:00,2025-11-20 17:00,2025-11-20 17:00,2025-11-25 10:00,2025-11-25 10:00,0,8,100
FAB122104A-03,INSTALL DOOR FRAMES - FAB122104A,Complete,Pedestrian Walkway - 2F -FIZ-FAB122105,,,,,,,,,,2025-08-26 08:00,2025-08-26 17:00,2025-03-13 00:00,2025-03-13 16:00,2025-11-20 17:00,2025-11-20 17:00,2025-11-25 10:00,2025-11-25 10:00,0,8,100
FAB122104A-04,INSTALL DOOR & HARDWARE - FAB122104A,Not Started,Pedestrian Walkway - 2F -FIZ-FAB122105,,,,,,,,,,2025-11-21 08:00,2025-11-27 17:00,,,2025-11-21 08:00,2025-11-27 17:00,2025-11-25 10:00,2025-12-02 10:00,40,40,0
FAB122104A-05,PAINT & PROTECT DOORS & FRAMES -  FAB122104A,Not Started,Pedestrian Walkway - 2F -FIZ-FAB122105,,,,,,,,,,2026-02-16 08:00,2026-02-19 15:00,,,2026-02-16 08:00,2026-02-19 15:00,2025-12-02 10:00,2025-12-05 17:00,30,30,0
FAB110515A-01,IMPACT - INSTALL/REWORK DRYWALL FRAMING AROUND DOORS - FAB110515A,Complete,Vestibule - 1F -SUW-FAB110515,,,,,,,,,,2025-03-10 08:00,2025-03-18 17:00,2025-03-10 08:00,2025-03-18 17:00,2025-11-20 17:00,2025-11-20 17:00,2025-11-18 10:00,2025-11-18 10:00,0,56,100
FAB110515A-02,SECAI ROUGH IN/SECURITY - FAB110515A,Complete,Vestibule - 1F -SUW-FAB110515,,,,,,,,,,2025-05-06 08:00,2025-05-06 17:00,2025-03-18 08:00,2025-03-18 17:00,2025-11-20 17:00,2025-11-20 17:00,2025-12-02 08:00,2025-12-02 08:00,0,8,100
FAB110515A-03,INSTALL DOOR FRAMES - FAB110515A,Complete,Vestibule - 1F -SUW-FAB110515,,,,,,,,,,2025-05-06 08:00,2025-05-06 17:00,2025-03-18 08:00,2025-03-18 17:00,2025-11-20 17:00,2025-11-20 17:00,2025-12-02 08:00,2025-12-02 08:00,0,8,100
FAB110515A-04,DOOR INSTALL - FAB110515A,Complete,Vestibule - 1F -SUW-FAB110515,,,,,,,,,,2025-08-20 08:00,2025-08-20 17:00,2025-08-20 08:00,2025-08-20 17:00,2025-11-20 17:00,2025-11-20 17:00,2025-12-02 08:00,2025-12-02 08:00,0,8,100
FAB110515A-05,PAINT & PROTECT DOORS & FRAMES - FAB110515A,Complete,Vestibule - 1F -SUW-FAB110515,,,,,,,,,,2025-10-14 08:00,2025-10-17 17:00,2025-10-14 08:00,2025-10-17 17:00,2025-11-20 17:00,2025-11-20 17:00,2025-12-02 08:00,2025-12-02 08:00,0,32,100
FAB110515A-06,INSTALL DOOR HARDWARE - FAB110515A,Not Started,Vestibule - 1F -SUW-FAB110515,,,,,,,,,,2025-11-21 08:00,2025-11-26 17:00,,,2025-11-21 08:00,2025-11-26 17:00,2025-12-02 08:00,2025-12-05 17:00,32,32,0
FAB110112A-03,INSTALL DOOR FRAMES - FAB110112A,Complete,Duct Shaft Vestibule - 1F -SUW-FAB110108,,,,,,,,,,2025-06-05 13:00,2025-06-06 12:00,2025-04-10 00:00,2025-04-10 16:00,2025-11-20 17:00,2025-11-20 17:00,2025-11-25 10:00,2025-11-25 10:00,0,8,100
FAB110112A-04,INSTALL DOOR & HARDWARE - FAB110112A,Active,Duct Shaft Vestibule - 1F -SUW-FAB110108,,,,,,,,,,2025-07-08 08:00,2025-07-14 17:00,2025-07-08 08:00,,2025-11-21 08:00,2025-11-27 17:00,2025-11-25 10:00,2025-12-02 10:00,40,40,0
FAB110112A-05,PAINT & PROTECT DOORS & FRAMES - FAB110112A,Not Started,Duct Shaft Vestibule - 1F -SUW-FAB110108,,,,,,,,,,2026-02-16 08:00,2026-02-19 15:00,,,2026-02-16 08:00,2026-02-19 15:00,2025-12-02 10:00,2025-12-05 17:00,30,30,0
FAB126510A-01,IMPACT - INSTALL/REWORK DRYWALL FRAMING AROUND DOORS - FAB126510A,Complete,Duct Shaft - 2F -SUE-FAB126510,,,,,,,,,,2025-02-13 08:00,2025-02-21 17:00,2025-04-28 08:00,2025-05-06 17:00,2025-11-20 17:00,2025-11-20 17:00,2025-11-25 10:00,2025-11-25 10:00,0,56,100
FAB126510A-02,SECAI ROUGH IN/SECURITY - FAB126510A,Complete,Duct Shaft - 2F -SUE-FAB126510,,,,,,,,,,2025-02-21 08:00,2025-02-21 17:00,2025-05-06 08:00,2025-05-06 17:00,2025-11-20 17:00,2025-11-20 17:00,2025-11-25 10:00,2025-11-25 10:00,0,8,100
FAB126510A-03,INSTALL DOOR FRAMES - FAB126510A,Complete,Duct Shaft - 2F -SUE-FAB126510,,,,,,,,,,2025-08-18 13:00,2025-08-19 12:00,2025-05-06 00:00,2025-05-06 16:00,2025-11-20 17:00,2025-11-20 17:00,2025-11-25 10:00,2025-11-25 10:00,0,8,100
FAB126510A-04,INSTALL DOOR & HARDWARE - FAB126510A,Not Started,Duct Shaft - 2F -SUE-FAB126510,,,,,,,,,,2025-11-21 08:00,2025-11-27 17:00,,,2025-11-21 08:00,2025-11-27 17:00,2025-11-25 10:00,2025-12-02 10:00,40,40,0
FAB126510A-05,PAINT & PROTECT DOORS & FRAMES -  FAB126510A,Not Started,Duct Shaft - 2F -SUE-FAB126510,,,,,,,,,,2026-02-16 08:00,2026-02-19 15:00,,,2026-02-16 08:00,2026-02-19 15:00,2025-12-02 10:00,2025-12-05 17:00,30,30,0
FAB110310A-01,IMPACT - INSTALL/REWORK DRYWALL FRAMING AROUND DOORS - FAB110310A,Complete,Duct Shaft Vestibule - 1F -SUW-FAB110310,,,,,,,,,,2025-05-23 08:00,2025-06-02 17:00,2025-05-26 08:00,2025-06-03 17:00,2025-11-20 17:00,2025-11-20 17:00,2025-11-25 08:00,2025-11-25 08:00,0,56,100
FAB110310A-02,SECAI ROUGH IN/SECURITY - FAB110310A,Complete,Duct Shaft Vestibule - 1F -SUW-FAB110310,,,,,,,,,,2025-05-27 08:00,2025-05-27 17:00,2025-06-03 08:00,2025-06-03 17:00,2025-11-20 17:00,2025-11-20 17:00,2025-11-25 08:00,2025-11-25 08:00,0,8,100
FAB110310A-03,INSTALL DOOR FRAMES - FAB110310A,Complete,Duct Shaft Vestibule - 1F -SUW-FAB110310,,,,,,,,,,2025-05-27 08:00,2025-05-27 17:00,2025-06-03 08:00,2025-06-03 17:00,2025-11-20 17:00,2025-11-20 17:00,2025-11-25 08:00,2025-11-25 08:00,0,8,100
FAB110310A-04,INSTALL DOOR & HARDWARE - FAB110310A,Active,Duct Shaft Vestibule - 1F -SUW-FAB110310,,,,,,,,,,2025-09-08 08:00,2025-09-12 17:00,2025-09-08 08:00,,2025-11-21 08:00,2025-11-27 17:00,2025-11-25 08:00,2025-12-01 17:00,40,40,0
FAB110310A-05,PAINT & PROTECT DOORS & FRAMES - FAB110310A,Not Started,Duct Shaft Vestibule - 1F -SUW-FAB110310,,,,,,,,,,2026-02-16 08:00,2026-02-19 17:00,,,2026-02-16 08:00,2026-02-19 17:00,2025-12-02 08:00,2025-12-05 17:00,32,32,0
FAB132101C-01,IMPACT - INSTALL/REWORK DRYWALL FRAMING AROUND DOORS - FAB132101C,Complete,Unassigned - 3F - FIZ-FAB134102,,,,,,,,,,2025-05-29 08:00,2025-06-06 17:00,2025-05-29 08:00,2025-06-06 17:00,2025-11-20 17:00,2025-11-20 17:00,2025-11-25 08:00,2025-11-25 08:00,0,56,100
FAB132101C-02,SECAI ROUGH IN/SECURITY - FAB132101C,Complete,Unassigned - 3F - FIZ-FAB134102,,,,,,,,,,2025-06-06 08:00,2025-06-06 17:00,2025-06-06 08:00,2025-06-06 17:00,2025-11-20 17:00,2025-11-20 17:00,2025-11-25 08:00,2025-11-25 08:00,0,8,100
FAB132101C-03,INSTALL DOOR FRAMES - FAB132101C,Complete,Unassigned - 3F - FIZ-FAB134102,,,,,,,,,,2025-06-06 08:00,2025-06-06 17:00,2025-06-06 08:00,2025-06-06 17:00,2025-11-20 17:00,2025-11-20 17:00,2025-11-25 08:00,2025-11-25 08:00,0,8,100
FAB132101C-04,INSTALL DOOR & HARDWARE - FAB132101C,Active,Unassigned - 3F - FIZ-FAB134102,,,,,,,,,,2025-11-18 08:00,2025-11-24 17:00,2025-11-18 08:00,,2025-11-21 08:00,2025-11-27 17:00,2025-11-25 08:00,2025-12-01 17:00,40,40,0
FAB132101C-05,PAINT & PROTECT DOORS & FRAMES - FAB132101C,Not Started,Unassigned - 3F - FIZ-FAB134102,,,,,,,,,,2026-02-16 08:00,2026-02-19 17:00,,,2026-02-16 08:00,2026-02-19 17:00,2025-12-02 08:00,2025-12-05 17:00,32,32,0
FAB146109A-01,IMPACT - INSTALL/REWORK DRYWALL FRAMING AROUND DOORS - FAB146109A,Complete,Elevator Hall 22 - 4F -SUE-FAB146105,,,,,,,,,,2025-07-01 08:00,2025-07-09 17:00,2025-07-01 08:00,2025-07-09 17:00,2025-11-20 17:00,2025-11-20 17:00,2025-11-25 10:00,2025-11-25 10:00,0,56,100
FAB146109A-02,SECAI ROUGH IN/SECURITY -  FAB146109A,Complete,Elevator Hall 22 - 4F -SUE-FAB146105,,,,,,,,,,2025-07-09 08:00,2025-07-09 17:00,2025-07-09 08:00,2025-07-09 17:00,2025-11-20 17:00,2025-11-20 17:00,2025-11-25 10:00,2025-11-25 10:00,0,8,100
FAB146109A-03,INSTALL DOOR FRAMES - FAB146109A,Complete,Elevator Hall 22 - 4F -SUE-FAB146105,,,,,,,,,,2025-07-09 08:00,2025-07-09 17:00,2025-07-09 08:00,2025-07-09 17:00,2025-11-20 17:00,2025-11-20 17:00,2025-11-25 10:00,2025-11-25 10:00,0,8,100
FAB146109A-04,INSTALL DOOR & HARDWARE - FAB146109A,Active,Elevator Hall 22 - 4F -SUE-FAB146105,,,,,,,,,,2025-11-10 08:00,2025-11-14 17:00,2025-11-10 08:00,,2025-11-21 08:00,2025-11-27 17:00,2025-11-25 10:00,2025-12-02 10:00,40,40,0
FAB146109A-05,PAINT & PROTECT DOORS & FRAMES - FAB146109A,Not Started,Elevator Hall 22 - 4F -SUE-FAB146105,,,,,,,,,,2026-02-16 08:00,2026-02-19 15:00,,,2026-02-16 08:00,2026-02-19 15:00,2025-12-02 10:00,2025-12-05 17:00,30,30,0
FAB120108A-03,INSTALL DOOR FRAME BY SECAI - FAB120108A HANDED OVER ON 06/27,Active,Air Lock 1 - 2F -SUW-FAB120108,,,,,,,,,,2025-06-27 08:00,2025-07-31 17:00,2025-06-27 08:00,,2025-11-21 08:00,2025-11-27 17:00,2025-11-18 10:00,2025-11-25 10:00,40,200,0
FAB120108E-03,INSTALL DOOR FRAME BY SECAI - FAB120108E HANDED OVER ON 08/29,Active,Air Lock 1 - 2F -SUW-FAB120108,,,,,,,,,,2025-08-29 08:00,2025-08-29 17:00,2025-08-29 08:00,,2025-11-21 08:00,2025-11-28 17:00,2025-11-17 10:00,2025-11-25 10:00,48,8,0
FAB120303C-02,SECAI ROUGH IN/SECURITY - FAB120303C,Complete,Air Lock 3 - 2F -SUW-FAB120303,,,,,,,,,,2025-08-21 08:00,2025-08-21 17:00,2025-07-18 08:00,2025-07-18 17:00,2025-11-20 17:00,2025-11-20 17:00,2025-11-25 10:00,2025-11-25 10:00,0,8,100
FAB120303C-03,INSTALL DOOR FRAMES - FAB120303C,Complete,Air Lock 3 - 2F -SUW-FAB120303,,,,,,,,,,2025-08-22 08:00,2025-08-22 17:00,2025-07-21 08:00,2025-07-21 17:00,2025-11-20 17:00,2025-11-20 17:00,2025-11-25 10:00,2025-11-25 10:00,0,8,100
FAB120503B-02,SECAI ROUGH IN/SECURITY - FAB120503B HANDED OVER TO SECAI ON 08/29,Complete,Air lock 5 - 2F -SUW-FAB120503,,,,,,,,,,2025-08-29 08:00,2025-08-29 17:00,2025-08-29 08:00,2025-08-29 17:00,2025-11-20 17:00,2025-11-20 17:00,2025-11-17 10:00,2025-11-17 10:00,0,8,100
FAB120503B-03,INSTALL DOOR FRAME BY SECAI - FAB120503B HANDED OVER ON 08/29,Active,Air lock 5 - 2F -SUW-FAB120503,,,,,,,,,,2025-08-29 08:00,2025-08-29 17:00,2025-08-29 08:00,,2025-11-21 08:00,2025-11-28 17:00,2025-11-17 10:00,2025-11-25 10:00,48,8,0
FAB120503E-02,SECAI ROUGH IN/SECURITY - FAB120503E,Complete,Air lock 5 - 2F -SUW-FAB120503,,,,,,,,,,2025-08-01 08:00,2025-08-01 17:00,2025-08-01 08:00,2025-08-01 17:00,2025-11-20 17:00,2025-11-20 17:00,2025-11-25 10:00,2025-11-25 10:00,0,8,100
FAB120503E-03,INSTALL DOOR FRAMES - FAB120503E,Complete,Air lock 5 - 2F -SUW-FAB120503,,,,,,,,,,2025-08-01 08:00,2025-08-01 17:00,2025-08-01 08:00,2025-08-01 17:00,2025-11-20 17:00,2025-11-20 17:00,2025-11-25 10:00,2025-11-25 10:00,0,8,100
FAB136505B-03,INSTALL DOOR FRAMES - FAB136505B,Complete,Vestibule 18 - 3F -SUE-FAB136505,,,,,,,,,,2025-05-27 08:00,2025-06-04 17:00,2025-01-16 08:00,2025-01-16 16:00,2025-11-20 17:00,2025-11-20 17:00,2025-11-25 10:00,2025-11-25 10:00,0,56,100
FAB116308A-03,INSTALL DOOR FRAMES - FAB116308A,Complete,Mechanical Rm 3 - 1F -SUE-FAB116308,,,,,,,,,,2025-08-21 08:00,2025-08-21 17:00,2025-08-21 08:00,2025-08-21 17:00,2025-11-20 17:00,2025-11-20 17:00,2025-11-25 10:00,2025-11-25 10:00,0,8,100
FAB110304A-60,FRAME HANDED OVER TO SECAI 07/18 - FAB110304A,Complete,Air Lock 3 - 1F -SUW-FAB110304,,,,,,,,,,2025-07-18 08:00,2025-07-18 17:00,2025-07-18 08:00,2025-07-18 17:00,2025-11-20 17:00,2025-11-20 17:00,2025-11-18 10:00,2025-11-18 10:00,0,8,100
FAB110409D-40,DOOR FRAME HANDED OVER TO SEC AI 07/18- FAB110409D,Complete,W-H3PO4 RM (N/25.4-26.2) - 1F -SUW-FAB110409,,,,,,,,,,2025-07-18 08:00,2025-07-18 17:00,2025-07-18 08:00,2025-07-18 17:00,2025-11-20 17:00,2025-11-20 17:00,2025-11-25 10:00,2025-11-25 10:00,0,8,100
FAB116301B-25,DOOR FRAME HANDED OVER TO SECAI 07/18 - FAB116301B,Complete,Air Lock 20 - 1F -SUE-FAB116301,,,,,,,,,,2025-07-18 08:00,2025-07-18 17:00,2025-07-18 08:00,2025-07-18 17:00,2025-11-20 17:00,2025-11-20 17:00,2025-11-18 10:00,2025-11-18 10:00,0,8,100
FAB116301B-03,INSTALL DOOR FRAME BY SECAI - FAB116301B HANDED OVER 07/18,Complete,Air Lock 20 - 1F -SUE-FAB116301,,,,,,,,,,2025-07-18 08:00,2025-07-18 17:00,2025-07-18 08:00,2025-09-22 17:00,2025-11-20 17:00,2025-11-20 17:00,2025-11-18 10:00,2025-11-18 10:00,0,8,100
CN.BB51.ST.3492,IMPACT - DESIGN CHANGE - IOCC 1502 SUBMIT & APPROVAL - GL 33 - STAIR 5 - K-L,Complete,CONSTRUCTION,,GRIDLINE 33,GL 33 STAIR 5 (WEST),STAIR 5 (WEST) - K-L,CONSTRUCTION,WATER PROOFING GL33,,,,2025-06-23 07:00,2025-06-25 17:00,2025-05-28 07:00,2025-06-24 17:00,2025-11-20 17:00,2025-11-20 17:00,2025-11-12 07:00,2025-11-12 07:00,0,30,100
CN.BB51.ST.3502,BRAZOS - Y-0815 - SHOP DWG SUBMITTAL & APPROVAL- GL 33 - STAIR 5 - K-L,Complete,CONSTRUCTION,,GRIDLINE 33,GL 33 STAIR 5 (WEST),STAIR 5 (WEST) - K-L,CONSTRUCTION,BRAZOS,,,,2025-07-18 07:00,2025-07-24 17:00,2025-07-11 07:00,2025-07-23 17:00,2025-11-20 17:00,2025-11-20 17:00,2025-11-12 07:00,2025-11-12 07:00,0,50,100
CN.SEB1.10900,BRAZOS INSTALL EDGE METAL & MEMBRANE - GL 19-28 - A LINE - L4 ROOF,Active,CONSTRUCTION,,SUEN-3 - 25-28,L4 - SUP Roof - FAB Roof,,CONSTRUCTION,BRAZOS,,,,2025-07-03 07:00,2025-07-23 17:00,2025-07-14 07:00,,2025-11-21 07:00,2025-11-25 17:00,2025-12-03 07:00,2025-12-05 17:00,30,140,0
MS.OOS.5440,SECAI - DRYWALL & DOORS - IMPACTS - START - ReMob Out of Seq Remaining completion list,Complete,Remobilization and Out-of-Sequence Completion List - DD07-10-2025,Key Milestones,Key Milestones,Milestones,,MILESTONE,SECAI,Key Milestones,PROJECT MILESTONES,,2024-12-02 07:00,2024-12-02 07:00,2024-12-02 07:00,2024-12-02 07:00,2025-11-20 17:00,2025-11-20 17:00,2025-06-13 08:00,2025-06-13 08:00,0,0,100
MS.OOS.5460,YATES - SCHEDULE CREATED - ReMob Out of Seq Remaining completion list,Complete,Remobilization and Out-of-Sequence Completion List - DD07-10-2025,Key Milestones,Key Milestones,Milestones,,MILESTONE,SECAI,Key Milestones,PROJECT MILESTONES,,2024-12-02 07:00,2024-12-02 07:00,2025-05-02 07:00,2025-05-02 07:00,2025-11-20 17:00,2025-11-20 17:00,2025-06-13 08:00,2025-06-13 08:00,0,0,100
FAB110514A--03,INSTALL DOOR FRAMES - FAB110514A,Complete,Duct Shaft - 1F -SUW-FAB110306,,,,,,,,,,2025-06-04 08:00,2025-06-04 17:00,2025-06-04 08:00,2025-06-04 17:00,2025-11-20 17:00,2025-11-20 17:00,2025-11-28 08:00,2025-11-28 08:00,0,8,100
FAB110122A-21,DOOR PREP - FAB110122A,Complete,Duct Shaft - 1F -SUW-FAB110206,,,,,,,,,,2025-08-07 08:00,2025-08-13 17:00,2025-07-24 08:00,2025-07-25 17:00,2025-11-20 17:00,2025-11-20 17:00,2025-11-25 10:00,2025-11-25 10:00,0,40,100
FAB110206A-21,DOOR PREP - FAB110206A,Complete,Duct Shaft - 1F -SUW-FAB110206,,,,,,,,,,2025-07-25 08:00,2025-07-30 15:00,2025-07-24 08:00,2025-07-29 17:00,2025-11-20 17:00,2025-11-20 17:00,2025-11-25 10:00,2025-11-25 10:00,0,30,100
FAB110306A-21,DOOR PREP - FAB110306A,Complete,Duct Shaft - 1F -SUW-FAB110306,,,,,,,,,,2025-07-25 08:00,2025-07-30 17:00,2025-07-24 08:00,2025-07-24 17:00,2025-11-20 17:00,2025-11-20 17:00,2025-11-28 08:00,2025-11-28 08:00,0,32,100
A2020,IMPACT - SECAI MEP TRADE DAMAGE - DOOR FRAME RE-ALIGNMENT - notice sent,Complete,Remobilization and Out-of-Sequence Completion List - DD07-10-2025,,,,,,,,,,2025-06-20 08:00,2025-07-21 17:00,2025-06-20 08:00,2025-09-01 17:00,2025-11-20 17:00,2025-11-20 17:00,2025-11-18 08:00,2025-11-18 08:00,0,176,100
FAB110206A-03,INSTALL DOOR FRAMES - FAB110206A,Complete,Duct Shaft - 1F -SUW-FAB110206,,,,,,,,,,2025-07-23 08:00,2025-07-23 17:00,2025-07-23 08:00,2025-07-23 17:00,2025-11-20 17:00,2025-11-20 17:00,2025-11-25 10:00,2025-11-25 10:00,0,8,100
FAB110206B-03,INSTALL DOOR FRAMES - FAB110206B,Complete,Duct Shaft - 1F -SUW-FAB110206,,,,,,,,,,2025-07-29 08:00,2025-07-29 17:00,2025-07-29 08:00,2025-07-29 17:00,2025-11-20 17:00,2025-11-20 17:00,2025-11-25 10:00,2025-11-25 10:00,0,8,100
FAB110206B-21,DOOR PREP - FAB110206B,Complete,Duct Shaft - 1F -SUW-FAB110206,,,,,,,,,,2025-07-30 08:00,2025-08-12 17:00,2025-07-30 08:00,2025-08-18 08:00,2025-11-20 17:00,2025-11-20 17:00,2025-11-25 10:00,2025-11-25 10:00,0,80,100
ZX-19885,IMPACT - SECAI ROOM ENERGIZATION PERMIT APPROVAL -Electrical Rm - 2F-SUW-FAB120401,Active,Electrical Rm - 2F -SUW-FAB120401,,,,,,,,,,2025-07-17 08:00,2025-08-13 17:00,2025-07-17 08:00,,2025-11-21 08:00,2025-11-27 17:00,2025-12-01 08:00,2025-12-05 17:00,40,160,0
ZX-19905,IMPACT - SECAI ROOM ENERGIZATION - Battery Rm1 - 3F-SUE-FAB136202,Complete,Battery Rm 1 - 3F -SUE-FAB136202,,,,,,,,,,2025-07-14 08:00,2025-08-08 17:00,2025-07-14 08:00,2025-09-08 17:00,2025-11-20 17:00,2025-11-20 17:00,2025-11-25 10:00,2025-11-25 10:00,0,160,100
CN.BB51.ST.3512,SECAI MEP ROUGH-INS (WHITE PAINT) - GL 33 - STAIR 5 - K-L,Complete,CONSTRUCTION,,GRIDLINE 33,GL 33 STAIR 5 (WEST),STAIR 5 (WEST) - K-L,CONSTRUCTION,SECAI,,,,2025-07-21 07:00,2025-07-29 17:00,2025-07-21 07:00,2025-08-13 17:00,2025-11-20 17:00,2025-11-20 17:00,2025-11-12 07:00,2025-11-12 07:00,0,70,100
CN.BB51.ST.3522,IMPACT - SECAI SPRINKLER LINE INSTALL - GL 33 - STAIR 18 - C-D,Complete,CONSTRUCTION,,GRIDLINE 33,GL 33 STAIR 18 (EAST),STAIR 18 (EAST) - C-D,CONSTRUCTION,SECAI,,,,2025-08-05 07:00,2025-08-13 17:00,2025-08-05 07:00,2025-08-13 17:00,2025-11-20 17:00,2025-11-20 17:00,2025-11-19 07:00,2025-11-19 07:00,0,70,100
ZX-19925,Complete Drywall & Inspect - Duct Shaft - 3F-FAB130104,Complete,Duct Shaft - 3F -SUW-FAB130104,,,,,,,,,,2025-09-05 08:00,2025-09-08 17:00,2025-09-05 08:00,2025-09-08 17:00,2025-11-20 17:00,2025-11-20 17:00,2025-12-05 17:00,2025-12-05 17:00,0,16,100
ZX-19935,Complete Fire Caulk & Inspect - Duct Shaft - 3F-FAB130104,Complete,Duct Shaft - 3F -SUW-FAB130104,,,,,,,,,,2025-09-08 08:00,2025-09-09 17:00,2025-09-08 08:00,2025-09-09 17:00,2025-11-20 17:00,2025-11-20 17:00,2025-12-05 17:00,2025-12-05 17:00,0,16,100
FAB130104A-01,IMPACT - INSTALL/REWORK DRYWALL FRAMING AROUND DOORS - FAB130104A,Complete,Duct Shaft - 3F -SUW-FAB130104,,,,,,,,,,2025-09-22 10:00,2025-10-01 10:00,2025-01-09 10:00,2025-01-20 10:00,2025-11-20 17:00,2025-11-20 17:00,2025-11-25 10:00,2025-11-25 10:00,0,56,100
FAB130104A-02,SECAI ROUGH IN/SECURITY - FAB130104A,Complete,Duct Shaft - 3F -SUW-FAB130104,,,,,,,,,,2025-10-01 10:00,2025-10-02 10:00,2025-01-20 10:00,2025-01-20 10:00,2025-11-20 17:00,2025-11-20 17:00,2025-11-25 10:00,2025-11-25 10:00,0,0,100
FAB130104A-03,INSTALL DOOR FRAMES - FAB130104A,Complete,Duct Shaft - 3F -SUW-FAB130104,,,,,,,,,,2025-07-23 13:00,2025-07-24 12:00,2025-01-20 00:00,2025-01-20 12:00,2025-11-20 17:00,2025-11-20 17:00,2025-11-25 10:00,2025-11-25 10:00,0,8,100
FAB130104A-04,INSTALL DOOR & HARDWARE - FAB130104A,Not Started,Duct Shaft - 3F -SUW-FAB130104,,,,,,,,,,2025-11-21 08:00,2025-11-27 17:00,,,2025-11-21 08:00,2025-11-27 17:00,2025-11-25 10:00,2025-12-02 10:00,40,40,0
FAB130104A-05,PAINT & PROTECT DOORS & FRAMES - FAB130104A,Not Started,Duct Shaft - 3F -SUW-FAB130104,,,,,,,,,,2026-02-16 08:00,2026-02-19 15:00,,,2026-02-16 08:00,2026-02-19 15:00,2025-12-02 10:00,2025-12-05 17:00,30,30,0
ZX-19955,Complete Drywall & Inspect -TQR LAB - 3F-FAB132102,Complete,TQR LAB - 3F -FIZ-FAB132102,,,,,,,,,,2025-09-05 08:00,2025-09-08 17:00,2025-09-05 08:00,2025-09-08 17:00,2025-11-20 17:00,2025-11-20 17:00,2025-11-17 08:00,2025-11-17 08:00,0,16,100
ZX-19965,Complete Fire Caulk & Inspect - TQR LAB - 3F-FAB132102,Complete,TQR LAB - 3F -FIZ-FAB132102,,,,,,,,,,2025-09-08 08:00,2025-09-09 17:00,2025-09-08 08:00,2025-09-09 17:00,2025-11-20 17:00,2025-11-20 17:00,2025-12-05 17:00,2025-12-05 17:00,0,16,100
FAB132102C-01,IMPACT - INSTALL/REWORK DRYWALL FRAMING AROUND DOORS - FAB132102C,Complete,TQR LAB - 3F -FIZ-FAB132102,,,,,,,,,,2025-05-29 08:00,2025-06-06 17:00,2025-01-10 08:00,2025-01-20 17:00,2025-11-20 17:00,2025-11-20 17:00,2025-11-25 08:00,2025-11-25 08:00,0,56,100
FAB132102C-02,SECAI ROUGH IN/SECURITY - FAB132102C,Complete,TQR LAB - 3F -FIZ-FAB132102,,,,,,,,,,2025-06-06 08:00,2025-06-06 17:00,2025-01-20 08:00,2025-01-20 17:00,2025-11-20 17:00,2025-11-20 17:00,2025-11-25 08:00,2025-11-25 08:00,0,8,100
FAB132102C-03,INSTALL DOOR FRAMES - FAB132102C,Complete,TQR LAB - 3F -FIZ-FAB132102,,,,,,,,,,2025-06-06 08:00,2025-06-06 17:00,2025-01-20 08:00,2025-01-20 17:00,2025-11-20 17:00,2025-11-20 17:00,2025-11-25 08:00,2025-11-25 08:00,0,8,100
FAB132102C-04,INSTALL DOOR & HARDWARE - FAB132102C,Not Started,TQR LAB - 3F -FIZ-FAB132102,,,,,,,,,,2025-11-21 08:00,2025-11-27 17:00,,,2025-11-21 08:00,2025-11-27 17:00,2025-11-25 08:00,2025-12-01 17:00,40,40,0
FAB132102A-03,INSTALL DOOR FRAMES - FAB132102A,Not Started,TQR LAB - 3F -FIZ-FAB132102,,,,,,,,,,2025-11-28 08:00,2025-11-28 17:00,,,2025-11-28 08:00,2025-11-28 17:00,2025-11-24 08:00,2025-11-24 17:00,8,8,0
FAB132102A-04,INSTALL DOOR & HARDWARE - FAB132102A,Not Started,TQR LAB - 3F -FIZ-FAB132102,,,,,,,,,,2025-12-01 08:00,2025-12-05 17:00,,,2025-12-01 08:00,2025-12-05 17:00,2025-11-25 08:00,2025-12-01 17:00,40,40,0
FAB132102A-05,PAINT & PROTECT DOORS & FRAMES -  FAB132102A,Not Started,TQR LAB - 3F -FIZ-FAB132102,,,,,,,,,,2026-02-16 08:00,2026-02-19 17:00,,,2026-02-16 08:00,2026-02-19 17:00,2025-12-02 08:00,2025-12-05 17:00,32,32,0
ZX-19985,Complete Drywall & Inspect -TQR LAB Airlock - 3F-FAB132103,Complete,TQR LAB AIR LOCK - 3F -FIZ-FAB132103,,,,,,,,,,2025-09-05 08:00,2025-09-08 17:00,2025-09-05 08:00,2025-09-08 17:00,2025-11-20 17:00,2025-11-20 17:00,2025-12-05 17:00,2025-12-05 17:00,0,16,100
ZX-20005,Complete Control Joint & Inspect-TQR LAB Airlock - 3F-FAB132103,Complete,TQR LAB AIR LOCK - 3F -FIZ-FAB132103,,,,,,,,,,2025-10-27 08:00,2025-10-28 17:00,2025-10-27 08:00,2025-10-28 08:00,2025-11-20 17:00,2025-11-20 17:00,2025-12-05 17:00,2025-12-05 17:00,0,16,100
FAB132101D-01,IMPACT - INSTALL/REWORK DRYWALL FRAMING AROUND DOORS - FAB132101D,Complete,TQR LAB AIR LOCK - 3F -FIZ-FAB132103,,,,,,,,,,2025-05-29 08:00,2025-06-06 17:00,2025-06-09 08:00,2025-06-17 17:00,2025-11-20 17:00,2025-11-20 17:00,2025-11-25 08:00,2025-11-25 08:00,0,56,100
FAB132101D-02,SECAI ROUGH IN/SECURITY - FAB132101D,Complete,TQR LAB AIR LOCK - 3F -FIZ-FAB132103,,,,,,,,,,2025-06-17 08:00,2025-06-17 17:00,2025-06-17 08:00,2025-06-17 17:00,2025-11-20 17:00,2025-11-20 17:00,2025-11-25 08:00,2025-11-25 08:00,0,8,100
FAB132101D-03,INSTALL DOOR FRAMES - FAB132101D,Complete,TQR LAB AIR LOCK - 3F -FIZ-FAB132103,,,,,,,,,,2025-06-17 08:00,2025-06-17 17:00,2025-06-17 08:00,2025-06-17 17:00,2025-11-20 17:00,2025-11-20 17:00,2025-11-25 08:00,2025-11-25 08:00,0,8,100
FAB132101D-04,INSTALL DOOR & HARDWARE - FAB132101D,Not Started,TQR LAB AIR LOCK - 3F -FIZ-FAB132103,,,,,,,,,,2025-11-21 08:00,2025-11-27 17:00,,,2025-11-21 08:00,2025-11-27 17:00,2025-11-25 08:00,2025-12-01 17:00,40,40,0
FAB132101D-05,PAINT & PROTECT DOORS & FRAMES -  FAB132101D,Not Started,TQR LAB AIR LOCK - 3F -FIZ-FAB132103,,,,,,,,,,2026-02-16 08:00,2026-02-19 17:00,,,2026-02-16 08:00,2026-02-19 17:00,2025-12-02 08:00,2025-12-05 17:00,32,32,0
FAB132103A-01,IMPACT - INSTALL/REWORK DRYWALL FRAMING AROUND DOORS - FAB132103A,Complete,TQR LAB AIR LOCK - 3F -FIZ-FAB132103,,,,,,,,,,2025-09-03 08:00,2025-09-04 17:00,2025-09-03 08:00,2025-09-04 17:00,2025-11-20 17:00,2025-11-20 17:00,2025-11-25 08:00,2025-11-25 08:00,0,16,100
FAB132103A-02,SECAI ROUGH IN/SECURITY - FAB132103A,Complete,TQR LAB AIR LOCK - 3F -FIZ-FAB132103,,,,,,,,,,2025-09-05 08:00,2025-09-05 17:00,2025-09-05 08:00,2025-09-05 17:00,2025-11-20 17:00,2025-11-20 17:00,2025-11-25 08:00,2025-11-25 08:00,0,8,100
FAB132103A-03,INSTALL DOOR FRAMES - FAB132103A,Complete,TQR LAB AIR LOCK - 3F -FIZ-FAB132103,,,,,,,,,,2025-09-05 08:00,2025-09-05 17:00,2025-09-05 08:00,2025-09-05 17:00,2025-11-20 17:00,2025-11-20 17:00,2025-11-25 08:00,2025-11-25 08:00,0,8,100
FAB132103A-04,INSTALL DOOR & HARDWARE - FAB132103A,Not Started,TQR LAB AIR LOCK - 3F -FIZ-FAB132103,,,,,,,,,,2025-11-21 08:00,2025-11-27 17:00,,,2025-11-21 08:00,2025-11-27 17:00,2025-11-25 08:00,2025-12-01 17:00,40,40,0
FAB132103A-05,PAINT & PROTECT DOORS & FRAMES - FAB132103A,Not Started,TQR LAB AIR LOCK - 3F -FIZ-FAB132103,,,,,,,,,,2026-02-16 08:00,2026-02-19 17:00,,,2026-02-16 08:00,2026-02-19 17:00,2025-12-02 08:00,2025-12-05 17:00,32,32,0
ZX-20015,"SECAI TURNOVER FOR ACELERATION - Drywall, CJ & FC + Inspect - Stair #50 SUW- 1F- FAB1-ST50 BAKER/DESCOPE",Complete,Stair 50 - 1F -SUW-FAB1-ST50,,,,,,,,,,2025-06-10 08:00,2025-06-23 17:00,2025-06-10 08:00,2025-06-10 16:00,2025-11-20 17:00,2025-11-20 17:00,2025-11-25 08:00,2025-11-25 08:00,0,80,100
FAB1-ST50A-04,INSTALL DOOR & HARDWARE - FAB1-ST50A,Active,Stair 50 - 1F -SUW-FAB1-ST50,,,,,,,,,,2025-10-17 08:00,2025-10-23 17:00,2025-10-17 08:00,,2025-11-21 08:00,2025-11-27 17:00,2025-11-25 08:00,2025-12-01 17:00,40,40,0
FAB1-ST50A-05,PAINT & PROTECT DOORS & FRAMES - FAB1-ST50A,Not Started,Stair 50 - 1F -SUW-FAB1-ST50,,,,,,,,,,2026-02-16 08:00,2026-02-19 17:00,,,2026-02-16 08:00,2026-02-19 17:00,2025-12-02 08:00,2025-12-05 17:00,32,32,0
FAB1-ST50A-03,INSTALL DOOR FRAMES - FAB1-ST50A,Complete,Stair 50 - 1F -SUW-FAB1-ST50,,,,,,,,,,2025-09-25 08:00,2025-09-25 17:00,2025-09-25 08:00,2025-09-25 17:00,2025-11-20 17:00,2025-11-20 17:00,2025-11-25 08:00,2025-11-25 08:00,0,8,100
ZX-20055,"SECAI TURNOVER FOR ACELERATION - Drywall, CJ & FC + Inspect - Stair #50 SUW- 2F- FAB1-ST50 BAKER/DESCOPE",Complete,Stair 50 - 2F-SUW-FAB1-ST50,,,,,,,,,,2025-07-17 08:00,2025-07-30 17:00,2025-06-06 08:00,2025-06-06 16:00,2025-11-20 17:00,2025-11-20 17:00,2025-11-25 08:00,2025-11-25 08:00,0,80,100
FAB1-ST50B-03,INSTALL DOOR FRAMES - FAB1-ST50B,Complete,Stair 50 - 2F-SUW-FAB1-ST50,,,,,,,,,,2025-10-03 08:00,2025-10-03 17:00,2025-10-03 08:00,2025-10-03 17:00,2025-11-20 17:00,2025-11-20 17:00,2025-11-25 08:00,2025-11-25 08:00,0,8,100
FAB1-ST50B-05,PAINT & PROTECT DOORS & FRAMES - FAB1-ST50B,Not Started,Stair 50 - 2F-SUW-FAB1-ST50,,,,,,,,,,2026-02-16 08:00,2026-02-19 17:00,,,2026-02-16 08:00,2026-02-19 17:00,2025-12-02 08:00,2025-12-05 17:00,32,32,0
ZX-20085,"SECAI TURNOVER FOR ACELERATION - Drywall, CJ & FC + Inspect - Stair #50 SUW - 3F FAB1-ST50 BAKER/DESCOPE",Complete,Stair 50 - 3F-SUW-FAB1-ST50,,,,,,,,,,2025-06-10 08:00,2025-06-23 17:00,2025-06-10 08:00,2025-06-10 16:00,2025-11-20 17:00,2025-11-20 17:00,2025-11-25 08:00,2025-11-25 08:00,0,80,100
FAB1-ST50F-04,INSTALL DOOR & HARDWARE - FAB1-ST50F,Not Started,Stair 50 - 3F-SUW-FAB1-ST50,,,,,,,,,,2025-11-21 08:00,2025-11-27 17:00,,,2025-11-21 08:00,2025-11-27 17:00,2025-11-25 08:00,2025-12-01 17:00,40,40,0
FAB1-ST50F-05,PAINT & PROTECT DOORS & FRAMES - FAB1-ST50F,Not Started,Stair 50 - 3F-SUW-FAB1-ST50,,,,,,,,,,2026-02-16 08:00,2026-02-19 17:00,,,2026-02-16 08:00,2026-02-19 17:00,2025-12-02 08:00,2025-12-05 17:00,32,32,0
FAB1-ST19B-03,INSTALL DOOR FRAME BY SECAI- FAB1-ST19B HANDED OVER ON 08/29,Complete,Stair #19 - 2F -SUE-FAB1-ST19,,,,,,,,,,2025-08-29 08:00,2025-08-29 17:00,2025-08-29 08:00,2025-09-16 17:00,2025-11-20 17:00,2025-11-20 17:00,2025-11-25 08:00,2025-11-25 08:00,0,8,100
FAB1-ST50B-04,INSTALL DOOR & HARDWARE - FAB1-ST50B,Active,Stair 50 - 2F-SUW-FAB1-ST50,,,,,,,,,,2025-10-16 08:00,2025-10-22 17:00,2025-10-16 08:00,,2025-11-21 08:00,2025-11-27 17:00,2025-11-25 08:00,2025-12-01 17:00,40,40,0
FAB1-ST50C-03,INSTALL DOOR FRAMES - FAB1-ST50C,Complete,Stair 50 - 2F-SUW-FAB1-ST50,,,,,,,,,,2025-03-28 08:00,2025-03-28 17:00,2025-03-28 08:00,2025-03-28 17:00,2025-11-20 17:00,2025-11-20 17:00,2025-11-25 08:00,2025-11-25 08:00,0,8,100
FAB1-ST50C-05,PAINT & PROTECT DOORS & FRAMES - FAB1-ST50C,Not Started,Stair 50 - 2F-SUW-FAB1-ST50,,,,,,,,,,2026-02-16 08:00,2026-02-19 17:00,,,2026-02-16 08:00,2026-02-19 17:00,2025-12-02 08:00,2025-12-05 17:00,32,32,0
FAB1-ST50C-04,INSTALL DOOR & HARDWARE - FAB1-ST50C,Active,Stair 50 - 2F-SUW-FAB1-ST50,,,,,,,,,,2025-11-14 08:00,2025-11-20 17:00,2025-11-14 08:00,,2025-11-21 08:00,2025-11-27 17:00,2025-11-25 08:00,2025-12-01 17:00,40,40,0
FAB110115A-00,IMPACT - DOOR FRAME PROCUREMENT- RE-ORDERED - FAB110115A,Complete,Elevator Mech Rm 1 - 1F -SUW-FAB110115,,,,,,,,,,2025-08-18 08:00,2025-09-25 17:00,2025-08-18 08:00,2025-10-10 17:00,2025-11-20 17:00,2025-11-20 17:00,2025-11-25 10:00,2025-11-25 10:00,0,232,100
FAB116513E-25,DOOR FRAME HANDED OVER TO SECAI ON 07/17- FAB116513E,Complete,Air Lock 18 - 1F -SUE-FAB116513,,,,,,,,,,2025-07-17 08:00,2025-07-17 17:00,2025-07-17 08:00,2025-07-17 17:00,2025-11-20 17:00,2025-11-20 17:00,2025-11-25 08:00,2025-11-25 08:00,0,8,100
FAB116513G-25,DOOR FRAME HANDED OVER TO SECAI ON 07/17 - FAB116513G,Complete,Air Lock 18 - 1F -SUE-FAB116513,,,,,,,,,,2025-07-17 08:00,2025-07-17 17:00,2025-07-17 08:00,2025-07-17 17:00,2025-11-20 17:00,2025-11-20 17:00,2025-11-25 08:00,2025-11-25 08:00,0,8,100
A2030.TCO1,LEVEL 1 SUW COMPLETION - 10/7 Target - TCO 1,Not Started,Remobilization and Out-of-Sequence Completion List - DD07-10-2025,,,,,,,,,,2026-02-20 17:00,2026-02-20 17:00,,,2026-02-20 17:00,2026-02-20 17:00,2025-12-05 17:00,2025-12-05 17:00,0,0,0
A2040.TCO2,"LEVEL 1 FAB, FIZ WEST & CLEANROOMS COMPLETION - 10/14 Target - TCO 2",Not Started,Remobilization and Out-of-Sequence Completion List - DD07-10-2025,,,,,,,,,,2026-02-19 17:00,2026-02-19 17:00,,,2026-02-19 17:00,2026-02-19 17:00,2025-12-05 17:00,2025-12-05 17:00,0,0,0
A2050,LEVEL 1 SUE & FIZ EAST COMPLETION - 12/05 Target,Not Started,Remobilization and Out-of-Sequence Completion List - DD07-10-2025,,,,,,,,,,2026-02-20 17:00,2026-02-20 17:00,,,2026-02-20 17:00,2026-02-20 17:00,2025-12-05 17:00,2025-12-05 17:00,0,0,0
A2060,LEVEL 2 COMPLETION - 11/22 Target - TCO 3,Not Started,Remobilization and Out-of-Sequence Completion List - DD07-10-2025,,,,,,,,,,2026-02-20 17:00,2026-02-20 17:00,,,2026-02-20 17:00,2026-02-20 17:00,2025-12-05 17:00,2025-12-05 17:00,0,0,0
A2070,LEVEL 2 DS EAST COMPLETION - 12/05 Target - TCO 4,Not Started,Remobilization and Out-of-Sequence Completion List - DD07-10-2025,,,,,,,,,,2026-02-19 15:00,2026-02-19 15:00,,,2026-02-19 15:00,2026-02-19 15:00,2025-12-05 17:00,2025-12-05 17:00,0,0,0
A2080,LEVEL 3 COMPLETION - 11/22 Target - TCO 3,Not Started,Remobilization and Out-of-Sequence Completion List - DD07-10-2025,,,,,,,,,,2026-02-20 17:00,2026-02-20 17:00,,,2026-02-20 17:00,2026-02-20 17:00,2025-12-05 17:00,2025-12-05 17:00,0,0,0
A2090,LEVEL 3 DS EAST COMPLETION - 12/05 Target- TCO 4,Not Started,Remobilization and Out-of-Sequence Completion List - DD07-10-2025,,,,,,,,,,2026-02-19 15:00,2026-02-19 15:00,,,2026-02-19 15:00,2026-02-19 15:00,2025-12-05 17:00,2025-12-05 17:00,0,0,0
A2100,LEVEL 4 DS WEST COMPLETION - 11/22 Target - TCO 3,Not Started,Remobilization and Out-of-Sequence Completion List - DD07-10-2025,,,,,,,,,,2026-02-20 17:00,2026-02-20 17:00,,,2026-02-20 17:00,2026-02-20 17:00,2025-12-05 17:00,2025-12-05 17:00,0,0,0
A2110,LEVEL 4 DS EAST COMPLETION - 12/05 Target- TCO 4,Not Started,Remobilization and Out-of-Sequence Completion List - DD07-10-2025,,,,,,,,,,2026-03-03 15:00,2026-03-03 15:00,,,2026-03-03 15:00,2026-03-03 15:00,2025-12-05 17:00,2025-12-05 17:00,0,0,0
A2031.TCO3,LEVEL 1 SUW DS COMPLETION - 11/22 Target - TCO 3,Not Started,Remobilization and Out-of-Sequence Completion List - DD07-10-2025,,,,,,,,,,2026-02-19 17:00,2026-02-19 17:00,,,2026-02-19 17:00,2026-02-19 17:00,2025-12-05 17:00,2025-12-05 17:00,0,0,0
A2130,LEVEL 1 SUE DS COMPLETION - 12/05 Target- TCO 4,Not Started,Remobilization and Out-of-Sequence Completion List - DD07-10-2025,,,,,,,,,,2026-02-25 15:00,2026-02-25 15:00,,,2026-02-25 15:00,2026-02-25 15:00,2025-12-05 17:00,2025-12-05 17:00,0,0,0
A2140,LEVEL 4 PENTHOUSES COMPLETION - 12/05 Target- TCO 4,Not Started,Remobilization and Out-of-Sequence Completion List - DD07-10-2025,,,,,,,,,,2026-02-19 17:00,2026-02-19 17:00,,,2026-02-19 17:00,2026-02-19 17:00,2025-12-05 17:00,2025-12-05 17:00,0,0,0
ZX-20135,Complete Drywall & Inspect - Thermohygrostat Rm - 2F-FAB122104,Complete,Thermohygrostat Rm - 2F -FIZ-FAB122104,,,,,,,,,,2025-07-07 08:00,2025-07-18 17:00,2025-07-07 08:00,2025-07-17 17:00,2025-11-20 17:00,2025-11-20 17:00,2025-11-25 10:00,2025-11-25 10:00,0,80,100
ZX-20145,Complete Fire Caulk & Inspect - Thermohygrostat Rm - 2F-FAB122104,Complete,Thermohygrostat Rm - 2F -FIZ-FAB122104,,,,,,,,,,2025-08-08 08:00,2025-08-11 17:00,2025-07-16 08:00,2025-07-17 17:00,2025-11-20 17:00,2025-11-20 17:00,2025-12-05 17:00,2025-12-05 17:00,0,16,100
ZX-20155,Complete Control Joint & Inspect - Thermohygrostat Rm - 2F-FAB122104,Complete,Thermohygrostat Rm - 2F -FIZ-FAB122104,,,,,,,,,,2025-07-16 08:00,2025-07-17 17:00,2025-07-16 08:00,2025-07-17 17:00,2025-11-20 17:00,2025-11-20 17:00,2025-11-25 10:00,2025-11-25 10:00,0,16,100
ZX-20165,IMPACT - STOP WORK ELEVATOR FRONT (for Access panel Install) - Elevator #19 - 3F-FAB1-EL19,Complete,Elevator 19 - 3F -SUE-FAB1-EL19,,,,,,,,,,2025-07-22 10:00,2025-08-14 15:00,2025-08-01 10:00,2025-09-04 08:00,2025-11-20 17:00,2025-11-20 17:00,2025-12-05 17:00,2025-12-05 17:00,0,140,100
ZX-20175,"ELEVATOR FRONT Complete Drywall, Fire Caulk and Inspect - Elevator #19 - 3F-FAB1-EL19",Complete,Elevator 19 - 3F -SUE-FAB1-EL19,,,,,,,,,,2025-09-05 08:00,2025-09-05 08:00,2025-09-05 08:00,2025-09-05 08:00,2025-11-20 17:00,2025-11-20 17:00,2025-12-05 17:00,2025-12-05 17:00,0,0,100
ZX-20185,IMPACT - SECAI SCAFFOLD MODIFICATION - Vestibule #20 - 3F-FAB136310,Active,Vestibule 20 - 3F -SUE-FAB136310,,,,,,,,,,2025-06-06 08:00,2025-06-18 17:00,2025-07-28 08:00,,2025-11-21 08:00,2025-12-01 17:00,2025-11-27 08:00,2025-12-05 17:00,56,72,0
ZX-20195,IMPACT - SECAI SCAFFOLD MODIFICATION - Vestibule #3 - 3F-FAB130303,Complete,Vestibule 3 - 3F -SUW-FAB130303,,,,,,,,,,2025-07-18 08:00,2025-07-29 17:00,2025-07-28 08:00,2025-09-04 08:00,2025-11-20 17:00,2025-11-20 17:00,2025-12-05 17:00,2025-12-05 17:00,0,64,100
ZX-20205,IMPACT - SECAI MEP OUT OF SEQUENCE - Maint. Rm-1F-SUW-FAB110120,Complete,Maint. Rm - 1F -SUW-FAB110120,,,,,,,,,,2025-08-01 08:00,2025-08-11 17:00,2025-08-04 08:00,2025-08-11 08:00,2025-11-20 17:00,2025-11-20 17:00,2025-12-02 10:00,2025-12-02 10:00,0,56,100
ZX-20215,IMPACT - CEILING RFI - (MEP elevation Design change) - Pedestrian Walkway - 2F-FAB120111,Complete,Pedestrian Walkway - 2F -FIZ-FAB120111,,,,,,,,,,2025-08-01 08:00,2025-08-14 17:00,2025-08-01 08:00,2025-09-25 17:00,2025-11-20 17:00,2025-11-20 17:00,2025-12-05 17:00,2025-12-05 17:00,0,80,100
ZX-20235,SECAI TOOK OVER ACCELERATION - Remaining CEILING Drywall & Inspect - Pedestrian Walkway - 2F-FAB122105,Complete,Pedestrian Walkway - 2F -FIZ-FAB122105,,,,,,,,,,2025-11-06 08:00,2025-11-12 17:00,2025-11-06 08:00,2025-11-06 17:00,2025-11-20 17:00,2025-11-20 17:00,2025-12-05 17:00,2025-12-05 17:00,0,40,100
ZX-20225,IMPACT - CEILING RFI - (MEP elevation Design change) - Pedestrian Walkway - 2F-FAB122105,Complete,Pedestrian Walkway - 2F -FIZ-FAB122105,,,,,,,,,,2025-08-01 08:00,2025-08-14 17:00,2025-08-01 08:00,2025-09-25 08:00,2025-11-20 17:00,2025-11-20 17:00,2025-12-05 17:00,2025-12-05 17:00,0,80,100
ZX-20162,IMPACT - SECAI MEP SCAFFOLD IN THE AREA - Duct Shaft Vestibule - 1F-SUW-FAB110310,Complete,Duct Shaft Vestibule - 1F -SUW-FAB110310,,,,,,,,,,2025-07-28 08:00,2025-08-15 17:00,2025-07-28 08:00,2025-08-15 17:00,2025-11-20 17:00,2025-11-20 17:00,2025-12-05 17:00,2025-12-05 17:00,0,120,100
CN.SEB1.10910,IMPACT - KOVACH SUBMITTAL - BERRIDGE PANEL- WAITING ON SECAI DIRECTION - GL 19-20 - A LINE [SUP EXTERIOR WALL],Complete,SEB - 1,East Support Building,SUEN-1 - 19-22,EXTERIOR SKIN,,CONSTRUCTION,KOVACH,INSULATED METAL PANELS,JAMES LIVELY,,2025-09-05 07:00,2025-10-02 17:00,2025-06-20 07:00,2025-10-09 07:00,2025-11-20 17:00,2025-11-20 17:00,2025-11-13 07:00,2025-11-13 07:00,0,200,100
CN.SEB1.10920,IMPACT - KOVACH - BERRIDGE PANEL EDGE DETAIL - FABRICATION LEAD TIME - GL 19-20 - A LINE [SUP EXTERIOR WALL],Complete,SEB - 1,East Support Building,SUEN-1 - 19-22,EXTERIOR SKIN,,CONSTRUCTION,KOVACH,INSULATED METAL PANELS,JAMES LIVELY,,2025-10-09 07:00,2025-11-12 17:00,2025-10-09 07:00,2025-11-10 17:00,2025-11-20 17:00,2025-11-20 17:00,2025-11-13 07:00,2025-11-13 07:00,0,250,100
ZX-20172,IMPACT - SECAI MEP SCAFFOLD IN THE AREA - Duct Shaft - 1F-SUW-FAB110112,Active,Duct Shaft - 1F -SUW-FAB110112,,,,,,,,,,2025-07-28 08:00,2025-08-15 17:00,2025-07-28 08:00,,2025-11-21 08:00,2025-11-27 17:00,2025-12-01 08:00,2025-12-05 17:00,40,120,100
ZX-20192,IMPACT - SECAI MEP SCAFFOLD IN THE AREA - Duct Shaft Vestibule - 1F-SUW-FAB110108,Complete,Duct Shaft Vestibule - 1F -SUW-FAB110108,,,,,,,,,,2025-07-28 08:00,2025-08-15 17:00,2025-07-28 08:00,2025-08-15 17:00,2025-11-20 17:00,2025-11-20 17:00,2025-12-05 17:00,2025-12-05 17:00,0,120,100
ZX-20202,IMPACT - SECAI MEP SCAFFOLD IN THE AREA - Duct Shaft - 1F-SUW-FAB110516,Active,Duct Shaft - 1F -SUW-FAB110516,,,,,,,,,,2025-07-28 08:00,2025-08-15 17:00,2025-07-28 08:00,,2025-11-21 08:00,2025-11-27 17:00,2025-12-01 08:00,2025-12-05 17:00,40,120,0
CN.SWA4.7440,IMPACT RFI (HP GCS to FAB) - AXIOS / SECAI INSTALL FRAMING - GL 31-33 - N LINE - ABOVE OVERBRIDGE,Complete,CONSTRUCTION,,SUWN-5 - 30-33,EXTERIOR SKIN,,CONSTRUCTION,KOVACH,INSULATED METAL PANELS,,,2025-08-01 07:00,2025-08-07 17:00,2025-07-28 07:00,2025-08-01 17:00,2025-11-20 17:00,2025-11-20 17:00,2025-11-13 07:00,2025-11-13 07:00,0,50,100
CN.SWA4.7450,IMPACT RFI (HP GCS to FAB) - INSTALL IMP - GL 31-33 - N LINE - ABOVE OVERBRIDGE,Complete,CONSTRUCTION,,SUWN-5 - 30-33,EXTERIOR SKIN,,CONSTRUCTION,KOVACH,INSULATED METAL PANELS,,,2025-09-26 07:00,2025-09-29 17:00,2025-09-02 07:00,2025-09-04 17:00,2025-11-20 17:00,2025-11-20 17:00,2025-11-13 07:00,2025-11-13 07:00,0,20,100
CN.SWB5.11080,IMPACT - SECAI MEP ELECTRICAL NW - BREEZEWAY - (Postponed to 9/15 BY secai),Complete,SWB - 5,East Support Building,NORTH WEST PENTHOUSE,EXTERIOR SKIN,,CONSTRUCTION,KOVACH,INSULATED METAL PANELS,SEAN MONK,,2025-09-04 07:00,2025-09-24 17:00,2025-08-15 07:00,2025-09-17 17:00,2025-11-20 17:00,2025-11-20 17:00,2025-11-17 07:00,2025-11-17 07:00,0,150,100
ZX-20222,IMPACT - SECAI MEP SCAFFOLD IN THE AREA - Duct Shaft Vestibule - 1F-SUW-FAB110514,Active,Duct Shaft Vestibule - 1F -SUW-FAB110514,,,,,,,,,,2025-07-28 08:00,2025-08-15 17:00,2025-07-28 08:00,,2025-11-21 08:00,2025-11-27 17:00,2025-12-01 08:00,2025-12-05 17:00,40,120,0
ZX-20232,IMPACT - SECAI MEP SCAFFOLD IN THE AREA - Duct Shaft Vestibule - 1F-SUW-FAB110502,Complete,Duct Shaft Vestibule - 1F -SUW-FAB110502,,,,,,,,,,2025-07-28 08:00,2025-08-15 17:00,2025-07-28 08:00,2025-10-03 17:00,2025-11-20 17:00,2025-11-20 17:00,2025-12-05 17:00,2025-12-05 17:00,0,120,100
ZX-20242,IMPACT - SECAI MEP SCAFFOLD IN THE AREA - Duct Shaft Vestibule - 1F-SUW-FAB110123,Complete,Duct Shaft Vestibule - 1F -SUW-FAB110123,,,,,,,,,,2025-07-28 08:00,2025-08-15 17:00,2025-07-28 08:00,2025-08-15 17:00,2025-11-20 17:00,2025-11-20 17:00,2025-12-05 17:00,2025-12-05 17:00,0,120,100
CN.SEB1.10930,IMPACT - KOVACH SUBMITTAL - BERRIDGE PANEL- SUBSTITUTION REQUEST - GL 19-20 - A LINE [SUP EXTERIOR WALL],Complete,SEB - 1,East Support Building,SUEN-1 - 19-22,EXTERIOR SKIN,,CONSTRUCTION,KOVACH,INSULATED METAL PANELS,JAMES LIVELY,,2025-09-05 07:00,2025-10-02 17:00,2025-07-17 07:00,2025-10-09 17:00,2025-11-20 17:00,2025-11-20 17:00,2025-11-13 07:00,2025-11-13 07:00,0,200,100
CN.BB5.ST.1420,KOVACH NCR INSTALL IMP / CMP PANEL (waited on Adhesion test 3rd party 9/11) -GL 33 - GL 33 - D-F,Active,Area B-5,North Areas (Team B -Gridlines 17-33),GRIDLINE 33,L4 - SUP Roof - FAB Roof,GL33 EXTERIOR AREA (FAB EAST) - D-G,CONSTRUCTION,WATER PROOFING GL33,DRYWALL,JAMES LEE,SOMD / Roofing / Waterproofing,2025-08-01 07:00,2025-08-11 17:00,2025-08-04 07:00,,2025-11-21 07:00,2025-12-08 17:00,2025-11-17 07:00,2025-12-02 17:00,100,70,0
CN.SWB5.11090,BRAZOS - WATERPROOFING - GL 33 - L1- E-K - h.5 to K REMAINGIN,Complete,Area B-5,West Support Building,GRIDLINE 33,,GL33 EXTERIOR AREA (FAB WEST) - G-K,CONSTRUCTION,KOVACH,DRYWALL,JAMES LIVELY,,2025-08-01 07:00,2025-08-07 17:00,2025-07-28 07:00,2025-09-23 17:00,2025-11-20 17:00,2025-11-20 17:00,2025-12-04 07:00,2025-12-04 07:00,0,50,100
ZX-20255,Complete Fire Caulk & Inspect - Gas Purifier Rm-1F-SUW-FAB110204,Complete,Gas Purifier Rm - 1F -SUW-FAB110204,,,,,,,,,,2025-08-13 08:00,2025-08-15 17:00,2025-08-13 08:00,2025-08-15 17:00,2025-11-20 17:00,2025-11-20 17:00,2025-12-05 17:00,2025-12-05 17:00,0,24,100
CN.BB51.ST.3532,BERG - FIRECAULK & INSPECT - GL 33 - LVL 1 L-N,Complete,Area B-5,North Areas (Team B -Gridlines 17-33),GRIDLINE 33,L2 - SubFab Level,GL33 EXTERIOR AREA (SUW) - L-N,CONSTRUCTION,WATER PROOFING GL33,DRYWALL,AMBER CARO,,2025-09-12 07:00,2025-09-15 17:00,2025-08-29 07:00,2025-09-03 12:00,2025-11-20 17:00,2025-11-20 17:00,2025-11-24 07:00,2025-11-24 07:00,0,20,100
CN.SWB5.11100,GDA WATERPROOFING / BUILDING WRAP - GL 33 - L1 - L-N(EXCLUDING BUCK HOIST LEAVEOUT ),Complete,Area B-5,West Support Building,GRIDLINE 33,L1 - Fndn Slab,GL33 EXTERIOR AREA (SUW) - L-N,CONSTRUCTION,WATER PROOFING GL33,DRYWALL,JAMES LIVELY,,2025-10-20 07:00,2025-10-20 07:00,2025-10-13 07:00,2025-10-13 07:00,2025-11-20 17:00,2025-11-20 17:00,2025-11-24 07:00,2025-11-24 07:00,0,0,100
ZX-20265,IMPACT - SECAI INSTALL RAISED ACCESS FLOOR -Lab Vestibule - 1F-SUW-FAB112101,Complete,Lab Vestibule- 1F -FIZ-FAB112101,,,,,,,,,,2025-10-06 08:00,2025-10-10 17:00,2025-10-06 08:00,2025-10-10 17:00,2025-11-20 17:00,2025-11-20 17:00,2025-12-05 17:00,2025-12-05 17:00,0,40,100
CN.SWA5.LD.3280,INSTALL COUNTERTOPS - BATHROOM - GL 3 - M-N - L1,Complete,SWA - 5,East Support Building,FIZ 2 / SUWS 5  (GL6-1) - GL J - N - DATA CENTER 1,L1 - Fndn Slab,BATHROOM,CONSTRUCTION,H2I,TBD Architectural Finishes,AMBER CARO,INTERIORS,2025-10-06 07:00,2025-10-10 17:00,2025-10-06 07:00,2025-10-10 17:00,2025-11-20 17:00,2025-11-20 17:00,2025-11-20 07:00,2025-11-20 07:00,0,50,100
FAB1-ST50F-03,INSTALL DOOR FRAMES - FAB1-ST50F,Complete,Stair 50 - 3F-SUW-FAB1-ST50,,,,,,,,,,2025-10-28 08:00,2025-10-28 17:00,2025-10-28 08:00,2025-10-28 17:00,2025-11-20 17:00,2025-11-20 17:00,2025-11-25 08:00,2025-11-25 08:00,0,8,100
FAB122104B-03,INSTALL DOOR FRAMES - FAB122104B,Complete,Thermohygrostat Rm - 2F -FIZ-FAB122104,,,,,,,,,,2025-11-13 08:00,2025-11-13 17:00,2025-11-13 08:00,2025-11-13 17:00,2025-11-20 17:00,2025-11-20 17:00,2025-11-25 10:00,2025-11-25 10:00,0,8,100
FAB122104B-04,INSTALL DOOR & HARDWARE - FAB122104B,Not Started,Thermohygrostat Rm - 2F -FIZ-FAB122104,,,,,,,,,,2025-11-21 08:00,2025-11-27 17:00,,,2025-11-21 08:00,2025-11-27 17:00,2025-11-25 10:00,2025-12-02 10:00,40,40,0
FAB122104B-05,PAINT & PROTECT DOORS & FRAMES -  FAB122104B,Not Started,Thermohygrostat Rm - 2F -FIZ-FAB122104,,,,,,,,,,2026-02-16 08:00,2026-02-19 15:00,,,2026-02-16 08:00,2026-02-19 15:00,2025-12-02 10:00,2025-12-05 17:00,30,30,0
FAB122103B-03,INSTALL DOOR FRAMES - FAB122103B,Not Started,Thermohygrostat Rm - 2F -FIZ-FAB122103,,,,,,,,,,2025-11-21 08:00,2025-11-21 17:00,,,2025-11-21 08:00,2025-11-21 17:00,2025-11-24 10:00,2025-11-25 10:00,8,8,0
FAB122103B-04,INSTALL DOOR & HARDWARE - FAB122103B,Not Started,Thermohygrostat Rm - 2F -FIZ-FAB122103,,,,,,,,,,2025-11-24 08:00,2025-11-28 17:00,,,2025-11-24 08:00,2025-11-28 17:00,2025-11-25 10:00,2025-12-02 10:00,40,40,0
FAB122103B-05,PAINT & PROTECT DOORS & FRAMES -  FAB122103B,Not Started,Thermohygrostat Rm - 2F -FIZ-FAB122103,,,,,,,,,,2026-02-16 08:00,2026-02-19 15:00,,,2026-02-16 08:00,2026-02-19 15:00,2025-12-02 10:00,2025-12-05 17:00,30,30,0
ZX-20275,IMPACT - SECAI Concrete Design change - Maint. Rm-1F-SUW-FAB110120 - RFI 1832,Complete,Maint Rm 2 - 1F -SUW-FAB110201,,,,,,,,,,2025-08-01 08:00,2025-08-11 17:00,2025-08-04 08:00,2025-09-25 08:00,2025-11-20 17:00,2025-11-20 17:00,2025-11-25 10:00,2025-11-25 10:00,0,56,100
ZX-20285,Complete Drywall & Inspect - Duct Shaft Vestibule - 1F-SUE-FAB116412,Complete,Duct Shaft Vestibule - 1F -SUE-FAB116412,,,,,,,,,,2025-09-23 08:00,2025-09-29 17:00,2025-09-23 08:00,2025-09-29 17:00,2025-11-20 17:00,2025-11-20 17:00,2025-12-05 17:00,2025-12-05 17:00,0,40,100
ZX-20295,Complete Fire Caulk & Inspect - Duct Shaft Vestibule - 1F-SUE-FAB116412,Complete,Duct Shaft Vestibule - 1F -SUE-FAB116412,,,,,,,,,,2025-09-26 08:00,2025-09-29 17:00,2025-09-26 08:00,2025-09-29 17:00,2025-11-20 17:00,2025-11-20 17:00,2025-12-05 17:00,2025-12-05 17:00,0,16,100
ZX-20305,Complete Control Joint & Inspect - Duct Shaft Vestibule - 1F-SUE-FAB116412,Complete,Duct Shaft Vestibule - 1F -SUE-FAB116412,,,,,,,,,,2025-09-26 08:00,2025-09-29 17:00,2025-09-26 08:00,2025-09-29 17:00,2025-11-20 17:00,2025-11-20 17:00,2025-12-05 17:00,2025-12-05 17:00,0,16,100
FAB116412B-01,IMPACT - INSTALL/REWORK DRYWALL FRAMING AROUND DOORS - FAB116412B,Complete,Duct Shaft Vestibule - 1F -SUE-FAB116412,,,,,,,,,,2025-03-10 08:00,2025-03-18 17:00,2025-03-10 08:00,2025-03-18 17:00,2025-11-20 17:00,2025-11-20 17:00,2025-11-25 10:00,2025-11-25 10:00,0,56,100
FAB116412B-02,SECAI ROUGH IN/SECURITY - FAB116412B,Complete,Duct Shaft Vestibule - 1F -SUE-FAB116412,,,,,,,,,,2025-03-18 08:00,2025-03-18 17:00,2025-03-18 08:00,2025-03-18 17:00,2025-11-20 17:00,2025-11-20 17:00,2025-11-25 10:00,2025-11-25 10:00,0,8,100
FAB116412B-03,INSTALL DOOR FRAMES - FAB116412B,Complete,Duct Shaft Vestibule - 1F -SUE-FAB116412,,,,,,,,,,2025-03-18 08:00,2025-03-18 17:00,2025-03-18 08:00,2025-03-18 17:00,2025-11-20 17:00,2025-11-20 17:00,2025-11-25 10:00,2025-11-25 10:00,0,8,100
FAB116412B-04,INSTALL DOOR & HARDWARE - FAB116412B,Active,Duct Shaft Vestibule - 1F -SUE-FAB116412,,,,,,,,,,2025-10-06 08:00,2025-10-10 17:00,2025-10-06 08:00,,2025-11-21 08:00,2025-11-27 17:00,2025-11-25 10:00,2025-12-02 10:00,40,40,0
FAB116412B-05,PAINT & PROTECT DOORS & FRAMES - FAB116412B,Not Started,Duct Shaft Vestibule - 1F -SUE-FAB116412,,,,,,,,,,2026-02-16 08:00,2026-02-19 15:00,,,2026-02-16 08:00,2026-02-19 15:00,2025-12-02 10:00,2025-12-05 17:00,30,30,0
ZX-20315,SECAI TURNOVER FOR ACELERATION - Control Joint & CJ - Inspect - I/O Rm 3-1F-FAB112158 BAKER/DESCOPE,Complete,Slurry Stock - 1F -FAB-FAB112158,,,,,,,,,,2025-10-02 08:00,2025-10-15 17:00,2024-06-27 08:00,2024-06-27 16:00,2025-11-20 17:00,2025-11-20 17:00,2025-11-25 10:00,2025-11-25 10:00,0,80,100
FAB112158B-03,INSTALL DOOR FRAMES - FAB112158B,Complete,Slurry Stock - 1F -FAB-FAB112158,,,,,,,,,,2025-03-19 08:00,2025-03-19 17:00,2025-03-19 08:00,2025-03-19 17:00,2025-11-20 17:00,2025-11-20 17:00,2025-11-25 10:00,2025-11-25 10:00,0,8,100
FAB112158B-04,INSTALL DOOR & HARDWARE - FAB112158B,Active,Slurry Stock - 1F -FAB-FAB112158,,,,,,,,,,2025-11-03 08:00,2025-11-07 17:00,2025-11-03 08:00,,2025-11-21 08:00,2025-11-27 17:00,2025-11-25 10:00,2025-12-02 10:00,40,40,0
FAB112158B-05,PAINT & PROTECT DOORS & FRAMES - FAB112158B,Not Started,Slurry Stock - 1F -FAB-FAB112158,,,,,,,,,,2026-02-16 08:00,2026-02-19 15:00,,,2026-02-16 08:00,2026-02-19 15:00,2025-12-02 10:00,2025-12-05 17:00,30,30,0
FAB1-ST50E-04,INSTALL DOOR & HARDWARE - FAB1-ST50E,Not Started,Stair 50 - 3F-SUW-FAB1-ST50,,,,,,,,,,2025-11-21 08:00,2025-11-27 17:00,,,2025-11-21 08:00,2025-11-27 17:00,2025-11-25 08:00,2025-12-01 17:00,40,40,0
FAB1-ST50E-05,PAINT & PROTECT DOORS & FRAMES - FAB1-ST50E,Not Started,Stair 50 - 3F-SUW-FAB1-ST50,,,,,,,,,,2026-02-16 08:00,2026-02-19 17:00,,,2026-02-16 08:00,2026-02-19 17:00,2025-12-02 08:00,2025-12-05 17:00,32,32,0
FAB1-ST50E-03,INSTALL DOOR FRAMES - FAB1-ST50E,Complete,Stair 50 - 3F-SUW-FAB1-ST50,,,,,,,,,,2025-02-13 08:00,2025-02-13 17:00,2025-02-13 08:00,2025-02-13 17:00,2025-11-20 17:00,2025-11-20 17:00,2025-11-25 08:00,2025-11-25 08:00,0,8,100
ZX-20325,"SECAI TURNOVER FOR ACELERATION - Drywall, CJ & FC + Inspect-SO - 2F-SUE-FAB122156",Complete,Slurry Office-  2F -FAB-FAB122156,,,,,,,,,,2025-06-27 08:00,2025-07-10 17:00,2025-06-27 08:00,2025-06-27 17:00,2025-11-20 17:00,2025-11-20 17:00,2025-11-25 10:00,2025-11-25 10:00,0,80,100
FAB122156B-03,INSTALL DOOR FRAMES - FAB122156B,Complete,Slurry Office-  2F -FAB-FAB122156,,,,,,,,,,2025-04-11 08:00,2025-04-11 17:00,2025-04-11 08:00,2025-04-11 17:00,2025-11-20 17:00,2025-11-20 17:00,2025-11-25 10:00,2025-11-25 10:00,0,8,100
FAB122156B-04,INSTALL DOOR & HARDWARE - FAB122156B,Active,Slurry Office-  2F -FAB-FAB122156,,,,,,,,,,2025-11-11 08:00,2025-11-17 17:00,2025-11-11 08:00,,2025-11-21 08:00,2025-11-27 17:00,2025-11-25 10:00,2025-12-02 10:00,40,40,0
FAB122156B-05,PAINT & PROTECT DOORS & FRAMES -  FAB122156B,Not Started,Slurry Office-  2F -FAB-FAB122156,,,,,,,,,,2026-02-16 08:00,2026-02-19 15:00,,,2026-02-16 08:00,2026-02-19 15:00,2025-12-02 10:00,2025-12-05 17:00,30,30,0
FAB1-ST01B-01,IMPACT - INSTALL/REWORK DRYWALL FRAMING AROUND DOORS - FAB1-ST01B,Complete,Stair 1 - 2F -SUW-FAB1-ST01,,,,,,,,,,2025-05-08 08:00,2025-05-16 17:00,2025-05-08 08:00,2025-05-16 17:00,2025-11-20 17:00,2025-11-20 17:00,2025-11-25 10:00,2025-11-25 10:00,0,56,100
FAB1-ST01B-02,SECAI ROUGH IN/SECURITY - FAB1-ST01B,Complete,Stair 1 - 2F -SUW-FAB1-ST01,,,,,,,,,,2025-05-16 08:00,2025-05-16 17:00,2025-05-16 08:00,2025-05-16 17:00,2025-11-20 17:00,2025-11-20 17:00,2025-11-25 10:00,2025-11-25 10:00,0,8,100
FAB1-ST01B-03,INSTALL DOOR FRAMES - FAB1-ST01B,Complete,Stair 1 - 2F -SUW-FAB1-ST01,,,,,,,,,,2025-05-16 13:00,2025-05-19 12:00,2025-05-16 13:00,2025-05-19 12:00,2025-11-20 17:00,2025-11-20 17:00,2025-11-25 10:00,2025-11-25 10:00,0,8,100
FAB1-ST01B-04,INSTALL DOOR & HARDWARE - FAB1-ST01B,Active,Stair 1 - 2F -SUW-FAB1-ST01,,,,,,,,,,2025-11-05 08:00,2025-11-11 17:00,2025-11-05 08:00,,2025-11-21 08:00,2025-11-27 17:00,2025-11-25 10:00,2025-12-02 10:00,40,40,0
FAB1-ST01B-05,PAINT & PROTECT DOORS & FRAMES - FAB1-ST01B,Not Started,Stair 1 - 2F -SUW-FAB1-ST01,,,,,,,,,,2026-02-16 08:00,2026-02-19 15:00,,,2026-02-16 08:00,2026-02-19 15:00,2025-12-02 10:00,2025-12-05 17:00,30,30,0
FAB1-ST01A-03,INSTALL DOOR FRAMES - FAB1-ST01A,Complete,Stair 1 - 1F -SUW-FAB1-ST01,,,,,,,,,,2025-05-05 08:00,2025-05-05 17:00,2025-05-05 08:00,2025-05-05 17:00,2025-11-20 17:00,2025-11-20 17:00,2025-11-24 08:00,2025-11-24 08:00,0,8,100
FAB1-ST01A-04,INSTALL DOOR & HARDWARE - FAB1-ST01A,Active,Stair 1 - 1F -SUW-FAB1-ST01,,,,,,,,,,2025-09-18 08:00,2025-09-24 17:00,2025-09-18 08:00,,2025-11-21 08:00,2025-11-27 17:00,2025-11-24 08:00,2025-11-28 17:00,40,40,0
FAB1-ST01A-05,PAINT & PROTECT DOORS & FRAMES - FAB1-ST01A,Not Started,Stair 1 - 1F -SUW-FAB1-ST01,,,,,,,,,,2026-02-16 08:00,2026-02-20 17:00,,,2026-02-16 08:00,2026-02-20 17:00,2025-12-01 08:00,2025-12-05 17:00,40,40,0
FAB1-ST01D-04,INSTALL DOOR & HARDWARE - FAB1-ST01D,Not Started,Elevator Hall 1 - 4F -SUW-FAB140101,,,,,,,,,,2025-11-21 08:00,2025-11-27 17:00,,,2025-11-21 08:00,2025-11-27 17:00,2025-11-25 10:00,2025-12-02 10:00,40,40,0
FAB1-ST01D-03,INSTALL DOOR FRAMES - FAB1-ST01D,Complete,Elevator Hall 1 - 4F -SUW-FAB140101,,,,,,,,,,2025-10-21 08:00,2025-10-21 17:00,2025-10-21 08:00,2025-10-21 17:00,2025-11-20 17:00,2025-11-20 17:00,2025-11-25 10:00,2025-11-25 10:00,0,8,100
FAB1-ST01D-05,PAINT & PROTECT DOORS & FRAMES - FAB1-ST01D,Not Started,Elevator Hall 1 - 4F -SUW-FAB140101,,,,,,,,,,2026-02-16 08:00,2026-02-19 15:00,,,2026-02-16 08:00,2026-02-19 15:00,2025-12-02 10:00,2025-12-05 17:00,30,30,0
FAB130117Q-03,INSTALL DOOR FRAMES - FAB130117Q,Complete,FA Lab - 3F -SUW-FAB130117,,,,,,,,,,2025-07-07 08:00,2025-07-07 17:00,2025-07-07 08:00,2025-07-07 17:00,2025-11-20 17:00,2025-11-20 17:00,2025-12-01 08:00,2025-12-01 08:00,0,8,100
FAB130117Q-04,INSTALL DOOR & HARDWARE - FAB130117Q,Not Started,FA Lab - 3F -SUW-FAB130117,,,,,,,,,,2025-11-21 08:00,2025-11-27 17:00,,,2025-11-21 08:00,2025-11-27 17:00,2025-12-01 08:00,2025-12-05 17:00,40,40,0
FAB130117Q-05,PAINT & PROTECT DOORS & FRAMES - FAB130117Q,Not Started,FA Lab - 3F -SUW-FAB130117,,,,,,,,,,2026-02-16 08:00,2026-02-19 17:00,,,2026-02-16 08:00,2026-02-19 17:00,2025-12-02 08:00,2025-12-05 17:00,32,32,0
FAB134105D-60,DOOR FRAME HANDED OVER TO SECAI 07/18 - FAB134105D,Complete,S/L Entrance - 3F -FIZ-FAB134105,,,,,,,,,,2025-07-17 13:00,2025-07-18 12:00,2025-07-17 13:00,2025-07-18 12:00,2025-11-20 17:00,2025-11-20 17:00,2025-11-25 10:00,2025-11-25 10:00,0,8,100
FAB134105D-03,INSTALL DOOR FRAME BY SECAI - FAB134105D HANDED OVER 07/18,Complete,S/L Entrance - 3F -FIZ-FAB134105,,,,,,,,,,2025-07-17 13:00,2025-08-07 12:00,2025-07-18 13:00,2025-08-12 08:00,2025-11-20 17:00,2025-11-20 17:00,2025-11-25 10:00,2025-11-25 10:00,0,120,100
FAB134105D-04,INSTALL DOOR & HARDWARE - FAB134105D,Active,S/L Entrance - 3F -FIZ-FAB134105,,,,,,,,,,2025-08-12 08:00,2025-08-18 17:00,2025-08-12 08:00,,2025-11-21 08:00,2025-11-27 17:00,2025-11-25 10:00,2025-12-02 10:00,40,40,0
FAB134105D-05,PAINT & PROTECT DOORS & FRAMES - FAB134105D,Not Started,S/L Entrance - 3F -FIZ-FAB134105,,,,,,,,,,2026-02-16 08:00,2026-02-19 15:00,,,2026-02-16 08:00,2026-02-19 15:00,2025-12-02 10:00,2025-12-05 17:00,30,30,0
FAB110404A-03,INSTALL DOOR FRAME BY SECAI HANDED OVER 07/18 - FAB110404A,Complete,W-CuS04-ACQC RM (N/24.3-25) - 1F- SUW-FAB110404,,,,,,,,,,2025-07-18 13:00,2025-08-22 12:00,2025-07-18 13:00,2025-09-11 17:00,2025-11-20 17:00,2025-11-20 17:00,2025-11-25 10:00,2025-11-25 10:00,0,200,100
FAB110404A-04,INSTALL DOOR & HARDWARE - FAB110404A,Active,W-CuS04-ACQC RM (N/24.3-25) - 1F- SUW-FAB110404,,,,,,,,,,2025-11-06 08:00,2025-11-12 17:00,2025-11-06 08:00,,2025-11-21 08:00,2025-11-27 17:00,2025-11-25 10:00,2025-12-02 10:00,40,40,0
FAB110404A-05,PAINT & PROTECT DOORS & FRAMES - FAB110404A,Not Started,W-CuS04-ACQC RM (N/24.3-25) - 1F- SUW-FAB110404,,,,,,,,,,2026-02-16 08:00,2026-02-19 15:00,,,2026-02-16 08:00,2026-02-19 15:00,2025-12-02 10:00,2025-12-05 17:00,30,30,0
FAB110404A-60,DOOR FRAME HANDED OVER TO SECAI ON 07/18 - FAB110404A,Complete,W-CuS04-ACQC RM (N/24.3-25) - 1F- SUW-FAB110404,,,,,,,,,,2025-07-17 13:00,2025-07-18 12:00,2025-07-17 13:00,2025-07-18 12:00,2025-11-20 17:00,2025-11-20 17:00,2025-11-25 10:00,2025-11-25 10:00,0,8,100
FAB110404D-03,INSTALL DOOR FRAME BY SECAI HANDED OVER 07/18 - FAB110404D,Complete,W-CuS04-ACQC RM (N/24.3-25) - 1F- SUW-FAB110404,,,,,,,,,,2025-07-18 13:00,2025-08-22 12:00,2025-07-18 13:00,2025-09-11 17:00,2025-11-20 17:00,2025-11-20 17:00,2025-11-18 10:00,2025-11-18 10:00,0,200,100
FAB110404D-04,INSTALL DOOR & HARDWARE - FAB110404D,Not Started,W-CuS04-ACQC RM (N/24.3-25) - 1F- SUW-FAB110404,,,,,,,,,,2025-11-28 08:00,2025-12-04 17:00,,,2025-11-28 08:00,2025-12-04 17:00,2025-11-25 10:00,2025-12-02 10:00,40,40,0
FAB110404D-05,PAINT & PROTECT DOORS & FRAMES - FAB110404D,Not Started,W-CuS04-ACQC RM (N/24.3-25) - 1F- SUW-FAB110404,,,,,,,,,,2026-02-16 08:00,2026-02-19 15:00,,,2026-02-16 08:00,2026-02-19 15:00,2025-12-02 10:00,2025-12-05 17:00,30,30,0
FAB110404D-60,DOOR FRAME HANDED OVER TO SECAI ON 07/18 - FAB110404D,Complete,W-CuS04-ACQC RM (N/24.3-25) - 1F- SUW-FAB110404,,,,,,,,,,2025-07-17 13:00,2025-07-18 12:00,2025-07-17 13:00,2025-07-18 12:00,2025-11-20 17:00,2025-11-20 17:00,2025-11-18 10:00,2025-11-18 10:00,0,8,100
CN.SWA3.9760,IMPACT - SECAI - RFI 1801 level 03 IFRM requested by Firemarshall of city of taylor - ELEVATOR 19 - WAITING FOR SCHEDULE,Complete,SWA - 3,West Support Building,SUWS-3 - 12-9,,ELEVATOR,CONSTRUCTION,W&W,DRYWALL,,INTERIORS,2025-08-08 07:00,2025-08-21 17:00,2025-07-22 07:00,2025-07-30 17:00,2025-11-20 17:00,2025-11-20 17:00,2025-12-03 07:00,2025-12-03 07:00,0,100,100
CN.SEB1.10940,IMPACT - SECAI PAYMENT ISSUES WITH BRAZOS - GL 19-28 - A LINE - L4 ROOF (NCR 1921),Complete,CONSTRUCTION,,SUEN-3 - 25-28,L4 - SUP Roof - FAB Roof,,CONSTRUCTION,BRAZOS,,,,2025-07-14 07:00,2025-07-31 17:00,2025-07-14 07:00,2025-08-15 17:00,2025-11-20 17:00,2025-11-20 17:00,2025-12-05 17:00,2025-12-05 17:00,0,140,100
CN.SEB1.10950,IMPACT - SECAI PAYMENT ISSUES WITH BRAZOS - GL 5 AND 31 - A LINE - L4 ROOF (NCR 1921),Complete,CONSTRUCTION,,SUEN-4 - 28-31,L4 - SUP Roof - FAB Roof,,CONSTRUCTION,BRAZOS,,,,2025-07-14 07:00,2025-07-31 17:00,2025-07-14 07:00,2025-08-29 17:00,2025-11-20 17:00,2025-11-20 17:00,2025-12-03 07:00,2025-12-03 07:00,0,140,100
CN.SWB3.6271,DOCK LEVELER & accesories INSTALL - N5 PENDING ACCESORIES AND PERMANENT POWER BY SECAI,Active,CONSTRUCTION,,FIZ 2 / SUWS 5  (GL6-1) - GL J - N - DATA CENTER 1,EXTERIOR SKIN,,CONSTRUCTION,,,,,2025-10-15 07:00,2025-10-21 17:00,2025-10-15 07:00,,2025-12-03 07:00,2026-01-15 17:00,2025-09-04 07:00,2025-10-14 17:00,290,50,0
CN.SWB3.6281,DOCK LEVELER & accesories INSTALL - N17 PENDING ACCESORIES AND PERMANENT POWER BY SECAI,Active,CONSTRUCTION,,SUWN-1 - 18-21,EXTERIOR SKIN,,CONSTRUCTION,,,,,2025-09-15 07:00,2025-09-16 17:00,2025-09-15 07:00,,2025-11-21 07:00,2025-12-02 17:00,2025-08-26 07:00,2025-09-03 17:00,60,20,100
CN.SWB3.6291,DOCK LEVELER & accesories INSTALL- A31 PENDING ACCESORIES AND PERMANENT POWER BY SECAI,Active,CONSTRUCTION,,SUEN-4 - 28-31,EXTERIOR SKIN,,CONSTRUCTION,,,,,2025-10-13 07:00,2025-10-17 17:00,2025-10-13 07:00,,2026-01-16 07:00,2026-02-27 17:00,2025-10-15 07:00,2025-11-26 17:00,310,50,0
CN.SWB3.6301,DOCK LEVELER & accesories INSTALL - A17,Not Started,CONSTRUCTION,,SUES-1 - 19-16,EXTERIOR SKIN,,CONSTRUCTION,,,,,2026-03-02 07:00,2026-03-06 17:00,,,2026-03-02 07:00,2026-03-06 17:00,2025-12-01 07:00,2025-12-05 17:00,50,50,0
CN.SEB1.10960,IMPACT - SECAI SCAFFOLD- COPING CAP INSTALL - GL 17-18 - L LINE (DS AREA) - VOC ROOM,Complete,CONSTRUCTION,,SUWS-1 - 18-15,L6 - PENTHOUSE / DS ROOF,,CONSTRUCTION,PATRIOT,INSULATED METAL PANELS,,,2025-06-09 07:00,2025-07-07 17:00,2025-06-09 07:00,2025-08-05 17:00,2025-11-20 17:00,2025-11-20 17:00,2025-12-05 07:00,2025-12-05 07:00,0,200,100
CN.SWB2.7040,SUBMITTAL REVISION SEALANT 795 - SECAI MEP PIPE & DUCT PENETRATIONS,Complete,CONSTRUCTION,,ENCLOSURE,EXTERIOR SKIN,,PRE - CON / BUYOUT / IMPACTS,,INSULATED METAL PANELS,,,2025-07-08 07:00,2025-07-11 17:00,2025-07-08 07:00,2025-07-25 17:00,2025-11-20 17:00,2025-11-20 17:00,2025-12-05 17:00,2025-12-05 17:00,0,40,100
CN.SWB2.7050,IOCC SUBMITTAL KOVACH PRICING DUE TO ACCESS- SECAI MEP PIPE & DUCT PENETRATIONS - TURNING OVER TO SECAI,Complete,CONSTRUCTION,,ENCLOSURE,EXTERIOR SKIN,,PRE - CON / BUYOUT / IMPACTS,,INSULATED METAL PANELS,,,2025-08-18 15:00,2025-08-22 15:00,2025-08-11 15:00,2025-10-03 17:00,2025-11-20 17:00,2025-11-20 17:00,2025-12-05 17:00,2025-12-05 17:00,0,40,100
CN.SEA5.11170,INTERIOR SHAFT CATCHUP INSPECTIONS - ELEVATOR 22 - 7 per front,Complete,CONSTRUCTION,,SUES-5 - 6-1 - FIZ - GL A -E,,ELEVATOR,CONSTRUCTION,,,,,2025-08-27 07:00,2025-08-28 17:00,2025-08-19 07:00,2025-10-03 17:00,2025-11-20 17:00,2025-11-20 17:00,2025-11-26 07:00,2025-11-26 07:00,0,20,100
CN.SWA3.9770,IMPACT - SECAI - RFI 1801 level 03 IFRM requested by Firemarshall of city of taylor - ELEVATOR 2- WAITING FOR SCHEDULE,Complete,SWA - 3,West Support Building,SUWS-3 - 12-9,,ELEVATOR,CONSTRUCTION,W&W,DRYWALL,,INTERIORS,2025-08-08 07:00,2025-08-21 17:00,2025-07-22 16:31,2025-07-30 17:00,2025-11-20 17:00,2025-11-20 17:00,2025-12-05 17:00,2025-12-05 17:00,0,100,100
FAB110403A-70,IMPACT - RFI 1789 OPENING HEIGHT UNKNOWN - FAB110403A/B/D,Complete,NaOH ACQC (N/23-24.3) - 1F -SUW-FAB110403,,,,,,,,,,2025-05-06 08:00,2025-06-09 17:00,2025-05-06 08:00,2025-08-22 17:00,2025-11-20 17:00,2025-11-20 17:00,2025-12-05 17:00,2025-12-05 17:00,0,200,100
FAB110404B/E-70,IMPACT - RFI 1789 OPENING HEIGHT UNKNOWN - FAB110404B/E,Complete,W-CuS04-ACQC RM (N/24.3-25) - 1F- SUW-FAB110404,,,,,,,,,,2025-07-01 08:00,2025-08-04 17:00,2025-07-01 08:00,2025-08-22 17:00,2025-11-20 17:00,2025-11-20 17:00,2025-12-05 17:00,2025-12-05 17:00,0,200,100
FAB110409B/E-70,IMPACT - RFI 1789 OPENING HEIGHT UNKNOWN - FAB110409B/E,Complete,W-H3PO4 RM (N/25.4-26.2) - 1F -SUW-FAB110409,,,,,,,,,,2025-07-01 08:00,2025-08-04 17:00,2025-07-01 08:00,2025-08-22 17:00,2025-11-20 17:00,2025-11-20 17:00,2025-12-05 17:00,2025-12-05 17:00,0,200,100
FAB110408A/B/D-70,IMPACT - RFI 1789 OPENING HEIGHT UNKNOWN - FAB110408A/B/D,Complete,W-H2S04 ACQC RM (N/26.2-27) - 1F -SUW-FAB110408,,,,,,,,,,2025-07-01 08:00,2025-08-04 17:00,2025-07-01 08:00,2025-08-22 17:00,2025-11-20 17:00,2025-11-20 17:00,2025-12-05 17:00,2025-12-05 17:00,0,200,100
FAB110511B/C-70,IMPACT - RFI 1789 OPENING HEIGHT UNKNOWN - FAB110511B/C,Complete,W-SOLVENT RM (N/27.5-29) - 1F -SUW-FAB110511,,,,,,,,,,2025-07-01 08:00,2025-08-04 17:00,2025-07-01 08:00,2025-08-22 17:00,2025-11-20 17:00,2025-11-20 17:00,2025-12-05 17:00,2025-12-05 17:00,0,200,100
FAB116104A-100,IMPACT SECAI TEMP POWER PREVENTING FRAME INSTALL- FAB116104A,Complete,OAC Mechanical RM - 1F -FIZ-FAB116101,,,,,,,,,,2025-06-02 08:00,2025-07-11 17:00,2025-06-02 08:00,2025-08-06 17:00,2025-11-20 17:00,2025-11-20 17:00,2025-11-25 10:00,2025-11-25 10:00,0,240,100
FAB120507A-100,IMPACT - SECAI RFI 11447 MISSING VERTICAL CLADING STEEL FOR DOOR JAMB - FAB120507A,Complete,Utility Rm - 2F -SUW-FAB120507,,,,,,,,,,2025-07-01 08:00,2025-08-04 17:00,2025-07-01 08:00,2025-11-10 17:00,2025-11-20 17:00,2025-11-20 17:00,2025-11-25 10:00,2025-11-25 10:00,0,200,100
ZX-20335,IMPACT - SECAI SCAFFOLDS MEP - Duct Shaft - 1F-SUW-FAB110206,Active,Duct Shaft - 1F -SUW-FAB110206,,,,,,,,,,2025-08-15 08:00,2025-09-01 17:00,2025-06-03 08:00,,2025-11-21 08:00,2025-11-27 17:00,2025-12-01 08:00,2025-12-05 17:00,40,96,100
ZX-20345,IMPACT - SECAI SCAFFOLDS MEP -Duct Shaft - 1F-SUW-FAB110306,Active,Duct Shaft - 1F -SUW-FAB110306,,,,,,,,,,2025-08-15 08:00,2025-08-28 17:00,2025-06-03 08:00,,2025-11-21 08:00,2025-11-28 17:00,2025-11-28 08:00,2025-12-05 17:00,48,80,0
ZX-20355,Complete Drywall & Inspect - Pedestrian Walkway-1F-FAB112104 - MKMARLOW,Complete,Pedestrian Walkway - 1F -FIZ-FAB112104,,,,,,,,,,2025-08-25 08:00,2025-09-05 17:00,2025-08-25 08:00,2025-09-22 08:00,2025-11-20 17:00,2025-11-20 17:00,2025-12-05 17:00,2025-12-05 17:00,0,80,100
ZX-20365,Complete Fire Caulk & Inspect - Pedestrian Walkway-1F-FAB112104 - MK MARLOW,Complete,Pedestrian Walkway - 1F -FIZ-FAB112104,,,,,,,,,,2025-09-23 08:00,2025-09-24 17:00,2025-09-23 08:00,2025-09-24 17:00,2025-11-20 17:00,2025-11-20 17:00,2025-12-05 17:00,2025-12-05 17:00,0,16,100
ZX-20375,Complete Control Joint & Inspect - Pedestrian Walkway-1F-FAB112104 - MK MARLOW,Complete,Pedestrian Walkway - 1F -FIZ-FAB112104,,,,,,,,,,2025-09-22 08:00,2025-09-23 17:00,2025-09-22 08:00,2025-09-23 17:00,2025-11-20 17:00,2025-11-20 17:00,2025-12-05 17:00,2025-12-05 17:00,0,16,100
ZX-20385,IMPACT - GOAL POST INSTALL - Lab Vestibule - 1F-SUW-FAB112101 - N/1,Complete,Lab Vestibule- 1F -FIZ-FAB112101,,INTERIOR STAIRS,L1 - Fndn Slab,,,,,,,2025-10-06 08:00,2025-10-10 17:00,2025-09-30 08:00,2025-10-10 17:00,2025-11-20 17:00,2025-11-20 17:00,2025-11-06 17:00,2025-11-06 17:00,0,40,100
ZX-20395,IMPACT - RFI CEILING HEIGHT-Maint Rm 1-1F-SUE-FAB116406,Complete,Maint Rm 1 - 1F -SUE-FAB116406,,,,,,,,,,2025-09-17 08:00,2025-09-30 17:00,2025-08-08 08:00,2025-09-04 08:00,2025-11-20 17:00,2025-11-20 17:00,2025-11-25 10:00,2025-11-25 10:00,0,80,100
FAB112158A-03,INSTALL DOOR FRAME BY SECAI - FAB112158A HANDED OVER ON 08/13,Complete,Slurry Stock - 1F -FAB-FAB112158,,,,,,,,,,2025-08-26 08:00,2025-09-15 17:00,2025-08-14 08:00,2025-08-22 17:00,2025-11-20 17:00,2025-11-20 17:00,2025-11-25 10:00,2025-11-25 10:00,0,120,100
FAB112158A-04,INSTALL DOOR & HARDWARE - FAB112158A,Active,Slurry Stock - 1F -FAB-FAB112158,,,,,,,,,,2025-09-10 08:00,2025-09-16 17:00,2025-09-10 08:00,,2025-11-21 08:00,2025-11-27 17:00,2025-11-25 10:00,2025-12-02 10:00,40,40,0
FAB112158A-05,PAINT & PROTECT DOORS & FRAMES - FAB112158A,Not Started,Slurry Stock - 1F -FAB-FAB112158,,,,,,,,,,2026-02-16 08:00,2026-02-19 15:00,,,2026-02-16 08:00,2026-02-19 15:00,2025-12-02 10:00,2025-12-05 17:00,30,30,0
FAB112158A-35,DOOR FRAME HANDED OVER TO SECAI 08/13 - FAB112158A,Complete,Slurry Stock - 1F -FAB-FAB112158,,,,,,,,,,2025-08-13 08:00,2025-08-13 17:00,2025-08-13 08:00,2025-08-13 17:00,2025-11-20 17:00,2025-11-20 17:00,2025-11-25 10:00,2025-11-25 10:00,0,8,100
ZX-20405,SECAI TOOK OVER FOR ACCELERATION - Complete Drywall & Inspect - Hall #19 - 3F-SUE-FAB136408,Complete,Hall 19 - 3F -SUE-FAB136408,,,,,,,,,,2025-10-16 08:00,2025-10-22 17:00,2025-10-22 08:00,2025-10-22 17:00,2025-11-20 17:00,2025-11-20 17:00,2025-12-05 17:00,2025-12-05 17:00,0,40,100
ZX-20415,SECAI TOOK OVER FOR ACCELERATION - Complete Fire Caulk & Inspect - Hall #19 - 3F-SUE-FAB136408,Complete,Hall 19 - 3F -SUE-FAB136408,,,,,,,,,,2025-10-21 08:00,2025-10-22 17:00,2025-10-22 08:00,2025-10-22 17:00,2025-11-20 17:00,2025-11-20 17:00,2025-12-05 17:00,2025-12-05 17:00,0,16,100
ZX-20425,SECAI TOOK OVER FOR ACCELERATION - Complete Control Joint & Inspect - Hall #19 - 3F-SUE-FAB136408,Complete,Hall 19 - 3F -SUE-FAB136408,,,,,,,,,,2025-10-21 08:00,2025-10-22 17:00,2025-10-22 08:00,2025-10-22 17:00,2025-11-20 17:00,2025-11-20 17:00,2025-12-05 17:00,2025-12-05 17:00,0,16,100
FAB112158C-03,INSTALL DOOR FRAME BY SECAI - FAB112158C HANDED OVER ON 08/13,Complete,Slurry Stock - 1F -FAB-FAB112158,,,,,,,,,,2025-08-26 08:00,2025-09-15 17:00,2025-08-14 08:00,2025-08-20 17:00,2025-11-20 17:00,2025-11-20 17:00,2025-11-25 10:00,2025-11-25 10:00,0,120,100
FAB112158C-04,INSTALL DOOR & HARDWARE - FAB112158C,Active,Slurry Stock - 1F -FAB-FAB112158,,,,,,,,,,2025-10-29 08:00,2025-11-04 17:00,2025-10-29 08:00,,2025-11-21 08:00,2025-11-27 17:00,2025-11-25 10:00,2025-12-02 10:00,40,40,0
FAB112158C-05,PAINT & PROTECT DOORS & FRAMES - FAB112158C,Not Started,Slurry Stock - 1F -FAB-FAB112158,,,,,,,,,,2026-02-16 08:00,2026-02-19 15:00,,,2026-02-16 08:00,2026-02-19 15:00,2025-12-02 10:00,2025-12-05 17:00,30,30,0
FAB112158C-35,DOOR FRAME HANDED OVER TO SECAI 08/13 - FAB112158C,Complete,Slurry Stock - 1F -FAB-FAB112158,,,,,,,,,,2025-08-13 08:00,2025-08-13 17:00,2025-08-13 08:00,2025-08-13 17:00,2025-11-20 17:00,2025-11-20 17:00,2025-11-25 10:00,2025-11-25 10:00,0,8,100
FAB1-ST19D-04,INSTALL DOOR & HARDWARE - FAB1-ST19D,Not Started,Stair 19 - 3F -SUE-FAB1-ST19,,,,,,,,,,2025-12-12 08:00,2025-12-18 17:00,,,2025-12-12 08:00,2025-12-18 17:00,2025-11-25 08:00,2025-12-01 17:00,40,40,0
FAB1-ST19D-05,PAINT & PROTECT DOORS & FRAMES - FAB1-ST19D,Not Started,Stair 19 - 3F -SUE-FAB1-ST19,,,,,,,,,,2026-02-16 08:00,2026-02-19 17:00,,,2026-02-16 08:00,2026-02-19 17:00,2025-12-02 08:00,2025-12-05 17:00,32,32,0
FAB1-ST19D-03,INSTALL DOOR FRAME BY SECAI - FAB1-ST19D,Not Started,Stair 19 - 3F -SUE-FAB1-ST19,,,,,,,,,,2025-11-28 08:00,2025-12-11 17:00,,,2025-11-28 08:00,2025-12-11 17:00,2025-11-11 08:00,2025-11-24 17:00,80,80,0
FAB1-ST19C-03,INSTALL DOOR FRAMES - FAB1-ST19C,Complete,Stair 19 - 3F -SUE-FAB1-ST19,,,,,,,,,,2025-10-31 08:00,2025-10-31 17:00,2025-10-31 08:00,2025-10-31 17:00,2025-11-20 17:00,2025-11-20 17:00,2025-11-25 08:00,2025-11-25 08:00,0,8,100
FAB1-ST19D-25,DOOR FRAME HANDED OVER TO SECAI 08/13 - FAB1-ST19D,Complete,Stair 19 - 3F -SUE-FAB1-ST19,,,,,,,,,,2025-08-13 08:00,2025-08-13 17:00,2025-08-13 08:00,2025-08-13 17:00,2025-11-20 17:00,2025-11-20 17:00,2025-11-11 08:00,2025-11-11 08:00,0,8,100
ZX-20435,IMPACT - IOCC 1544 (RFI 1801) IFRM requested by Firemarshall of city of taylor - Elevator #19 - 3F-FAB1-EL19,Complete,Elevator 19 - 3F -SUE-FAB1-EL19,,,,,,,,,,2025-07-07 10:00,2025-08-04 15:00,2025-08-05 10:00,2025-08-14 15:00,2025-11-20 17:00,2025-11-20 17:00,2025-12-03 07:00,2025-12-03 07:00,0,164,100
ZX-20445,IMPACT - IOCC 1544 (RFI 1801) IFRM requested by Firemarshall of city of taylor-Elevator #02 - 3F-FAB1-EL2,Complete,Elevator 2 - 3F -SUW-FAB1-EL02,,,,,,,,,,2025-07-07 10:00,2025-08-04 15:00,2025-08-05 10:00,2025-08-14 15:00,2025-11-20 17:00,2025-11-20 17:00,2025-12-05 17:00,2025-12-05 17:00,0,164,100
CN.SEB1.10970,IMPACT - SECAI SCAFFOLD NEEDED STEEL SPRAY SFRM - SEB1 - GL D / 19-20 - L2 -L3,Not Started,SEB - 1,,SUEN-1 - 19-22,DS/AD,,CONSTRUCTION,ROLLING PLAINS,Fireproofing,,,2025-11-24 07:00,2025-12-02 17:00,,,2025-11-24 07:00,2025-12-02 17:00,2025-12-01 07:00,2025-12-05 17:00,50,50,0
CN.SEB1.10980,IMPACT - IOCC 1534 SUBMIT & SECAI APPROVAL - SEB1 - GL D / 19-20 - L2 -L3,Active,SEB - 1,,SUEN-1 - 19-22,DS/AD,,CONSTRUCTION,ROLLING PLAINS,Fireproofing,,,2024-05-31 07:00,2024-06-07 17:00,2025-07-11 07:00,,2025-11-21 07:00,2025-11-21 17:00,2025-11-26 07:00,2025-11-26 17:00,10,50,0
CN.SEA5.11180,IMPACT - IOCC APPROVAL PENDING BY SECAI FOR SCAFFOLD SFRM TOUCH UP - L5&L6 - C&D-LINE - GL 3-33,Active,SEA - 5,,SUES-5 - 6-1 - FIZ - GL A -E,L4 - SUP Roof - FAB Roof,DS/AD INTERIORS,CONSTRUCTION,ROLLING PLAINS,Fireproofing,,,2024-05-13 07:00,2024-05-31 17:00,2025-02-13 07:00,,2025-11-21 07:00,2025-11-25 17:00,2025-11-14 07:00,2025-11-18 17:00,30,110,0
CN.SWB2.7060,IMPACT - RFI 1810 BAKER ROD- SECAI MEP PIPE & DUCT PENETRATIONS,Complete,CONSTRUCTION,,ENCLOSURE,EXTERIOR SKIN,,PRE - CON / BUYOUT / IMPACTS,,INSULATED METAL PANELS,,,2025-07-08 07:00,2025-07-11 17:00,2025-08-04 08:57,2025-09-25 14:00,2025-11-20 17:00,2025-11-20 17:00,2025-12-05 17:00,2025-12-05 17:00,0,40,100
CN.SWB3.6311,IMPACT - RFI 1789 DOOR OPENING SIZE IN DWGS NOT MATCHING APPROVED SUBMITTAL - N25 - N29 - WASTE DISCHARGE CABINET,Complete,CONSTRUCTION,,SUWN-3 - 24-27,EXTERIOR SKIN,,CONSTRUCTION,,,,,2025-06-23 07:00,2025-07-10 17:00,2025-06-17 07:00,2025-06-25 17:00,2025-11-20 17:00,2025-11-20 17:00,2025-10-06 07:00,2025-10-06 07:00,0,130,100
CN.SWB3.6321,IMPACT - PATRIOT WORKING OFF OF DRB11 - C&B REFABRICATION OF DOORS - LEAD TIME 8WEEKS - N25 - N29,Complete,CONSTRUCTION,,SUWN-3 - 24-27,EXTERIOR SKIN,,CONSTRUCTION,,,,,2025-06-23 07:00,2025-07-10 17:00,2025-06-27 07:00,2025-07-23 17:00,2025-11-20 17:00,2025-11-20 17:00,2025-10-06 07:00,2025-10-06 07:00,0,130,100
CN.SWB3.6331,IMPACT - IOCC 1541 SUBMITTED AND APPROVAL FOR REPLACING CABINET DOORS - LEAD TIME 8 WEEKS - N25 - N29,Complete,CONSTRUCTION,,SUWN-3 - 24-27,EXTERIOR SKIN,,CONSTRUCTION,,,,,2025-06-23 07:00,2025-07-10 17:00,2025-07-24 07:00,2025-08-07 11:21,2025-11-20 17:00,2025-11-20 17:00,2025-10-06 07:00,2025-10-06 07:00,0,130,100
CN.SWB3.6341,IMPACT - IOCC 1541 SECAI REJECTED - HANDOVER DOOR FRAMES TO SECAI - N25 - N29,Complete,CONSTRUCTION,,SUWN-3 - 24-27,EXTERIOR SKIN,,CONSTRUCTION,,,,,2025-06-23 07:00,2025-07-10 17:00,2025-08-07 07:21,2025-08-18 17:00,2025-11-20 17:00,2025-11-20 17:00,2025-10-06 07:00,2025-10-06 07:00,0,130,100
CN.SEB1.10990,IMPACT - SECAI / JACOBS DESIGN FOR HIGH TEMP PIPE PENETRATING - GL 19-20 - A LINE [SUP EXTERIOR WALL],Active,SEB - 1,East Support Building,SUEN-1 - 19-22,EXTERIOR SKIN,,CONSTRUCTION,KOVACH,INSULATED METAL PANELS,JAMES LIVELY,,2025-09-05 07:00,2025-10-02 17:00,2025-08-08 07:00,,2025-11-21 07:00,2025-11-21 17:00,2025-11-12 07:00,2025-11-12 17:00,10,200,0
CN.SWA4.7460,IMPACT - SECAI/ JACOBS DESIGN CHANGE - HIGH TEMP PIPE PENETRATING - N30-31 TRESTLE B INFILL,Complete,CONSTRUCTION,,SUWN-5 - 30-33,EXTERIOR SKIN,,CONSTRUCTION,KOVACH,INSULATED METAL PANELS,,,2025-08-01 07:00,2025-08-28 17:00,2025-07-29 07:00,2025-09-10 17:00,2025-11-20 17:00,2025-11-20 17:00,2025-11-04 07:00,2025-11-04 07:00,0,200,100
CN.SEB1.11000,IMPACT - KOVACH SUBMITTAL - BERRIDGE PANEL- SUBSTITUTION REQUEST - GL 32 - N LINE [SUP EXTERIOR WALL],Complete,SEB - 1,East Support Building,SUWN-5 - 30-33,EXTERIOR SKIN,,CONSTRUCTION,KOVACH,INSULATED METAL PANELS,JAMES LIVELY,,2025-09-05 07:00,2025-10-02 17:00,2025-07-17 07:00,2025-10-08 17:00,2025-11-20 17:00,2025-11-20 17:00,2025-11-13 07:00,2025-11-13 07:00,0,200,100
INT.P1.DH&HW.1330,EXTERIOR OHC DOOR - RFI 10731 - BENT PLATE OVERHANG ON INTERIOR CLADDING - HSS ADDED STEEL,Complete,PRE CONSTRUCTION,Support Building Overall,Doors & Hardware - OVERHEAD,DOORS & HARDWARE OVERHEAD,,PRE - CON / BUYOUT / IMPACTS,,DOORS & HARDWARE - OVERHEAD,AMBER CARO,INTERIORS,2023-11-27 07:00,2023-12-16 15:00,2025-05-30 07:00,2025-06-11 11:00,2025-11-20 17:00,2025-11-20 17:00,2025-11-21 07:00,2025-11-21 07:00,0,168,100
INT.P1.DH&HW.1340,EXTERIOR OHC DOOR - PRICING AND WAITING ON SECAI DIRECTION - HSS ADDED STEEL,Complete,PRE CONSTRUCTION,Support Building Overall,Doors & Hardware - OVERHEAD,DOORS & HARDWARE OVERHEAD,,PRE - CON / BUYOUT / IMPACTS,,DOORS & HARDWARE - OVERHEAD,AMBER CARO,INTERIORS,2023-11-27 07:00,2023-12-16 15:00,2025-06-12 07:00,2025-07-14 11:00,2025-11-20 17:00,2025-11-20 17:00,2025-11-21 07:00,2025-11-21 07:00,0,168,100
INT.P1.DH&HW.1350,EXTERIOR OHC DOOR - SECAI / VELTRI TOOKOVER SCOPE - HSS ADDED STEEL,Active,PRE CONSTRUCTION,Support Building Overall,Doors & Hardware - OVERHEAD,DOORS & HARDWARE OVERHEAD,,PRE - CON / BUYOUT / IMPACTS,,DOORS & HARDWARE - OVERHEAD,AMBER CARO,INTERIORS,2023-11-27 07:00,2023-12-16 15:00,2025-07-15 07:00,,2025-11-21 07:00,2025-11-25 17:00,2025-11-21 07:00,2025-11-25 17:00,50,168,100
CN.SEB1.11010,IMPACT - CANOPY - I-BEAM PENETRATION LACK OF DESIGN - SECAI ISSUED RFI 11318,Complete,SEB - 1,East Support Building,ENCLOSURE,EXTERIOR SKIN,,PRE - CON / BUYOUT / IMPACTS,KOVACH,INSULATED METAL PANELS,JAMES LIVELY,,2025-08-01 07:00,2025-08-06 17:00,2025-07-07 07:00,2025-07-15 07:00,2025-11-20 17:00,2025-11-20 17:00,2025-09-29 07:00,2025-09-29 07:00,0,40,100
CN.SEB1.11020,IMPACT - CANOPY - I-BEAM PENETRATION LACK OF DESIGN - YATES NEW RFI 1808 ISSUED,Complete,SEB - 1,East Support Building,ENCLOSURE,EXTERIOR SKIN,,PRE - CON / BUYOUT / IMPACTS,KOVACH,INSULATED METAL PANELS,JAMES LIVELY,,2025-08-01 07:00,2025-08-06 17:00,2025-07-16 07:00,2025-07-26 11:00,2025-11-20 17:00,2025-11-20 17:00,2025-09-29 07:00,2025-09-29 07:00,0,40,100
CN.SEB1.11030,IMPACT - CANOPY - I-BEAM PENETRATION LACK OF DESIGN - WAITING ON RFI 1808 RESPONSE,Active,SEB - 1,East Support Building,ENCLOSURE,EXTERIOR SKIN,,PRE - CON / BUYOUT / IMPACTS,KOVACH,INSULATED METAL PANELS,JAMES LIVELY,,2025-08-01 07:00,2025-08-06 17:00,2025-07-17 07:00,,2025-11-21 07:00,2025-11-21 17:00,2025-09-29 07:00,2025-09-29 17:00,10,40,100
CN.SEA1.LD.3290,IMPACT - NE / NW ADDITIONAL BOLLARDS - RFI 10236 DESIGN CHANGE - PRICING - GL 28-33 A-LINE,Complete,SEA - 1,East Support Building,SUEN-5 - 31-33,L1 - Fndn Slab,,CONSTRUCTION,BAKER,INSULATED METAL PANELS,AMBER CARO,INTERIORS,2025-02-10 07:00,2025-02-20 17:00,2025-04-15 08:00,2025-04-29 15:00,2025-11-20 17:00,2025-11-20 17:00,2025-12-05 17:00,2025-12-05 17:00,0,90,100
CN.SEA1.LD.3300,IMPACT - NE / NW ADDITIONAL BOLLARDS - RFI 10236 DESIGN CHANGE - SHOP DRAWINGS APPROVAL - GL 28-33 A-LINE,Complete,SEA - 1,East Support Building,SUEN-5 - 31-33,L1 - Fndn Slab,,CONSTRUCTION,BAKER,INSULATED METAL PANELS,AMBER CARO,INTERIORS,2025-02-10 07:00,2025-02-20 17:00,2025-05-22 08:00,2025-06-10 15:00,2025-11-20 17:00,2025-11-20 17:00,2025-12-05 17:00,2025-12-05 17:00,0,90,100
CN.SEA1.LD.3310,IMPACT - NE / NW ADDITIONAL BOLLARDS - RFI 10236 DESIGN CHANGE - RE- PRICING- GL 28-33 A-LINE,Complete,SEA - 1,East Support Building,SUEN-5 - 31-33,L1 - Fndn Slab,,CONSTRUCTION,BAKER,INSULATED METAL PANELS,AMBER CARO,INTERIORS,2025-02-10 07:00,2025-02-20 17:00,2025-06-11 08:00,2025-07-22 15:00,2025-11-20 17:00,2025-11-20 17:00,2025-12-05 17:00,2025-12-05 17:00,0,90,100
CN.SEA1.LD.3320,IMPACT - NE / NW ADDITIONAL BOLLARDS - RFI 10236 DESIGN CHANGE - NW BOLLARDS HANDED OVER TO SECAI,Active,SEA - 1,East Support Building,SUEN-5 - 31-33,L1 - Fndn Slab,,CONSTRUCTION,BAKER,INSULATED METAL PANELS,AMBER CARO,INTERIORS,2025-02-10 07:00,2025-02-20 17:00,2025-07-23 08:00,,2025-11-21 07:00,2025-11-21 07:00,2025-12-05 17:00,2025-12-05 17:00,0,90,100
ZX-20455,SECAI TOOK OVER FOR ACCELERATION - Drywall & Inspect - Elevator #01 - 1F-FAB1-EL01,Complete,Elevator 1 - 1F -SUW-FAB1-EL01,,,,,,,,,,2025-09-19 08:00,2025-10-01 17:00,2025-09-19 08:00,2025-09-19 17:00,2025-11-20 17:00,2025-11-20 17:00,2025-12-05 17:00,2025-12-05 17:00,0,72,100
ZX-20465,SECAI TOOK OVER FOR ACCELERATION - Fire Caulk & Inspect - Elevator #01 - 1F-FAB1-EL01,Complete,Elevator 1 - 1F -SUW-FAB1-EL01,,,,,,,,,,2025-09-19 08:00,2025-09-22 17:00,2025-09-19 08:00,2025-09-19 17:00,2025-11-20 17:00,2025-11-20 17:00,2025-12-05 17:00,2025-12-05 17:00,0,16,100
ZX-20475,SECAI TOOK OVER FOR ACCELERATION - Control Joint & Inspect - Elevator #01 - 1F-FAB1-EL01,Complete,Elevator 1 - 1F -SUW-FAB1-EL01,,,,,,,,,,2025-09-19 08:00,2025-09-22 17:00,2025-09-19 08:00,2025-09-19 17:00,2025-11-20 17:00,2025-11-20 17:00,2025-12-05 17:00,2025-12-05 17:00,0,16,100
ZX-20485,SECAI TURNOVER FOR ACELERATION - Stair #01 - 1F-FAB1-ST01,Complete,Stair 1 - 1F -SUW-FAB1-ST01,,,,,,,,,,2025-06-27 08:00,2025-07-16 17:00,2025-06-27 08:00,2025-06-27 17:00,2025-11-20 17:00,2025-11-20 17:00,2025-12-05 17:00,2025-12-05 17:00,0,112,100
ZX-20495,SECAI TURNOVER FOR ACELERATION - Stair #01 - 1F-FAB1-ST01,Complete,Stair 1 - 1F -SUW-FAB1-ST01,,,,,,,,,,2025-06-27 08:00,2025-06-30 17:00,2025-06-27 08:00,2025-06-27 17:00,2025-11-20 17:00,2025-11-20 17:00,2025-12-05 17:00,2025-12-05 17:00,0,16,100
ZX-20505,SECAI TURNOVER FOR ACELERATION - Stair #01 - 1F-FAB1-ST01,Complete,Stair 1 - 1F -SUW-FAB1-ST01,,,,,,,,,,2025-06-27 08:00,2025-06-30 17:00,2025-06-27 08:00,2025-06-27 17:00,2025-11-20 17:00,2025-11-20 17:00,2025-12-05 17:00,2025-12-05 17:00,0,16,100
ZX-20515,Complete Drywall & Inspect - Stair #05 - 1F-FAB1-ST05,Complete,Stair 5 - 1F -SUW-FAB1-ST05,,,,,,,,,,2025-05-28 08:00,2025-06-16 17:00,2025-05-22 08:00,2025-09-02 17:00,2025-11-20 17:00,2025-11-20 17:00,2025-11-25 10:00,2025-11-25 10:00,0,112,100
ZX-20525,Complete Fire Caulk & Inspect - Stair #05 - 1F-FAB1-ST05,Complete,Stair 5 - 1F -SUW-FAB1-ST05,,,,,,,,,,2025-06-19 08:00,2025-06-20 17:00,2025-05-22 08:00,2025-09-02 17:00,2025-11-20 17:00,2025-11-20 17:00,2025-12-05 17:00,2025-12-05 17:00,0,16,100
ZX-20535,Complete Control Joint & Inspect - Stair #05 - 1F-FAB1-ST05,Complete,Stair 5 - 1F -SUW-FAB1-ST05,,,,,,,,,,2025-06-17 08:00,2025-06-18 17:00,2025-05-22 08:00,2025-09-02 08:00,2025-11-20 17:00,2025-11-20 17:00,2025-11-25 10:00,2025-11-25 10:00,0,16,100
ZX-20635,SECAI TOOK OVER FOR ACCELERATION - Complete Drywall & Inspect - Stair 22-1F-1FAB-ST22,Complete,Stair 22 - 1F -SUE-FAB1-ST22,,,,,,,,,,2025-06-24 08:00,2025-06-30 17:00,2025-06-27 08:00,2025-06-27 17:00,2025-11-20 17:00,2025-11-20 17:00,2025-12-05 17:00,2025-12-05 17:00,0,40,100
ZX-20645,Complete Fire Caulk & Inspect - Stair 22-1F-1FAB-ST22 SECAI TOOK OVER FOR ACCELERATION -,Complete,Stair 22 - 1F -SUE-FAB1-ST22,,,,,,,,,,2025-06-26 08:00,2025-06-27 17:00,2025-06-27 08:00,2025-06-27 17:00,2025-11-20 17:00,2025-11-20 17:00,2025-12-05 17:00,2025-12-05 17:00,0,16,100
ZX-20655,SECAI TOOK OVER FOR ACCELERATION - Complete Control Joint & Inspect - Stair 22-1F-1FAB-ST22,Complete,Stair 22 - 1F -SUE-FAB1-ST22,,,,,,,,,,2025-06-26 08:00,2025-06-27 17:00,2025-06-27 08:00,2025-06-27 17:00,2025-11-20 17:00,2025-11-20 17:00,2025-12-05 17:00,2025-12-05 17:00,0,16,100
ZX-20665,Complete Drywall & Inspect - Duct Shaft Vestibule - 1F-SUE-FAB116408,Complete,Duct Shaft Vestibule - 1F -SUE-FAB116408,,,,,,,,,,2025-09-01 08:00,2025-09-05 17:00,2025-09-01 08:00,2025-09-05 17:00,2025-11-20 17:00,2025-11-20 17:00,2025-12-05 17:00,2025-12-05 17:00,0,40,100
ZX-20675,Complete Fire Caulk & Inspect - Duct Shaft Vestibule - 1F-SUE-FAB116408,Complete,Duct Shaft Vestibule - 1F -SUE-FAB116408,,,,,,,,,,2025-09-26 08:00,2025-09-29 17:00,2025-09-26 08:00,2025-09-29 17:00,2025-11-20 17:00,2025-11-20 17:00,2025-12-05 17:00,2025-12-05 17:00,0,16,100
ZX-20785,Complete Drywall & Inspect - Manufacturing Storage 1-1F-SUE-FAB116522,Complete,Manufacturing Storage 1 - 1F -SUE-FAB116522,,,,,,,,,,2025-08-01 08:00,2025-08-07 17:00,2025-08-01 08:00,2025-08-07 17:00,2025-11-20 17:00,2025-11-20 17:00,2025-11-24 10:00,2025-11-24 10:00,0,40,100
ZX-20795,Complete Fire Caulk & Inspect - Manufacturing Storage 1-1F-SUE-FAB116522,Complete,Manufacturing Storage 1 - 1F -SUE-FAB116522,,,,,,,,,,2025-09-25 08:00,2025-09-26 17:00,2025-09-25 08:00,2025-09-26 17:00,2025-11-20 17:00,2025-11-20 17:00,2025-12-05 17:00,2025-12-05 17:00,0,16,100
ZX-20805,Complete Control Joint & Inspect - Manufacturing Storage 1-1F-SUE-FAB116522,Complete,Manufacturing Storage 1 - 1F -SUE-FAB116522,,,,,,,,,,2025-08-06 08:00,2025-08-07 17:00,2025-08-06 08:00,2025-08-07 17:00,2025-11-20 17:00,2025-11-20 17:00,2025-12-05 17:00,2025-12-05 17:00,0,16,100
STAIR.2810,IMPACT - SECAI CURB FIX - GOAL POST INSTALL - STAIR #36 - SUW - 26-L.5 - LEVEL U1-01,Complete,CONSTRUCTION,,INTERIOR STAIRS,LU1 - Underground Level,SUW - SUPPORT WEST,CONSTRUCTION,,,,,2025-09-16 07:00,2025-09-26 17:00,2025-09-16 07:00,2025-09-18 17:00,2025-11-20 17:00,2025-11-20 17:00,2025-12-05 17:00,2025-12-05 17:00,0,90,100
ZX-20815,SECAI TOOK OVER FOR ACCELERATION - Drywall & Inspect - Stair #01 - SUW - 2F - FAB1-ST01,Complete,Stair 1 - 2F -SUW-FAB1-ST01,,,,,,,,,,2025-05-16 08:00,2025-05-29 17:00,2025-05-16 08:00,2025-06-19 17:00,2025-11-20 17:00,2025-11-20 17:00,2025-11-25 10:00,2025-11-25 10:00,0,80,100
ZX-20825,SECAI TOOK OVER FOR ACCELERATION - Fire Caulk & Inspect - Stair #01 - SUW - 2F-FAB1-ST01,Complete,Stair 1 - 2F -SUW-FAB1-ST01,,,,,,,,,,2025-08-01 08:00,2025-08-04 17:00,2025-06-19 13:00,2025-06-19 15:00,2025-11-20 17:00,2025-11-20 17:00,2025-12-05 17:00,2025-12-05 17:00,0,16,100
ZX-20835,SECAI TOOK OVER FOR ACCELERATION - Control Joint & Inspect - Stair #01 - SUW - 2F-FAB1-ST01,Complete,Stair 1 - 2F -SUW-FAB1-ST01,,,,,,,,,,2025-07-28 08:00,2025-07-29 17:00,2025-06-19 08:00,2025-06-19 17:00,2025-11-20 17:00,2025-11-20 17:00,2025-12-05 17:00,2025-12-05 17:00,0,16,100
CN.SWB4.11040,IMPACT - KOVACH - BERRIDGE PANEL EDGE DETAIL - FABRICATION LEAD TIME - GL 32-33 - N LINE [SUP EXTERIOR WALL],Complete,SEB - 1,East Support Building,SUWN-5 - 30-33,EXTERIOR SKIN,,CONSTRUCTION,KOVACH,INSULATED METAL PANELS,JAMES LIVELY,,2025-10-21 07:00,2025-11-17 17:00,2025-10-10 07:00,2025-11-10 17:00,2025-11-20 17:00,2025-11-20 17:00,2025-11-13 07:00,2025-11-13 07:00,0,200,100
ZX-20845,SECAI TOOK OVER FOR ACCELERATION - Complete Drywall & Inspect - Stair 22 - 2F-SUE-FAB1-ST22,Complete,Stair 22 - 2F -SUE-FAB1-ST22,,,,,,,,,,2025-08-01 08:00,2025-08-14 17:00,2025-06-27 08:00,2025-06-27 17:00,2025-11-20 17:00,2025-11-20 17:00,2025-12-05 17:00,2025-12-05 17:00,0,80,100
ZX-20855,SECAI TOOK OVER FOR ACCELERATION - Complete Fire Caulk & Inspect - Stair 22 - 2F-SUE-FAB1-ST22,Complete,Stair 22 - 2F -SUE-FAB1-ST22,,,,,,,,,,2025-06-26 08:00,2025-06-27 17:00,2025-06-27 08:00,2025-06-27 17:00,2025-11-20 17:00,2025-11-20 17:00,2025-12-05 17:00,2025-12-05 17:00,0,16,100
ZX-20865,SECAI TOOK OVER FOR ACCELERATION - Complete Control Joint & Inspect - Stair 22 - 2F-SUE-FAB1-ST22,Complete,Stair 22 - 2F -SUE-FAB1-ST22,,,,,,,,,,2025-08-04 08:00,2025-08-05 17:00,2025-06-27 08:00,2025-06-27 17:00,2025-11-20 17:00,2025-11-20 17:00,2025-12-05 17:00,2025-12-05 17:00,0,16,100
ZX-20875,SECAI TOOK OVER FOR ACCELERATION - Complete Drywall & Inspect - Stair #01 - 3F-SUW-FAB1-ST01,Complete,Stair 1 - 3F -SUW-FAB1-ST01,,,,,,,,,,2025-06-17 08:00,2025-06-27 17:00,2025-06-27 08:00,2025-06-27 17:00,2025-11-20 17:00,2025-11-20 17:00,2025-12-05 17:00,2025-12-05 17:00,0,72,100
ZX-20885,SECAI TOOK OVER FOR ACCELERATION - Complete Fire Caulk & Inspect Stair #01 - 3F-SUW-FAB1-ST01,Complete,Stair 1 - 3F -SUW-FAB1-ST01,,,,,,,,,,2025-06-26 08:00,2025-06-27 17:00,2025-06-27 08:00,2025-06-27 17:00,2025-11-20 17:00,2025-11-20 17:00,2025-12-05 17:00,2025-12-05 17:00,0,16,100
ZX-20895,SECAI TOOK OVER FOR ACCELERATION - Complete Control Joint & Inspect - Stair #01 - 3F-SUW-FAB1-ST01,Complete,Stair 1 - 3F -SUW-FAB1-ST01,,,,,,,,,,2025-06-26 08:00,2025-06-27 17:00,2025-06-27 08:00,2025-06-27 17:00,2025-11-20 17:00,2025-11-20 17:00,2025-12-05 17:00,2025-12-05 17:00,0,16,100
ZX-20905,Complete Drywall & Inspect - Sub Clean Rm - 3F-SUW-FAB130206,Complete,SUB Clean Rm - 3F -SUW-FAB130206,,,,,,,,,,2025-09-10 08:00,2025-09-15 17:00,2025-09-10 08:00,2025-09-15 17:00,2025-11-20 17:00,2025-11-20 17:00,2025-12-05 17:00,2025-12-05 17:00,0,32,100
ZX-20915,Complete Fire Caulk & Inspect - Stair #01 - Sub Clean Rm - 3F-SUW-FAB130206,Complete,SUB Clean Rm - 3F -SUW-FAB130206,,,,,,,,,,2025-09-05 08:00,2025-09-08 17:00,2025-09-05 08:00,2025-09-08 17:00,2025-11-20 17:00,2025-11-20 17:00,2025-12-05 17:00,2025-12-05 17:00,0,16,100
ZX-20935,Complete Drywall & Inspect - Clean Vestibule - 3F-SUW-FAB130318,Complete,Clean Vestibule - 3F -SUW-FAB130318,,,,,,,,,,2025-09-10 08:00,2025-09-15 17:00,2025-09-10 08:00,2025-09-15 17:00,2025-11-20 17:00,2025-11-20 17:00,2025-12-05 17:00,2025-12-05 17:00,0,32,100
ZX-20945,Complete Fire Caulk & Inspect - Stair #01 - Sub Clean Rm - 3F-SUW-FAB130206,Complete,Clean Vestibule - 3F -SUW-FAB130318,,,,,,,,,,2025-09-12 08:00,2025-09-15 17:00,2025-09-12 08:00,2025-09-15 17:00,2025-11-20 17:00,2025-11-20 17:00,2025-12-05 17:00,2025-12-05 17:00,0,16,100
ZX-20965,SECAI TOOK OVER FOR ACCELERATION - Complete Drywall & Inspect - Stair 22 - 3F-SUE-FAB1-ST22,Complete,Stair 22 - 3F -SUE-FAB1-ST22,,,,,,,,,,2025-07-28 08:00,2025-07-30 17:00,2025-06-27 08:00,2025-06-27 17:00,2025-11-20 17:00,2025-11-20 17:00,2025-12-05 17:00,2025-12-05 17:00,0,24,100
ZX-20975,SECAI TOOK OVER FOR ACCELERATION - Complete Fire Caulk & Inspect - Stair 22 - 3F-SUE-FAB1-ST22,Complete,Stair 22 - 3F -SUE-FAB1-ST22,,,,,,,,,,2025-06-26 08:00,2025-06-27 17:00,2025-06-27 08:00,2025-06-27 17:00,2025-11-20 17:00,2025-11-20 17:00,2025-12-05 17:00,2025-12-05 17:00,0,16,100
ZX-20985,SECAI TOOK OVER FOR ACCELERATION - Complete Control Joint & Inspect - Stair 22 - 3F-SUE-FAB1-ST22,Complete,Stair 22 - 3F -SUE-FAB1-ST22,,,,,,,,,,2025-06-26 08:00,2025-06-27 17:00,2025-06-27 08:00,2025-06-27 17:00,2025-11-20 17:00,2025-11-20 17:00,2025-12-05 17:00,2025-12-05 17:00,0,16,100
INT.DH.2600,IMPACT - SECAI directive to hold up doors until 5/25 - LVL 3- FAB136401A Handed over to SECAI,Complete,CONSTRUCTION,,Doors & Hardware - INTERIOR,DOORS & HARDWARE INTERIOR,"Int. Doors Filter 1, 2, 3",PRE - CON / BUYOUT / IMPACTS,DOORS AND HARDWARE,,,,2025-01-13 07:00,2025-04-25 17:00,2025-04-15 07:00,2025-05-30 07:00,2025-11-20 17:00,2025-11-20 17:00,2025-12-04 07:00,2025-12-04 07:00,0,750,100
INT.DH.2610,IMPACT - Y-1434 - SUBMITTAL REVIEW & APPROVAL - LVL 3 - R0 - R1,Complete,CONSTRUCTION,,Doors & Hardware - INTERIOR,DOORS & HARDWARE INTERIOR,"Int. Doors Filter 1, 2, 3",PRE - CON / BUYOUT / IMPACTS,DOORS AND HARDWARE,,,,2025-01-13 07:00,2025-04-25 17:00,2025-01-14 00:00,2025-03-18 17:00,2025-11-20 17:00,2025-11-20 17:00,2025-11-19 07:00,2025-11-19 07:00,0,750,100
ZX-20995,Complete Drywall & Inspect - Duct Shaft - L4 - SUW-FAB140102,Complete,Duct Shaft - 4F -SUW-FAB140102,,,,,,,,,,2025-09-04 08:00,2025-09-08 17:00,2025-09-04 08:00,2025-09-08 17:00,2025-11-20 17:00,2025-11-20 17:00,2025-12-03 08:00,2025-12-03 08:00,0,24,100
ZX-21005,Complete Fire Caulk & Inspect - Duct Shaft - L4 - SUW-FAB140102,Not Started,Duct Shaft - 4F -SUW-FAB140102,,,,,,,,,,2025-12-05 08:00,2025-12-09 17:00,,,2025-12-05 08:00,2025-12-09 17:00,2025-12-03 08:00,2025-12-05 17:00,24,24,0
ZX-21025,SECAI TOOK OVER FOR ACCELERATION - Complete Drywall & Inspect - Stair #01 - 4F-SUW-FAB1-ST01,Complete,Stair 1 - 4F -SUW-FAB1-ST01,,,,,,,,,,2025-06-25 08:00,2025-06-27 17:00,2025-06-27 08:00,2025-06-27 17:00,2025-11-20 17:00,2025-11-20 17:00,2025-12-05 17:00,2025-12-05 17:00,0,24,100
ZX-21035,SECAI TOOK OVER FOR ACCELERATION - Complete Fire Caulk & Inspect - Stair #01 - 4F-SUW-FAB1-ST01,Complete,Stair 1 - 4F -SUW-FAB1-ST01,,,,,,,,,,2025-06-25 08:00,2025-06-27 17:00,2025-06-25 08:00,2025-06-27 17:00,2025-11-20 17:00,2025-11-20 17:00,2025-12-05 17:00,2025-12-05 17:00,0,24,100
ZX-21045,SECAI TOOK OVER FOR ACCELERATION - Complete Control Joint & Inspect - Stair #01 - 4F-SUW-FAB1-ST01,Complete,Stair 1 - 4F -SUW-FAB1-ST01,,,,,,,,,,2025-06-25 08:00,2025-06-27 17:00,2025-06-27 08:00,2025-06-27 17:00,2025-11-20 17:00,2025-11-20 17:00,2025-12-05 17:00,2025-12-05 17:00,0,24,100
ZX-21055,Complete Drywall & Inspect - Stair #05 - 4F-SUW-FAB1-ST05,Complete,Stair 5 - 4F -SUW-FAB1-ST05,,,,,,,,,,2025-07-09 08:00,2025-07-29 17:00,2025-06-23 08:00,2025-06-30 16:00,2025-11-20 17:00,2025-11-20 17:00,2025-11-25 10:00,2025-11-25 10:00,0,120,100
ZX-21065,Complete Fire Caulk & Inspect - Stair #05 - 4F-SUW-FAB1-ST05,Complete,Stair 5 - 4F -SUW-FAB1-ST05,,,,,,,,,,2025-07-30 08:00,2025-08-04 17:00,2025-06-30 08:00,2025-07-01 16:00,2025-11-20 17:00,2025-11-20 17:00,2025-12-05 17:00,2025-12-05 17:00,0,32,100
ZX-21075,Complete Control Joint & Inspect - Stair #05 - 4F-SUW-FAB1-ST05,Complete,Stair 5 - 4F -SUW-FAB1-ST05,,,,,,,,,,2025-06-27 08:00,2025-07-02 17:00,2025-06-27 08:00,2025-06-30 16:00,2025-11-20 17:00,2025-11-20 17:00,2025-11-25 10:00,2025-11-25 10:00,0,32,100
ZX-21085,Complete Drywall & Inspect - Duct Shaft - 4F-SUE-FAB146109,Complete,Duct Shaft - 4F - SUE-FAB146109,,,,,,,,,,2025-07-09 08:00,2025-07-29 17:00,2025-06-23 08:00,2025-06-30 16:00,2025-11-20 17:00,2025-11-20 17:00,2025-12-05 17:00,2025-12-05 17:00,0,120,100
ZX-21095,Complete Fire Caulk & Inspect - Duct Shaft - 4F-SUE-FAB146109,Complete,Duct Shaft - 4F - SUE-FAB146109,,,,,,,,,,2025-07-30 08:00,2025-08-04 17:00,2025-06-30 08:00,2025-07-01 16:00,2025-11-20 17:00,2025-11-20 17:00,2025-12-05 17:00,2025-12-05 17:00,0,32,100
ZX-21105,Complete Control Joint & Inspect - Duct Shaft - 4F-SUE-FAB146109,Complete,Duct Shaft - 4F - SUE-FAB146109,,,,,,,,,,2025-06-27 08:00,2025-07-02 17:00,2025-06-27 08:00,2025-06-30 16:00,2025-11-20 17:00,2025-11-20 17:00,2025-12-05 17:00,2025-12-05 17:00,0,32,100
ZX-21115,Complete Drywall & Inspect - Stair 22 - 4F-SUE-FAB1-ST22,Complete,Stair 22 - 4F - SUE-FAB1-ST22,,,,,,,,,,2025-07-09 08:00,2025-07-29 17:00,2025-06-23 08:00,2025-06-30 16:00,2025-11-20 17:00,2025-11-20 17:00,2025-11-25 10:00,2025-11-25 10:00,0,120,100
ZX-21125,Complete Fire Caulk & Inspect - Stair 22 - 4F-SUE-FAB1-ST22,Complete,Stair 22 - 4F - SUE-FAB1-ST22,,,,,,,,,,2025-07-30 08:00,2025-08-04 17:00,2025-06-30 08:00,2025-07-01 16:00,2025-11-20 17:00,2025-11-20 17:00,2025-12-05 17:00,2025-12-05 17:00,0,32,100
ZX-21135,Complete Control Joint & Inspect - Stair #22 - 4F-SUE-FAB1-ST22,Complete,Stair 22 - 4F - SUE-FAB1-ST22,,,,,,,,,,2025-06-27 08:00,2025-07-02 17:00,2025-06-27 08:00,2025-06-30 16:00,2025-11-20 17:00,2025-11-20 17:00,2025-11-25 10:00,2025-11-25 10:00,0,32,100
ZX-21145,Complete Drywall & Inspect - Duct Shaft - 4F-SUE-FAB146504,Complete,Duct Shaft - 4F - SUE-FAB146504,,,,,,,,,,2025-07-09 08:00,2025-07-29 17:00,2025-06-23 08:00,2025-06-30 16:00,2025-11-20 17:00,2025-11-20 17:00,2025-12-05 17:00,2025-12-05 17:00,0,120,100
ZX-21155,Complete Fire Caulk & Inspect - Duct Shaft - 4F-SUE-FAB146504,Complete,Duct Shaft - 4F - SUE-FAB146504,,,,,,,,,,2025-07-30 08:00,2025-08-04 17:00,2025-06-30 08:00,2025-07-01 16:00,2025-11-20 17:00,2025-11-20 17:00,2025-12-05 17:00,2025-12-05 17:00,0,32,100
ZX-21165,Complete Control Joint & Inspect - Duct Shaft - 4F-SUE-FAB146504,Complete,Duct Shaft - 4F - SUE-FAB146504,,,,,,,,,,2025-06-27 08:00,2025-07-02 17:00,2025-06-27 08:00,2025-06-30 16:00,2025-11-20 17:00,2025-11-20 17:00,2025-12-05 17:00,2025-12-05 17:00,0,32,100
ZX-21175,Complete Drywall & Inspect - Stair 18 - 4F-SUE-FAB1-ST18,Complete,Stair 18 - 4F - SUE-FAB1-ST18,,,,,,,,,,2025-07-09 08:00,2025-07-29 17:00,2025-06-23 08:00,2025-06-30 16:00,2025-11-20 17:00,2025-11-20 17:00,2025-11-24 08:00,2025-11-24 08:00,0,120,100
ZX-21185,Complete Fire Caulk & Inspect - Stair 18 - 4F-SUE-FAB1-ST18,Complete,Stair 18 - 4F - SUE-FAB1-ST18,,,,,,,,,,2025-07-30 08:00,2025-08-04 17:00,2025-06-30 08:00,2025-07-01 16:00,2025-11-20 17:00,2025-11-20 17:00,2025-12-05 17:00,2025-12-05 17:00,0,32,100
ZX-21195,Complete Control Joint & Inspect - Stair #18 - 4F-SUE-FAB1-ST18,Complete,Stair 18 - 4F - SUE-FAB1-ST18,,,,,,,,,,2025-06-27 08:00,2025-07-02 17:00,2025-06-27 08:00,2025-06-30 16:00,2025-11-20 17:00,2025-11-20 17:00,2025-11-24 08:00,2025-11-24 08:00,0,32,100
ZX-21205,IMPACT - SECAI Concrete Curb Design - Janitor Rm-1F-SUW-FAB110214 - RFI 1832,Complete,Janitor Rm - 1F -SUW-FAB110214,,,,,,,,,,2025-09-09 08:00,2025-09-29 17:00,2025-08-11 08:00,2025-09-25 17:00,2025-11-20 17:00,2025-11-20 17:00,2025-11-25 10:00,2025-11-25 10:00,0,120,100
ZX-21215,IMPACT - SECAI SCAFFOLD LIMIT -Electrical Rm - 2F-SUW-FAB120401,Active,Electrical Rm - 2F -SUW-FAB120401,,,,,,,,,,2025-07-17 08:00,2025-08-13 17:00,2025-07-17 08:00,,2025-11-21 08:00,2025-11-27 17:00,2025-12-01 08:00,2025-12-05 17:00,40,160,0
ZX-21225,IMPACT - SECAI ROOM ENERGIZATION PERMIT APPROVAL - Battery Rm 1 - 2F-SUW-FAB120315,Complete,Battery Rm 1- 2F -SUW-FAB120315,,,,,,,,,,2025-07-17 08:00,2025-08-13 17:00,2025-07-17 08:00,2025-09-02 17:00,2025-11-20 17:00,2025-11-20 17:00,2025-11-24 10:00,2025-11-24 10:00,0,160,100
ZX-21235,IMPACT - SECAI SCAFFOLD LIMIT - Battery Rm 1 - 2F-SUW-FAB120315,Complete,Battery Rm 1- 2F -SUW-FAB120315,,,,,,,,,,2025-07-17 08:00,2025-08-13 17:00,2025-07-17 08:00,2025-09-02 17:00,2025-11-20 17:00,2025-11-20 17:00,2025-11-24 10:00,2025-11-24 10:00,0,160,100
ZX-21245,IMPACT - SECAI ROOM ENERGIZATION PERMIT APPROVAL - Battery Rm - 2F-SUW-FAB120501,Complete,Battery Rm 3 - 2F -SUW-FAB120501,,,,,,,,,,2025-07-17 08:00,2025-08-13 17:00,2025-07-17 08:00,2025-09-04 17:00,2025-11-20 17:00,2025-11-20 17:00,2025-11-25 10:00,2025-11-25 10:00,0,160,100
ZX-21255,IMPACT - SECAI SCAFFOLD LIMIT - Battery Rm - 2F-SUW-FAB120501,Complete,Battery Rm 3 - 2F -SUW-FAB120501,,,,,,,,,,2025-07-17 08:00,2025-08-13 17:00,2025-07-17 08:00,2025-09-04 17:00,2025-11-20 17:00,2025-11-20 17:00,2025-11-25 10:00,2025-11-25 10:00,0,160,100
ZX-21265,IMPACT - SECAI ROOM ENERGIZATION PERMIT APPROVAL - Battery Rm - 3F-SUW-FAB130501,Active,Battery Rm - 3F -SUW-FAB130501,,,,,,,,,,2025-07-17 08:00,2025-08-13 17:00,2025-07-17 08:00,,2025-11-21 08:00,2025-11-26 17:00,2025-12-02 08:00,2025-12-05 17:00,32,160,0
ZX-21275,IMPACT - SECAI SCAFFOLD LIMIT - Battery Rm - 3F-SUW-FAB130501,Active,Battery Rm - 3F -SUW-FAB130501,,,,,,,,,,2025-07-17 08:00,2025-08-13 17:00,2025-07-17 08:00,,2025-11-21 08:00,2025-11-26 17:00,2025-12-02 08:00,2025-12-05 17:00,32,160,0
ZX-21285,IMPACT - SECAI ROOM ENERGIZATION PERMIT APPROVAL -Electrical Rm - 3F-SUE-FAB136302 SECAI TOFA,Complete,Electrical Rm - 3F -SUE-FAB136302,,,,,,,,,,2025-07-17 08:00,2025-08-13 17:00,2025-07-14 08:00,2025-11-05 17:00,2025-11-20 17:00,2025-11-20 17:00,2025-12-05 17:00,2025-12-05 17:00,0,160,100
ZX-21295,IMPACT - SECAI SCAFFOLD LIMIT -Electrical Rm - 3F-SUE-FAB136302 SECAI TOOK OVER FOR ACCELERATION,Complete,Electrical Rm - 3F -SUE-FAB136302,,,,,,,,,,2025-07-17 08:00,2025-08-13 17:00,2025-07-14 08:00,2025-11-05 17:00,2025-11-20 17:00,2025-11-20 17:00,2025-12-05 17:00,2025-12-05 17:00,0,160,100
ZX-21305,IMPACT - SECAI ROOM ENERGIZATION PERMIT APPROVAL - Battery Rm 2 - 2F-SUW-FAB120314,Complete,Battery Rm 2 - 2F -SUW-FAB120314,,,,,,,,,,2025-07-17 08:00,2025-08-13 17:00,2025-07-17 08:00,2025-09-04 08:00,2025-11-20 17:00,2025-11-20 17:00,2025-11-25 10:00,2025-11-25 10:00,0,160,100
ZX-21315,IMPACT - SECAI SCAFFOLD LIMIT - Battery Rm 2 - 2F-SUW-FAB120314,Complete,Battery Rm 2 - 2F -SUW-FAB120314,,,,,,,,,,2025-07-17 08:00,2025-08-13 17:00,2025-07-17 08:00,2025-09-04 17:00,2025-11-20 17:00,2025-11-20 17:00,2025-11-25 10:00,2025-11-25 10:00,0,160,100
ZX-21325,IMPACT - SECAI ROOM ENERGIZATION PERMIT APPROVAL -Electrical RM - 3F-SUW-FAB130402,Complete,Electrical Rm - 3F -SUW-FAB130402,,,,,,,,,,2025-07-17 08:00,2025-08-13 17:00,2025-07-14 08:00,2025-10-20 08:00,2025-11-20 17:00,2025-11-20 17:00,2025-12-05 17:00,2025-12-05 17:00,0,160,100
ZX-21335,IMPACT - SECAI SCAFFOLD LIMIT -Electrical RM - 3F-SUW-FAB130402,Complete,Electrical Rm - 3F -SUW-FAB130402,,,,,,,,,,2025-07-17 08:00,2025-08-13 17:00,2025-07-14 08:00,2025-10-20 08:00,2025-11-20 17:00,2025-11-20 17:00,2025-12-05 17:00,2025-12-05 17:00,0,160,100
ZX-21345,IMPACT - SECAI ROOM ENERGIZATION PERMIT APPROVAL - Battery Rm 2 - 3F-SUE-FAB136402,Complete,Battery Rm 2 - 3F -SUE-FAB136402,,,,,,,,,,2025-07-17 08:00,2025-08-13 17:00,2025-07-17 08:00,2025-09-05 17:00,2025-11-20 17:00,2025-11-20 17:00,2025-12-05 17:00,2025-12-05 17:00,0,160,100
ZX-21355,IMPACT - SECAI SCAFFOLD LIMIT - Battery Rm 2 - 3F-SUE-FAB136402,Complete,Battery Rm 2 - 3F -SUE-FAB136402,,,,,,,,,,2025-07-17 08:00,2025-08-13 17:00,2025-07-17 08:00,2025-09-05 17:00,2025-11-20 17:00,2025-11-20 17:00,2025-12-05 17:00,2025-12-05 17:00,0,160,100
CN.BB5.ST.1430,RFI 10571 - GL 33 - L4E TROUGH PARAPET - EAST & WEST,Complete,Area B-5,North Areas (Team B -Gridlines 17-33),GRIDLINE 33,L4 - SUP Roof - FAB Roof,GL33 EXTERIOR AREA (FAB EAST) - D-G,CONSTRUCTION,WATER PROOFING GL33,DRYWALL,JAMES LEE,SOMD / Roofing / Waterproofing,2025-08-26 07:00,2025-08-29 17:00,2025-04-04 07:00,2025-04-25 17:00,2025-11-20 17:00,2025-11-20 17:00,2025-12-01 07:00,2025-12-01 07:00,0,40,100
CN.BB5.ST.1440,"RFI 10571 LACKING DESIGN DETAIL - DISCUSSIONS W SECAI SAMOO (need IMP, fram removed) - GL 33 - L4E TROUGH PARAPET - EAST",Complete,Area B-5,North Areas (Team B -Gridlines 17-33),GRIDLINE 33,L4 - SUP Roof - FAB Roof,GL33 EXTERIOR AREA (FAB EAST) - D-G,CONSTRUCTION,WATER PROOFING GL33,DRYWALL,JAMES LEE,SOMD / Roofing / Waterproofing,2025-08-26 07:00,2025-08-29 17:00,2025-04-28 07:00,2025-07-08 17:00,2025-11-20 17:00,2025-11-20 17:00,2025-12-01 07:00,2025-12-01 07:00,0,40,100
CN.BB5.ST.1450,CONFIRMING RFI 1800 - SUBMITTED & RESPONDED - GL 33 - L4E TROUGH PARAPET - EAST & WEST,Complete,Area B-5,North Areas (Team B -Gridlines 17-33),GRIDLINE 33,L4 - SUP Roof - FAB Roof,GL33 EXTERIOR AREA (FAB EAST) - D-G,CONSTRUCTION,WATER PROOFING GL33,DRYWALL,JAMES LEE,SOMD / Roofing / Waterproofing,2025-08-26 07:00,2025-08-29 17:00,2025-07-09 07:00,2025-07-25 17:00,2025-11-20 17:00,2025-11-20 17:00,2025-12-01 07:00,2025-12-01 07:00,0,40,100
CN.BB5.ST.1460,YATES & TRADES PRICING - SECAI APPROVAL - SCOPE TURNOVER - GL 33 - L4E TROUGH PARAPET - EAST & WEST,Complete,Area B-5,North Areas (Team B -Gridlines 17-33),GRIDLINE 33,L4 - SUP Roof - FAB Roof,GL33 EXTERIOR AREA (FAB EAST) - D-G,CONSTRUCTION,WATER PROOFING GL33,DRYWALL,JAMES LEE,SOMD / Roofing / Waterproofing,2025-08-26 07:00,2025-08-29 17:00,2025-07-28 07:00,2025-08-08 17:00,2025-11-20 17:00,2025-11-20 17:00,2025-12-01 07:00,2025-12-01 07:00,0,40,100
CN.BB5.ST.1470,SECAI INSTALL FRAMING SHEATHING (excl Handrail) - GL 33 - L4E TROUGH PARAPET - EAST & WEST,Complete,Area B-5,North Areas (Team B -Gridlines 17-33),GRIDLINE 33,L4 - SUP Roof - FAB Roof,GL33 EXTERIOR AREA (FAB EAST) - D-G,CONSTRUCTION,WATER PROOFING GL33,DRYWALL,JAMES LEE,SOMD / Roofing / Waterproofing,2025-08-26 07:00,2025-08-29 17:00,2025-08-11 07:00,2025-09-22 17:00,2025-11-20 17:00,2025-11-20 17:00,2025-12-01 07:00,2025-12-01 07:00,0,40,100
CN.BB5.ST.1480,YATES - WATERPROOFING REWORK - PARAPET CAP INSTALL - GL 33 - L4E TROUGH PARAPET - EAST & WEST,Complete,Area B-5,North Areas (Team B -Gridlines 17-33),GRIDLINE 33,L4 - SUP Roof - FAB Roof,GL33 EXTERIOR AREA (FAB EAST) - D-G,CONSTRUCTION,WATER PROOFING GL33,DRYWALL,JAMES LEE,SOMD / Roofing / Waterproofing,2025-10-02 07:00,2025-10-08 17:00,2025-09-19 07:00,2025-09-30 15:00,2025-11-20 17:00,2025-11-20 17:00,2025-12-05 17:00,2025-12-05 17:00,0,50,100
FAB110301B-03,INSTALL DOOR FRAMES - FAB110301B,Not Started,Elevator Hall 3 - 1F -SUW-FAB110302,,,,,,,,,,2025-12-08 08:00,2025-12-09 17:00,,,2025-12-08 08:00,2025-12-09 17:00,2025-11-25 08:00,2025-11-26 17:00,16,16,0
FAB110301B-05,PAINT & PROTECT DOORS & FRAMES - FAB110301B,Not Started,Elevator Hall 3 - 1F -SUW-FAB110302,,,,,,,,,,2026-02-16 08:00,2026-02-17 17:00,,,2026-02-16 08:00,2026-02-17 17:00,2025-12-04 08:00,2025-12-05 17:00,16,16,0
FAB110508C-03,INSTALL DOOR FRAMES - FAB110508C,Not Started,Elevator Hall 5 - 1F -SUW-FAB110507,,,,,,,,,,2025-12-12 08:00,2025-12-15 17:00,,,2025-12-12 08:00,2025-12-15 17:00,2025-11-25 08:00,2025-11-26 17:00,16,16,0
FAB110508C-05,PAINT & PROTECT DOORS & FRAMES - FAB110508C,Not Started,Elevator Hall 5 - 1F -SUW-FAB110507,,,,,,,,,,2026-02-16 08:00,2026-02-17 17:00,,,2026-02-16 08:00,2026-02-17 17:00,2025-12-04 08:00,2025-12-05 17:00,16,16,0
FAB110114A-03,INSTALL DOOR FRAMES - FAB110114A,Not Started,Elevator Hall 1 - 1F -SUW-FAB110113,,,,,,,,,,2025-11-21 08:00,2025-11-24 17:00,,,2025-11-21 08:00,2025-11-24 17:00,2025-11-25 08:00,2025-11-26 17:00,16,16,0
FAB110114A-05,PAINT & PROTECT DOORS & FRAMES - FAB110114A,Not Started,Elevator Hall 1 - 1F -SUW-FAB110113,,,,,,,,,,2026-02-16 08:00,2026-02-17 17:00,,,2026-02-16 08:00,2026-02-17 17:00,2025-12-04 08:00,2025-12-05 17:00,16,16,0
CN.SWA4.7470,IMPACT - STOP WORK SECAI/ JACOBS DESIGN CHANGE - HIGH TEMP PIPE PENETRATING - N30-31 TRESTLE B INFILL,Complete,CONSTRUCTION,,SUWN-5 - 30-33,EXTERIOR SKIN,,CONSTRUCTION,KOVACH,INSULATED METAL PANELS,,,2025-09-05 07:00,2025-09-09 17:00,2025-08-25 07:00,2025-09-11 17:00,2025-11-20 17:00,2025-11-20 17:00,2025-11-04 07:00,2025-11-04 07:00,0,30,100
CN.SWA4.7490,IMPACT - SECAI PRICING APPROVAL - DESIGN CHANGE - HIGH TEMP PIPE - N30-31 TRESTLE B INFILL,Complete,CONSTRUCTION,,SUWN-5 - 30-33,EXTERIOR SKIN,,CONSTRUCTION,KOVACH,INSULATED METAL PANELS,,,2025-09-15 07:00,2025-09-19 17:00,2025-08-25 07:00,2025-09-11 17:00,2025-11-20 17:00,2025-11-20 17:00,2025-11-04 07:00,2025-11-04 07:00,0,50,100
CN.SWA4.7500,IMPACT - DETAILING & LEAD TIME - DESIGN CHANGE - HIGH TEMP PIPE - N30-31 TRESTLE B INFILL,Complete,CONSTRUCTION,,SUWN-5 - 30-33,EXTERIOR SKIN,,CONSTRUCTION,KOVACH,INSULATED METAL PANELS,,,2025-09-22 07:00,2025-10-03 17:00,2025-09-10 07:00,2025-09-18 07:00,2025-11-20 17:00,2025-11-20 17:00,2025-11-04 07:00,2025-11-04 07:00,0,100,100
CN.SWA4.7520,IMPACT - MKM FRAMING & SHEATHING COLD FRAME & INSULATION - GL 19-20 - A LINE - TRESTLE INFILL,Complete,CONSTRUCTION,,SUEN-1 - 19-22,EXTERIOR SKIN,,CONSTRUCTION,KOVACH,INSULATED METAL PANELS,,,2025-10-27 07:00,2025-11-07 17:00,2025-10-27 07:00,2025-11-05 17:00,2025-11-21 17:00,2025-11-21 17:00,2025-11-13 07:00,2025-11-13 07:00,0,100,100
CN.SWA4.7530,IMPACT - STOP WORK SECAI/ JACOBS DESIGN CHANGE - HIGH TEMP PIPE PENETRATING - GL 19-20 - A LINE - TRESTLE INFILL,Complete,CONSTRUCTION,,SUEN-1 - 19-22,EXTERIOR SKIN,,CONSTRUCTION,KOVACH,INSULATED METAL PANELS,,,2025-10-21 07:00,2025-10-23 17:00,2025-09-29 07:00,2025-10-10 17:00,2025-11-21 17:00,2025-11-21 17:00,2025-11-13 07:00,2025-11-13 07:00,0,30,100
CN.SWA4.7540,IMPACT - MKMARLOW BIM & PRICING - SECAI/ JACOBS DESIGN CHANGE - HIGH TEMP PIPE - GL 19-20 - A LINE - TRESTLE INFILL,Complete,CONSTRUCTION,,SUEN-1 - 19-22,EXTERIOR SKIN,,CONSTRUCTION,KOVACH,INSULATED METAL PANELS,,,2025-10-24 07:00,2025-10-27 17:00,2025-10-10 07:00,2025-10-16 12:00,2025-11-21 17:00,2025-11-21 17:00,2025-11-13 07:00,2025-11-13 07:00,0,20,100
CN.SWA4.7550,IMPACT - SECAI PRICING APPROVAL - DESIGN CHANGE - HIGH TEMP PIPE - GL 19-20 - A LINE - TRESTLE INFILL,Complete,CONSTRUCTION,,SUEN-1 - 19-22,EXTERIOR SKIN,,CONSTRUCTION,KOVACH,INSULATED METAL PANELS,,,2025-10-28 07:00,2025-10-28 17:00,2025-10-16 07:00,2025-10-16 17:00,2025-11-21 17:00,2025-11-21 17:00,2025-11-13 07:00,2025-11-13 07:00,0,10,100
CN.AB.AR.8760,IMPACT - SECAI PLACED TOUCHUP ON HOLD (trade damage worry) - SHAFT & DOOR FRONTS - ELEVATOR 01B,Complete,SWA - 5,West Support Building,FIZ 2 / SUWS 5  (GL6-1) - GL J - N - DATA CENTER 1,,ELEVATOR,CONSTRUCTION,W&W,TBD Architectural Finishes,,INTERIORS,2025-08-25 07:00,2025-09-04 17:00,2025-08-02 07:00,2025-08-12 13:00,2025-11-20 17:00,2025-11-20 17:00,2025-12-05 17:00,2025-12-05 17:00,0,80,100
ZX-21365,IMPACT - SECAI /ELEVATOR NOT TURNED OVER - Elevator 1 - 1F-FAB1-EL01,Complete,Elevator 1 - 1F -SUW-FAB1-EL01,,,,,,,,,,2025-09-09 08:00,2025-09-15 17:00,2025-09-09 08:00,2025-09-15 17:00,2025-11-20 17:00,2025-11-20 17:00,2025-12-05 17:00,2025-12-05 17:00,0,40,100
ZX-21375,Complete Control Joint & Inspect-Duct Shaft - 1F-SUW-FAB110103,Complete,Duct Shaft - 1F -SUW-FAB110103,,,,,,,,,,2025-08-22 08:00,2025-08-26 17:00,2025-08-22 08:00,2025-08-27 08:00,2025-11-20 17:00,2025-11-20 17:00,2025-11-24 08:00,2025-11-24 08:00,0,24,100
ZX-21385,IMPACT - SECAI RAISED FLOOR AND CEILING -I/O Rm-1F-SUW-FAB110313 - SECAI TOOK OVER FOR ACCELERATION,Complete,I/O Rm - 1F -SUW-FAB110313,,,,,,,,,,2025-08-01 08:00,2025-08-04 17:00,2025-08-01 08:00,2025-08-15 08:00,2025-11-20 17:00,2025-11-20 17:00,2025-12-05 17:00,2025-12-05 17:00,0,16,100
FAB112103E-03,INSTALL DOOR FRAMES - FAB112103E,Complete,LAB AIRLOCK/SMOCK- 1F -FIZ-FAB112103,,,,,,,,,,2025-08-07 08:00,2025-08-07 17:00,2025-08-20 00:00,2025-08-20 17:00,2025-11-20 17:00,2025-11-20 17:00,2025-11-25 08:00,2025-11-25 08:00,0,8,100
FAB130117A-03,INSTALL DOOR FRAMES - FAB130117A,Complete,FA Lab - 3F -SUW-FAB130117,,,,,,,,,,2025-08-21 08:00,2025-08-21 17:00,2025-08-21 08:00,2025-08-21 17:00,2025-11-20 17:00,2025-11-20 17:00,2025-11-25 08:00,2025-11-25 08:00,0,8,100
FAB112156A-04,INSTALL DOOR & HARDWARE - FAB112156A,Active,PCS Monitoring Rm - 1F - FAB-FAB112155,,,,,,,,,,2025-11-06 08:00,2025-11-12 17:00,2025-11-06 08:00,,2025-11-21 08:00,2025-11-27 17:00,2025-11-28 08:00,2025-12-04 17:00,40,40,0
FAB130206D-02,SECAI ROUGH IN/SECURITY - FAB130206D,Complete,SUB Clean Rm. Airlock - 3F -SUW-FAB130315,,,,,,,,,,2025-05-30 08:00,2025-05-30 17:00,2025-05-30 08:00,2025-05-30 17:00,2025-11-20 17:00,2025-11-20 17:00,2025-11-25 10:00,2025-11-25 10:00,0,8,100
FAB130206D-03,INSTALL DOOR FRAMES - FAB130206D,Complete,SUB Clean Rm. Airlock - 3F -SUW-FAB130315,,,,,,,,,,2025-05-30 08:00,2025-05-30 17:00,2025-05-30 08:00,2025-05-30 17:00,2025-11-20 17:00,2025-11-20 17:00,2025-11-25 10:00,2025-11-25 10:00,0,8,100
FAB130206D-04,INSTALL DOOR & HARDWARE - FAB130206D,Active,SUB Clean Rm. Airlock - 3F -SUW-FAB130315,,,,,,,,,,2025-09-25 08:00,2025-10-01 17:00,2025-09-25 08:00,,2025-11-21 08:00,2025-11-27 17:00,2025-11-25 10:00,2025-12-02 10:00,40,40,0
FAB130206D-05,PAINT & PROTECT DOORS & FRAMES -  FAB130206D,Not Started,SUB Clean Rm. Airlock - 3F -SUW-FAB130315,,,,,,,,,,2026-02-16 08:00,2026-02-19 15:00,,,2026-02-16 08:00,2026-02-19 15:00,2025-12-02 10:00,2025-12-05 17:00,30,30,0
FAB134105B-03,INSTALL DOOR FRAMES - FAB134105B,Complete,S/L Entrance - 3F -FIZ-FAB134105,,,,,,,,,,2025-08-11 13:00,2025-08-12 12:00,2025-08-01 13:00,2025-08-12 12:00,2025-11-20 17:00,2025-11-20 17:00,2025-11-25 10:00,2025-11-25 10:00,0,8,100
FAB134105B-04,INSTALL DOOR & HARDWARE - FAB134105B,Active,S/L Entrance - 3F -FIZ-FAB134105,,,,,,,,,,2025-08-15 08:00,2025-08-21 17:00,2025-08-15 08:00,,2025-11-21 08:00,2025-11-27 17:00,2025-11-25 10:00,2025-12-02 10:00,40,40,0
FAB134105B-05,PAINT & PROTECT DOORS & FRAMES - FAB134105B,Not Started,S/L Entrance - 3F -FIZ-FAB134105,,,,,,,,,,2026-02-16 08:00,2026-02-19 15:00,,,2026-02-16 08:00,2026-02-19 15:00,2025-12-02 10:00,2025-12-05 17:00,30,30,0
FAB1-ST05A-01,IMPACT - INSTALL/REWORK DRYWALL FRAMING AROUND DOORS - FAB1-ST05A,Complete,Stair 5 - 1F -SUW-FAB1-ST05,,,,,,,,,,2025-08-07 08:00,2025-08-08 17:00,2025-08-07 08:00,2025-08-08 17:00,2025-11-20 17:00,2025-11-20 17:00,2025-11-25 10:00,2025-11-25 10:00,0,16,100
FAB1-ST05A-02,SECAI ROUGH IN/SECURITY - FAB1-ST05A,Complete,Stair 5 - 1F -SUW-FAB1-ST05,,,,,,,,,,2025-08-11 08:00,2025-08-11 17:00,2025-08-11 08:00,2025-08-11 17:00,2025-11-20 17:00,2025-11-20 17:00,2025-11-25 10:00,2025-11-25 10:00,0,8,100
FAB1-ST05A-03,INSTALL DOOR FRAMES - FAB1-ST05A,Complete,Stair 5 - 1F -SUW-FAB1-ST05,,,,,,,,,,2025-08-11 08:00,2025-08-11 17:00,2025-08-11 08:00,2025-08-11 17:00,2025-11-20 17:00,2025-11-20 17:00,2025-11-25 10:00,2025-11-25 10:00,0,8,100
FAB1-ST05A-04,INSTALL DOOR & HARDWARE - FAB1-ST05A,Active,Stair 5 - 1F -SUW-FAB1-ST05,,,,,,,,,,2025-10-17 08:00,2025-10-23 17:00,2025-10-17 08:00,,2025-11-21 08:00,2025-11-27 17:00,2025-11-25 10:00,2025-12-02 10:00,40,40,0
FAB1-ST05A-05,PAINT & PROTECT DOORS & FRAMES - FAB1-ST05A,Not Started,Stair 5 - 1F -SUW-FAB1-ST05,,,,,,,,,,2026-02-16 08:00,2026-02-19 15:00,,,2026-02-16 08:00,2026-02-19 15:00,2025-12-02 10:00,2025-12-05 17:00,30,30,0
FAB1-ST18B-01,IMPACT - INSTALL/REWORK DRYWALL FRAMING AROUND DOORS - FAB1-ST18B,Complete,Stair 18 - 2F -SUE-FAB1-ST18,,,,,,,,,,2025-08-01 08:00,2025-08-04 17:00,2025-08-01 08:00,2025-08-04 17:00,2025-11-20 17:00,2025-11-20 17:00,2025-11-25 10:00,2025-11-25 10:00,0,16,100
FAB1-ST18B-02,SECAI ROUGH IN/SECURITY - FAB1-ST18B,Complete,Stair 18 - 2F -SUE-FAB1-ST18,,,,,,,,,,2025-08-04 08:00,2025-08-04 17:00,2025-08-04 08:00,2025-08-04 17:00,2025-11-20 17:00,2025-11-20 17:00,2025-11-25 10:00,2025-11-25 10:00,0,8,100
FAB1-ST18B-03,INSTALL DOOR FRAMES - FAB1-ST18B,Complete,Stair 18 - 2F -SUE-FAB1-ST18,,,,,,,,,,2025-08-04 08:00,2025-08-04 17:00,2025-08-04 08:00,2025-08-04 17:00,2025-11-20 17:00,2025-11-20 17:00,2025-11-25 10:00,2025-11-25 10:00,0,8,100
FAB1-ST18B-04,INSTALL DOOR & HARDWARE - FAB1-ST18B,Active,Stair 18 - 2F -SUE-FAB1-ST18,,,,,,,,,,2025-11-07 08:00,2025-11-13 17:00,2025-11-07 08:00,,2025-11-21 08:00,2025-11-27 17:00,2025-11-25 10:00,2025-12-02 10:00,40,40,0
FAB1-ST18B-05,PAINT & PROTECT DOORS & FRAMES - FAB1-ST18B,Not Started,Stair 18 - 2F -SUE-FAB1-ST18,,,,,,,,,,2026-02-16 08:00,2026-02-19 15:00,,,2026-02-16 08:00,2026-02-19 15:00,2025-12-02 10:00,2025-12-05 17:00,30,30,0
FAB110111B-40,IMPACT - DOOR FRAME PROCUREMENT- RE-ORDERED - FAB110111B,Complete,Exit Passageway 1 - 1F -SUW-FAB110111,,,,,,,,,,2025-08-18 08:00,2025-09-25 17:00,2025-08-18 08:00,2025-10-10 17:00,2025-11-20 17:00,2025-11-20 17:00,2025-11-24 08:00,2025-11-24 08:00,0,232,100
FAB110111B-02A,NEW INSTALL DOOR FRAMES - FAB110111B,Complete,Exit Passageway 1 - 1F -SUW-FAB110111,,,,,,,,,,2025-10-14 08:00,2025-10-14 17:00,2025-10-14 08:00,2025-10-14 17:00,2025-11-20 17:00,2025-11-20 17:00,2025-11-24 08:00,2025-11-24 08:00,0,8,100
FAB110206A-31,IMPACT - SECAI MEP CORDS IMPEDING DOOR INSTALLATION - FAB110206A,Complete,Duct Shaft - 1F -SUW-FAB110206,,,,,,,,,,2025-07-25 08:00,2025-07-30 15:00,2025-07-24 08:00,2025-10-02 17:00,2025-11-20 17:00,2025-11-20 17:00,2025-11-25 10:00,2025-11-25 10:00,0,30,100
FAB110308A-100,IMPACT - FRAME CANNOT BE COATED DUE SECAI TEMPORARY AC DUCTS AND ELEC CORDS RUNNING TROUGH OPENING - FAB110308A,Complete,Equip Platform - 1F -SUW-FAB110308,,,,,,,,,,2025-08-15 08:00,2025-08-19 17:00,2025-08-15 08:00,2025-10-03 17:00,2025-11-20 17:00,2025-11-20 17:00,2025-12-02 10:00,2025-12-02 10:00,0,24,100
FAB110314B-65,IMPACT - SECAI PANEL CEILING ANGLE PREVENTING WALL OPENING FOR DOOR FRAME INSTALLATION - FAB110314B,Complete,MCC Rm - 1F -SUW-FAB110314,,,,,,,,,,2025-08-29 08:00,2025-09-18 17:00,2025-08-29 08:00,2025-09-15 17:00,2025-11-20 17:00,2025-11-20 17:00,2025-11-25 10:00,2025-11-25 10:00,0,120,100
FAB110304E-65,IMPACT - SECAI SCAFFOLD IMPEDING DOOR INSTALLATION - FAB110304E,Active,Air Lock 3 - 1F -SUW-FAB110304,,,,,,,,,,2025-08-25 08:00,2025-09-12 17:00,2025-08-25 08:00,,2025-11-21 08:00,2025-11-27 17:00,2025-11-18 10:00,2025-11-25 10:00,40,120,0
FAB110403A/B/D-80,"DOOR FAMES, HARDWARE AND DOORS HANDED OVER TO SECAI - FAB110403A/B/D",Complete,NaOH ACQC (N/23-24.3) - 1F -SUW-FAB110403,,,,,,,,,,2025-08-22 08:00,2025-08-22 17:00,2025-08-22 08:00,2025-08-22 17:00,2025-11-20 17:00,2025-11-20 17:00,2025-12-05 17:00,2025-12-05 17:00,0,8,100
FAB110304B-65,IMPACT - DOOR FRAME PROCUREMENT- RE-ORDERED - FAB110304B,Complete,Air Lock 3 - 1F -SUW-FAB110304,,,,,,,,,,2025-08-18 08:00,2025-09-25 17:00,2025-08-18 08:00,2025-10-10 17:00,2025-11-20 17:00,2025-11-20 17:00,2025-11-25 10:00,2025-11-25 10:00,0,232,100
FAB110401C-55,IMPACT - SECAI FRAME INSTALLED BACKWARDS-NEEDS TO BE FIXED - FAB110401C,Complete,GCS Training Rm - 1F -SUW-FAB110401,,,,,,,,,,2025-08-01 08:00,2025-08-14 17:00,2025-08-18 08:00,2025-09-19 17:00,2025-11-20 17:00,2025-11-20 17:00,2025-11-25 10:00,2025-11-25 10:00,0,80,100
FAB110404B/E-80,"DOOR FAMES, HARDWARE AND DOORS HANDED OVER TO SECAI - FAB110404B/E",Complete,W-CuS04-ACQC RM (N/24.3-25) - 1F- SUW-FAB110404,,,,,,,,,,2025-08-22 08:00,2025-08-22 17:00,2025-08-22 08:00,2025-08-22 17:00,2025-11-20 17:00,2025-11-20 17:00,2025-12-05 17:00,2025-12-05 17:00,0,8,100
STAIR.2820,IMPACT - SECAI TEMP ELECTRICAL PANEL/DUCT SCAFFOLD IN THE WAY - FIZ - LEVEL 02 #46,Active,CONSTRUCTION,,INTERIOR STAIRS,L2 - SubFab Level,FIZ,CONSTRUCTION,,,,,2024-09-20 07:00,2024-09-26 17:00,2025-08-13 00:00,,2025-11-21 07:00,2025-12-09 17:00,2025-11-06 07:00,2025-11-20 17:00,110,40,100
FAB110409B/E-80,"DOOR FAMES, HARDWARE AND DOORS HANDED OVER TO SECAI - FAB110409B/E",Complete,W-H3PO4 RM (N/25.4-26.2) - 1F -SUW-FAB110409,,,,,,,,,,2025-08-22 08:00,2025-08-22 17:00,2025-08-22 08:00,2025-08-22 17:00,2025-11-20 17:00,2025-11-20 17:00,2025-12-05 17:00,2025-12-05 17:00,0,8,100
FAB110408B/D-80,"DOOR FAMES, HARDWARE AND DOORS HANDED OVER TO SECAI - FAB110408B/D",Complete,W-H2S04 ACQC RM (N/26.2-27) - 1F -SUW-FAB110408,,,,,,,,,,2025-08-22 08:00,2025-08-22 17:00,2025-08-22 08:00,2025-08-22 17:00,2025-11-20 17:00,2025-11-20 17:00,2025-12-05 17:00,2025-12-05 17:00,0,8,100
ZX-21405,IMPACT - SECAI MEP SCAFFOLD IN THE AREA - Duct Shaft Vestibule - 1F-SUW-FAB110108,Active,Duct Shaft - 1F -SUW-FAB110101,,,,,,,,,,2025-07-28 08:00,2025-08-15 17:00,2025-07-28 08:00,,2025-11-21 08:00,2025-11-21 08:00,2025-12-05 17:00,2025-12-05 17:00,0,120,100
FAB110409C-50,RE-ALIGN DOOR FRAME BY SECAI - FAB110409C (INSTALLED WRONGLY),Complete,W-H3PO4 RM (N/25.4-26.2) - 1F -SUW-FAB110409,,,,,,,,,,2025-08-12 08:00,2025-08-25 17:00,2025-08-12 08:00,2025-11-04 17:00,2025-11-20 17:00,2025-11-20 17:00,2025-11-25 10:00,2025-11-25 10:00,0,80,100
FAB110511B/C-90,"DOOR FAMES, HARDWARE AND DOORS HANDED OVER TO SECAI - FAB110511B/C",Complete,W-SOLVENT RM (N/27.5-29) - 1F -SUW-FAB110511,,,,,,,,,,2025-08-22 08:00,2025-08-22 17:00,2025-08-22 08:00,2025-08-22 17:00,2025-11-20 17:00,2025-11-20 17:00,2025-12-05 17:00,2025-12-05 17:00,0,8,100
CN.BB51.ST.3552,IMPACT - EXP JOINT DESIGN NOT IN LINE ALL FLOORS - EJ FROM BERG- LVL 3/4 - VESTIBULE 5 3RD LAYER - GL 33 - STAIR 5 - K-L,Complete,CONSTRUCTION,,GRIDLINE 33,GL 33 STAIR 5 (WEST),STAIR 5 (WEST) - K-L,CONSTRUCTION,BERG,,,,2025-08-19 07:00,2025-09-09 17:00,2025-08-26 07:00,2025-09-19 17:00,2025-11-20 17:00,2025-11-20 17:00,2025-11-03 07:00,2025-11-03 07:00,0,150,100
FAB110511A-23,IMPACT - SECAI NEEDS TO RE-ALING DOOR FRAMES - FAB110511A,Complete,W-SOLVENT RM (N/27.5-29) - 1F -SUW-FAB110511,,,,,,,,,,2025-08-12 08:00,2025-08-25 17:00,2025-08-12 08:00,2025-11-03 17:00,2025-11-20 17:00,2025-11-20 17:00,2025-11-25 10:00,2025-11-25 10:00,0,80,100
CN.BB51.ST.3562,IMPACT - EXP JOINT DESIGN NOT IN LINE ALL FLOORS -RFI APPROVAL - LVL 3/4 - VESTIBULE 5 3RD LAYER - GL 33 - STAIR 5 - K-L,Complete,CONSTRUCTION,,GRIDLINE 33,GL 33 STAIR 5 (WEST),STAIR 5 (WEST) - K-L,CONSTRUCTION,BERG,,,,2025-09-22 07:00,2025-09-29 17:00,2025-09-11 07:00,2025-09-17 16:00,2025-11-20 17:00,2025-11-20 17:00,2025-11-12 07:00,2025-11-12 07:00,0,60,100
FAB110511A-33,IMPACT - SECAI BARRICADE AND SCAFFOLD INTERFERING WITH DOOR INSTALLATION - FAB110511A,Complete,W-SOLVENT RM (N/27.5-29) - 1F -SUW-FAB110511,,,,,,,,,,2025-08-18 08:00,2025-08-29 17:00,2025-08-18 08:00,2025-11-03 17:00,2025-11-20 17:00,2025-11-20 17:00,2025-11-25 10:00,2025-11-25 10:00,0,80,100
CN.BB51.ST.3572,INTERIOR FRAMING DRYWALL FIRECAULK VESTIBULE 5 3RD LAYER - GL 33 LVL 3 - 4 - STAIR 5 - K-L,Complete,CONSTRUCTION,,GRIDLINE 33,GL 33 STAIR 5 (WEST),STAIR 5 (WEST) - K-L,CONSTRUCTION,BERG,,,,2025-10-13 07:00,2025-10-20 17:00,2025-10-13 07:00,2025-11-06 17:00,2025-11-21 17:00,2025-11-21 17:00,2025-11-13 07:00,2025-11-13 07:00,0,60,100
CN.BB51.ST.3582,TAPE & FLOAT & SANDING INTERIOR DRYWALL & SANDING - GL 33 - STAIR 5 - K-L(),Complete,CONSTRUCTION,,GRIDLINE 33,GL 33 STAIR 5 (WEST),STAIR 5 (WEST) - K-L,CONSTRUCTION,CHERRY COATING,,,,2025-09-08 07:00,2025-09-12 17:00,2025-09-08 07:00,2025-09-22 07:00,2025-11-20 17:00,2025-11-20 17:00,2025-11-12 07:00,2025-11-12 07:00,0,50,100
CN.BB51.ST.3612,TURNED OVER TO SECAI - FLOOR EXPANSION JOINTS/INTERIOR WALLS - EJ COVER - STAIR 5,Complete,CONSTRUCTION,,GRIDLINE 33,GL 33 STAIR 5 (WEST),STAIR 18 (EAST) - C-D,CONSTRUCTION,,,,,2025-09-15 07:00,2025-09-19 17:00,2025-09-15 07:00,2025-09-19 17:00,2025-11-20 17:00,2025-11-20 17:00,2025-11-12 07:00,2025-11-12 07:00,0,50,100
FAB110502B-60,IMPACT - SECAI (AXIOS) SCAFFOLD AND ELECTRICAL CORDS BLOCKING DOOR INSTALLATION - FAB110502B,Complete,Duct Shaft Vestibule - 1F -SUW-FAB110502,,,,,,,,,,2025-08-18 08:00,2025-08-29 17:00,2025-08-18 08:00,2025-10-10 17:00,2025-11-20 17:00,2025-11-20 17:00,2025-11-25 10:00,2025-11-25 10:00,0,80,100
FAB110502A-60,IMPACT - DOOR FRAME HIT BY A SCISSOR LIFT-REPAIR IS REQUIRED - FAB110502A,Active,Duct Shaft Vestibule - 1F -SUW-FAB110502,,,,,,,,,,2025-08-18 08:00,2025-08-29 17:00,2025-08-18 08:00,,2025-11-21 08:00,2025-11-27 17:00,2025-11-18 10:00,2025-11-25 10:00,40,80,0
FAB112155A-45,IMPACT - SECAI SCAFFOLD BLOKING DOOR INSTALLATION - FAB112155A,Complete,PCS Monitoring Rm - 1F - FAB-FAB112155,,,,,,,,,,2025-08-18 08:00,2025-08-29 17:00,2025-08-18 08:00,2025-09-23 08:00,2025-11-20 17:00,2025-11-20 17:00,2025-11-25 10:00,2025-11-25 10:00,0,80,100
FAB112203A-60,IMPACT - SECAI PIPE HANGING IN DOOR SWING PATH PREVENTING DOOR INSTALLATION - FAB112203A,Complete,Bunker Rm 1 - 1F -FAB-FAB112203,,,,,,,,,,2025-08-18 08:00,2025-08-29 17:00,2025-08-18 08:00,2025-10-02 17:00,2025-11-20 17:00,2025-11-20 17:00,2025-12-05 17:00,2025-12-05 17:00,0,80,100
CN.BB51.ST.3622,GDA - RE-INSTALL EXPANSION JOINT- LEVEL 4 - DUE TO SECAI  ADJUSTMENT OF FRAME AND SHEATHING - GL 33 - STAIR 18 - C-D,Complete,CONSTRUCTION,,GRIDLINE 33,GL 33 STAIR 18 (EAST),STAIR 18 (EAST) - C-D,CONSTRUCTION,WATER PROOFING GL33,,,,2025-08-20 07:00,2025-08-22 17:00,2025-08-22 07:00,2025-10-07 17:00,2025-11-20 17:00,2025-11-20 17:00,2025-11-03 07:00,2025-11-03 07:00,0,30,100
CN.BB51.ST.3632,INSTALL CORRUGATED METAL PANELS - GL 33 - STAIR 18 - C-D -,Complete,CONSTRUCTION,,GRIDLINE 33,GL 33 STAIR 18 (EAST),STAIR 18 (EAST) - C-D,CONSTRUCTION,KOVACH,,,,2025-09-25 07:00,2025-10-01 17:00,2025-09-19 07:00,2025-10-01 17:00,2025-11-20 17:00,2025-11-20 17:00,2025-12-04 07:00,2025-12-04 07:00,0,50,100
CN.BB51.ST.3642,INSTALL CORRUGATED METAL PANELS WEST & EAST WALLS - GL 33- STAIR 5-K-L,Complete,CONSTRUCTION,,GRIDLINE 33,GL 33 STAIR 5 (WEST),STAIR 5 (WEST) - K-L,CONSTRUCTION,KOVACH,,,,2025-10-07 07:00,2025-10-20 17:00,2025-10-02 07:00,2025-10-15 17:00,2025-11-20 17:00,2025-11-20 17:00,2025-11-14 07:00,2025-11-14 07:00,0,100,100
FAB114107D-01,IMPACT - INSTALL/REWORK DRYWALL FRAMING AROUND DOORS - FAB114107D,Complete,FA Lab-7 - 1F -FIZ-FAB114107,,,,,,,,,,2025-10-10 08:00,2025-10-13 17:00,2025-10-10 08:00,2025-10-13 17:00,2025-11-20 17:00,2025-11-20 17:00,2025-11-25 10:00,2025-11-25 10:00,0,16,100
FAB114107D-02,SECAI ROUGH IN/SECURITY - FAB114107D,Complete,FA Lab-7 - 1F -FIZ-FAB114107,,,,,,,,,,2025-10-14 08:00,2025-10-14 17:00,2025-10-14 08:00,2025-10-14 17:00,2025-11-20 17:00,2025-11-20 17:00,2025-11-25 10:00,2025-11-25 10:00,0,8,100
FAB114107D-03,INSTALL DOOR FRAMES - FAB114107D,Complete,FA Lab-7 - 1F -FIZ-FAB114107,,,,,,,,,,2025-10-14 08:00,2025-10-14 17:00,2025-10-14 08:00,2025-10-14 17:00,2025-11-20 17:00,2025-11-20 17:00,2025-11-25 10:00,2025-11-25 10:00,0,8,100
FAB114107D-04,INSTALL DOOR & HARDWARE - FAB114107D,Not Started,FA Lab-7 - 1F -FIZ-FAB114107,,,,,,,,,,2025-11-21 08:00,2025-11-27 17:00,,,2025-11-21 08:00,2025-11-27 17:00,2025-11-25 10:00,2025-12-02 10:00,40,40,0
FAB114107D-05,PAINT & PROTECT DOORS & FRAMES - FAB114107D,Not Started,FA Lab-7 - 1F -FIZ-FAB114107,,,,,,,,,,2026-02-16 08:00,2026-02-19 15:00,,,2026-02-16 08:00,2026-02-19 15:00,2025-12-02 10:00,2025-12-05 17:00,30,30,0
FAB114107D-60,IMPACT - Clean Room Panel needs to be removed to install DOOR FRAMES - FAB114107D,Complete,FA Lab-7 - 1F -FIZ-FAB114107,,,,,,,,,,2025-08-25 08:00,2025-08-29 17:00,2025-08-25 08:00,2025-10-10 08:00,2025-11-20 17:00,2025-11-20 17:00,2025-11-25 10:00,2025-11-25 10:00,0,40,100
FAB114154B-60,IMPACT - SECAI SCAFFOLD IMPEDING DOOR INSTALLATION - FAB114154B,Complete,Bunker Rm 9 - 1F -FAB-FAB114154,,,,,,,,,,2025-08-25 08:00,2025-08-29 17:00,2025-08-25 08:00,2025-10-20 17:00,2025-11-20 17:00,2025-11-20 17:00,2025-11-25 10:00,2025-11-25 10:00,0,40,100
FAB114155A-60,IMPACT - SECAI SCAFFOLD IMPEDING DOOR INSTALLATION - FAB114155A,Complete,Bunker Rm 10- 1F -FAB-FAB114155,,,,,,,,,,2025-08-25 08:00,2025-08-29 17:00,2025-08-25 08:00,2025-09-11 17:00,2025-11-20 17:00,2025-11-20 17:00,2025-11-25 10:00,2025-11-25 10:00,0,40,100
FAB114155B-60,IMPACT - SECAI SCAFFOLD IMPEDING DOOR INSTALLATION - FAB114155B,Complete,Bunker Rm 10- 1F -FAB-FAB114155,,,,,,,,,,2025-08-25 08:00,2025-08-29 17:00,2025-08-25 08:00,2025-10-10 17:00,2025-11-20 17:00,2025-11-20 17:00,2025-11-25 10:00,2025-11-25 10:00,0,40,100
FAB114402A-60,IMPACT - SECAI SCAFFOLD IMPEDING DOOR INSTALLATION - FAB114402A,Complete,Bunker Rm 12 -1F -FAB-FAB114402,,,,,,,,,,2025-08-22 08:00,2025-08-28 17:00,2025-08-22 08:00,2025-10-28 08:00,2025-11-20 17:00,2025-11-20 17:00,2025-11-25 10:00,2025-11-25 10:00,0,40,100
FAB114402B-60,IMPACT - SECAI SCAFFOLD IMPEDING DOOR INSTALLATION - FAB1144026,Complete,Bunker Rm 12 -1F -FAB-FAB114402,,,,,,,,,,2025-08-22 08:00,2025-08-28 17:00,2025-08-22 08:00,2025-09-24 08:00,2025-11-20 17:00,2025-11-20 17:00,2025-11-25 10:00,2025-11-25 10:00,0,40,100
FAB114403A-60,IMPACT - SECAI MEP CONDUIT AND MODULE BEAM INDOOR SWING PATH IMPEDING DOOR INSTALLATION - FAB114402A,Complete,Bunker Rm 13 - 1F -FAB-FAB114403,,,,,,,,,,2025-08-22 08:00,2025-08-28 17:00,2025-08-22 08:00,2025-11-05 08:00,2025-11-20 17:00,2025-11-20 17:00,2025-11-25 10:00,2025-11-25 10:00,0,40,100
FAB114403B-60,IMPACT - SECAI SCAFFOLD IMPEDING DOOR INSTALLATION - FAB114403B,Complete,Bunker Rm 13 - 1F -FAB-FAB114403,,,,,,,,,,2025-08-22 08:00,2025-08-28 17:00,2025-08-22 08:00,2025-09-24 08:00,2025-11-20 17:00,2025-11-20 17:00,2025-12-02 10:00,2025-12-02 10:00,0,40,100
FAB116520A-60,IMPACT - SECAI SCAFFOLD IMPEDING FRAME AND DOOR INSTALLATION - FAB116520A,Complete,PR Air Lock Vestibule - 1F -SUE-FAB116520,,,,,,,,,,2025-08-25 08:00,2025-08-29 17:00,2025-08-25 08:00,2025-10-10 08:00,2025-11-20 17:00,2025-11-20 17:00,2025-11-25 10:00,2025-11-25 10:00,0,40,100
FAB116112A-60,IMPACT - SECAI SCAFFOLD AND MEP CORDS IMPEDING DOOR INSTALLATION - FAB116112A,Complete,Duct Shaft Vestibule - 1F -SUE-FAB116112,,,,,,,,,,2025-08-22 08:00,2025-08-28 17:00,2025-08-22 08:00,2025-09-26 08:00,2025-11-20 17:00,2025-11-20 17:00,2025-11-25 10:00,2025-11-25 10:00,0,40,100
FAB116109A-60,IMPACT - SECAI MEP CORDS IMPEDING DOOR INSTALLATION - FAB116109A,Complete,Duct Shaft - 1F -SUE-FAB116109,,,,,,,,,,2025-08-22 08:00,2025-08-28 17:00,2025-08-22 08:00,2025-10-13 08:00,2025-11-20 17:00,2025-11-20 17:00,2025-11-25 10:00,2025-11-25 10:00,0,40,100
FAB116202D-60,IMPACT - SECAI SCAFFOLD IMPEDING DOOR INSTALLATION - FAB116202D,Complete,Exit Passageway 21 - 1F -SUE-FAB116202,,,,,,,,,,2025-08-25 08:00,2025-08-29 17:00,2025-08-25 08:00,2025-10-03 08:00,2025-11-20 17:00,2025-11-20 17:00,2025-11-25 10:00,2025-11-25 10:00,0,40,100
FAB116414B-60,IMPACT - SECAI (AXIOS) SCAFFOLD IMPEDING DOOR INSTALLATION - FAB116414B,Complete,Exit Passageway 19 - 1F -SUE-FAB116407,,,,,,,,,,2025-08-25 08:00,2025-08-29 17:00,2025-08-25 08:00,2025-11-11 08:00,2025-11-20 17:00,2025-11-20 17:00,2025-11-25 10:00,2025-11-25 10:00,0,40,100
FAB116414C-60,IMPACT - SECAI SCAFFOLD IMPEDING DOOR INSTALLATION - FAB116414C,Complete,Wafer I/O - 1F -SUE-FAB116501,,,,,,,,,,2025-08-25 08:00,2025-08-29 17:00,2025-08-25 08:00,2025-09-24 08:00,2025-11-20 17:00,2025-11-20 17:00,2025-11-25 10:00,2025-11-25 10:00,0,40,100
FAB116412B-60,IMPACT - SECAI SCAFFOLD IMPEDING DOOR INSTALLATION - FAB116412B,Complete,Duct Shaft Vestibule - 1F -SUE-FAB116412,,,,,,,,,,2025-08-25 08:00,2025-08-29 17:00,2025-08-25 08:00,2025-10-03 08:00,2025-11-20 17:00,2025-11-20 17:00,2025-11-25 10:00,2025-11-25 10:00,0,40,100
FAB116406A-60,IMPACT - SECAI SCAFFOLD IMPEDING DOOR INSTALLATION - FAB116406A,Active,Maint Rm 1 - 1F -SUE-FAB116406,,,,,,,,,,2025-08-25 08:00,2025-08-29 17:00,2025-08-25 08:00,,2025-11-21 08:00,2025-11-27 17:00,2025-11-18 10:00,2025-11-25 10:00,40,40,0
FAB110502A-70,IMPACT - SECAI (AXIOS) SCAFFOLD AND ELECTRICAL CORDS BLOCKING DOOR INSTALLATION - FAB110502A,Active,Duct Shaft Vestibule - 1F -SUW-FAB110502,,,,,,,,,,2025-08-18 08:00,2025-08-29 17:00,2025-08-18 08:00,,2025-11-21 08:00,2025-11-27 17:00,2025-11-18 10:00,2025-11-25 10:00,40,80,0
FAB110305A-60,IMPACT - DOOR FRAME REMOVED DURING WALL REMEDIATION (RE-ORDERED) - FAB110305A,Complete,Exit Passageway 3 - 1F -SUW-FAB110305,,,,,,,,,,2025-08-20 08:00,2025-09-30 17:00,2025-08-20 08:00,2025-10-10 08:00,2025-11-20 17:00,2025-11-20 17:00,2025-11-25 10:00,2025-11-25 10:00,0,240,100
FAB116301C-70,IMPACT - DOOR FRAME REMOVED DURING WALL REMEDIATION (RE-ORDERED) - FAB116301C,Complete,Air Lock 20 - 1F -SUE-FAB116301,,,,,,,,,,2025-08-20 08:00,2025-09-30 17:00,2025-08-20 08:00,2025-10-14 17:00,2025-11-20 17:00,2025-11-20 17:00,2025-11-25 10:00,2025-11-25 10:00,0,240,100
FAB116301C-03,INSTALL DOOR FRAMES - FAB116301C,Complete,Air Lock 20 - 1F -SUE-FAB116301,,,,,,,,,,2025-10-15 08:00,2025-10-15 17:00,2025-10-15 08:00,2025-10-15 17:00,2025-11-20 17:00,2025-11-20 17:00,2025-11-25 10:00,2025-11-25 10:00,0,8,100
FAB116307A-60,IMPACT - DOOR FRAME REMOVED DURING WALL REMEDIATION (RE-ORDERED) - FAB116307A,Complete,Exit Passageway 20 - 1F -SUE-FAB116307,,,,,,,,,,2025-08-20 08:00,2025-09-30 17:00,2025-08-20 08:00,2025-10-10 17:00,2025-11-20 17:00,2025-11-20 17:00,2025-11-25 10:00,2025-11-25 10:00,0,240,100
FAB116520A-70,IMPACT - DOOR FRAME REMOVED DURING WALL REMEDIATION (RE-ORDERED) - FAB116520A,Complete,PR Air Lock Vestibule - 1F -SUE-FAB116520,,,,,,,,,,2025-08-20 08:00,2025-09-30 17:00,2025-08-20 08:00,2025-10-10 17:00,2025-11-20 17:00,2025-11-20 17:00,2025-11-25 10:00,2025-11-25 10:00,0,240,100
FAB124102A-60,IMPACT - DOOR FRAME REMOVED DURING WALL REMEDIATION (RE-ORDERED) - FAB124102A,Complete,Battery Rm - 2F -FIZ-FAB124102,,,,,,,,,,2025-08-20 08:00,2025-09-30 17:00,2025-08-20 08:00,2025-10-10 17:00,2025-11-20 17:00,2025-11-20 17:00,2025-11-25 10:00,2025-11-25 10:00,0,240,100
FAB116308E-60,IMPACT - SECAI ELECTRIC CORD RUNNING TROUGH OPENING IMPEDING DOOR INSTALLATION - FAB116308E,Active,Mechanical Rm 3 - 1F -SUE-FAB116308,,,,,,,,,,2025-08-25 08:00,2025-08-29 17:00,2025-08-25 08:00,,2025-11-21 08:00,2025-11-27 17:00,2025-11-18 10:00,2025-11-25 10:00,40,40,0
FAB116407B-60,IMPACT - SECAI MEP CORD IMPEDING DOOR INSTALLATION - FAB116407B,Complete,Exit Passageway 19 - 1F -SUE-FAB116407,,,,,,,,,,2025-08-25 08:00,2025-08-29 17:00,2025-08-25 08:00,2025-10-10 08:00,2025-11-20 17:00,2025-11-20 17:00,2025-11-25 10:00,2025-11-25 10:00,0,40,100
FAB116407A-60,IMPACT - SECAI MEP CORD IMPEDING DOOR INSTALLATION - FAB116407A,Complete,Exit Passageway 19 - 1F -SUE-FAB116407,,,,,,,,,,2025-08-25 08:00,2025-08-29 17:00,2025-08-25 08:00,2025-09-23 08:00,2025-11-20 17:00,2025-11-20 17:00,2025-11-25 10:00,2025-11-25 10:00,0,40,100
FAB116519A-60,IMPACT - SECAI MEP CORDS IMPEDING DOOR INSTALLATION - FAB116519A,Complete,PR Air Lock - 1F -SUE-FAB116519,,,,,,,,,,2025-08-25 08:00,2025-08-29 17:00,2025-08-25 08:00,2025-11-03 17:00,2025-11-20 17:00,2025-11-20 17:00,2025-11-25 10:00,2025-11-25 10:00,0,40,100
FAB116518A-60,IMPACT - SECAI SCAFFOLD IMPEDING DOOR INSTALLATION - FAB116518A,Complete,Duct Shaft - 1F -SUE-FAB116518,,,,,,,,,,2025-08-25 08:00,2025-08-29 17:00,2025-08-25 08:00,2025-09-23 08:00,2025-11-20 17:00,2025-11-20 17:00,2025-11-25 10:00,2025-11-25 10:00,0,40,100
FAB116513H-60,IMPACT - SECAI SCAFFOLD AND AC DUCTS IMPEDING DOOR INSTALLATION - FAB116513H,Active,Air Lock 18 - 1F -SUE-FAB116513,,,,,,,,,,2025-08-25 08:00,2025-08-29 17:00,2025-08-25 08:00,,2025-11-21 08:00,2025-11-27 17:00,2025-11-18 10:00,2025-11-25 10:00,40,40,0
FAB116514A-60,IMPACT - SECAI LIGHT SWITCH LOCATED WITHIN OPENING IMPEDING DOOR FRAME INSTALLATION - FAB116514A,Active,Elevator Mech. Rm - 1F -SUE18-FAB116514,,,,,,,,,,2025-08-25 08:00,2025-08-29 17:00,2025-08-25 08:00,,2025-11-21 08:00,2025-11-27 17:00,2025-11-14 10:00,2025-11-21 10:00,40,40,0
FAB120103A-60,IMPACT - SECAI A/C TEMP DUCTS AND ELECTRICAL CORDS IMPEDING DOOR FRAME INSTALLATION - FAB120103A,Complete,Thermohygrostat Rm - 2F -FIZ-FAB120103,,,,,,,,,,2025-08-25 08:00,2025-08-29 17:00,2025-08-25 08:00,2025-09-24 17:00,2025-11-20 17:00,2025-11-20 17:00,2025-11-25 10:00,2025-11-25 10:00,0,40,100
FAB120108B-60,IMPACT - SECAI SCAFFOLD IMPEDING DOOR INSTALLATION - FAB120108B,Complete,Air Lock 1 - 2F -SUW-FAB120108,,,,,,,,,,2025-08-25 08:00,2025-08-29 17:00,2025-08-25 08:00,2025-10-24 08:00,2025-11-20 17:00,2025-11-20 17:00,2025-11-25 10:00,2025-11-25 10:00,0,40,100
FAB120401F-60,IMPACT - SECAI SCAFFOLD BLOCKING TRANSPORTATION OF DOOR FRAMES - FAB120401F - DOOR FRAME HANDED OVER TO SECAI ON 10/14,Complete,Electrical Rm - 2F -SUW-FAB120401,,,,,,,,,,2025-08-25 08:00,2025-08-29 17:00,2025-08-25 08:00,2025-10-14 17:00,2025-11-20 17:00,2025-11-20 17:00,2025-11-25 10:00,2025-11-25 10:00,0,40,100
FAB120113A-60,IMPACT - SECAI SCAFFOLD BLOCKING TRANSPORTATION OF DOOR FRAMES - FAB120113A,Active,Elevator Hall 1 - 2F -SUW-FAB120113,,,,,,,,,,2025-08-25 08:00,2025-08-29 17:00,2025-08-25 08:00,,2025-11-21 08:00,2025-11-27 17:00,2025-11-18 10:00,2025-11-25 10:00,40,40,100
FAB120108D-60,IMPACT - SECAI SCAFFOLD BLOCKING TRANSPORTATION OF DOOR FRAMES - FAB120108D - DOOR FRAME HANDED OVER TO SECAI ON 10/03,Complete,Air Lock 1 - 2F -SUW-FAB120108,,,,,,,,,,2025-08-25 08:00,2025-08-29 17:00,2025-08-25 08:00,2025-10-01 08:00,2025-11-20 17:00,2025-11-20 17:00,2025-11-25 10:00,2025-11-25 10:00,0,40,100
FAB120315A-60,IMPACT - SECAI TEMP VENT RUNNING TROUGH OPENING IMPEDING DOOR INSTALLATION - FAB120315A,Active,Battery Rm 1- 2F -SUW-FAB120315,,,,,,,,,,2025-08-25 08:00,2025-08-29 17:00,2025-08-25 08:00,,2025-11-21 08:00,2025-11-27 17:00,2025-11-18 10:00,2025-11-25 10:00,40,40,0
FAB120314B-60,IMPACT - SECAI TEMP VENT RUNNING THROUGH OPENING IMPEDING DOOR INSTALLATION - FAB120314B,Active,Battery Rm 2 - 2F -SUW-FAB120314,,,,,,,,,,2025-08-25 08:00,2025-08-29 17:00,2025-08-25 08:00,,2025-11-21 08:00,2025-11-27 17:00,2025-11-18 10:00,2025-11-25 10:00,40,40,0
FAB120314A-60,IMPACT - SECAI TEMP VENT RUNNING THROUGH OPENING IMPEDING DOOR INSTALLATION - FAB120314A,Active,Battery Rm 2 - 2F -SUW-FAB120314,,,,,,,,,,2025-08-25 08:00,2025-08-29 17:00,2025-08-25 08:00,,2025-11-21 08:00,2025-11-27 17:00,2025-11-18 10:00,2025-11-25 10:00,40,40,0
FAB120507A-60,IMPACT - SECAI SCAFFOLD IMPEDING DOOR FRAME INSTALLATION- FAB120507A,Complete,Utility Rm - 2F -SUW-FAB120507,,,,,,,,,,2025-08-25 08:00,2025-08-25 08:00,2025-08-25 08:00,2025-10-27 17:00,2025-11-20 17:00,2025-11-20 17:00,2025-11-25 10:00,2025-11-25 10:00,0,0,100
FAB120303F-60,IMPACT - SECAI SCAFFOLD IMPEDING DOOR FRAME INSTALLATION - FAB120303F,Complete,Electrical Rm - 2F -SUW-FAB120401,,,,,,,,,,2025-08-25 08:00,2025-08-29 17:00,2025-08-25 08:00,2025-11-05 08:00,2025-11-20 17:00,2025-11-20 17:00,2025-11-25 10:00,2025-11-25 10:00,0,40,100
FAB120501A-60,IMPACT - SECAI TEMP AC DUCTS AND ELEC CONDUITS IMPEDING DOOR INSTALLATION- FAB120501A,Active,Battery Rm 3 - 2F -SUW-FAB120501,,,,,,,,,,2025-08-25 08:00,2025-08-29 17:00,2025-08-25 08:00,,2025-11-21 08:00,2025-11-27 17:00,2025-11-18 10:00,2025-11-25 10:00,40,40,0
FAB120503D-60,IMPACT - SECAI SCAFFOLD BLOCKING OPENING IMPEDING FRAME INSTALLATION - FAB120503D,Active,Air lock 5 - 2F -SUW-FAB120503,,,,,,,,,,2025-08-25 08:00,2025-08-29 17:00,2025-08-25 08:00,,2025-11-21 08:00,2025-11-27 17:00,2025-11-18 10:00,2025-11-25 10:00,40,40,100
FAB120503B-60,IMPACT - SECAI SCAFFOLD BLOCKING DOOR FRAME TRANSPORTATION - FAB120503,Active,Air lock 5 - 2F -SUW-FAB120503,,,,,,,,,,2025-08-25 08:00,2025-08-29 17:00,2025-08-25 08:00,,2025-11-21 08:00,2025-11-27 17:00,2025-11-18 10:00,2025-11-25 10:00,40,40,100
FAB120505A-60,IMPACT - SECAI SCAFFOLD BLOCKING DOOR FRAME TRANSPORTATION - FAB120505A,Active,Elevator Hall 5 - 2F -SUW-FAB120505,,,,,,,,,,2025-08-25 08:00,2025-08-29 17:00,2025-08-25 08:00,,2025-11-21 08:00,2025-11-27 17:00,2025-11-17 10:00,2025-11-24 10:00,40,40,0
FAB126104E-60,IMPACT - SECAIN TEMP BENT AND TRAP IMPEDING INSTALLATION - FAB126104E,Active,Elevator Hall 22 - 2F -SUE-FAB126104,,,,,,,,,,2025-08-25 10:00,2025-09-01 10:00,2025-08-25 10:00,,2025-11-21 08:00,2025-11-27 17:00,2025-11-18 10:00,2025-11-25 10:00,40,40,0
FAB126402A-60,IMPACT - SECAI SCAFFOLDS IMPEDING DOOR INSTALLATION - FAB126402A,Complete,Clean Vestibule 19 - 2F -SUE-FAB126402,,,,,,,,,,2025-08-25 08:00,2025-08-29 17:00,2025-08-25 08:00,2025-11-12 08:00,2025-11-20 17:00,2025-11-20 17:00,2025-11-25 10:00,2025-11-25 10:00,0,40,100
FAB126401A-60,IMPACT - SECAI SCAFFOLDS IMPEDING DOOR INSTALLATION - FAB126401A,Complete,Duct Shaft - 2F -SUE-FAB126401,,,,,,,,,,2025-08-25 08:00,2025-08-29 17:00,2025-08-25 08:00,2025-11-12 08:00,2025-11-20 17:00,2025-11-20 17:00,2025-11-25 10:00,2025-11-25 10:00,0,40,100
FAB126110A-60,IMPACT - SECAI SCAFFOLDS IMPEDING DOOR INSTALLATION - FAB126110A,Complete,Duct Shaft - 2F -SUE-FAB126403,,,,,,,,,,2025-08-25 08:00,2025-08-29 17:00,2025-08-25 08:00,2025-11-12 08:00,2025-11-20 17:00,2025-11-20 17:00,2025-11-25 10:00,2025-11-25 10:00,0,40,100
FAB1-ST19B-60,IMPACT - SECAI SCAFFOLDS IMPEDING DOOR FRAME INSTALLATION - FAB1-ST19B,Complete,Stair #19 - 2F -SUE-FAB1-ST19,,,,,,,,,,2025-08-25 08:00,2025-08-29 17:00,2025-08-25 08:00,2025-08-29 08:00,2025-11-20 17:00,2025-11-20 17:00,2025-11-25 08:00,2025-11-25 08:00,0,40,100
FAB126509A-60,IMPACT - SECAI SCAFFOLDS IMPEDING DOOR INSTALLATION - FAB126509A,Complete,PR Lifter Rm - 2F -SUE-FAB126509,,,,,,,,,,2025-08-25 08:00,2025-08-29 17:00,2025-08-25 08:00,2025-09-26 08:00,2025-11-20 17:00,2025-11-20 17:00,2025-11-25 10:00,2025-11-25 10:00,0,40,100
FAB126507B-60,IMPACT - SECAI TEMP VENT IMPEDING FRAME AND DOOR INSTALLATION - FAB126507B,Complete,Duct Shaft - 2F -SUE-FAB126507,,,,,,,,,,2025-08-25 08:00,2025-08-29 17:00,2025-08-25 08:00,2025-11-17 08:00,2025-11-20 17:00,2025-11-20 17:00,2025-11-25 10:00,2025-11-25 10:00,0,40,100
FAB130402B-60,IMPACT - SECAI SCAFFOLD AND TEMP VENT IMPEDING DOOR INSTALLATION- FAB130402B,Active,Electrical Rm - 3F -SUW-FAB130402,,,,,,,,,,2025-08-25 08:00,2025-08-29 17:00,2025-08-25 08:00,,2025-11-21 08:00,2025-11-27 17:00,2025-11-18 10:00,2025-11-25 10:00,40,40,0
FAB136302E-60,IMPACT - SECAI SCAFFOLD IMPEDING DOOR INSTALLATION - FAB136302E,Complete,Electrical Rm - 3F -SUE-FAB136302,,,,,,,,,,2025-08-25 08:00,2025-08-29 17:00,2025-08-25 08:00,2025-11-17 17:00,2025-11-20 17:00,2025-11-20 17:00,2025-11-25 10:00,2025-11-25 10:00,0,40,100
FAB136311A-60,IMPACT - SECAI TEMP VENT IMPEDING DOOR FRAME INSTALLATION - FAB136311A,Complete,Elevator Hall 20 - 3F -SUE-FAB136311,,,,,,,,,,2025-08-25 08:00,2025-08-29 17:00,2025-08-25 08:00,2025-10-17 08:00,2025-11-20 17:00,2025-11-20 17:00,2025-11-25 10:00,2025-11-25 10:00,0,40,100
FAB136311BB-60,IMPACT - SECAI TEMP VENT IMPEDING DOOR FRAME INSTALLATION - FAB136311B,Complete,Elevator Hall 20 - 3F -SUE-FAB136311,,,,,,,,,,2025-08-25 08:00,2025-08-29 17:00,2025-08-25 08:00,2025-09-26 08:00,2025-11-20 17:00,2025-11-20 17:00,2025-11-25 10:00,2025-11-25 10:00,0,40,100
FAB136401B-60,IMPACT - SECAI MEP SCAFFOLD  - FAB136401B,Active,Duct Shaft - 3F -SUE-FAB136401,,,,,,,,,,2025-08-25 08:00,2025-08-29 17:00,2025-05-23 08:00,,2025-11-21 08:00,2025-11-27 17:00,2025-11-17 10:00,2025-11-24 10:00,40,40,0
FAB136406A-60,IMPACT - SECAI SCAFFOLD - FAB136406A,Active,Clean Vestibule 19 - 3F -SUE-FAB136406,,,,,,,,,,2025-08-25 08:00,2025-08-29 17:00,2025-05-23 08:00,,2025-11-21 08:00,2025-11-27 17:00,2025-11-17 10:00,2025-11-24 10:00,40,40,0
FAB136406B-60,IMPACT - SECAI SCAFFOLD - FAB136406B,Active,Clean Vestibule 19 - 3F -SUE-FAB136406,,,,,,,,,,2025-08-25 08:00,2025-08-29 17:00,2025-05-23 08:00,,2025-11-21 08:00,2025-11-27 17:00,2025-11-17 10:00,2025-11-24 10:00,40,40,0
FAB13K6401A-04,INSTALL DOOR & HARDWARE - FAB13K6401A,Not Started,Clean Vestibule 19-1 - 3F -SUE-FAB13K6401,,,,,,,,,,2025-12-01 08:00,2025-12-05 17:00,,,2025-12-01 08:00,2025-12-05 17:00,2025-11-25 10:00,2025-12-02 10:00,40,40,0
FAB13K6401A-05,PAINT & PROTECT DOORS & FRAMES - FAB13K6401A,Not Started,Clean Vestibule 19-1 - 3F -SUE-FAB13K6401,,,,,,,,,,2026-02-16 08:00,2026-02-19 15:00,,,2026-02-16 08:00,2026-02-19 15:00,2025-12-02 10:00,2025-12-05 17:00,30,30,0
FAB13K6401A-03,INSTALL DOOR FRAMES - FAB13K6401A,Not Started,Clean Vestibule 19-1 - 3F -SUE-FAB13K6401,,,,,,,,,,2025-11-28 08:00,2025-11-28 17:00,,,2025-11-28 08:00,2025-11-28 17:00,2025-11-24 10:00,2025-11-25 10:00,8,8,0
FAB13K6402A-04,INSTALL DOOR & HARDWARE - FAB13K6402A,Not Started,Clean Vestibule 19-2 - 3F -SUE-FAB13K6402,,,,,,,,,,2025-12-01 08:00,2025-12-05 17:00,,,2025-12-01 08:00,2025-12-05 17:00,2025-11-25 10:00,2025-12-02 10:00,40,40,0
FAB13K6402A-05,PAINT & PROTECT DOORS & FRAMES - FAB13K6402A,Not Started,Clean Vestibule 19-2 - 3F -SUE-FAB13K6402,,,,,,,,,,2026-02-16 08:00,2026-02-19 15:00,,,2026-02-16 08:00,2026-02-19 15:00,2025-12-02 10:00,2025-12-05 17:00,30,30,0
FAB13K6402A-03,INSTALL DOOR FRAMES - FAB13K6402A,Not Started,Clean Vestibule 19-2 - 3F -SUE-FAB13K6402,,,,,,,,,,2025-11-28 08:00,2025-11-28 17:00,,,2025-11-28 08:00,2025-11-28 17:00,2025-11-24 10:00,2025-11-25 10:00,8,8,0
FAB13K6401A-60,IMPACT - SECAI SCAFFOLD IMPEDING FRAME AND DOOR INSTALLATION - FAB13K6401A,Active,Clean Vestibule 19-1 - 3F -SUE-FAB13K6401,,,,,,,,,,2025-05-23 08:00,2025-05-29 17:00,2025-05-23 08:00,,2025-11-21 08:00,2025-11-27 17:00,2025-11-17 10:00,2025-11-24 10:00,40,40,0
FAB13K6401B-04,INSTALL DOOR & HARDWARE - FAB13K6401B,Not Started,Clean Vestibule 19-1 - 3F -SUE-FAB13K6401,,,,,,,,,,2025-12-01 08:00,2025-12-05 17:00,,,2025-12-01 08:00,2025-12-05 17:00,2025-11-25 10:00,2025-12-02 10:00,40,40,0
FAB13K6401B-05,PAINT & PROTECT DOORS & FRAMES - FAB13K6401B,Not Started,Clean Vestibule 19-1 - 3F -SUE-FAB13K6401,,,,,,,,,,2026-02-16 08:00,2026-02-19 15:00,,,2026-02-16 08:00,2026-02-19 15:00,2025-12-02 10:00,2025-12-05 17:00,30,30,0
FAB13K6401B-03,INSTALL DOOR FRAMES - FAB13K6401B,Not Started,Clean Vestibule 19-1 - 3F -SUE-FAB13K6401,,,,,,,,,,2025-11-28 08:00,2025-11-28 17:00,,,2025-11-28 08:00,2025-11-28 17:00,2025-11-24 10:00,2025-11-25 10:00,8,8,0
FAB13K6401B-60,IMPACT - SECAI SCAFFOLD IMPEDING FRAME AND DOOR INSTALLATION - FAB13K6401B,Active,Clean Vestibule 19-1 - 3F -SUE-FAB13K6401,,,,,,,,,,2025-05-23 08:00,2025-05-29 17:00,2025-05-23 08:00,,2025-11-21 08:00,2025-11-27 17:00,2025-11-17 10:00,2025-11-24 10:00,40,40,0
FAB13K6402A-60,IMPACT - SECAI SCAFFOLD IMPEDING FRAME AND DOOR INSTALLATION - FAB13K6402A,Active,Clean Vestibule 19-2 - 3F -SUE-FAB13K6402,,,,,,,,,,2025-05-23 08:00,2025-05-29 17:00,2025-05-23 08:00,,2025-11-21 08:00,2025-11-27 17:00,2025-11-17 10:00,2025-11-24 10:00,40,40,0
FAB1-ST19D-60,IMPACT - SECAI SCAFFOLD IMPEDING FRAME AND DOOR INSTALLATION - FAB1-ST19D,Active,Stair 19 - 3F -SUE-FAB1-ST19,,,,,,,,,,2025-05-23 08:00,2025-05-29 17:00,2025-05-23 08:00,,2025-11-21 08:00,2025-11-27 17:00,2025-11-04 08:00,2025-11-10 17:00,40,40,0
FAB110110B-25,DOOR FRAME HANDED OVER TO SECAI ON 07/18 - FAB110110B,Complete,Air Lock 1 - 1F -SUW-FAB110110,,,,,,,,,,2025-07-18 08:00,2025-07-18 17:00,2025-07-18 08:00,2025-07-18 17:00,2025-11-20 17:00,2025-11-20 17:00,2025-11-25 08:00,2025-11-25 08:00,0,8,100
FAB112156A-03,INSTALL DOOR FRAME BY SECAI - FAB112156A,Complete,PCS Monitoring Rm - 1F - FAB-FAB112155,,,,,,,,,,2025-08-14 08:00,2025-08-14 17:00,2025-08-14 08:00,2025-08-20 17:00,2025-11-20 17:00,2025-11-20 17:00,2025-11-28 08:00,2025-11-28 08:00,0,8,100
FAB112156A-25,DOOR FRAME HANDED OVER TO SECAI 08/14 - FAB112156A,Complete,PCS Monitoring Rm - 1F - FAB-FAB112155,,,,,,,,,,2025-08-05 08:00,2025-08-13 17:00,2025-08-14 08:00,2025-08-14 16:00,2025-11-20 17:00,2025-11-20 17:00,2025-11-28 08:00,2025-11-28 08:00,0,56,100
FAB116111A-25,DOOR FRAME HANDED OVER TO SECAI ON 08/29 - FAB116111A,Complete,Air Lock 22 - 1F -SUE-FAB116111,,,,,,,,,,2025-08-29 08:00,2025-08-29 17:00,2025-08-29 08:00,2025-08-29 08:00,2025-11-20 17:00,2025-11-20 17:00,2025-11-25 10:00,2025-11-25 10:00,0,8,100
CN.SWB3.6371,AWNING - INSTALL - GL 18-24 - N LINE,Complete,CONSTRUCTION,,SUWS-1 - 18-15,EXTERIOR SKIN,,CONSTRUCTION,,,,,2025-11-10 07:00,2025-11-14 17:00,2025-11-10 07:00,2025-11-12 17:00,2025-11-20 17:00,2025-11-20 17:00,2025-12-05 17:00,2025-12-05 17:00,0,50,100
CN.SWB3.6351,AWNING - FIELD MEASURE - GL 18-24 - N LINE,Complete,CONSTRUCTION,,SUWS-1 - 18-15,EXTERIOR SKIN,,CONSTRUCTION,,,,,2025-10-20 07:00,2025-10-24 17:00,2025-10-08 07:00,2025-10-15 17:00,2025-11-20 17:00,2025-11-20 17:00,2025-12-05 17:00,2025-12-05 17:00,0,50,100
CN.SWB3.6361,AWNING- FABRICATE PROCURE - GL 18-24 - N LINE,Complete,CONSTRUCTION,,SUWS-1 - 18-15,EXTERIOR SKIN,,CONSTRUCTION,,,,,2025-10-27 07:00,2025-12-02 17:00,2025-10-17 07:00,2025-11-10 17:00,2025-11-20 17:00,2025-11-20 17:00,2025-12-05 17:00,2025-12-05 17:00,0,250,100
CN.SWB5.11110,KOVACH - INSTAL ACM PANEL - NW - BREEZEWAY,Not Started,SEA - 5,East Support Building,NORTH WEST PENTHOUSE,EXTERIOR SKIN,,CONSTRUCTION,KOVACH,INSULATED METAL PANELS,SEAN MONK,,2025-12-05 07:00,2025-12-09 17:00,,,2025-12-05 07:00,2025-12-09 17:00,2025-12-01 07:00,2025-12-05 17:00,50,50,0
CN.SWB3.6381,IMPACT - SECAI CIVIL WORK @ North end of canopy - BERG FRAMING - GL 23-29 - N LINE,Complete,CONSTRUCTION,,SUWN-3 - 24-27,EXTERIOR SKIN,,CONSTRUCTION,,,,,2025-08-14 07:00,2025-08-27 17:00,2025-09-05 07:00,2025-09-08 17:00,2025-11-20 17:00,2025-11-20 17:00,2025-09-29 07:00,2025-09-29 07:00,0,100,100
CN.SWB3.6391,Field Measure/ Layout DOCK LEVELER,Complete,CONSTRUCTION,,SUWN-1 - 18-21,EXTERIOR SKIN,,CONSTRUCTION,,,,,2025-09-05 07:00,2025-09-12 16:00,2025-09-05 07:00,2025-09-12 16:00,2025-11-20 17:00,2025-11-20 17:00,2025-08-26 07:00,2025-08-26 07:00,0,59,100
FAB116116A-25,DOOR FRAME HANDED OVER TO SECAI ON 08/20 - FAB116116A,Complete,Fire Alarm 22 - 1F -FAB116116,,,,,,,,,,2025-08-20 08:00,2025-08-20 17:00,2025-08-20 08:00,2025-08-20 17:00,2025-11-20 17:00,2025-11-20 17:00,2025-11-25 10:00,2025-11-25 10:00,0,8,100
FAB116302A-25,DOOR FRAME HANDED OVER TO SECAI ON 08/20 - FAB116302A,Complete,Elevator Mech.Rm 20 - 1F -SUE-FAB116302,,,,,,,,,,2025-10-15 08:00,2025-10-15 17:00,2025-08-20 08:00,2025-08-20 17:00,2025-11-20 17:00,2025-11-20 17:00,2025-11-27 08:00,2025-11-27 08:00,0,8,100
FAB116305C-03,INSTALL DOOR FRAME BY SECAI - FAB116305C HANDED OVER ON 08/20,Complete,Elevator Hall 20 - 1F -SUE-FAB116305,,,,,,,,,,2025-08-20 08:00,2025-08-20 17:00,2025-08-20 08:00,2025-08-25 17:00,2025-11-20 17:00,2025-11-20 17:00,2025-11-25 10:00,2025-11-25 10:00,0,8,100
FAB116305C-25,DOOR FRAME HANDED OVER TO SECAI - FAB116305C,Complete,Elevator Hall 20 - 1F -SUE-FAB116305,,,,,,,,,,2025-08-20 08:00,2025-08-20 17:00,2025-08-20 08:00,2025-08-20 17:00,2025-11-20 17:00,2025-11-20 17:00,2025-11-25 10:00,2025-11-25 10:00,0,8,100
FAB116512C-25,DOOR FRAME HANDED OVER TO SECAI ON 08/20 - FAB116512C,Complete,Elevator Hall 18 - 1F -SUE-FAB116512,,,,,,,,,,2025-08-20 08:00,2025-08-20 17:00,2025-08-20 08:00,2025-08-20 17:00,2025-11-20 17:00,2025-11-20 17:00,2025-11-25 08:00,2025-11-25 08:00,0,8,100
FAB116513D-25,DOOR FRAME HANDED OVER TO SECAI ON 08/20 - FAB116513D,Complete,Air Lock 18 - 1F -SUE-FAB116513,,,,,,,,,,2025-08-20 08:00,2025-08-20 17:00,2025-08-20 08:00,2025-08-20 17:00,2025-11-20 17:00,2025-11-20 17:00,2025-11-17 08:00,2025-11-17 08:00,0,8,100
FAB116513F-25,DOOR FRAME HANDED OVER TO SECAI ON 08/20 - FAB116513F,Complete,Air Lock 18 - 1F -SUE-FAB116513,,,,,,,,,,2025-08-20 08:00,2025-08-20 17:00,2025-08-20 08:00,2025-08-20 17:00,2025-11-20 17:00,2025-11-20 17:00,2025-11-25 10:00,2025-11-25 10:00,0,8,100
FAB116522A-04,INSTALL DOOR & HARDWARE - FAB116522A,Active,Manufacturing Storage 1 - 1F -SUE-FAB116522,,,,,,,,,,2025-10-03 08:00,2025-10-09 17:00,2025-10-03 08:00,,2025-11-21 08:00,2025-11-27 17:00,2025-11-25 08:00,2025-12-01 17:00,40,40,0
FAB116522A-05,PAINT & PROTECT DOORS & FRAMES - FAB116522A,Not Started,Manufacturing Storage 1 - 1F -SUE-FAB116522,,,,,,,,,,2026-02-16 08:00,2026-02-19 17:00,,,2026-02-16 08:00,2026-02-19 17:00,2025-12-02 08:00,2025-12-05 17:00,32,32,0
FAB116522A-03,INSTALL DOOR FRAME BY SECAI - FAB116522A HANDED OVER TO SECAI ON 08/20,Complete,Manufacturing Storage 1 - 1F -SUE-FAB116522,,,,,,,,,,2025-08-20 08:00,2025-08-20 17:00,2025-08-20 08:00,2025-09-05 17:00,2025-11-20 17:00,2025-11-20 17:00,2025-11-25 08:00,2025-11-25 08:00,0,8,100
FAB116522A-25,DOOR FRAME HANDED OVER TO SECAI ON 08/20- FAB116522A,Complete,Manufacturing Storage 1 - 1F -SUE-FAB116522,,,,,,,,,,2025-08-20 08:00,2025-08-20 17:00,2025-08-20 08:00,2025-08-20 17:00,2025-11-20 17:00,2025-11-20 17:00,2025-11-25 08:00,2025-11-25 08:00,0,8,100
FAB120113A-25,DOOR FRAME HANDED OVER TO SECAI ON 09/05 - FAB120113A,Complete,Elevator Hall 1 - 2F -SUW-FAB120113,,,,,,,,,,2025-09-05 08:00,2025-09-05 17:00,2025-09-05 08:00,2025-09-05 17:00,2025-11-20 17:00,2025-11-20 17:00,2025-11-17 10:00,2025-11-17 10:00,0,8,100
ZX-21425,IMPACT - SECAI TO RELOCATE CONDUIT -Toilet Vestibule - 1-1F-SUE-FAB116403,Complete,Toilet Vestibule 1 - 1F -SUE-FAB116403,,,,,,,,,,2025-09-04 08:00,2025-09-17 17:00,2025-09-04 08:00,2025-09-10 17:00,2025-11-20 17:00,2025-11-20 17:00,2025-12-05 17:00,2025-12-05 17:00,0,80,100
ZX-21435,SECAI TOOK OVER FOR ACCELRATION - Control Joint & Inspect - Duct Shaft Vestibule - 1F-SUE-FAB116408 (SECAI demo the wall,Complete,Duct Shaft Vestibule - 1F -SUE-FAB116408,,,,,,,,,,2025-10-02 08:00,2025-10-03 17:00,2025-10-03 08:00,2025-10-03 17:00,2025-11-20 17:00,2025-11-20 17:00,2025-12-05 17:00,2025-12-05 17:00,0,16,100
FAB120303F-25,DOOR FRAME HANDED OVER TO SECAI ON 08/29 - FAB120303F,Complete,Electrical Rm - 2F -SUW-FAB120401,,,,,,,,,,2025-08-29 08:00,2025-08-29 17:00,2025-08-29 08:00,2025-08-29 17:00,2025-11-20 17:00,2025-11-20 17:00,2025-11-25 10:00,2025-11-25 10:00,0,8,100
FAB120401B-03,INSTALL DOOR FRAME BY SECAI - FAB120401B HANDED OVER ON 08/29,Active,Electrical Rm - 2F -SUW-FAB120401,,,,,,,,,,2025-08-29 10:00,2025-09-01 10:00,2025-08-29 10:00,,2025-11-21 08:00,2025-11-28 17:00,2025-11-17 10:00,2025-11-25 10:00,48,8,0
FAB120401B-25,DOOR FRAME HANDED OVER TO SECAI ON 08/29 - FAB120401B,Complete,Electrical Rm - 2F -SUW-FAB120401,,,,,,,,,,2025-08-29 10:00,2025-09-01 10:00,2025-08-29 10:00,2025-08-29 10:00,2025-11-20 17:00,2025-11-20 17:00,2025-11-17 10:00,2025-11-17 10:00,0,8,100
FAB120503B-70,DOOR FRAME HANDED OVER TO SECAI ON 08/29 - FAB120503B,Complete,Air lock 5 - 2F -SUW-FAB120503,,,,,,,,,,2025-08-29 08:00,2025-08-29 17:00,2025-08-29 08:00,2025-08-29 17:00,2025-11-20 17:00,2025-11-20 17:00,2025-11-17 10:00,2025-11-17 10:00,0,8,100
FAB120503D-70,DOOR FRAME HANDED OVER TO SECAI ON 08/29 - FAB120503D,Complete,Air lock 5 - 2F -SUW-FAB120503,,,,,,,,,,2025-08-29 08:00,2025-08-29 17:00,2025-08-29 08:00,2025-08-29 17:00,2025-11-20 17:00,2025-11-20 17:00,2025-11-18 10:00,2025-11-18 10:00,0,8,100
ZX-21445,IMPACT - SECAI TEMPERATURE CONTROL - Elevator Hall 3 - 2F-FAB120305,Complete,Elevator Hall 3 - 2F -SUW-FAB120305,,,,,,,,,,2025-08-25 08:00,2025-09-05 17:00,2025-08-25 08:00,2025-10-06 17:00,2025-11-20 17:00,2025-11-20 17:00,2025-11-27 08:00,2025-11-27 08:00,0,80,100
ZX-21455,IMPACT - SECAI MEP SCAFFOLD - Vestibule 1 - 2F-SUW-FAB120508,Complete,Vestibule 1 - 2F -SUW-FAB120508,,,,,,,,,,2025-08-15 08:00,2025-08-15 08:00,2025-08-15 08:00,2025-09-26 17:00,2025-11-20 17:00,2025-11-20 17:00,2025-12-05 17:00,2025-12-05 17:00,0,0,100
STAIR.2830,"IMPACT - RFI 1807 - current response NOT CONSTRUCTIBLE - STAIR #63, 65, 66, 72, 73, 76 - SUW - LEVEL 04",Complete,CONSTRUCTION,,INTERIOR STAIRS,L4 - SUP Roof - FAB Roof,SUW - SUPPORT WEST,CONSTRUCTION,,,,,2025-09-02 07:00,2025-09-09 17:00,2025-09-02 07:00,2025-09-12 17:00,2025-11-20 17:00,2025-11-20 17:00,2025-11-10 07:00,2025-11-10 07:00,0,60,100
ZX-21465,IMPACT - SECAI TO BUILD SCAFFOLD - Stair #20 SUE- 2F- FAB1-ST20,Complete,Stair #20 - 2F -SUE-FAB1-ST20,,,,,,,,,,2025-09-04 08:00,2025-09-17 17:00,2025-09-04 08:00,2025-09-26 17:00,2025-11-20 17:00,2025-11-20 17:00,2025-12-05 17:00,2025-12-05 17:00,0,80,100
ZX-21475,IMPACT - SECAI MEP SCAFFOLD - Clean Vestibule 19 - 2F-FAB126402,Complete,Clean Vestibule 19 - 2F -SUE-FAB126402,,,,,,,,,,2025-09-04 08:00,2025-09-17 17:00,2025-09-04 08:00,2025-10-03 17:00,2025-11-20 17:00,2025-11-20 17:00,2025-12-04 08:00,2025-12-04 08:00,0,80,100
CN.SWB3.6401,AWNING - FIELD MEASURE - N/27-33,Complete,CONSTRUCTION,,SUWN-5 - 30-33,EXTERIOR SKIN,,CONSTRUCTION,,,,,2025-10-20 07:00,2025-10-21 17:00,2025-10-09 07:00,2025-10-15 17:00,2025-11-20 17:00,2025-11-20 17:00,2025-11-20 07:00,2025-11-20 07:00,0,20,100
CN.SWB3.6411,AWNING - FABRICATE PROCURE - N/27-33,Complete,CONSTRUCTION,,SUWN-5 - 30-33,EXTERIOR SKIN,,CONSTRUCTION,,,,,2025-10-06 07:00,2025-10-27 11:00,2025-10-06 07:00,2025-11-10 11:00,2025-11-20 17:00,2025-11-20 17:00,2025-11-20 07:00,2025-11-20 07:00,0,154,100
ZX-21485,IMPACT - SECAI MEP SCAFFOLD IN THE AREA - Duct Shaft - 3F-SUE-FAB136301,Active,Duct Shaft - 3F -SUE-FAB136301,,,,,,,,,,2025-09-11 08:00,2025-09-24 17:00,2025-09-11 08:00,,2025-11-21 08:00,2025-11-27 17:00,2025-12-01 08:00,2025-12-05 17:00,40,80,0
ZX-21495,"SECAI TURNOVER FOR ACELERATION - Drywall, CJ & FC + Inspect-Corridor - 2F-SUE-FAB122153",Complete,Corridor-  2F -FAB-FAB122153,,,,,,,,,,2025-06-27 08:00,2025-07-10 17:00,2025-06-27 08:00,2025-06-27 17:00,2025-11-20 17:00,2025-11-20 17:00,2025-11-25 10:00,2025-11-25 10:00,0,80,100
FAB122153A-03,INSTALL DOOR FRAMES - FAB122153A HANDED OVER ON 08/29,Complete,Corridor-  2F -FAB-FAB122153,,,,,,,,,,2025-08-29 08:00,2025-08-29 17:00,2025-08-29 08:00,2025-11-13 17:00,2025-11-20 17:00,2025-11-20 17:00,2025-11-25 10:00,2025-11-25 10:00,0,8,100
FAB122153A-04,INSTALL DOOR & HARDWARE - FAB122153A,Active,Corridor-  2F -FAB-FAB122153,,,,,,,,,,2025-11-14 08:00,2025-11-20 17:00,2025-11-14 08:00,,2025-11-21 08:00,2025-11-27 17:00,2025-11-25 10:00,2025-12-02 10:00,40,40,0
FAB122153A-05,PAINT & PROTECT DOORS & FRAMES - FAB122153A,Not Started,Corridor-  2F -FAB-FAB122153,,,,,,,,,,2026-02-16 08:00,2026-02-19 15:00,,,2026-02-16 08:00,2026-02-19 15:00,2025-12-02 10:00,2025-12-05 17:00,30,30,0
FAB122153A-25,DOOR FRAME HANDED OVER TO SECAI ON 08/29 - FAB122153A,Complete,Corridor-  2F -FAB-FAB122153,,,,,,,,,,2025-08-29 08:00,2025-08-29 17:00,2025-08-29 08:00,2025-08-29 17:00,2025-11-20 17:00,2025-11-20 17:00,2025-11-25 10:00,2025-11-25 10:00,0,8,100
ZX-21505,"SECAI TURNOVER FOR ACELERATION - Drywall, CJ & FC + Inspect-EBS - 2F-SUE-FAB122155",Complete,Empty Bottle Storage-  2F -FAB-FAB122155,,,,,,,,,,2025-06-27 08:00,2025-07-10 17:00,2025-06-27 08:00,2025-06-27 17:00,2025-11-20 17:00,2025-11-20 17:00,2025-11-25 10:00,2025-11-25 10:00,0,80,100
FAB122155A-03,INSTALL DOOR FRAMES - FAB122155A HANDED OVER ON 08/08,Complete,Empty Bottle Storage-  2F -FAB-FAB122155,,,,,,,,,,2025-08-08 08:00,2025-08-08 17:00,2025-08-08 08:00,2025-10-27 08:00,2025-11-20 17:00,2025-11-20 17:00,2025-11-25 10:00,2025-11-25 10:00,0,8,100
FAB122155A-04,INSTALL DOOR & HARDWARE - FAB122155A,Not Started,Empty Bottle Storage-  2F -FAB-FAB122155,,,,,,,,,,2025-11-21 08:00,2025-11-27 17:00,,,2025-11-21 08:00,2025-11-27 17:00,2025-11-25 10:00,2025-12-02 10:00,40,40,0
FAB122155A-05,PAINT & PROTECT DOORS & FRAMES - FAB122155A,Not Started,Empty Bottle Storage-  2F -FAB-FAB122155,,,,,,,,,,2026-02-16 08:00,2026-02-19 15:00,,,2026-02-16 08:00,2026-02-19 15:00,2025-12-02 10:00,2025-12-05 17:00,30,30,0
FAB122155A-25,DOOR FRAME HANDED OVER TO SECAI ON 08/08 - FAB122155A,Complete,Empty Bottle Storage-  2F -FAB-FAB122155,,,,,,,,,,2025-08-08 08:00,2025-08-08 17:00,2025-08-08 08:00,2025-08-08 17:00,2025-11-20 17:00,2025-11-20 17:00,2025-11-25 10:00,2025-11-25 10:00,0,8,100
FAB122156A-03,INSTALL DOOR FRAMES - FAB122156A HANDED OVER ON 08/08,Complete,Slurry Office-  2F -FAB-FAB122156,,,,,,,,,,2025-08-08 08:00,2025-08-08 17:00,2025-08-08 08:00,2025-08-29 17:00,2025-11-20 17:00,2025-11-20 17:00,2025-11-25 10:00,2025-11-25 10:00,0,8,100
FAB122156A-04,INSTALL DOOR & HARDWARE - FAB122156A,Not Started,Slurry Office-  2F -FAB-FAB122156,,,,,,,,,,2025-11-21 08:00,2025-11-27 17:00,,,2025-11-21 08:00,2025-11-27 17:00,2025-11-25 10:00,2025-12-02 10:00,40,40,0
FAB122156A-05,PAINT & PROTECT DOORS & FRAMES - FAB122156A,Not Started,Slurry Office-  2F -FAB-FAB122156,,,,,,,,,,2026-02-16 08:00,2026-02-19 15:00,,,2026-02-16 08:00,2026-02-19 15:00,2025-12-02 10:00,2025-12-05 17:00,30,30,0
FAB122156A-25,DOOR FRAME HANDED OVER TO SECAI ON 08/08 - FAB122156A,Complete,Slurry Office-  2F -FAB-FAB122156,,,,,,,,,,2025-08-08 08:00,2025-08-08 17:00,2025-08-08 08:00,2025-08-08 17:00,2025-11-20 17:00,2025-11-20 17:00,2025-11-25 10:00,2025-11-25 10:00,0,8,100
ZX-21515,"SECAI TURNOVER FOR ACELERATION - Drywall, CJ & FC + Inspect-Slurry - 2F-SUE-FAB122157",Complete,Slurry-  2F -FAB-FAB122157,,,,,,,,,,2025-06-27 08:00,2025-07-10 17:00,2025-06-27 08:00,2025-06-27 17:00,2025-11-20 17:00,2025-11-20 17:00,2025-11-17 10:00,2025-11-17 10:00,0,80,100
FAB122157B-03,INSTALL DOOR FRAMES - FAB122157B HANDED OVER ON 06/27,Complete,Slurry-  2F -FAB-FAB122157,,,,,,,,,,2025-08-29 08:00,2025-08-29 17:00,2025-06-27 08:00,2025-11-13 17:00,2025-11-20 17:00,2025-11-20 17:00,2025-11-25 10:00,2025-11-25 10:00,0,8,100
FAB122157B-04,INSTALL DOOR & HARDWARE - FAB122157B,Active,Slurry-  2F -FAB-FAB122157,,,,,,,,,,2025-11-14 08:00,2025-11-20 17:00,2025-11-14 08:00,,2025-11-21 08:00,2025-11-27 17:00,2025-11-25 10:00,2025-12-02 10:00,40,40,0
FAB122157B-05,PAINT & PROTECT DOORS & FRAMES - FAB122157B,Not Started,Slurry-  2F -FAB-FAB122157,,,,,,,,,,2026-02-16 08:00,2026-02-19 15:00,,,2026-02-16 08:00,2026-02-19 15:00,2025-12-02 10:00,2025-12-05 17:00,30,30,0
FAB122157B-25,DOOR FRAME HANDED OVER TO SECAI ON 06/27 - FAB122157B,Complete,Slurry-  2F -FAB-FAB122157,,,,,,,,,,2025-06-27 08:00,2025-06-27 17:00,2025-06-27 08:00,2025-06-27 17:00,2025-11-20 17:00,2025-11-20 17:00,2025-11-25 10:00,2025-11-25 10:00,0,8,100
FAB126107A-25,DOOR FRAME HANDED OVER TO SECAI ON 08/29 - FAB126107A,Complete,Air Lock 22 - 2F -SUE-FAB126107,,,,,,,,,,2025-08-29 08:00,2025-08-29 17:00,2025-08-29 08:00,2025-08-29 17:00,2025-11-20 17:00,2025-11-20 17:00,2025-11-25 10:00,2025-11-25 10:00,0,8,100
FAB126506E-25,DOOR FRAME HANDED OVER TO SECAI ON 08/29 - FAB126506E,Complete,Air Lock 18 - 2F -SUE-FAB126506,,,,,,,,,,2025-08-29 08:00,2025-08-29 17:00,2025-08-29 08:00,2025-08-29 17:00,2025-11-20 17:00,2025-11-20 17:00,2025-11-25 10:00,2025-11-25 10:00,0,8,100
FAB134105B-6,DOOR FRAME HANDED OVER TO SECAI ON 08/01 - FAB134105B,Complete,S/L Entrance - 3F -FIZ-FAB134105,,,,,,,,,,2025-08-01 13:00,2025-08-04 12:00,2025-07-31 13:00,2025-08-01 12:00,2025-11-20 17:00,2025-11-20 17:00,2025-11-25 10:00,2025-11-25 10:00,0,8,100
FAB1-ST01C-03,INSTALL DOOR FRAMES - FAB1-ST01C,Complete,Stair 1 - 3F -SUW-FAB1-ST01,,,,,,,,,,2025-05-29 08:00,2025-05-29 17:00,2025-05-29 08:00,2025-05-29 17:00,2025-11-20 17:00,2025-11-20 17:00,2025-11-24 08:00,2025-11-24 08:00,0,8,100
FAB1-ST01C-04,INSTALL DOOR & HARDWARE - FAB1-ST01C,Active,Stair 1 - 3F -SUW-FAB1-ST01,,,,,,,,,,2025-11-11 08:00,2025-11-17 17:00,2025-11-11 08:00,,2025-11-21 08:00,2025-11-27 17:00,2025-11-24 08:00,2025-11-28 17:00,40,40,0
FAB1-ST01C-05,PAINT & PROTECT DOORS & FRAMES - FAB1-ST01C,Not Started,Stair 1 - 3F -SUW-FAB1-ST01,,,,,,,,,,2026-02-16 08:00,2026-02-20 17:00,,,2026-02-16 08:00,2026-02-20 17:00,2025-12-01 08:00,2025-12-05 17:00,40,40,0
FAB1-ST18A-03,INSTALL DOOR FRAMES - FAB1-ST18A,Complete,Stair 18 - 1F -SUE- FAB1-ST18,,,,,,,,,,2025-09-09 08:00,2025-09-09 17:00,2025-09-09 08:00,2025-09-09 17:00,2025-11-20 17:00,2025-11-20 17:00,2025-11-24 08:00,2025-11-24 08:00,0,8,100
FAB1-ST18A-04,INSTALL DOOR & HARDWARE - FAB1-ST18A,Active,Stair 18 - 1F -SUE- FAB1-ST18,,,,,,,,,,2025-10-28 08:00,2025-11-03 17:00,2025-10-28 08:00,,2025-11-21 08:00,2025-11-27 17:00,2025-11-24 08:00,2025-11-28 17:00,40,40,0
FAB1-ST18A-05,PAINT & PROTECT DOORS & FRAMES - FAB1-ST18A,Not Started,Stair 18 - 1F -SUE- FAB1-ST18,,,,,,,,,,2026-02-16 08:00,2026-02-20 17:00,,,2026-02-16 08:00,2026-02-20 17:00,2025-12-01 08:00,2025-12-05 17:00,40,40,0
FAB1-ST18C-03,INSTALL DOOR FRAMES - FAB1-ST18C,Not Started,Stair 18 - 3F -SUE-FAB1-ST18,,,,,,,,,,2025-11-21 08:00,2025-11-21 17:00,,,2025-11-21 08:00,2025-11-21 17:00,2025-11-21 08:00,2025-11-21 17:00,8,8,0
FAB1-ST18C-04,INSTALL DOOR & HARDWARE - FAB1-ST18C,Not Started,Stair 18 - 3F -SUE-FAB1-ST18,,,,,,,,,,2025-11-24 08:00,2025-11-28 17:00,,,2025-11-24 08:00,2025-11-28 17:00,2025-11-24 08:00,2025-11-28 17:00,40,40,0
FAB1-ST18C-05,PAINT & PROTECT DOORS & FRAMES - FAB1-ST18C,Not Started,Stair 18 - 3F -SUE-FAB1-ST18,,,,,,,,,,2026-02-16 08:00,2026-02-20 17:00,,,2026-02-16 08:00,2026-02-20 17:00,2025-12-01 08:00,2025-12-05 17:00,40,40,0
FAB1-ST19B-25,DOOR FRAME HANDED OVER TO SECAI ON 08/29 - FAB1-ST19B,Complete,Stair #19 - 2F -SUE-FAB1-ST19,,,,,,,,,,2025-08-29 08:00,2025-08-29 17:00,2025-08-29 08:00,2025-08-29 17:00,2025-11-20 17:00,2025-11-20 17:00,2025-11-25 08:00,2025-11-25 08:00,0,8,100
FAB1-ST20A-25,DOOR FRAME HANDED OVER TO SECAI ON 09/02 - FAB1-ST20A,Complete,Stair 20 - 1F -SUE- FAB1-ST20,,,,,,,,,,2025-09-02 08:00,2025-09-02 17:00,2025-09-02 08:00,2025-09-02 17:00,2025-11-20 17:00,2025-11-20 17:00,2025-11-25 08:00,2025-11-25 08:00,0,8,100
FAB1-ST22A-03,INSTALL DOOR FRAME BY SECAI - FAB1-ST22A HANDED OVER TO SECAI ON 08/20,Complete,Stair 22 - 1F -SUE-FAB1-ST22,,,,,,,,,,2025-08-20 08:00,2025-08-20 17:00,2025-08-20 08:00,2025-11-06 08:00,2025-11-20 17:00,2025-11-20 17:00,2025-11-25 08:00,2025-11-25 08:00,0,8,100
FAB1-ST22A-04,INSTALL DOOR & HARDWARE - FAB1-ST22A,Active,Stair 22 - 1F -SUE-FAB1-ST22,,,,,,,,,,2025-11-07 08:00,2025-11-13 17:00,2025-11-07 08:00,,2025-11-21 08:00,2025-11-27 17:00,2025-11-25 08:00,2025-12-01 17:00,40,40,0
FAB1-ST22A-05,PAINT & PROTECT DOORS & FRAMES - FAB1-ST22A,Not Started,Stair 22 - 1F -SUE-FAB1-ST22,,,,,,,,,,2026-02-16 08:00,2026-02-19 17:00,,,2026-02-16 08:00,2026-02-19 17:00,2025-12-02 08:00,2025-12-05 17:00,32,32,0
FAB1-ST22A-25,DOOR FRAME HANDED OVER TO SECAI ON 08/20 - FAB1-ST22A,Complete,Stair 22 - 1F -SUE-FAB1-ST22,,,,,,,,,,2025-08-20 08:00,2025-08-20 17:00,2025-08-20 08:00,2025-08-20 17:00,2025-11-20 17:00,2025-11-20 17:00,2025-11-25 08:00,2025-11-25 08:00,0,8,100
FAB136302C-21,DOOR FRAME HANDED OVER TO SECAI ON 08/29 - FAB136302C,Complete,Electrical Rm - 3F -SUE-FAB136302,,,,,,,,,,2025-08-29 08:00,2025-08-29 17:00,2025-08-29 08:00,2025-08-29 17:00,2025-11-20 17:00,2025-11-20 17:00,2025-11-17 10:00,2025-11-17 10:00,0,8,100
FAB126506B-6,DOOR FRAME HANDED OVER TO SECAI ON 08/29 - FAB126506B,Complete,Air Lock 18 - 2F -SUE-FAB126506,,,,,,,,,,2025-08-29 08:00,2025-08-29 17:00,2025-08-29 08:00,2025-08-29 17:00,2025-11-20 17:00,2025-11-20 17:00,2025-11-25 10:00,2025-11-25 10:00,0,8,100
CN.SWB3.6451,AWNING - INSTALL - GL 1-6 - N LINE,Active,CONSTRUCTION,,FIZ 2 / SUWS 5  (GL6-1) - GL J - N - DATA CENTER 1,EXTERIOR SKIN,,CONSTRUCTION,,,,,2025-11-10 07:00,2025-11-14 17:00,2025-11-10 07:00,,2025-11-21 07:00,2025-12-01 17:00,2025-10-08 07:00,2025-10-14 17:00,50,50,0
CN.SWB3.6431,AWNING - FIELD MEASURE - GL 1-6 - N LINE,Complete,CONSTRUCTION,,FIZ 2 / SUWS 5  (GL6-1) - GL J - N - DATA CENTER 1,EXTERIOR SKIN,,CONSTRUCTION,,,,,2025-10-02 07:00,2025-10-08 17:00,2025-09-24 12:00,2025-09-30 17:00,2025-11-20 17:00,2025-11-20 17:00,2025-10-08 07:00,2025-10-08 07:00,0,50,100
CN.SWB3.6441,AWNING- FABRICATE PROCURE - GL 1-6 - N LINE,Complete,CONSTRUCTION,,FIZ 2 / SUWS 5  (GL6-1) - GL J - N - DATA CENTER 1,EXTERIOR SKIN,,CONSTRUCTION,,,,,2025-10-20 07:00,2025-11-14 17:00,2025-10-06 07:00,2025-11-10 17:00,2025-11-20 17:00,2025-11-20 17:00,2025-10-08 07:00,2025-10-08 07:00,0,200,100
CN.SWB3.6481,AWNING - INSTALL - GL GL 10-14 - N LINE,Complete,CONSTRUCTION,,SUWS-1 - 18-15,EXTERIOR SKIN,,CONSTRUCTION,,,,,2025-11-10 07:00,2025-11-14 17:00,2025-11-10 07:00,2025-11-14 17:00,2025-11-20 17:00,2025-11-20 17:00,2025-12-05 17:00,2025-12-05 17:00,0,50,100
CN.SWB3.6461,AWNING - FIELD MEASURE - GL 10-14 - N LINE,Complete,CONSTRUCTION,,SUWS-1 - 18-15,EXTERIOR SKIN,,CONSTRUCTION,,,,,2025-10-20 07:00,2025-10-24 17:00,2025-10-08 07:00,2025-10-15 17:00,2025-11-20 17:00,2025-11-20 17:00,2025-12-05 17:00,2025-12-05 17:00,0,50,100
CN.SWB3.6471,AWNING- FABRICATE PROCURE - GL GL 10-14 - N LINE,Complete,CONSTRUCTION,,SUWS-1 - 18-15,EXTERIOR SKIN,,CONSTRUCTION,,,,,2025-10-27 07:00,2025-12-02 17:00,2025-10-17 07:00,2025-11-10 17:00,2025-11-20 17:00,2025-11-20 17:00,2025-12-05 17:00,2025-12-05 17:00,0,250,100
CN.SWB3.6511,AWNING - INSTALL - GL 1-7 - A LINE,Not Started,CONSTRUCTION,,SUES-5 - 6-1 - FIZ - GL A -E,EXTERIOR SKIN,,CONSTRUCTION,,,,,2025-12-01 07:00,2025-12-05 17:00,,,2025-12-01 07:00,2025-12-05 17:00,2025-11-18 07:00,2025-11-24 17:00,50,50,0
CN.SWB3.6491,AWNING - FIELD MEASURE - GL 1-7 - A LINE,Complete,CONSTRUCTION,,SUES-5 - 6-1 - FIZ - GL A -E,EXTERIOR SKIN,,CONSTRUCTION,,,,,2025-10-02 07:00,2025-10-08 17:00,2025-09-24 12:00,2025-10-16 17:00,2025-11-20 17:00,2025-11-20 17:00,2025-11-18 07:00,2025-11-18 07:00,0,50,100
CN.SWB3.6501,AWNING - FABRICATION - GL 5 - A LINE,Complete,CONSTRUCTION,,SUES-5 - 6-1 - FIZ - GL A -E,EXTERIOR SKIN,,CONSTRUCTION,,,,,2025-11-03 07:00,2025-12-02 17:00,2025-10-17 07:00,2025-11-10 17:00,2025-11-20 17:00,2025-11-20 17:00,2025-11-18 07:00,2025-11-18 07:00,0,200,100
CN.SWB3.6521,AWNING - FIELD MEASURE - GL 11-17 - A 17,Complete,CONSTRUCTION,,SUES-1 - 19-16,EXTERIOR SKIN,,CONSTRUCTION,,,,,2025-10-02 07:00,2025-10-02 17:00,2025-09-29 07:00,2025-10-17 17:00,2025-11-20 17:00,2025-11-20 17:00,2025-11-12 07:00,2025-11-12 07:00,0,10,100
CN.SWB3.6541,AWNING - INSTALL - GL 11-17 - A 17,Not Started,CONSTRUCTION,,SUES-1 - 19-16,EXTERIOR SKIN,,CONSTRUCTION,,,,,2025-11-25 07:00,2025-11-26 17:00,,,2025-11-25 07:00,2025-11-26 17:00,2025-11-12 07:00,2025-11-13 17:00,20,20,0
CN.SWB3.6531,AWNING - FABRICATION - GL 11-17 - A 17,Complete,CONSTRUCTION,,SUES-1 - 19-16,EXTERIOR SKIN,,CONSTRUCTION,,,,,2025-10-06 07:00,2025-10-31 10:00,2025-10-06 07:00,2025-11-10 10:00,2025-11-20 17:00,2025-11-20 17:00,2025-11-12 07:00,2025-11-12 07:00,0,193,100
CN.SWB3.6551,AWNING - FIELD MEASURE - GL 18 - 24,Complete,CONSTRUCTION,,SUEN-4 - 28-31,EXTERIOR SKIN,,CONSTRUCTION,,,,,2025-10-02 07:00,2025-10-06 17:00,2025-09-29 07:00,2025-10-14 17:00,2025-11-20 17:00,2025-11-20 17:00,2025-10-22 07:00,2025-10-22 07:00,0,30,100
CN.SWB3.6571,AWNING - INSTALL - GL 18 - 24,Not Started,CONSTRUCTION,,SUEN-4 - 28-31,EXTERIOR SKIN,,CONSTRUCTION,,,,,2025-11-21 07:00,2025-11-24 17:00,,,2025-11-21 07:00,2025-11-24 17:00,2025-10-22 07:00,2025-10-23 17:00,20,20,0
CN.SWB3.6561,AWNING - FABRICATION GL 18 - 24,Complete,CONSTRUCTION,,SUEN-4 - 28-31,EXTERIOR SKIN,,CONSTRUCTION,,,,,2025-11-03 07:00,2025-12-02 17:00,2025-10-16 07:00,2025-11-10 17:00,2025-11-20 17:00,2025-11-20 17:00,2025-10-22 07:00,2025-10-22 07:00,0,200,100
FAB126502C-40,DOOR FRAME HANDED OVER TO SECAI ON 08/29 - FAB126502C,Complete,Electrical Rm - 2F -SUE-FAB126502,,,,,,,,,,2025-08-29 08:00,2025-08-29 17:00,2025-08-29 08:00,2025-08-29 17:00,2025-11-20 17:00,2025-11-20 17:00,2025-11-25 10:00,2025-11-25 10:00,0,8,100
FAB136302A-40,DOOR FRAME HANDED OVER TO SECAI ON 08/29 - FAB136302A,Complete,Electrical Rm - 3F -SUE-FAB136302,,,,,,,,,,2025-08-29 08:00,2025-08-29 17:00,2025-08-29 08:00,2025-08-29 17:00,2025-11-20 17:00,2025-11-20 17:00,2025-11-25 10:00,2025-11-25 10:00,0,8,100
FAB136302G-40,DOOR FRAME HANDED OVER TO SECAI ON 08/29 - FAB136302G,Complete,Electrical Rm - 3F -SUE-FAB136302,,,,,,,,,,2025-08-29 08:00,2025-08-29 17:00,2025-08-29 08:00,2025-08-29 17:00,2025-11-20 17:00,2025-11-20 17:00,2025-11-25 10:00,2025-11-25 10:00,0,8,100
ZX-21525,IMPACT - SECAI MEP SCAFFOLD - Duct Shaft - 1F-SUE-FAB116204,Complete,Duct Shaft - 1F -SUE-FAB116204,,,,,,,,,,2025-09-12 08:00,2025-09-25 17:00,2025-09-11 08:00,2025-09-26 17:00,2025-11-20 17:00,2025-11-20 17:00,2025-12-05 17:00,2025-12-05 17:00,0,80,100
ZX-21535,IMPACT SECAI MEP AND CABLE TRAY IN THE AREA - Duct Shaft Vestibule - 1F-SUE-FAB116310,Active,Duct Shaft Vestibule - 1F -SUE-FAB116310,,,,,,,,,,2025-08-15 08:00,2025-08-28 17:00,2025-08-15 08:00,,2025-11-21 08:00,2025-11-27 17:00,2025-12-01 08:00,2025-12-05 17:00,40,80,0
ZX-21545,IMPACT - SECAI TEMPERATURE CONTROL DUCTS -Elevator Hall1 - 2F-FAB120113,Active,Elevator Hall 1 - 2F -SUW-FAB120113,,,,,,,,,,2025-09-15 08:00,2025-09-26 17:00,2025-09-15 08:00,,2025-11-21 08:00,2025-12-01 17:00,2025-11-21 08:00,2025-12-01 17:00,56,80,0
ZX-21555,IMPACT - SECAI MEP SCAFFOLD IN THE AREA - Duct Shaft - 3F-SUW_FAB130401,Active,Duct Shaft - 3F -SUW-FAB130401,,,,,,,,,,2025-08-26 08:00,2025-09-08 17:00,2025-08-26 08:00,,2025-11-21 08:00,2025-11-27 17:00,2025-11-27 08:00,2025-12-03 17:00,40,80,0
ZX-21565,IMPACT - SECAI MEP SCAFFOLD IN THE AREA - 3F-SUW-FAB130406,Active,Duct Shaft - 3F -SUW-FAB130406,,,,,,,,,,2025-08-26 08:00,2025-09-08 17:00,2025-08-26 08:00,,2025-11-21 08:00,2025-11-27 17:00,2025-12-01 08:00,2025-12-05 17:00,40,80,0
ZX-21575,IMPACT - SECAI DUCT WORK - Duct Shaft - 3F-SUW-FAB130502,Active,Duct Shaft - 3F -SUW-FAB130502,,,,,,,,,,2025-09-02 08:00,2025-09-15 17:00,2025-09-02 08:00,,2025-11-21 08:00,2025-11-27 17:00,2025-12-01 08:00,2025-12-05 17:00,40,80,0
ZX-21585,Complete Drywall & Inspect - Stair #05 - 2F-FAB1-ST05,Complete,Stair 5 - 2F -SUW-FAB1-ST05,,,,,,,,,,2025-05-28 08:00,2025-06-16 17:00,2025-05-22 08:00,2025-09-02 17:00,2025-11-20 17:00,2025-11-20 17:00,2025-11-25 10:00,2025-11-25 10:00,0,112,100
ZX-21595,Complete Fire Caulk & Inspect - Stair #05 - 2F-FAB1-ST05,Complete,Stair 5 - 2F -SUW-FAB1-ST05,,,,,,,,,,2025-06-19 08:00,2025-06-20 17:00,2025-05-22 08:00,2025-09-02 17:00,2025-11-20 17:00,2025-11-20 17:00,2025-12-05 17:00,2025-12-05 17:00,0,16,100
ZX-21605,Complete Control Joint & Inspect - Stair #05 - 2F-FAB1-ST05,Complete,Stair 5 - 2F -SUW-FAB1-ST05,,,,,,,,,,2025-06-17 08:00,2025-06-18 17:00,2025-06-17 08:00,2025-06-18 17:00,2025-11-20 17:00,2025-11-20 17:00,2025-11-25 10:00,2025-11-25 10:00,0,16,100
FAB1-ST05B-01,IMPACT - INSTALL/REWORK DRYWALL FRAMING AROUND DOORS - FAB1-ST05B,Complete,Stair 5 - 2F -SUW-FAB1-ST05,,,,,,,,,,2025-09-11 08:00,2025-09-12 17:00,2025-09-11 08:00,2025-09-12 17:00,2025-11-20 17:00,2025-11-20 17:00,2025-11-25 10:00,2025-11-25 10:00,0,16,100
FAB1-ST05B-02,SECAI ROUGH IN/SECURITY - FAB1-ST05B,Complete,Stair 5 - 2F -SUW-FAB1-ST05,,,,,,,,,,2025-09-15 08:00,2025-09-15 17:00,2025-09-12 08:00,2025-09-12 17:00,2025-11-20 17:00,2025-11-20 17:00,2025-11-25 10:00,2025-11-25 10:00,0,8,100
FAB1-ST05B-03,INSTALL DOOR FRAMES - FAB1-ST05B,Complete,Stair 5 - 2F -SUW-FAB1-ST05,,,,,,,,,,2025-09-12 08:00,2025-09-12 17:00,2025-09-12 08:00,2025-09-12 17:00,2025-11-20 17:00,2025-11-20 17:00,2025-11-25 10:00,2025-11-25 10:00,0,8,100
FAB1-ST05B-04,INSTALL DOOR & HARDWARE - FAB1-ST05B,Active,Stair 5 - 2F -SUW-FAB1-ST05,,,,,,,,,,2025-11-05 08:00,2025-11-11 17:00,2025-11-05 08:00,,2025-11-21 08:00,2025-11-27 17:00,2025-11-25 10:00,2025-12-02 10:00,40,40,0
FAB1-ST05B-05,PAINT & PROTECT DOORS & FRAMES - FAB1-ST05B,Not Started,Stair 5 - 2F -SUW-FAB1-ST05,,,,,,,,,,2026-02-16 08:00,2026-02-19 15:00,,,2026-02-16 08:00,2026-02-19 15:00,2025-12-02 10:00,2025-12-05 17:00,30,30,0
ZX-21615,Complete Drywall & Inspect - Stair #05 - 3F-FAB1-ST05,Complete,Stair 5 - 3F -SUW-FAB1-ST05,,,,,,,,,,2025-05-28 08:00,2025-06-16 17:00,2025-05-22 08:00,2025-09-02 17:00,2025-11-20 17:00,2025-11-20 17:00,2025-11-25 10:00,2025-11-25 10:00,0,112,100
ZX-21625,Complete Fire Caulk & Inspect - Stair #05 - 3F-FAB1-ST05,Complete,Stair 5 - 3F -SUW-FAB1-ST05,,,,,,,,,,2025-06-19 08:00,2025-06-20 17:00,2025-05-22 08:00,2025-09-02 17:00,2025-11-20 17:00,2025-11-20 17:00,2025-12-05 17:00,2025-12-05 17:00,0,16,100
ZX-21635,Complete Control Joint & Inspect - Stair #05 - 3F-FAB1-ST05,Complete,Stair 5 - 3F -SUW-FAB1-ST05,,,,,,,,,,2025-06-17 08:00,2025-06-18 17:00,2025-06-17 08:00,2025-06-18 17:00,2025-11-20 17:00,2025-11-20 17:00,2025-11-25 10:00,2025-11-25 10:00,0,16,100
FAB1-ST05C-01,IMPACT - INSTALL/REWORK DRYWALL FRAMING AROUND DOORS - FAB1-ST05C,Complete,Stair 5 - 3F -SUW-FAB1-ST05,,,,,,,,,,2025-09-09 08:00,2025-09-10 17:00,2025-09-09 08:00,2025-09-10 17:00,2025-11-20 17:00,2025-11-20 17:00,2025-11-25 10:00,2025-11-25 10:00,0,16,100
FAB1-ST05C-02,SECAI ROUGH IN/SECURITY - FAB1-ST05C,Complete,Stair 5 - 3F -SUW-FAB1-ST05,,,,,,,,,,2025-09-10 08:00,2025-09-10 17:00,2025-09-10 08:00,2025-09-10 17:00,2025-11-20 17:00,2025-11-20 17:00,2025-11-25 10:00,2025-11-25 10:00,0,8,100
FAB1-ST05C-03,INSTALL DOOR FRAMES - FAB1-ST05C,Complete,Stair 5 - 3F -SUW-FAB1-ST05,,,,,,,,,,2025-09-10 08:00,2025-09-10 17:00,2025-09-10 08:00,2025-09-10 17:00,2025-11-20 17:00,2025-11-20 17:00,2025-11-25 10:00,2025-11-25 10:00,0,8,100
FAB1-ST05C-04,INSTALL DOOR & HARDWARE - FAB1-ST05C,Not Started,Stair 5 - 3F -SUW-FAB1-ST05,,,,,,,,,,2025-11-21 08:00,2025-11-27 17:00,,,2025-11-21 08:00,2025-11-27 17:00,2025-11-25 10:00,2025-12-02 10:00,40,40,0
FAB1-ST05C-05,PAINT & PROTECT DOORS & FRAMES - FAB1-ST05C,Not Started,Stair 5 - 3F -SUW-FAB1-ST05,,,,,,,,,,2026-02-16 08:00,2026-02-19 15:00,,,2026-02-16 08:00,2026-02-19 15:00,2025-12-02 10:00,2025-12-05 17:00,30,30,0
FAB1-ST05D-01,IMPACT - INSTALL/REWORK DRYWALL FRAMING AROUND DOORS - FAB1-ST05D,Complete,Stair 5 - 4F -SUW-FAB1-ST05,,,,,,,,,,2025-09-15 08:00,2025-09-16 17:00,2025-09-15 08:00,2025-09-16 17:00,2025-11-20 17:00,2025-11-20 17:00,2025-11-25 10:00,2025-11-25 10:00,0,16,100
FAB1-ST05D-02,SECAI ROUGH IN/SECURITY - FAB1-ST05D,Complete,Stair 5 - 4F -SUW-FAB1-ST05,,,,,,,,,,2025-09-16 08:00,2025-09-16 17:00,2025-09-16 08:00,2025-09-16 17:00,2025-11-20 17:00,2025-11-20 17:00,2025-11-25 10:00,2025-11-25 10:00,0,8,100
FAB1-ST05D-03,INSTALL DOOR FRAMES - FAB1-ST05DD,Complete,Stair 5 - 4F -SUW-FAB1-ST05,,,,,,,,,,2025-09-16 08:00,2025-09-16 17:00,2025-09-16 08:00,2025-09-16 17:00,2025-11-20 17:00,2025-11-20 17:00,2025-11-25 10:00,2025-11-25 10:00,0,8,100
FAB1-ST05D-04,INSTALL DOOR & HARDWARE - FAB1-ST05D,Not Started,Stair 5 - 4F -SUW-FAB1-ST05,,,,,,,,,,2025-11-21 08:00,2025-11-27 17:00,,,2025-11-21 08:00,2025-11-27 17:00,2025-11-25 10:00,2025-12-02 10:00,40,40,0
FAB1-ST05D-05,PAINT & PROTECT DOORS & FRAMES - FAB1-ST05D,Not Started,Stair 5 - 4F -SUW-FAB1-ST05,,,,,,,,,,2026-02-16 08:00,2026-02-19 15:00,,,2026-02-16 08:00,2026-02-19 15:00,2025-12-02 10:00,2025-12-05 17:00,30,30,0
TR-FAB116112A-21,DOOR FRAME HANDED OVER TO SECAI ON 09/05 - TR - FAB116112A,Complete,IT/Security 22 - 1F -TR-SUE-FAB116112,,,,,,,,,,2025-09-05 08:00,2025-09-05 17:00,2025-09-05 08:00,2025-09-05 17:00,2025-11-20 17:00,2025-11-20 17:00,2025-11-25 10:00,2025-11-25 10:00,0,8,100
FAB122155B-03,INSTALL DOOR FRAMES - FAB122155B HANDED OVER ON 08/08,Complete,Empty Bottle Storage-  2F -FAB-FAB122155,,,,,,,,,,2025-08-08 08:00,2025-08-08 17:00,2025-08-08 08:00,2025-08-29 17:00,2025-11-20 17:00,2025-11-20 17:00,2025-11-25 10:00,2025-11-25 10:00,0,8,100
FAB122155B-04,INSTALL DOOR & HARDWARE - FAB122155B,Not Started,Empty Bottle Storage-  2F -FAB-FAB122155,,,,,,,,,,2025-11-21 08:00,2025-11-27 17:00,,,2025-11-21 08:00,2025-11-27 17:00,2025-11-25 10:00,2025-12-02 10:00,40,40,0
FAB122155B-05,PAINT & PROTECT DOORS & FRAMES - FAB122155B,Not Started,Empty Bottle Storage-  2F -FAB-FAB122155,,,,,,,,,,2026-02-16 08:00,2026-02-19 15:00,,,2026-02-16 08:00,2026-02-19 15:00,2025-12-02 10:00,2025-12-05 17:00,30,30,0
FAB122155B-25,DOOR FRAME HANDED OVER TO SECAI ON 08/08 - FAB122155B,Complete,Empty Bottle Storage-  2F -FAB-FAB122155,,,,,,,,,,2025-08-08 08:00,2025-08-08 17:00,2025-08-08 08:00,2025-08-08 17:00,2025-11-20 17:00,2025-11-20 17:00,2025-11-25 10:00,2025-11-25 10:00,0,8,100
FAB122157A-03,INSTALL DOOR FRAMES - FAB122157A HANDED OVER ON 08/08,Active,Slurry-  2F -FAB-FAB122157,,,,,,,,,,2025-08-08 08:00,2025-08-08 17:00,2025-08-08 08:00,,2025-11-21 08:00,2025-11-28 17:00,2025-11-17 10:00,2025-11-25 10:00,48,8,0
FAB122157A-04,INSTALL DOOR & HARDWARE - FAB122157A,Not Started,Slurry-  2F -FAB-FAB122157,,,,,,,,,,2025-12-01 08:00,2025-12-05 17:00,,,2025-12-01 08:00,2025-12-05 17:00,2025-11-25 10:00,2025-12-02 10:00,40,40,0
FAB122157A-05,PAINT & PROTECT DOORS & FRAMES - FAB122157A,Not Started,Slurry-  2F -FAB-FAB122157,,,,,,,,,,2026-02-16 08:00,2026-02-19 15:00,,,2026-02-16 08:00,2026-02-19 15:00,2025-12-02 10:00,2025-12-05 17:00,30,30,0
FAB122157A-25,DOOR FRAME HANDED OVER TO SECAI ON 08/08 - FAB122157A,Complete,Slurry-  2F -FAB-FAB122157,,,,,,,,,,2025-08-08 08:00,2025-08-08 17:00,2025-08-08 08:00,2025-08-08 17:00,2025-11-20 17:00,2025-11-20 17:00,2025-11-17 10:00,2025-11-17 10:00,0,8,100
FAB1U1301A-03,INSTALL DOOR FRAME BY SECAI - FAB1U1301A HANDED OVER 09/05,Complete,SOUTH/NORTH PIT - 1F - SUW,,,,,,,,,,2025-09-05 08:00,2025-09-18 17:00,2025-09-05 08:00,2025-09-19 17:00,2025-11-20 17:00,2025-11-20 17:00,2025-11-25 08:00,2025-11-25 08:00,0,80,100
FAB1U1301A-04,INSTALL DOOR & HARDWARE - FAB1U1301A,Active,SOUTH/NORTH PIT - 1F - SUW,,,,,,,,,,2025-10-17 08:00,2025-10-23 17:00,2025-10-17 08:00,,2025-11-21 08:00,2025-11-27 17:00,2025-11-25 08:00,2025-12-01 17:00,40,40,0
FAB1U1301A-05,PAINT & PROTECT DOORS & FRAMES -  FAB1U1301A,Not Started,SOUTH/NORTH PIT - 1F - SUW,,,,,,,,,,2026-02-16 08:00,2026-02-19 17:00,,,2026-02-16 08:00,2026-02-19 17:00,2025-12-02 08:00,2025-12-05 17:00,32,32,0
FAB1U1301A-25,DOOR FRAME HANDED OVER TO SECAI ON 09/05 - FAB1U1301A,Complete,SOUTH/NORTH PIT - 1F - SUW,,,,,,,,,,2025-09-05 08:00,2025-09-05 17:00,2025-09-05 08:00,2025-09-05 17:00,2025-11-20 17:00,2025-11-20 17:00,2025-11-25 08:00,2025-11-25 08:00,0,8,100
FAB1U1404A-03,INSTALL DOOR FRAME BY SECAI - FAB1U1404A HANDED OVER 07/08,Complete,SOUTH/NORTH PIT - 1F - SUW,,,,,,,,,,2025-07-08 08:00,2025-07-21 17:00,2025-07-08 08:00,2025-09-17 17:00,2025-11-20 17:00,2025-11-20 17:00,2025-11-25 08:00,2025-11-25 08:00,0,80,100
FAB1U1404A-04,INSTALL DOOR & HARDWARE - FAB1U1404A,Not Started,SOUTH/NORTH PIT - 1F - SUW,,,,,,,,,,2025-11-21 08:00,2025-11-27 17:00,,,2025-11-21 08:00,2025-11-27 17:00,2025-11-25 08:00,2025-12-01 17:00,40,40,0
FAB1U1404A-05,PAINT & PROTECT DOORS & FRAMES -  FAB1U1404A,Not Started,SOUTH/NORTH PIT - 1F - SUW,,,,,,,,,,2026-02-16 08:00,2026-02-19 17:00,,,2026-02-16 08:00,2026-02-19 17:00,2025-12-02 08:00,2025-12-05 17:00,32,32,0
FAB1U1404A-25,DOOR FRAME HANDED OVER TO SECAI ON 07/08 - FAB1U1404A,Complete,SOUTH/NORTH PIT - 1F - SUW,,,,,,,,,,2025-07-08 08:00,2025-07-08 17:00,2025-07-08 08:00,2025-07-08 17:00,2025-11-20 17:00,2025-11-20 17:00,2025-11-25 08:00,2025-11-25 08:00,0,8,100
FAB1U1406A-03,INSTALL DOOR FRAME BY SECAI - FAB1U1406A HANDED OVER 08/08,Complete,SOUTH/NORTH PIT - 1F - SUW,,,,,,,,,,2025-08-08 08:00,2025-08-21 17:00,2025-08-08 08:00,2025-08-27 17:00,2025-11-20 17:00,2025-11-20 17:00,2025-11-25 08:00,2025-11-25 08:00,0,80,100
FAB1U1406A-04,INSTALL DOOR & HARDWARE - FAB1U1406A,Active,SOUTH/NORTH PIT - 1F - SUW,,,,,,,,,,2025-10-31 08:00,2025-11-06 17:00,2025-10-31 08:00,,2025-11-21 08:00,2025-11-27 17:00,2025-11-25 08:00,2025-12-01 17:00,40,40,0
FAB1U1406A-05,PAINT & PROTECT DOORS & FRAMES -  FAB1U1406A,Not Started,SOUTH/NORTH PIT - 1F - SUW,,,,,,,,,,2026-02-16 08:00,2026-02-19 17:00,,,2026-02-16 08:00,2026-02-19 17:00,2025-12-02 08:00,2025-12-05 17:00,32,32,0
FAB1U1406A-25,DOOR FRAME HANDED OVER TO SECAI ON 08/08 - FAB1U1406A,Complete,SOUTH/NORTH PIT - 1F - SUW,,,,,,,,,,2025-08-08 08:00,2025-08-08 17:00,2025-08-08 08:00,2025-08-08 17:00,2025-11-20 17:00,2025-11-20 17:00,2025-11-25 08:00,2025-11-25 08:00,0,8,100
FAB1U1407A-03,INSTALL DOOR FRAME BY SECAI - FAB1U1407A HANDED OVER 07/08,Complete,SOUTH/NORTH PIT - 1F - SUW,,,,,,,,,,2025-07-08 08:00,2025-07-21 17:00,2025-07-08 08:00,2025-11-12 17:00,2025-11-20 17:00,2025-11-20 17:00,2025-11-25 08:00,2025-11-25 08:00,0,80,100
FAB1U1407A-04,INSTALL DOOR & HARDWARE - FAB1U1407A,Active,SOUTH/NORTH PIT - 1F - SUW,,,,,,,,,,2025-11-13 08:00,2025-11-19 17:00,2025-11-13 08:00,,2025-11-21 08:00,2025-11-27 17:00,2025-11-25 08:00,2025-12-01 17:00,40,40,0
FAB1U1407A-05,PAINT & PROTECT DOORS & FRAMES -  FAB1U1407A,Not Started,SOUTH/NORTH PIT - 1F - SUW,,,,,,,,,,2026-02-16 08:00,2026-02-19 17:00,,,2026-02-16 08:00,2026-02-19 17:00,2025-12-02 08:00,2025-12-05 17:00,32,32,0
FAB1U1407A-25,DOOR FRAME HANDED OVER TO SECAI ON 07/08 - FAB1U1407A,Complete,SOUTH/NORTH PIT - 1F - SUW,,,,,,,,,,2025-07-08 08:00,2025-07-08 17:00,2025-07-08 08:00,2025-07-08 17:00,2025-11-20 17:00,2025-11-20 17:00,2025-11-25 08:00,2025-11-25 08:00,0,8,100
FAB1U1502A-03,INSTALL DOOR FRAME BY SECAI - FAB1U1502A HANDED OVER 07/18,Complete,SOUTH/NORTH PIT - 1F - SUW,,,,,,,,,,2025-07-18 08:00,2025-07-31 17:00,2025-07-18 08:00,2025-10-03 17:00,2025-11-20 17:00,2025-11-20 17:00,2025-11-25 08:00,2025-11-25 08:00,0,80,100
FAB1U1502A-04,INSTALL DOOR & HARDWARE - FAB1U1502A,Active,SOUTH/NORTH PIT - 1F - SUW,,,,,,,,,,2025-11-14 08:00,2025-11-20 17:00,2025-11-14 08:00,,2025-11-21 08:00,2025-11-27 17:00,2025-11-25 08:00,2025-12-01 17:00,40,40,0
FAB1U1502A-05,PAINT & PROTECT DOORS & FRAMES -  FAB1U1502A,Not Started,SOUTH/NORTH PIT - 1F - SUW,,,,,,,,,,2026-02-16 08:00,2026-02-19 17:00,,,2026-02-16 08:00,2026-02-19 17:00,2025-12-02 08:00,2025-12-05 17:00,32,32,0
FAB1U1502A-25,DOOR FRAME HANDED OVER TO SECAI ON 07/18 - FAB1U1502A,Complete,SOUTH/NORTH PIT - 1F - SUW,,,,,,,,,,2025-07-18 08:00,2025-07-18 17:00,2025-07-18 08:00,2025-07-18 17:00,2025-11-20 17:00,2025-11-20 17:00,2025-11-25 08:00,2025-11-25 08:00,0,8,100
FAB1U1503A-03,INSTALL DOOR FRAME BY SECAI - FAB1U1503A HANDED OVER 07/08,Complete,SOUTH/NORTH PIT - 1F - SUW,,,,,,,,,,2025-07-08 08:00,2025-07-21 17:00,2025-07-08 08:00,2025-10-27 17:00,2025-11-20 17:00,2025-11-20 17:00,2025-11-25 08:00,2025-11-25 08:00,0,80,100
FAB1U1503A-04,INSTALL DOOR & HARDWARE - FAB1U1503A,Active,SOUTH/NORTH PIT - 1F - SUW,,,,,,,,,,2025-10-28 08:00,2025-11-03 17:00,2025-10-28 08:00,,2025-11-21 08:00,2025-11-27 17:00,2025-11-25 08:00,2025-12-01 17:00,40,40,0
FAB1U1503A-05,PAINT & PROTECT DOORS & FRAMES -  FAB1U1503A,Not Started,SOUTH/NORTH PIT - 1F - SUW,,,,,,,,,,2026-02-16 08:00,2026-02-19 17:00,,,2026-02-16 08:00,2026-02-19 17:00,2025-12-02 08:00,2025-12-05 17:00,32,32,0
FAB1U1503A-25,DOOR FRAME HANDED OVER TO SECAI ON 07/08 - FAB1U1503A,Complete,SOUTH/NORTH PIT - 1F - SUW,,,,,,,,,,2025-07-08 08:00,2025-07-08 17:00,2025-07-08 08:00,2025-07-08 17:00,2025-11-20 17:00,2025-11-20 17:00,2025-11-25 08:00,2025-11-25 08:00,0,8,100
CN.SWA1.10080,"IMPACT - SECAI DIRECTION HOLD CUT SLAB, EDGE ARMOUR & LVL 1 FRAMING AND DRYWALL - ELEVATOR 5 - SECAI TO TAKE OVER",Active,SWA - 1,West Support Building,SUWS-1 - 18-15,,ELEVATOR,CONSTRUCTION,W&W,DRYWALL,JAMES LIVELY,INTERIORS,2025-07-25 07:00,2025-10-20 17:00,2025-07-25 07:00,,2025-11-21 07:00,2025-11-21 07:00,2025-10-15 17:00,2025-10-15 17:00,0,610,100
CN.AB.AR.8770,IMPACT - SECAI FINISH INSTALL LVL 1 HSS POST - ELEVATOR 01,Complete,CONSTRUCTION,,FIZ 2 / SUWS 5  (GL6-1) - GL J - N - DATA CENTER 1,,ELEVATOR,CONSTRUCTION,BAKER,,,,2025-08-04 07:00,2025-08-22 17:00,2025-08-04 07:00,2025-09-17 17:00,2025-11-20 17:00,2025-11-20 17:00,2025-12-05 17:00,2025-12-05 17:00,0,150,100
CN.AB.AR.8790,IMPACT - SECAI HOLDING TOUCH UP PAINT - ELEVATOR 22 - SECAI TOOK OVER ACCELERATION,Complete,CONSTRUCTION,,FIZ 2 / SUWS 5  (GL6-1) - GL J - N - DATA CENTER 1,,ELEVATOR,CONSTRUCTION,BAKER,,,,2025-09-02 07:00,2025-09-08 17:00,2025-09-02 07:00,2025-09-02 17:00,2025-11-20 17:00,2025-11-20 17:00,2025-12-05 17:00,2025-12-05 17:00,0,50,100
CN.AB.AR.8810,IMPACT - SECAI HOLDING TOUCH UP PAINT - ELEVATOR 18 SECAI TOOK OVER,Complete,CONSTRUCTION,,FIZ 2 / SUWS 5  (GL6-1) - GL J - N - DATA CENTER 1,,ELEVATOR,CONSTRUCTION,BAKER,,,,2025-08-08 07:00,2025-08-14 17:00,2025-08-08 07:00,2025-08-08 17:00,2025-11-20 17:00,2025-11-20 17:00,2025-12-05 17:00,2025-12-05 17:00,0,50,100
CN.AB.AR.8820,IMPACT - SECAI HOLDING TOUCH UP PAINT - ELEVATOR 19 SECAI TOOK OVER,Complete,CONSTRUCTION,,FIZ 2 / SUWS 5  (GL6-1) - GL J - N - DATA CENTER 1,,ELEVATOR,CONSTRUCTION,BAKER,,,,2025-09-02 07:00,2025-09-08 17:00,2025-09-02 07:00,2025-09-02 17:00,2025-11-20 17:00,2025-11-20 17:00,2025-12-05 17:00,2025-12-05 17:00,0,50,100
CN.BB51.ST.3662,TAPE & FLOAT SANDING INTERIOR DRYWALL & SANDING - VESTIBULE 18 - GL 33 - STAIR 18 - C-D (),Active,CONSTRUCTION,,GRIDLINE 33,GL 33 STAIR 18 (EAST),STAIR 18 (EAST) - C-D,CONSTRUCTION,CHERRY COATING,,,,2025-10-06 07:00,2025-10-10 17:00,2025-10-06 07:00,,2025-12-04 07:00,2025-12-10 17:00,2025-11-12 07:00,2025-11-18 17:00,50,50,0
FAB116104A-08,IMPACT - TEMP UTILITY LINE RUNNING TROUGH THE DOOR OPENING - FAB116104A,Active,OAC Mechanical RM - 1F -FIZ-FAB116101,,,,,,,,,,2025-06-13 08:00,2025-07-03 17:00,2025-06-13 08:00,,2025-11-21 08:00,2025-11-27 17:00,2025-11-18 10:00,2025-11-25 10:00,40,120,0
CN.AB.AR.8830,IMPACT - SECAI FRAMING  ALL LEVELS - OUT OF SEQUENCE - ELEVATOR 01 SECAI TOOK OVER,Complete,CONSTRUCTION,,FIZ 2 / SUWS 5  (GL6-1) - GL J - N - DATA CENTER 1,,ELEVATOR,CONSTRUCTION,BAKER,,,,2025-09-08 07:00,2025-09-26 17:00,2025-09-11 07:00,2025-09-11 17:00,2025-11-20 17:00,2025-11-20 17:00,2025-12-05 17:00,2025-12-05 17:00,0,150,100
CN.SWA4.7580,IMPACT - RFI 1806/ 11365/11365 - THROUGH WALL FLASHING - IOCC 1559 - GL 31-33 - N LINE - WEST OVERBRIDGE,Complete,CONSTRUCTION,,SUWN-5 - 30-33,EXTERIOR SKIN,,CONSTRUCTION,KOVACH,INSULATED METAL PANELS,,,2025-08-01 07:00,2025-08-07 17:00,2025-09-03 07:00,2025-09-30 17:00,2025-11-20 17:00,2025-11-20 17:00,2025-11-20 07:00,2025-11-20 07:00,0,50,100
CN.SWB3.6581,IMPACT - SECAI CIVIL UNDER GRND WORK - CANOPY N32-33,Complete,CONSTRUCTION,,SUWN-5 - 30-33,EXTERIOR SKIN,,CONSTRUCTION,,,,,2025-09-19 07:00,2025-09-24 17:00,2025-09-15 07:00,2025-10-01 17:00,2025-11-20 17:00,2025-11-20 17:00,2025-11-13 07:00,2025-11-13 07:00,0,40,100
FAB110507A-70,IMPACT - SECAI REMOVED FRAME AND DOOR - FAB110507A REINSTALLATION BY SECAI,Complete,Elevator Hall 5 - 1F -SUW-FAB110507,,,,,,,,,,2025-09-01 08:00,2025-09-19 17:00,2025-09-01 08:00,2025-10-27 17:00,2025-11-20 17:00,2025-11-20 17:00,2025-11-25 10:00,2025-11-25 10:00,0,120,100
FAB116401B-60,DOOR FRAME HANDED OVER TO SECAI ON 08/15 - FAB116401B,Complete,Duct Shaft - 1F -SUE-FAB116401,,,,,,,,,,2025-08-15 08:00,2025-08-15 17:00,2025-08-15 08:00,2025-08-15 17:00,2025-11-20 17:00,2025-11-20 17:00,2025-11-17 10:00,2025-11-17 10:00,0,8,100
CN.SWB5.11120,BERG - SHEATHING (Remove and Reinstall)- INSTALLATION - NE - BREEZEWAY,Complete,SEA - 5,East Support Building,NORTH EAST PENTHOUSE,EXTERIOR SKIN,,CONSTRUCTION,KOVACH,INSULATED METAL PANELS,SEAN MONK,,2025-10-05 07:00,2025-10-06 17:00,2025-09-23 07:00,2025-09-29 17:00,2025-11-20 17:00,2025-11-20 17:00,2025-12-01 07:00,2025-12-01 07:00,0,20,100
CN.SWB5.11130,BERG - INSTALL CEILING FRAMING & SHEATHING - NW - BREEZEWAY,Complete,SEA - 5,East Support Building,NORTH WEST PENTHOUSE,EXTERIOR SKIN,,CONSTRUCTION,KOVACH,INSULATED METAL PANELS,SEAN MONK,,2025-10-02 07:00,2025-10-06 17:00,2025-09-22 07:00,2025-10-08 17:00,2025-11-20 17:00,2025-11-20 17:00,2025-11-17 07:00,2025-11-17 07:00,0,50,100
CN.SWB5.11140,GDA - WATERPROOFING - NW - BREEZEWAY,Not Started,SEA - 5,East Support Building,NORTH WEST PENTHOUSE,EXTERIOR SKIN,,CONSTRUCTION,KOVACH,INSULATED METAL PANELS,SEAN MONK,,2025-11-30 07:00,2025-12-04 17:00,,,2025-11-30 07:00,2025-12-04 17:00,2025-11-24 07:00,2025-11-30 17:00,50,50,0
CN.AB.AR.8840,EDGE ARMOR INSTALL - ELEVATOR 01,Complete,CONSTRUCTION,,FIZ 2 / SUWS 5  (GL6-1) - GL J - N - DATA CENTER 1,,ELEVATOR,CONSTRUCTION,BAKER,,,,2025-10-02 07:00,2025-10-29 17:00,2025-10-02 07:00,2025-10-29 17:00,2025-11-20 17:00,2025-11-20 17:00,2025-12-05 17:00,2025-12-05 17:00,0,200,100
CN.BB51.ST.3672,IMPACT - GDA/BERG PRICING FOR RFI 5626 SAMOO-VERTICAL EJ- L 3/4 - VESTIBULE 5 3RD LAYER - STAIR 5,Complete,CONSTRUCTION,,GRIDLINE 33,GL 33 STAIR 5 (WEST),STAIR 5 (WEST) - K-L,CONSTRUCTION,BERG,,,,2025-09-19 07:00,2025-09-26 17:00,2025-09-19 07:00,2025-10-01 07:00,2025-11-20 17:00,2025-11-20 17:00,2025-11-11 07:00,2025-11-11 07:00,0,60,100
STAIR.2840,INSTALL NORTH PIT HANDRAIL (M.523-29) - LEVEL U1-01,Complete,CONSTRUCTION,,INTERIOR STAIRS,LU1 - Underground Level,SUW - SUPPORT WEST,CONSTRUCTION,,,,,2025-09-23 07:00,2025-10-06 17:00,2025-09-24 00:00,2025-10-22 17:00,2025-11-20 17:00,2025-11-20 17:00,2025-12-05 17:00,2025-12-05 17:00,0,100,100
STAIR.2850,INSTALL SOUTH PIT HANDRAIL (M.5 13-14/18-19) - LEVEL U1-01,Not Started,CONSTRUCTION,,INTERIOR STAIRS,LU1 - Underground Level,SUW - SUPPORT WEST,CONSTRUCTION,,,,,2025-12-15 07:00,2025-12-22 17:00,,,2025-12-15 07:00,2025-12-22 17:00,2025-11-26 07:00,2025-12-05 17:00,60,60,0
STAIR.2860,IMPACT - SECAI CONTRAINTS REMOVAL - SOUTH PIT HANDRAIL (M.5 13-14/18-19) - LEVEL U1-01,Complete,CONSTRUCTION,,INTERIOR STAIRS,LU1 - Underground Level,SUW - SUPPORT WEST,CONSTRUCTION,,,,,2025-09-02 07:00,2025-09-08 17:00,2025-09-02 07:00,2025-10-20 17:00,2025-11-20 17:00,2025-11-20 17:00,2025-11-26 07:00,2025-11-26 07:00,0,50,100
STAIR.2870,IMPACT - SECAI DESIGN CHANGE - SOUTH PIT HANDRAIL (M.5 13-14/18-19) - LEVEL U1-01 (SUBMITTAL APPROVAL Y_SBMT#0493-3),Active,CONSTRUCTION,,INTERIOR STAIRS,LU1 - Underground Level,SUW - SUPPORT WEST,CONSTRUCTION,,,,,2025-09-02 07:00,2025-09-08 17:00,2025-09-02 07:00,,2025-11-21 07:00,2025-11-24 17:00,2025-11-24 07:00,2025-11-25 17:00,20,50,0
STAIR.2880,INSTALL N19 HANDRAIL - LEVEL 01,Active,CONSTRUCTION,,INTERIOR STAIRS,L1 - Fndn Slab,SUW - SUPPORT WEST,CONSTRUCTION,,,,,2025-10-24 07:00,2025-10-28 17:00,2025-10-24 07:00,,2025-12-09 07:00,2026-01-07 17:00,2025-11-07 07:00,2025-12-05 17:00,190,30,0
STAIR.2890,IMPACT - PENDING DRAWINGS APPROVAL - N19 HANDRAIL - LEVEL 01,Complete,CONSTRUCTION,,INTERIOR STAIRS,L1 - Fndn Slab,SUW - SUPPORT WEST,CONSTRUCTION,,,,,2025-10-09 07:00,2025-10-15 17:00,2025-10-09 07:00,2025-10-15 17:00,2025-11-20 17:00,2025-11-20 17:00,2025-10-24 07:00,2025-10-24 07:00,0,50,100
CN.AB.AR.8850,INSTALL TRAFFIC RAILS - ELEVATOR 01 - LEVEL 1,Complete,SWA - 5,West Support Building,INTERIOR STAIRS,L1 - Fndn Slab,ELEVATOR,CONSTRUCTION,W&W,TBD Architectural Finishes,,INTERIORS,2025-10-09 07:00,2025-10-13 17:00,2025-10-09 07:00,2025-10-14 17:00,2025-11-20 17:00,2025-11-20 17:00,2025-12-05 17:00,2025-12-05 17:00,0,30,100
CN.AB.AR.8860,IMPACT - SECAI CONSTRAINTS REMOVAL - TRAFFIC RAILS - ELEVATOR 01 - LEVEL 1,Complete,SWA - 5,West Support Building,INTERIOR STAIRS,L1 - Fndn Slab,ELEVATOR,CONSTRUCTION,W&W,TBD Architectural Finishes,,INTERIORS,2025-09-24 07:00,2025-09-30 17:00,2025-09-24 07:00,2025-10-06 17:00,2025-11-20 17:00,2025-11-20 17:00,2025-12-05 17:00,2025-12-05 17:00,0,50,100
CN.SEA5.11200,INSTALL TRAFFIC RAILS - ELEVATOR 22 - LEVEL 1,Not Started,SEA - 5,West Support Building,INTERIOR STAIRS,L1 - Fndn Slab,ELEVATOR,CONSTRUCTION,W&W,DRYWALL,,INTERIORS,2026-01-22 07:00,2026-01-26 17:00,,,2026-01-22 07:00,2026-01-26 17:00,2025-12-03 07:00,2025-12-05 17:00,30,30,0
CN.SEA5.11210,IMPACT - PENDING DRAWINGS APPROVAL - TRAFFIC RAILS - ELEVATOR 22 - LEVEL 1,Complete,SEA - 5,West Support Building,INTERIOR STAIRS,L1 - Fndn Slab,ELEVATOR,CONSTRUCTION,W&W,DRYWALL,,INTERIORS,2025-09-02 07:00,2025-09-08 17:00,2025-09-02 07:00,2025-10-01 17:00,2025-11-20 17:00,2025-11-20 17:00,2025-12-03 07:00,2025-12-03 07:00,0,50,100
CN.SEA5.11220,IMPACT - SECAI CONSTRAINTS REMOVAL - TRAFFIC RAILS - ELEVATOR 22 - LEVEL 1 (TO BE REMOVED IN 2 MONTHS FROM 10/16),Active,SEA - 5,West Support Building,INTERIOR STAIRS,L1 - Fndn Slab,ELEVATOR,CONSTRUCTION,W&W,DRYWALL,,INTERIORS,2025-09-02 07:00,2025-09-08 17:00,2025-09-02 07:00,,2025-11-21 07:00,2026-01-21 17:00,2025-10-07 07:00,2025-12-02 17:00,390,50,0
FAB116519B-10,SHOP DRAWINGS (RFI 9565) - PATRIOT - FAB116519B,Complete,PR Air Lock - 1F -SUE-FAB116519,,INTERIOR STAIRS,L1 - Fndn Slab,,,,,,,2025-07-03 08:00,2025-07-03 17:00,2025-07-03 08:00,2025-09-11 17:00,2025-11-20 17:00,2025-11-20 17:00,2025-12-02 08:00,2025-12-02 08:00,0,8,100
FAB116519B-20,SECAI SWITCHED TO KING STUDS - SHOP DRAWINGS APPROVAL - JACOBS/SECAI - FAB116519B,Complete,PR Air Lock - 1F -SUE-FAB116519,,INTERIOR STAIRS,L1 - Fndn Slab,,,,,,,2025-09-29 08:00,2025-10-03 17:00,2025-10-09 08:00,2025-10-09 17:00,2025-11-20 17:00,2025-11-20 17:00,2025-12-02 08:00,2025-12-02 08:00,0,40,100
FAB116519B-30,SECAI SWITCHED TO KING STUDS - HEADER/GOAL POST FABRICATION - PATRIOT - FAB116519B,Complete,PR Air Lock - 1F -SUE-FAB116519,,INTERIOR STAIRS,L1 - Fndn Slab,,,,,,,2025-09-25 08:00,2025-09-29 17:00,2025-10-09 08:00,2025-10-09 17:00,2025-11-20 17:00,2025-11-20 17:00,2025-12-02 08:00,2025-12-02 08:00,0,24,100
FAB116519B-40,SECAI SWITCHED TO KING STUDS - HEADER/GOAL POST INSTALL - PATRIOT - FAB116519B,Complete,PR Air Lock - 1F -SUE-FAB116519,,INTERIOR STAIRS,L1 - Fndn Slab,,,,,,,2025-09-25 08:00,2025-09-29 17:00,2025-10-09 08:00,2025-10-09 17:00,2025-11-20 17:00,2025-11-20 17:00,2025-12-02 08:00,2025-12-02 08:00,0,24,100
FAB120108D-70,MODIFY BASEPLATES (PATRIOT) - FAB120108D,Complete,Air Lock 1 - 2F -SUW-FAB120108,,INTERIOR STAIRS,L2 - SubFab Level,,,,,,,2025-10-29 08:00,2025-11-04 17:00,2025-10-29 08:00,2025-11-04 17:00,2025-11-20 17:00,2025-11-20 17:00,2025-11-25 10:00,2025-11-25 10:00,0,40,100
FAB120108B-70,GOAL POST INSTALL - PATRIOT - FAB120108B,Complete,Air Lock 1 - 2F -SUW-FAB120108,,INTERIOR STAIRS,L2 - SubFab Level,,,,,,,2025-07-28 08:00,2025-08-01 17:00,2025-07-28 08:00,2025-09-15 17:00,2025-11-20 17:00,2025-11-20 17:00,2025-11-06 17:00,2025-11-06 17:00,0,40,100
STAIR.2900,IMPACT - SECAI CONSTRAINT REMOVAL - STAIR #73 - SUE - 18-C - LEVEL 04,Complete,CONSTRUCTION,,INTERIOR STAIRS,L4 - SUP Roof - FAB Roof,SUE - SUPPORT EAST,CONSTRUCTION,,,,,2025-09-02 07:00,2025-09-08 17:00,2025-09-02 07:00,2025-09-29 17:00,2025-11-20 17:00,2025-11-20 17:00,2025-12-05 17:00,2025-12-05 17:00,0,50,100
STAIR.2910,IMPACT - SECAI CONSTRAINT REMOVAL - STAIR #65 - SUW - 18/19-L - LEVEL 04,Complete,CONSTRUCTION,,INTERIOR STAIRS,L4 - SUP Roof - FAB Roof,SUW - SUPPORT WEST,CONSTRUCTION,,,,,2025-09-02 07:00,2025-09-08 17:00,2025-09-02 07:00,2025-10-27 17:00,2025-11-20 17:00,2025-11-20 17:00,2025-12-05 17:00,2025-12-05 17:00,0,50,100
STAIR.2920,IMPACT - SECAI CONSTRAINT REMOVAL - STAIR #66 - SUW - 32-L - LEVEL 04,Active,CONSTRUCTION,,INTERIOR STAIRS,L4 - SUP Roof - FAB Roof,SUW - SUPPORT WEST,CONSTRUCTION,,,,,2025-09-02 07:00,2025-09-08 17:00,2025-09-02 07:00,,2025-11-21 07:00,2025-12-26 17:00,2025-10-09 07:00,2025-11-07 17:00,220,50,0
STAIR.2930,IMPACT - SECAI CONSTRAINT REMOVAL - STAIR #72 - SUE - 5-C - LEVEL 04,Active,CONSTRUCTION,,INTERIOR STAIRS,L4 - SUP Roof - FAB Roof,SUE - SUPPORT EAST,CONSTRUCTION,,,,,2025-09-02 07:00,2025-09-08 17:00,2025-09-02 07:00,,2025-11-21 07:00,2026-01-02 17:00,2025-10-15 07:00,2025-11-19 17:00,260,50,0
STAIR.2940,INSTALL & INSPECT MEZZANINE GUARDRAIL STAIR #61 - SUW - 3-L - LEVEL 04G,Not Started,CONSTRUCTION,,INTERIOR STAIRS,L4 - SUP Roof - FAB Roof,SUW - SUPPORT WEST,CONSTRUCTION,,,,,2025-12-02 07:00,2025-12-05 17:00,,,2025-12-02 07:00,2025-12-05 17:00,2025-11-18 07:00,2025-11-21 17:00,40,40,0
STAIR.2950,INSTALL & INSPECT MEZZANINE GUARDRAIL STAIR #62 - SUW - 3-K - LEVEL 04G,Complete,CONSTRUCTION,,INTERIOR STAIRS,L4 - SUP Roof - FAB Roof,SUW - SUPPORT WEST,CONSTRUCTION,,,,,2025-10-30 07:00,2025-11-04 17:00,2025-10-30 07:00,2025-11-04 17:00,2025-11-20 17:00,2025-11-20 17:00,2025-11-06 07:00,2025-11-06 07:00,0,40,100
FAB110102A-60,IMPACT - SECAI SCAFFOLD BLOCKING DOOR INSTALL - FAB110102A,Complete,Elevator Mech. Rm 1A - 1F -SUW-FAB110102,,,,,,,,,,2025-09-25 08:00,2025-10-01 17:00,2025-08-22 08:00,2025-09-24 17:00,2025-11-20 17:00,2025-11-20 17:00,2025-11-25 10:00,2025-11-25 10:00,0,40,100
FAB110103A-21,IMPACT SECAI SCAFFOLD BLOCKING DOOR INSTALL - FAB110103A,Complete,Duct Shaft - 1F -SUW-FAB110103,,,,,,,,,,2025-09-19 08:00,2025-09-25 17:00,2025-08-22 08:00,2025-09-12 17:00,2025-11-20 17:00,2025-11-20 17:00,2025-11-25 10:00,2025-11-25 10:00,0,40,100
FAB110110B-35,IMPACT - SECAI SCAFFOLD BLOCKING DOOR INSTALL- FAB110110B,Complete,Air Lock 1 - 1F -SUW-FAB110110,,,,,,,,,,2025-10-02 08:00,2025-10-08 17:00,2025-09-15 08:00,2025-09-30 17:00,2025-11-20 17:00,2025-11-20 17:00,2025-11-25 08:00,2025-11-25 08:00,0,40,100
FAB110110C-35,IMPACT - SECAI SCAFFOLD BLOCKING DOOR INSTALL- FAB110110C,Complete,Air Lock 1 - 1F -SUW-FAB110110,,,,,,,,,,2025-10-02 08:00,2025-10-08 17:00,2025-09-15 08:00,2025-09-30 17:00,2025-11-20 17:00,2025-11-20 17:00,2025-11-25 08:00,2025-11-25 08:00,0,40,100
FAB110202B-35,IMPACT - SECAI EXTERIOR TRENCH BLOCKING DOOR INSTALL - FAB110202B,Complete,Toilet (M) 2 - 1F -SUW-FAB110202,,,,,,,,,,2025-09-16 08:00,2025-09-22 17:00,2025-09-16 08:00,2025-10-03 08:00,2025-11-20 17:00,2025-11-20 17:00,2025-11-27 08:00,2025-11-27 08:00,0,40,100
FAB110203A-35,IMPACT - SECAI EXTERIOR TRENCH BLOCKING DOOR INSTALL - FAB110203A,Active,Toilet (W) 2 - 1F -SUW-FAB110203,,,,,,,,,,2025-09-16 08:00,2025-09-22 17:00,2025-09-16 08:00,,2025-11-21 08:00,2025-11-27 17:00,2025-11-18 10:00,2025-11-25 10:00,40,40,0
FAB110214A-35,IMPACT - SECAI EXTERIOR TRENCH BLOCKING DOOR INSTALL - FAB110214A,Complete,Janitor Rm - 1F -SUW-FAB110214,,,,,,,,,,2025-09-16 08:00,2025-09-22 17:00,2025-09-16 08:00,2025-10-02 17:00,2025-11-20 17:00,2025-11-20 17:00,2025-11-25 10:00,2025-11-25 10:00,0,40,100
FAB110506B-35,IMPACT - SECAI EXTERIOR TRENCH BLOCKING DOOR INSTALL - FAB110506B,Complete,Exit Passageway 5 - 1F -SUW-FAB110506,,,,,,,,,,2025-09-16 08:00,2025-09-22 17:00,2025-09-16 08:00,2025-09-30 17:00,2025-11-20 17:00,2025-11-20 17:00,2025-12-05 17:00,2025-12-05 17:00,0,40,100
FAB120304A-35,IMPACT - SECAI TEMP ROUGH IN IMPEDING DOOR INSTALLATION - FAB120304A,Complete,Vestibule 3 - 2F -SUW-FAB120304,,,,,,,,,,2025-02-20 08:00,2025-02-26 17:00,2025-02-20 08:00,2025-09-22 17:00,2025-11-20 17:00,2025-11-20 17:00,2025-11-25 10:00,2025-11-25 10:00,0,40,100
FAB110402C-02,INSTALL DOOR FRAMES - FAB110402C,Complete,Exit Passageway 4 - 1F -SUW-FAB110402,,,,,,,,,,2025-09-30 08:00,2025-09-30 17:00,2025-09-30 08:00,2025-09-30 17:00,2025-11-20 17:00,2025-11-20 17:00,2025-11-25 10:00,2025-11-25 10:00,0,8,100
FAB1-ST04D-01,IMPACT - INSTALL/REWORK DRYWALL FRAMING AROUND DOORS - FAB1-ST04D,Complete,Stair 4 - 3F-SUW-FAB1-ST04,,,,,,,,,,2025-09-26 08:00,2025-09-29 17:00,2025-09-26 08:00,2025-09-29 17:00,2025-11-20 17:00,2025-11-20 17:00,2025-11-25 08:00,2025-11-25 08:00,0,16,100
FAB1-ST04D-02,SECAI ROUGH IN/SECURITY - FAB1-ST04D,Complete,Stair 4 - 3F-SUW-FAB1-ST04,,,,,,,,,,2025-09-29 08:00,2025-09-29 17:00,2025-09-29 08:00,2025-09-29 17:00,2025-11-20 17:00,2025-11-20 17:00,2025-11-25 08:00,2025-11-25 08:00,0,8,100
FAB1-ST04D-03,INSTALL DOOR FRAMES - FAB1-ST04D,Complete,Stair 4 - 3F-SUW-FAB1-ST04,,,,,,,,,,2025-09-29 08:00,2025-09-29 17:00,2025-09-29 08:00,2025-09-29 17:00,2025-11-20 17:00,2025-11-20 17:00,2025-11-25 08:00,2025-11-25 08:00,0,8,100
FAB1-ST04D-04,INSTALL DOOR & HARDWARE - FAB1-ST04D,Not Started,Stair 4 - 3F-SUW-FAB1-ST04,,,,,,,,,,2025-11-21 08:00,2025-11-27 17:00,,,2025-11-21 08:00,2025-11-27 17:00,2025-11-25 08:00,2025-12-01 17:00,40,40,0
FAB1-ST04D-05,PAINT & PROTECT DOORS & FRAMES - FAB1-ST04D,Not Started,Stair 4 - 3F-SUW-FAB1-ST04,,,,,,,,,,2026-02-16 08:00,2026-02-19 17:00,,,2026-02-16 08:00,2026-02-19 17:00,2025-12-02 08:00,2025-12-05 17:00,32,32,0
ZX-21645,IMPACT - SECAI MEP SCAFFOLD IMPACTING DRYWALL COMPLETION - Vestibule 5 - 2F-FAB120504 - MKM,Complete,Vestibule 5 - 2F -SUW-FAB120504,,,,,,,,,,2025-09-29 08:00,2025-10-03 17:00,2025-09-29 08:00,2025-10-30 17:00,2025-11-20 17:00,2025-11-20 17:00,2025-11-25 10:00,2025-11-25 10:00,0,40,100
CN.SEB1.11040,IMPACT - SECAI TO PROVIDE DIRECTION COUNTERTOP-SINK COMPABILITY- COUNTERTOPS - SEB1 - GL 19-22 - C-A - L1,Complete,SEB - 1,,SUEN-1 - 19-22,L1 - Fndn Slab,BATHROOM,CONSTRUCTION,H2I,TBD Architectural Finishes,,,2025-09-30 07:00,2025-10-02 17:00,2025-09-30 07:00,2025-10-03 17:00,2025-11-20 17:00,2025-11-20 17:00,2025-11-20 07:00,2025-11-20 07:00,0,30,100
CN.AB.AR.8870,IMPACT - SECATI TO PROVIDE DRAWING/DIMENSIONS FOR CORRECT LAYOUT - TOILET PARTITIONS - BATHROOM - GL 19-22 - C-A - L1,Complete,CONSTRUCTION,,SUEN-1 - 19-22,L1 - Fndn Slab,BATHROOM,CONSTRUCTION,,,,,2025-09-30 07:00,2025-10-02 17:00,2025-09-30 07:00,2025-10-03 17:00,2025-11-20 17:00,2025-11-20 17:00,2025-12-01 07:00,2025-12-01 07:00,0,30,100
CN.SWA5.LD.3290,IMPACT - SECAI TO PROVIDE DIRECTION FOR COUNTERTOP-SINK COMPABILITY - COUNTERTOPS - BATHROOM - GL 3 - M-N - L1,Complete,SWA - 5,East Support Building,FIZ 2 / SUWS 5  (GL6-1) - GL J - N - DATA CENTER 1,L1 - Fndn Slab,BATHROOM,CONSTRUCTION,H2I,TBD Architectural Finishes,AMBER CARO,INTERIORS,2025-09-30 07:00,2025-10-06 17:00,2025-09-30 07:00,2025-10-03 17:00,2025-11-20 17:00,2025-11-20 17:00,2025-11-20 07:00,2025-11-20 07:00,0,50,100
CN.SWA5.9680,IMPACT - SECAI TO PROVIDE DRAWING/DIMENSIONS FOR CORRECT LAYOUT - TOILET PARTITIONS - BATHROOM - GL 3 - M-N - L1,Complete,CONSTRUCTION,,FIZ 2 / SUWS 5  (GL6-1) - GL J - N - DATA CENTER 1,L1 - Fndn Slab,BATHROOM,CONSTRUCTION,,,,,2025-09-29 07:00,2025-10-01 17:00,2025-09-29 07:00,2025-10-03 17:00,2025-11-20 17:00,2025-11-20 17:00,2025-12-01 07:00,2025-12-01 07:00,0,30,100
CN.SWA3.9780,IMPACT - SECAI TO PROVIDE DIRECTION FOR COUNTERTOP-SINK COMPABILITY - COUNTERTOPS - BATHROOM - GL 11-12 - L-N - L1,Complete,SWA - 3,,SUWS-3 - 12-9,L1 - Fndn Slab,BATHROOM,CONSTRUCTION,H2I,TBD Architectural Finishes,,,2025-09-30 07:00,2025-10-06 17:00,2025-09-30 07:00,2025-10-03 17:00,2025-11-20 17:00,2025-11-20 17:00,2025-11-20 07:00,2025-11-20 07:00,0,50,100
CN.SWA3.9790,IMPACT - SECAI TO PROVIDE DRAWING/DIMENSIONS FOR CORRECT LAYOUT - TOILET PARTITIONS - BATHROOM - GL 11-12 - L-N - L1,Complete,CONSTRUCTION,,SUWS-3 - 12-9,L1 - Fndn Slab,BATHROOM,CONSTRUCTION,,,,,2025-09-30 07:00,2025-10-06 17:00,2025-09-30 07:00,2025-10-03 17:00,2025-11-20 17:00,2025-11-20 17:00,2025-12-01 07:00,2025-12-01 07:00,0,50,100
CN.SWA1.10090,IMPACT - SECAI TO PROVIDE DIRECTION FOR COUNTERTOP-SINK COMPABILITY - COUNTERTOPS - BATHROOM - GL 15-18 - K-N - L3,Complete,SWA - 1,,SUWS-1 - 18-15,L3 / Waffle Slab Level,BATHROOM,CONSTRUCTION,H2I,TBD Architectural Finishes,,,2025-09-30 07:00,2025-10-06 17:00,2025-09-30 07:00,2025-10-03 17:00,2025-11-20 17:00,2025-11-20 17:00,2025-11-20 07:00,2025-11-20 07:00,0,50,100
CN.SWA1.10100,IMPACT - SECAI TO PROVIDE DRAWING/DIMENSIONS FOR CORRECT LAYOUT - TOILET PARTITIONS - BATHROOM - GL 15-18 - K-N - L3,Complete,CONSTRUCTION,,SUWS-1 - 18-15,L3 / Waffle Slab Level,BATHROOM,CONSTRUCTION,,,,,2025-09-30 07:00,2025-10-06 17:00,2025-09-30 07:00,2025-10-03 17:00,2025-11-20 17:00,2025-11-20 17:00,2025-12-01 07:00,2025-12-01 07:00,0,50,100
FAB110401C-43,IMPACT - SECAI BARRICADE AND SCAFFOLD INTERFERING WITH DOOR INSTALLATION - FAB110401C,Active,GCS Training Rm - 1F -SUW-FAB110401,,,,,,,,,,2025-08-18 08:00,2025-08-29 17:00,2025-08-18 08:00,,2025-11-21 08:00,2025-11-27 17:00,2025-11-25 10:00,2025-12-02 10:00,40,80,0
CN.SWB3.6591,PERIMETER TOPPING SLAB SEALANT - SUE - SECTOR 61 - GL A-D/1-8,Not Started,CONSTRUCTION,,SUES-5 - 6-1 - FIZ - GL A -E,L4 - SUP Roof - FAB Roof,SUE - SUPPORT EAST,CONSTRUCTION,,Roofing,,SOMD / Roofing / Waterproofing,2025-12-01 07:00,2025-12-05 17:00,,,2025-12-01 07:00,2025-12-05 17:00,2025-10-16 07:00,2025-10-22 17:00,50,50,0
CN.SWB3.6601,PIPE FLASH AROUND MEP PIPE - FIZ - SECTOR 61 - GL A-D/1-8,Not Started,CONSTRUCTION,,SUES-5 - 6-1 - FIZ - GL A -E,L4 - SUP Roof - FAB Roof,FIZ,CONSTRUCTION,,Roofing,,SOMD / Roofing / Waterproofing,2026-01-08 07:00,2026-01-14 17:00,,,2026-01-08 07:00,2026-01-14 17:00,2025-11-20 07:00,2025-11-26 17:00,50,50,0
CN.SWB3.6611,PERIMETER TOPPING SLAB SEALANT - FIZ - SECTOR 61 - GL A-D/1-8,Not Started,CONSTRUCTION,,SUES-5 - 6-1 - FIZ - GL A -E,L4 - SUP Roof - FAB Roof,FIZ,CONSTRUCTION,,Roofing,,SOMD / Roofing / Waterproofing,2026-01-08 07:00,2026-01-14 17:00,,,2026-01-08 07:00,2026-01-14 17:00,2025-11-20 07:00,2025-11-26 17:00,50,50,0
CN.SWB3.6621,PERIMETER TOPPING SLAB SEALANT - SUW - SECTOR 01 - GL N-K/1-8,Not Started,CONSTRUCTION,,FIZ 2 / SUWS 5  (GL6-1) - GL J - N - DATA CENTER 1,L4 - SUP Roof - FAB Roof,SUW - SUPPORT WEST,CONSTRUCTION,,Roofing,,SOMD / Roofing / Waterproofing,2025-12-01 07:00,2025-12-05 17:00,,,2025-12-01 07:00,2025-12-05 17:00,2025-10-16 07:00,2025-10-22 17:00,50,50,0
CN.SWB3.6631,PIPE FLASH AROUND MEP PIPE - SUW - SECTOR 01 - GL K-N/1-8,Not Started,CONSTRUCTION,,FIZ 2 / SUWS 5  (GL6-1) - GL J - N - DATA CENTER 1,L4 - SUP Roof - FAB Roof,FIZ,CONSTRUCTION,,Roofing,,SOMD / Roofing / Waterproofing,2026-01-08 07:00,2026-01-14 17:00,,,2026-01-08 07:00,2026-01-14 17:00,2025-11-20 07:00,2025-11-26 17:00,50,50,0
CN.SWB3.6641,PERIMETER TOPPING SLAB SEALANT - FIZ - SECTOR 01 - GL K-N/1-8,Not Started,CONSTRUCTION,,FIZ 2 / SUWS 5  (GL6-1) - GL J - N - DATA CENTER 1,L4 - SUP Roof - FAB Roof,FIZ,CONSTRUCTION,,Roofing,,SOMD / Roofing / Waterproofing,2026-01-08 07:00,2026-01-14 17:00,,,2026-01-08 07:00,2026-01-14 17:00,2025-11-20 07:00,2025-11-26 17:00,50,50,0
CN.SWB3.6651,PERIMETER TOPPING SLAB SEALANT - SUE - SECTOR 62 - GL A-D/8-15,Not Started,CONSTRUCTION,,SUES-3 - 13-9,L4 - SUP Roof - FAB Roof,SUE - SUPPORT EAST,CONSTRUCTION,,Roofing,,SOMD / Roofing / Waterproofing,2025-12-08 07:00,2025-12-12 17:00,,,2025-12-08 07:00,2025-12-12 17:00,2025-10-23 07:00,2025-10-29 17:00,50,50,0
CN.SWB3.6661,PERIMETER TOPPING SLAB SEALANT - SUE - SECTOR 63 - GL A-D/15-21,Not Started,CONSTRUCTION,,SUEN-1 - 19-22,L4 - SUP Roof - FAB Roof,SUE - SUPPORT EAST,CONSTRUCTION,,Roofing,,SOMD / Roofing / Waterproofing,2025-12-15 07:00,2025-12-19 17:00,,,2025-12-15 07:00,2025-12-19 17:00,2025-10-30 07:00,2025-11-05 17:00,50,50,0
CN.SWB3.6671,GL AIRLOCK SEALANT & PEDESTAL LAM - SUE - SECTOR 62 - GL A-D/8-15,Not Started,CONSTRUCTION,,SUES-3 - 13-9,L4 - SUP Roof - FAB Roof,SUE - SUPPORT EAST,CONSTRUCTION,,Roofing,,SOMD / Roofing / Waterproofing,2025-12-01 07:00,2025-12-05 17:00,,,2025-12-01 07:00,2025-12-05 17:00,2025-11-06 07:00,2025-11-12 17:00,50,50,0
CN.SWB3.6681,GL A PEDESTAL LAM - SUE - SECTOR 62 - GL A-D/8-15,Active,CONSTRUCTION,,SUES-3 - 13-9,L4 - SUP Roof - FAB Roof,SUE - SUPPORT EAST,CONSTRUCTION,,Roofing,,SOMD / Roofing / Waterproofing,2025-11-06 07:00,2025-11-12 17:00,2025-10-27 07:00,,2025-11-21 07:00,2025-11-25 17:00,2025-10-27 07:00,2025-10-29 17:00,30,50,0
CN.SWB3.6691,GL AIRLOCK SEALANT & PEDESTAL LAM - SUE - SECTOR 63 - GL A-D/15-21,Not Started,CONSTRUCTION,,SUEN-1 - 19-22,L4 - SUP Roof - FAB Roof,SUE - SUPPORT EAST,CONSTRUCTION,,Roofing,,SOMD / Roofing / Waterproofing,2025-12-08 07:00,2025-12-12 17:00,,,2025-12-08 07:00,2025-12-12 17:00,2025-11-13 07:00,2025-11-19 17:00,50,50,0
CN.SWB3.6701,GL A PEDESTAL LAM - SUE - SECTOR 63 - GL A-D/15-21,Active,CONSTRUCTION,,SUEN-1 - 19-22,L4 - SUP Roof - FAB Roof,SUE - SUPPORT EAST,CONSTRUCTION,,Roofing,,SOMD / Roofing / Waterproofing,2025-10-31 07:00,2025-11-06 17:00,2025-10-27 07:00,,2025-11-21 07:00,2025-11-25 17:00,2025-11-03 07:00,2025-11-05 17:00,30,50,0
CN.SWB3.6711,PERIMETER TOPPING SLAB SEALANT - SUE - SECTOR 64 - GL A-D/21-27,Not Started,CONSTRUCTION,,SUEN-3 - 25-28,L4 - SUP Roof - FAB Roof,SUE - SUPPORT EAST,CONSTRUCTION,,Roofing,,SOMD / Roofing / Waterproofing,2025-12-22 07:00,2025-12-30 17:00,,,2025-12-22 07:00,2025-12-30 17:00,2025-11-06 07:00,2025-11-12 17:00,50,50,0
CN.SWB3.6721,GL AIRLOCK SEALANT & PEDESTAL LAM - SUE - SECTOR 64 - GL A-D/21-27,Not Started,CONSTRUCTION,,SUEN-3 - 25-28,L4 - SUP Roof - FAB Roof,SUE - SUPPORT EAST,CONSTRUCTION,,Roofing,,SOMD / Roofing / Waterproofing,2025-12-22 07:00,2025-12-30 17:00,,,2025-12-22 07:00,2025-12-30 17:00,2025-11-20 07:00,2025-11-26 17:00,50,50,0
CN.SWB3.6731,GL A PEDESTAL LAM - SUE - SECTOR 64 - GL A-D/21-27,Active,CONSTRUCTION,,SUEN-3 - 25-28,L4 - SUP Roof - FAB Roof,SUE - SUPPORT EAST,CONSTRUCTION,,Roofing,,SOMD / Roofing / Waterproofing,2025-10-31 07:00,2025-11-06 17:00,2025-10-31 07:00,,2025-11-21 07:00,2025-12-01 17:00,2025-11-06 07:00,2025-11-12 17:00,50,50,0
CN.SWB3.6741,PERIMETER TOPPING SLAB SEALANT - SUE - SECTOR 65 - GL A-D/27-33,Not Started,CONSTRUCTION,,SUEN-5 - 31-33,L4 - SUP Roof - FAB Roof,SUE - SUPPORT EAST,CONSTRUCTION,,Roofing,,SOMD / Roofing / Waterproofing,2025-12-31 07:00,2026-01-07 17:00,,,2025-12-31 07:00,2026-01-07 17:00,2025-11-13 07:00,2025-11-19 17:00,50,50,0
CN.SWB3.6751,GL AIRLOCK SEALANT & PEDESTAL LAM - SUE - SECTOR 65 - GL A-D/27-33,Not Started,CONSTRUCTION,,SUEN-5 - 31-33,L4 - SUP Roof - FAB Roof,SUE - SUPPORT EAST,CONSTRUCTION,,Roofing,,SOMD / Roofing / Waterproofing,2025-12-31 07:00,2026-01-07 17:00,,,2025-12-31 07:00,2026-01-07 17:00,2025-12-01 07:00,2025-12-05 17:00,50,50,0
CN.SWB3.6761,GL A PEDESTAL LAM - SUE - SECTOR 65 - GL A-D/27-33,Active,CONSTRUCTION,,SUEN-5 - 31-33,L4 - SUP Roof - FAB Roof,SUE - SUPPORT EAST,CONSTRUCTION,,Roofing,,SOMD / Roofing / Waterproofing,2025-10-31 07:00,2025-11-06 17:00,2025-10-31 07:00,,2025-11-21 07:00,2025-12-01 17:00,2025-11-13 07:00,2025-11-19 17:00,50,50,0
CN.SWB3.6771,PERIMETER TOPPING SLAB SEALANT - SUW - SECTOR 02 - GL K-N/8-15,Not Started,CONSTRUCTION,,SUWS-2 - 15-12,L4 - SUP Roof - FAB Roof,SUW - SUPPORT WEST,CONSTRUCTION,,Roofing,,SOMD / Roofing / Waterproofing,2025-12-08 07:00,2025-12-12 17:00,,,2025-12-08 07:00,2025-12-12 17:00,2025-10-23 07:00,2025-10-29 17:00,50,50,0
CN.SWB3.6781,LVL 6 8' BLOCKOUT ROOTING NW PENTHOUSE - SUW - SECTOR 05 - GL L-N/33,Not Started,CONSTRUCTION,,SUWN-5 - 30-33,L4 - SUP Roof - FAB Roof,SUW - SUPPORT WEST,CONSTRUCTION,,Roofing,,SOMD / Roofing / Waterproofing,2025-12-31 07:00,2026-01-07 17:00,,,2025-12-31 07:00,2026-01-07 17:00,2025-11-13 07:00,2025-11-19 17:00,50,50,0
CN.SWB3.6791,PERIMETER TOPPING SLAB SEALANT - SUW - SECTOR 03 - GL K-N/15-21,Not Started,CONSTRUCTION,,SUWN-1 - 18-21,L4 - SUP Roof - FAB Roof,SUW - SUPPORT WEST,CONSTRUCTION,,Roofing,,SOMD / Roofing / Waterproofing,2025-12-15 07:00,2025-12-19 17:00,,,2025-12-15 07:00,2025-12-19 17:00,2025-10-30 07:00,2025-11-05 17:00,50,50,0
CN.SWB3.6801,PERIMETER TOPPING SLAB SEALANT - SUW - SECTOR 04 - GL K-N/21-27,Not Started,CONSTRUCTION,,SUWN-3 - 24-27,L4 - SUP Roof - FAB Roof,SUW - SUPPORT WEST,CONSTRUCTION,,Roofing,,SOMD / Roofing / Waterproofing,2025-12-22 07:00,2025-12-30 17:00,,,2025-12-22 07:00,2025-12-30 17:00,2025-11-06 07:00,2025-11-12 17:00,50,50,0
CN.SWB3.6811,PERIMETER TOPPING SLAB SEALANT - SUW - SECTOR 05 - GL K-N/27-33,Not Started,CONSTRUCTION,,SUWN-5 - 30-33,L4 - SUP Roof - FAB Roof,SUW - SUPPORT WEST,CONSTRUCTION,,Roofing,,SOMD / Roofing / Waterproofing,2025-12-31 07:00,2026-01-07 17:00,,,2025-12-31 07:00,2026-01-07 17:00,2025-11-13 07:00,2025-11-19 17:00,50,50,0
CN.SWB3.6821,PERIMETER TOPPING SLAB SEALANT - SUE - SECTOR 42 - GL D-G/8-15,Complete,CONSTRUCTION,,SUES-3 - 13-9,L4 - SUP Roof - FAB Roof,SUE AD TROUGH,CONSTRUCTION,,Roofing,,SOMD / Roofing / Waterproofing,2025-10-22 07:00,2025-10-23 17:00,2025-10-03 07:00,2025-10-03 17:00,2025-11-20 17:00,2025-11-20 17:00,2025-10-16 07:00,2025-10-16 07:00,0,20,100
CN.SWB3.6831,PERIMETER TOPPING SLAB SEALANT - SUE - SECTOR 43 - GL D-G/15-21,Complete,CONSTRUCTION,,SUEN-1 - 19-22,L4 - SUP Roof - FAB Roof,SUE AD TROUGH,CONSTRUCTION,,Roofing,,SOMD / Roofing / Waterproofing,2025-10-24 07:00,2025-10-27 17:00,2025-10-06 07:00,2025-10-08 17:00,2025-11-20 17:00,2025-11-20 17:00,2025-10-16 07:00,2025-10-16 07:00,0,20,100
CN.SWB3.6841,PERIMETER TOPPING SLAB SEALANT - SUE - SECTOR 44 - GL D-G/21-27,Complete,CONSTRUCTION,,SUEN-3 - 25-28,L4 - SUP Roof - FAB Roof,SUE AD TROUGH,CONSTRUCTION,,Roofing,,SOMD / Roofing / Waterproofing,2025-10-28 07:00,2025-10-29 17:00,2025-10-06 07:00,2025-10-07 17:00,2025-11-20 17:00,2025-11-20 17:00,2025-10-16 07:00,2025-10-16 07:00,0,20,100
CN.SWB3.6851,PERIMETER TOPPING SLAB SEALANT - SUE - SECTOR 45 - GL D-G/27-33,Complete,CONSTRUCTION,,SUEN-5 - 31-33,L4 - SUP Roof - FAB Roof,SUE AD TROUGH,CONSTRUCTION,,Roofing,,SOMD / Roofing / Waterproofing,2025-10-30 07:00,2025-10-31 17:00,2025-10-06 07:00,2025-10-07 17:00,2025-11-20 17:00,2025-11-20 17:00,2025-10-16 07:00,2025-10-16 07:00,0,20,100
CN.SWB3.6861,PERIMETER TOPPING SLAB SEALANT - SUW - SECTOR 22 - GL G-K/8-15,Complete,CONSTRUCTION,,SUWS-2 - 15-12,L4 - SUP Roof - FAB Roof,SUW AD TROUGH,CONSTRUCTION,,Roofing,,SOMD / Roofing / Waterproofing,2025-11-04 07:00,2025-11-05 17:00,2025-10-24 07:00,2025-10-24 17:00,2025-11-20 17:00,2025-11-20 17:00,2025-12-05 17:00,2025-12-05 17:00,0,20,100
CN.SWB3.6871,PERIMETER TOPPING SLAB SEALANT - SUW - SECTOR 23 - GL G-K/15-21,Complete,CONSTRUCTION,,SUWN-1 - 18-21,L4 - SUP Roof - FAB Roof,SUW AD TROUGH,CONSTRUCTION,,Roofing,,SOMD / Roofing / Waterproofing,2025-10-14 07:00,2025-10-15 17:00,2025-10-08 07:00,2025-10-23 17:00,2025-11-20 17:00,2025-11-20 17:00,2025-12-05 17:00,2025-12-05 17:00,0,20,100
CN.SWB3.6881,PERIMETER TOPPING SLAB SEALANT - SUW - SECTOR 24 - GL G-K/21-27,Complete,CONSTRUCTION,,SUWN-3 - 24-27,L4 - SUP Roof - FAB Roof,SUW AD TROUGH,CONSTRUCTION,,Roofing,,SOMD / Roofing / Waterproofing,2025-11-06 07:00,2025-11-07 17:00,2025-10-06 07:00,2025-10-07 17:00,2025-11-20 17:00,2025-11-20 17:00,2025-12-05 17:00,2025-12-05 17:00,0,20,100
CN.SWB3.6891,PERIMETER TOPPING SLAB SEALANT - SUW - SECTOR 25 - GL G-K/27-33,Complete,CONSTRUCTION,,SUWN-5 - 30-33,L4 - SUP Roof - FAB Roof,SUW AD TROUGH,CONSTRUCTION,,Roofing,,SOMD / Roofing / Waterproofing,2025-11-10 07:00,2025-11-11 17:00,2025-10-06 07:00,2025-10-07 17:00,2025-11-20 17:00,2025-11-20 17:00,2025-12-05 17:00,2025-12-05 17:00,0,20,100
CN.SWA4.7590,IMPACT - MKM DEMO FRAMING & SHEATHING - HIGH TEMP PIPE PENETRATING - GL 19-20 - A LINE - TRESTLE INFILL,Complete,CONSTRUCTION,,SUEN-1 - 19-22,EXTERIOR SKIN,,CONSTRUCTION,KOVACH,INSULATED METAL PANELS,,,2025-10-03 07:00,2025-10-07 17:00,2025-09-30 07:00,2025-10-09 17:00,2025-11-21 17:00,2025-11-21 17:00,2025-11-13 07:00,2025-11-13 07:00,0,30,100
CN.SWA4.7600,IMPACT - MKM FRAMING & SHEATHING COLD FRAME & INSULATION - N30-31 TRESTLE B INFILL - INTERIOR,Complete,CONSTRUCTION,,SUWN-5 - 30-33,EXTERIOR SKIN,,CONSTRUCTION,KOVACH,INSULATED METAL PANELS,,,2025-10-21 07:00,2025-10-24 17:00,2025-10-10 07:00,2025-10-17 10:00,2025-11-20 17:00,2025-11-20 17:00,2025-11-04 07:00,2025-11-04 07:00,0,40,100
CN.BB5.ST.1490,YATES/GDA - WATERPROOFING REWORK - PARAPET CAP INSTALL - GL 33 - L4E TROUGH PARAPET - WEST - J-K,Not Started,Area B-5,North Areas (Team B -Gridlines 17-33),GRIDLINE 33,L4 - SUP Roof - FAB Roof,GL33 EXTERIOR AREA (FAB WEST) - G-K,CONSTRUCTION,WATER PROOFING GL33,DRYWALL,JAMES LEE,SOMD / Roofing / Waterproofing,2025-11-21 07:00,2025-12-01 17:00,,,2025-11-21 07:00,2025-12-01 17:00,2025-12-01 07:00,2025-12-05 17:00,50,50,0
CN.BB51.ST.3682,IMPACT - IOCC 1578 (GDA) APPROVAL BY SECAI - VERTICAL EJ FROM BERG- LVL 3/4 - VESTIBULE 5,Complete,CONSTRUCTION,,GRIDLINE 33,GL 33 STAIR 5 (WEST),STAIR 5 (WEST) - K-L,CONSTRUCTION,BERG,,,,2025-10-02 07:00,2025-10-08 17:00,2025-10-02 07:00,2025-10-13 17:00,2025-11-20 17:00,2025-11-20 17:00,2025-11-11 07:00,2025-11-11 07:00,0,50,100
CN.SWB3.6901,PERIMETER TOPPING SLAB SEALANT - FIZ - SECTOR 41 - GL D-G/1-8,Not Started,CONSTRUCTION,,SUES-5 - 6-1 - FIZ - GL A -E,L4 - SUP Roof - FAB Roof,FIZ,CONSTRUCTION,,Roofing,,SOMD / Roofing / Waterproofing,2026-01-15 07:00,2026-01-21 17:00,,,2026-01-15 07:00,2026-01-21 17:00,2025-12-01 07:00,2025-12-05 17:00,50,50,0
CN.SWB3.6911,PERIMETER TOPPING SLAB SEALANT - FIZ - SECTOR 21 - GL G-K/1-8,Not Started,CONSTRUCTION,,FIZ 2 / SUWS 5  (GL6-1) - GL J - N - DATA CENTER 1,L4 - SUP Roof - FAB Roof,FIZ,CONSTRUCTION,,Roofing,,SOMD / Roofing / Waterproofing,2026-01-15 07:00,2026-01-21 17:00,,,2026-01-15 07:00,2026-01-21 17:00,2025-12-01 07:00,2025-12-05 17:00,50,50,0
CN.ST.3682,IMPACT - SECAI TOOK OVER - INSTALL VESTIBULE 5 - LEVEL 1 & 2 CEILING - 3RD LAYER - STAIR 5,Complete,CONSTRUCTION,,GRIDLINE 33,GL 33 STAIR 5 (WEST),STAIR 5 (WEST) - K-L,CONSTRUCTION,BERG,,,,2025-09-19 07:00,2025-09-26 17:00,2025-10-01 17:00,2025-11-07 07:00,2025-11-20 17:00,2025-11-20 17:00,2025-11-12 07:00,2025-11-12 07:00,0,60,100
CN.ST.3692,IMPACT - SECAI TOOK OVER 10/30 - MKMARLOW emseal - EXP JOINT VESTIBULE 5 - LEVEL 2 CEILING - STAIR 5,Not Started,CONSTRUCTION,,GRIDLINE 33,GL 33 STAIR 5 (WEST),STAIR 5 (WEST) - K-L,CONSTRUCTION,BERG,,,,2025-11-24 07:00,2025-12-03 17:00,,,2025-11-24 07:00,2025-12-03 17:00,2025-11-19 07:00,2025-11-26 17:00,60,60,0
CN.ST.3700,CHERRY - PRIME & FINISH PAINT INTERIOR DRYWALL - Vestibules 5 - Level 3- 4 - GL 33 - STAIR 5 - K-L(),Not Started,CONSTRUCTION,,GRIDLINE 33,GL 33 STAIR 5 (WEST),STAIR 5 (WEST) - K-L,CONSTRUCTION,CHERRY COATING,,,,2025-11-24 07:00,2025-12-02 17:00,,,2025-11-24 07:00,2025-12-02 17:00,2025-11-20 07:00,2025-11-26 17:00,50,50,0
CN.ST.4700,IMPACT - PRICING FOR RFI 5626 SAMOO-VERTICAL EJ - VESTIBULE EXP JOINT - GL 33 - STAIR 18 - C-D,Complete,CONSTRUCTION,,GRIDLINE 33,GL 33 STAIR 18 (EAST),STAIR 18 (EAST) - C-D,CONSTRUCTION,WATER PROOFING GL33,,,,2025-09-19 07:00,2025-09-25 17:00,2025-09-19 07:00,2025-10-01 17:00,2025-11-20 17:00,2025-11-20 17:00,2025-11-03 07:00,2025-11-03 07:00,0,50,100
CN.ST.36831,IMPACT - BERG PRICING & IOCC APPROVAL - VESTIBULE EXP JOINT FRAMING MODIFY - GL 33 - STAIR 18 - C-D AGREEMENT WITH BERG,Complete,CONSTRUCTION,,GRIDLINE 33,GL 33 STAIR 18 (EAST),STAIR 18 (EAST) - C-D,CONSTRUCTION,WATER PROOFING GL33,,,,2025-10-01 07:00,2025-10-07 17:00,2025-10-01 07:00,2025-10-07 17:00,2025-11-20 17:00,2025-11-20 17:00,2025-11-12 07:00,2025-11-12 07:00,0,50,100
CN.SWB3.6921,IMPACT - MEP MATERIAL BLOCKING WORK AREA - THOUGH SUW - SECTOR 22-25,Complete,CONSTRUCTION,,SUWS-2 - 15-12,L4 - SUP Roof - FAB Roof,SUW AD TROUGH,CONSTRUCTION,,Roofing,,SOMD / Roofing / Waterproofing,2025-01-13 07:00,2025-01-31 17:00,2024-01-11 07:00,2025-10-03 17:00,2025-11-20 17:00,2025-11-20 17:00,2025-12-05 17:00,2025-12-05 17:00,0,150,100
CN.SWB3.6931,IMPACT - MEP MATERIAL BLOCKING WORK AREA - SUW SECTOR 01-05,Active,CONSTRUCTION,,SUWS-2 - 15-12,L4 - SUP Roof - FAB Roof,SUW - SUPPORT WEST,CONSTRUCTION,,Roofing,,SOMD / Roofing / Waterproofing,2025-01-13 07:00,2025-01-31 17:00,2024-01-11 07:00,,2025-11-21 07:00,2025-11-26 17:00,2025-10-10 07:00,2025-10-15 17:00,40,150,0
CN.SWB3.6941,IMPACT - MEP MATERIAL BLOCKING WORK AREA - SUE - SECTOR 61-65,Active,CONSTRUCTION,,SUWS-2 - 15-12,L4 - SUP Roof - FAB Roof,SUE - SUPPORT EAST,CONSTRUCTION,,Roofing,,SOMD / Roofing / Waterproofing,2025-01-13 07:00,2025-01-31 17:00,2024-01-11 07:00,,2025-11-21 07:00,2025-11-26 17:00,2025-10-10 07:00,2025-10-15 17:00,40,150,0
CN.SWB3.6951,IMPACT - MEP MATERIAL BLOCKING WORK AREA - FIZ - SECTOR 61-01-41-21,Active,CONSTRUCTION,,SUWS-2 - 15-12,L4 - SUP Roof - FAB Roof,FIZ,CONSTRUCTION,,Roofing,,SOMD / Roofing / Waterproofing,2025-01-13 07:00,2025-01-31 17:00,2024-01-11 07:00,,2025-11-21 07:00,2025-12-01 17:00,2025-11-13 07:00,2025-11-19 17:00,50,150,0
CN.SWB3.6961,IMPACT - MEP MATERIAL BLOCKING WORK AREA - THOUGH SUE - SECTOR 42-45,Complete,CONSTRUCTION,,SUWS-2 - 15-12,L4 - SUP Roof - FAB Roof,SUE AD TROUGH,CONSTRUCTION,,Roofing,,SOMD / Roofing / Waterproofing,2025-01-13 07:00,2025-01-31 17:00,2024-01-11 07:00,2025-10-01 17:00,2025-11-20 17:00,2025-11-20 17:00,2025-10-16 07:00,2025-10-16 07:00,0,150,100
CN.SWB3.6971,IMPACT - RFI 1094/SECAI 8296 ALTERNATIVE TOPPING SLAB SEALANT - THOUGH FIZ-SUE-SUW - SECTOR 1-65,Complete,CONSTRUCTION,,SUWS-2 - 15-12,L4 - SUP Roof - FAB Roof,SUW AD TROUGH,CONSTRUCTION,,Roofing,,SOMD / Roofing / Waterproofing,2024-10-11 07:00,2024-10-22 17:00,2024-10-09 07:00,2025-08-08 17:00,2025-11-20 17:00,2025-11-20 17:00,2025-10-16 07:00,2025-10-16 07:00,0,70,100
CN.SWB3.6981,IMPACT - RFI 1563/SECAI 8519ROOF SLAB SIKA SELANT SELECTION CONCERNS - THOUGH FIZ-SUE-SUW - SECTOR 1-65,Complete,CONSTRUCTION,,SUWS-2 - 15-12,L4 - SUP Roof - FAB Roof,SUW AD TROUGH,CONSTRUCTION,,Roofing,,SOMD / Roofing / Waterproofing,2024-09-24 07:00,2024-10-04 17:00,2024-09-24 07:00,2024-10-04 17:00,2025-11-20 17:00,2025-11-20 17:00,2025-10-16 07:00,2025-10-16 07:00,0,70,100
CN.SWB3.6991,IMPACT - IOCC 1478 SLAB SEALANT PER RFI 1563 APPROVAL - THOUGH FIZ-SUE-SUW - SECTOR 1-65,Complete,CONSTRUCTION,,SUWS-2 - 15-12,L4 - SUP Roof - FAB Roof,SUW AD TROUGH,CONSTRUCTION,,Roofing,,SOMD / Roofing / Waterproofing,2025-08-25 07:00,2025-09-03 17:00,2025-08-25 07:00,2025-09-11 17:00,2025-11-20 17:00,2025-11-20 17:00,2025-10-16 07:00,2025-10-16 07:00,0,70,100
STAIR.2960,IMPACT - SECAI MEP SCAFFOLD CONSTRAINT REMOVAL - NORTH PIT HANDRAIL (M.523-29) - LEVEL U1-01,Complete,CONSTRUCTION,,INTERIOR STAIRS,LU1 - Underground Level,SUW - SUPPORT WEST,CONSTRUCTION,,,,,2025-09-23 07:00,2025-10-06 17:00,2025-09-23 00:00,2025-10-03 17:00,2025-11-20 17:00,2025-11-20 17:00,2025-12-05 17:00,2025-12-05 17:00,0,100,100
FAB116519D-75,IMPACT - SECAI MEP CABLE TRAY REMOVAL - FAB116519D - C/29.5,Complete,PR Air Lock - 1F -SUE-FAB116519,,INTERIOR STAIRS,L1 - Fndn Slab,,,,,,,2025-10-06 08:00,2025-10-10 17:00,2025-10-06 08:00,2025-10-07 17:00,2025-11-20 17:00,2025-11-20 17:00,2025-11-27 08:00,2025-11-27 08:00,0,40,100
ZX-21655,IMPACT - SECAI CABLE TRAY - Control Joint & Inspect - PR Airlock-1F-SUE-FAB116519,Complete,PR Air Lock - 1F -SUE-FAB116519,,,,,,,,,,2025-10-06 08:00,2025-10-17 17:00,2025-10-06 08:00,2025-10-07 17:00,2025-11-20 17:00,2025-11-20 17:00,2025-12-05 17:00,2025-12-05 17:00,0,80,100
ZX-21665,IMPACT - SECAI MEP SCAFFOLD & TEMP POWER - Drywall & Inspect - Duct Shaft - 2F-SUW-FAB120101,Active,Duct Shaft - 2F -SUW-FAB120101,,,,,,,,,,2025-09-25 08:00,2025-10-15 17:00,2025-09-25 08:00,,2025-11-21 08:00,2025-12-04 17:00,2025-11-19 08:00,2025-12-02 17:00,80,120,0
ZX-21675,IMPACT - SECAI MEP SCAFFOLD - Control Joint & Inspect - Fire Alarm 5 - 2F-FAB120510,Complete,Fire Alarm 5 - 2F -SUW-FAB120510,,,,,,,,,,2025-10-03 08:00,2025-10-16 17:00,2025-10-03 08:00,2025-11-05 17:00,2025-11-20 17:00,2025-11-20 17:00,2025-12-05 17:00,2025-12-05 17:00,0,80,100
ZX-21685,IMPACT - SECAI MEP PIPES - Drywall & Inspect - PR Lifter Vestibule - 2F-FAB126511,Active,PR Lifter Vestibule - 2F -SUE-FAB126511,,,,,,,,,,2025-10-03 08:00,2025-10-16 17:00,2025-10-03 08:00,,2025-11-21 08:00,2025-11-27 17:00,2025-12-01 08:00,2025-12-05 17:00,40,80,0
ZX-21695,IMPACT - SECAI MEP SCAFFOLD - Drywall & Inspect - Hall #19 - 3F-SUE-FAB136408 - SECAI TOOK OVER FOR ACCELERATION,Complete,Hall 19 - 3F -SUE-FAB136408,,,,,,,,,,2025-05-05 08:00,2025-05-16 17:00,2025-05-05 08:00,2025-10-22 17:00,2025-11-20 17:00,2025-11-20 17:00,2025-12-03 07:00,2025-12-03 07:00,0,80,100
FAB112103E-02,SECAI ROUGH IN FRAME - FAB112103E,Complete,LAB AIRLOCK/SMOCK- 1F -FIZ-FAB112103,,,,,,,,,,2025-08-07 08:00,2025-08-07 17:00,2025-08-20 00:00,2025-08-20 17:00,2025-11-20 17:00,2025-11-20 17:00,2025-11-25 08:00,2025-11-25 08:00,0,8,100
FAB112103E-05,PAINT & PROTECT DOORS & FRAMES - FAB112103E,Not Started,LAB AIRLOCK/SMOCK- 1F -FIZ-FAB112103,,,,,,,,,,2026-02-16 08:00,2026-02-19 17:00,,,2026-02-16 08:00,2026-02-19 17:00,2025-12-02 08:00,2025-12-05 17:00,32,32,0
FAB112103E-04,INSTALL DOOR & HARDWARE - FAB112103E,Active,LAB AIRLOCK/SMOCK- 1F -FIZ-FAB112103,,,,,,,,,,2025-10-03 08:00,2025-10-09 17:00,2025-10-03 08:00,,2025-11-21 08:00,2025-11-27 17:00,2025-11-25 08:00,2025-12-01 17:00,40,40,0
CN.SWB3.7001,IMPACT - SECAI TO PERFORM PANEL JOINT WATER INTRUSION FIXES - CANOPY - GL 19-16 - N LINE,Complete,CONSTRUCTION,,SUWN-1 - 18-21,EXTERIOR SKIN,,CONSTRUCTION,,,,,2025-10-08 07:00,2025-10-09 17:00,2025-10-08 07:00,2025-10-10 17:00,2025-11-20 17:00,2025-11-20 17:00,2025-10-15 07:00,2025-10-15 07:00,0,20,100
CN.SWB3.7011,IMPACT - SECAI TO PERFORM PANEL JOINT WATER INTRUSION FIXES - CANOPY - N32-33,Complete,CONSTRUCTION,,SUWN-5 - 30-33,EXTERIOR SKIN,,CONSTRUCTION,,,,,2025-10-08 07:00,2025-10-09 17:00,2025-10-08 07:00,2025-10-10 17:00,2025-11-20 17:00,2025-11-20 17:00,2025-11-13 07:00,2025-11-13 07:00,0,20,100
CN.SWB3.7021,CANOPY - BRAZOS INSULATION SPRAY- GL 5 - A LINE -,Not Started,CONSTRUCTION,,SUES-5 - 6-1 - FIZ - GL A -E,EXTERIOR SKIN,,CONSTRUCTION,,,,,2025-12-04 07:00,2025-12-04 17:00,,,2025-12-04 07:00,2025-12-04 17:00,2025-11-13 07:00,2025-11-13 17:00,10,10,0
CN.SWB3.7031,CANOPY - BRAZOS INSULATION SPRAY- GL 5 - A LINE -,Not Started,CONSTRUCTION,,SUES-1 - 19-16,EXTERIOR SKIN,,CONSTRUCTION,,,,,2025-12-04 07:00,2025-12-04 17:00,,,2025-12-04 07:00,2025-12-04 17:00,2025-11-06 07:00,2025-11-06 17:00,10,10,0
CN.SWB3.7041,CANOPY - BRAZOS INSULATION SPRAY- GL 5 - A LINE -,Not Started,CONSTRUCTION,,SUEN-4 - 28-31,EXTERIOR SKIN,,CONSTRUCTION,,,,,2025-12-08 07:00,2025-12-08 17:00,,,2025-12-08 07:00,2025-12-08 17:00,2025-10-13 07:00,2025-10-13 17:00,10,10,0
CN.SWB3.7051,CANOPY - BRAZOS INSULATION SPRAY- GL 5 - N LINE -,Complete,CONSTRUCTION,,FIZ 2 / SUWS 5  (GL6-1) - GL J - N - DATA CENTER 1,EXTERIOR SKIN,,CONSTRUCTION,,,,,2025-10-10 07:00,2025-10-15 17:00,2025-10-10 07:00,2025-10-24 17:00,2025-11-20 17:00,2025-11-20 17:00,2025-10-15 07:00,2025-10-15 07:00,0,40,100
CN.SWB3.7061,CANOPY - BRAZOS INSULATION SPRAY- GL 5 - A LINE -,Complete,CONSTRUCTION,,SUWN-1 - 18-21,EXTERIOR SKIN,,CONSTRUCTION,,,,,2025-11-05 07:00,2025-11-05 17:00,2025-10-28 07:00,2025-10-28 17:00,2025-11-26 17:00,2025-11-26 17:00,2025-11-20 07:00,2025-11-20 07:00,0,10,100
CN.SWB3.7071,CANOPY - BRAZOS INSULATION SPRAY- GL 23 - 29 - N LINE,Complete,CONSTRUCTION,,SUWN-3 - 24-27,EXTERIOR SKIN,,CONSTRUCTION,,,,,2025-10-10 07:00,2025-10-10 17:00,2025-10-10 07:00,2025-10-15 17:00,2025-11-20 17:00,2025-11-20 17:00,2025-09-29 07:00,2025-09-29 07:00,0,10,100
CN.SWB3.7081,CANOPY - BRAZOS INSULATION SPRAY- GL 32 - N LINE,Complete,CONSTRUCTION,,SUWN-5 - 30-33,EXTERIOR SKIN,,CONSTRUCTION,,,,,2025-10-21 07:00,2025-10-21 17:00,2025-10-15 07:00,2025-10-15 17:00,2025-11-20 17:00,2025-11-20 17:00,2025-11-13 07:00,2025-11-13 07:00,0,10,100
IMPACT3 - constraint,IMPACT - PRICING FOR IOCC - RFI 1779/1781/1835 DOOR THRESHOLD AND WP - SHOP DWG - ALL LEVEL 4 EXTERIOR DOORS,Active,Remobilization and Out-of-Sequence Completion List - DD07-10-2025,,,,,,,,,,2025-09-23 08:00,2025-10-06 17:00,2025-09-23 08:00,,2025-11-21 08:00,2025-11-25 17:00,2025-11-03 10:00,2025-11-06 10:00,24,80,0
IMPACT4 - constraint,IMPACT - IOCC APPROVAL - RFI 1779/1781/1835 DOOR THRESHOLD AND WP - SHOP DWG - ALL LEVEL 4 EXTERIOR DOORS,Not Started,Remobilization and Out-of-Sequence Completion List - DD07-10-2025,,,,,,,,,,2025-11-26 08:00,2025-12-09 17:00,,,2025-11-26 08:00,2025-12-09 17:00,2025-11-06 10:00,2025-11-20 10:00,80,80,0
FAB112101A-30,TOUCH UP PAINT HEADER/GOAL POST - FAB112101A - N/1,Complete,Lab Vestibule- 1F -FIZ-FAB112101,,INTERIOR STAIRS,L1 - Fndn Slab,,,,,,,2025-10-10 08:00,2025-10-15 17:00,2025-10-10 08:00,2025-10-15 17:00,2025-11-20 17:00,2025-11-20 17:00,2025-11-06 17:00,2025-11-06 17:00,0,32,100
STAIR.2970,IMPACT - SECAI SCAFFOLD - MEZZANINE GUARDRAIL STAIR #62 - SUW - 3-K - LEVEL 04G,Complete,CONSTRUCTION,,INTERIOR STAIRS,L4 - SUP Roof - FAB Roof,SUW - SUPPORT WEST,CONSTRUCTION,,,,,2025-10-06 07:00,2025-10-17 17:00,2025-10-06 07:00,2025-11-01 17:00,2025-11-20 17:00,2025-11-20 17:00,2025-11-06 07:00,2025-11-06 07:00,0,100,100
STAIR.2980,INSTALL DS CONCRETE RAMP TRANSITION PLATES (C-D/K-L) - LEVEL 1,Not Started,CONSTRUCTION,,INTERIOR STAIRS,L1 - Fndn Slab,SUW - SUPPORT WEST,CONSTRUCTION,,,,,2025-12-16 07:00,2025-12-26 17:00,,,2025-12-16 07:00,2025-12-26 17:00,2025-11-25 07:00,2025-12-05 17:00,70,70,0
STAIR.2990,IMPACT - PENDING SHOP DRAWINGS APPROVAL BY SECAI - DS CONCRETE RAMP TRANSITION PLATES (C-D/K-L) - LEVEL 1,Complete,CONSTRUCTION,,INTERIOR STAIRS,L1 - Fndn Slab,SUW - SUPPORT WEST,CONSTRUCTION,,,,,2025-09-23 07:00,2025-09-29 17:00,2025-09-23 07:00,2025-10-15 17:00,2025-11-20 17:00,2025-11-20 17:00,2025-11-04 07:00,2025-11-04 07:00,0,50,100
STAIR.3000,FABRICATION DS CONCRETE RAMP TRANSITION PLATES (C-D/K-L) - LEVEL 1,Not Started,CONSTRUCTION,,INTERIOR STAIRS,L1 - Fndn Slab,SUW - SUPPORT WEST,CONSTRUCTION,,,,,2025-11-21 07:00,2025-12-15 17:00,,,2025-11-21 07:00,2025-12-15 17:00,2025-11-04 07:00,2025-11-24 17:00,150,150,0
STAIR.3010,IMPACT - DESIGN CHAGE/SHOP DRAWINGS - PATRIOT - STAIR #47 - FIZ - 1-L - LEVEL 02,Not Started,CONSTRUCTION,,INTERIOR STAIRS,L2 - SubFab Level,FIZ,CONSTRUCTION,,,,,2025-11-21 07:00,2025-12-01 17:00,,,2025-11-21 07:00,2025-12-01 17:00,2025-10-21 07:00,2025-10-27 17:00,50,50,0
STAIR.3020,IMPACT - DESING CHANGE/FABRICATION NEW MATERIAL - STAIR #47 - FIZ - 1-L - LEVEL 02,Not Started,CONSTRUCTION,,INTERIOR STAIRS,L2 - SubFab Level,FIZ,CONSTRUCTION,,,,,2025-12-09 07:00,2025-12-31 17:00,,,2025-12-09 07:00,2025-12-31 17:00,2025-11-04 07:00,2025-11-24 17:00,150,150,0
STAIR.3030,"IMPACT - DESIGN CHAGE/MODIFY, INSTALL & INSPECT STAIR #47 - FIZ - 1-L - LEVEL 02",Not Started,CONSTRUCTION,,INTERIOR STAIRS,L2 - SubFab Level,FIZ,CONSTRUCTION,,,,,2026-01-02 07:00,2026-01-12 17:00,,,2026-01-02 07:00,2026-01-12 17:00,2025-11-25 07:00,2025-12-05 17:00,70,70,0
STAIR.3040,IMPACT - DESIGN CHAGE/SHOP DRAWINGS APPROVAL BY SECAI - PATRIOT - STAIR #47 - FIZ - 1-L - LEVEL 02,Not Started,CONSTRUCTION,,INTERIOR STAIRS,L2 - SubFab Level,FIZ,CONSTRUCTION,,,,,2025-12-02 07:00,2025-12-08 17:00,,,2025-12-02 07:00,2025-12-08 17:00,2025-10-28 07:00,2025-11-03 17:00,50,50,0
CN.BB51.ST.3692,IMPACT - SECAI TOOKOVER - IOCC 1578 (GDA) MATERIAL LEAD TIME - VERTICAL EJ FROM BERG- LVL 3/4 - VESTIBULE 5 -,Active,CONSTRUCTION,,GRIDLINE 33,GL 33 STAIR 5 (WEST),STAIR 5 (WEST) - K-L,CONSTRUCTION,BERG,,,,2025-10-13 07:00,2025-10-31 17:00,2025-10-13 07:00,,2025-11-21 07:00,2025-11-21 17:00,2025-11-11 07:00,2025-11-11 17:00,10,150,0
CN.ST.36841,IMPACT - IOCC 1578 (GDA) APPROVAL BY SECAI - VESTIBULE EXP JOINT - GL 33 - STAIR 18 - C-D,Complete,CONSTRUCTION,,GRIDLINE 33,GL 33 STAIR 18 (EAST),STAIR 18 (EAST) - C-D,CONSTRUCTION,WATER PROOFING GL33,,,,2025-10-01 07:00,2025-10-07 17:00,2025-10-01 07:00,2025-10-13 17:00,2025-11-20 17:00,2025-11-20 17:00,2025-11-03 07:00,2025-11-03 07:00,0,50,100
CN.ST.36851,IMPACT - IOCC 1578 (GDA) - VESTIBULE EXP JOINT - GL 33 - STAIR 18 - C-D,Active,CONSTRUCTION,,GRIDLINE 33,GL 33 STAIR 18 (EAST),STAIR 18 (EAST) - C-D,CONSTRUCTION,WATER PROOFING GL33,,,,2025-10-13 07:00,2025-10-31 17:00,2025-10-13 07:00,,2025-11-21 07:00,2025-12-03 17:00,2025-11-03 07:00,2025-11-11 17:00,70,150,0
IMPACT5 - constraint,IMPACT - RFI SECAI-FAB-A-10843 - Hollow Metal Doors - Clean Room Paint System Confirmation,Active,Remobilization and Out-of-Sequence Completion List - DD07-10-2025,,,,,,,,,,2025-05-14 08:00,2025-06-03 17:00,2025-05-14 08:00,,2025-11-21 08:00,2025-12-11 17:00,2025-11-11 08:00,2025-12-01 17:00,120,120,0
STAIR.3050,IMPACT - RFI 1843 - Roof Ramp Transitions - RAMP #32-B/ #32-L - SUE/SUW - 3 - LEVEL 4,Complete,CONSTRUCTION,,INTERIOR STAIRS,L4 - SUP Roof - FAB Roof,SUE - SUPPORT EAST,CONSTRUCTION,,,,,2025-09-16 07:00,2025-10-06 17:00,2025-09-16 07:00,2025-10-23 17:00,2025-11-20 17:00,2025-11-20 17:00,2025-11-20 07:00,2025-11-20 07:00,0,150,100
PL.001,YATES/SECAI ALL TCO COMPLETION,Not Started,Remobilization and Out-of-Sequence Completion List - DD07-10-2025,,,,,,,,,,2026-05-15 17:00,2026-05-15 17:00,,,2026-05-15 17:00,2026-05-15 17:00,2025-12-05 17:00,2025-12-05 17:00,0,0,0
CN.SWA5..6250,IMPACT - SECAI STAIR OPENED FOR EGRESS - STAIR #2 - 11/L - ALL LEVELS,Complete,SWA - 5,West Support Building,SUWS-3 - 12-9,INTERIOR STAIR TOWER - STAIR #2 (CLEAN ROOM),,CONSTRUCTION,,INSULATED METAL PANELS,JAMES LIVELY,INTERIORS,2025-10-13 07:00,2025-10-29 17:00,2025-10-13 07:00,2025-11-03 17:00,2025-11-20 17:00,2025-11-20 17:00,2025-11-12 07:00,2025-11-12 07:00,0,150,100
CN.SWA5..6260,IMPACT - SECAI STAIR OPENED FOR EGRESS - STAIR #21 - 11/L - ALL LEVELS,Complete,SWA - 5,West Support Building,SUWS-3 - 12-9,INTERIOR STAIR TOWER - STAIR #21 (CLEAN ROOM),,CONSTRUCTION,,INSULATED METAL PANELS,JAMES LIVELY,INTERIORS,2025-10-13 07:00,2025-10-29 17:00,2025-10-13 07:00,2025-11-03 17:00,2025-11-20 17:00,2025-11-20 17:00,2025-11-22 07:00,2025-11-22 07:00,0,150,100
FAB120504D-03,INSTALL DOOR FRAMES - FAB120504D,Complete,Vestibule 5 - 2F -SUW-FAB120504,,,,,,,,,,2025-10-13 08:00,2025-10-13 17:00,2025-10-13 08:00,2025-10-13 17:00,2025-11-20 17:00,2025-11-20 17:00,2025-11-25 10:00,2025-11-25 10:00,0,8,100
CN.SWB3.7091,IMPACT - SECAI ELECTRICAL ROUGHIN CANOPY - GL 32 - N LINE,Complete,CONSTRUCTION,,SUWN-5 - 30-33,EXTERIOR SKIN,,CONSTRUCTION,,,,,2025-10-21 07:00,2025-10-21 17:00,2025-10-15 07:00,2025-10-28 17:00,2025-11-20 17:00,2025-11-20 17:00,2025-11-13 07:00,2025-11-13 07:00,0,10,100
CN.SWB3.7101,CANOPY - SECAI MEP - ELECTRICAL - GL 19-16 - N LINE,Complete,CONSTRUCTION,,SUWN-1 - 18-21,EXTERIOR SKIN,,CONSTRUCTION,,,,,2025-10-31 07:00,2025-11-04 17:00,2025-10-24 07:00,2025-10-24 17:00,2025-11-26 17:00,2025-11-26 17:00,2025-11-20 07:00,2025-11-20 07:00,0,30,100
CN.SWB3.7111,IMPACT - CANOPY - SECAI MEP - MECHANICAL RD INSULATION - GL 19-16 - A 17,Complete,CONSTRUCTION,,SUES-1 - 19-16,EXTERIOR SKIN,,CONSTRUCTION,,,,,2025-11-05 07:00,2025-11-06 17:00,2025-10-27 07:00,2025-10-27 17:00,2025-12-03 17:00,2025-12-03 17:00,2025-11-06 07:00,2025-11-06 07:00,0,20,100
CN.SWB3.7121,IMPACT - CANOPY - SECAI MEP - GL 5 - A LINE,Not Started,CONSTRUCTION,,SUES-5 - 6-1 - FIZ - GL A -E,EXTERIOR SKIN,,CONSTRUCTION,,,,,2025-11-21 07:00,2025-12-03 17:00,,,2025-11-21 07:00,2025-12-03 17:00,2025-11-04 07:00,2025-11-12 17:00,70,70,0
CN.SWB3.7131,IMPACT - CANOPY - SECAI MEP - ELECTRICAL - GL 5 - A LINE,Complete,CONSTRUCTION,,SUES-5 - 6-1 - FIZ - GL A -E,EXTERIOR SKIN,,CONSTRUCTION,,,,,2025-10-27 07:00,2025-10-28 17:00,2025-10-24 07:00,2025-10-24 17:00,2025-11-20 17:00,2025-11-20 17:00,2025-11-14 07:00,2025-11-14 07:00,0,20,100
FAB116519D-17,IMPACT - PRICING REQURED FOR DESIGN CHANGE - FAB116519D - C/29.5,Active,PR Air Lock - 1F -SUE-FAB116519,,INTERIOR STAIRS,L1 - Fndn Slab,,,,,,,2025-10-15 08:00,2025-10-21 17:00,2025-10-15 08:00,,2025-11-21 08:00,2025-11-27 17:00,2025-11-20 08:00,2025-11-26 17:00,40,40,0
CN.SWB5.11150,SECAI TOOKOVER- Reinstall INSULATION - INSTALLATION - NE - BREEZEWAY,Complete,SEA - 5,East Support Building,NORTH EAST PENTHOUSE,EXTERIOR SKIN,,CONSTRUCTION,KOVACH,INSULATED METAL PANELS,SEAN MONK,,2025-10-05 07:00,2025-10-06 17:00,2025-10-13 07:00,2025-10-26 17:00,2025-11-20 17:00,2025-11-20 17:00,2025-12-01 07:00,2025-12-01 07:00,0,20,100
CN.SWB5.11160,SECAI TOOKOVER- Reinstall INSULATION - INSTALLATION - NW- BREEZEWAY,Active,SEA - 5,East Support Building,NORTH WEST PENTHOUSE,EXTERIOR SKIN,,CONSTRUCTION,KOVACH,INSULATED METAL PANELS,SEAN MONK,,2025-10-05 07:00,2025-10-06 17:00,2025-10-13 07:00,,2025-11-21 07:00,2025-11-22 17:00,2025-11-17 07:00,2025-11-18 17:00,20,20,0
CN.ST.36861,IMPACT - SECAI /VELTRI SCAFFOLD ON LVL 4 Cladding & Drywall connection - VESTIBULE 18 ENTRY WALL- GL 33 - STAIR 18 - C-D,Not Started,CONSTRUCTION,,GRIDLINE 33,GL 33 STAIR 18 (EAST),STAIR 18 (EAST) - C-D,CONSTRUCTION,WATER PROOFING GL33,,,,2025-11-21 07:00,2025-11-25 17:00,,,2025-11-21 07:00,2025-11-25 17:00,2025-11-07 07:00,2025-11-11 17:00,30,30,0
FAB120401F-70,DOOR FRAME HANDED OVER TO SECAI ON 10/14 - FAB120401F,Complete,Electrical Rm - 2F -SUW-FAB120401,,,,,,,,,,2025-10-14 08:00,2025-10-14 17:00,2025-10-14 08:00,2025-10-14 17:00,2025-11-20 17:00,2025-11-20 17:00,2025-11-25 10:00,2025-11-25 10:00,0,8,100
FAB136502B-70,DOOR FRAME HANDED OVER TO SECAI ON 10/01 - FAB136502B,Complete,Wafer I/O Entrance - 3F -SUE-FAB136501,,,,,,,,,,2025-10-01 08:00,2025-10-01 17:00,2025-10-01 08:00,2025-10-01 17:00,2025-11-20 17:00,2025-11-20 17:00,2025-11-17 10:00,2025-11-17 10:00,0,8,100
STAIR.3060,IMPACT - FABRICATION/MATERIAL ON SITE- N19 HANDRAIL - LEVEL 01,Active,CONSTRUCTION,,INTERIOR STAIRS,L1 - Fndn Slab,SUW - SUPPORT WEST,CONSTRUCTION,,,,,2025-10-16 07:00,2025-10-29 17:00,2025-10-16 07:00,,2025-11-21 07:00,2025-12-08 17:00,2025-10-24 07:00,2025-11-06 17:00,100,100,0
FAB120108D-85,IMPACT - SECAI CONSTRAINTS REMOVAL - FAB120108D (CONSTRAINTS TO BE REMOVED BY 10/27),Complete,Air Lock 1 - 2F -SUW-FAB120108,,INTERIOR STAIRS,L2 - SubFab Level,,,,,,,2025-09-22 08:00,2025-09-26 17:00,2025-09-22 08:00,2025-10-27 17:00,2025-11-20 17:00,2025-11-20 17:00,2025-11-25 10:00,2025-11-25 10:00,0,40,100
FAB110304A-70,IMPACT - SECAI COORDS RUNNING TROUGH OPEING - FAB110304A,Active,Air Lock 3 - 1F -SUW-FAB110304,,,,,,,,,,2025-10-14 08:00,2025-10-27 17:00,2025-10-14 08:00,,2025-11-21 08:00,2025-11-27 17:00,2025-11-18 10:00,2025-11-25 10:00,40,80,0
FAB110304B-75,IMPACT - SECAI SCAFFOLD IMPEDING DOOR INSTALLATION - FAB110304B,Complete,Air Lock 3 - 1F -SUW-FAB110304,,,,,,,,,,2025-10-15 08:00,2025-10-28 17:00,2025-10-16 08:00,2025-10-29 17:00,2025-11-20 17:00,2025-11-20 17:00,2025-11-25 10:00,2025-11-25 10:00,0,80,100
FAB110305A-70,IMPACT - SECAI CORDS RUNNING TROUGH OPENING - FAB110305A,Complete,Exit Passageway 3 - 1F -SUW-FAB110305,,,,,,,,,,2025-10-16 08:00,2025-10-29 17:00,2025-10-16 08:00,2025-10-29 17:00,2025-11-20 17:00,2025-11-20 17:00,2025-11-25 10:00,2025-11-25 10:00,0,80,100
FAB110404D-70,IMPACT - SECAI SCAFFOLD IMPEDING DOOR INSTALLATION AND SECAI MISSING DRYWALL COMPLETION - FAB110404D,Active,W-CuS04-ACQC RM (N/24.3-25) - 1F- SUW-FAB110404,,,,,,,,,,2025-09-16 08:00,2025-09-29 17:00,2025-09-16 08:00,,2025-11-21 08:00,2025-11-27 17:00,2025-11-18 10:00,2025-11-25 10:00,40,80,0
FAB110404A-70,IMPACT - SECAI BARRICADE AND SECAI MISSING DRYWALL COMPLETION - FAB110404A,Complete,W-CuS04-ACQC RM (N/24.3-25) - 1F- SUW-FAB110404,,,,,,,,,,2025-09-16 08:00,2025-09-29 17:00,2025-09-16 08:00,2025-11-05 17:00,2025-11-20 17:00,2025-11-20 17:00,2025-11-25 10:00,2025-11-25 10:00,0,80,100
FAB110409D-50,IMPACT - SECAI BARRICDE AND SECAI MISSING DRYWALL COMPLETION - FAB110409D,Complete,W-H3PO4 RM (N/25.4-26.2) - 1F -SUW-FAB110409,,,,,,,,,,2025-09-16 08:00,2025-09-29 17:00,2025-09-16 08:00,2025-11-04 17:00,2025-11-20 17:00,2025-11-20 17:00,2025-11-25 10:00,2025-11-25 10:00,0,80,100
FAB110408C-23,IMPACT - SECAI TO REALING FRAME AND DRYWALL COMPLETION - FAB110408C,Complete,W-H2S04 ACQC RM (N/26.2-27) - 1F -SUW-FAB110408,,,,,,,,,,2025-09-16 08:00,2025-09-29 17:00,2025-09-16 08:00,2025-11-13 17:00,2025-11-20 17:00,2025-11-20 17:00,2025-11-25 10:00,2025-11-25 10:00,0,80,100
FAB116413A-21,IMPACT - SECAI DUCTWORK IN DOOR SWING PATH - FAB116413A,Active,Duct Shaft - 1F -SUE-FAB116413,,,,,,,,,,2025-09-25 08:00,2025-10-08 17:00,2025-09-29 08:00,,2025-11-21 08:00,2025-11-27 17:00,2025-11-18 10:00,2025-11-25 10:00,40,80,0
FAB116103A-6,IMPACT - SECAI ELECTRICAL/LIGHT SWITCH PANEL IN THE OPENING - FAB116103A,Active,Elevator Mech. Rm 22 - 1F -SUE-FAB116103,,,,,,,,,,2025-08-28 08:00,2025-09-10 17:00,2025-08-28 08:00,,2025-11-21 08:00,2025-11-27 17:00,2025-11-17 10:00,2025-11-24 10:00,40,80,0
FAB116304C-70,IMPACT SECAI SCAFFOLD - FAB116304C,Active,CV Room - 1F -SUE-FAB116304,,,,,,,,,,2025-10-27 08:00,2025-11-07 17:00,2025-10-23 08:00,,2025-11-21 08:00,2025-11-27 17:00,2025-11-18 10:00,2025-11-25 10:00,40,80,0
FAB116301B-35,IMPACT - SECAI DUCT CLASH WITH DOOR SWING- FAB116301B,Active,Air Lock 20 - 1F -SUE-FAB116301,,,,,,,,,,2025-09-26 08:00,2025-10-09 17:00,2025-09-26 08:00,,2025-11-21 08:00,2025-11-27 17:00,2025-11-18 10:00,2025-11-25 10:00,40,80,0
FAB116526A-6,IMPACT - SECAI SCAFFOLD - FAB116526A,Complete,Elevator Mech.Rm 19 - 1F -SUE-FAB116526,,,,,,,,,,2025-10-23 08:00,2025-11-05 17:00,2025-10-23 08:00,2025-11-13 17:00,2025-11-20 17:00,2025-11-20 17:00,2025-11-25 10:00,2025-11-25 10:00,0,80,100
FAB1U1502A-35,IMPACT - SECAI MEP SCAFFOLD - FAB1U1502A,Complete,SOUTH/NORTH PIT - 1F - SUW,,,,,,,,,,2025-10-20 08:00,2025-10-31 17:00,2025-10-20 08:00,2025-11-13 08:00,2025-11-20 17:00,2025-11-20 17:00,2025-11-25 08:00,2025-11-25 08:00,0,80,100
FAB124102B-21,IMPACT - SECAI MEP SCAFFOLD - FAB124102B,Active,Battery Rm - 2F -FIZ-FAB124102,,,,,,,,,,2025-10-23 08:00,2025-11-05 17:00,2025-10-23 08:00,,2025-11-21 08:00,2025-11-27 17:00,2025-11-18 10:00,2025-11-25 10:00,40,80,0
FAB124101B-21,IMPACT - SECAI MEP SCAFFOLD - FAB124101B,Active,I/O Rm - 2F -FIZ-FAB124101,,,,,,,,,,2025-10-20 08:00,2025-10-31 17:00,2025-10-20 08:00,,2025-11-21 08:00,2025-11-27 17:00,2025-11-18 10:00,2025-11-25 10:00,40,80,0
FAB124101A-21,IMPACT - SECAI MEP SCAFFOLD - FAB124101A,Active,I/O Rm - 2F -FIZ-FAB124101,,,,,,,,,,2025-10-20 08:00,2025-10-31 17:00,2025-10-20 08:00,,2025-11-21 08:00,2025-11-27 17:00,2025-11-18 10:00,2025-11-25 10:00,40,80,0
FAB126107E-60,IMPACT - SECAI TEMP INSTALLATION IN OPENING - FAB126107E,Complete,Air Lock 22 - 2F -SUE-FAB126107,,,,,,,,,,2025-09-17 08:00,2025-09-30 17:00,2025-09-17 08:00,2025-11-10 17:00,2025-11-20 17:00,2025-11-20 17:00,2025-11-25 10:00,2025-11-25 10:00,0,80,100
FAB126505A-60,IMPACT- SECAI REMOVED FRAME AWAITING REINSTALLATION BY SECAI - FAB126505A,Active,Vestibule 18 - 2F -SUE-FAB126505,,,,,,,,,,2025-08-12 08:00,2025-08-25 17:00,2025-08-12 08:00,,2025-11-21 08:00,2025-11-27 17:00,2025-11-21 08:00,2025-11-27 17:00,40,80,0
FAB130401A-6,IMPACT - SECAI MEP SCAFFOLD - FAB130401A,Active,Duct Shaft - 3F -SUW-FAB130401,,,,,,,,,,2025-08-20 08:00,2025-09-02 17:00,2025-08-20 08:00,,2025-11-21 08:00,2025-11-27 17:00,2025-11-18 10:00,2025-11-25 10:00,40,80,0
FAB132102A-60,IMPACT - SECAI MEP SCAFFOLD - FAB132102A,Active,TQR LAB - 3F -FIZ-FAB132102,,,,,,,,,,2025-10-23 08:00,2025-11-05 17:00,2025-10-23 08:00,,2025-11-21 08:00,2025-11-27 17:00,2025-11-17 08:00,2025-11-21 17:00,40,80,0
FAB136302B-60,IMPACT - TEMP A/C UNIT - FAB136302B,Active,Electrical Rm - 3F -SUE-FAB136302,,,,,,,,,,2025-08-20 08:00,2025-09-02 17:00,2025-08-20 08:00,,2025-11-21 08:00,2025-12-04 17:00,2025-11-11 10:00,2025-11-25 10:00,80,80,0
FAB112156A-05,PAINT & PROTECT DOORS & FRAMES - FAB112156A,Not Started,PCS Monitoring Rm - 1F - FAB-FAB112155,,,,,,,,,,2026-02-16 08:00,2026-02-16 17:00,,,2026-02-16 08:00,2026-02-16 17:00,2025-12-05 08:00,2025-12-05 17:00,8,8,0
ZX-21705,IMPACT - SECAI Temp air ducts - Elevator Hall #03 - 2F-FAB120305,Active,Elevator Hall 3 - 2F -SUW-FAB120305,,,,,,,,,,2025-10-01 08:00,2025-10-21 17:00,2025-10-01 08:00,,2025-11-21 08:00,2025-12-11 17:00,2025-11-06 08:00,2025-11-26 17:00,120,120,0
ZX-21715,IMPACT - SECAI TEMP DUCTS - Duct Shaft - 2F-SUW-FAB120312,Active,Duct Shaft - 2F -SUW-FAB120312,,,,,,,,,,2025-10-01 08:00,2025-10-21 17:00,2025-10-01 08:00,,2025-11-21 08:00,2025-12-04 17:00,2025-11-20 08:00,2025-12-03 17:00,80,120,0
ZX-21725,IMPACT - SECAI MEP SCAFFOLD IN THE AREA - Duct Shaft - 2F-SUE-FAB126105,Active,Duct Shaft - 2F -SUE-FAB126105,,,,,,,,,,2025-10-01 08:00,2025-10-21 17:00,2025-10-01 08:00,,2025-11-21 08:00,2025-12-04 17:00,2025-11-20 08:00,2025-12-03 17:00,80,120,0
ZX-21735,IMPACT - SECAI MEP SCAFFOLD IN THE AREA- Duct Shaft - 2F-SUE-FAB126401,Active,Duct Shaft - 2F -SUE-FAB126401,,,,,,,,,,2025-10-01 08:00,2025-10-21 17:00,2025-10-01 08:00,,2025-11-21 08:00,2025-12-04 17:00,2025-11-13 08:00,2025-11-26 17:00,80,120,0
ZX-21745,IMPACT - SECAI MEP PIPES AND DUCTWORK - Duct Shaft - 2F-SUE-FAB126401,Active,Duct Shaft - 2F -SUE-FAB126401,,,,,,,,,,2025-10-01 08:00,2025-10-21 17:00,2025-10-01 08:00,,2025-11-21 08:00,2025-12-04 17:00,2025-11-13 08:00,2025-11-26 17:00,80,120,0
ZX-21755,IMPACT - SECAI DEMO DRYWALL - Duct Shaft - 2F-SUE-FAB126401,Active,Duct Shaft - 2F -SUE-FAB126401,,,,,,,,,,2025-10-01 08:00,2025-10-21 17:00,2025-10-01 08:00,,2025-11-21 08:00,2025-12-04 17:00,2025-11-13 08:00,2025-11-26 17:00,80,120,0
ZX-21765,IMPACT- SECAI MEP SCAFFOLD - Clean Vestibule #19 - 2F-FAB126402,Active,Clean Vestibule 19 - 2F -SUE-FAB126402,,,,,,,,,,2025-10-01 08:00,2025-10-21 17:00,2025-10-01 08:00,,2025-11-21 08:00,2025-12-04 17:00,2025-11-20 08:00,2025-12-03 17:00,80,120,0
ZX-21775,IMPACT - SECAI MEP WORK- Electrical RM - 3F-SUW-FAB130402,Complete,Electrical Rm - 3F -SUW-FAB130402,,,,,,,,,,2025-09-01 08:00,2025-09-19 17:00,2025-09-01 08:00,2025-11-03 17:00,2025-11-20 17:00,2025-11-20 17:00,2025-12-05 17:00,2025-12-05 17:00,0,120,100
ZX-21785,IMPACT - SECAI MEP SCAFFOLD IN THE AREA - Duct Shaft - 1F-SUE-FAB116413,Active,Duct Shaft - 1F -SUE-FAB116413,,,,,,,,,,2025-10-01 08:00,2025-10-21 17:00,2025-10-01 08:00,,2025-11-21 08:00,2025-12-04 17:00,2025-11-21 08:00,2025-12-04 17:00,80,120,0
ZX-21795,IMPACT - SECAI MEP SCAFFOLD IN THE AREA - Duct Shaft - 1F-SUE-FAB116518,Active,Duct Shaft - 1F -SUE-FAB116518,,,,,,,,,,2025-10-01 08:00,2025-10-21 17:00,2025-10-01 08:00,,2025-11-21 08:00,2025-12-04 17:00,2025-11-24 08:00,2025-12-05 17:00,80,120,0
ZX-21805,IMPACT - SECAI MEP SCAFFOLD IN THE AREA - Duct Shaft - 2F-SUW-FAB120312,Active,Duct Shaft - 2F -SUW-FAB120312,,,,,,,,,,2025-10-01 08:00,2025-10-21 17:00,2025-10-01 08:00,,2025-11-21 08:00,2025-12-04 17:00,2025-11-20 08:00,2025-12-03 17:00,80,120,0
ZX-21815,IMPACT - SECAI MEP SCAFFOLD IN THE AREA - Duct Shaft - 2F-SUW-FAB120403,Active,Duct Shaft - 2F -SUW-FAB120403,,,,,,,,,,2025-10-01 08:00,2025-10-21 17:00,2025-10-01 08:00,,2025-11-21 08:00,2025-12-04 17:00,2025-11-24 08:00,2025-12-05 17:00,80,120,0
ZX-21825,IMPACT - SECAI SCAFFLOD IN THE AREA - Duct Shaft - 2F-SUW-FAB120512,Active,Duct Shaft - 2F -SUW-FAB120512,,,,,,,,,,2025-10-01 08:00,2025-10-21 17:00,2025-10-01 08:00,,2025-11-21 08:00,2025-12-04 17:00,2025-11-24 08:00,2025-12-05 17:00,80,120,0
ZX-21835,IMPACT - SECAI MEP SCAFFOLD IN THE AREA - Duct Shaft - 2F-SUE-FAB126301,Active,Duct Shaft - 2F -SUE-FAB126301,,,,,,,,,,2025-10-01 08:00,2025-10-21 17:00,2025-10-01 08:00,,2025-11-21 08:00,2025-12-04 17:00,2025-11-24 08:00,2025-12-05 17:00,80,120,0
ZX-21845,IMPACT - SECAI MEP SCAFFOLD IN THE AREA - Duct Shaft - 2F-SUE-FAB126403,Active,Duct Shaft - 2F -SUE-FAB126403,,,,,,,,,,2025-10-01 08:00,2025-10-21 17:00,2025-10-01 08:00,,2025-11-21 08:00,2025-12-04 17:00,2025-11-20 08:00,2025-12-03 17:00,80,120,0
ZX-21855,IMPACT - SECAI MEP SCAFFOLD IN THE AREA - Duct Shaft - 2F-SUE-FAB126510,Active,Duct Shaft - 2F -SUE-FAB126510,,,,,,,,,,2025-10-01 08:00,2025-10-21 17:00,2025-10-01 08:00,,2025-11-21 08:00,2025-12-04 17:00,2025-11-21 08:00,2025-12-04 17:00,80,120,0
ZX-21865,IMPACT - SECAI MEP SCAFFOLD IN THE AREA - Duct Shaft - 2F-SUE-FAB126507,Active,Duct Shaft - 2F -SUE-FAB126507,,,,,,,,,,2025-10-01 08:00,2025-10-21 17:00,2025-10-01 08:00,,2025-11-21 08:00,2025-12-04 17:00,2025-11-21 08:00,2025-12-04 17:00,80,120,0
ZX-21875,SECAI - MEP SCAFFOLD IN THE AREA - Duct Shaft - 3F-SUE-FAB136105,Active,Duct Shaft - 3F -SUE-FAB136105,,,,,,,,,,2025-10-01 08:00,2025-10-21 17:00,2025-10-01 08:00,,2025-11-21 08:00,2025-12-04 17:00,2025-11-20 08:00,2025-12-03 17:00,80,120,0
ZX-21885,IMPACT - SECAI MEP SCAFFOLD IN THE AREA - Duct Shaft - 3F-SUE-FAB136201,Active,Duct Shaft - 3F -SUE-FAB136201,,,,,,,,,,2025-10-01 08:00,2025-10-21 17:00,2025-10-01 08:00,,2025-11-21 08:00,2025-12-04 17:00,2025-11-18 08:00,2025-12-01 17:00,80,120,0
ZX-21895,IMPACT- SECAI MEP SCAFFOLD IN THE AREA - Duct Shaft - 3F-SUE-FAB136401,Active,Duct Shaft - 3F -SUE-FAB136401,,,,,,,,,,2025-11-07 08:00,2025-11-27 17:00,2025-08-18 08:00,,2025-11-21 08:00,2025-12-11 17:00,2025-11-17 08:00,2025-12-05 17:00,120,120,0
ZX-21905,IMPACT - SECAI MEP SCAFFOLD IN THE AREA - Duct Shaft - 3F-SUE-FAB136405,Active,Duct Shaft - 3F -SUE-FAB136405,,,,,,,,,,2025-10-01 08:00,2025-10-21 17:00,2025-10-01 08:00,,2025-11-21 08:00,2025-12-04 17:00,2025-11-24 08:00,2025-12-05 17:00,80,120,0
ZX-21915,IMPACT- SECAI MEP SCAFFOLD IN THE AREA - Duct Shaft - 3F-SUE-FAB136507,Active,Duct Shaft - 3F -SUE-FAB136507,,,,,,,,,,2025-10-01 08:00,2025-10-21 17:00,2025-10-01 08:00,,2025-11-21 08:00,2025-12-04 17:00,2025-11-20 08:00,2025-12-03 17:00,80,120,0
ZX-21925,IMPACT - SECAI MEP SCAFFOLD IN THE AREA - Duct Shaft - L4 - SUW-FAB140102,Active,Duct Shaft - 4F -SUW-FAB140102,,,,,,,,,,2025-10-01 08:00,2025-10-21 17:00,2025-10-01 08:00,,2025-11-21 08:00,2025-12-04 17:00,2025-11-19 08:00,2025-12-02 17:00,80,120,0
CN.SWA4.7610,IMPACT - SECAI MODIFIED SCAFFOLD FOR GRADE WORK - GDA WP IMPACTED - N30-31 TRESTLE B INFILL,Active,CONSTRUCTION,,SUWN-5 - 30-33,EXTERIOR SKIN,,CONSTRUCTION,KOVACH,INSULATED METAL PANELS,,,2025-10-27 07:00,2025-11-03 17:00,2025-10-24 07:00,,2025-11-21 07:00,2025-12-01 17:00,2025-11-04 07:00,2025-11-10 17:00,50,60,0
CN.SWB5.11170,IMPACT - FIRE SPRINKLER ELEVATION BUST - SECAI - NW- BREEZEWAY,Not Started,SEA - 5,East Support Building,NORTH WEST PENTHOUSE,EXTERIOR SKIN,,CONSTRUCTION,KOVACH,INSULATED METAL PANELS,SEAN MONK,,2025-11-23 07:00,2025-11-29 17:00,,,2025-11-23 07:00,2025-11-29 17:00,2025-11-19 07:00,2025-11-23 17:00,50,50,0
FAB130117A-04,INSTALL DOOR & HARDWARE - FAB130117A,Not Started,FA Lab - 3F -SUW-FAB130117,,,,,,,,,,2025-11-21 08:00,2025-11-27 17:00,,,2025-11-21 08:00,2025-11-27 17:00,2025-11-25 08:00,2025-12-01 17:00,40,40,0
FAB130117A-4,PAINT & PROTEC DOORS & FRAMES - FAB130117A,Not Started,FA Lab - 3F -SUW-FAB130117,,,,,,,,,,2026-02-16 08:00,2026-02-19 17:00,,,2026-02-16 08:00,2026-02-19 17:00,2025-12-02 08:00,2025-12-05 17:00,32,32,0
FAB132102C-05,PAINT & PROTECT DOORS & FRAMES- FAB132102C,Not Started,TQR LAB - 3F -FIZ-FAB132102,,,,,,,,,,2026-02-16 08:00,2026-02-19 17:00,,,2026-02-16 08:00,2026-02-19 17:00,2025-12-02 08:00,2025-12-05 17:00,32,32,0
FAB110111A-100,INSTALL DOOR HARDWARE - FAB110111A,Not Started,Exit Passageway 1 - 1F -SUW-FAB110111,,,,,,,,,,2025-11-21 08:00,2025-11-26 17:00,,,2025-11-21 08:00,2025-11-26 17:00,2025-12-02 08:00,2025-12-05 17:00,32,32,0
FAB110507A-04,DOOR INSTALL - FAB110507A,Complete,Elevator Hall 5 - 1F -SUW-FAB110507,,,,,,,,,,2025-08-19 08:00,2025-08-19 17:00,2025-08-19 08:00,2025-08-19 17:00,2025-11-20 17:00,2025-11-20 17:00,2025-11-25 10:00,2025-11-25 10:00,0,8,100
FAB110507A-04A,INSTALL DOOR & HARDWARE - FAB110507A,Active,Elevator Hall 5 - 1F -SUW-FAB110507,,,,,,,,,,2025-11-05 08:00,2025-11-11 17:00,2025-11-05 08:00,,2025-11-21 08:00,2025-11-27 17:00,2025-11-25 10:00,2025-12-02 10:00,40,40,0
FAB1-ST22D-03,INSTALL DOOR FRAME - FAB1-ST22D,Complete,Stair 22 - 4F - SUE-FAB1-ST22,,,,,,,,,,2025-10-22 08:00,2025-10-22 17:00,2025-10-22 08:00,2025-10-22 17:00,2025-11-20 17:00,2025-11-20 17:00,2025-11-25 10:00,2025-11-25 10:00,0,8,100
FAB1-ST22D-04,INSTALL DOOR & HARDWARE - FAB1-ST22D,Not Started,Stair 22 - 4F - SUE-FAB1-ST22,,,,,,,,,,2025-11-21 08:00,2025-11-27 17:00,,,2025-11-21 08:00,2025-11-27 17:00,2025-11-25 10:00,2025-12-02 10:00,40,40,0
FAB1-ST22D-05,PAINT & PROTECT DOORS & FRAMES -  FAB1-ST22D,Not Started,Stair 22 - 4F - SUE-FAB1-ST22,,,,,,,,,,2026-02-16 08:00,2026-02-19 15:00,,,2026-02-16 08:00,2026-02-19 15:00,2025-12-02 10:00,2025-12-05 17:00,30,30,0
FAB120303D-21,FRAME HANDED OVER TO SECAI ON 08/15 - FAB120303D,Complete,Air Lock 3 - 2F -SUW-FAB120303,,,,,,,,,,2025-08-15 08:00,2025-08-15 17:00,2025-08-15 08:00,2025-08-15 17:00,2025-11-20 17:00,2025-11-20 17:00,2025-11-25 10:00,2025-11-25 10:00,0,8,100
FAB1-MS.PAINT,DOOR PAINT PENDING BUILDING CONDITION AND SECAI DIRECTION,Active,Remobilization and Out-of-Sequence Completion List - DD07-10-2025,,,,,,,,,,2025-10-27 08:00,2026-01-30 17:00,2025-10-27 08:00,,2025-11-21 08:00,2026-02-13 17:00,2025-06-13 08:00,2025-09-05 17:00,488,560,0
STAIR.3070,IMPACT - SECAI TEMP RAMP REMOVAL - MEZZANINE GUARDRAIL STAIR #61 - SUW - 3-L - LEVEL 04G,Active,CONSTRUCTION,,INTERIOR STAIRS,L4 - SUP Roof - FAB Roof,SUW - SUPPORT WEST,CONSTRUCTION,,,,,2025-10-27 07:00,2025-10-31 17:00,2025-10-27 07:00,,2025-11-21 07:00,2025-12-01 17:00,2025-11-11 07:00,2025-11-17 17:00,50,50,0
STAIR.3080,IMPACT - FABRICATION/MATERIAL- RFI 1843 - Roof Ramp Transitions - RAMP #32-B/ #32-L - SUE/SUW - 3 - LEVEL 4,Active,CONSTRUCTION,,INTERIOR STAIRS,L4 - SUP Roof - FAB Roof,SUE - SUPPORT EAST,CONSTRUCTION,,,,,2025-10-23 07:00,2025-10-29 17:00,2025-10-23 07:00,,2025-11-21 07:00,2025-12-01 17:00,2025-11-20 07:00,2025-11-26 17:00,50,50,0
FAB130111A-06,INSTALL DOOR HARDWARE - FAB130111A,Not Started,Vestibule 1 - 3F -SUW-FAB130111,,,,,,,,,,2025-11-21 08:00,2025-11-26 17:00,,,2025-11-21 08:00,2025-11-26 17:00,2025-12-02 08:00,2025-12-05 17:00,32,32,0
CN.SWA5..6270,SECAI DRYWALL PATCHING ONGOING - STAIR #50 - 29/L - ALL LEVELS(),Complete,SWA - 5,West Support Building,SUWN-4 - 27-30,INTERIOR STAIR TOWER - STAIR #50 - DE-SCOPED,,CONSTRUCTION,,INSULATED METAL PANELS,JAMES LIVELY,INTERIORS,2025-10-31 07:00,2025-11-04 17:00,2025-10-30 07:00,2025-10-31 17:00,2025-11-20 17:00,2025-11-20 17:00,2025-12-05 07:00,2025-12-05 07:00,0,40,100
FAB130111C-70,IMPACT - SECAI FRAME REINSTALL - FAB130111C,Active,Vestibule 1 - 3F -SUW-FAB130111,,,,,,,,,,2025-07-25 08:00,2025-08-07 17:00,2025-07-25 08:00,,2025-11-21 08:00,2025-11-27 17:00,2025-11-24 10:00,2025-12-01 10:00,40,80,0
CN.SWA5..6280,IMPACT - SECAI DRYWALL PATCH & FINISH - STAIR #20 - 19/D - ALL LEVELS,Complete,SWA - 5,West Support Building,SUES-1 - 19-16,INTERIOR STAIR TOWER - STAIR #20,,CONSTRUCTION,,INSULATED METAL PANELS,JAMES LIVELY,INTERIORS,2025-10-13 07:00,2025-10-20 17:00,2025-09-16 07:00,2025-11-03 17:00,2025-11-20 17:00,2025-11-20 17:00,2025-11-29 07:00,2025-11-29 07:00,0,70,100
CN.SWA5..6290,IMPACT - SECAI TOOK OVER FOR SGP PANEL INSTALLS - STAIR #4 - 23/L - ALL LEVELS,Complete,SWA - 5,West Support Building,SUWN-2 - 21-24,INTERIOR STAIR TOWER - STAIR #4 (CLEAN ROOM),,CONSTRUCTION,,INSULATED METAL PANELS,JAMES LIVELY,INTERIORS,2025-10-02 07:00,2025-10-04 17:00,2025-10-28 07:00,2025-11-11 17:00,2025-11-20 17:00,2025-11-20 17:00,2025-11-17 07:00,2025-11-17 07:00,0,30,100
EJ-0002,Install & Inspect Vertical Expansion Joint K/1 - Thermohygrostat Rm - 2F-FAB120104,Not Started,Thermohygrostat Rm - 2F -FIZ-FAB120104,,,,,,,,,,2025-11-28 08:00,2025-12-04 17:00,,,2025-11-28 08:00,2025-12-04 17:00,2025-11-24 08:00,2025-11-28 17:00,40,40,0
EJ-0001,IMPACT - SECAI Electrical Panel and cable tray impeading VEJ instal - Thermohygrostat Rm - 2F-FAB120104,Active,Thermohygrostat Rm - 2F -FIZ-FAB120104,,,,,,,,,,2025-10-16 08:00,2025-10-22 17:00,2025-10-16 08:00,,2025-11-21 08:00,2025-11-27 17:00,2025-11-17 08:00,2025-11-21 17:00,40,40,0
EJ-0004,Install & Inspection Vertical Expansion Joint (Emseal) D/6 - Duct Shaft - 2F-SUE-FAB126105,Not Started,Duct Shaft - 2F -SUE-FAB126105,,,,,,,,,,2025-12-05 08:00,2025-12-11 17:00,,,2025-12-05 08:00,2025-12-11 17:00,2025-12-01 08:00,2025-12-05 17:00,40,40,0
EJ-0003,IMPACT - IOCC 1548 (Scaffold) to be approved by SECAI - Duct Shaft - 2F-SUE-FAB126105,Active,Duct Shaft - 2F -SUE-FAB126105,,,,,,,,,,2025-08-14 08:00,2025-09-03 17:00,2025-08-14 08:00,,2025-11-21 08:00,2025-12-04 17:00,2025-11-17 08:00,2025-11-28 17:00,80,120,0
EJ-0006,Horizontal/Floor Expansion Joint D/25 - Clean Vestibule #19 - 2F-FAB126402,Not Started,Clean Vestibule 19 - 2F -SUE-FAB126402,,,,,,,,,,2025-11-28 08:00,2025-12-04 17:00,,,2025-11-28 08:00,2025-12-04 17:00,2025-11-24 08:00,2025-11-28 17:00,40,40,0
EJ-0005,IMPACT - SECAI MEP SCAFFOLD IN THE AREA- Clean Vestibule #19 - 2F-FAB126402,Active,Clean Vestibule 19 - 2F -SUE-FAB126402,,,,,,,,,,2025-10-06 08:00,2025-10-10 17:00,2025-10-06 08:00,,2025-11-21 08:00,2025-11-27 17:00,2025-11-17 08:00,2025-11-21 17:00,40,40,0
EJ-0008,Horizontal Joint Aluminium cover installation K/23 - Clean Vestibule #04 - 2F-FAB120402,Not Started,Clean Vestibule 4 - 2F -SUW-FAB120402,,,,,,,,,,2025-11-28 08:00,2025-12-04 17:00,,,2025-11-28 08:00,2025-12-04 17:00,2025-12-01 08:00,2025-12-05 17:00,40,40,0
EJ-0007,IMPACT - SECAI CRC coating pending to be finished- Clean Vestibule #04 - 2F-FAB120402,Active,Clean Vestibule 4 - 2F -SUW-FAB120402,,,,,,,,,,2025-10-06 08:00,2025-10-10 17:00,2025-10-06 08:00,,2025-11-21 08:00,2025-11-27 17:00,2025-11-24 08:00,2025-11-28 17:00,40,40,0
EJ-0010,Horizontal Joint Aluminium cover installation D/13 - Clean Vestibule #21 - 2F-FAB126201,Not Started,Clean Vestibule 21 - 2F -SUE-FAB126201,,,,,,,,,,2025-11-28 08:00,2025-12-04 17:00,,,2025-11-28 08:00,2025-12-04 17:00,2025-12-01 08:00,2025-12-05 17:00,40,40,0
EJ-0009,IMPACT - SECAI CRC coating pending to be finished- Clean Vestibule #21 - 2F-FAB126201,Active,Clean Vestibule 21 - 2F -SUE-FAB126201,,,,,,,,,,2025-10-06 08:00,2025-10-10 17:00,2025-10-06 08:00,,2025-11-21 08:00,2025-11-27 17:00,2025-11-24 08:00,2025-11-28 17:00,40,40,0
EJ-0012,Horizontal Joint Aluminium cover installation D/25 - Clean Vestibule #19 - 2F-FAB126402,Not Started,Clean Vestibule 19 - 2F -SUE-FAB126402,,,,,,,,,,2025-11-28 08:00,2025-12-04 17:00,,,2025-11-28 08:00,2025-12-04 17:00,2025-12-01 08:00,2025-12-05 17:00,40,40,0
EJ-0011,IMPACT - SECAI CRC coating pending to be finished - Clean Vestibule #19 - 2F-FAB126402,Active,Clean Vestibule 19 - 2F -SUE-FAB126402,,,,,,,,,,2025-10-06 08:00,2025-10-10 17:00,2025-10-06 08:00,,2025-11-21 08:00,2025-11-27 17:00,2025-11-24 08:00,2025-11-28 17:00,40,40,0
EJ-0014,Horizontal Joint Aluminium cover installation D/27-28 - T/L Maint. Rm 23 - 2F-SUE-FAB126501,Not Started,T/L Maint. Rm 23 - 2F -SUE-FAB126501,,,,,,,,,,2025-11-28 08:00,2025-12-04 17:00,,,2025-11-28 08:00,2025-12-04 17:00,2025-12-01 08:00,2025-12-05 17:00,40,40,0
EJ-0013,IMPACT - SECAI CRC coating pending to be finished - T/L Maint. Rm 23 - 2F-SUE-FAB126501,Active,T/L Maint. Rm 23 - 2F -SUE-FAB126501,,,,,,,,,,2025-10-06 08:00,2025-10-10 17:00,2025-10-06 08:00,,2025-11-21 08:00,2025-11-27 17:00,2025-11-24 08:00,2025-11-28 17:00,40,40,0
EJ-0016,Horizontal Joint Aluminium cover installation D/28.8 - PR Lifter Vestibule - 2F-FAB126511,Not Started,PR Lifter Vestibule - 2F -SUE-FAB126511,,,,,,,,,,2025-11-28 08:00,2025-12-04 17:00,,,2025-11-28 08:00,2025-12-04 17:00,2025-12-01 08:00,2025-12-05 17:00,40,40,0
EJ-0015,IMPACT - SECAI CRC coating pending to be finished - PR Lifter Vestibule - 2F-FAB126511,Active,PR Lifter Vestibule - 2F -SUE-FAB126511,,,,,,,,,,2025-10-06 08:00,2025-10-10 17:00,2025-10-06 08:00,,2025-11-21 08:00,2025-11-27 17:00,2025-11-24 08:00,2025-11-28 17:00,40,40,0
EJ-0018,Aluminium cover installation D/30-30.5 - PR Lifter Rm - 3F-SUE-FAB126509,Not Started,PR Lifter Rm - 2F -SUE-FAB126509,,,,,,,,,,2025-11-28 08:00,2025-12-04 17:00,,,2025-11-28 08:00,2025-12-04 17:00,2025-12-01 08:00,2025-12-05 17:00,40,40,0
EJ-0017,IMPACT - SECAI CRC coating pending to be finished - PR Lifter Rm - 3F-SUE-FAB126509,Active,PR Lifter Rm - 2F -SUE-FAB126509,,,,,,,,,,2025-10-06 08:00,2025-10-10 17:00,2025-10-06 08:00,,2025-11-21 08:00,2025-11-27 17:00,2025-11-24 08:00,2025-11-28 17:00,40,40,0
EJ-0021,"Emseal completion at Columns 1-5, 12-13, 17-19, 25-29 & 32-33 - Level 2 - SUE - Line D",Not Started,Level 2 - SUE - Line D,,,,,,,,,,2025-11-28 08:00,2025-12-04 17:00,,,2025-11-28 08:00,2025-12-04 17:00,2025-12-01 08:00,2025-12-05 17:00,40,40,0
EJ-0020,"IMPACT - SECAI firestopping installation at Columns 1-5, 12-13, 17-19, 25-29 & 32-33 - Level 2 - SUE - Line D",Active,Level 2 - SUE - Line D,,,,,,,,,,2025-10-06 08:00,2025-10-10 17:00,2025-10-06 08:00,,2025-11-21 08:00,2025-11-27 17:00,2025-11-24 08:00,2025-11-28 17:00,40,40,0
CN.SWA5..6300,IMPACT - SECAI TOOKOVER FOR EGRESS - STAIR #1 - 5/L - ALL LEVELS,Active,SWA - 5,West Support Building,FIZ 2 / SUWS 5  (GL6-1) - GL J - N - DATA CENTER 1,INTERIOR STAIR TOWER - STAIR #1 - DE-SCOPED,,CONSTRUCTION,,INSULATED METAL PANELS,JAMES LIVELY,INTERIORS,2025-07-28 07:00,2025-07-28 17:00,2025-10-10 07:00,,2025-11-21 07:00,2025-11-26 15:00,2025-10-27 09:00,2025-10-31 17:00,48,10,100
EJ-0023,"Emseal completion at Columns 1-6, 10-11, 17-19, 23-24, 29 & 32-33 - Level 2 - SUW - Line K",Not Started,Level 2 - SUW - Line K,,,,,,,,,,2025-11-28 08:00,2025-12-04 17:00,,,2025-11-28 08:00,2025-12-04 17:00,2025-12-01 08:00,2025-12-05 17:00,40,40,0
EJ-0022,"IMPACT - SECAI firestopping installation at Columns 1-6, 10-11, 17-19, 23-24, 29 & 32-33 - Level 2 - SUW - Line K",Active,Level 2 - SUW - Line K,,,,,,,,,,2025-10-06 08:00,2025-10-10 17:00,2025-10-06 08:00,,2025-11-21 08:00,2025-11-27 17:00,2025-11-24 08:00,2025-11-28 17:00,40,40,0
CN.SWA5..6310,IMPACT - SECAI TOOKOVER FOR EGRESS - STAIR #22 - 6/D - ALL LEVELS[/DAY],Active,CONSTRUCTION,,SUES-5 - 6-1 - FIZ - GL A -E,INTERIOR STAIR TOWER - STAIR #22 - DE-SCOPED,,CONSTRUCTION,,,,,2025-08-16 07:00,2025-08-16 17:00,2025-10-10 07:00,,2025-11-21 07:00,2025-11-26 15:00,2025-10-27 09:00,2025-10-31 17:00,48,10,100
EJ-0025,Vertical Expansion Joint D/6 - Duct Shaft - 3F-SUE-FAB136201,Not Started,Duct Shaft - 3F -SUE-FAB136201,,,,,,,,,,2025-12-05 08:00,2025-12-11 17:00,,,2025-12-05 08:00,2025-12-11 17:00,2025-12-01 08:00,2025-12-05 17:00,40,40,0
EJ-0024,IMPACT - IOCC 1548 (Scaffold) to be approved by SECAI - Duct Shaft - 3F-SUE-FAB136201,Active,Duct Shaft - 3F -SUE-FAB136201,,,,,,,,,,2025-08-14 08:00,2025-09-03 17:00,2025-08-14 08:00,,2025-11-21 08:00,2025-12-04 17:00,2025-11-17 08:00,2025-11-28 17:00,80,120,0
EJ-0027,Horizontal/Floor Expansion Joint D/18.8-19 - Duct Shaft - 3F-SUE-FAB136401,Not Started,Duct Shaft - 3F -SUE-FAB136401,,,,,,,,,,2025-11-28 08:00,2025-12-04 17:00,,,2025-11-28 08:00,2025-12-04 17:00,2025-12-01 08:00,2025-12-05 17:00,40,40,0
EJ-0026,IMPACT - SECAI MEP SCAFFOLD IN THE AREA- Duct Shaft - 3F-SUE-FAB136401,Active,Duct Shaft - 3F -SUE-FAB136401,,,,,,,,,,2025-10-06 08:00,2025-10-10 17:00,2025-10-16 08:00,,2025-11-21 08:00,2025-11-27 17:00,2025-11-24 08:00,2025-11-28 17:00,40,40,0
EJ-0028,Aluminium cover installation K/1-3 - FIZ - 3F-FAB132101,Not Started,FIZ LAB - 3F -FIZ-FAB132101,,,,,,,,,,2025-11-21 08:00,2025-11-27 17:00,,,2025-11-21 08:00,2025-11-27 17:00,2025-12-01 08:00,2025-12-05 17:00,40,40,0
EJ-0029,Aluminium cover installation D/1-3 - Smock Locker @D-F/1-3 - 3F-FAB134106,Not Started,Smock Locker @D-F/1-3 - 3F -FIZ-FAB134106,,,,,,,,,,2025-11-21 08:00,2025-11-27 17:00,,,2025-11-21 08:00,2025-11-27 17:00,2025-12-01 08:00,2025-12-05 17:00,40,40,0
EJ-0030,Vertical Expansion Joint K/32.8 - Vestibule #5 - 3F-SUW-FAB130504,Not Started,Vestibule 5 - 3F -SUW-FAB130504,,,,,,,,,,2025-11-21 08:00,2025-11-27 17:00,,,2025-11-21 08:00,2025-11-27 17:00,2025-12-01 08:00,2025-12-05 17:00,40,40,0
EJ-0032,"Emseal completion at Columns 1-6, 10-11, 17-19, 23-24, 29 & 32-33 - Level 3 - SUW - Line K",Not Started,Level 3 - SUW - Line K,,,,,,,,,,2025-11-28 08:00,2025-12-04 17:00,,,2025-11-28 08:00,2025-12-04 17:00,2025-12-01 08:00,2025-12-05 17:00,40,40,0
EJ-0031,"IMPACT - SECAI firestopping installation at Columns 1-6, 10-11, 17-19, 23-24, 29 & 32-33 - Level 3 - SUW - Line K",Active,Level 3 - SUW - Line K,,,,,,,,,,2025-10-06 08:00,2025-10-10 17:00,2025-10-06 08:00,,2025-11-21 08:00,2025-11-27 17:00,2025-11-24 08:00,2025-11-28 17:00,40,40,0
EJ-0034,"Emseal completion at Columns 1-5, 12-13, 17-19, 25-29 & 32-33 - Level 3 - SUE - Line D",Not Started,Level 3 - SUE - Line D,,,,,,,,,,2025-11-28 08:00,2025-12-04 17:00,,,2025-11-28 08:00,2025-12-04 17:00,2025-12-01 08:00,2025-12-05 17:00,40,40,0
EJ-0033,"IMPACT - SECAI firestopping installation at Columns 1-5, 12-13, 17-19, 25-29 & 32-33 - Level 3 - SUE - Line D",Active,Level 3 - SUE - Line D,,,,,,,,,,2025-10-06 08:00,2025-10-10 17:00,2025-10-06 08:00,,2025-11-21 08:00,2025-11-27 17:00,2025-11-24 08:00,2025-11-28 17:00,40,40,0
CN.SWB3.7141,IMPACT - SECAI MEP WATER INTRUSION - ALL AIRLOCKS - SUE,Active,CONSTRUCTION,,SUWS-2 - 15-12,L4 - SUP Roof - FAB Roof,SUE - SUPPORT EAST,CONSTRUCTION,,Roofing,,SOMD / Roofing / Waterproofing,2025-01-13 07:00,2025-01-31 17:00,2025-10-27 07:00,,2025-11-21 07:00,2025-11-26 17:00,2025-10-10 07:00,2025-10-15 17:00,40,150,0
FAB130402E-70,IMPACT - SECAI TEMP DOOR & DRYWALL REMOVAL - HEADER/GOAL POST INSTALL - PATRIOT - FAB130402E - M/19,Active,Electrical Rm - 3F -SUW-FAB130402,,INTERIOR STAIRS,L3 / Waffle Slab Level,,,PATRIOT,,,,2025-10-29 08:00,2025-11-04 17:00,2025-10-29 08:00,,2025-11-21 08:00,2025-11-27 17:00,2025-11-25 08:00,2025-12-01 17:00,40,40,0
FAB136504C-70,IMPACT - SECAI DRYWALL REMOVAL - HEADER/GOAL POST INSTALL - PATRIOT - FAB136504C - C/32,Not Started,Elevator Hall 18 - 3F -SUE-FAB136504,,INTERIOR STAIRS,L3 / Waffle Slab Level,,,,,,,2025-11-21 08:00,2025-11-27 17:00,,,2025-11-21 08:00,2025-11-27 17:00,2025-11-24 08:00,2025-11-28 17:00,40,40,0
FAB130501A-50,GOAL POST MODIFY BASEPLATES - PATRIOT - FAB130501A - M/27,Active,Battery Rm - 3F -SUW-FAB130501,,INTERIOR STAIRS,L3 / Waffle Slab Level,,,,,,,2025-11-18 08:00,2025-11-21 17:00,2025-11-18 08:00,,2025-11-21 08:00,2025-11-21 08:00,2025-11-06 17:00,2025-11-06 17:00,0,32,0
FAB130501A-60,IMPACT - SECAI TEMP DOOR & DRYWALL REMOVAL - FAB130501A - M/27,Complete,Battery Rm - 3F -SUW-FAB130501,,INTERIOR STAIRS,L3 / Waffle Slab Level,,,,,,,2025-10-27 08:00,2025-10-31 17:00,2025-10-27 08:00,2025-11-14 08:00,2025-11-20 17:00,2025-11-20 17:00,2025-11-06 17:00,2025-11-06 17:00,0,40,100
STAIR.3090,EXTEND HANDRAIL STAIR #44 - SUE - 3-C - LEVEL 01,Complete,CONSTRUCTION,,INTERIOR STAIRS,L1 - Fndn Slab,FIZ,CONSTRUCTION,,,,,2025-11-05 07:00,2025-11-06 17:00,2025-11-05 07:00,2025-11-06 17:00,2025-11-20 17:00,2025-11-20 17:00,2025-12-05 17:00,2025-12-05 17:00,0,20,100
STAIR.3100,FABRICATION/MATERIAL ON SITE - STAIR # 91 - FIZ - 1-F.2 - LEVEL 03,Active,CONSTRUCTION,,INTERIOR STAIRS,L3 / Waffle Slab Level,FIZ,CONSTRUCTION,,,,,2025-10-31 07:00,2025-11-06 17:00,2025-10-31 07:00,,2025-11-21 07:00,2025-12-01 17:00,2025-11-13 07:00,2025-11-19 17:00,50,50,0
EJ-0035,Install & Inspection Vertical Expansion Joint (Emseal) D/25.2 - Clean Vestibule #19 - 2F-FAB126402,Not Started,Clean Vestibule 19 - 2F -SUE-FAB126402,,,,,,,,,,2025-11-21 08:00,2025-11-27 17:00,,,2025-11-21 08:00,2025-11-27 17:00,2025-11-24 08:00,2025-11-28 17:00,40,40,0
EJ-0036,Install & Inspection Vertical Expansion Joint (Emseal) D/26 - Duct Shaft - 2F-SUE-FAB126403,Active,Duct Shaft - 2F -SUE-FAB126403,,,,,,,,,,2025-11-07 08:00,2025-11-11 17:00,2025-11-07 08:00,,2025-11-21 08:00,2025-11-25 17:00,2025-12-02 08:00,2025-12-04 17:00,24,24,0
EJ-0037,Install & Inspection Vertical Expansion Joint (Emseal) K/3.3 - Duct Shaft - 2F-SUW-FAB120112,Not Started,Duct Shaft - 2F -SUW-FAB120112,,,,,,,,,,2025-12-03 08:00,2025-12-05 17:00,,,2025-12-03 08:00,2025-12-05 17:00,2025-11-26 08:00,2025-11-28 17:00,24,24,0
EJ-0039,Complete Frame EJ gap (scaffold needed) - Duct Shaft - 2F-SUW-FAB120112,Active,Duct Shaft - 2F -SUW-FAB120112,,,,,,,,,,2025-10-31 08:00,2025-11-18 17:00,2025-10-31 08:00,,2025-11-21 08:00,2025-12-02 17:00,2025-11-14 08:00,2025-11-25 17:00,64,104,0
EJ-0038,Install and Inspect Emseal - Vestibule #05 - 2F-FAB120504,Not Started,Vestibule 5 - 2F -SUW-FAB120504,,,,,,,,,,2025-11-21 08:00,2025-11-27 17:00,,,2025-11-21 08:00,2025-11-27 17:00,2025-12-01 08:00,2025-12-05 17:00,40,40,0
ZX-21945,IMPACT - SECAI MEP WORK PREVENTING INSTALL - Fire Alarm 1 - 2F-FAB120105,Active,Fire Alarm 1 - 2F -SUW-FAB120105,,,,,,,,,,2025-11-03 08:00,2025-11-14 17:00,2025-11-03 08:00,,2025-11-21 08:00,2025-11-27 17:00,2025-11-28 08:00,2025-12-04 17:00,40,80,0
ZX-21955,IMPACT - SECAI MEP CABLE TRAY PREVENTING INSTALL - IT/Security 20 - 2F-FABTR-FAB126304,Active,IT/Security 20 - 2F -SUE-TR-FAB-FAB126304,,,,,,,,,,2025-11-03 08:00,2025-11-14 17:00,2025-11-03 08:00,,2025-11-21 08:00,2025-11-27 17:00,2025-11-27 08:00,2025-12-03 17:00,40,80,0
ZX-21965,IMPACT - SECAI DEMO WALL - I/O Rm - 2F-SUE-FAB126512,Complete,I/O Rm - 2F -SUE-FAB126512,,,,,,,,,,2025-11-03 08:00,2025-11-03 17:00,2025-11-03 08:00,2025-11-03 17:00,2025-11-20 17:00,2025-11-20 17:00,2025-12-05 17:00,2025-12-05 17:00,0,8,100
EJ-0040,Install and Inspect Emseal - Vestibule #5 - 3F-SUW-FAB130504,Not Started,Vestibule 5 - 3F -SUW-FAB130504,,,,,,,,,,2025-11-21 08:00,2025-11-27 17:00,,,2025-11-21 08:00,2025-11-27 17:00,2025-12-01 08:00,2025-12-05 17:00,40,40,0
EJ-0041,Install and Inspect Emseal - Vestibule #18 - 3F-SUE-FAB136505,Not Started,Vestibule 18 - 3F -SUE-FAB136505,,,,,,,,,,2025-11-21 08:00,2025-11-27 17:00,,,2025-11-21 08:00,2025-11-27 17:00,2025-12-01 08:00,2025-12-05 17:00,40,40,0
EJ-0042,Install and Inspect Emseal - Vestibule #05 - 2F-FAB120504,Not Started,Vestibule 18 - 2F -SUE-FAB126505,,,,,,,,,,2025-11-21 08:00,2025-11-27 17:00,,,2025-11-21 08:00,2025-11-27 17:00,2025-12-01 08:00,2025-12-05 17:00,40,40,0
EJ-0043,Install and Inspect Emseal - Airlock #18 - 2F-FAB126506,Not Started,Air Lock 18 - 2F -SUE-FAB126506,,,,,,,,,,2025-11-21 08:00,2025-11-27 17:00,,,2025-11-21 08:00,2025-11-27 17:00,2025-12-01 08:00,2025-12-05 17:00,40,40,0
EJ-0044,Install & Inspect Horizontal/Floor EJ (Emseal) D/18.8-19 - Duct Shaft - 2F-SUE-FAB126401,Not Started,Duct Shaft - 2F -SUE-FAB126401,,,,,,,,,,2025-11-28 08:00,2025-12-04 17:00,,,2025-11-28 08:00,2025-12-04 17:00,2025-12-01 08:00,2025-12-05 17:00,40,40,0
EJ-0045,Inpsection Horizontal/Floor Expansion Joint D/1-3 - Electrical Rm - 2F-FAB124103,Not Started,Electrical Rm - 2F -FIZ-FAB124103,,,,,,,,,,2025-11-21 08:00,2025-11-27 17:00,,,2025-11-21 08:00,2025-11-27 17:00,2025-11-24 08:00,2025-11-28 17:00,40,40,0
EJ-0046,Inpsection Horizontal/Floor Expansion Joint D/17-17.2 - Duct Shaft - 2F-SUE-FAB126301,Not Started,Duct Shaft - 2F -SUE-FAB126301,,,,,,,,,,2025-11-21 08:00,2025-11-27 17:00,,,2025-11-21 08:00,2025-11-27 17:00,2025-12-01 08:00,2025-12-05 17:00,40,40,0
EJ-0047,Inpsection Horizontal/Floor Expansion Joint D/30-30.5 - PR Lifter Rm - 3F-SUE-FAB126509,Not Started,PR Lifter Rm - 2F -SUE-FAB126509,,,,,,,,,,2025-11-21 08:00,2025-11-27 17:00,,,2025-11-21 08:00,2025-11-27 17:00,2025-12-01 08:00,2025-12-05 17:00,40,40,0
EJ-0048,Inpsection Horizontal/Floor Expansion Joint K/1.2-3 - Data Center A - 2F-FAB120106,Not Started,Data Center A - 2F -FIZ-FAB120106,,,,,,,,,,2025-11-21 08:00,2025-11-27 17:00,,,2025-11-21 08:00,2025-11-27 17:00,2025-11-24 08:00,2025-11-28 17:00,40,40,0
EJ-0049,Inpsection Horizontal/Floor Expansion Joint K/4-5 - Airlock #01 - 2F-FAB120108,Not Started,Air Lock 1 - 2F -SUW-FAB120108,,,,,,,,,,2025-11-21 08:00,2025-11-27 17:00,,,2025-11-21 08:00,2025-11-27 17:00,2025-12-01 08:00,2025-12-05 17:00,40,40,0
EJ-0050,Inpsection Horizontal/Floor Expansion Joint K/5.8-6 - Duct Shaft - 2F-SUW-FAB120110,Not Started,Duct Shaft - 2F -SUW-FAB120110,,,,,,,,,,2025-11-21 08:00,2025-11-27 17:00,,,2025-11-21 08:00,2025-11-27 17:00,2025-12-01 08:00,2025-12-05 17:00,40,40,0
EJ-0051,IMPACT - SECAI SCAFFOLD & CONCRETE OVER COVER - Expansion Joint K/10-10.2 - Duct Shaft - 2F-SUW-FAB120110,Active,Duct Shaft - 2F -SUW-FAB120110,,,,,,,,,,2025-10-31 08:00,2025-11-13 17:00,2025-10-31 08:00,,2025-11-21 08:00,2025-12-04 17:00,2025-11-17 08:00,2025-11-28 17:00,80,80,0
EJ-0052,Inpsection Horizontal/Floor Expansion Joint K/10-10.2 - Duct Shaft - 2F-SUW-FAB120110,Not Started,Duct Shaft - 2F -SUW-FAB120110,,,,,,,,,,2025-12-05 08:00,2025-12-11 17:00,,,2025-12-05 08:00,2025-12-11 17:00,2025-12-01 08:00,2025-12-05 17:00,40,40,0
EJ-0053,IMPACT - SECAI SCAFFOLD OVER COVER - Expansion Joint K/18.8-19 - Duct Shaft - 2F-SUW-FAB120312,Active,Duct Shaft - 2F -SUW-FAB120312,,,,,,,,,,2025-10-31 08:00,2025-11-13 17:00,2025-10-31 08:00,,2025-11-21 08:00,2025-11-27 17:00,2025-11-24 08:00,2025-11-28 17:00,40,80,0
EJ-0054,Inpsection Horizontal/Floor Expansion Joint K/18.8-19 - Duct Shaft - 2F-SUW-FAB120312,Not Started,Duct Shaft - 2F -SUW-FAB120312,,,,,,,,,,2025-11-28 08:00,2025-12-04 17:00,,,2025-11-28 08:00,2025-12-04 17:00,2025-12-01 08:00,2025-12-05 17:00,40,40,0
EJ-0055,Inpsection Horizontal/Floor Expansion Joint K/22.8-23 - Duct Shaft - 2F-SUW-FAB120312,Not Started,Duct Shaft - 2F -SUW-FAB120312,,,,,,,,,,2025-11-21 08:00,2025-11-27 17:00,,,2025-11-21 08:00,2025-11-27 17:00,2025-12-01 08:00,2025-12-05 17:00,40,40,0
EJ-0056,Inpsection Horizontal/Floor Expansion Joint K/23.8-24 - Duct Shaft - 2F-SUW-FAB120403,Not Started,Duct Shaft - 2F -SUW-FAB120403,,,,,,,,,,2025-11-21 08:00,2025-11-27 17:00,,,2025-11-21 08:00,2025-11-27 17:00,2025-12-01 08:00,2025-12-05 17:00,40,40,0
EJ-0057,Inpsection Horizontal/Floor Expansion Joint K/29 - Duct Shaft - 2F-SUW-FAB120403,Not Started,Duct Shaft - 2F -SUW-FAB120403,,,,,,,,,,2025-11-21 08:00,2025-11-27 17:00,,,2025-11-21 08:00,2025-11-27 17:00,2025-12-01 08:00,2025-12-05 17:00,40,40,0
EJ-0058,Horizontal Joint Aluminium cover installation D/1-3 - Electrical Rm - 2F-FAB124103,Not Started,Electrical Rm - 2F -FIZ-FAB124103,,,,,,,,,,2025-11-28 08:00,2025-12-04 17:00,,,2025-11-28 08:00,2025-12-04 17:00,2025-12-01 08:00,2025-12-05 17:00,40,40,0
EJ-0059,Horizontal Joint Aluminium cover installation K/1.2-3 - Data Center A - 2F-FAB120106,Not Started,Data Center A - 2F -FIZ-FAB120106,,,,,,,,,,2025-11-28 08:00,2025-12-04 17:00,,,2025-11-28 08:00,2025-12-04 17:00,2025-12-01 08:00,2025-12-05 17:00,40,40,0
EJ-0060,Install & Inspect Horizontal/Floor EJ (Emseal) - Clean Vestibule #02 - 2F-FAB120201,Not Started,Clean Vestibule 2 - 2F -SUW-FAB120201,,,,,,,,,,2025-11-21 08:00,2025-11-27 17:00,,,2025-11-21 08:00,2025-11-27 17:00,2025-12-01 08:00,2025-12-05 17:00,40,40,0
EJ-0061,Vertical Joint Aluminium cover installation D/1 - Electrical Rm - 2F-FAB124103,Not Started,Electrical Rm - 2F -FIZ-FAB124103,,,,,,,,,,2025-11-21 08:00,2025-11-27 17:00,,,2025-11-21 08:00,2025-11-27 17:00,2025-12-01 08:00,2025-12-05 17:00,40,40,0
EJ-0062,Vertical Joint Aluminium cover installation D/4 - Airlock #22 - 2F-FAB126107,Not Started,Air Lock 22 - 2F -SUE-FAB126107,,,,,,,,,,2025-11-21 08:00,2025-11-27 17:00,,,2025-11-21 08:00,2025-11-27 17:00,2025-12-01 08:00,2025-12-05 17:00,40,40,0
EJ-0063,Vertical Joint Aluminium cover installation D/4.8 - Airlock #22 - 2F-FAB126107,Not Started,Air Lock 22 - 2F -SUE-FAB126107,,,,,,,,,,2025-11-21 08:00,2025-11-27 17:00,,,2025-11-21 08:00,2025-11-27 17:00,2025-12-01 08:00,2025-12-05 17:00,40,40,0
EJ-0064,Vertical Joint Aluminium cover installation D/5 - Vestibule 22 - 2F-FAB126106,Not Started,Vestibule 22 - 2F -SUE-FAB126106,,,,,,,,,,2025-11-21 08:00,2025-11-27 17:00,,,2025-11-21 08:00,2025-11-27 17:00,2025-12-01 08:00,2025-12-05 17:00,40,40,0
EJ-0065,Vertical Joint Aluminium cover installation D/13 - Clean Vestibule #21 - 2F-FAB126201,Not Started,Clean Vestibule 21 - 2F -SUE-FAB126201,,,,,,,,,,2025-11-28 08:00,2025-12-04 17:00,,,2025-11-28 08:00,2025-12-04 17:00,2025-12-01 08:00,2025-12-05 17:00,40,40,0
EJ-0066,Vertical Joint Aluminium cover installation D/13.2 - Clean Vestibule #21 - 2F-FAB126201,Not Started,Clean Vestibule 21 - 2F -SUE-FAB126201,,,,,,,,,,2025-11-28 08:00,2025-12-04 17:00,,,2025-11-28 08:00,2025-12-04 17:00,2025-12-01 08:00,2025-12-05 17:00,40,40,0
EJ-0067,Vertical Joint Aluminium cover installation D/18.8 - Duct Shaft - 2F-SUE-FAB126401,Not Started,Duct Shaft - 2F -SUE-FAB126401,,,,,,,,,,2025-11-21 08:00,2025-11-27 17:00,,,2025-11-21 08:00,2025-11-27 17:00,2025-12-01 08:00,2025-12-05 17:00,40,40,0
EJ-0068,Vertical Joint Aluminium cover installation D/25 - Clean Vestibule #19 - 2F-FAB126402,Not Started,Clean Vestibule 19 - 2F -SUE-FAB126402,,,,,,,,,,2025-12-05 08:00,2025-12-11 17:00,,,2025-12-05 08:00,2025-12-11 17:00,2025-12-01 08:00,2025-12-05 17:00,40,40,0
EJ-0069,Vertical Joint Aluminium cover installation D/25.2 - Clean Vestibule #19 - 2F-FAB126402,Not Started,Clean Vestibule 19 - 2F -SUE-FAB126402,,,,,,,,,,2025-11-28 08:00,2025-12-04 17:00,,,2025-11-28 08:00,2025-12-04 17:00,2025-12-01 08:00,2025-12-05 17:00,40,40,0
EJ-0070,Vertical Joint Aluminium cover installation D/26 - Duct Shaft - 2F-SUE-FAB126403,Not Started,Duct Shaft - 2F -SUE-FAB126403,,,,,,,,,,2025-11-26 08:00,2025-11-26 17:00,,,2025-11-26 08:00,2025-11-26 17:00,2025-12-05 08:00,2025-12-05 17:00,8,8,0
EJ-0071,Vertical Joint Aluminium cover installation D/27 - T/L Maint. Rm 23 - 2F-SUE-FAB126501,Not Started,T/L Maint. Rm 23 - 2F -SUE-FAB126501,,,,,,,,,,2025-11-28 08:00,2025-12-04 17:00,,,2025-11-28 08:00,2025-12-04 17:00,2025-12-01 08:00,2025-12-05 17:00,40,40,0
EJ-0072,Vertical Joint Aluminium cover installation D/28 - T/L Maint. Rm 23 - 2F-SUE-FAB126501,Not Started,T/L Maint. Rm 23 - 2F -SUE-FAB126501,,,,,,,,,,2025-11-28 08:00,2025-12-04 17:00,,,2025-11-28 08:00,2025-12-04 17:00,2025-12-01 08:00,2025-12-05 17:00,40,40,0
EJ-0073,Vertical Joint Aluminium cover installation D/28.8 - PR Lifter Vestibule - 2F-FAB126511,Not Started,PR Lifter Vestibule - 2F -SUE-FAB126511,,,,,,,,,,2025-11-28 08:00,2025-12-04 17:00,,,2025-11-28 08:00,2025-12-04 17:00,2025-12-01 08:00,2025-12-05 17:00,40,40,0
EJ-0074,Vertical Joint Aluminium cover installation K/3 - Thermohygrostat Rm - 2F-FAB120103,Not Started,Thermohygrostat Rm - 2F -FIZ-FAB120103,,,,,,,,,,2025-11-28 08:00,2025-12-04 17:00,,,2025-11-28 08:00,2025-12-04 17:00,2025-12-01 08:00,2025-12-05 17:00,40,40,0
EJ-0075,Vertical Joint Aluminium cover installation K/3 - Thermohygrostat Rm - 2F-FAB120103,Not Started,Duct Shaft - 2F -SUW-FAB120112,,,,,,,,,,2025-12-08 08:00,2025-12-12 17:00,,,2025-12-08 08:00,2025-12-12 17:00,2025-12-01 08:00,2025-12-05 17:00,40,40,0
EJ-0076,IMPACT - EJ DAMAGED BY SECAI TP - VJAC installation D/13 - Clean Vestibule #21 - 2F-FAB126201,Active,Clean Vestibule 21 - 2F -SUE-FAB126201,,,,,,,,,,2025-10-27 08:00,2025-10-31 17:00,2025-10-27 08:00,,2025-11-21 08:00,2025-11-27 17:00,2025-11-24 08:00,2025-11-28 17:00,40,40,0
EJ-0077,IMPACT - SECAI SGP PANEL INSTALL - VJAC installation D/13.2 - Clean Vestibule #21 - 2F-FAB126201,Active,Clean Vestibule 21 - 2F -SUE-FAB126201,,,,,,,,,,2025-09-29 08:00,2025-10-03 17:00,2025-09-29 08:00,,2025-11-21 08:00,2025-11-27 17:00,2025-11-24 08:00,2025-11-28 17:00,40,40,0
EJ-0078,IMPACT - SECAI SGP PANEL INSTALL - VJAC installation D/25 - Clean Vestibule #19 - 2F-FAB126402,Active,Clean Vestibule 19 - 2F -SUE-FAB126402,,,,,,,,,,2025-09-29 08:00,2025-10-03 17:00,2025-09-29 08:00,,2025-11-21 08:00,2025-11-27 17:00,2025-11-24 08:00,2025-11-28 17:00,40,40,0
EJ-0079,IMPACT - SECAI SGP PANEL INSTALL - VJAC installation D/25.2 - Clean Vestibule #19 - 2F-FAB126402,Active,Clean Vestibule 19 - 2F -SUE-FAB126402,,,,,,,,,,2025-09-29 08:00,2025-10-03 17:00,2025-09-29 08:00,,2025-11-21 08:00,2025-11-27 17:00,2025-11-24 08:00,2025-11-28 17:00,40,40,0
EJ-0080,IMPACT - SECAI SGP PANEL INSTALL - VJAC installation D/27 - T/L Maint. Rm 23 - 2F-SUE-FAB126501,Active,T/L Maint. Rm 23 - 2F -SUE-FAB126501,,,,,,,,,,2025-09-29 08:00,2025-10-03 17:00,2025-09-29 08:00,,2025-11-21 08:00,2025-11-27 17:00,2025-11-24 08:00,2025-11-28 17:00,40,40,0
EJ-0081,IMPACT - SECAI SGP PANEL INSTALL - VJAC installation D/28 - T/L Maint. Rm 23 - 2F-SUE-FAB126501,Active,T/L Maint. Rm 23 - 2F -SUE-FAB126501,,,,,,,,,,2025-09-29 08:00,2025-10-03 17:00,2025-09-29 08:00,,2025-11-21 08:00,2025-11-27 17:00,2025-11-24 08:00,2025-11-28 17:00,40,40,0
EJ-0082,IMPACT - SECAI MEP SCAFFOLD - VJAC installation D/28.8 - PR Lifter Vestibule - 2F-FAB126511,Active,PR Lifter Vestibule - 2F -SUE-FAB126511,,,,,,,,,,2025-10-27 08:00,2025-10-31 17:00,2025-10-27 08:00,,2025-11-21 08:00,2025-11-27 17:00,2025-11-24 08:00,2025-11-28 17:00,40,40,0
EJ-0083,IMPACT - SECAI ENERGIZED PANELS - VJAC installation K/3 - Thermohygrostat Rm - 2F-FAB120103,Active,Thermohygrostat Rm - 2F -FIZ-FAB120103,,,,,,,,,,2025-09-29 08:00,2025-10-03 17:00,2025-09-29 08:00,,2025-11-21 08:00,2025-11-27 17:00,2025-11-24 08:00,2025-11-28 17:00,40,40,0
EJ-0084,Vertical Joint Aluminium cover installation K/4 - IT/Security 1 - 2F-TR-FAB120107,Not Started,IT/Security 1 - 2F -SUW-TR-FAB120107,,,,,,,,,,2025-11-21 08:00,2025-11-27 17:00,,,2025-11-21 08:00,2025-11-27 17:00,2025-12-01 08:00,2025-12-05 17:00,40,40,0
EJ-0085,Vertical Joint Aluminium cover installation K/5 - Vestibule 1 - 2F-FAB120109,Not Started,Vestibule 1 - 2F -SUW-FAB120109,,,,,,,,,,2025-11-21 08:00,2025-11-27 17:00,,,2025-11-21 08:00,2025-11-27 17:00,2025-12-01 08:00,2025-12-05 17:00,40,40,0
EJ-0086,Vertical Joint Aluminium cover installation K/5.8 - Duct Shaft - 2F-SUW-FAB120110,Not Started,Duct Shaft - 2F -SUW-FAB120110,,,,,,,,,,2025-11-21 08:00,2025-11-27 17:00,,,2025-11-21 08:00,2025-11-27 17:00,2025-12-01 08:00,2025-12-05 17:00,40,40,0
EJ-0087,Vertical Joint Aluminium cover installation K/10.2 - Duct Shaft - 2F-SUW-FAB120110,Not Started,Duct Shaft - 2F -SUW-FAB120110,,,,,,,,,,2025-11-21 08:00,2025-11-27 17:00,,,2025-11-21 08:00,2025-11-27 17:00,2025-12-01 08:00,2025-12-05 17:00,40,40,0
EJ-0088,Vertical Joint Aluminium cover installation K/11 - Clean Vestibule #02 - 2F-FAB120201,Not Started,Clean Vestibule 2 - 2F -SUW-FAB120201,,,,,,,,,,2025-11-28 08:00,2025-12-04 17:00,,,2025-11-28 08:00,2025-12-04 17:00,2025-12-01 08:00,2025-12-05 17:00,40,40,0
EJ-0089,IMPACT - SECAI SGP PANEL INSTALL - VJAC installation K/11 - Clean Vestibule #02 - 2F-FAB120201,Active,Clean Vestibule 2 - 2F -SUW-FAB120201,,,,,,,,,,2025-09-29 08:00,2025-10-03 17:00,2025-09-29 08:00,,2025-11-21 08:00,2025-11-27 17:00,2025-11-24 08:00,2025-11-28 17:00,40,40,0
EJ-0091,Vertical Joint Aluminium cover installation K/11.5 - Clean Vestibule #02 - 2F-FAB120201,Not Started,Clean Vestibule 2 - 2F -SUW-FAB120201,,,,,,,,,,2025-11-28 08:00,2025-12-04 17:00,,,2025-11-28 08:00,2025-12-04 17:00,2025-12-01 08:00,2025-12-05 17:00,40,40,0
EJ-0090,IMPACT - SECAI SGP PANEL INSTALL - VJAC installation K/11.5 - Clean Vestibule #02 - 2F-FAB120201,Active,Clean Vestibule 2 - 2F -SUW-FAB120201,,,,,,,,,,2025-09-29 08:00,2025-10-03 17:00,2025-09-29 08:00,,2025-11-21 08:00,2025-11-27 17:00,2025-11-24 08:00,2025-11-28 17:00,40,40,0
EJ-0092,Vertical Joint Aluminium cover installation K/18 - Vestibule #03 - 2F-FAB120304,Not Started,Vestibule 3 - 2F -SUW-FAB120304,,,,,,,,,,2025-11-21 08:00,2025-11-27 17:00,,,2025-11-21 08:00,2025-11-27 17:00,2025-12-01 08:00,2025-12-05 17:00,40,40,0
EJ-0093,Vertical Joint Aluminium cover installation K/18.8 - Duct Shaft - 2F-SUW-FAB120312,Not Started,Duct Shaft - 2F -SUW-FAB120312,,,,,,,,,,2025-11-21 08:00,2025-11-27 17:00,,,2025-11-21 08:00,2025-11-27 17:00,2025-12-01 08:00,2025-12-05 17:00,40,40,0
EJ-0094,Vertical Joint Aluminium cover installation K/23 - Duct Shaft - 2F-SUW-FAB120312,Not Started,Clean Vestibule 4 - 2F -SUW-FAB120402,,,,,,,,,,2025-11-28 08:00,2025-12-04 17:00,,,2025-11-28 08:00,2025-12-04 17:00,2025-12-01 08:00,2025-12-05 17:00,40,40,0
EJ-0095,IMPACT - SECAI SGP PANEL INSTALL - VJAC installation K/23 - Duct Shaft - 2F-SUW-FAB120312,Active,Clean Vestibule 4 - 2F -SUW-FAB120402,,,,,,,,,,2025-09-29 08:00,2025-10-03 17:00,2025-09-29 08:00,,2025-11-21 08:00,2025-11-27 17:00,2025-11-24 08:00,2025-11-28 17:00,40,40,0
EJ-0096,Vertical Joint Aluminium cover installation K/23.8 - Duct Shaft - 2F-SUW-FAB120403,Not Started,Duct Shaft - 2F -SUW-FAB120403,,,,,,,,,,2025-11-21 08:00,2025-11-27 17:00,,,2025-11-21 08:00,2025-11-27 17:00,2025-12-01 08:00,2025-12-05 17:00,40,40,0
EJ-0097,Horizontal/Floor Steel Cover install D/4.8-5 - Vestibule 22 - 2F-FAB126106,Not Started,Vestibule 22 - 2F -SUE-FAB126106,,,,,,,,,,2025-11-21 08:00,2025-11-27 17:00,,,2025-11-21 08:00,2025-11-27 17:00,2025-12-01 08:00,2025-12-05 17:00,40,40,0
EJ-0098,Horizontal/Floor Steel Cover install D/12-12.2 - Duct Shaft - 2F-SUE-FAB126105,Not Started,Duct Shaft - 2F -SUE-FAB126105,,,,,,,,,,2025-11-21 08:00,2025-11-27 17:00,,,2025-11-21 08:00,2025-11-27 17:00,2025-12-01 08:00,2025-12-05 17:00,40,40,0
EJ-0099,Horizontal/Floor Steel Cover install D/17-17.2 - Duct Shaft - 2F-SUE-FAB126301,Not Started,Duct Shaft - 2F -SUE-FAB126301,,,,,,,,,,2025-11-21 08:00,2025-11-27 17:00,,,2025-11-21 08:00,2025-11-27 17:00,2025-12-01 08:00,2025-12-05 17:00,40,40,0
EJ-0100,Horizontal/Floor Steel Cover install D/28.8-30 - Vestibule #20 - 2F-FAB126310,Not Started,Vestibule 20 - 2F -SUE-FAB126310,,,,,,,,,,2025-11-21 08:00,2025-11-27 17:00,,,2025-11-21 08:00,2025-11-27 17:00,2025-12-01 08:00,2025-12-05 17:00,40,40,0
EJ-0101,Horizontal/Floor Steel Cover install D/28.8-30 - Duct Shaft - 2F-SUE-FAB126510,Not Started,Duct Shaft - 2F -SUE-FAB126510,,,,,,,,,,2025-11-21 08:00,2025-11-27 17:00,,,2025-11-21 08:00,2025-11-27 17:00,2025-12-01 08:00,2025-12-05 17:00,40,40,0
EJ-0102,Horizontal/Floor Steel Cover install D/32-32.2 - Duct Shaft - 2F-SUE-FAB126507,Not Started,Duct Shaft - 2F -SUE-FAB126507,,,,,,,,,,2025-11-21 08:00,2025-11-27 17:00,,,2025-11-21 08:00,2025-11-27 17:00,2025-12-01 08:00,2025-12-05 17:00,40,40,0
EJ-0103,Horizontal/Floor Steel Cover install D/32.8-33 - Vestibule #05 - 2F-FAB120504,Not Started,Vestibule 18 - 2F -SUE-FAB126505,,,,,,,,,,2025-11-21 08:00,2025-11-27 17:00,,,2025-11-21 08:00,2025-11-27 17:00,2025-12-01 08:00,2025-12-05 17:00,40,40,0
EJ-0104,Horizontal/Floor Steel Cover install K/3.5-4 - Elevator Hall #01 - 2F-FAB120113,Not Started,Elevator Hall 1 - 2F -SUW-FAB120113,,,,,,,,,,2025-11-21 08:00,2025-11-27 17:00,,,2025-11-21 08:00,2025-11-27 17:00,2025-12-01 08:00,2025-12-05 17:00,40,40,0
EJ-0105,Horizontal/Floor Steel Cover install K/4.8-5 - Vestibule 1 - 2F-FAB120109,Not Started,Vestibule 1 - 2F -SUW-FAB120109,,,,,,,,,,2025-11-21 08:00,2025-11-27 17:00,,,2025-11-21 08:00,2025-11-27 17:00,2025-12-01 08:00,2025-12-05 17:00,40,40,0
EJ-0106,Horizontal/Floor Steel Cover install K/10-10.2 - Duct Shaft - 2F-SUW-FAB120110,Not Started,Duct Shaft - 2F -SUW-FAB120110,,,,,,,,,,2025-11-21 08:00,2025-11-27 17:00,,,2025-11-21 08:00,2025-11-27 17:00,2025-12-01 08:00,2025-12-05 17:00,40,40,0
EJ-0107,Horizontal/Floor Steel Cover install K/11.5-11.8 - Duct Shaft - 2F-SUW-FAB120301,Not Started,Duct Shaft - 2F -SUW-FAB120301,,,,,,,,,,2025-11-21 08:00,2025-11-27 17:00,,,2025-11-21 08:00,2025-11-27 17:00,2025-12-01 08:00,2025-12-05 17:00,40,40,0
EJ-0108,Horizontal/Floor Steel Cover install K/17-17.2 - Duct Shaft - 2F-SUW-FAB120301,Not Started,Duct Shaft - 2F -SUW-FAB120301,,,,,,,,,,2025-11-21 08:00,2025-11-27 17:00,,,2025-11-21 08:00,2025-11-27 17:00,2025-12-01 08:00,2025-12-05 17:00,40,40,0
EJ-0109,Horizontal/Floor Steel Cover install K/17.8-18 - Vestibule #03 - 2F-FAB120304,Not Started,Vestibule 3 - 2F -SUW-FAB120304,,,,,,,,,,2025-11-21 08:00,2025-11-27 17:00,,,2025-11-21 08:00,2025-11-27 17:00,2025-12-01 08:00,2025-12-05 17:00,40,40,0
EJ-0110,Horizontal/Floor Steel Cover install K/18.8-19 - Duct Shaft - 2F-SUW-FAB120312,Not Started,Duct Shaft - 2F -SUW-FAB120312,,,,,,,,,,2025-11-21 08:00,2025-11-27 17:00,,,2025-11-21 08:00,2025-11-27 17:00,2025-12-01 08:00,2025-12-05 17:00,40,40,0
EJ-0111,Horizontal/Floor Steel Cover install K/23.8-24 - Duct Shaft - 2F-SUW-FAB120403,Not Started,Duct Shaft - 2F -SUW-FAB120403,,,,,,,,,,2025-11-21 08:00,2025-11-27 17:00,,,2025-11-21 08:00,2025-11-27 17:00,2025-12-01 08:00,2025-12-05 17:00,40,40,0
EJ-0112,Horizontal/Floor Steel Cover install K/29-29.8 - Duct Shaft - 2F-SUW-FAB120403,Not Started,Duct Shaft - 2F -SUW-FAB120403,,,,,,,,,,2025-11-21 08:00,2025-11-27 17:00,,,2025-11-21 08:00,2025-11-27 17:00,2025-12-01 08:00,2025-12-05 17:00,40,40,0
EJ-0113,Horizontal/Floor Steel Cover install K/32-32.2 - Duct Shaft - 2F-SUW-FAB120512,Not Started,Duct Shaft - 2F -SUW-FAB120512,,,,,,,,,,2025-11-21 08:00,2025-11-27 17:00,,,2025-11-21 08:00,2025-11-27 17:00,2025-12-01 08:00,2025-12-05 17:00,40,40,0
EJ-0114,Horizontal/Floor Steel Cover install K/32.8-33 - Vestibule #05 - 2F-FAB120504,Not Started,Vestibule 5 - 2F -SUW-FAB120504,,,,,,,,,,2025-11-21 08:00,2025-11-27 17:00,,,2025-11-21 08:00,2025-11-27 17:00,2025-12-01 08:00,2025-12-05 17:00,40,40,0
EJ-0115,IMPACT - SECAI MEP SCAFFOLD - HEJ (Emseal) D/18.8-19 - Duct Shaft - 2F-SUE-FAB126401,Not Started,Duct Shaft - 2F -SUE-FAB126401,,,,,,,,,,2025-11-21 08:00,2025-11-27 17:00,,,2025-11-21 08:00,2025-11-27 17:00,2025-11-24 08:00,2025-11-28 17:00,40,40,0
EJ-0117,Install & Inspect Horizontal/Floor EJ (Emseal) D/28.5-29 - Wafer I/O Entrance - 3F-FAB136501,Not Started,Wafer I/O Entrance - 3F -SUE-FAB136501,,,,,,,,,,2025-11-28 08:00,2025-12-04 17:00,,,2025-11-28 08:00,2025-12-04 17:00,2025-12-01 08:00,2025-12-05 17:00,40,40,0
EJ-0116,IMPACT - SECAI MEP SCAFFOLD - HEJ (Emseal) D/28.5-29 - Wafer I/O Entrance - 3F-FAB136501,Active,Wafer I/O Entrance - 3F -SUE-FAB136501,,,,,,,,,,2025-09-29 08:00,2025-10-03 17:00,2025-09-29 08:00,,2025-11-21 08:00,2025-11-27 17:00,2025-11-24 08:00,2025-11-28 17:00,40,40,0
EJ-0118,Install & Inspect Horizontal/Floor EJ (Emseal) D/17.8-18 - Vestibule #20 - 3F-FAB136310,Not Started,Vestibule 20 - 3F -SUE-FAB136310,,,,,,,,,,2025-11-21 08:00,2025-11-27 17:00,,,2025-11-21 08:00,2025-11-27 17:00,2025-11-24 08:00,2025-11-28 17:00,40,40,0
EJ-0120,Install & Inspect Horizontal/Floor EJ (Emseal) K/10-11.8 - Duct Shaft - 3F-SUW-FAB130112,Not Started,Duct Shaft - 3F -SUW-FAB130112,,,,,,,,,,2025-11-28 08:00,2025-12-04 17:00,,,2025-11-28 08:00,2025-12-04 17:00,2025-12-01 08:00,2025-12-05 17:00,40,40,0
EJ-0119,Grout Grinding - HEJ (Emseal) K/10.11.8 - Duct Shaft - 3F-SUW-FAB130112,Active,Duct Shaft - 3F -SUW-FAB130112,,,,,,,,,,2025-09-29 08:00,2025-10-03 17:00,2025-09-29 08:00,,2025-11-21 08:00,2025-11-27 17:00,2025-11-24 08:00,2025-11-28 17:00,40,40,0
EJ-0121,Install & Inspection Vertical Expansion Joint (Emseal) D/25 - Clean Vestibule #19 - 3F-FAB136406,Not Started,Clean Vestibule 19 - 3F -SUE-FAB136406,,,,,,,,,,2025-11-28 08:00,2025-12-04 17:00,,,2025-11-28 08:00,2025-12-04 17:00,2025-12-01 08:00,2025-12-05 17:00,40,40,0
EJ-0122,IMPACT - SECAI FINISH DRYWALL (NO WALL FRAMED)- VEJ D/25 - Clean Vestibule #19 - 3F-FAB136406,Active,Clean Vestibule 19 - 3F -SUE-FAB136406,,,,,,,,,,2025-09-29 08:00,2025-10-03 17:00,2025-09-29 08:00,,2025-11-21 08:00,2025-11-27 17:00,2025-11-24 08:00,2025-11-28 17:00,40,40,0
EJ-0123,Install & Inspection Vertical Expansion Joint (Emseal) D/32 - Airlock 18 - 3F-FAB136506,Not Started,Air Lock 18 - 3F -SUE-FAB136506,,,,,,,,,,2025-11-28 08:00,2025-12-04 17:00,,,2025-11-28 08:00,2025-12-04 17:00,2025-12-01 08:00,2025-12-05 17:00,40,40,0
EJ-0124,Material procurement VEJ D/32 - Airlock 18 - 3F-FAB136506,Active,Air Lock 18 - 3F -SUE-FAB136506,,,,,,,,,,2025-11-03 08:00,2025-11-14 17:00,2025-11-03 08:00,,2025-11-21 08:00,2025-11-27 17:00,2025-11-24 08:00,2025-11-28 17:00,40,80,100
EJ-0126,Install & Inspection Vertical Expansion Joint (Emseal) K/18.8 - Duct Shaft - 3F-SUW_FAB130401,Not Started,Duct Shaft - 3F -SUW-FAB130401,,,,,,,,,,2025-11-28 08:00,2025-12-04 17:00,,,2025-11-28 08:00,2025-12-04 17:00,2025-12-01 08:00,2025-12-05 17:00,40,40,0
EJ-0125,Material procurement VEJ K/18.8 - Duct Shaft - 3F-SUW_FAB130401,Active,Duct Shaft - 3F -SUW-FAB130401,,,,,,,,,,2025-11-03 08:00,2025-11-14 17:00,2025-11-03 08:00,,2025-11-21 08:00,2025-11-27 17:00,2025-11-24 08:00,2025-11-28 17:00,40,80,100
EJ-0127,Install & Inspection Vertical Expansion Joint (Emseal) K/5.8 - Duct Shaft - 3F-SUW-FAB130112,Not Started,Duct Shaft - 3F -SUW-FAB130112,,,,,,,,,,2025-11-21 08:00,2025-11-27 17:00,,,2025-11-21 08:00,2025-11-27 17:00,2025-12-01 08:00,2025-12-05 17:00,40,40,0
EJ-0128,Install & Inspection Vertical Expansion Joint (Emseal) K/18 - Vestibule #3 - 3F-SUW-FAB130303,Not Started,Vestibule 3 - 3F -SUW-FAB130303,,,,,,,,,,2025-11-21 08:00,2025-11-27 17:00,,,2025-11-21 08:00,2025-11-27 17:00,2025-12-01 08:00,2025-12-05 17:00,40,40,0
EJ-0130,Vertical Joint Aluminium cover installation D/22.8 - Clean Vestibule #4 - 3F-FAB130403,Not Started,Clean Vestibule 4 -3F -SUW-FAB130403,,,,,,,,,,2025-11-28 08:00,2025-12-04 17:00,,,2025-11-28 08:00,2025-12-04 17:00,2025-12-01 08:00,2025-12-05 17:00,40,40,0
EJ-0129,IMPACT - SECAI SGP PANEL INSTALL - VJAC installation D/22.8 - Clean Vestibule #4 - 3F-FAB130403,Active,Clean Vestibule 4 -3F -SUW-FAB130403,,,,,,,,,,2025-09-29 08:00,2025-10-03 17:00,2025-09-29 08:00,,2025-11-21 08:00,2025-11-27 17:00,2025-11-24 08:00,2025-11-28 17:00,40,40,0
EJ-0132,Vertical Joint Aluminium cover installation K/32 - Airlock 5 - 3F-SUW-FAB130505,Not Started,Air Lock 5 - 3F -SUW-FAB130505,,,,,,,,,,2025-11-28 08:00,2025-12-04 17:00,,,2025-11-28 08:00,2025-12-04 17:00,2025-12-01 08:00,2025-12-05 17:00,40,40,0
EJ-0131,IMPACT - SECAI SGP PANEL INSTALL - VJAC installation K/32 - Airlock 5 - 3F-SUW-FAB130505,Active,Air Lock 5 - 3F -SUW-FAB130505,,,,,,,,,,2025-09-29 08:00,2025-10-03 17:00,2025-09-29 08:00,,2025-11-21 08:00,2025-11-27 17:00,2025-11-24 08:00,2025-11-28 17:00,40,40,0
EJ-0134,Vertical Joint Aluminium cover installation K/5.8 - Duct Shaft - 3F-SUW-FAB130112,Not Started,Duct Shaft - 3F -SUW-FAB130112,,,,,,,,,,2025-11-28 08:00,2025-12-04 17:00,,,2025-11-28 08:00,2025-12-04 17:00,2025-12-01 08:00,2025-12-05 17:00,40,40,0
EJ-0133,Material Procurement - VJAC installation K/5.8 - Duct Shaft - 3F-SUW-FAB130112,Active,Duct Shaft - 3F -SUW-FAB130112,,,,,,,,,,2025-11-03 08:00,2025-11-14 17:00,2025-11-03 08:00,,2025-11-21 08:00,2025-11-27 17:00,2025-11-24 08:00,2025-11-28 17:00,40,80,0
EJ-0135,Vertical Joint Aluminium cover installation D/5 - Vestibule #22 - 3F-SUE-FAB136108,Not Started,Vestibule 22 - 3F -SUE-FAB136108,,,,,,,,,,2025-11-21 08:00,2025-11-27 17:00,,,2025-11-21 08:00,2025-11-27 17:00,2025-12-01 08:00,2025-12-05 17:00,40,40,0
EJ-0136,Vertical Joint Aluminium cover installation D/5.8 - Duct Shaft - 3F-SUE-FAB136201,Not Started,Duct Shaft - 3F -SUE-FAB136201,,,,,,,,,,2025-11-21 08:00,2025-11-27 17:00,,,2025-11-21 08:00,2025-11-27 17:00,2025-12-01 08:00,2025-12-05 17:00,40,40,0
EJ-0137,Vertical Joint Aluminium cover installation D/12.2 - Duct Shaft - 3F-SUE-FAB136201,Not Started,Duct Shaft - 3F -SUE-FAB136201,,,,,,,,,,2025-11-21 08:00,2025-11-27 17:00,,,2025-11-21 08:00,2025-11-27 17:00,2025-12-01 08:00,2025-12-05 17:00,40,40,0
EJ-0138,Vertical Joint Aluminium cover installation D/13.2 - Clean Vestibule #21 - 3F- FAB136203,Not Started,Clean Vestibule 21 - 3F -SUE-FAB136203,,,,,,,,,,2025-11-21 08:00,2025-11-27 17:00,,,2025-11-21 08:00,2025-11-27 17:00,2025-12-01 08:00,2025-12-05 17:00,40,40,0
EJ-0139,Vertical Joint Aluminium cover installation D/18 - Vestibule #20 - 3F-FAB136310,Not Started,Vestibule 20 - 3F -SUE-FAB136310,,,,,,,,,,2025-11-21 08:00,2025-11-27 17:00,,,2025-11-21 08:00,2025-11-27 17:00,2025-12-01 08:00,2025-12-05 17:00,40,40,0
EJ-0140,Vertical Joint Aluminium cover installation D/28 - Wafer I/O Entrance - 3F-FAB136501,Not Started,Wafer I/O Entrance - 3F -SUE-FAB136501,,,,,,,,,,2025-11-21 08:00,2025-11-27 17:00,,,2025-11-21 08:00,2025-11-27 17:00,2025-12-01 08:00,2025-12-05 17:00,40,40,0
EJ-0141,Vertical Joint Aluminium cover installation D/29 - Duct Shaft - 3F-SUE-FAB136510,Not Started,Duct Shaft - 3F -SUE-FAB136510,,,,,,,,,,2025-11-21 08:00,2025-11-27 17:00,,,2025-11-21 08:00,2025-11-27 17:00,2025-12-01 08:00,2025-12-05 17:00,40,40,0
EJ-0143,Vertical Joint Aluminium cover installation K/5.8 - Stair #02 SUW- 3F- FAB1-ST02,Not Started,Stair 2 - 3F-SUW-FAB1-ST02,,,,,,,,,,2025-11-21 08:00,2025-11-27 17:00,,,2025-11-21 08:00,2025-11-27 17:00,2025-12-01 08:00,2025-12-05 17:00,40,40,0
EJ-0142,Vertical Joint Aluminium cover installation D/30 - Duct Shaft - 3F-SUE-FAB136510,Not Started,Duct Shaft - 3F -SUE-FAB136510,,,,,,,,,,2025-11-21 08:00,2025-11-27 17:00,,,2025-11-21 08:00,2025-11-27 17:00,2025-12-01 08:00,2025-12-05 17:00,40,40,0
EJ-0144,Vertical Joint Aluminium cover installation K/10.2 - Duct Shaft - 3F-SUW-FAB130112,Not Started,Duct Shaft - 3F -SUW-FAB130112,,,,,,,,,,2025-11-21 08:00,2025-11-27 17:00,,,2025-11-21 08:00,2025-11-27 17:00,2025-12-01 08:00,2025-12-05 17:00,40,40,0
EJ-0145,Vertical Joint Aluminium cover installation K/16 - Duct Shaft - 3F-SUW-FAB130204,Not Started,Duct Shaft - 3F -SUW-FAB130204,,,,,,,,,,2025-11-21 08:00,2025-11-27 17:00,,,2025-11-21 08:00,2025-11-27 17:00,2025-12-01 08:00,2025-12-05 17:00,40,40,0
EJ-0146,Vertical Joint Aluminium cover installation K/16.2 - Duct Shaft - 3F-SUW-FAB130204,Not Started,Duct Shaft - 3F -SUW-FAB130204,,,,,,,,,,2025-11-21 08:00,2025-11-27 17:00,,,2025-11-21 08:00,2025-11-27 17:00,2025-12-01 08:00,2025-12-05 17:00,40,40,0
EJ-0147,Vertical Joint Aluminium cover installation K/17 - Airlock 3 - 3F-SUW-FAB130302,Not Started,Air Lock 3 - 3F -SUW-FAB130302,,,,,,,,,,2025-11-21 08:00,2025-11-27 17:00,,,2025-11-21 08:00,2025-11-27 17:00,2025-12-01 08:00,2025-12-05 17:00,40,40,0
EJ-0148,Vertical Joint Aluminium cover installation K/17.8 - Airlock 3 - 3F-SUW-FAB130302,Not Started,Air Lock 3 - 3F -SUW-FAB130302,,,,,,,,,,2025-11-21 08:00,2025-11-27 17:00,,,2025-11-21 08:00,2025-11-27 17:00,2025-12-01 08:00,2025-12-05 17:00,40,40,0
EJ-0149,Vertical Joint Aluminium cover installation K/30 - Duct Shaft - 3F-SUW-FAB130502,Not Started,Duct Shaft - 3F -SUW-FAB130502,,,,,,,,,,2025-11-21 08:00,2025-11-27 17:00,,,2025-11-21 08:00,2025-11-27 17:00,2025-12-01 08:00,2025-12-05 17:00,40,40,0
EJ-0150,Horizontal/Floor Steel Cover install K/4.8-5 - Vestibule #1 - 3F-SUW-FAB130111,Not Started,Vestibule 1 - 3F -SUW-FAB130111,,,,,,,,,,2025-11-21 08:00,2025-11-27 17:00,,,2025-11-21 08:00,2025-11-27 17:00,2025-12-01 08:00,2025-12-05 17:00,40,40,0
EJ-0155,Horizontal/Floor Steel Cover install K/10-10.2 - Duct Shaft - 3F-SUW-FAB130112,Not Started,Duct Shaft - 3F -SUW-FAB130112,,,,,,,,,,2025-11-21 08:00,2025-11-27 17:00,,,2025-11-21 08:00,2025-11-27 17:00,2025-12-01 08:00,2025-12-05 17:00,40,40,0
EJ-0156,Horizontal/Floor Steel Cover install K/17.8-18 - Vestibule #3 - 3F-SUW-FAB130303,Not Started,Vestibule 3 - 3F -SUW-FAB130303,,,,,,,,,,2025-11-21 08:00,2025-11-27 17:00,,,2025-11-21 08:00,2025-11-27 17:00,2025-12-01 08:00,2025-12-05 17:00,40,40,0
EJ-0157,Horizontal/Floor Steel Cover install K/29-29.6 - Duct Shaft - 3F-SUW-FAB130406,Not Started,Duct Shaft - 3F -SUW-FAB130406,,,,,,,,,,2025-11-21 08:00,2025-11-27 17:00,,,2025-11-21 08:00,2025-11-27 17:00,2025-12-01 08:00,2025-12-05 17:00,40,40,0
EJ-0158,Horizontal/Floor Steel Cover install K/32.8-33 - Vestibule #5 - 3F-SUW-FAB130504,Not Started,Vestibule 5 - 3F -SUW-FAB130504,,,,,,,,,,2025-11-21 08:00,2025-11-27 17:00,,,2025-11-21 08:00,2025-11-27 17:00,2025-12-01 08:00,2025-12-05 17:00,40,40,0
EJ-0159,Horizontal/Floor Steel Cover install D/4.8-5 Vestibule #22 - 3F-SUE-FAB136108,Not Started,Vestibule 22 - 3F -SUE-FAB136108,,,,,,,,,,2025-11-21 08:00,2025-11-27 17:00,,,2025-11-21 08:00,2025-11-27 17:00,2025-12-01 08:00,2025-12-05 17:00,40,40,0
EJ-0160,Horizontal/Floor Steel Cover install D/4.8-5 Vestibule #22 - 3F-SUE-FAB136108,Not Started,Vestibule 20 - 3F -SUE-FAB136310,,,,,,,,,,2025-11-28 08:00,2025-12-04 17:00,,,2025-11-28 08:00,2025-12-04 17:00,2025-12-01 08:00,2025-12-05 17:00,40,40,0
EJ-0161,Horizontal/Floor Steel Cover install A-C/19 - Electrical Rm - 3F-SUE-FAB136302,Not Started,Electrical Rm - 3F -SUE-FAB136302,,,,,,,,,,2025-11-21 08:00,2025-11-27 17:00,,,2025-11-21 08:00,2025-11-27 17:00,2025-12-01 08:00,2025-12-05 17:00,40,40,0
EJ-0162,Horizontal/Floor Steel Cover install D/29-30 - Duct Shaft - 3F-SUE-FAB136510,Not Started,Duct Shaft - 3F -SUE-FAB136510,,,,,,,,,,2025-11-21 08:00,2025-11-27 17:00,,,2025-11-21 08:00,2025-11-27 17:00,2025-12-01 08:00,2025-12-05 17:00,40,40,0
EJ-0163,Horizontal/Floor Steel Cover install D/32.8-33 - Vestibule #18 - 3F-SUE-FAB136505,Not Started,Vestibule 18 - 3F -SUE-FAB136505,,,,,,,,,,2025-11-21 08:00,2025-11-27 17:00,,,2025-11-21 08:00,2025-11-27 17:00,2025-12-01 08:00,2025-12-05 17:00,40,40,0
EJ-0165,Install & Inspection Vertical Expansion Joint (Emseal) K/4 Fire Alarm 1 - 4F-SUW-FAB140103,Not Started,Fire Alarm 1 - 4F -SUW-FAB140103,,,,,,,,,,2025-11-28 08:00,2025-12-04 17:00,,,2025-11-28 08:00,2025-12-04 17:00,2025-12-01 08:00,2025-12-05 17:00,40,40,0
EJ-0164,IMPACT - SECAI RA FLLOR PANEL INSTALL - VEJ K/4 - Fire Alarm 1 - 4F-SUW-FAB140103,Active,Fire Alarm 1 - 4F -SUW-FAB140103,,,,,,,,,,2025-09-29 08:00,2025-10-03 17:00,2025-09-29 08:00,,2025-11-21 08:00,2025-11-27 17:00,2025-11-24 08:00,2025-11-28 17:00,40,40,0
EJ-0167,Install & Inspection Vertical Expansion Joint (Emseal) K/4.3 Fire Alarm 1 - 4F-SUW-FAB140103,Not Started,Fire Alarm 1 - 4F -SUW-FAB140103,,,,,,,,,,2025-11-28 08:00,2025-12-04 17:00,,,2025-11-28 08:00,2025-12-04 17:00,2025-12-01 08:00,2025-12-05 17:00,40,40,0
EJ-0166,IMPACT - SECAI RA FLLOR PANEL INSTALL - VEJ K/4.3 - Fire Alarm 1 - 4F-SUW-FAB140103,Active,Fire Alarm 1 - 4F -SUW-FAB140103,,,,,,,,,,2025-09-29 08:00,2025-10-03 17:00,2025-09-29 08:00,,2025-11-21 08:00,2025-11-27 17:00,2025-11-24 08:00,2025-11-28 17:00,40,40,0
EJ-0169,Install & Inspection Vertical Expansion Joint (Emseal) K/4.8 - IT/Security 1 - 4F-SUW-FAB140105,Not Started,IT/Security 1 - 4F -SUW-FAB140105,,,,,,,,,,2025-11-28 08:00,2025-12-04 17:00,,,2025-11-28 08:00,2025-12-04 17:00,2025-12-01 08:00,2025-12-05 17:00,40,40,0
EJ-0168,IMPACT - SECAI RA FLLOR PANEL INSTALL - VEJ K/4.8 - IT/Security 1 - 4F-SUW-FAB140105,Active,IT/Security 1 - 4F -SUW-FAB140105,,,,,,,,,,2025-09-29 08:00,2025-10-03 17:00,2025-09-29 08:00,,2025-11-21 08:00,2025-11-27 17:00,2025-11-24 08:00,2025-11-28 17:00,40,40,0
EJ-0171,Install & Inspection Vertical Expansion Joint (Emseal) K/5 - Elevator Hall #01 - 4F-SUW-FAB140101,Not Started,Elevator Hall 1 - 4F -SUW-FAB140101,,,,,,,,,,2025-11-28 08:00,2025-12-04 17:00,,,2025-11-28 08:00,2025-12-04 17:00,2025-12-01 08:00,2025-12-05 17:00,40,40,0
EJ-0170,IMPACT - SECAI RA FLLOR PANEL INSTALL - VEJ K/5 - Elevator Hall #01 - 4F-SUW-FAB140101,Active,Elevator Hall 1 - 4F -SUW-FAB140101,,,,,,,,,,2025-09-29 08:00,2025-10-03 17:00,2025-09-29 08:00,,2025-11-21 08:00,2025-11-27 17:00,2025-11-24 08:00,2025-11-28 17:00,40,40,0
EJ-0173,Install & Inspection Vertical Expansion Joint (Emseal) K/32 - IT/Security 5 - 4F-SUW-FAB140503,Not Started,IT/Security 5 - 4F -SUW-FAB140503,,,,,,,,,,2025-11-28 08:00,2025-12-04 17:00,,,2025-11-28 08:00,2025-12-04 17:00,2025-12-01 08:00,2025-12-05 17:00,40,40,0
EJ-0172,IMPACT - SECAI RA FLLOR PANEL INSTALL - VEJ K/32 - IT/Security 5 - 4F-SUW-FAB140503,Active,IT/Security 5 - 4F -SUW-FAB140503,,,,,,,,,,2025-09-29 08:00,2025-10-03 17:00,2025-09-29 08:00,,2025-11-21 08:00,2025-11-27 17:00,2025-11-24 08:00,2025-11-28 17:00,40,40,0
EJ-0175,Install & Inspection Vertical Expansion Joint (Emseal) K/32.8 - Elevator Hall #05 - 4F-SUW-FAB140508,Not Started,Elevator Hall 5 - 4F -SUW-FAB140508,,,,,,,,,,2025-11-28 08:00,2025-12-04 17:00,,,2025-11-28 08:00,2025-12-04 17:00,2025-12-01 08:00,2025-12-05 17:00,40,40,0
EJ-0174,IMPACT - SECAI RA FLLOR PANEL INSTALL - VEJ K/32.8 - Elevator Hall #05 - 4F-SUW-FAB140508,Active,Elevator Hall 5 - 4F -SUW-FAB140508,,,,,,,,,,2025-09-29 08:00,2025-10-03 17:00,2025-09-29 08:00,,2025-11-21 08:00,2025-11-27 17:00,2025-11-24 08:00,2025-11-28 17:00,40,40,0
EJ-0177,Install & Inspection Vertical Expansion Joint (Emseal) D/32 - IT/Security 18 - 4F-SUE-FAB146508,Not Started,IT/Security 18 - 4F -SUE-FAB146508,,,,,,,,,,2025-11-28 08:00,2025-12-04 17:00,,,2025-11-28 08:00,2025-12-04 17:00,2025-12-01 08:00,2025-12-05 17:00,40,40,0
EJ-0176,IMPACT - SECAI RA FLOOR PANEL INSTALL - VEJ D/32 - IT/Security 18 - 4F-SUE-FAB146508,Active,IT/Security 18 - 4F -SUE-FAB146508,,,,,,,,,,2025-09-29 08:00,2025-10-03 17:00,2025-09-29 08:00,,2025-11-21 08:00,2025-11-27 17:00,2025-11-24 08:00,2025-11-28 17:00,40,40,0
EJ-0179,Install & Inspection Vertical Expansion Joint (Emseal) D/32.8 - Elevator Hall #18 - 4F-SUE-FAB146507,Not Started,Elevator Hall 18 - 4F -SUE-FAB146507,,,,,,,,,,2025-11-28 08:00,2025-12-04 17:00,,,2025-11-28 08:00,2025-12-04 17:00,2025-12-01 08:00,2025-12-05 17:00,40,40,0
EJ-0178,IMPACT - SECAI RA FLOOR PANEL INSTALL - VEJ D/32.8 - Elevator Hall #18 - 4F-SUE-FAB146507,Active,Elevator Hall 18 - 4F -SUE-FAB146507,,,,,,,,,,2025-09-29 08:00,2025-10-03 17:00,2025-09-29 08:00,,2025-11-21 08:00,2025-11-27 17:00,2025-11-24 08:00,2025-11-28 17:00,40,40,0
EJ-0181,Install & Inspection Vertical Expansion Joint (Emseal) D/5.8 - Duct Shaft - 2F-SUE-FAB126105,Not Started,Duct Shaft - 2F -SUE-FAB126105,,,,,,,,,,2025-12-05 08:00,2025-12-11 17:00,,,2025-12-05 08:00,2025-12-11 17:00,2025-12-01 08:00,2025-12-05 17:00,40,40,0
EJ-0180,IMPACT - SECAI SCAFFOLD TO BE BUILT D/5.8 - Duct Shaft - 2F-SUE-FAB126105,Active,Duct Shaft - 2F -SUE-FAB126105,,,,,,,,,,2025-08-14 08:00,2025-09-03 17:00,2025-08-14 08:00,,2025-11-21 08:00,2025-12-04 17:00,2025-11-17 08:00,2025-11-28 17:00,80,120,0
FAB126506C-50,DOOR FRAME HANDED OVER TO SECAI ON 10/27 - FAB126506C,Complete,Air Lock 18 - 2F -SUE-FAB126506,,,,,,,,,,2025-10-27 08:00,2025-10-27 17:00,2025-10-27 08:00,2025-10-27 17:00,2025-11-20 17:00,2025-11-20 17:00,2025-11-25 10:00,2025-11-25 10:00,0,8,100
FAB126311B-50,IMPACT - SECAI SCAFFOLD BLOCKING DOOR SWING - FAB126311B,Complete,Air Lock 20 - 2F -SUE-FAB126311,,,,,,,,,,2025-09-18 08:00,2025-10-08 17:00,2025-09-18 08:00,2025-11-13 17:00,2025-11-20 17:00,2025-11-20 17:00,2025-11-25 10:00,2025-11-25 10:00,0,120,100
FAB116106B-50,IMPACT - SECAI TRADES WORKING AT OPENING IMPEDING DOOR INSTALL - FAB116106B,Active,Exit Passageway 22 - 1F -SUE-FAB116106,,,,,,,,,,2025-10-23 08:00,2025-11-12 17:00,2025-10-23 08:00,,2025-11-21 08:00,2025-12-04 17:00,2025-11-11 10:00,2025-11-25 10:00,80,120,0
FAB1-ST20C-50,IMPACT - SECAI SCAFFOLD IMPEDING DOOR INSTALL - FAB1-ST20C,Complete,Stair 20 - 3F -SUE-FAB1-ST20,,,,,,,,,,2025-10-29 08:00,2025-11-18 17:00,2025-10-29 08:00,2025-11-17 17:00,2025-11-20 17:00,2025-11-20 17:00,2025-11-24 08:00,2025-11-24 08:00,0,120,100
FAB116111A-50,IMPACT - SECAI SCAFFOLD IMPEDING DOOR INSTALL - FAB116111A,Active,Air Lock 22 - 1F -SUE-FAB116111,,,,,,,,,,2025-10-29 08:00,2025-11-18 17:00,2025-10-29 08:00,,2025-11-21 08:00,2025-12-04 17:00,2025-11-11 10:00,2025-11-25 10:00,80,120,0
FAB114404A-50,IMPACT - SECAI SCAFFOLD IMPEDING DOOR INSTALL - FAB114404A,Active,Bunker Rm 14 - 1F -FAB-FAB114404,,,,,,,,,,2025-10-29 08:00,2025-11-18 17:00,2025-10-29 08:00,,2025-11-21 08:00,2025-12-04 17:00,2025-11-11 10:00,2025-11-25 10:00,80,120,0
FAB126107B-50,IMPACT - SECAI SCAFFOLD IMPEDING DOOR INSTALL - FAB126107B,Complete,Air Lock 22 - 2F -SUE-FAB126107,,,,,,,,,,2025-10-29 08:00,2025-11-18 17:00,2025-10-29 08:00,2025-10-30 17:00,2025-11-20 17:00,2025-11-20 17:00,2025-11-25 10:00,2025-11-25 10:00,0,120,100
FAB126506B-50,IMPACT - SECAI SCAFFOLD IMPEDING DOOR INSTALL - FAB126506B,Active,Air Lock 18 - 2F -SUE-FAB126506,,,,,,,,,,2025-10-29 08:00,2025-11-18 17:00,2025-10-29 08:00,,2025-11-21 08:00,2025-12-04 17:00,2025-11-11 10:00,2025-11-25 10:00,80,120,0
FAB130311A-50,IMPACT - SECAI MATERIAL AND SCAFFOLD IMPEDING DOOR INSTALL - FAB130311A,Active,NaOH Transfer Rm - 3F -SUW-FAB130311,,,,,,,,,,2025-10-29 08:00,2025-11-18 17:00,2025-10-29 08:00,,2025-11-21 08:00,2025-12-04 17:00,2025-11-11 10:00,2025-11-25 10:00,80,120,0
FAB1U1407A-50,IMPACT - SECAI CORDS IMPEDING DOOR INSTALL - FAB1U1407A,Complete,SOUTH/NORTH PIT - 1F - SUW,,,,,,,,,,2025-11-03 08:00,2025-11-21 17:00,2025-11-03 08:00,2025-11-12 17:00,2025-11-20 17:00,2025-11-20 17:00,2025-11-25 08:00,2025-11-25 08:00,0,120,100
FAB116305B-50,IMPACT - FRAME CONSTANTLY HIT DUE HEAY TRAFFIC - FAB116305B,Active,Elevator Hall 20 - 1F -SUE-FAB116305,,,,,,,,,,2025-11-12 08:00,2025-11-18 17:00,2025-11-12 08:00,,2025-11-21 08:00,2025-11-27 17:00,2025-11-18 10:00,2025-11-25 10:00,40,40,0
FAB1-ST03B-50,IMPACT - SECAI SCAFFOLD IMPEDING DOOR INSTALL - FAB1-ST03B,Active,Stair 3 - 2F -SUW-FAB1-ST03,,,,,,,,,,2025-11-06 08:00,2025-11-19 17:00,2025-11-06 08:00,,2025-11-21 08:00,2025-11-27 17:00,2025-11-17 08:00,2025-11-21 17:00,40,80,0
FAB1-ST03C-50,IMPACT - SECAI SCAFFOLD IMPEDING DOOR INSTALL - FAB1-ST03C,Active,Stair 3 - 3F- SUW-FAB1-ST03,,,,,,,,,,2025-11-06 08:00,2025-11-19 17:00,2025-11-06 08:00,,2025-11-21 08:00,2025-11-27 17:00,2025-11-18 08:00,2025-11-24 17:00,40,80,0
FAB120507C-50,IMPACT - SECAI POWER CABLES RUNNING THROUGH OPENING - FAB120507C,Active,Utility Rm - 2F -SUW-FAB120507,,,,,,,,,,2025-11-06 08:00,2025-11-19 17:00,2025-11-06 08:00,,2025-11-21 08:00,2025-11-27 17:00,2025-11-18 10:00,2025-11-25 10:00,40,80,0
FAB116204B-06,INSTALL DOOR HARDWARE - FAB116204B,Not Started,Duct Shaft - 1F -SUE-FAB116204,,,,,,,,,,2026-02-19 15:00,2026-02-25 15:00,,,2026-02-19 15:00,2026-02-25 15:00,2025-12-02 08:00,2025-12-05 17:00,32,32,0
CN.SWB5.11180,IMPACT - SECAI HAS NOT TURNED OVER PLATFORM FOR T&F - ELEVATOR 5,Active,CONSTRUCTION,,SUWN-5 - 30-33,,ELEVATOR,CONSTRUCTION,BAKER,,,,2025-10-01 07:00,2025-12-05 17:00,2025-10-01 07:00,,2025-11-21 07:00,2025-12-12 17:00,2025-09-26 07:00,2025-10-15 17:00,140,460,100
CN.SWA5..6320,INSTALL DOOR FRAMES - STAIR #19 - 26/D - ALL LEVELS,Active,SWA - 5,West Support Building,SUEN-3 - 25-28,INTERIOR STAIR TOWER - STAIR #19 (CLEAN ROOM) - DE-SCOPED,,CONSTRUCTION,,INSULATED METAL PANELS,JAMES LIVELY,INTERIORS,2025-05-29 07:00,2025-06-03 17:00,2025-05-29 07:00,,2025-11-21 07:00,2025-11-26 17:00,2025-11-25 07:00,2025-12-02 17:00,50,50,0
CN.SWA5..6330,INSTALL - DOOR/HARDWARE/PAINT - STAIR #19 - 26/D - ALL LEVELS,Active,SWA - 5,West Support Building,SUEN-3 - 25-28,INTERIOR STAIR TOWER - STAIR #19 (CLEAN ROOM) - DE-SCOPED,,CONSTRUCTION,,INSULATED METAL PANELS,JAMES LIVELY,INTERIORS,2025-11-07 07:00,2025-11-10 17:00,2025-11-07 07:00,,2025-11-29 07:00,2025-12-02 17:00,2025-12-03 07:00,2025-12-05 17:00,30,30,0
CN.SWA5..6340,INSTALL DOOR FRAMES - STAIR #1 - 5/L - ALL LEVELS,Complete,SWA - 5,West Support Building,SUEN-3 - 25-28,INTERIOR STAIR TOWER - STAIR #1 - DE-SCOPED,,CONSTRUCTION,,INSULATED METAL PANELS,JAMES LIVELY,INTERIORS,2025-05-29 07:00,2025-06-03 17:00,2025-05-29 07:00,2025-10-21 17:00,2025-11-20 17:00,2025-11-20 17:00,2025-12-03 07:00,2025-12-03 07:00,0,50,100
CN.SWA5..6350,INSTALL - DOOR/HARDWARE/PAINT - STAIR #1 - 5/L - ALL LEVELS,Active,SWA - 5,West Support Building,SUEN-3 - 25-28,INTERIOR STAIR TOWER - STAIR #1 - DE-SCOPED,,CONSTRUCTION,,INSULATED METAL PANELS,JAMES LIVELY,INTERIORS,2025-11-07 07:00,2025-11-10 17:00,2025-09-18 07:00,,2025-11-21 07:00,2025-11-24 17:00,2025-12-03 07:00,2025-12-05 17:00,30,30,0
CN.SWA5..6360,INSTALL DOOR FRAMES - STAIR #22 - 6/D - ALL LEVELS,Active,SWA - 5,West Support Building,SUEN-3 - 25-28,INTERIOR STAIR TOWER - STAIR #22 - DE-SCOPED,,CONSTRUCTION,,INSULATED METAL PANELS,JAMES LIVELY,INTERIORS,2025-05-29 07:00,2025-06-03 17:00,2025-10-22 07:00,,2025-11-21 07:00,2025-11-26 17:00,2025-11-25 07:00,2025-12-02 17:00,50,50,0
CN.SWA5..6370,INSTALL - DOOR/HARDWARE/PAINT - STAIR #22 - 6/D - ALL LEVELS,Active,SWA - 5,West Support Building,SUEN-3 - 25-28,INTERIOR STAIR TOWER - STAIR #22 - DE-SCOPED,,CONSTRUCTION,,INSULATED METAL PANELS,JAMES LIVELY,INTERIORS,2025-11-07 07:00,2025-11-10 17:00,2025-11-07 07:00,,2025-11-29 07:00,2025-12-02 17:00,2025-12-03 07:00,2025-12-05 17:00,30,30,0
CN.SWA5..6380,INSTALL DOOR FRAMES - STAIR #50 - 29/L - ALL LEVELS,Complete,SWA - 5,West Support Building,SUEN-3 - 25-28,INTERIOR STAIR TOWER - STAIR #50 - DE-SCOPED,,CONSTRUCTION,,INSULATED METAL PANELS,JAMES LIVELY,INTERIORS,2025-05-29 07:00,2025-06-03 17:00,2025-02-13 07:00,2025-10-28 17:00,2025-11-20 17:00,2025-11-20 17:00,2025-12-03 07:00,2025-12-03 07:00,0,50,100
CN.SWA5..6390,INSTALL - DOOR/HARDWARE/PAINT - STAIR #50 - 29/L - ALL LEVELS,Active,SWA - 5,West Support Building,SUEN-3 - 25-28,INTERIOR STAIR TOWER - STAIR #50 - DE-SCOPED,,CONSTRUCTION,,INSULATED METAL PANELS,JAMES LIVELY,INTERIORS,2025-11-07 07:00,2025-11-10 17:00,2025-10-02 07:00,,2025-11-21 07:00,2025-11-24 17:00,2025-12-03 07:00,2025-12-05 17:00,30,30,0
CN.SWA5..6400,IMPACT - SECAI MEP WORK IN THE AREA - STAIR #4 - 23/L - ALL LEVELS,Active,SWA - 5,West Support Building,SUWN-2 - 21-24,INTERIOR STAIR TOWER - STAIR #4 (CLEAN ROOM),,CONSTRUCTION,,INSULATED METAL PANELS,JAMES LIVELY,INTERIORS,2025-11-12 07:00,2025-11-17 17:00,2025-11-13 07:00,,2025-11-21 07:00,2025-11-26 17:00,2025-11-22 07:00,2025-11-29 17:00,50,50,0
FAB120507A-110,IMPACT - SECAI (VELTRI) MODIFY HANDRAIL DESIGN - FAB120507A,Complete,Utility Rm - 2F -SUW-FAB120507,,,,,,,,,,2025-10-27 08:00,2025-10-31 17:00,2025-10-27 08:00,2025-11-10 17:00,2025-11-20 17:00,2025-11-20 17:00,2025-11-25 10:00,2025-11-25 10:00,0,40,100
CN.SWB3.7151,"IMPACT - WATER INTRUSION, EXCESSIVE MUD AND DEBRIS IN AIRLOCKS - SUE - SECTOR 61/62/63/64/65",Active,CONSTRUCTION,,SUES-5 - 6-1 - FIZ - GL A -E,L4 - SUP Roof - FAB Roof,SUE - SUPPORT EAST,CONSTRUCTION,,Roofing,,SOMD / Roofing / Waterproofing,2025-06-12 07:00,2025-06-12 17:00,2025-06-12 07:00,,2025-11-21 07:00,2025-11-21 17:00,2025-10-15 07:00,2025-10-15 17:00,10,10,0
EJ-0182,Vertical Joint Aluminium cover installation K/1 - Thermohygrostat Rm - 2F-FAB120104,Not Started,Thermohygrostat Rm - 2F -FIZ-FAB120104,,,,,,,,,,2025-12-05 08:00,2025-12-11 17:00,,,2025-12-05 08:00,2025-12-11 17:00,2025-12-01 08:00,2025-12-05 17:00,40,40,0
FAB1-DI-001,INSTALL DOOR & HARDWARE (419 OF 622),Active,Remobilization and Out-of-Sequence Completion List - DD07-10-2025,,,,,,,,,,2025-11-17 08:00,2025-11-21 17:00,2025-11-17 08:00,,2025-11-21 08:00,2025-11-21 17:00,2025-10-17 08:00,2025-10-17 17:00,8,40,0
FAB1-DI-002,INSTALL DOOR & HARDWARE (448 OF 622),Not Started,Remobilization and Out-of-Sequence Completion List - DD07-10-2025,,,,,,,,,,2025-11-24 08:00,2025-11-28 17:00,,,2025-11-24 08:00,2025-11-28 17:00,2025-10-20 08:00,2025-10-24 17:00,40,40,0
FAB1-DI-003,INSTALL DOOR & HARDWARE (477 OF 622),Not Started,Remobilization and Out-of-Sequence Completion List - DD07-10-2025,,,,,,,,,,2025-12-01 08:00,2025-12-05 17:00,,,2025-12-01 08:00,2025-12-05 17:00,2025-10-27 08:00,2025-10-31 17:00,40,40,0
FAB1-DI-004,INSTALL DOOR & HARDWARE (506 OF 622),Not Started,Remobilization and Out-of-Sequence Completion List - DD07-10-2025,,,,,,,,,,2025-12-08 08:00,2025-12-12 17:00,,,2025-12-08 08:00,2025-12-12 17:00,2025-11-03 08:00,2025-11-07 17:00,40,40,0
FAB1-DI-005,INSTALL DOOR & HARDWARE (535 OF 622),Not Started,Remobilization and Out-of-Sequence Completion List - DD07-10-2025,,,,,,,,,,2025-12-15 08:00,2025-12-19 17:00,,,2025-12-15 08:00,2025-12-19 17:00,2025-11-10 08:00,2025-11-14 17:00,40,40,0
FAB1-DI-006,INSTALL DOOR & HARDWARE (564 OF 622),Not Started,Remobilization and Out-of-Sequence Completion List - DD07-10-2025,,,,,,,,,,2025-12-22 08:00,2025-12-26 17:00,,,2025-12-22 08:00,2025-12-26 17:00,2025-11-17 08:00,2025-11-21 17:00,40,40,0
FAB1-DI-007,INSTALL DOOR & HARDWARE (593 OF 622),Not Started,Remobilization and Out-of-Sequence Completion List - DD07-10-2025,,,,,,,,,,2025-12-29 08:00,2026-01-02 17:00,,,2025-12-29 08:00,2026-01-02 17:00,2025-11-24 08:00,2025-11-28 17:00,40,40,0
FAB1-DI-008,INSTALL DOOR & HARDWARE (622 OF 622),Not Started,Remobilization and Out-of-Sequence Completion List - DD07-10-2025,,,,,,,,,,2026-01-05 08:00,2026-01-09 17:00,,,2026-01-05 08:00,2026-01-09 17:00,2025-12-01 08:00,2025-12-05 17:00,40,40,0
FAB1-DP-001,PAINT & PROTECT DOORS & FRAMES (50 OF 622),Not Started,Remobilization and Out-of-Sequence Completion List - DD07-10-2025,,,,,,,,,,2026-02-16 08:00,2026-02-20 17:00,,,2026-02-16 08:00,2026-02-20 17:00,2025-09-08 08:00,2025-09-12 17:00,40,40,0
FAB1-DP-002,PAINT & PROTECT DOORS & FRAMES (100 OF 622),Not Started,Remobilization and Out-of-Sequence Completion List - DD07-10-2025,,,,,,,,,,2026-02-23 08:00,2026-02-27 17:00,,,2026-02-23 08:00,2026-02-27 17:00,2025-09-15 08:00,2025-09-19 17:00,40,40,0
FAB1-DP-003,PAINT & PROTECT DOORS & FRAMES (150 OF 622),Not Started,Remobilization and Out-of-Sequence Completion List - DD07-10-2025,,,,,,,,,,2026-03-02 08:00,2026-03-06 17:00,,,2026-03-02 08:00,2026-03-06 17:00,2025-09-22 08:00,2025-09-26 17:00,40,40,0
FAB1-DP-004,PAINT & PROTECT DOORS & FRAMES (200 OF 622),Not Started,Remobilization and Out-of-Sequence Completion List - DD07-10-2025,,,,,,,,,,2026-03-09 08:00,2026-03-13 17:00,,,2026-03-09 08:00,2026-03-13 17:00,2025-09-29 08:00,2025-10-03 17:00,40,40,0
FAB1-DP-005,PAINT & PROTECT DOORS & FRAMES (250 OF 622),Not Started,Remobilization and Out-of-Sequence Completion List - DD07-10-2025,,,,,,,,,,2026-03-16 08:00,2026-03-20 17:00,,,2026-03-16 08:00,2026-03-20 17:00,2025-10-06 08:00,2025-10-10 17:00,40,40,0
FAB1-DP-006,PAINT & PROTECT DOORS & FRAMES (300 OF 622),Not Started,Remobilization and Out-of-Sequence Completion List - DD07-10-2025,,,,,,,,,,2026-03-23 08:00,2026-03-27 17:00,,,2026-03-23 08:00,2026-03-27 17:00,2025-10-13 08:00,2025-10-17 17:00,40,40,0
FAB1-DP-007,PAINT & PROTECT DOORS & FRAMES (350 OF 622),Not Started,Remobilization and Out-of-Sequence Completion List - DD07-10-2025,,,,,,,,,,2026-03-30 08:00,2026-04-03 17:00,,,2026-03-30 08:00,2026-04-03 17:00,2025-10-20 08:00,2025-10-24 17:00,40,40,0
FAB1-DP-008,PAINT & PROTECT DOORS & FRAMES (400 OF 622),Not Started,Remobilization and Out-of-Sequence Completion List - DD07-10-2025,,,,,,,,,,2026-04-06 08:00,2026-04-10 17:00,,,2026-04-06 08:00,2026-04-10 17:00,2025-10-27 08:00,2025-10-31 17:00,40,40,0
FAB1-DP-009,PAINT & PROTECT DOORS & FRAMES (450 OF 622),Not Started,Remobilization and Out-of-Sequence Completion List - DD07-10-2025,,,,,,,,,,2026-04-13 08:00,2026-04-17 17:00,,,2026-04-13 08:00,2026-04-17 17:00,2025-11-03 08:00,2025-11-07 17:00,40,40,0
FAB1-DP-010,PAINT & PROTECT DOORS & FRAMES (500 OF 622),Not Started,Remobilization and Out-of-Sequence Completion List - DD07-10-2025,,,,,,,,,,2026-04-20 08:00,2026-04-24 17:00,,,2026-04-20 08:00,2026-04-24 17:00,2025-11-10 08:00,2025-11-14 17:00,40,40,0
FAB1-DP-011,PAINT & PROTECT DOORS & FRAMES (550 OF 622),Not Started,Remobilization and Out-of-Sequence Completion List - DD07-10-2025,,,,,,,,,,2026-04-27 08:00,2026-05-01 17:00,,,2026-04-27 08:00,2026-05-01 17:00,2025-11-17 08:00,2025-11-21 17:00,40,40,0
FAB1-DP-012,PAINT & PROTECT DOORS & FRAMES (600 OF 622),Not Started,Remobilization and Out-of-Sequence Completion List - DD07-10-2025,,,,,,,,,,2026-05-04 08:00,2026-05-08 17:00,,,2026-05-04 08:00,2026-05-08 17:00,2025-11-24 08:00,2025-11-28 17:00,40,40,0
FAB1-DP-013,PAINT & PROTECT DOORS & FRAMES (622 OF 622),Not Started,Remobilization and Out-of-Sequence Completion List - DD07-10-2025,,,,,,,,,,2026-05-11 08:00,2026-05-15 17:00,,,2026-05-11 08:00,2026-05-15 17:00,2025-12-01 08:00,2025-12-05 17:00,40,40,0
FAB1-ST18D-03,INSTALL DOOR FRAMES - FAB1-ST18D,Complete,Stair 18 - 4F - SUE-FAB1-ST18,,,,,,,,,,2025-09-23 08:00,2025-09-23 17:00,2025-09-23 08:00,2025-09-23 17:00,2025-11-20 17:00,2025-11-20 17:00,2025-11-24 08:00,2025-11-24 08:00,0,8,100
FAB1-ST18D-04,INSTALL DOOR & HARDWARE - FAB1-ST18D,Active,Stair 18 - 4F - SUE-FAB1-ST18,,,,,,,,,,2025-11-18 08:00,2025-11-24 17:00,2025-11-18 08:00,,2025-11-21 08:00,2025-11-27 17:00,2025-11-24 08:00,2025-11-28 17:00,40,40,0
FAB1-ST18D-05,PAINT & PROTECT DOORS & FRAMES - FAB1-ST18D,Not Started,Stair 18 - 4F - SUE-FAB1-ST18,,,,,,,,,,2026-02-16 08:00,2026-02-20 17:00,,,2026-02-16 08:00,2026-02-20 17:00,2025-12-01 08:00,2025-12-05 17:00,40,40,0
