task_id,proj_id,wbs_id,clndr_id,phys_complete_pct,rev_fdbk_flag,est_wt,lock_plan_flag,auto_compute_act_flag,complete_pct_type,task_type,duration_type,status_code,task_code,task_name,rsrc_id,total_float_hr_cnt,free_float_hr_cnt,remain_drtn_hr_cnt,act_work_qty,remain_work_qty,target_work_qty,target_drtn_hr_cnt,target_equip_qty,act_equip_qty,remain_equip_qty,cstr_date,act_start_date,act_end_date,late_start_date,late_end_date,expect_end_date,early_start_date,early_end_date,restart_date,reend_date,target_start_date,target_end_date,rem_late_start_date,rem_late_end_date,cstr_type,priority_type,suspend_date,resume_date,float_path,float_path_order,guid,tmpl_guid,cstr_date2,cstr_type2,driving_path_flag,act_this_per_work_qty,act_this_per_equip_qty,external_early_start_date,external_late_end_date,cbs_id,pre_pess_start_date,pre_pess_finish_date,post_pess_start_date,post_pess_finish_date,create_date,update_date,create_user,update_user,location_id,control_updates_flag,crt_path_num
100226070,122698,18114023,363246,0,N,1,N,N,CP_Drtn,TT_Task,DT_FixedDUR2,TK_Active,CN.BB51.ST.2040,TAPE  & FLOAT & SANDING - VESTIBULE 5 level 3-4 - GL 33 - STAIR 5 DELAYED DUE IOCC 1578,,-70,0,50,0,10,10,50,0,0,0,,2025-10-27 07:00,,2025-11-13 07:00,2025-11-19 17:00,,2025-11-24 07:00,2025-12-02 17:00,2025-11-24 07:00,2025-12-02 17:00,2025-10-27 07:00,2025-10-31 17:00,2025-11-13 07:00,2025-11-19 17:00,,PT_Normal,,,,,CG+V4iHTqEmxHk3orBtvBw,cKyhJkv60E+BzlB1ffFOTg,,,N,0,0,,,,,,,,2025-07-16 14:08,2025-11-20 21:42,ARAJSHEKAR,jleon,,N,
100226073,122698,18114023,363246,0,N,1,N,N,CP_Drtn,TT_Task,DT_FixedDUR2,TK_Active,CN.BB51.ST.2110,INSTALL - DOOR/HARDWARE/PAINT - GL 33 - STAIR 5 - K-L(),,-70,0,50,0,0,0,50,0,0,0,,2025-10-17 07:00,,2025-11-20 07:00,2025-11-26 17:00,,2025-12-03 07:00,2025-12-09 17:00,2025-12-03 07:00,2025-12-09 17:00,2025-10-17 07:00,2025-10-23 17:00,2025-11-20 07:00,2025-11-26 17:00,,PT_Normal,,,,,nayJlUNz5ESr6y9fNUyoOw,45iXy1k8aEOaGMKRjmuVgw,,,N,0,0,,,,,,,,2025-07-16 14:08,2025-11-20 21:42,ARAJSHEKAR,jleon,,N,
100226113,122698,18114023,363246,100,N,1,N,N,CP_Drtn,TT_Task,DT_FixedDUR2,TK_Active,CN.BB51.ST.2460,BERG - INSTALL DOOR FRAMES - GL 33 - STAIR 18 - C-D (Procurement),,-10,130,60,0,0,0,80,0,0,0,,2025-08-04 07:00,,2025-11-20 07:00,2025-12-01 17:00,,2025-11-21 07:00,2025-12-02 17:00,2025-11-21 07:00,2025-12-02 17:00,2025-09-04 07:00,2025-09-15 17:00,2025-11-20 07:00,2025-12-01 17:00,,PT_Normal,,,,,GvKrGzySVUiiX9lYJduLBQ,rYIC+w2sPEiUpB+ZBXRuSA,,,N,0,0,,,,,,,,2025-07-16 14:08,2025-11-20 21:42,ARAJSHEKAR,jleon,,N,
100226163,122698,18114023,363246,0,N,1,N,N,CP_Drtn,TT_Task,DT_FixedDUR2,TK_Active,CN.AB.AR.4860,IMPACT - SPRAY FIREPROOFING AT ADDED STRUCTURAL SUPPORT STEEL - GL 27.6-28 - B.5-C - L2 CEILING - PENDING IOCC APPROVAL,,70,1190,20,0,0,0,20,0,0,0,,2024-12-19 07:00,,2025-12-04 07:00,2025-12-05 17:00,,2025-11-21 07:00,2025-11-24 17:00,2025-11-21 07:00,2025-11-24 17:00,2024-12-19 07:00,2024-12-20 17:00,2025-12-04 07:00,2025-12-05 17:00,,PT_Normal,,,,,YKYN4teLg0WaKkYkZJs7qg,,,,N,0,0,,,,,,,,2025-07-16 14:08,2025-11-20 21:46,ARAJSHEKAR,jleon,,N,
100226298,122698,18114023,363246,0,N,1,N,N,CP_Drtn,TT_Task,DT_FixedDUR2,TK_Active,CN.SEB1.1221,IMPACT - INSTALL ADDITIONAL STRUCTURAL STEEL - GL 18.8-20 - D-C - L3,,30,1150,10,0,0,0,40,0,0,0,,2024-05-01 07:00,,2025-12-05 07:00,2025-12-05 17:00,,2025-12-02 07:00,2025-12-02 17:00,2025-12-02 07:00,2025-12-02 17:00,2024-05-17 07:00,2024-05-23 17:00,2025-12-05 07:00,2025-12-05 17:00,,PT_Normal,,,,,72tBHaHNNkClrMMj1M5Xkg,,,,N,0,0,,,,,,,,2025-07-16 14:08,2025-11-20 21:46,ARAJSHEKAR,jleon,,N,
100226300,122698,18114023,363246,0,N,1,N,N,CP_Drtn,TT_Task,DT_FixedDUR2,TK_Active,CN.SEB1.1241,IMPACT - GREENBERRY PIPE INSTALL WILL BLOCK WW STEEL INSTALLATION AREA - GL 18.8-20 - D-C - L3,,30,0,10,0,0,0,100,0,0,0,,2024-05-06 07:00,,2025-11-26 07:00,2025-11-26 17:00,,2025-11-21 07:00,2025-11-21 17:00,2025-11-21 07:00,2025-11-21 17:00,2024-06-28 07:00,2024-07-16 17:00,2025-11-26 07:00,2025-11-26 17:00,,PT_Normal,,,,,1EgfcrTVLEeAG0MJTqPMEA,,,,N,0,0,,,,,,,,2025-07-16 14:08,2025-11-20 21:42,ARAJSHEKAR,jleon,,N,
100226310,122698,18114023,363246,100,N,1,N,N,CP_Drtn,TT_Task,DT_FixedDUR2,TK_Active,CN.AB.AR.4830,IMPACT - SECAI RAMP IN CONFLICT WITH WALL - WAFER I/O - GL 25-31 - C-A - L3,,30,70,10,0,0,0,40,0,0,0,,2024-04-17 07:00,,2025-11-26 07:00,2025-11-26 17:00,,2025-11-21 07:00,2025-11-21 17:00,2025-11-21 07:00,2025-11-21 17:00,2024-04-17 07:00,2024-04-22 17:00,2025-11-26 07:00,2025-11-26 17:00,,PT_Normal,,,,,qUOkuzO9/0mMWhsuIuj+JQ,,,,N,0,0,,,,,,,,2025-07-16 14:08,2025-11-20 21:42,ARAJSHEKAR,jleon,,N,
100226544,122698,18114023,363246,0,N,1,N,N,CP_Drtn,TT_Task,DT_FixedDUR2,TK_Active,CN.SWA5.1810,IMPACT [C57] - SECAI LEAVEOUT FOR TEMP POWER / AWAIT SECAI TEMP POWER REMOVAL & TURNOVER AREA TO YATES - J-K - GL 3 - L2,,40,0,10,0,0,0,50,0,0,0,,2024-05-13 07:00,,2025-12-01 07:00,2025-12-01 17:00,,2025-11-21 07:00,2025-11-21 17:00,2025-11-21 07:00,2025-11-21 17:00,2024-06-07 07:00,2024-06-14 17:00,2025-12-01 07:00,2025-12-01 17:00,,PT_Normal,,,,,+Uk/HBabB0218bV6iJlXTg,,,,N,0,0,,,,,,,,2025-07-16 14:08,2025-11-20 21:42,ARAJSHEKAR,jleon,,N,
100226645,122698,18114023,363246,0,N,1,N,N,CP_Drtn,TT_Task,DT_FixedDUR2,TK_Active,CN.SEA5.9965,INSTALL EDGE OF SLAB - GL 3-13 - A LINE (SUPPORT EXTERIOR AREA) - L3,,80,1200,10,0,0,0,100,0,0,0,,2024-08-01 07:00,,2025-12-05 07:00,2025-12-05 17:00,,2025-11-21 07:00,2025-11-21 17:00,2025-11-21 07:00,2025-11-21 17:00,2024-08-09 07:00,2024-08-26 17:00,2025-12-05 07:00,2025-12-05 17:00,,PT_Normal,,,,,DyAUuR4lQEK08ryyODe4tQ,b+4plOgjH0Sm/cAdlBVxfg,,,N,0,0,,,,,,,,2025-07-16 14:08,2025-11-20 21:46,ARAJSHEKAR,jleon,,N,
100226646,122698,18114023,363246,0,N,1,N,N,CP_Drtn,TT_Task,DT_FixedDUR2,TK_Active,CN.SEB1.9320,INSTALL EDGE OF SLAB - GL 13-22 (19-24) - A LINE (SUPPORT EXTERIOR AREA) - L3,,80,1200,10,0,0,0,100,0,0,0,,2024-08-01 07:00,,2025-12-05 07:00,2025-12-05 17:00,,2025-11-21 07:00,2025-11-21 17:00,2025-11-21 07:00,2025-11-21 17:00,2024-08-29 07:00,2024-09-13 17:00,2025-12-05 07:00,2025-12-05 17:00,,PT_Normal,,,,,Z0WhLL+kVEC6papPl+HODQ,eNYJ/jvX9USPs2NbUj1BpQ,,,N,0,0,,,,,,,,2025-07-16 14:08,2025-11-20 21:46,ARAJSHEKAR,jleon,,N,
100226648,122698,18114023,363246,0,N,1,N,N,CP_Drtn,TT_Task,DT_FixedDUR2,TK_Active,CN.SEB1.9340,INSTALL EDGE OF SLAB - GL 3-12 - N LINE (SUPPORT EXTERIOR AREA) - L3,,80,1200,10,0,0,0,100,0,0,0,,2024-07-22 07:00,,2025-12-05 07:00,2025-12-05 17:00,,2025-11-21 07:00,2025-11-21 17:00,2025-11-21 07:00,2025-11-21 17:00,2024-08-09 07:00,2024-08-26 17:00,2025-12-05 07:00,2025-12-05 17:00,,PT_Normal,,,,,mpw2xOHf702Lx+y7Vdzsfg,BWZAnh2VY0KFRT5I9XGgLQ,,,N,0,0,,,,,,,,2025-07-16 14:08,2025-11-20 21:46,ARAJSHEKAR,jleon,,N,
100226857,122698,18114023,363246,0,N,1,N,N,CP_Drtn,TT_Task,DT_FixedDUR2,TK_Active,STAIR.1330,INSTALL & INSPECT STAIR #46 - FIZ - 1-M - LEVEL 02 (FINAL ANCHORING & INSPECTIONS),,-110,0,40,0,0,0,30,0,0,0,,2024-06-11 07:00,,2025-11-20 07:00,2025-11-25 17:00,,2025-12-09 07:00,2025-12-12 17:00,2025-12-09 07:00,2025-12-12 17:00,2024-10-14 07:00,2024-10-17 17:00,2025-11-20 07:00,2025-11-25 17:00,,PT_Normal,,,,,X+CSXH2EE0qk5OTDvREkDw,,,,N,0,0,,,,,,,,2025-07-16 14:08,2025-11-20 21:42,ARAJSHEKAR,jleon,,N,
100226887,122698,18114023,363246,0,N,1,N,N,CP_Drtn,TT_Task,DT_FixedDUR2,TK_Active,STAIR.1770,INSTALL & INSPECT STAIR #R10 - SUE - 18-C - LEVEL 04(ELEVATION ISSUE ) Pending drawings from Patriot SECAI TOOK OVER FA,,90,10,0,0,0,0,40,0,0,0,,2024-09-19 07:00,,2025-12-05 17:00,2025-12-05 17:00,,2025-11-21 07:00,2025-11-21 07:00,2025-11-21 07:00,2025-11-21 07:00,2024-09-19 07:00,2024-09-24 17:00,2025-12-05 17:00,2025-12-05 17:00,,PT_Normal,,,,,4NZXzXb3n0uss65RMbD38A,,,,N,0,0,,,,,,,,2025-07-16 14:08,2025-11-20 21:42,ARAJSHEKAR,jleon,,N,
100226891,122698,18114023,363246,100,N,1,N,N,CP_Drtn,TT_Task,DT_FixedDUR2,TK_Active,STAIR.1940,INSTALL & INSPECT STAIR #R30 - SUE - 31-A.5 - LEVEL 04 (ONLY PENDING LANDING),,-110,200,20,0,0,0,60,0,0,0,,2024-09-03 07:00,,2025-11-06 07:00,2025-11-07 17:00,,2025-11-21 07:00,2025-11-24 17:00,2025-11-21 07:00,2025-11-24 17:00,2024-09-06 07:00,2024-09-16 17:00,2025-11-06 07:00,2025-11-07 17:00,,PT_Normal,,,,,znH4ISIo/Umkefd26kQgFw,,,,N,0,0,,,,,,,,2025-07-16 14:08,2025-11-20 21:42,ARAJSHEKAR,jleon,,N,
100227027,122698,18114023,363246,0,N,1,N,N,CP_Drtn,TT_Task,DT_FixedDUR2,TK_Active,CN.SEB1.10000,INSTALL EDGE OF SLAB - GL 13-22 - A LINE (SUPPORT EXTERIOR AREA) - L2,,70,1190,20,0,0,0,70,0,0,0,,2024-08-01 07:00,,2025-12-04 07:00,2025-12-05 17:00,,2025-11-21 07:00,2025-11-24 17:00,2025-11-21 07:00,2025-11-24 17:00,2024-08-09 07:00,2024-08-20 17:00,2025-12-04 07:00,2025-12-05 17:00,,PT_Normal,,,,,+TLnm2UIfkqj2Mvd/OPFqQ,FH1mX+ZjtkSw6vguaMue0g,,,N,0,0,,,,,,,,2025-07-16 14:08,2025-11-20 21:46,ARAJSHEKAR,jleon,,N,
100227029,122698,18114023,363246,0,N,1,N,N,CP_Drtn,TT_Task,DT_FixedDUR2,TK_Active,CN.SEB1.10010,INSTALL EDGE OF SLAB - GL 3-12 - N LINE (SUPPORT EXTERIOR AREA) - L2,,80,1200,10,0,0,0,100,0,0,0,,2024-07-22 07:00,,2025-12-05 07:00,2025-12-05 17:00,,2025-11-21 07:00,2025-11-21 17:00,2025-11-21 07:00,2025-11-21 17:00,2024-08-19 07:00,2024-09-03 17:00,2025-12-05 07:00,2025-12-05 17:00,,PT_Normal,,,,,ttDnjjwniUuOLpTJq3Woaw,UvLP350jR0unvhglv0rvqw,,,N,0,0,,,,,,,,2025-07-16 14:08,2025-11-20 21:46,ARAJSHEKAR,jleon,,N,
100227031,122698,18114023,363246,0,N,1,N,N,CP_Drtn,TT_Task,DT_FixedDUR2,TK_Active,CN.SEB1.10030,INSTALL EDGE OF SLAB - GL 21-31 - N LINE (SUPPORT EXTERIOR AREA) - L2,,80,1200,10,0,0,0,100,0,0,0,,2024-10-21 07:00,,2025-12-05 07:00,2025-12-05 17:00,,2025-11-21 07:00,2025-11-21 17:00,2025-11-21 07:00,2025-11-21 17:00,2024-11-04 07:00,2024-11-19 17:00,2025-12-05 07:00,2025-12-05 17:00,,PT_Normal,,,,,IOgVrWAICU+aTnHPtW4acw,j5MzXE/KUkCQfJ/mTMUVVg,,,N,0,0,,,,,,,,2025-07-16 14:08,2025-11-20 21:46,ARAJSHEKAR,jleon,,N,
100227049,122698,18114023,363248,0,N,1,N,N,CP_Drtn,TT_Task,DT_FixedDUR2,TK_Active,CN.SWA5..3580,IMPACT - OUT OF SEQUENCE BY SECAI - INSTALL FLOORING/COATING - STAIR #3 - 18/L - ALL LEVELS,,-160,0,50,0,0,0,10,0,0,0,,2025-10-29 07:00,,2025-11-03 07:00,2025-11-07 17:00,,2025-11-21 07:00,2025-11-26 17:00,2025-11-21 07:00,2025-11-26 17:00,2025-12-12 07:00,2025-12-12 17:00,2025-11-03 07:00,2025-11-07 17:00,,PT_Normal,,,,,yRRVmIZ40UajeByZiS0zrA,hNJ5DL13fE+r1xnftzAMIA,,,N,0,0,,,,,,,,2025-07-16 14:08,2025-11-20 21:42,ARAJSHEKAR,jleon,,N,
100227066,122698,18114023,363246,0,N,1,N,N,CP_Drtn,TT_Task,DT_FixedDUR2,TK_Active,CN.SEB55280,INSTALL ACCESS LADDER - ELEVATOR 19,,49,1169,40,0,0,0,40,0,0,0,,2025-11-14 08:00,,2025-12-02 07:00,2025-12-05 17:00,,2025-11-21 08:00,2025-12-01 08:00,2025-11-21 08:00,2025-12-01 08:00,2025-11-14 08:00,2025-11-20 08:00,2025-12-02 07:00,2025-12-05 17:00,,PT_Normal,,,,,mHYBmJmnKEC476csxLNlbg,J16i+CEHQUCm6pblLB49jA,,,N,0,0,,,,,,,,2025-07-16 14:08,2025-11-20 21:46,ARAJSHEKAR,jleon,,N,
100227109,122698,18114023,363246,0,N,1,N,N,CP_Drtn,TT_Task,DT_FixedDUR2,TK_Active,CN.SWB5.10120,PREP & INSTALL PERMANENT DOOR & FRAME - MECHANICAL ROOM - FAB110504A - ELEVATOR 5,,70,0,20,0,0,0,250,0,0,0,,2024-10-01 07:00,,2025-12-04 07:00,2025-12-05 17:00,,2025-11-21 07:00,2025-11-24 17:00,2025-11-21 07:00,2025-11-24 17:00,2024-09-27 07:00,2024-11-08 17:00,2025-12-04 07:00,2025-12-05 17:00,,PT_Normal,,,,,d1Wupf7EVk+4sCyaYDbwUg,PPrFvojaFUOTSgu+6UA3vA,,,N,0,0,,,,,,,,2025-07-16 14:08,2025-11-20 21:42,ARAJSHEKAR,jleon,,N,
100227184,122698,18114023,363246,100,N,1,N,N,CP_Drtn,TT_Task,DT_FixedDUR2,TK_Active,CN.SEB1.10260,"PARAPET- FIREPROOFING, SHEATHING ,CELL SPRAY FOAM & COPING CAP - GL 19-22 - A LINE(SUPPORT EXTERIOR AREA) - L4",,40,0,0,0,0,0,70,0,0,0,,2024-10-22 07:00,,2025-12-05 17:00,2025-12-05 17:00,,2025-12-02 07:00,2025-12-02 07:00,2025-12-02 07:00,2025-12-02 07:00,2024-11-07 07:00,2024-11-18 17:00,2025-12-05 17:00,2025-12-05 17:00,,PT_Normal,,,,,CcKIawHlt02G+zT13vD5Lg,WMCIBePMxEu83Bg/UdvRQA,,,N,0,0,,,,,,,,2025-07-16 14:08,2025-11-20 21:42,ARAJSHEKAR,jleon,,N,
100227185,122698,18114023,363246,0,N,1,N,N,CP_Drtn,TT_Task,DT_FixedDUR2,TK_Active,CN.SEB1.10300,"PARAPET- FIREPROOFING, SHEATHING ,CELL SPRAY FOAM & COPING CAP - GL 28-31 - A LINE(SUPPORT EXTERIOR AREA) - L4",,40,340,30,0,0,0,70,0,0,0,,2024-10-17 07:00,,2025-12-03 07:00,2025-12-05 17:00,,2025-11-25 07:00,2025-12-02 07:00,2025-11-25 07:00,2025-12-02 07:00,2024-10-17 07:00,2024-10-28 17:00,2025-12-03 07:00,2025-12-05 17:00,,PT_Normal,,,,,qvPcx5XdcEKvGVwU83Pb0g,1DIa57ItMEGNKoei61NwHQ,,,N,0,0,,,,,,,,2025-07-16 14:08,2025-11-20 21:42,ARAJSHEKAR,jleon,,N,
100227188,122698,18114023,363246,0,N,1,N,N,CP_Drtn,TT_Task,DT_FixedDUR2,TK_Active,CN.SEB1.10280,"PARAPET- FIREPROOFING, SHEATHING CELL SPRAY FOAM & COPING CAP - GL 22-25 - A LINE(SUPPORT EXTERIOR AREA) - L4",,40,0,30,0,0,0,70,0,0,0,,2024-10-14 07:00,,2025-12-03 07:00,2025-12-05 17:00,,2025-11-25 07:00,2025-12-02 07:00,2025-11-25 07:00,2025-12-02 07:00,2024-10-21 07:00,2024-10-31 17:00,2025-12-03 07:00,2025-12-05 17:00,,PT_Normal,,,,,dOx4kJl5j0yakUVCPp11Jw,OQRpCpOB4EKUo8ESBugx8g,,,N,0,0,,,,,,,,2025-07-16 14:08,2025-11-20 21:42,ARAJSHEKAR,jleon,,N,
100227189,122698,18114023,363246,0,N,1,N,N,CP_Drtn,TT_Task,DT_FixedDUR2,TK_Active,CN.SEB1.10290,"PARAPET- FIREPROOFING, SHEATHING ,CELL SPRAY FOAM & COPING CAP - GL 25-28 - A LINE(SUPPORT EXTERIOR AREA) - L4",,40,0,30,0,0,0,70,0,0,0,,2024-10-15 07:00,,2025-12-03 07:00,2025-12-05 17:00,,2025-11-25 07:00,2025-12-02 07:00,2025-11-25 07:00,2025-12-02 07:00,2024-10-15 07:00,2024-10-25 17:00,2025-12-03 07:00,2025-12-05 17:00,,PT_Normal,,,,,gn9fE7lYfkWU5awfcnN/nw,dnxbLU6ZXUueqXmmHIpiGA,,,N,0,0,,,,,,,,2025-07-16 14:08,2025-11-20 21:42,ARAJSHEKAR,jleon,,N,
100227190,122698,18114023,363246,0,N,1,N,N,CP_Drtn,TT_Task,DT_FixedDUR2,TK_Active,CN.SEB1.10270,"PARAPET- FIREPROOFING, SHEATHING ,& CELL SPRAY FOAM - GL 16-19 - A LINE(SUPPORT EXTERIOR AREA) - L4",,40,0,30,0,0,0,70,0,0,0,,2024-10-22 07:00,,2025-12-03 07:00,2025-12-05 17:00,,2025-11-25 07:00,2025-12-01 17:00,2025-11-25 07:00,2025-12-01 17:00,2024-10-22 07:00,2024-11-01 17:00,2025-12-03 07:00,2025-12-05 17:00,,PT_Normal,,,,,JRBJAnDChkqahJj031JZAQ,X454PZNSw0WMcQXbd68SWw,,,N,0,0,,,,,,,,2025-07-16 14:08,2025-11-20 21:42,ARAJSHEKAR,jleon,,N,
100227273,122698,18114023,363246,0,N,1,N,N,CP_Drtn,TT_Task,DT_FixedDUR2,TK_Active,CN.SWB5.10510,IMPACT - DOOR OPENING FIX FOR SECAI ELEVATOR EQUIPMENT - MECHANICAL ROOM - FAB110504A - ELEVATOR 5,,80,10,10,0,0,0,250,0,0,0,,2024-10-01 07:00,,2025-12-05 07:00,2025-12-05 17:00,,2025-11-21 07:00,2025-11-21 17:00,2025-11-21 07:00,2025-11-21 17:00,2024-09-27 07:00,2024-11-08 17:00,2025-12-05 07:00,2025-12-05 17:00,,PT_Normal,,,,,4iqpTEaexEuCc9wAf3IvXg,FDqjYO/kyUGyn2FjdFTg1w,,,N,0,0,,,,,,,,2025-07-16 14:08,2025-11-20 21:42,ARAJSHEKAR,jleon,,N,
100227336,122698,18114023,363246,0,N,1,N,N,CP_Drtn,TT_Task,DT_FixedDUR2,TK_Active,CN.SWB5.2660,IMPACT - MC DEAN ELECTRICAL BOXES & MATERIAL IN THE WAY- ELEVATOR HALL,,40,0,10,0,0,0,40,0,0,0,,2024-11-22 07:00,,2025-12-01 07:00,2025-12-01 17:00,,2025-11-21 07:00,2025-11-21 17:00,2025-11-21 07:00,2025-11-21 17:00,2024-12-02 07:00,2024-12-06 17:00,2025-12-01 07:00,2025-12-01 17:00,,PT_Normal,,,,,/KGcuiTSGECVVc3hQ0A3Ww,,,,N,0,0,,,,,,,,2025-07-16 14:08,2025-11-20 21:42,ARAJSHEKAR,jleon,,N,
100227337,122698,18114023,363246,0,N,1,N,N,CP_Drtn,TT_Task,DT_FixedDUR2,TK_Active,CN.SWB5.10660,REMAINING TAPE & FINISH - ELEVATOR HALL/SW PENTHOUSE,,40,1160,0,0,0,0,40,0,0,0,,2025-01-06 07:00,,2025-12-05 17:00,2025-12-05 17:00,,2025-12-02 07:00,2025-12-02 07:00,2025-12-02 07:00,2025-12-02 07:00,2025-01-06 07:00,2025-01-09 17:00,2025-12-05 17:00,2025-12-05 17:00,,PT_Normal,,,,,DrlNZSXFYkqUWf25M2GVtw,55z1Cgfy8UmLCN9nbwHBIQ,,,N,0,0,,,,,,,,2025-07-16 14:08,2025-11-20 21:46,ARAJSHEKAR,jleon,,N,
100227347,122698,18114023,363246,0,N,1,N,N,CP_Drtn,TT_Task,DT_FixedDUR2,TK_Active,CN.SWA5.R.1180,INSTALL - ALL REMAINING FRAMING &  DRYWALLS - SUW - LEVEL 1,,40,0,0,0,0,0,300,0,0,0,,2025-05-05 07:00,,2025-12-05 17:00,2025-12-05 17:00,,2025-12-02 07:00,2025-12-02 07:00,2025-12-02 07:00,2025-12-02 07:00,2025-08-25 07:00,2025-10-06 17:00,2025-12-05 17:00,2025-12-05 17:00,,PT_Normal,,,,,bev/MsgeHUS8QnxwbCPfDA,,,,N,0,0,,,,,,,,2025-07-16 14:08,2025-11-20 21:42,ARAJSHEKAR,jleon,,N,
100227348,122698,18114023,363246,0,N,1,N,N,CP_Drtn,TT_Task,DT_FixedDUR2,TK_Active,CN.SWA5.9610,INSTALL- ALL REMAINING FRAMING & DRYWALL - SUW - LEVEL 2,,-40,0,0,0,0,0,300,0,0,0,,2025-05-05 07:00,,2025-11-14 17:00,2025-11-14 17:00,,2025-11-21 07:00,2025-11-21 07:00,2025-11-21 07:00,2025-11-21 07:00,2025-07-14 07:00,2025-08-22 17:00,2025-11-14 17:00,2025-11-14 17:00,,PT_Normal,,,,,TveTxVvn+06FBnNp1bbwqg,,,,N,0,0,,,,,,,,2025-07-16 14:08,2025-11-20 21:42,ARAJSHEKAR,jleon,,N,
100227355,122698,18114023,363246,0,N,1,N,N,CP_Drtn,TT_Task,DT_FixedDUR2,TK_Active,CN.AB.AR.7960,INSTALL -  ALL REMAINING FRAMING &  DRYWALL - SUE - LEVEL3,,-80,0,130,0,0,0,40,0,0,0,,2024-12-09 17:00,,2025-11-11 07:00,2025-12-01 17:00,,2025-11-21 07:00,2025-12-11 17:00,2025-11-21 07:00,2025-12-11 17:00,2024-12-16 07:00,2024-12-20 17:00,2025-11-11 07:00,2025-12-01 17:00,,PT_Normal,,,,,v1vAzqsqW02SKj1A04nW7g,,,,N,0,0,,,,,,,,2025-07-16 14:08,2025-11-20 21:42,ARAJSHEKAR,jleon,,N,
100227357,122698,18114023,363246,0,N,1,N,N,CP_Drtn,TT_Task,DT_FixedDUR2,TK_Active,CN.AB.AR.7260,INSTALL - ALL REMAINING FRAMING & DRYWALL - SUE - LEVEL 1,,-80,0,0,0,0,0,300,0,0,0,,2025-05-05 07:00,,2025-11-26 17:00,2025-11-26 17:00,,2025-12-11 07:00,2025-12-11 07:00,2025-12-11 07:00,2025-12-11 07:00,2025-08-01 07:00,2025-09-12 17:00,2025-11-26 17:00,2025-11-26 17:00,,PT_Normal,,,,,NrQgeGYvoE6K5yOf1bqynA,,,,N,0,0,,,,,,,,2025-07-16 14:08,2025-11-20 21:42,ARAJSHEKAR,jleon,,N,
100227358,122698,18114023,363246,0,N,1,N,N,CP_Drtn,TT_Task,DT_FixedDUR2,TK_Active,CN.SWB5.9530,INSTALL - ALL REMAINING FRAMING & DRYWALL - SUE - LEVEL 2,,-80,0,90,0,0,0,200,0,0,0,,2025-04-07 07:00,,2025-11-11 07:00,2025-11-21 17:00,,2025-11-21 07:00,2025-12-05 17:00,2025-11-21 07:00,2025-12-05 17:00,2025-07-03 07:00,2025-07-31 17:00,2025-11-11 07:00,2025-11-21 17:00,,PT_Normal,,,,,wrxau5CoFEiJRrtqmVfhww,,,,N,0,0,,,,,,,,2025-07-16 14:08,2025-11-20 21:42,ARAJSHEKAR,jleon,,N,
100227375,122698,18114023,363246,0,N,1,N,N,CP_Drtn,TT_Task,DT_FixedDUR2,TK_Active,CN.SWB5.1890,IMPACT - AXIOS TEMP WALL IN THE WAY - NW PENTHOUSE,,-40,0,10,0,0,0,40,0,0,0,,2025-05-19 07:00,,2025-11-17 07:00,2025-11-17 17:00,,2025-11-21 07:00,2025-11-21 17:00,2025-11-21 07:00,2025-11-21 17:00,2025-06-09 07:00,2025-06-12 17:00,2025-11-17 07:00,2025-11-17 17:00,,PT_Normal,,,,,ai1MSakn6UKeI2XBm2Qdtw,,,,N,0,0,,,,,,,,2025-07-16 14:08,2025-11-20 21:42,ARAJSHEKAR,jleon,,N,
100227386,122698,18114023,363246,0,N,1,N,N,CP_Drtn,TT_Task,DT_FixedDUR2,TK_Active,STAIR.2570,IMPACT - RFI 1629 RESPONSE CHANGES NEED - IOCC #1343 APPROVED & FAB #32-L & 32-B - SUW - 3 - LEVEL 4,,30,80,10,0,0,0,310,0,0,0,,2024-11-25 07:00,,2025-11-26 07:00,2025-11-26 17:00,,2025-11-21 07:00,2025-11-21 17:00,2025-11-21 07:00,2025-11-21 17:00,2025-05-05 07:00,2025-06-17 17:00,2025-11-26 07:00,2025-11-26 17:00,,PT_Normal,,,,,hTt0H26Vo0qqOaWwZX/n9g,twF5q8r6DEOoaX98p548ow,,,N,0,0,,,,,,,,2025-07-16 14:08,2025-11-20 21:42,ARAJSHEKAR,jleon,,N,
100227405,122698,18114023,363246,0,N,1,N,N,CP_Drtn,TT_Task,DT_FixedDUR2,TK_Active,CN.SEB1.10540,"IMPACT-CHIP CONCRETE, REPARE EDGE OF SLAB, SHEATHING & POUR BACK GL 6-26 - N LINE (SUPPORT EXTERIOR AREA) - L4",,40,0,40,0,0,0,300,0,0,0,,2025-02-25 07:00,,2025-12-02 07:00,2025-12-05 17:00,,2025-11-24 07:00,2025-12-01 17:00,2025-11-24 07:00,2025-12-01 17:00,2025-02-25 07:00,2025-04-07 17:00,2025-12-02 07:00,2025-12-05 17:00,,PT_Normal,,,,,MQG7HPgqjkeKvgqwRbpqnw,LRUhqxcJ9UKlX5KFQ02QAA,,,N,0,0,,,,,,,,2025-07-16 14:08,2025-11-20 21:42,ARAJSHEKAR,jleon,,N,
100227442,122698,18114023,363246,0,N,1,N,N,CP_Drtn,TT_Task,DT_FixedDUR2,TK_Active,CN.SEB1.10580,IMPACT - IOCC 1427 DUE TO CHANGE IN WORK CONDITIONS (SUPPORT EXTERIOR AREA) - L4,,40,0,0,0,0,0,300,0,0,0,,2025-02-25 07:00,,2025-11-26 17:00,2025-11-26 17:00,,2025-11-21 07:00,2025-11-21 07:00,2025-11-21 07:00,2025-11-21 07:00,2025-02-25 07:00,2025-04-07 17:00,2025-11-26 17:00,2025-11-26 17:00,,PT_Normal,,,,,U+zbOHmaLkKzdf4m9RdBXw,j5MyjQF00EWjHIuHSRsB6A,,,N,0,0,,,,,,,,2025-07-16 14:08,2025-11-20 21:42,ARAJSHEKAR,jleon,,N,
100227479,122698,18114023,363246,0,N,1,N,N,CP_Drtn,TT_Task,DT_FixedDUR2,TK_Active,CN.SEB1.10600,BRAZOS INSTALL CLIPS & PVC EDGE METAL INSTALL - GL 5-31 - A LINE - L4 ROOF,,60,0,10,0,0,0,50,0,0,0,,2025-09-01 07:00,,2025-12-03 07:00,2025-12-03 17:00,,2025-11-21 07:00,2025-11-21 17:00,2025-11-21 07:00,2025-11-21 17:00,2025-09-16 07:00,2025-09-22 17:00,2025-12-03 07:00,2025-12-03 17:00,,PT_Normal,,,,,f9qtFgGbokSej1zW94GNBg,izHbpAtnVEyGXGx0OB7RzA,,,N,0,0,,,,,,,,2025-07-16 14:08,2025-11-20 21:42,ARAJSHEKAR,jleon,,N,
100227511,122698,18114023,363246,0,N,1,N,N,CP_Drtn,TT_Task,DT_FixedDUR2,TK_Active,STAIR.2760,IMPACT - SCAFFOLD & PLYWOOD/TEMP ELECTRICAL PANEL NEED MOVED OUT - STAIR # 91 - FIZ - 1-F.2 - LEVEL 03 (IOCC SUB 02/05),,-160,150,150,0,0,0,300,0,0,0,,2024-12-18 07:00,,2025-10-30 07:00,2025-11-19 17:00,,2025-11-21 07:00,2025-12-15 17:00,2025-11-21 07:00,2025-12-15 17:00,2024-08-30 07:00,2024-10-21 17:00,2025-10-30 07:00,2025-11-19 17:00,,PT_Normal,,,,,rNLky8YYZ0q5vIhHljjosA,Dmy+Lu6uRkG54tzKcvgMzA,,,N,0,0,,,,,,,,2025-07-16 14:08,2025-11-20 21:42,ARAJSHEKAR,jleon,,N,
100227552,122698,18114023,363246,0,N,1,N,N,CP_Drtn,TT_Task,DT_FixedDUR2,TK_Active,CN.SWB3.6070,CANOPY - KOVACH PANEL INSTALL - GL 23-29 - N LINE,,-390,0,90,0,0,0,150,0,0,0,,2025-10-29 07:00,,2025-10-06 07:00,2025-10-16 17:00,,2025-12-02 07:00,2025-12-12 17:00,2025-12-02 07:00,2025-12-12 17:00,2025-11-03 07:00,2025-11-21 17:00,2025-10-06 07:00,2025-10-16 17:00,,PT_Normal,,,,,r5ZcN1mpA02N2Zmk8MXHpQ,afyaVf+/CEmGqEmIbX9UrA,,,N,0,0,,,,,,,,2025-07-16 14:08,2025-11-20 21:42,ARAJSHEKAR,jleon,,N,
100227553,122698,18114023,363246,0,N,1,N,N,CP_Drtn,TT_Task,DT_FixedDUR2,TK_Active,EJCN.SWB3.6060,CANOPY - GDA WATERPROOFING (SHEET) - GL 23-29 - N LINE  NW,,-390,0,50,0,0,0,50,0,0,0,,2025-10-27 07:00,,2025-09-29 07:00,2025-10-03 17:00,,2025-11-21 07:00,2025-12-01 17:00,2025-11-21 07:00,2025-12-01 17:00,2025-11-04 07:00,2025-11-10 17:00,2025-09-29 07:00,2025-10-03 17:00,,PT_Normal,,,,,oqgAMSmVmESkCmQkC+Qymw,1L3o9J+MpUy1Yc6FNcFVdQ,,,N,0,0,,,,,,,,2025-07-16 14:08,2025-11-20 21:42,ARAJSHEKAR,jleon,,N,
100227559,122698,18114023,363246,0,N,1,N,N,CP_Drtn,TT_Task,DT_FixedDUR2,TK_Active,CN.SWB3.6110,CANOPY - KOVACH PANEL - - FIELD MEASURE / DETAIL/ SHOP DWG /FAB / DEL - LEAD TIME - GL 19-16 - A 17,,-160,230,100,0,0,0,230,0,0,0,,2025-10-08 07:00,,2025-10-31 07:00,2025-11-13 17:00,,2025-11-24 07:00,2025-12-09 17:00,2025-11-24 07:00,2025-12-09 17:00,2025-10-21 07:00,2025-11-20 17:00,2025-10-31 07:00,2025-11-13 17:00,,PT_Normal,,,,,GzNkgHxIFkem9J21wDWs1Q,9lUlXTk85kq7IuPNVNb7aA,,,N,0,0,,,,,,,,2025-07-16 14:08,2025-11-20 21:42,ARAJSHEKAR,jleon,,N,
100227565,122698,18114023,363246,0,N,1,N,N,CP_Drtn,TT_Task,DT_FixedDUR2,TK_Active,CN.SWB3.6170,CANOPY - KOVACH PANEL - - FIELD MEASURE / DETAIL/ SHOP DWG /FAB / DEL - LEAD TIME - GL GL 27-33 - A LINE - NE,,-310,80,100,0,0,0,210,0,0,0,,2025-10-27 07:00,,2025-10-10 07:00,2025-10-23 17:00,,2025-11-24 07:00,2025-12-09 17:00,2025-11-24 07:00,2025-12-09 17:00,2025-10-21 07:00,2025-11-18 17:00,2025-10-10 07:00,2025-10-23 17:00,,PT_Normal,,,,,dFF3wwrrEESCADeO8rzKKg,7cw6Hc+7+0WQt3VTcysw9g,,,N,0,0,,,,,,,,2025-07-16 14:08,2025-11-20 21:42,ARAJSHEKAR,jleon,,N,
100227599,122698,18114023,363246,100,N,1,N,N,CP_Drtn,TT_Task,DT_FixedDUR2,TK_Active,INT.DH.2590,IMPACT - RFI 10662 - PATRIOT STAIR REMOVAL & INSTALL THRESHOLD - LVL 1 - DOOR FRAMES,,-10,0,10,0,0,0,100,0,0,0,,2025-09-17 07:00,,2025-11-20 07:00,2025-11-20 17:00,,2025-11-21 07:00,2025-11-21 17:00,2025-11-21 07:00,2025-11-21 17:00,2025-10-06 07:00,2025-10-17 17:00,2025-11-20 07:00,2025-11-20 17:00,,PT_Normal,,,,,HPc7N7bNjke1UTk2g/iedA,DLtmbsUHrEGcO5pAur/VNQ,,,N,0,0,,,,,,,,2025-07-16 14:08,2025-11-20 21:42,ARAJSHEKAR,jleon,,N,
100227751,122698,18114489,363246,100,N,1,N,N,CP_Drtn,TT_Task,DT_FixedDUR2,TK_Active,CN.FIZ1.2320,INSTALL FRAMES & DOORS - SUE - 62 - GL 8-15 & A-E - L3,,0,30,0,0,0,0,30,0,0,0,,2025-01-15 07:00,,2025-11-25 17:00,2025-11-25 17:00,,2025-11-26 07:00,2025-11-26 07:00,2025-11-26 07:00,2025-11-26 07:00,2025-02-14 07:00,2025-02-18 17:00,2025-11-25 17:00,2025-11-25 17:00,,PT_Normal,,,,,nU063FB9G0qvXBbVUowdxg,OCO1KDOOm0OUyWOWgEEFcA,,,N,0,0,,,,,,,,2025-07-16 14:08,2025-11-20 21:42,ARAJSHEKAR,jleon,,N,
100227753,122698,18114489,363246,0,N,1,N,N,CP_Drtn,TT_Task,DT_FixedDUR2,TK_Active,CN.FIZ1.2350,INSTALL FRAMES & DOORS - SUE - 61 - GL 1-8 & A-E - L3,,-90,1030,20,0,0,0,30,0,0,0,,2025-01-16 00:00,,2025-12-04 07:00,2025-12-05 17:00,,2025-12-17 07:00,2025-12-18 17:00,2025-12-17 07:00,2025-12-18 17:00,2025-02-17 07:00,2025-02-19 17:00,2025-12-04 07:00,2025-12-05 17:00,,PT_Normal,,,,,TIdQopEZVEKBUgbjgNY1Cg,jDWutF5340exJVt/O2Pu1g,,,N,0,0,,,,,,,,2025-07-16 14:08,2025-11-20 21:46,ARAJSHEKAR,jleon,,N,
100227755,122698,18114489,363246,0,N,1,N,N,CP_Drtn,TT_Task,DT_FixedDUR2,TK_Active,CN.FIZ1.2380,INSTALL FRAMES & DOORS - SUE - 63 - GL 15-21 & A-E - L3,,70,1190,20,0,0,0,30,0,0,0,,2025-01-29 07:00,,2025-12-04 07:00,2025-12-05 17:00,,2025-11-21 07:00,2025-11-24 17:00,2025-11-21 07:00,2025-11-24 17:00,2025-02-12 07:00,2025-02-14 17:00,2025-12-04 07:00,2025-12-05 17:00,,PT_Normal,,,,,0lA8kJS0dk2Y/GxeEnIW4Q,jDWutF5340exJVt/O2Pu1g,,,N,0,0,,,,,,,,2025-07-16 14:08,2025-11-20 21:46,ARAJSHEKAR,jleon,,N,
100227757,122698,18114489,363246,0,N,1,N,N,CP_Drtn,TT_Task,DT_FixedDUR2,TK_Active,CN.FIZ1.2410,INSTALL FRAMES & DOORS - SUE - 64 - GL 21-27 & A-E - L3,,70,1190,20,0,0,0,30,0,0,0,,2025-01-29 07:00,,2025-12-04 07:00,2025-12-05 17:00,,2025-11-21 07:00,2025-11-24 17:00,2025-11-21 07:00,2025-11-24 17:00,2025-02-10 07:00,2025-02-12 17:00,2025-12-04 07:00,2025-12-05 17:00,,PT_Normal,,,,,pZBuZVvvb0uH93mVovealw,Yyd7i/m4zEqt0tHjfxJCrQ,,,N,0,0,,,,,,,,2025-07-16 14:08,2025-11-20 21:46,ARAJSHEKAR,jleon,,N,
100227759,122698,18114489,363246,0,N,1,N,N,CP_Drtn,TT_Task,DT_FixedDUR2,TK_Active,CN.FIZ1.2440,INSTALL FRAMES & DOORS - SUE - 65 - GL 27-33 & A-E - L3,,60,1180,20,0,0,0,30,0,0,0,,2025-01-16 07:00,,2025-12-04 07:00,2025-12-05 17:00,,2025-11-24 07:00,2025-11-25 17:00,2025-11-24 07:00,2025-11-25 17:00,2025-02-04 07:00,2025-02-06 17:00,2025-12-04 07:00,2025-12-05 17:00,,PT_Normal,,,,,2g4uQ00IjECf2oluQ+MngA,T+Ph4UM9n0CHCF8HL4TBJQ,,,N,0,0,,,,,,,,2025-07-16 14:08,2025-11-20 21:46,ARAJSHEKAR,jleon,,N,
100227763,122698,18114489,363246,0,N,1,N,N,CP_Drtn,TT_Task,DT_FixedDUR2,TK_Active,CN.FIZ1.2900,INSTALL FRAMES & DOORS - SUE - 62 - GL 8-15 & A-E - L2,,-20,0,30,0,0,0,30,0,0,0,,2025-04-28 07:00,,2025-12-01 07:00,2025-12-03 17:00,,2025-12-03 07:00,2025-12-05 17:00,2025-12-03 07:00,2025-12-05 17:00,2025-08-25 07:00,2025-08-27 17:00,2025-12-01 07:00,2025-12-03 17:00,,PT_Normal,,,,,6GF8eAWYdEK29IgQIE76QA,jDWutF5340exJVt/O2Pu1g,,,N,0,0,,,,,,,,2025-07-16 14:08,2025-11-20 21:42,ARAJSHEKAR,jleon,,N,
100227764,122698,18114489,363246,0,N,1,N,N,CP_Drtn,TT_Task,DT_FixedDUR2,TK_Active,CN.FIZ1.2940,INSTALL FRAMES & DOORS - SUE - 61 - GL 1-8 & A-E - L2,,-20,1100,30,0,0,0,30,0,0,0,,2025-02-25 07:00,,2025-12-03 07:00,2025-12-05 17:00,,2025-12-05 07:00,2025-12-09 17:00,2025-12-05 07:00,2025-12-09 17:00,2025-08-27 07:00,2025-08-29 17:00,2025-12-03 07:00,2025-12-05 17:00,,PT_Normal,,,,,7gkVb/x/TUGlGbJhqV5Esw,LbDHBxWJz0eAoZNr75EBEg,,,N,0,0,,,,,,,,2025-07-16 14:08,2025-11-20 21:46,ARAJSHEKAR,jleon,,N,
100227765,122698,18114489,363246,0,N,1,N,N,CP_Drtn,TT_Task,DT_FixedDUR2,TK_Active,CN.FIZ1.2870,INSTALL FRAMES & DOORS - SUE - 63 - GL 15-21 & A-E - L2,,-20,0,30,0,0,0,30,0,0,0,,2025-03-28 07:00,,2025-11-25 07:00,2025-12-01 17:00,,2025-12-01 07:00,2025-12-03 17:00,2025-12-01 07:00,2025-12-03 17:00,2025-08-21 07:00,2025-08-25 17:00,2025-11-25 07:00,2025-12-01 17:00,,PT_Normal,,,,,T8QPlCfpb0WFmK+CqZET/A,Yyd7i/m4zEqt0tHjfxJCrQ,,,N,0,0,,,,,,,,2025-07-16 14:08,2025-11-20 21:42,ARAJSHEKAR,jleon,,N,
100227766,122698,18114489,363246,0,N,1,N,N,CP_Drtn,TT_Task,DT_FixedDUR2,TK_Active,CN.FIZ1.2830,INSTALL FRAMES & DOORS - SUE - 64 - GL 21-27 & A-E - L2,,-20,0,30,0,0,0,30,0,0,0,,2025-03-28 07:00,,2025-11-21 07:00,2025-11-25 17:00,,2025-11-25 07:00,2025-12-01 17:00,2025-11-25 07:00,2025-12-01 17:00,2025-08-19 07:00,2025-08-21 17:00,2025-11-21 07:00,2025-11-25 17:00,,PT_Normal,,,,,KBL9GzUexkCjz98PoEU3Xw,T+Ph4UM9n0CHCF8HL4TBJQ,,,N,0,0,,,,,,,,2025-07-16 14:08,2025-11-20 21:42,ARAJSHEKAR,jleon,,N,
100227767,122698,18114489,363246,0,N,1,N,N,CP_Drtn,TT_Task,DT_FixedDUR2,TK_Active,CN.FIZ1.2790,INSTALL FRAMES & DOORS - SUE - 65 - GL 27-33 & A-E - L2,,-20,0,30,0,0,0,30,0,0,0,,2025-02-26 07:00,,2025-11-19 07:00,2025-11-21 17:00,,2025-11-21 07:00,2025-11-25 17:00,2025-11-21 07:00,2025-11-25 17:00,2025-08-18 07:00,2025-08-20 17:00,2025-11-19 07:00,2025-11-21 17:00,,PT_Normal,,,,,7ShrxMQvoECLhQgG/j5OEA,48jXMP4hDEKnIZrpxaMOzg,,,N,0,0,,,,,,,,2025-07-16 14:08,2025-11-20 21:42,ARAJSHEKAR,jleon,,N,
100227770,122698,18114489,363246,0,N,1,N,N,CP_Drtn,TT_Task,DT_FixedDUR2,TK_Active,CN.FIZ1.3140,INSTALL FRAMES & DOORS - SUE - 62 - GL 8-15 & A-E - L1,,60,1180,30,0,0,0,30,0,0,0,,2025-03-26 07:00,,2025-12-03 07:00,2025-12-05 17:00,,2025-11-21 07:00,2025-11-25 17:00,2025-11-21 07:00,2025-11-25 17:00,2025-08-19 07:00,2025-08-21 17:00,2025-12-03 07:00,2025-12-05 17:00,,PT_Normal,,,,,hVul5B3BYEm/Q1u2//doeQ,jDWutF5340exJVt/O2Pu1g,,,N,0,0,,,,,,,,2025-07-16 14:08,2025-11-20 21:46,ARAJSHEKAR,jleon,,N,
100227771,122698,18114489,363246,0,N,1,N,N,CP_Drtn,TT_Task,DT_FixedDUR2,TK_Active,CN.FIZ1.3180,INSTALL FRAMES & DOORS - SUE - 61 - GL 1-8 & A-E - L1,,60,1180,30,0,0,0,30,0,0,0,,2025-03-17 07:00,,2025-12-03 07:00,2025-12-05 17:00,,2025-11-21 07:00,2025-11-25 17:00,2025-11-21 07:00,2025-11-25 17:00,2025-08-19 07:00,2025-08-21 17:00,2025-12-03 07:00,2025-12-05 17:00,,PT_Normal,,,,,NQHMo4rTqk2jxi6w/thFow,LbDHBxWJz0eAoZNr75EBEg,,,N,0,0,,,,,,,,2025-07-16 14:08,2025-11-20 21:46,ARAJSHEKAR,jleon,,N,
100227772,122698,18114489,363246,0,N,1,N,N,CP_Drtn,TT_Task,DT_FixedDUR2,TK_Active,CN.FIZ1.3110,INSTALL FRAMES & DOORS - SUE - 63 - GL 15-21 & A-E - L1,,60,1180,30,0,0,0,30,0,0,0,,2025-03-21 07:00,,2025-12-03 07:00,2025-12-05 17:00,,2025-11-21 07:00,2025-11-25 17:00,2025-11-21 07:00,2025-11-25 17:00,2025-08-19 07:00,2025-08-21 17:00,2025-12-03 07:00,2025-12-05 17:00,,PT_Normal,,,,,M2fAyspCW0qKb5O6Tp7kEA,Yyd7i/m4zEqt0tHjfxJCrQ,,,N,0,0,,,,,,,,2025-07-16 14:08,2025-11-20 21:46,ARAJSHEKAR,jleon,,N,
100227773,122698,18114489,363246,0,N,1,N,N,CP_Drtn,TT_Task,DT_FixedDUR2,TK_Active,CN.FIZ1.3070,INSTALL FRAMES & DOORS - SUE - 64 - GL 21-27 & A-E - L1,,0,0,30,0,0,0,30,0,0,0,,2025-04-18 07:00,,2025-11-21 07:00,2025-11-25 17:00,,2025-11-21 07:00,2025-11-25 17:00,2025-11-21 07:00,2025-11-25 17:00,2025-08-18 07:00,2025-08-20 17:00,2025-11-21 07:00,2025-11-25 17:00,,PT_Normal,,,,,dgzV+KKhhUS7Rk1SQ0nvkA,T+Ph4UM9n0CHCF8HL4TBJQ,,,N,0,0,,,,,,,,2025-07-16 14:08,2025-11-20 21:42,ARAJSHEKAR,jleon,,N,
100227774,122698,18114489,363246,0,N,1,N,N,CP_Drtn,TT_Task,DT_FixedDUR2,TK_Active,CN.FIZ1.3030,INSTALL FRAMES & DOORS - SUE - 65 - GL 27-33 & A-E - L1,,60,1180,30,0,0,0,30,0,0,0,,2025-03-14 07:00,,2025-12-03 07:00,2025-12-05 17:00,,2025-11-21 07:00,2025-11-25 17:00,2025-11-21 07:00,2025-11-25 17:00,2025-08-21 07:00,2025-08-25 17:00,2025-12-03 07:00,2025-12-05 17:00,,PT_Normal,,,,,jBrtL/tlEkKgwoI6aoKLqw,48jXMP4hDEKnIZrpxaMOzg,,,N,0,0,,,,,,,,2025-07-16 14:08,2025-11-20 21:46,ARAJSHEKAR,jleon,,N,
100227776,122698,18114489,363246,0,N,1,N,N,CP_Drtn,TT_Task,DT_FixedDUR2,TK_Active,CN.FIZ1.3230,INSTALL FRAMES & DOORS - SUW - 01 - GL 1-8 & J-N - L3,,70,1190,20,0,0,0,30,0,0,0,,2025-01-08 07:00,,2025-12-04 07:00,2025-12-05 17:00,,2025-11-21 07:00,2025-11-24 17:00,2025-11-21 07:00,2025-11-24 17:00,2025-02-19 07:00,2025-02-21 17:00,2025-12-04 07:00,2025-12-05 17:00,,PT_Normal,,,,,uqN/N9Kg6EWOuxPejuDNDA,xZL8964qTEWCuPmWY6C4pg,,,N,0,0,,,,,,,,2025-07-16 14:08,2025-11-20 21:46,ARAJSHEKAR,jleon,,N,
100227778,122698,18114489,363246,0,N,1,N,N,CP_Drtn,TT_Task,DT_FixedDUR2,TK_Active,CN.FIZ1.3270,INSTALL FRAMES & DOORS - SUW - 02 - GL 8-15 & J-N - L3,,70,1190,20,0,0,0,30,0,0,0,,2025-01-17 07:00,,2025-12-04 07:00,2025-12-05 17:00,,2025-11-21 07:00,2025-11-24 17:00,2025-11-21 07:00,2025-11-24 17:00,2025-02-21 07:00,2025-02-25 17:00,2025-12-04 07:00,2025-12-05 17:00,,PT_Normal,,,,,My2Av7Qaxkey4vgZ/I0meA,ayAN0BOmTEOAJSQdEhTKQw,,,N,0,0,,,,,,,,2025-07-16 14:08,2025-11-20 21:46,ARAJSHEKAR,jleon,,N,
100227780,122698,18114489,363246,100,N,1,N,N,CP_Drtn,TT_Task,DT_FixedDUR2,TK_Active,CN.FIZ1.3310,INSTALL FRAMES - SUW - 03 - GL 15-21 & J-N - L3,,90,1210,0,0,0,0,30,0,0,0,,2025-01-21 07:00,,2025-12-05 17:00,2025-12-05 17:00,,2025-11-21 07:00,2025-11-21 07:00,2025-11-21 07:00,2025-11-21 07:00,2025-02-24 07:00,2025-02-26 17:00,2025-12-05 17:00,2025-12-05 17:00,,PT_Normal,,,,,P7FivcT6gkiffYi+fhiRgw,ayAN0BOmTEOAJSQdEhTKQw,,,N,0,0,,,,,,,,2025-07-16 14:08,2025-11-20 21:46,ARAJSHEKAR,jleon,,N,
100227782,122698,18114489,363246,100,N,1,N,N,CP_Drtn,TT_Task,DT_FixedDUR2,TK_Active,CN.FIZ1.3350,INSTALL FRAMES & DOORS - SUW - 04 - GL 21-27 & J-N - L3,,90,1210,0,0,0,0,30,0,0,0,,2025-01-22 07:00,,2025-12-05 17:00,2025-12-05 17:00,,2025-11-21 07:00,2025-11-21 07:00,2025-11-21 07:00,2025-11-21 07:00,2025-02-26 07:00,2025-02-28 17:00,2025-12-05 17:00,2025-12-05 17:00,,PT_Normal,,,,,Qpx3h7CYR06EKiaH9HAkZA,h5Yr9Z1odkOdRb4Dccp2gg,,,N,0,0,,,,,,,,2025-07-16 14:08,2025-11-20 21:46,ARAJSHEKAR,jleon,,N,
100227784,122698,18114489,363246,0,N,1,N,N,CP_Drtn,TT_Task,DT_FixedDUR2,TK_Active,CN.FIZ1.3390,INSTALL FRAMES & DOORSS - SUW - 05 - GL 27-33 & J-N - L3,,30,1150,20,0,0,0,30,0,0,0,,2025-01-20 07:00,,2025-12-04 07:00,2025-12-05 17:00,,2025-12-01 07:00,2025-12-02 17:00,2025-12-01 07:00,2025-12-02 17:00,2025-02-28 07:00,2025-03-04 17:00,2025-12-04 07:00,2025-12-05 17:00,,PT_Normal,,,,,B0YDiiRCH06Th81j8X5lbQ,e51TuX+qNEKIAKUx+BxBsA,,,N,0,0,,,,,,,,2025-07-16 14:08,2025-11-20 21:46,ARAJSHEKAR,jleon,,N,
100227788,122698,18114489,363246,0,N,1,N,N,CP_Drtn,TT_Task,DT_FixedDUR2,TK_Active,CN.FIZ1.3510,INSTALL FRAMES & DOORS - SUW - 01 - GL 1-8 & J-N - L2,,60,1180,30,0,0,0,30,0,0,0,,2025-02-03 07:00,,2025-12-03 07:00,2025-12-05 17:00,,2025-11-21 07:00,2025-11-25 17:00,2025-11-21 07:00,2025-11-25 17:00,2025-01-16 07:00,2025-01-20 17:00,2025-12-03 07:00,2025-12-05 17:00,,PT_Normal,,,,,xsvCe8ziFEOrCR4IV1rLCw,ayAN0BOmTEOAJSQdEhTKQw,,,N,0,0,,,,,,,,2025-07-16 14:08,2025-11-20 21:46,ARAJSHEKAR,jleon,,N,
100227789,122698,18114489,363246,0,N,1,N,N,CP_Drtn,TT_Task,DT_FixedDUR2,TK_Active,CN.FIZ1.3470,INSTALL FRAMES & DOORS - SUW - 02 - GL 8-15 & J-N - L2,,60,1180,30,0,0,0,30,0,0,0,,2025-02-18 07:00,,2025-12-03 07:00,2025-12-05 17:00,,2025-11-21 07:00,2025-11-25 17:00,2025-11-21 07:00,2025-11-25 17:00,2025-02-18 07:00,2025-02-20 17:00,2025-12-03 07:00,2025-12-05 17:00,,PT_Normal,,,,,GuvTkiQ6GkCSlT3EKyZrXg,Gv20S+oeWECZJW87WonwCQ,,,N,0,0,,,,,,,,2025-07-16 14:08,2025-11-20 21:46,ARAJSHEKAR,jleon,,N,
100227790,122698,18114489,363246,0,N,1,N,N,CP_Drtn,TT_Task,DT_FixedDUR2,TK_Active,CN.FIZ1.3540,INSTALL FRAMES & DOORS - SUW - 03 - GL 15-21 & J-N - L2,,60,1180,30,0,0,0,30,0,0,0,,2025-02-19 07:00,,2025-12-03 07:00,2025-12-05 17:00,,2025-11-21 07:00,2025-11-25 17:00,2025-11-21 07:00,2025-11-25 17:00,2025-02-19 07:00,2025-02-21 17:00,2025-12-03 07:00,2025-12-05 17:00,,PT_Normal,,,,,VSdDzVIxO06omajCdIipyg,h5Yr9Z1odkOdRb4Dccp2gg,,,N,0,0,,,,,,,,2025-07-16 14:08,2025-11-20 21:46,ARAJSHEKAR,jleon,,N,
100227791,122698,18114489,363246,0,N,1,N,N,CP_Drtn,TT_Task,DT_FixedDUR2,TK_Active,CN.FIZ1.3580,INSTALL FRAMES & DOORS - SUW - 04 - GL 21-27 & J-N - L2,,60,1180,30,0,0,0,30,0,0,0,,2025-04-01 07:00,,2025-12-03 07:00,2025-12-05 17:00,,2025-11-21 07:00,2025-11-25 17:00,2025-11-21 07:00,2025-11-25 17:00,2025-04-01 07:00,2025-04-03 17:00,2025-12-03 07:00,2025-12-05 17:00,,PT_Normal,,,,,kBddakWCnkigHpyUyAP5Jw,e51TuX+qNEKIAKUx+BxBsA,,,N,0,0,,,,,,,,2025-07-16 14:08,2025-11-20 21:46,ARAJSHEKAR,jleon,,N,
100227792,122698,18114489,363246,0,N,1,N,N,CP_Drtn,TT_Task,DT_FixedDUR2,TK_Active,CN.FIZ1.3620,INSTALL FRAMES & DOORS - SUW - 05 - GL 27-33 & J-N - L2,,60,1180,30,0,0,0,30,0,0,0,,2025-02-18 07:00,,2025-12-03 07:00,2025-12-05 17:00,,2025-11-21 07:00,2025-11-25 17:00,2025-11-21 07:00,2025-11-25 17:00,2025-02-18 07:00,2025-02-20 17:00,2025-12-03 07:00,2025-12-05 17:00,,PT_Normal,,,,,9jwchfDbbkatk8CUFAVl9w,BV3aOsuve0K0lIT0oVf0+g,,,N,0,0,,,,,,,,2025-07-16 14:08,2025-11-20 21:46,ARAJSHEKAR,jleon,,N,
100227794,122698,18114489,363246,0,N,1,N,N,CP_Drtn,TT_Task,DT_FixedDUR2,TK_Active,CN.FIZ1.3760,INSTALL FRAMES & DOORS - SUW - 01 - GL 1-8 & J-N - L1,,60,1180,30,0,0,0,30,0,0,0,,2025-03-10 07:00,,2025-12-03 07:00,2025-12-05 17:00,,2025-11-21 07:00,2025-11-25 17:00,2025-11-21 07:00,2025-11-25 17:00,2025-03-10 07:00,2025-03-12 17:00,2025-12-03 07:00,2025-12-05 17:00,,PT_Normal,,,,,pZ7VvD2/0Uix8V1ASgdNfw,l40TGjEtdESYy27jj7+FcQ,,,N,0,0,,,,,,,,2025-07-16 14:08,2025-11-20 21:46,ARAJSHEKAR,jleon,,N,
100227795,122698,18114489,363246,0,N,1,N,N,CP_Drtn,TT_Task,DT_FixedDUR2,TK_Active,CN.FIZ1.3720,INSTALL FRAMES & DOORS - SUW - 02 - GL 8-15 & J-N - L1,,60,1180,30,0,0,0,30,0,0,0,,2025-07-10 07:00,,2025-12-03 07:00,2025-12-05 17:00,,2025-11-21 07:00,2025-11-25 17:00,2025-11-21 07:00,2025-11-25 17:00,2025-07-02 07:00,2025-07-07 17:00,2025-12-03 07:00,2025-12-05 17:00,,PT_Normal,,,,,fFhol2UTuk6RZISPEdSrNw,7i0INt5ooE2WAYceBRtTIQ,,,N,0,0,,,,,,,,2025-07-16 14:08,2025-11-20 21:46,ARAJSHEKAR,jleon,,N,
100227796,122698,18114489,363246,0,N,1,N,N,CP_Drtn,TT_Task,DT_FixedDUR2,TK_Active,CN.FIZ1.3790,INSTALL FRAMES & DOORS - SUW - 03 - GL 15-21 & J-N - L1,,60,1180,30,0,0,0,30,0,0,0,,2025-04-03 07:00,,2025-12-03 07:00,2025-12-05 17:00,,2025-11-21 07:00,2025-11-25 17:00,2025-11-21 07:00,2025-11-25 17:00,2025-04-03 07:00,2025-04-07 17:00,2025-12-03 07:00,2025-12-05 17:00,,PT_Normal,,,,,OWHwCqjLnEeMWVyLs6qjPw,PNfsLtvFKEO5+rxloAd1rw,,,N,0,0,,,,,,,,2025-07-16 14:08,2025-11-20 21:46,ARAJSHEKAR,jleon,,N,
100227798,122698,18114489,363246,0,N,1,N,N,CP_Drtn,TT_Task,DT_FixedDUR2,TK_Active,CN.FIZ1.3870,INSTALL FRAMES & DOORS - SUW - 05 - GL 27-31 & J-N - L1,,60,1180,30,0,0,0,30,0,0,0,,2025-03-17 07:00,,2025-12-03 07:00,2025-12-05 17:00,,2025-11-21 07:00,2025-11-25 17:00,2025-11-21 07:00,2025-11-25 17:00,2025-03-17 07:00,2025-03-19 17:00,2025-12-03 07:00,2025-12-05 17:00,,PT_Normal,,,,,Jyq0UWhTHUKe6nOSmMHimw,ko0wKJuTLUaNGhOAyvIwGg,,,N,0,0,,,,,,,,2025-07-16 14:08,2025-11-20 21:46,ARAJSHEKAR,jleon,,N,
100227809,122698,18114489,363246,0,N,1,N,N,CP_Drtn,TT_Task,DT_FixedDUR2,TK_Active,CN.FIZ1.4550,IMPACT - PATRIOT HEADER FIX & ALPHA PAINT CLADDING STEEL - SUE - 61 - GL 1-8 & A-E - L1,,-50,10,0,0,0,0,20,0,0,0,,2025-05-26 07:00,,2025-11-13 17:00,2025-11-13 17:00,,2025-11-21 07:00,2025-11-21 07:00,2025-11-21 07:00,2025-11-21 07:00,2025-08-15 07:00,2025-08-18 17:00,2025-11-13 17:00,2025-11-13 17:00,,PT_Normal,,,,,knH2UTBTL0KXOJ9ZHPxtLQ,W5R9T8r950WqYgc44andFQ,,,N,0,0,,,,,,,,2025-07-16 14:08,2025-11-20 21:42,ARAJSHEKAR,jleon,,N,
100227826,122698,18114489,363246,0,N,1,N,N,CP_Drtn,TT_Task,DT_FixedDUR2,TK_Active,CN.FIZ1.4930,INSTALL FRAMES & DOORS- SUE - 62 - GL 8-15 - A - L1 - Ext.,,-60,0,30,0,0,0,30,0,0,0,,2025-06-23 07:00,,2025-11-18 07:00,2025-11-20 17:00,,2025-11-26 07:00,2025-12-02 17:00,2025-11-26 07:00,2025-12-02 17:00,2025-08-28 07:00,2025-09-02 17:00,2025-11-18 07:00,2025-11-20 17:00,,PT_Normal,,,,,r5In+bNk80qFqqRvgaNIUA,PdOekJ64vEua6ch/DPZQYA,,,N,0,0,,,,,,,,2025-07-16 14:08,2025-11-20 21:42,ARAJSHEKAR,jleon,,N,
100227828,122698,18114489,363246,0,N,1,N,N,CP_Drtn,TT_Task,DT_FixedDUR2,TK_Active,CN.FIZ1.4990,INSTALL FRAMES & DOORS - SUE - 61 - GL 1-8 - A - L1 - Ext.,,-60,0,30,0,0,0,30,0,0,0,,2025-07-30 07:00,,2025-11-18 07:00,2025-11-20 17:00,,2025-11-26 07:00,2025-12-02 17:00,2025-11-26 07:00,2025-12-02 17:00,2025-09-03 07:00,2025-09-05 17:00,2025-11-18 07:00,2025-11-20 17:00,,PT_Normal,,,,,uIVk7RjiSEC6t5XchIFKQw,o8V4m/p+x0u3B1puJIA6DQ,,,N,0,0,,,,,,,,2025-07-16 14:08,2025-11-20 21:42,ARAJSHEKAR,jleon,,N,
100227832,122698,18114489,363246,0,N,1,N,N,CP_Drtn,TT_Task,DT_FixedDUR2,TK_Active,CN.FIZ1.4820,INSTALL FRAMES & DOORS - SUE - 64 - GL 21-27 - A - L1 - Ext.,,-60,0,0,0,0,0,30,0,0,0,,2025-06-09 07:00,,2025-11-17 17:00,2025-11-17 17:00,,2025-11-26 07:00,2025-11-26 07:00,2025-11-26 07:00,2025-11-26 07:00,2025-08-20 07:00,2025-08-22 17:00,2025-11-17 17:00,2025-11-17 17:00,,PT_Normal,,,,,Ux0KJpFU+E2xngpllbGinw,xl43DvinE0ejoGgl8RZBFA,,,N,0,0,,,,,,,,2025-07-16 14:08,2025-11-20 21:42,ARAJSHEKAR,jleon,,N,
100227834,122698,18114489,363246,0,N,1,N,N,CP_Drtn,TT_Task,DT_FixedDUR2,TK_Active,CN.FIZ1.4760,INSTALL FRAMES & DOORS - SUE - 65 - GL 27-33 - A - L1 - Ext.,,-60,0,30,0,0,0,30,0,0,0,,2025-04-21 07:00,,2025-11-13 07:00,2025-11-17 17:00,,2025-11-21 07:00,2025-11-25 17:00,2025-11-21 07:00,2025-11-25 17:00,2025-08-15 07:00,2025-08-19 17:00,2025-11-13 07:00,2025-11-17 17:00,,PT_Normal,,,,,oP1/7F/UJ0a33844L44Vtw,t5+iU9VlXEG+lDXZmBtQdg,,,N,0,0,,,,,,,,2025-07-16 14:08,2025-11-20 21:42,ARAJSHEKAR,jleon,,N,
100227847,122698,18114489,363246,0,N,1,N,N,CP_Drtn,TT_Task,DT_FixedDUR2,TK_Active,CN.FIZ1.5110,INSTALL FRAMES & DOORS - SUW - 02 - GL 8-15 - N - L1 - Ext.,,-60,0,0,0,0,0,30,0,0,0,,2025-06-13 07:00,,2025-11-25 17:00,2025-11-25 17:00,,2025-12-08 07:00,2025-12-08 07:00,2025-12-08 07:00,2025-12-08 07:00,2025-06-13 07:00,2025-06-17 17:00,2025-11-25 17:00,2025-11-25 17:00,,PT_Normal,,,,,MkiFI/DovUigz9e688BkFA,t/0Uxxi1KUCRj2Hpr+SIlw,,,N,0,0,,,,,,,,2025-07-16 14:08,2025-11-20 21:42,ARAJSHEKAR,jleon,,N,
100227850,122698,18114489,363246,0,N,1,N,N,CP_Drtn,TT_Task,DT_FixedDUR2,TK_Active,CN.FIZ1.5170,INSTALL FRAMES & DOORS - SUW - 03 - GL 15-21 - N - L1 - Ext.,,-60,0,30,0,0,0,30,0,0,0,,2025-07-02 07:00,,2025-11-21 07:00,2025-11-25 17:00,,2025-12-03 07:00,2025-12-08 07:00,2025-12-03 07:00,2025-12-08 07:00,2025-07-02 07:00,2025-07-07 17:00,2025-11-21 07:00,2025-11-25 17:00,,PT_Normal,,,,,Lg8cjtCTRkSDqfMAs0EZrA,oj1/s3lUjUOsYW/XAcN9vw,,,N,0,0,,,,,,,,2025-07-16 14:08,2025-11-20 21:42,ARAJSHEKAR,jleon,,N,
100227853,122698,18114489,363246,0,N,1,N,N,CP_Drtn,TT_Task,DT_FixedDUR2,TK_Active,CN.FIZ1.5230,INSTALL FRAMES & DOORS - SUW - 04 - GL 21-27 - N - L1 - Ext.,,-60,0,30,0,0,0,30,0,0,0,,2025-05-20 07:00,,2025-11-21 07:00,2025-11-25 17:00,,2025-12-03 07:00,2025-12-08 07:00,2025-12-03 07:00,2025-12-08 07:00,2025-05-20 07:00,2025-05-22 17:00,2025-11-21 07:00,2025-11-25 17:00,,PT_Normal,,,,,OBLtysv+SkCRAMLz/cKPXw,9jvwsZKOTEmmVVKhx3DhMg,,,N,0,0,,,,,,,,2025-07-16 14:08,2025-11-20 21:42,ARAJSHEKAR,jleon,,N,
100227856,122698,18114489,363246,0,N,1,N,N,CP_Drtn,TT_Task,DT_FixedDUR2,TK_Active,CN.FIZ1.5290,INSTALL FRAMES & DOORS - SUW - 05 - GL 27-31 - N - L1 - Ext.,,-60,0,0,0,0,0,30,0,0,0,,2025-05-23 07:00,,2025-11-25 17:00,2025-11-25 17:00,,2025-12-08 07:00,2025-12-08 07:00,2025-12-08 07:00,2025-12-08 07:00,2025-05-23 07:00,2025-05-28 17:00,2025-11-25 17:00,2025-11-25 17:00,,PT_Normal,,,,,Vq0R0K/15Ei9edF8wI9PCQ,UncwvHVRa0aiUCzUNyYdVw,,,N,0,0,,,,,,,,2025-07-16 14:08,2025-11-20 21:42,ARAJSHEKAR,jleon,,N,
100227878,122698,18114489,363246,0,N,1,N,N,CP_Drtn,TT_Task,DT_FixedDUR2,TK_Active,CN.FIZ1.5460,"IMPACT - C/24.5, Hall 19, FAB136401B  Wall missing - SUE - 65 - GL 27-33 & A-E - L3",,60,0,30,0,0,0,50,0,0,0,,2025-02-17 07:00,,2025-12-03 07:00,2025-12-05 17:00,,2025-11-21 07:00,2025-11-25 17:00,2025-11-21 07:00,2025-11-25 17:00,2025-01-28 07:00,2025-02-03 17:00,2025-12-03 07:00,2025-12-05 17:00,,PT_Normal,,,,,UkeGNOd9ykW4CV1faX1mzQ,pI5N9CUKDUSnqCXVyENbXA,,,N,0,0,,,,,,,,2025-07-16 14:08,2025-11-20 21:42,ARAJSHEKAR,jleon,,N,
100227879,122698,18114489,363246,0,N,1,N,N,CP_Drtn,TT_Task,DT_FixedDUR2,TK_Active,CN.FIZ1.5470,"IMPACT - C/25.5, Duct shaft, FAB136406A  Wall missing - SUE - 65 - GL 27-33 & A-E - L3",,60,0,30,0,0,0,50,0,0,0,,2025-02-17 07:00,,2025-12-03 07:00,2025-12-05 17:00,,2025-11-21 07:00,2025-11-25 17:00,2025-11-21 07:00,2025-11-25 17:00,2025-01-28 07:00,2025-02-03 17:00,2025-12-03 07:00,2025-12-05 17:00,,PT_Normal,,,,,Kj99ScRie0WGsDGGuw9CYA,s5pN14CaJ0qKCnFSaeksJA,,,N,0,0,,,,,,,,2025-07-16 14:08,2025-11-20 21:42,ARAJSHEKAR,jleon,,N,
100227880,122698,18114489,363246,0,N,1,N,N,CP_Drtn,TT_Task,DT_FixedDUR2,TK_Active,CN.FIZ1.5480,"IMPACT - C/25, Clean Vestibule 19, FAB136406B  Wall missing - SUE - 65 - GL 27-33 & A-E - L3",,60,0,30,0,0,0,50,0,0,0,,2025-02-17 07:00,,2025-12-03 07:00,2025-12-05 17:00,,2025-11-21 07:00,2025-11-25 17:00,2025-11-21 07:00,2025-11-25 17:00,2025-01-28 07:00,2025-02-03 17:00,2025-12-03 07:00,2025-12-05 17:00,,PT_Normal,,,,,QuWX3PQFOUyZSyDpBJjR+A,s1ariNN5xEm6gaXOcmON9w,,,N,0,0,,,,,,,,2025-07-16 14:08,2025-11-20 21:42,ARAJSHEKAR,jleon,,N,
100227881,122698,18114489,363246,0,N,1,N,N,CP_Drtn,TT_Task,DT_FixedDUR2,TK_Active,CN.FIZ1.5490,"IMPACT - D/13, Clean Vestibule, FAB13K6201A -No opening - SUE - 62 - GL 8-15 & A-E - L3",,0,0,30,0,0,0,50,0,0,0,,2025-02-17 07:00,,2025-11-21 07:00,2025-11-25 17:00,,2025-11-21 07:00,2025-11-25 17:00,2025-11-21 07:00,2025-11-25 17:00,2025-02-04 07:00,2025-02-10 17:00,2025-11-21 07:00,2025-11-25 17:00,,PT_Normal,,,,,6QSFpquYR0uQjG3hLLpBcA,jRRDjjjjwku4PGts1InHOA,,,N,0,0,,,,,,,,2025-07-16 14:08,2025-11-20 21:42,ARAJSHEKAR,jleon,,N,
100227886,122698,18114489,363246,100,N,1,N,N,CP_Drtn,TT_Task,DT_FixedDUR2,TK_Active,CN.FIZ1.5540,"IMPACT - L/27.5, Rated Chase- West, FAB120511A - Wall missing - SUW - 05 - GL 27-33 & J-N - L2",,60,0,0,0,0,0,50,0,0,0,,2025-02-17 07:00,,2025-12-02 17:00,2025-12-02 17:00,,2025-11-21 07:00,2025-11-21 07:00,2025-11-21 07:00,2025-11-21 07:00,2025-02-17 07:00,2025-02-21 17:00,2025-12-02 17:00,2025-12-02 17:00,,PT_Normal,,,,,FJ5P1QzBIEqzKn0Z5q/JrA,TdcVgPFOeUCyWWkMmNcS1Q,,,N,0,0,,,,,,,,2025-07-16 14:08,2025-11-20 21:42,ARAJSHEKAR,jleon,,N,
100227887,122698,18114489,363246,0,N,1,N,N,CP_Drtn,TT_Task,DT_FixedDUR2,TK_Active,CN.FIZ1.5560,IMPACT - SECAI HOLD UP DOOR FRAME INSTALLATION - SUW - 05 - GL 27-33 & J-N - L3,,30,0,40,0,0,0,50,0,0,0,,2025-01-23 07:00,,2025-11-26 07:00,2025-12-03 17:00,,2025-11-21 07:00,2025-11-26 17:00,2025-11-21 07:00,2025-11-26 17:00,2025-02-24 07:00,2025-02-28 17:00,2025-11-26 07:00,2025-12-03 17:00,,PT_Normal,,,,,rhMywMAn4UmotbfNU1iCaw,P7b0ruCnzk65caTmWb2pbA,,,N,0,0,,,,,,,,2025-07-16 14:08,2025-11-20 21:42,ARAJSHEKAR,jleon,,N,
100227891,122698,18114489,363246,0,N,1,N,N,CP_Drtn,TT_Task,DT_FixedDUR2,TK_Active,CN.FIZ1.5600,IMPACT - FABRICATION 8 weeks - IOCC 1464 - TR-FAB130190A - GL 1-8 & A-E - L3,,-90,0,30,0,0,0,50,0,0,0,,2025-04-23 07:00,,2025-11-10 07:00,2025-11-12 17:00,,2025-11-21 07:00,2025-11-25 17:00,2025-11-21 07:00,2025-11-25 17:00,2025-02-06 07:00,2025-02-12 17:00,2025-11-10 07:00,2025-11-12 17:00,,PT_Normal,,,,,JTijCge9LkyEOiiyiMYk5w,+SbEjFuzLUiMbf/G5YMjNg,,,N,0,0,,,,,,,,2025-07-16 14:08,2025-11-20 21:42,ARAJSHEKAR,jleon,,N,
100228531,122698,18114647,363246,0,N,1,N,N,CP_Drtn,TT_Task,DT_FixedDUR2,TK_Active,CN.AB3.ST.2430,KOVACH - INSULATED METAL PANEL - GL 33 - A/33 EXTENSION,,70,120,20,0,0,0,0,0,0,0,,2025-10-15 07:00,,2025-12-04 07:00,2025-12-05 17:00,,2025-11-21 07:00,2025-11-24 17:00,2025-11-21 07:00,2025-11-24 17:00,2025-10-22 07:00,2025-10-22 07:00,2025-12-04 07:00,2025-12-05 17:00,,PT_Normal,,,,,KMprFqoDsk6hjwWBiqVyRA,fXZ9UtmA8U+o/D1e9tA2hA,,,N,0,0,,,,,,,,2025-07-16 14:08,2025-11-20 21:42,ARAJSHEKAR,jleon,,N,
100228580,122698,18114647,363246,0,N,1,N,N,CP_Drtn,TT_Task,DT_FixedDUR2,TK_Active,CN.BB5.ST.1410,KOVACH INSTALL IMP / CMP PANEL -GL 33 - GL 33 - D-F,,-40,1080,10,0,80,80,70,0,0,0,,2025-08-04 07:00,,2025-12-05 07:00,2025-12-05 17:00,,2025-12-11 07:00,2025-12-11 17:00,2025-12-11 07:00,2025-12-11 17:00,2025-08-01 07:00,2025-08-11 17:00,2025-12-05 07:00,2025-12-05 17:00,,PT_Normal,,,,,SmCBWNWmk0+kMCqgDGTCpw,x9aTTzrLl0SaspFslI5x1w,,,N,0,0,,,,,,,,2025-07-16 14:09,2025-11-20 21:46,ARAJSHEKAR,jleon,,N,
100228691,122698,18114498,363246,0,N,1,N,N,CP_Drtn,TT_Task,DT_FixedDUR2,TK_Active,CN.SWA1.1432,INSTALL MIRRORS - BATHROOM - GL 15-18 - K-N - L3,,-10,0,50,0,0,0,50,0,0,0,,2025-10-16 07:00,,2025-11-20 07:00,2025-11-26 17:00,,2025-11-21 07:00,2025-12-01 17:00,2025-11-21 07:00,2025-12-01 17:00,2025-10-16 07:00,2025-10-22 17:00,2025-11-20 07:00,2025-11-26 17:00,,PT_Normal,,,,,fzwlXC3nfkikH3PatfDN/g,E9UVSY+o+kKW3EhzhMUJoQ,,,N,0,0,,,,,,,,2025-07-16 14:09,2025-11-20 21:42,ARAJSHEKAR,jleon,,N,
100228785,122698,18114498,363246,0,N,1,N,N,CP_Drtn,TT_Task,DT_FixedDUR2,TK_Active,CN.SWA1.9530,IMPACT - LATCON / VELTRI SOMD PENETRATION SUPPORT STEEL - SUW - L-N - L3,,-20,1100,0,0,0,0,250,0,0,0,,2024-06-19 07:00,,2025-12-05 17:00,2025-12-05 17:00,,2025-12-10 07:00,2025-12-10 07:00,2025-12-10 07:00,2025-12-10 07:00,2024-08-13 07:00,2024-09-23 17:00,2025-12-05 17:00,2025-12-05 17:00,,PT_Normal,,,,,Jk6wiJmYAEivS/Fcizk5Eg,RWcSODTIRE2avN03XqrD5g,,,N,0,0,,,,,,,,2025-07-16 14:09,2025-11-20 21:46,ARAJSHEKAR,jleon,,N,
100228786,122698,18114498,363246,0,N,1,N,N,CP_Drtn,TT_Task,DT_FixedDUR2,TK_Active,CN.SWA1.9540,IMPACT - LATCON / VELTRI SOMD PENETRATION SUPPORT STEEL - SUW - L-N - L2,,30,1150,30,0,0,0,250,0,0,0,,2024-05-23 07:00,,2025-12-03 07:00,2025-12-05 17:00,,2025-11-26 07:00,2025-12-02 17:00,2025-11-26 07:00,2025-12-02 17:00,2024-08-13 07:00,2024-09-23 17:00,2025-12-03 07:00,2025-12-05 17:00,,PT_Normal,,,,,xZL4lJ9WmUey9R9iNs896A,fCGzztQq6U6V40QDQMzv3g,,,N,0,0,,,,,,,,2025-07-16 14:09,2025-11-20 21:46,ARAJSHEKAR,jleon,,N,
100228821,122698,18114498,363246,0,N,1,N,N,CP_Drtn,TT_Task,DT_FixedDUR2,TK_Active,CN.SWA1.9950,IMPACT - NO ACCESS FOR SCISSOR LIFTS SOMD PENETRATION SUPPORT STEEL - SUW - L-N - L2,,30,0,10,0,0,0,250,0,0,0,,2024-05-23 07:00,,2025-11-26 07:00,2025-11-26 17:00,,2025-11-21 07:00,2025-11-21 17:00,2025-11-21 07:00,2025-11-21 17:00,2024-08-13 07:00,2024-09-23 17:00,2025-11-26 07:00,2025-11-26 17:00,,PT_Normal,,,,,yrzFDSQKYkq/SXnCCNCasw,ovD7vtqZAUGvHMZSuUqeDw,,,N,0,0,,,,,,,,2025-07-16 14:09,2025-11-20 21:42,ARAJSHEKAR,jleon,,N,
100228822,122698,18114498,363246,0,N,1,N,N,CP_Drtn,TT_Task,DT_FixedDUR2,TK_Active,CN.SWA1.9960,IMPACT - NO ACCESS FOR SCISSER LIFTS SOMD PENETRATION SUPPORT STEEL - SUW - L-N - L3,,-20,0,10,0,0,0,250,0,0,0,,2024-06-19 07:00,,2025-11-19 07:00,2025-11-19 17:00,,2025-11-21 07:00,2025-11-21 17:00,2025-11-21 07:00,2025-11-21 17:00,2024-08-13 07:00,2024-09-23 17:00,2025-11-19 07:00,2025-11-19 17:00,,PT_Normal,,,,,0zV/iR7KhEeMvBaaUNGxTg,fCGzztQq6U6V40QDQMzv3g,,,N,0,0,,,,,,,,2025-07-16 14:09,2025-11-20 21:42,ARAJSHEKAR,jleon,,N,
100229080,122698,18114500,363246,0,N,1,N,N,CP_Drtn,TT_Task,DT_FixedDUR2,TK_Active,CN.SWA3.1442,INSTALL MIRRORS - BATHROOM - GL 11-12 - L-N - L1,,-10,0,50,0,0,0,50,0,0,0,,2025-10-16 07:00,,2025-11-20 07:00,2025-11-26 17:00,,2025-11-21 07:00,2025-12-01 17:00,2025-11-21 07:00,2025-12-01 17:00,2025-10-16 07:00,2025-10-22 17:00,2025-11-20 07:00,2025-11-26 17:00,,PT_Normal,,,,,KyiWV/0ibU6ZZLFh1EG4zA,,,,N,0,0,,,,,,,,2025-07-16 14:09,2025-11-20 21:42,ARAJSHEKAR,jleon,,N,
100229163,122698,18114500,363246,0,N,1,N,N,CP_Drtn,TT_Task,DT_FixedDUR2,TK_Active,CN.SWA3.9550,INSTALL FRAMING/DRYWALL/TAPE+FLOAT - MECHANICAL ROOM - ELEVATOR 2,,80,0,10,7.6,2.4,10,250,0,0,0,,2024-10-17 07:00,,2025-12-05 07:00,2025-12-05 17:00,,2025-11-21 07:00,2025-11-21 17:00,2025-11-21 07:00,2025-11-21 17:00,2024-10-17 07:00,2024-11-27 17:00,2025-12-05 07:00,2025-12-05 17:00,,PT_Normal,,,,,L/GM1njOa0WsKDtvYPdmgA,vJDZ57UIxESBDMgT8elVag,,,N,7.6,0,,,,,,,,2025-07-16 14:09,2025-11-20 21:42,ARAJSHEKAR,jleon,,N,
100229474,122698,18114502,363246,0,N,1,N,N,CP_Drtn,TT_Task,DT_FixedDUR2,TK_Active,CN.SWA5.LD.3020,INSTALL MIRRORS - BATHROOM - GL 3 - M-N - L1,,-10,0,50,0,0,0,50,0,0,0,,2025-10-16 07:00,,2025-11-20 07:00,2025-11-26 17:00,,2025-11-21 07:00,2025-12-01 17:00,2025-11-21 07:00,2025-12-01 17:00,2025-10-16 07:00,2025-10-22 17:00,2025-11-20 07:00,2025-11-26 17:00,,PT_Normal,,,,,hUCS5/DAWEOkt7bN9jc2Ig,J2lSOBY99Eq7AOYvFA+Ebg,,,N,0,0,,,,,,,,2025-07-16 14:09,2025-11-20 21:42,ARAJSHEKAR,jleon,,N,
100229511,122698,18114502,363248,0,N,1,N,N,CP_Drtn,TT_Task,DT_FixedDUR2,TK_Active,CN.SWA5..2050,IMPACT - SECAI SGP / HANDRAIL INSTALL/FLOOR COATING/LIGHT INSTALL - STAIR #2 - 11/L - ALL LEVELS,,-80,0,90,0,580,580,190,58,0,58,,2025-11-03 07:00,,2025-11-12 07:00,2025-11-21 17:00,,2025-11-21 07:00,2025-12-03 17:00,2025-11-21 07:00,2025-12-03 17:00,2025-11-03 07:00,2025-11-24 17:00,2025-11-12 07:00,2025-11-21 17:00,,PT_Normal,,,,,W7GTtlJVaUiFPcUmir49eQ,qIn7L2PhRkqQghEeBJ8c5w,,,N,0,0,,,,,,,,2025-07-16 14:09,2025-11-20 21:42,ARAJSHEKAR,jleon,,N,
100229529,122698,18114502,363248,0,N,1,N,N,CP_Drtn,TT_Task,DT_FixedDUR2,TK_Active,CN.SWA5..2340,FINAL COATING & INSPECTION - STAIR #4 - 23/L - ALL LEVELS,,10,0,50,0,580,580,50,58,0,58,,2025-11-12 07:00,,2025-12-01 07:00,2025-12-05 17:00,,2025-11-29 07:00,2025-12-04 17:00,2025-11-29 07:00,2025-12-04 17:00,2025-11-12 07:00,2025-11-17 17:00,2025-12-01 07:00,2025-12-05 17:00,,PT_Normal,,,,,ZBJmgWZOBkOZBwxLXdn2pQ,qyK3eDQDOUifR63i5y11DQ,,,N,0,0,,,,,,,,2025-07-16 14:09,2025-11-20 21:42,ARAJSHEKAR,jleon,,N,
100229535,122698,18114502,363248,0,N,1,N,N,CP_Drtn,TT_Task,DT_FixedDUR2,TK_Active,CN.SWA5..2470,IMPACT - SECAI SGP / HANDRAIL INSTALL/FLOOR COATING/LIGHT INSTALL - STAIR #19 - 26/D - ALL LEVELS,,0,0,110,0,580,580,30,58,0,58,,2025-11-11 07:00,,2025-11-21 07:00,2025-12-05 17:00,,2025-11-21 07:00,2025-12-05 17:00,2025-11-21 07:00,2025-12-05 17:00,2025-11-11 07:00,2025-11-13 17:00,2025-11-21 07:00,2025-12-05 17:00,,PT_Normal,,,,,6Se4VyUy8Uu58PBn1g3lLg,KolNYdQDNEqu3uvrTm36/w,,,N,0,0,,,,,,,,2025-07-16 14:09,2025-11-20 21:42,ARAJSHEKAR,jleon,,N,
100229551,122698,18114502,363248,0,N,1,N,N,CP_Drtn,TT_Task,DT_FixedDUR2,TK_Active,CN.SWA5..2750,IMPACT - SECAI SGP / HANDRAIL INSTALL/FLOOR COATING/LIGHT INSTALL - STAIR #21 - 13/D - ALL LEVELS,,-80,0,90,0,580,580,190,58,0,58,,2025-11-03 07:00,,2025-11-12 07:00,2025-11-21 17:00,,2025-11-21 07:00,2025-12-03 17:00,2025-11-21 07:00,2025-12-03 17:00,2025-11-03 07:00,2025-11-24 17:00,2025-11-12 07:00,2025-11-21 17:00,,PT_Normal,,,,,fpqSo0un2keid7M3DA4MOA,DD2sOLBizkqjUky0on3qvw,,,N,0,0,,,,,,,,2025-07-16 14:09,2025-11-20 21:42,ARAJSHEKAR,jleon,,N,
100229572,122698,18114502,363246,100,N,1,N,N,CP_Drtn,TT_Task,DT_FixedDUR2,TK_Active,CN.SWA5..3780,SECAI TOOK OVER - TAPE & FLOAT - INTERIOR SHAFT & DOOR FRONTS- ELEVATOR 01,,90,50,0,0,0,580,80,58,0,0,,2025-11-10 07:00,,2025-12-05 17:00,2025-12-05 17:00,,2025-11-21 07:00,2025-11-21 07:00,2025-11-21 07:00,2025-11-21 07:00,2025-11-10 07:00,2025-11-19 17:00,2025-12-05 17:00,2025-12-05 17:00,,PT_Normal,,,,,OzmhsZlqDkCAvwv1lQ0jyA,Yj2DW8MTY02XSGWO+9ah3A,,,N,0,0,,,,,,,,2025-07-16 14:09,2025-11-20 21:42,ARAJSHEKAR,jleon,,N,
100229592,122698,18114502,363248,0,N,1,N,N,CP_Drtn,TT_Task,DT_FixedDUR2,TK_Active,CN.SWA5..4190,INSTALL - DOOR & HARDWARE - STAIR #2 - 11/L - ALL LEVELS,,-40,0,50,0,10,10,50,58,0,58,,2025-09-16 07:00,,2025-11-17 07:00,2025-11-21 17:00,,2025-11-21 07:00,2025-11-26 17:00,2025-11-21 07:00,2025-11-26 17:00,2025-09-16 07:00,2025-09-20 17:00,2025-11-17 07:00,2025-11-21 17:00,,PT_Normal,,,,,oR9Ol9v3fkWi25DS3mJ/9g,dQoDsdTBokqr/i1n9CGsBQ,,,N,0,0,,,,,,,,2025-07-16 14:09,2025-11-20 21:42,ARAJSHEKAR,jleon,,N,
100229597,122698,18114502,363248,0,N,1,N,N,CP_Drtn,TT_Task,DT_FixedDUR2,TK_Active,CN.SWA5..4310,INSTALL - DOOR & HARDWARE - STAIR #21 - 13/D - ALL LEVELS,,60,40,50,0,10,10,50,58,0,58,,2025-11-07 07:00,,2025-12-01 07:00,2025-12-05 17:00,,2025-11-21 07:00,2025-11-26 17:00,2025-11-21 07:00,2025-11-26 17:00,2025-11-07 07:00,2025-11-12 17:00,2025-12-01 07:00,2025-12-05 17:00,,PT_Normal,,,,,pfkdGzrO5Eu9R5A/vcOvcw,aAnIkz9SdECLNbYvjY+DAA,,,N,0,0,,,,,,,,2025-07-16 14:09,2025-11-20 21:42,ARAJSHEKAR,jleon,,N,
100229603,122698,18114502,363248,0,N,1,N,N,CP_Drtn,TT_Task,DT_FixedDUR2,TK_Active,CN.SWA5..4410,INSTALL - DOOR FRAMES  - STAIR #20 - 19/D - ALL LEVELS,,20,0,30,0,10,10,30,58,0,58,,2025-09-10 07:00,,2025-11-24 07:00,2025-11-26 17:00,,2025-11-21 07:00,2025-11-24 17:00,2025-11-21 07:00,2025-11-24 17:00,2025-10-15 07:00,2025-10-17 17:00,2025-11-24 07:00,2025-11-26 17:00,,PT_Normal,,,,,+Bz+2SGQDEaTHkOuZzKNHg,cBLL8cT6Mk+hxagGUcrwew,,,N,0,0,,,,,,,,2025-07-16 14:09,2025-11-20 21:42,ARAJSHEKAR,jleon,,N,
100229604,122698,18114502,363248,0,N,1,N,N,CP_Drtn,TT_Task,DT_FixedDUR2,TK_Active,CN.SWA5..4420,INSTALL - DOOR & HARDWARE  - STAIR #20 - 19/D - ALL LEVELS,,20,0,50,0,10,10,50,58,0,58,,2025-10-28 07:00,,2025-11-29 07:00,2025-12-04 17:00,,2025-11-25 07:00,2025-12-02 17:00,2025-11-25 07:00,2025-12-02 17:00,2025-10-28 07:00,2025-11-01 17:00,2025-11-29 07:00,2025-12-04 17:00,,PT_Normal,,,,,DtMLrfSxlUKnTiMrLw8Baw,hBKq07DiSEi5AOf3GuNrOw,,,N,0,0,,,,,,,,2025-07-16 14:09,2025-11-20 21:42,ARAJSHEKAR,jleon,,N,
100229608,122698,18114502,363248,0,N,1,N,N,CP_Drtn,TT_Task,DT_FixedDUR2,TK_Active,CN.SWA5..4560,INSTALL - DOOR & HARDWARE  - STAIR #3 - 18/L - ALL LEVELS,,0,160,50,0,580,580,50,58,0,58,,2025-10-13 07:00,,2025-11-29 07:00,2025-12-04 17:00,,2025-11-29 07:00,2025-12-04 17:00,2025-11-29 07:00,2025-12-04 17:00,2025-10-13 07:00,2025-10-17 17:00,2025-11-29 07:00,2025-12-04 17:00,,PT_Normal,,,,,fORXapAHakO92sEDKfSoxQ,VzrOIrsN+0u/fKDZu/Vo1g,,,N,0,0,,,,,,,,2025-07-16 14:09,2025-11-20 21:42,ARAJSHEKAR,jleon,,N,
100229613,122698,18114502,363248,0,N,1,N,N,CP_Drtn,TT_Task,DT_FixedDUR2,TK_Active,CN.SWA5..4730,INSTALL - DOOR & HARDWARE  - STAIR #4 - 23/L - ALL LEVELS,,-40,0,150,0,10,10,150,58,0,58,,2025-09-29 07:00,,2025-11-17 07:00,2025-12-05 17:00,,2025-11-21 07:00,2025-12-10 17:00,2025-11-21 07:00,2025-12-10 17:00,2025-09-29 07:00,2025-10-15 17:00,2025-11-17 07:00,2025-12-05 17:00,,PT_Normal,,,,,4IfEM+05GUOWgXdYouu/gg,qAy0YgyMvECRdgdavDD7Ug,,,N,0,0,,,,,,,,2025-07-16 14:09,2025-11-20 21:42,ARAJSHEKAR,jleon,,N,
100229614,122698,18114502,363248,100,N,1,N,N,CP_Drtn,TT_Task,DT_FixedDUR2,TK_Active,CN.SWA5..4910,FINAL COAT INSPECTION - STAIR #19 - 26/D - ALL LEVELS,,0,1350,0,0,0,580,100,58,0,0,,2025-09-29 07:00,,2025-12-05 17:00,2025-12-05 17:00,,2025-12-06 07:00,2025-12-06 07:00,2025-12-06 07:00,2025-12-06 07:00,2025-09-29 07:00,2025-10-09 17:00,2025-12-05 17:00,2025-12-05 17:00,,PT_Normal,,,,,zy0zG13+hkuuaQlfRr+z8w,zf2YmHBueESC2WbESG9DNA,,,N,0,0,,,,,,,,2025-07-16 14:09,2025-11-20 21:46,ARAJSHEKAR,jleon,,N,
100229644,122698,18114502,363246,0,N,1,N,N,CP_Drtn,TT_Task,DT_FixedDUR2,TK_Active,CN.SWA5.9670,DELIVER & INSTALL COPING CAP - SWB5 - GL 33-31 - L6 - NORTHWEST PENTHOUSE,,20,320,70,0,0,0,70,0,0,0,,2025-10-31 07:00,,2025-11-25 07:00,2025-12-05 17:00,,2025-11-21 07:00,2025-12-03 17:00,2025-11-21 07:00,2025-12-03 17:00,2025-10-31 07:00,2025-11-10 17:00,2025-11-25 07:00,2025-12-05 17:00,,PT_Normal,,,,,NgfWLitBzU+o2L8gMQHqqg,bWgdcTWSE0yIDFp3dS8elg,,,N,0,0,,,,,,,,2025-07-16 14:09,2025-11-20 21:42,ARAJSHEKAR,jleon,,N,
100229790,122698,18114503,363246,0,N,1,N,N,CP_Drtn,TT_Task,DT_FixedDUR2,TK_Active,CN.SWB1..4560,IMPACT [S.TIA-2] - NaOH ROOM TRENCH DETAILS (SECAI-SUW-S-5358) - GL 18-19 L-N,,-60,0,10,0,0,0,48,0,0,0,,2023-11-17 07:00,,2025-11-13 07:00,2025-11-13 17:00,,2025-11-21 07:00,2025-11-21 17:00,2025-11-21 07:00,2025-11-21 17:00,2024-01-02 07:00,2024-01-08 15:00,2025-11-13 07:00,2025-11-13 17:00,,PT_Normal,,,,,BZWtMNkPlEKO04hWRa2ENw,legJonPJskujirJ/AYfpUA,,,N,0,0,,,,,,,,2025-07-16 14:09,2025-11-20 21:42,ARAJSHEKAR,jleon,,N,
100230296,122698,18114506,363246,0,N,1,N,N,CP_Drtn,TT_Task,DT_FixedDUR2,TK_Active,CN.AB.AR.7090,INSTALL GOAL POSTS - SWB-4-L3 - BATTERY RM - GL 27-30 K-N,,-20,0,40,0,0,0,70,0,0,0,,2024-07-29 07:00,,2025-11-21 07:00,2025-11-26 17:00,,2025-11-25 07:00,2025-12-02 17:00,2025-11-25 07:00,2025-12-02 17:00,2024-08-16 07:00,2024-08-27 17:00,2025-11-21 07:00,2025-11-26 17:00,,PT_Normal,,,,,xamgdTGY6kuHTLH16x4MfA,ust/FBFbjEya6QyAtTnd5A,,,N,0,0,,,,,,,,2025-07-16 14:09,2025-11-20 21:42,ARAJSHEKAR,jleon,,N,
100230297,122698,18114506,363246,0,N,1,N,N,CP_Drtn,TT_Task,DT_FixedDUR2,TK_Active,CN.SWB4R.4630,INSTALL GOAL POSTS - SWB-1- WASTE SOLVENT RM - GL 27-30 K-N,,80,0,0,0,0,0,160,0,0,0,,2024-09-12 07:00,,2025-12-04 17:00,2025-12-04 17:00,,2025-11-21 07:00,2025-11-21 07:00,2025-11-21 07:00,2025-11-21 07:00,2024-09-12 07:00,2024-10-08 17:00,2025-12-04 17:00,2025-12-04 17:00,,PT_Normal,,,,,hKyolMS1I0yLCaf4a9OfDw,6DzFIZgq+0C9+yLPsdizEQ,,,N,0,0,,,,,,,,2025-07-16 14:09,2025-11-20 21:42,ARAJSHEKAR,jleon,,N,
100230301,122698,18114506,363246,0,N,1,N,N,CP_Drtn,TT_Task,DT_FixedDUR2,TK_Active,CN.AB.AR.7410,IMPACT - SECAI REQUEST TO REMOVE HEADER - SWB-4-L3 - BATTERY RM - GL 27-30 K-N,,-20,0,20,0,0,0,70,0,0,0,,2024-08-03 07:00,,2025-11-19 07:00,2025-11-20 17:00,,2025-11-21 07:00,2025-11-24 17:00,2025-11-21 07:00,2025-11-24 17:00,2024-08-16 07:00,2024-08-27 17:00,2025-11-19 07:00,2025-11-20 17:00,,PT_Normal,,,,,r66WLnIhmEaU+Hf4ZYlixA,J5XX511PyUed4d+DLOsLWw,,,N,0,0,,,,,,,,2025-07-16 14:09,2025-11-20 21:42,ARAJSHEKAR,jleon,,N,
100230303,122698,18114506,363246,0,N,1,N,N,CP_Drtn,TT_Task,DT_FixedDUR2,TK_Active,CN.AB.AR.7760,IMPACT - Threaded rods-unistruts-cable trays need to be removed to install 2nd layer-fire caulk-T&B.-Level 3 - K-M/18-19,,-70,0,10,0,0,0,100,0,0,0,,2024-08-27 07:00,,2025-11-12 07:00,2025-11-12 17:00,,2025-11-21 07:00,2025-11-21 17:00,2025-11-21 07:00,2025-11-21 17:00,2024-08-16 07:00,2024-08-30 17:00,2025-11-12 07:00,2025-11-12 17:00,,PT_Normal,,,,,a5kqcFa41UuFws08b+qOKg,Au8pglL/Ok+TlpnKnvemlw,,,N,0,0,,,,,,,,2025-07-16 14:09,2025-11-20 21:42,ARAJSHEKAR,jleon,,N,
100230504,122698,18114507,363246,0,N,1,N,N,CP_Drtn,TT_Task,DT_FixedDUR2,TK_Active,CN.AB.AR.7400,IMPACT - NEED TO MODIFY SHOP DRAWININGS FOR CONNECTIONS OVER GRATING - ELEVATOR 5 HALLWAY - SWB-5 - L3 - GL 30-33 K-N,,20,0,0,0,0,0,70,0,0,0,,2024-07-15 07:00,,2025-11-24 17:00,2025-11-24 17:00,,2025-11-21 07:00,2025-11-21 07:00,2025-11-21 07:00,2025-11-21 07:00,2024-08-16 07:00,2024-08-27 17:00,2025-11-24 17:00,2025-11-24 17:00,,PT_Normal,,,,,ezBlKhr9Pkuvs0DjpkD0pg,hMGpimph3Em2Ed7vKJ3+zg,,,N,0,0,,,,,,,,2025-07-16 14:09,2025-11-20 21:42,ARAJSHEKAR,jleon,,N,
100230584,122698,18114514,363246,0,N,1,N,N,CP_Drtn,TT_Task,DT_FixedDUR2,TK_Active,CN.AB.AR.4750,TAPE & FINISH DRYWALL - ELECTRICAL ROOM 2 - SEA1 - GL 19-16 - C-A - L3,,80,0,10,8,42,10,50,0,0,0,,2024-04-23 07:00,,2025-12-05 07:00,2025-12-05 17:00,,2025-11-21 07:00,2025-11-21 17:00,2025-11-21 07:00,2025-11-21 17:00,2024-04-23 07:00,2024-04-29 17:00,2025-12-05 07:00,2025-12-05 17:00,,PT_Normal,,,,,2vF1AKgfyUyYkgfiXUGF9w,/dcXhOD9yEyig2IxAQFhiA,,,N,8,0,,,,,,,,2025-07-16 14:09,2025-11-20 21:42,ARAJSHEKAR,jleon,,N,
100230666,122698,18114514,363246,0,N,1,N,N,CP_Drtn,TT_Task,DT_FixedDUR2,TK_Active,CN.SEA1.6510,IMPACT - LATCON / VELTRI SOMD PENETRATION SUPPORT STEEL - SUE - A-C - L3,,-20,1100,0,0,0,0,250,0,0,0,,2024-08-21 07:00,,2025-12-05 17:00,2025-12-05 17:00,,2025-12-10 07:00,2025-12-10 07:00,2025-12-10 07:00,2025-12-10 07:00,2024-09-06 07:00,2024-10-18 17:00,2025-12-05 17:00,2025-12-05 17:00,,PT_Normal,,,,,NYvtj1iES0Or3Tb8ktP5Fw,K7QpfpdGs0SPmB4a2zZ7Uw,,,N,0,0,,,,,,,,2025-07-16 14:09,2025-11-20 21:46,ARAJSHEKAR,jleon,,N,
100230719,122698,18114514,363246,0,N,1,N,N,CP_Drtn,TT_Task,DT_FixedDUR2,TK_Active,CN.SEA1.9295,IMPACT - LATCON / VELTRI SOMD PENETRATION SUPPORT STEEL - SUE - A-C - L2,,-20,1100,10,0,0,0,250,0,0,0,,2024-09-03 07:00,,2025-12-05 07:00,2025-12-05 17:00,,2025-12-09 07:00,2025-12-09 17:00,2025-12-09 07:00,2025-12-09 17:00,2024-09-03 07:00,2024-10-14 17:00,2025-12-05 07:00,2025-12-05 17:00,,PT_Normal,,,,,TQc6DGEIrkG5wC22Qnn5ng,HlwADCRgbUCkgutbIw8niQ,,,N,0,0,,,,,,,,2025-07-16 14:09,2025-11-20 21:46,ARAJSHEKAR,jleon,,N,
100230732,122698,18114514,363246,0,N,1,N,N,CP_Drtn,TT_Task,DT_FixedDUR2,TK_Active,CN.SEA1.DS..4090,REMEDY - FRAME & DRYWALL - SEA1 - GL 15-20 - C LINE - L2,,-60,0,10,6,4,10,150,0,0,0,,2024-10-07 07:00,,2025-11-25 07:00,2025-11-25 17:00,,2025-12-05 07:00,2025-12-05 17:00,2025-12-05 07:00,2025-12-05 17:00,2024-10-15 07:00,2024-11-08 17:00,2025-11-25 07:00,2025-11-25 17:00,,PT_Normal,,,,,Wv/lEh7J/kCQEyit+Eyt/Q,DvilCA0aukOj+zHD5Km4kA,,,N,6,0,,,,,,,,2025-07-16 14:09,2025-11-20 21:42,ARAJSHEKAR,jleon,,N,
100230733,122698,18114514,363246,0,N,1,N,N,CP_Drtn,TT_Task,DT_FixedDUR2,TK_Active,CN.SEA1.DS..4100,IMPACT - REMEDY - SCAFFOLDING OBSTRUCTION & H& H PIPE IN THE WAY - SEA1 - GL 15-20 - C LINE - L2,,-30,30,10,0,0,0,30,0,0,0,,2024-07-22 07:00,,2025-11-18 07:00,2025-11-18 17:00,,2025-11-21 07:00,2025-11-21 17:00,2025-11-21 07:00,2025-11-21 17:00,2024-10-21 07:00,2024-10-24 17:00,2025-11-18 07:00,2025-11-18 17:00,,PT_Normal,,,,,qMXFqE4DgE2jOAJCUq+XVw,TpLeaaXhMUG6aWHTyyrJag,,,N,0,0,,,,,,,,2025-07-16 14:09,2025-11-20 21:42,ARAJSHEKAR,jleon,,N,
100230747,122698,18114514,363246,0,N,1,N,N,CP_Drtn,TT_Task,DT_FixedDUR2,TK_Active,CN.SEA1.10365,IMPACT - NO ACCESS FOR SCISSOR LIFTS SOMD PENETRATION SUPPORT STEEL - SUE - A-C - L2,,-20,0,10,0,0,0,250,0,0,0,,2024-09-03 07:00,,2025-11-19 07:00,2025-11-19 17:00,,2025-11-21 07:00,2025-11-21 17:00,2025-11-21 07:00,2025-11-21 17:00,2024-09-03 07:00,2024-10-14 17:00,2025-11-19 07:00,2025-11-19 17:00,,PT_Normal,,,,,2Y61cND1LEiRNCQKvwMskA,8KSh1+fkxUKsY9RVEb74nw,,,N,0,0,,,,,,,,2025-07-16 14:09,2025-11-20 21:42,ARAJSHEKAR,jleon,,N,
100230748,122698,18114514,363246,0,N,1,N,N,CP_Drtn,TT_Task,DT_FixedDUR2,TK_Active,CN.SEA1.10375,IMPACT - NO ACCESS FOR SCISSOR LIFTS SOMD PENETRATION SUPPORT STEEL - SUE - A-C - L3,,-20,0,10,0,0,0,250,0,0,0,,2024-08-21 07:00,,2025-11-19 07:00,2025-11-19 17:00,,2025-11-21 07:00,2025-11-21 17:00,2025-11-21 07:00,2025-11-21 17:00,2024-09-06 07:00,2024-10-18 17:00,2025-11-19 07:00,2025-11-19 17:00,,PT_Normal,,,,,mqXnMd8/+kSE8O6WAav3dg,HlwADCRgbUCkgutbIw8niQ,,,N,0,0,,,,,,,,2025-07-16 14:09,2025-11-20 21:42,ARAJSHEKAR,jleon,,N,
100230753,122698,18114514,363246,0,N,1,N,N,CP_Drtn,TT_Task,DT_FixedDUR2,TK_Active,CN.AB.AR.7860,IMPACT - E33 CEILING B-B.5 MEP MATERIAL IN WAY OF STUDS - DRYWALL & TAPE & FINISH- E 33 - SEA1 - GL 19-16 - C-A - L3,,80,0,10,0,10,10,50,0,0,0,,2024-10-24 07:00,,2025-12-05 07:00,2025-12-05 17:00,,2025-11-21 07:00,2025-11-21 17:00,2025-11-21 07:00,2025-11-21 17:00,2024-11-18 07:00,2024-11-25 17:00,2025-12-05 07:00,2025-12-05 17:00,,PT_Normal,,,,,YTIlAukclkq+PJooicmhMQ,7WbBJii2dUmZmZ2zAR/pew,,,N,0,0,,,,,,,,2025-07-16 14:09,2025-11-20 21:42,ARAJSHEKAR,jleon,,N,
100230758,122698,18114514,363246,0,N,1,N,N,CP_Drtn,TT_Task,DT_FixedDUR2,TK_Active,CN.AB.AR.8420,FINISH DRYWALL -CLEAN VESITUBLE 19 - SEA1 - GL 19-16 - C-A - L3,,30,1150,0,0,0,0,70,0,0,0,,2025-02-05 07:00,,2025-12-05 17:00,2025-12-05 17:00,,2025-12-03 07:00,2025-12-03 07:00,2025-12-03 07:00,2025-12-03 07:00,2025-02-05 07:00,2025-02-13 17:00,2025-12-05 17:00,2025-12-05 17:00,,PT_Normal,,,,,W/1qZA7yA0m6DYbGIJoggQ,JvP+oMQJGk+DXzUuydMu6w,,,N,0,0,,,,,,,,2025-07-16 14:09,2025-11-20 21:46,ARAJSHEKAR,jleon,,N,
100230767,122698,18114514,363246,0,N,1,N,N,CP_Drtn,TT_Task,DT_FixedDUR2,TK_Active,CN.AB.AR.8560,IMPACT - MEP DUCT/ IN THE WAY - ELEVTOR HALL 20 - SEA1 - GL 19-16 - C-A - L3,,80,0,10,8,42,10,50,0,0,0,,2025-01-25 07:00,,2025-12-05 07:00,2025-12-05 17:00,,2025-11-21 07:00,2025-11-21 17:00,2025-11-21 07:00,2025-11-21 17:00,2024-04-23 07:00,2024-04-29 17:00,2025-12-05 07:00,2025-12-05 17:00,,PT_Normal,,,,,hQaR1e7jlk6hX+DeLUAf/g,RWS1vCluvEi9r2n6AzReSw,,,N,8,0,,,,,,,,2025-07-16 14:09,2025-11-20 21:42,ARAJSHEKAR,jleon,,N,
100230774,122698,18114514,363246,0,N,1,N,N,CP_Drtn,TT_Task,DT_FixedDUR2,TK_Active,CN.AB.AR.8650,IMPACT - NEED SCAFFOLDING TO COMPLETE N-WALL & FIRE CAULKING -CLEAN VESITUBLE 19 - SEA1 - GL 19-16 - C-A - L3,,30,0,10,0,0,0,70,0,0,0,,2025-02-05 07:00,,2025-11-26 07:00,2025-11-26 17:00,,2025-11-21 07:00,2025-11-21 17:00,2025-11-21 07:00,2025-11-21 17:00,2025-02-05 07:00,2025-02-13 17:00,2025-11-26 07:00,2025-11-26 17:00,,PT_Normal,,,,,axncczLNE0OzzZhjSj8JBA,b2eQh8p0tUqUL9eCWnIDkw,,,N,0,0,,,,,,,,2025-07-16 14:09,2025-11-20 21:42,ARAJSHEKAR,jleon,,N,
100231182,122698,18114517,363246,0,N,1,N,N,CP_Drtn,TT_Task,DT_FixedDUR2,TK_Active,CN.SEA1.6430,IMPACT - SECAI Installs TEMP SCAFFOLD PLATFORMS[F49] - SEA1 - GL 19-16 - D LINE - L4-L6,,50,0,10,0,0,0,50,0,0,0,,2024-02-27 07:00,,2025-12-02 07:00,2025-12-02 17:00,,2025-11-21 07:00,2025-11-21 17:00,2025-11-21 07:00,2025-11-21 17:00,2024-02-27 07:00,2024-03-04 17:00,2025-12-02 07:00,2025-12-02 17:00,,PT_Normal,,,,,rEprimpabUG26S4QeiT2Vg,E7bfpzn2R0ugj//enT4rLg,,,N,0,0,,,,,,,,2025-07-16 14:09,2025-11-20 21:42,ARAJSHEKAR,jleon,,N,
100231223,122698,18114517,363246,0,N,1,N,N,CP_Drtn,TT_Task,DT_FixedDUR2,TK_Active,CN.SEA4.6710,REMEDY - FRAME & DRYWALL - SEA4 - GL 5-10 - C LINE - L2,,-30,0,0,6.666667,3.333333,10,150,0,0,0,,2024-10-07 07:00,,2025-12-02 17:00,2025-12-02 17:00,,2025-12-08 07:00,2025-12-08 07:00,2025-12-08 07:00,2025-12-08 07:00,2024-10-07 07:00,2024-10-31 17:00,2025-12-02 17:00,2025-12-02 17:00,,PT_Normal,,,,,LNCXG7Z1hkyeqOjJyVQVAw,Tfgkb/XFVUidQbmuoKeWGw,,,N,6.666667,0,,,,,,,,2025-07-16 14:09,2025-11-20 21:42,ARAJSHEKAR,jleon,,N,
100231225,122698,18114517,363246,100,N,1,N,N,CP_Drtn,TT_Task,DT_FixedDUR2,TK_Active,CN.SEA4.6730,REMEDY - FRAME & DRYWALL - SEA4 - GL 10-15 - C LINE - L2,,-30,0,30,8,2,10,150,0,0,0,,2024-08-05 07:00,,2025-11-26 07:00,2025-12-02 17:00,,2025-12-03 07:00,2025-12-05 17:00,2025-12-03 07:00,2025-12-05 17:00,2024-08-05 07:00,2024-08-28 17:00,2025-11-26 07:00,2025-12-02 17:00,,PT_Normal,,,,,9InAYM7KKUGriYjO1WpewQ,WF6Tka+5Ok283QsjKDEczQ,,,N,8,0,,,,,,,,2025-07-16 14:09,2025-11-20 21:42,ARAJSHEKAR,jleon,,N,
100231226,122698,18114517,363246,100,N,1,N,N,CP_Drtn,TT_Task,DT_FixedDUR2,TK_Active,CN.SEA4.6750,IMPACT - REMEDY - MEP SCAFFOLDINGS IN THE WAY - SEA4 - GL 5-10 - C LINE - L2,,10,40,10,0,0,0,40,0,0,0,,2024-07-22 07:00,,2025-11-24 07:00,2025-11-24 17:00,,2025-11-21 07:00,2025-11-21 17:00,2025-11-21 07:00,2025-11-21 17:00,2024-10-04 07:00,2024-10-10 17:00,2025-11-24 07:00,2025-11-24 17:00,,PT_Normal,,,,,jecsljdGi0ip7/5AqwgByw,Z1CsLRubnkiq8d8Pu+2CoQ,,,N,0,0,,,,,,,,2025-07-16 14:09,2025-11-20 21:42,ARAJSHEKAR,jleon,,N,
100231228,122698,18114517,363246,100,N,1,N,N,CP_Drtn,TT_Task,DT_FixedDUR2,TK_Active,CN.SEA4.6770,"IMPACT - MEP BARRICADE, MATERIAL AND SCAFFOLDING IN THE WAY FOR 2ND LAYER - SEA4 - GL 10-15 - C LINE - L2",,0,30,30,8,2,10,150,0,0,0,,2024-08-05 07:00,,2025-11-21 07:00,2025-11-25 17:00,,2025-11-21 07:00,2025-11-25 17:00,2025-11-21 07:00,2025-11-25 17:00,2024-08-05 07:00,2024-08-28 17:00,2025-11-21 07:00,2025-11-25 17:00,,PT_Normal,,,,,7ACjnf3Rw0qFXcBiNJesSw,wQUa3clz+kyXbIS/RvvxhQ,,,N,8,0,,,,,,,,2025-07-16 14:09,2025-11-20 21:42,ARAJSHEKAR,jleon,,N,
100231570,122698,18114518,363246,100,N,1,N,N,CP_Drtn,TT_Task,DT_FixedDUR2,TK_Active,CN.AB.AR.7820,IMPACT - E4 MEP MATERIAL EQUIPMENT IN WAY/ MEP Rough in -ELEVATOR 22 HALLWAY - SEA5 FIZ - GL 6-1 - C-A - L3,,-30,0,20,2,8,10,50,0,0,0,,2024-10-24 07:00,,2025-11-18 07:00,2025-11-19 17:00,,2025-11-21 07:00,2025-11-24 17:00,2025-11-21 07:00,2025-11-24 17:00,2024-04-16 07:00,2024-04-22 17:00,2025-11-18 07:00,2025-11-19 17:00,,PT_Normal,,,,,bhTUEivnNESdShkwh3ChDg,4Tl4JGbtnEmVbej5gi0W9w,,,N,2,0,,,,,,,,2025-07-16 14:09,2025-11-20 21:42,ARAJSHEKAR,jleon,,N,
100231589,122698,18114518,363246,0,N,1,N,N,CP_Drtn,TT_Task,DT_FixedDUR2,TK_Active,CN.SEA5.10950,INSTALL EDGE METAL & MEMBRANE - GL 5-7 - A - L4 ROOF,,80,650,10,0,0,0,50,0,0,0,,2025-07-14 07:00,,2025-12-05 07:00,2025-12-05 17:00,,2025-11-21 07:00,2025-11-21 17:00,2025-11-21 07:00,2025-11-21 17:00,2025-07-25 07:00,2025-07-31 17:00,2025-12-05 07:00,2025-12-05 17:00,,PT_Normal,,,,,KT30m4UZnEKqCpWSbPKzbg,nng8vH29k02c0lktDjaugw,,,N,0,0,,,,,,,,2025-07-16 14:09,2025-11-20 21:42,ARAJSHEKAR,jleon,,N,
100231608,122698,18114518,363246,0,N,1,N,N,CP_Drtn,TT_Task,DT_FixedDUR2,TK_Active,CN.SEA5.11160,IOCC1394 TO BE APPROVED - L2 - C&D-LINE - GL 24,,0,0,20,0,0,0,70,0,0,0,,2025-02-22 07:00,,2025-11-21 07:00,2025-11-24 17:00,,2025-11-21 07:00,2025-11-24 17:00,2025-11-21 07:00,2025-11-24 17:00,2025-06-23 07:00,2025-07-01 17:00,2025-11-21 07:00,2025-11-24 17:00,,PT_Normal,,,,,LI+IzoSUTUeT9JwL9n7LYA,QpLujkv0bEil8zaxJdejmA,,,N,0,0,,,,,,,,2025-07-16 14:09,2025-11-20 21:42,ARAJSHEKAR,jleon,,N,
100231685,122698,18114519,363246,0,N,1,N,N,CP_Drtn,TT_Task,DT_FixedDUR2,TK_Active,CN.SEB1.1081,INSTALL MIRRORS - SEB1 - GL 19-22 - C-A - L1,,-10,0,50,0,0,0,50,0,0,0,,2025-10-16 07:00,,2025-11-20 07:00,2025-11-26 17:00,,2025-11-21 07:00,2025-12-01 17:00,2025-11-21 07:00,2025-12-01 17:00,2025-10-16 07:00,2025-10-22 17:00,2025-11-20 07:00,2025-11-26 17:00,,PT_Normal,,,,,I6TIpG5Lv0aQdpB9ca3nTg,E9UVSY+o+kKW3EhzhMUJoQ,,,N,0,0,,,,,,,,2025-07-16 14:09,2025-11-20 21:42,ARAJSHEKAR,jleon,,N,
100232091,122698,18114521,363246,0,N,1,N,N,CP_Drtn,TT_Task,DT_FixedDUR2,TK_Active,CN.SEB3R.4860,INSTALL GOAL POSTS - 7A WAFER I/O - SEB3 - GL 25-28 - C-A - L1,,-40,0,0,0,0,0,50,0,0,0,,2024-09-13 07:00,,2025-11-25 17:00,2025-11-25 17:00,,2025-12-04 07:00,2025-12-04 07:00,2025-12-04 07:00,2025-12-04 07:00,2024-09-13 07:00,2024-09-20 17:00,2025-11-25 17:00,2025-11-25 17:00,,PT_Normal,,,,,v+OG6xkUNku0Au2eu2kIrw,QnMEkONQ50CD3BbyL4G+iA,,,N,0,0,,,,,,,,2025-07-16 14:09,2025-11-20 21:42,ARAJSHEKAR,jleon,,N,
100232094,122698,18114521,363246,0,N,1,N,N,CP_Drtn,TT_Task,DT_FixedDUR2,TK_Active,CN.SEB3R.4880,IMPACT - ALUMINIUM SLIDING DOOR -SHOP DRAWINGS & FAB - GOAL POSTS - 7A WAFER I/O - SEB3 - GL 25-28 - C-A - L1,,-40,0,20,0,0,0,50,0,0,0,,2024-09-13 07:00,,2025-11-17 07:00,2025-11-18 17:00,,2025-11-21 07:00,2025-11-24 17:00,2025-11-21 07:00,2025-11-24 17:00,2024-09-13 07:00,2024-09-20 17:00,2025-11-17 07:00,2025-11-18 17:00,,PT_Normal,,,,,qfs5xmqLCUyicaBrCh7wtA,DYzxboNoNEObKO4iNilHSw,,,N,0,0,,,,,,,,2025-07-16 14:09,2025-11-20 21:42,ARAJSHEKAR,jleon,,N,
100232097,122698,18114521,363246,0,N,1,N,N,CP_Drtn,TT_Task,DT_FixedDUR2,TK_Active,CN.SEB55410,IMPACT - MC DEAN CABLE TRAY IN THE WAY & SECAI DS/AD OPENING - SEB3 - GL 25-28 - T/L MAINTAINANCE RM 23 - L2,,80,0,0,0,0,0,50,0,0,0,,2024-12-02 07:00,,2025-12-04 17:00,2025-12-04 17:00,,2025-11-21 07:00,2025-11-21 07:00,2025-11-21 07:00,2025-11-21 07:00,2024-12-02 07:00,2024-12-09 17:00,2025-12-04 17:00,2025-12-04 17:00,,PT_Normal,,,,,2e2x3jlVzU24ubrw4GR2eg,v70tqSD43UiBo7VRM8LwIw,,,N,0,0,,,,,,,,2025-07-16 14:09,2025-11-20 21:42,ARAJSHEKAR,jleon,,N,
100232224,122698,18114522,363246,100,N,1,N,N,CP_Drtn,TT_Task,DT_FixedDUR2,TK_Active,CN.SEB4.6370,DS STEEL SPRAY SFRM - SEB4 - GL 28-31 - C-D - L3 CEILING,,40,0,0,0,0,0,50,0,0,0,,2024-05-28 07:00,,2025-12-05 17:00,2025-12-05 17:00,,2025-12-02 07:00,2025-12-02 07:00,2025-12-02 07:00,2025-12-02 07:00,2024-05-28 07:00,2024-06-04 17:00,2025-12-05 17:00,2025-12-05 17:00,,PT_Normal,,,,,H3RyMAxJ+0Guy2rMyFdyxw,CvTo8hXY1k6t0JC06l+NmQ,,,N,0,0,,,,,,,,2025-07-16 14:09,2025-11-20 21:42,ARAJSHEKAR,jleon,,N,
100232246,122698,18114522,363246,100,N,1,N,N,CP_Drtn,TT_Task,DT_FixedDUR2,TK_Active,CN.SEB4.8970,IMPACT - PENDING ACCESS TO AREA - SEB4 - GL 28-31 - C-D - L3 CEILING,,40,0,20,0,0,0,50,0,0,0,,2024-05-28 07:00,,2025-12-01 07:00,2025-12-02 17:00,,2025-11-21 07:00,2025-11-24 17:00,2025-11-21 07:00,2025-11-24 17:00,2024-05-28 07:00,2024-06-04 17:00,2025-12-01 07:00,2025-12-02 17:00,,PT_Normal,,,,,aQFqBbibmUqaSkUgxED5tQ,vokYReLFTkGa+i+hZx9t9w,,,N,0,0,,,,,,,,2025-07-16 14:09,2025-11-20 21:42,ARAJSHEKAR,jleon,,N,
100232250,122698,18114522,363246,0,N,1,N,N,CP_Drtn,TT_Task,DT_FixedDUR2,TK_Active,CN.SEB4.9020,INSTALL FRAMING/DRYWALL/TAPE+FLOAT - ELEVATOR 19 - Lvl 3 only remaining,,-30,0,30,7.5,2.5,10,120,58,43.5,14.5,,2024-12-23 07:00,,2025-12-03 07:00,2025-12-05 17:00,,2025-12-08 07:00,2025-12-10 17:00,2025-12-08 07:00,2025-12-10 17:00,2025-01-20 07:00,2025-02-04 17:00,2025-12-03 07:00,2025-12-05 17:00,,PT_Normal,,,,,mwQWQiIkB0G6f8j7AM8o6A,PjBz6MmfIEa2EBkS8CRTFw,,,N,7.5,43.5,,,,,,,,2025-07-16 14:09,2025-11-20 21:42,ARAJSHEKAR,jleon,,N,
100232263,122698,18114522,363246,100,N,1,N,N,CP_Drtn,TT_Task,DT_FixedDUR2,TK_Active,CN.SEB4.9140,IMPACT - MEP DUCTS IN THE WAY SHAFT LINER - ELEVATOR 19 - ALL LEVELS,,-30,0,20,483.333333,96.666667,580,120,58,48.333333,9.666667,,2025-02-25 07:00,,2025-11-18 07:00,2025-11-19 17:00,,2025-11-21 07:00,2025-11-24 17:00,2025-11-21 07:00,2025-11-24 17:00,2024-11-18 07:00,2024-12-09 17:00,2025-11-18 07:00,2025-11-19 17:00,,PT_Normal,,,,,pO6x6QIQb0mScDKbMf9uqQ,PjBz6MmfIEa2EBkS8CRTFw,,,N,483.333333,48.333333,,,,,,,,2025-07-16 14:09,2025-11-20 21:42,ARAJSHEKAR,jleon,,N,
100232325,122698,18114523,363246,100,N,1,N,N,CP_Drtn,TT_Task,DT_FixedDUR2,TK_Active,CN.SWB5.1720,IMPACT - SECAI DEMO TEMP DOOR FRAMES - RE-INSTALL DOOR FRAMES & DOORS - MCC/ IO ROOM - SE PENTHOUSE,49817,50,0,10,0,580,580,20,58,0,58,,2024-09-26 07:00,,2025-12-02 07:00,2025-12-02 17:00,,2025-11-21 07:00,2025-11-21 17:00,2025-11-21 07:00,2025-11-21 17:00,2024-10-10 07:00,2024-10-11 17:00,2025-12-02 07:00,2025-12-02 17:00,,PT_Normal,2024-10-01 07:00,,,,kbkUZspBhki88hs2R4AHSw,cLQZQjW5vkOQBUGQPFP05A,,,N,0,0,,,,,,,,2025-07-16 14:09,2025-11-20 21:42,ARAJSHEKAR,jleon,,N,
100232450,122698,18114523,363246,100,N,1,N,N,CP_Drtn,TT_Task,DT_FixedDUR2,TK_Active,CN.SEB5.9300,PREP & INSTALL INSTALL PERMANENT DOOR & FRAME - MECHANICAL ROOM - FAB116514A - ELEVATOR 18,,90,50,0,0,0,0,150,0,0,0,,2024-10-01 07:00,,2025-12-05 17:00,2025-12-05 17:00,,2025-11-21 07:00,2025-11-21 07:00,2025-11-21 07:00,2025-11-21 07:00,2024-10-01 07:00,2024-10-25 17:00,2025-12-05 17:00,2025-12-05 17:00,,PT_Normal,,,,,jORd4fVAHEimX7q/70LMMA,/V8kdjPGd0ajg8nCGMGVyw,,,N,0,0,,,,,,,,2025-07-16 14:09,2025-11-20 21:42,ARAJSHEKAR,jleon,,N,
100232453,122698,18114523,363246,0,N,1,N,N,CP_Drtn,TT_Task,DT_FixedDUR2,TK_Active,CN.SEB5.9330,INTERIOR SHAFT & TAPE & FLOAT - SHAFT & DOOR FRONTS  - ELEVATOR 18,,40,0,50,0,0,0,100,0,0,0,,2025-08-25 07:00,,2025-12-01 07:00,2025-12-05 17:00,,2025-11-21 07:00,2025-12-01 17:00,2025-11-21 07:00,2025-12-01 17:00,2025-09-04 07:00,2025-09-17 17:00,2025-12-01 07:00,2025-12-05 17:00,,PT_Normal,,,,,7vU7Tna7kU6paWifzb+pTg,aoHNzoYdrUueaQKK/CD9HA,,,N,0,0,,,,,,,,2025-07-16 14:09,2025-11-20 21:42,ARAJSHEKAR,jleon,,N,
100232465,122698,18114523,363246,0,N,1,N,N,CP_Drtn,TT_Task,DT_FixedDUR2,TK_Active,CN.SWB5.10640,IMPACT - SECURITY ROUGH IN NOT COMPLETE - MCC ROOM / SE PENTHOUSE - GL 3-4,49817,50,0,20,0,580,580,20,58,0,58,,2024-10-21 07:00,,2025-12-02 07:00,2025-12-03 17:00,,2025-11-21 07:00,2025-11-24 17:00,2025-11-21 07:00,2025-11-24 17:00,2024-10-21 07:00,2024-10-22 17:00,2025-12-02 07:00,2025-12-03 17:00,,PT_Normal,,,,,z44B0BQ/rkahH1G09o2SXQ,n1lR+Aafp02A2keHxjuciQ,,,N,0,0,,,,,,,,2025-07-16 14:09,2025-11-20 21:42,ARAJSHEKAR,jleon,,N,
100233083,122698,18114997,597,0,N,1,N,N,CP_Drtn,TT_Task,DT_FixedDUR2,TK_Active,FAB146107A-30,IMPACT - SECAI LAYDOWN FOR DOORS AND FRAMES - FAB146107A,,-46,0,48,0,0,0,40,0,0,0,,2025-07-09 08:00,,2025-11-13 10:00,2025-11-21 10:00,,2025-11-21 08:00,2025-11-28 17:00,2025-11-21 08:00,2025-11-28 17:00,2025-07-09 08:00,2025-07-15 17:00,2025-11-13 10:00,2025-11-21 10:00,,PT_Normal,,,,,4XxjeqHXFEmdT4Xj8ep1CA,uY1eQ5nTT2OseyXHevKWtA,,,N,0,0,,,,,,,,2025-07-16 14:09,2025-11-20 21:59,ARAJSHEKAR,jleon,,N,
100233102,122698,18115003,597,0,N,1,N,N,CP_Drtn,TT_Task,DT_FixedDUR2,TK_Active,FAB146105D-11,IMPACT - PROCUREMENT - NEW WALL THICKNESS ISSUE - 146105D,,-30,0,40,0,0,0,432,0,0,0,,2025-06-09 08:00,,2025-11-17 10:00,2025-11-24 10:00,,2025-11-21 08:00,2025-11-27 17:00,2025-11-21 08:00,2025-11-27 17:00,2025-06-09 08:00,2025-08-21 17:00,2025-11-17 10:00,2025-11-24 10:00,,PT_Normal,,,,,1niX3h37y0KDLwqYv00FuQ,lnSYPVVsR+C0fQBoMR49Hw,,,N,0,0,,,,,,,,2025-07-16 14:09,2025-11-20 21:59,ARAJSHEKAR,jleon,,N,
100233127,122698,18115004,597,0,N,1,N,N,CP_Drtn,TT_Task,DT_FixedDUR2,TK_Active,FAB146101A-04,INSTALL DOOR & HARDWARE - FAB146101A,,18,448,40,0,0,0,40,0,0,0,,2025-11-10 08:00,,2025-11-25 10:00,2025-12-02 10:00,,2025-11-21 08:00,2025-11-27 17:00,2025-11-21 08:00,2025-11-27 17:00,2025-11-10 08:00,2025-11-14 17:00,2025-11-25 10:00,2025-12-02 10:00,,PT_Normal,,,,,kAH+/uztCEOzOr3HYqueDQ,XtSE85yzQpy2Jz9d5W8cJw,,,N,0,0,,,,,,,,2025-07-16 14:09,2025-11-20 21:46,ARAJSHEKAR,jleon,,N,
100233133,122698,18115004,597,0,N,1,N,N,CP_Drtn,TT_Task,DT_FixedDUR2,TK_Active,FAB146101B-04,INSTALL DOOR & HARDWARE - FAB146101B,,18,448,40,0,0,0,40,0,0,0,,2025-11-10 08:00,,2025-11-25 10:00,2025-12-02 10:00,,2025-11-21 08:00,2025-11-27 17:00,2025-11-21 08:00,2025-11-27 17:00,2025-11-10 08:00,2025-11-14 17:00,2025-11-25 10:00,2025-12-02 10:00,,PT_Normal,,,,,kG8+Bi2pyUOWwUgR4ld0Dw,QGVR7ib3SMa54YTN6YogUw,,,N,0,0,,,,,,,,2025-07-16 14:09,2025-11-20 21:46,ARAJSHEKAR,jleon,,N,
100233235,122698,18115010,597,0,N,1,N,N,CP_Drtn,TT_Task,DT_FixedDUR2,TK_Active,FAB146507C-04,INSTALL DOOR & HARDWARE - FAB146507C,,18,448,40,0,0,0,40,0,0,0,,2025-11-18 08:00,,2025-11-25 10:00,2025-12-02 10:00,,2025-11-21 08:00,2025-11-27 17:00,2025-11-21 08:00,2025-11-27 17:00,2025-11-18 08:00,2025-11-24 17:00,2025-11-25 10:00,2025-12-02 10:00,,PT_Normal,,,,,4ZGpV5MBEU2f8NhGn8e11A,1ioYbqfVSFOX33BZ3FBfow,,,N,0,0,,,,,,,,2025-07-16 14:09,2025-11-20 21:46,ARAJSHEKAR,jleon,,N,
100233239,122698,18115010,597,0,N,1,N,N,CP_Drtn,TT_Task,DT_FixedDUR2,TK_Active,FAB146507B-00,IMPACT OPENING REVIEW - FAB146507B,,-46,0,48,0,0,0,120,0,0,0,,2025-06-20 08:00,,2025-11-13 10:00,2025-11-21 10:00,,2025-11-21 08:00,2025-11-28 17:00,2025-11-21 08:00,2025-11-28 17:00,2025-06-20 08:00,2025-07-10 17:00,2025-11-13 10:00,2025-11-21 10:00,,PT_Normal,,,,,IGPbExAtt0m2CAd9CPfcVg,mJyViI7PTV+gXdypTZsrHw,,,N,0,0,,,,,,,,2025-07-16 14:09,2025-11-20 21:59,ARAJSHEKAR,jleon,,N,
100233253,122698,18115013,597,0,N,1,N,N,CP_Drtn,TT_Task,DT_FixedDUR2,TK_Active,FAB146502A-08,IMPACT - SECAI MEP TRADE OBSTRUCTION - FAB146502A,,-30,64,40,0,0,0,56,0,0,0,,2025-06-02 08:00,,2025-11-17 10:00,2025-11-24 10:00,,2025-11-21 08:00,2025-11-27 17:00,2025-11-21 08:00,2025-11-27 17:00,2025-06-24 08:00,2025-07-02 17:00,2025-11-17 10:00,2025-11-24 10:00,,PT_Normal,,,,,bnFWgSPxgEKWpYOK+zcKDQ,rS00opoZQ7el9Kz/562+5w,,,N,0,0,,,,,,,,2025-07-16 14:09,2025-11-20 21:59,ARAJSHEKAR,jleon,,N,
100233314,122698,18115020,597,0,N,1,N,N,CP_Drtn,TT_Task,DT_FixedDUR2,TK_Active,FAB140508A-00,IMPACT OPENING REVIEW- FAB140508A,,-46,0,48,0,0,0,120,0,0,0,,2025-06-20 08:00,,2025-11-13 10:00,2025-11-21 10:00,,2025-11-21 08:00,2025-11-28 17:00,2025-11-21 08:00,2025-11-28 17:00,2025-06-20 08:00,2025-07-10 17:00,2025-11-13 10:00,2025-11-21 10:00,,PT_Normal,,,,,wh5Qt+Hmk0mMA/dkb3bqew,eum+qWeVT++Vm8ZKeGwJRQ,,,N,0,0,,,,,,,,2025-07-16 14:09,2025-11-20 21:59,ARAJSHEKAR,jleon,,N,
100233386,122698,18115027,597,0,N,1,N,N,CP_Drtn,TT_Task,DT_FixedDUR2,TK_Active,FAB140303B-04,INSTALL DOOR & HARDWARE - FAB140303B,,18,448,40,0,0,0,40,0,0,0,,2025-09-10 08:00,,2025-11-25 10:00,2025-12-02 10:00,,2025-11-21 08:00,2025-11-27 17:00,2025-11-21 08:00,2025-11-27 17:00,2025-09-10 08:00,2025-09-16 17:00,2025-11-25 10:00,2025-12-02 10:00,,PT_Normal,,,,,QSiJfqMMVk63Qs38oNRYoQ,ck5PNFsCRgesKmhcd8PYFQ,,,N,0,0,,,,,,,,2025-07-16 14:09,2025-11-20 21:46,ARAJSHEKAR,jleon,,N,
100233482,122698,18115036,597,0,N,1,N,N,CP_Drtn,TT_Task,DT_FixedDUR2,TK_Active,FAB140106A-04,INSTALL DOOR & HARDWARE - FAB140106A,,18,448,40,0,0,0,40,0,0,0,,2025-11-19 08:00,,2025-11-25 10:00,2025-12-02 10:00,,2025-11-21 08:00,2025-11-27 17:00,2025-11-21 08:00,2025-11-27 17:00,2025-11-19 08:00,2025-11-25 17:00,2025-11-25 10:00,2025-12-02 10:00,,PT_Normal,,,,,IMi5MHmAtkq5bBAEhxwXFA,bkuMkLNpSriW1FOMaocqDA,,,N,0,0,,,,,,,,2025-07-16 14:09,2025-11-20 21:46,ARAJSHEKAR,jleon,,N,
100233496,122698,18115038,597,0,N,1,N,N,CP_Drtn,TT_Task,DT_FixedDUR2,TK_Active,FAB140109A-04,INSTALL DOOR & HARDWARE - FAB140109A,,18,448,40,0,0,0,40,0,0,0,,2025-09-10 08:00,,2025-11-25 10:00,2025-12-02 10:00,,2025-11-21 08:00,2025-11-27 17:00,2025-11-21 08:00,2025-11-27 17:00,2025-09-10 08:00,2025-09-16 17:00,2025-11-25 10:00,2025-12-02 10:00,,PT_Normal,,,,,GBmZW78ct0OXXhSorq1DyQ,sRgJPuiKQy+ofd4zd/+RQg,,,N,0,0,,,,,,,,2025-07-16 14:09,2025-11-20 21:46,ARAJSHEKAR,jleon,,N,
100233506,122698,18115039,597,0,N,1,N,N,CP_Drtn,TT_Task,DT_FixedDUR2,TK_Active,FAB140104A-04,INSTALL DOOR & HARDWARE - FAB140104A,,18,448,40,0,0,0,40,0,0,0,,2025-11-10 08:00,,2025-11-25 10:00,2025-12-02 10:00,,2025-11-21 08:00,2025-11-27 17:00,2025-11-21 08:00,2025-11-27 17:00,2025-11-10 08:00,2025-11-14 17:00,2025-11-25 10:00,2025-12-02 10:00,,PT_Normal,,,,,P/x+rwsszEGLoGCUKtxUXA,JLiPYe5DSTyn1wmUJg8aKw,,,N,0,0,,,,,,,,2025-07-16 14:09,2025-11-20 21:46,ARAJSHEKAR,jleon,,N,
100233587,122698,18114768,597,0,N,1,N,N,CP_Drtn,TT_Task,DT_FixedDUR2,TK_Active,FAB130505A-04,INSTALL DOOR & HARDWARE - FAB130505A,,32,448,40,0,0,0,40,0,0,0,,2025-06-13 08:00,,2025-11-27 08:00,2025-12-03 17:00,,2025-11-21 08:00,2025-11-27 17:00,2025-11-21 08:00,2025-11-27 17:00,2025-06-13 08:00,2025-06-19 17:00,2025-11-27 08:00,2025-12-03 17:00,,PT_Normal,,,,,9OMPhf0iOk6iU46xneyBFA,S5qMYdGQSX24kYhMTdyaCw,,,N,0,0,,,,,,,,2025-07-16 14:09,2025-11-20 21:46,ARAJSHEKAR,jleon,,N,
100233604,122698,18114706,597,0,N,1,N,N,CP_Drtn,TT_Task,DT_FixedDUR2,TK_Active,FAB136108B-04,INSTALL DOOR & HARDWARE - FAB136108B,,18,448,40,0,0,0,40,0,0,0,,2025-05-07 08:00,,2025-11-25 10:00,2025-12-02 10:00,,2025-11-21 08:00,2025-11-27 17:00,2025-11-21 08:00,2025-11-27 17:00,2025-05-07 08:00,2025-05-13 17:00,2025-11-25 10:00,2025-12-02 10:00,,PT_Normal,,,,,EyYiQ8B/LE+MF9awuQZd6Q,NNzihaqcTSuC8RfiqQyK/w,,,N,0,0,,,,,,,,2025-07-16 14:09,2025-11-20 21:46,ARAJSHEKAR,jleon,,N,
100233610,122698,18114706,597,0,N,1,N,N,CP_Drtn,TT_Task,DT_FixedDUR2,TK_Active,FAB136108C-04,INSTALL DOOR & HARDWARE - FAB136108C,,18,448,40,0,0,0,40,0,0,0,,2025-06-11 08:00,,2025-11-25 10:00,2025-12-02 10:00,,2025-11-21 08:00,2025-11-27 17:00,2025-11-21 08:00,2025-11-27 17:00,2025-06-11 08:00,2025-06-17 17:00,2025-11-25 10:00,2025-12-02 10:00,,PT_Normal,,,,,MbhHeXpWfUigbZENnOpVLg,Ohy0AXzkQdecWLSl+/ULQA,,,N,0,0,,,,,,,,2025-07-16 14:09,2025-11-20 21:46,ARAJSHEKAR,jleon,,N,
100233640,122698,18114751,597,0,N,1,N,N,CP_Drtn,TT_Task,DT_FixedDUR2,TK_Active,FAB136203B-04,INSTALL DOOR & HARDWARE - FAB136203B,,32,448,40,0,0,0,40,0,0,0,,2025-06-19 08:00,,2025-11-27 08:00,2025-12-03 17:00,,2025-11-21 08:00,2025-11-27 17:00,2025-11-21 08:00,2025-11-27 17:00,2025-06-19 08:00,2025-06-25 17:00,2025-11-27 08:00,2025-12-03 17:00,,PT_Normal,,,,,/2tZ4UKJzEGgDkqFlf+zWQ,xx61VPxMRFeun1DhFQSCdg,,,N,0,0,,,,,,,,2025-07-16 14:09,2025-11-20 21:46,ARAJSHEKAR,jleon,,N,
100233663,122698,18114763,597,0,N,1,N,N,CP_Drtn,TT_Task,DT_FixedDUR2,TK_Active,FAB136310C-04,INSTALL DOOR & HARDWARE - FAB136310C,,32,448,40,0,0,0,40,0,0,0,,2025-04-01 08:00,,2025-11-27 08:00,2025-12-03 17:00,,2025-11-21 08:00,2025-11-27 17:00,2025-11-21 08:00,2025-11-27 17:00,2025-04-01 08:00,2025-04-07 17:00,2025-11-27 08:00,2025-12-03 17:00,,PT_Normal,,,,,yxG6dghLYEukwsDl1RSH2Q,BqU0cqfYTIWqFxiOaKQ6Kw,,,N,0,0,,,,,,,,2025-07-16 14:09,2025-11-20 21:46,ARAJSHEKAR,jleon,,N,
100233721,122698,18114713,597,0,N,1,N,N,CP_Drtn,TT_Task,DT_FixedDUR2,TK_Active,FAB136502B-03,INSTALL DOOR FRAME BY SECAI - FAB136502B - HANDED OVER ON 10/01,,-30,0,48,0,0,0,8,0,0,0,,2025-10-01 08:00,,2025-11-17 10:00,2025-11-25 10:00,,2025-11-21 08:00,2025-11-28 17:00,2025-11-21 08:00,2025-11-28 17:00,2025-10-01 08:00,2025-10-01 17:00,2025-11-17 10:00,2025-11-25 10:00,,PT_Normal,,,,,yxUJ43mCAU+OVPiUzlD7eA,rGpi7hsKQiec+zqE2QBTiA,,,N,0,0,,,,,,,,2025-07-16 14:09,2025-11-20 21:59,ARAJSHEKAR,jleon,,N,
100233742,122698,18114767,597,0,N,1,N,N,CP_Drtn,TT_Task,DT_FixedDUR2,TK_Active,FAB136505C-04,INSTALL DOOR & HARDWARE - FAB136505C,,18,448,40,0,0,0,40,0,0,0,,2025-11-18 08:00,,2025-11-25 10:00,2025-12-02 10:00,,2025-11-21 08:00,2025-11-27 17:00,2025-11-21 08:00,2025-11-27 17:00,2025-11-18 08:00,2025-11-24 17:00,2025-11-25 10:00,2025-12-02 10:00,,PT_Normal,,,,,n5yHTEvfR0SY85wnlryvRQ,Bk13Xnl0RRSCjlkxPR6Ykw,,,N,0,0,,,,,,,,2025-07-16 14:09,2025-11-20 21:46,ARAJSHEKAR,jleon,,N,
100233747,122698,18114767,597,0,N,1,N,N,CP_Drtn,TT_Task,DT_FixedDUR2,TK_Active,FAB136505A-03A,INSTALL DOOR FRAMES - RE-ORDERED - FAB136505A,,-30,0,48,0,0,0,232,0,0,0,,2025-08-18 08:00,,2025-11-17 10:00,2025-11-25 10:00,,2025-11-21 08:00,2025-11-28 17:00,2025-11-21 08:00,2025-11-28 17:00,2025-08-18 08:00,2025-09-25 17:00,2025-11-17 10:00,2025-11-25 10:00,,PT_Normal,,,,,cuVdbH5SvEq9CK+hx+fu3g,z7ALXBdCRXyHmMJ30r3pUg,,,N,0,0,,,,,,,,2025-07-16 14:09,2025-11-20 21:59,ARAJSHEKAR,jleon,,N,
100233755,122698,18114769,597,0,N,1,N,N,CP_Drtn,TT_Task,DT_FixedDUR2,TK_Active,FAB130504A-04,INSTALL DOOR & HARDWARE - FAB130504A,,32,448,40,0,0,0,40,0,0,0,,2025-06-11 08:00,,2025-11-27 08:00,2025-12-03 17:00,,2025-11-21 08:00,2025-11-27 17:00,2025-11-21 08:00,2025-11-27 17:00,2025-06-11 08:00,2025-06-17 17:00,2025-11-27 08:00,2025-12-03 17:00,,PT_Normal,,,,,IERn2MY7k0Sy08OPwC2+bQ,30gjoK/LRg22h9VF++oY8g,,,N,0,0,,,,,,,,2025-07-16 14:09,2025-11-20 21:46,ARAJSHEKAR,jleon,,N,
100233761,122698,18114769,597,0,N,1,N,N,CP_Drtn,TT_Task,DT_FixedDUR2,TK_Active,FAB130504B-04,INSTALL DOOR & HARDWARE - FAB130504B,,32,448,40,0,0,0,40,0,0,0,,2025-05-19 08:00,,2025-11-27 08:00,2025-12-03 17:00,,2025-11-21 08:00,2025-11-27 17:00,2025-11-21 08:00,2025-11-27 17:00,2025-05-19 08:00,2025-05-23 17:00,2025-11-27 08:00,2025-12-03 17:00,,PT_Normal,,,,,EvGmkcNWnEOhGo9+zq3EPw,6PVmEMHpRoqukoylqlUIEQ,,,N,0,0,,,,,,,,2025-07-16 14:09,2025-11-20 21:46,ARAJSHEKAR,jleon,,N,
100233767,122698,18114769,597,0,N,1,N,N,CP_Drtn,TT_Task,DT_FixedDUR2,TK_Active,FAB130504C-04,INSTALL DOOR & HARDWARE - FAB130504C,,32,448,40,0,0,0,40,0,0,0,,2025-05-19 08:00,,2025-11-27 08:00,2025-12-03 17:00,,2025-11-21 08:00,2025-11-27 17:00,2025-11-21 08:00,2025-11-27 17:00,2025-05-19 08:00,2025-05-23 17:00,2025-11-27 08:00,2025-12-03 17:00,,PT_Normal,,,,,bhGdMPxJdk2iJyKpmdtmGA,LYVPutfgQRy3c3ZQeRM+VA,,,N,0,0,,,,,,,,2025-07-16 14:09,2025-11-20 21:46,ARAJSHEKAR,jleon,,N,
100233787,122698,18114770,597,0,N,1,N,N,CP_Drtn,TT_Task,DT_FixedDUR2,TK_Active,FAB130507B-04,INSTALL DOOR & HARDWARE - FAB130507B,,18,448,40,0,0,0,40,0,0,0,,2025-11-18 08:00,,2025-11-25 10:00,2025-12-02 10:00,,2025-11-21 08:00,2025-11-27 17:00,2025-11-21 08:00,2025-11-27 17:00,2025-11-18 08:00,2025-11-24 17:00,2025-11-25 10:00,2025-12-02 10:00,,PT_Normal,,,,,zEoJ18AbqEaGVKIBAXadqg,kjcORCfJR06r1P1vh0mgJg,,,N,0,0,,,,,,,,2025-07-16 14:09,2025-11-20 21:46,ARAJSHEKAR,jleon,,N,
100233790,122698,18114770,597,0,N,1,N,N,CP_Drtn,TT_Task,DT_FixedDUR2,TK_Active,FAB130507C-00,SECAI SCP WALL FINISH - FAB130507C,,-256,0,48,0,0,0,8,0,0,0,,2025-08-06 08:00,,2025-11-26 08:00,2025-12-03 17:00,,2026-01-09 08:00,2026-01-16 17:00,2026-01-09 08:00,2026-01-16 17:00,2025-08-06 08:00,2025-08-06 17:00,2025-11-26 08:00,2025-12-03 17:00,,PT_Normal,,,,,s6EZ5dq/Dk+nFTF2fKFHOg,sqM8lmyzQJyW8GlJryBlUw,,,N,0,0,,,,,,,,2025-07-16 14:09,2025-11-20 21:59,ARAJSHEKAR,jleon,,N,
100233813,122698,18114774,597,0,N,1,N,N,CP_Drtn,TT_Task,DT_FixedDUR2,TK_Active,FAB130315A-04,INSTALL DOOR & HARDWARE - FAB130315A,,18,448,40,0,0,0,40,0,0,0,,2025-11-18 08:00,,2025-11-25 10:00,2025-12-02 10:00,,2025-11-21 08:00,2025-11-27 17:00,2025-11-21 08:00,2025-11-27 17:00,2025-11-18 08:00,2025-11-24 17:00,2025-11-25 10:00,2025-12-02 10:00,,PT_Normal,,,,,5J2/CyNa50SjkMtpK2rOAQ,+jutfri4QAyGuEYShSrt/Q,,,N,0,0,,,,,,,,2025-07-16 14:09,2025-11-20 21:46,ARAJSHEKAR,jleon,,N,
100233823,122698,18114787,597,0,N,1,N,N,CP_Drtn,TT_Task,DT_FixedDUR2,TK_Active,FAB130319A-04,INSTALL DOOR & HARDWARE - FAB130319A,,18,448,40,0,0,0,40,0,0,0,,2025-11-13 08:00,,2025-11-25 10:00,2025-12-02 10:00,,2025-11-21 08:00,2025-11-27 17:00,2025-11-21 08:00,2025-11-27 17:00,2025-11-13 08:00,2025-11-19 17:00,2025-11-25 10:00,2025-12-02 10:00,,PT_Normal,,,,,1JIVmR+VPES1hmoTjyQ9ng,Mym4nLcCST+n0uKwmxY/RQ,,,N,0,0,,,,,,,,2025-07-16 14:09,2025-11-20 21:46,ARAJSHEKAR,jleon,,N,
100233828,122698,18114787,597,0,N,1,N,N,CP_Drtn,TT_Task,DT_FixedDUR2,TK_Active,FAB130319B-04,INSTALL DOOR & HARDWARE - FAB130319B,,18,448,40,0,0,0,40,0,0,0,,2025-11-13 08:00,,2025-11-25 10:00,2025-12-02 10:00,,2025-11-21 08:00,2025-11-27 17:00,2025-11-21 08:00,2025-11-27 17:00,2025-11-13 08:00,2025-11-19 17:00,2025-11-25 10:00,2025-12-02 10:00,,PT_Normal,,,,,C3BVXFBJMUK0atVBiPel0w,o/7zpviWSn6mTt3WKGJ8kw,,,N,0,0,,,,,,,,2025-07-16 14:09,2025-11-20 21:46,ARAJSHEKAR,jleon,,N,
100233834,122698,18114787,597,0,N,1,N,N,CP_Drtn,TT_Task,DT_FixedDUR2,TK_Active,FAB130319C-04,INSTALL DOOR & HARDWARE - FAB130319C,,18,448,40,0,0,0,40,0,0,0,,2025-09-10 08:00,,2025-11-25 10:00,2025-12-02 10:00,,2025-11-21 08:00,2025-11-27 17:00,2025-11-21 08:00,2025-11-27 17:00,2025-09-10 08:00,2025-09-16 17:00,2025-11-25 10:00,2025-12-02 10:00,,PT_Normal,,,,,r7korHEfx0mFMIp57zXh2A,t5hfzWEhT3mwbio0PGTQNw,,,N,0,0,,,,,,,,2025-07-16 14:09,2025-11-20 21:46,ARAJSHEKAR,jleon,,N,
100233843,122698,18114728,597,0,N,1,N,N,CP_Drtn,TT_Task,DT_FixedDUR2,TK_Active,FAB130310A-04,INSTALL DOOR & HARDWARE - FAB130310A,,18,448,40,0,0,0,40,0,0,0,,2025-11-18 08:00,,2025-11-25 10:00,2025-12-02 10:00,,2025-11-21 08:00,2025-11-27 17:00,2025-11-21 08:00,2025-11-27 17:00,2025-11-18 08:00,2025-11-24 17:00,2025-11-25 10:00,2025-12-02 10:00,,PT_Normal,,,,,cZACZ3uPaUKApXDR4kcdPA,p0N5b9pxQneQun7sXiVOow,,,N,0,0,,,,,,,,2025-07-16 14:09,2025-11-20 21:46,ARAJSHEKAR,jleon,,N,
100233849,122698,18114728,597,0,N,1,N,N,CP_Drtn,TT_Task,DT_FixedDUR2,TK_Active,FAB130310B-04,INSTALL DOOR & HARDWARE - FAB130310B,,18,448,40,0,0,0,40,0,0,0,,2025-11-18 08:00,,2025-11-25 10:00,2025-12-02 10:00,,2025-11-21 08:00,2025-11-27 17:00,2025-11-21 08:00,2025-11-27 17:00,2025-11-18 08:00,2025-11-24 17:00,2025-11-25 10:00,2025-12-02 10:00,,PT_Normal,,,,,GETeTMmZ5U2Sh4Fh7aAE4g,MenwQcPRRBCByqDj5ih/MA,,,N,0,0,,,,,,,,2025-07-16 14:09,2025-11-20 21:46,ARAJSHEKAR,jleon,,N,
100233865,122698,18114776,597,0,N,1,N,N,CP_Drtn,TT_Task,DT_FixedDUR2,TK_Active,FAB130303A-04,INSTALL DOOR & HARDWARE - FAB130303A,,18,448,40,0,0,0,40,0,0,0,,2025-10-21 08:00,,2025-11-25 10:00,2025-12-02 10:00,,2025-11-21 08:00,2025-11-27 17:00,2025-11-21 08:00,2025-11-27 17:00,2025-10-21 08:00,2025-10-27 17:00,2025-11-25 10:00,2025-12-02 10:00,,PT_Normal,,,,,7g5BQU3WoE2HwkEN2UyX0Q,oJBisPGqSAafXOtOBccufw,,,N,0,0,,,,,,,,2025-07-16 14:09,2025-11-20 21:46,ARAJSHEKAR,jleon,,N,
100233869,122698,18114776,597,0,N,1,N,N,CP_Drtn,TT_Task,DT_FixedDUR2,TK_Active,FAB130303B-04,INSTALL DOOR & HARDWARE - FAB130303B,,32,448,40,0,0,0,40,0,0,0,,2025-06-17 08:00,,2025-11-27 08:00,2025-12-03 17:00,,2025-11-21 08:00,2025-11-27 17:00,2025-11-21 08:00,2025-11-27 17:00,2025-06-17 08:00,2025-06-23 17:00,2025-11-27 08:00,2025-12-03 17:00,,PT_Normal,,,,,+JH1afYy2U+YLTwVsM7mTg,f39FQ6fzTbW3KVohsvirsw,,,N,0,0,,,,,,,,2025-07-16 14:09,2025-11-20 21:46,ARAJSHEKAR,jleon,,N,
100233945,122698,18114779,597,0,N,1,N,N,CP_Drtn,TT_Task,DT_FixedDUR2,TK_Active,FAB130111B-04,INSTALL DOOR & HARDWARE - FAB130111B,,18,448,40,0,0,0,40,0,0,0,,2025-11-13 08:00,,2025-11-25 10:00,2025-12-02 10:00,,2025-11-21 08:00,2025-11-27 17:00,2025-11-21 08:00,2025-11-27 17:00,2025-11-13 08:00,2025-11-19 17:00,2025-11-25 10:00,2025-12-02 10:00,,PT_Normal,,,,,fur3FxFyUkqBtlH4Y3sDJg,5k+2B+kiQbKcoJ3syCmG6A,,,N,0,0,,,,,,,,2025-07-16 14:09,2025-11-20 21:46,ARAJSHEKAR,jleon,,N,
100233955,122698,18115129,597,0,N,1,N,N,CP_Drtn,TT_Task,DT_FixedDUR2,TK_Active,FAB120311A-04,INSTALL DOOR & HARDWARE - FAB120311A,,16,448,40,0,0,0,40,0,0,0,,2025-06-18 08:00,,2025-11-25 08:00,2025-12-01 17:00,,2025-11-21 08:00,2025-11-27 17:00,2025-11-21 08:00,2025-11-27 17:00,2025-06-18 08:00,2025-06-24 17:00,2025-11-25 08:00,2025-12-01 17:00,,PT_Normal,,,,,b/k3ANyF60+LPUVK3kO8RQ,S5nSmqUpRvuvNKC06QNDZw,,,N,0,0,,,,,,,,2025-07-16 14:09,2025-11-20 21:46,ARAJSHEKAR,jleon,,N,
100233992,122698,18114780,597,100,N,1,N,N,CP_Drtn,TT_Task,DT_FixedDUR2,TK_Active,FAB134101A-22,IMPACT - PROCUREMENT DOOR FRAMES - FAB134101A,,48,968,40,0,0,0,320,0,0,0,,2025-06-19 10:00,,2025-12-01 08:00,2025-12-05 17:00,,2025-11-21 08:00,2025-11-27 17:00,2025-11-21 08:00,2025-11-27 17:00,2025-07-03 10:00,2025-08-28 10:00,2025-12-01 08:00,2025-12-05 17:00,,PT_Normal,,,,,hIlDvdpEN0enNuBuXOAesA,ONHbommQSN+dmXAntmCREQ,,,N,0,0,,,,,,,,2025-07-16 14:09,2025-11-20 21:59,ARAJSHEKAR,jleon,,N,
100233998,122698,18114781,597,0,N,1,N,N,CP_Drtn,TT_Task,DT_FixedDUR2,TK_Active,FAB134103A-04,INSTALL DOOR & HARDWARE - FAB134103A,,18,448,40,0,0,0,40,0,0,0,,2025-11-18 08:00,,2025-11-25 10:00,2025-12-02 10:00,,2025-11-21 08:00,2025-11-27 17:00,2025-11-21 08:00,2025-11-27 17:00,2025-11-18 08:00,2025-11-24 17:00,2025-11-25 10:00,2025-12-02 10:00,,PT_Normal,,,,,7KoOGz9YMkeiSPac+JLMlQ,jDbvMJsESh27o6p9XFk6uw,,,N,0,0,,,,,,,,2025-07-16 14:09,2025-11-20 21:46,ARAJSHEKAR,jleon,,N,
100234009,122698,18114781,597,0,N,1,N,N,CP_Drtn,TT_Task,DT_FixedDUR2,TK_Active,FAB134103D-04,INSTALL DOOR & HARDWARE - FAB134103D,,18,448,40,0,0,0,40,0,0,0,,2025-11-18 08:00,,2025-11-25 10:00,2025-12-02 10:00,,2025-11-21 08:00,2025-11-27 17:00,2025-11-21 08:00,2025-11-27 17:00,2025-11-18 08:00,2025-11-24 17:00,2025-11-25 10:00,2025-12-02 10:00,,PT_Normal,,,,,m8TJEhf0G0Cpnfcdpfip+g,/aP/MyFSSrOOI2Vgj2J9Bg,,,N,0,0,,,,,,,,2025-07-16 14:09,2025-11-20 21:46,ARAJSHEKAR,jleon,,N,
100234014,122698,18114781,597,0,N,1,N,N,CP_Drtn,TT_Task,DT_FixedDUR2,TK_Active,FAB134103C-6,IMPACT - ACCESS FLOOR INSTALL BY SECAI - FAB134103C,,-30,0,48,0,0,0,30,0,0,0,,2025-05-19 08:00,,2025-11-17 10:00,2025-11-25 10:00,,2025-11-21 08:00,2025-11-28 17:00,2025-11-21 08:00,2025-11-28 17:00,2025-06-13 08:00,2025-06-18 15:00,2025-11-17 10:00,2025-11-25 10:00,,PT_Normal,,,,,7IbuWkAsvESJQQRWLdHDpw,/bzGFIByT3y8j08CDxgeGA,,,N,0,0,,,,,,,,2025-07-16 14:09,2025-11-20 21:59,ARAJSHEKAR,jleon,,N,
100234055,122698,18114729,597,0,N,1,N,N,CP_Drtn,TT_Task,DT_FixedDUR2,TK_Active,FAB136114A-04,INSTALL DOOR & HARDWARE - FAB136114A,,18,448,40,0,0,0,40,0,0,0,,2025-07-09 08:00,,2025-11-25 10:00,2025-12-02 10:00,,2025-11-21 08:00,2025-11-27 17:00,2025-11-21 08:00,2025-11-27 17:00,2025-07-09 08:00,2025-07-15 17:00,2025-11-25 10:00,2025-12-02 10:00,,PT_Normal,,,,,bs3NUjqtEUKd2Bfgy2iN9Q,Jdu2jAwTSymqBOAdMXME9g,,,N,0,0,,,,,,,,2025-07-16 14:09,2025-11-20 21:46,ARAJSHEKAR,jleon,,N,
100234064,122698,18114753,597,0,N,1,N,N,CP_Drtn,TT_Task,DT_FixedDUR2,TK_Active,FAB136302A-04,INSTALL DOOR & HARDWARE - FAB136302A,,18,448,40,0,0,0,40,0,0,0,,2025-11-17 08:00,,2025-11-25 10:00,2025-12-02 10:00,,2025-11-21 08:00,2025-11-27 17:00,2025-11-21 08:00,2025-11-27 17:00,2025-11-17 08:00,2025-11-21 17:00,2025-11-25 10:00,2025-12-02 10:00,,PT_Normal,,,,,L6+bB1stU0aWdZ+QzdQo6w,qbiEKsfxSWWtDqS4Qtr9pQ,,,N,0,0,,,,,,,,2025-07-16 14:09,2025-11-20 21:46,ARAJSHEKAR,jleon,,N,
100234075,122698,18114753,597,0,N,1,N,N,CP_Drtn,TT_Task,DT_FixedDUR2,TK_Active,FAB136302C-03,INSTALL DOOR FRAME BY SECAI - FAB136302C HANDED OVER ON 08/29,,-30,0,48,0,0,0,8,0,0,0,,2025-08-29 08:00,,2025-11-17 10:00,2025-11-25 10:00,,2025-11-21 08:00,2025-11-28 17:00,2025-11-21 08:00,2025-11-28 17:00,2025-08-29 08:00,2025-08-29 17:00,2025-11-17 10:00,2025-11-25 10:00,,PT_Normal,,,,,vHP7DS+1aEyIcz13I9DI7A,RhYjP3u3RNCPI2lH5gjEaA,,,N,0,0,,,,,,,,2025-07-16 14:09,2025-11-20 21:59,ARAJSHEKAR,jleon,,N,
100234082,122698,18114753,597,0,N,1,N,N,CP_Drtn,TT_Task,DT_FixedDUR2,TK_Active,FAB136302D-04,INSTALL DOOR & HARDWARE - FAB136302D,,18,448,40,0,0,0,40,0,0,0,,2025-11-17 08:00,,2025-11-25 10:00,2025-12-02 10:00,,2025-11-21 08:00,2025-11-27 17:00,2025-11-21 08:00,2025-11-27 17:00,2025-11-17 08:00,2025-11-21 17:00,2025-11-25 10:00,2025-12-02 10:00,,PT_Normal,,,,,Lf5JWehgR0mOnefB44pTcw,C083SybfQa6Se96HkF9b2Q,,,N,0,0,,,,,,,,2025-07-16 14:09,2025-11-20 21:46,ARAJSHEKAR,jleon,,N,
100234088,122698,18114753,597,0,N,1,N,N,CP_Drtn,TT_Task,DT_FixedDUR2,TK_Active,FAB136302E-04,INSTALL DOOR & HARDWARE - FAB136302E,,18,448,40,0,0,0,40,0,0,0,,2025-11-18 08:00,,2025-11-25 10:00,2025-12-02 10:00,,2025-11-21 08:00,2025-11-27 17:00,2025-11-21 08:00,2025-11-27 17:00,2025-11-18 08:00,2025-11-24 17:00,2025-11-25 10:00,2025-12-02 10:00,,PT_Normal,,,,,KgNzFtLbTEy3eHwGFPUCnQ,fxtUJAuXQCua8mrJQqrrnQ,,,N,0,0,,,,,,,,2025-07-16 14:09,2025-11-20 21:46,ARAJSHEKAR,jleon,,N,
100234094,122698,18114753,597,0,N,1,N,N,CP_Drtn,TT_Task,DT_FixedDUR2,TK_Active,FAB136302F-04,INSTALL DOOR & HARDWARE - FAB136302F,,18,448,40,0,0,0,40,0,0,0,,2025-11-06 08:00,,2025-11-25 10:00,2025-12-02 10:00,,2025-11-21 08:00,2025-11-27 17:00,2025-11-21 08:00,2025-11-27 17:00,2025-11-06 08:00,2025-11-12 17:00,2025-11-25 10:00,2025-12-02 10:00,,PT_Normal,,,,,tZi0OorD6kWCqjCuk0eemg,4JoeG20+Rw2994Vt41waDQ,,,N,0,0,,,,,,,,2025-07-16 14:09,2025-11-20 21:46,ARAJSHEKAR,jleon,,N,
100234100,122698,18114753,597,0,N,1,N,N,CP_Drtn,TT_Task,DT_FixedDUR2,TK_Active,FAB136302G-04,INSTALL DOOR & HARDWARE - FAB136302G,,18,448,40,0,0,0,40,0,0,0,,2025-11-06 08:00,,2025-11-25 10:00,2025-12-02 10:00,,2025-11-21 08:00,2025-11-27 17:00,2025-11-21 08:00,2025-11-27 17:00,2025-11-06 08:00,2025-11-12 17:00,2025-11-25 10:00,2025-12-02 10:00,,PT_Normal,,,,,O6D60qkN8Ui6YYc9vEMTzQ,4UsooOKhQXWSpcUS5qm9ww,,,N,0,0,,,,,,,,2025-07-16 14:09,2025-11-20 21:46,ARAJSHEKAR,jleon,,N,
100234106,122698,18114753,597,0,N,1,N,N,CP_Drtn,TT_Task,DT_FixedDUR2,TK_Active,FAB136302H-04,INSTALL DOOR & HARDWARE - FAB136302H,,18,448,40,0,0,0,40,0,0,0,,2025-11-07 08:00,,2025-11-25 10:00,2025-12-02 10:00,,2025-11-21 08:00,2025-11-27 17:00,2025-11-21 08:00,2025-11-27 17:00,2025-11-07 08:00,2025-11-13 17:00,2025-11-25 10:00,2025-12-02 10:00,,PT_Normal,,,,,m4DU3UHXP0qnVJXMNJXBtw,Dy5DFsjJQN+zzfD66ZrGAA,,,N,0,0,,,,,,,,2025-07-16 14:09,2025-11-20 21:46,ARAJSHEKAR,jleon,,N,
100234112,122698,18114753,597,0,N,1,N,N,CP_Drtn,TT_Task,DT_FixedDUR2,TK_Active,FAB136302J-04,INSTALL DOOR & HARDWARE - FAB136302J,,18,448,40,0,0,0,40,0,0,0,,2025-11-04 08:00,,2025-11-25 10:00,2025-12-02 10:00,,2025-11-21 08:00,2025-11-27 17:00,2025-11-21 08:00,2025-11-27 17:00,2025-11-04 08:00,2025-11-10 17:00,2025-11-25 10:00,2025-12-02 10:00,,PT_Normal,,,,,tr752AOtdEiV9ADdTGHhGQ,cfsUsYzyQPSOl8Or20Rz1Q,,,N,0,0,,,,,,,,2025-07-16 14:09,2025-11-20 21:46,ARAJSHEKAR,jleon,,N,
100234130,122698,18114749,597,0,N,1,N,N,CP_Drtn,TT_Task,DT_FixedDUR2,TK_Active,FAB136106A-04,INSTALL DOOR & HARDWARE - FAB136106A,,18,448,40,0,0,0,40,0,0,0,,2025-07-09 08:00,,2025-11-25 10:00,2025-12-02 10:00,,2025-11-21 08:00,2025-11-27 17:00,2025-11-21 08:00,2025-11-27 17:00,2025-07-09 08:00,2025-07-15 17:00,2025-11-25 10:00,2025-12-02 10:00,,PT_Normal,,,,,8+rod6+Z00KOfv8Mhi0YTQ,FTdJMvt4Tm6UApgVOOftKQ,,,N,0,0,,,,,,,,2025-07-16 14:09,2025-11-20 21:46,ARAJSHEKAR,jleon,,N,
100234133,122698,18114749,597,0,N,1,N,N,CP_Drtn,TT_Task,DT_FixedDUR2,TK_Active,ZX-18810,IMPACT SECAI MEP SCAFFOLD IN THE AREA - Duct Shaft - 3F-SUE-FAB136106,,48,80,40,0,168,168,56,0,0,0,,2025-06-19 08:00,,2025-12-01 08:00,2025-12-05 17:00,,2025-11-21 08:00,2025-11-27 17:00,2025-11-21 08:00,2025-11-27 17:00,2025-07-16 08:00,2025-07-24 17:00,2025-12-01 08:00,2025-12-05 17:00,,PT_Normal,,,,,Yik1IZoAWkqI1WH/9duptQ,ua7s7Q0LTeW7qZR9owbWzw,,,N,0,0,,,,,,,,2025-07-16 14:09,2025-11-20 21:59,ARAJSHEKAR,jleon,,N,
100234147,122698,18114784,597,0,N,1,N,N,CP_Drtn,TT_Task,DT_FixedDUR2,TK_Active,FAB134106A-04,INSTALL DOOR & HARDWARE - FAB134106A,,40,448,40,0,0,0,40,0,0,0,,2025-08-15 08:00,,2025-11-28 08:00,2025-12-04 17:00,,2025-11-21 08:00,2025-11-27 17:00,2025-11-21 08:00,2025-11-27 17:00,2025-08-15 08:00,2025-08-21 17:00,2025-11-28 08:00,2025-12-04 17:00,,PT_Normal,,,,,tdmYaHW14EmDgcredfvQvA,Q2Y3RzlPQSWd1Xs/1Ltkew,,,N,0,0,,,,,,,,2025-07-16 14:09,2025-11-20 21:46,ARAJSHEKAR,jleon,,N,
100234150,122698,18114784,597,0,N,1,N,N,CP_Drtn,TT_Task,DT_FixedDUR2,TK_Active,FAB134106C-00,SECAI SCP WALL FINISH - FAB134106C,,-88,0,48,0,0,0,8,0,0,0,,2025-07-21 08:00,,2025-11-10 08:00,2025-11-17 17:00,,2025-11-25 08:00,2025-12-02 17:00,2025-11-25 08:00,2025-12-02 17:00,2025-07-21 08:00,2025-07-21 17:00,2025-11-10 08:00,2025-11-17 17:00,,PT_Normal,,,,,gupK49p/5kOXA8bxWncryg,pAQjVyfnSzKoOt3AtyvcsA,,,N,0,0,,,,,,,,2025-07-16 14:09,2025-11-20 21:59,ARAJSHEKAR,jleon,,N,
100234183,122698,18114734,597,0,N,1,N,N,CP_Drtn,TT_Task,DT_FixedDUR2,TK_Active,FAB130402A-04,INSTALL DOOR & HARDWARE - FAB130402A,,18,448,40,0,0,0,40,0,0,0,,2025-11-13 08:00,,2025-11-25 10:00,2025-12-02 10:00,,2025-11-21 08:00,2025-11-27 17:00,2025-11-21 08:00,2025-11-27 17:00,2025-11-13 08:00,2025-11-19 17:00,2025-11-25 10:00,2025-12-02 10:00,,PT_Normal,,,,,4Kg7a+fMB0Ged9bh45z8rg,3koYkfKATryhGHkZBEblNQ,,,N,0,0,,,,,,,,2025-07-16 14:09,2025-11-20 21:46,ARAJSHEKAR,jleon,,N,
100234201,122698,18114734,597,0,N,1,N,N,CP_Drtn,TT_Task,DT_FixedDUR2,TK_Active,FAB130402D-11,IMPACT - INTERNAL - UNASSEMBLED TRANSOM FRAMES,,-102,0,48,0,0,0,120,0,0,0,,2025-06-20 08:00,,2025-11-04 10:00,2025-11-12 10:00,,2025-11-21 08:00,2025-11-28 17:00,2025-11-21 08:00,2025-11-28 17:00,2025-06-20 08:00,2025-07-10 17:00,2025-11-04 10:00,2025-11-12 10:00,,PT_Normal,,,,,Y6PDCXTuBUyfD4askKhczA,X53k/60zQrumT/7Sb5QJNw,,,N,0,0,,,,,,,,2025-07-16 14:09,2025-11-20 21:59,ARAJSHEKAR,jleon,,N,
100234203,122698,18114734,597,0,N,1,N,N,CP_Drtn,TT_Task,DT_FixedDUR2,TK_Active,FAB1-ST50D-04,INSTALL DOOR & HARDWARE - FAB1-ST50D,,18,448,40,0,0,0,40,0,0,0,,2025-10-02 08:00,,2025-11-25 10:00,2025-12-02 10:00,,2025-11-21 08:00,2025-11-27 17:00,2025-11-21 08:00,2025-11-27 17:00,2025-10-02 08:00,2025-10-08 17:00,2025-11-25 10:00,2025-12-02 10:00,,PT_Normal,,,,,4m9eOEfW306V1171eSAPUA,BGBoQby7Q8KLy/cq9hoS+w,,,N,0,0,,,,,,,,2025-07-16 14:09,2025-11-20 21:46,ARAJSHEKAR,jleon,,N,
100234220,122698,18114746,597,0,N,1,N,N,CP_Drtn,TT_Task,DT_FixedDUR2,TK_Active,TR-FAB130307A-04,INSTALL DOOR & HARDWARE - TR - FAB130307A,,18,448,40,0,0,0,40,0,0,0,,2025-10-20 08:00,,2025-11-25 10:00,2025-12-02 10:00,,2025-11-21 08:00,2025-11-27 17:00,2025-11-21 08:00,2025-11-27 17:00,2025-10-20 08:00,2025-10-24 17:00,2025-11-25 10:00,2025-12-02 10:00,,PT_Normal,,,,,KXiAGkB7QkClpKOLxjv4eQ,MEtnQDhJT2e2oVGeTcfr9w,,,N,0,0,,,,,,,,2025-07-16 14:09,2025-11-20 21:46,ARAJSHEKAR,jleon,,N,
100234234,122698,18114760,597,0,N,1,N,N,CP_Drtn,TT_Task,DT_FixedDUR2,TK_Active,FAB136510A-04,INSTALL DOOR & HARDWARE - FAB136510A,,18,448,40,0,0,0,40,0,0,0,,2025-07-09 08:00,,2025-11-25 10:00,2025-12-02 10:00,,2025-11-21 08:00,2025-11-27 17:00,2025-11-21 08:00,2025-11-27 17:00,2025-07-09 08:00,2025-07-15 17:00,2025-11-25 10:00,2025-12-02 10:00,,PT_Normal,,,,,fGn511rMqEa/6D0Dmw8iVA,hmW8UpQqQc+VR7rNsSZVRw,,,N,0,0,,,,,,,,2025-07-16 14:09,2025-11-20 21:46,ARAJSHEKAR,jleon,,N,
100234237,122698,18114760,597,0,N,1,N,N,CP_Drtn,TT_Task,DT_FixedDUR2,TK_Active,ZX-18970,IMPACT - SECAI MEP SCAFFOLD IN THE AREA - Duct Shaft - 3F-SUE-FAB136510,,40,72,48,0,288,288,120,0,0,0,,2025-06-27 08:00,,2025-11-28 08:00,2025-12-05 17:00,,2025-11-21 08:00,2025-11-28 17:00,2025-11-21 08:00,2025-11-28 17:00,2025-06-27 08:00,2025-07-17 17:00,2025-11-28 08:00,2025-12-05 17:00,,PT_Normal,,,,,HR0y8iopC0OzO5MCSxBOJw,c7L86REfS4ulxaV0eonhAA,,,N,0,0,,,,,,,,2025-07-16 14:09,2025-11-20 21:59,ARAJSHEKAR,jleon,,N,
100234271,122698,18114740,597,0,N,1,N,N,CP_Drtn,TT_Task,DT_FixedDUR2,TK_Active,FAB130311B-00,IMPACT - PROCUREMENT - NEW WALL THICKNESS ISSUE FAB130311B,,-30,0,40,0,0,0,500,0,0,0,,2025-06-09 08:00,,2025-11-17 10:00,2025-11-24 10:00,,2025-11-21 08:00,2025-11-27 17:00,2025-11-21 08:00,2025-11-27 17:00,2025-06-13 08:00,2025-09-09 12:00,2025-11-17 10:00,2025-11-24 10:00,,PT_Normal,,,,,L+IIGrT7ZEOe/1H5VP/wkw,qOnYL305TeivNV6MuPtFUQ,,,N,0,0,,,,,,,,2025-07-16 14:09,2025-11-20 21:59,ARAJSHEKAR,jleon,,N,
100234281,122698,18114726,597,0,N,1,N,N,CP_Drtn,TT_Task,DT_FixedDUR2,TK_Active,ZX-18750,IMPACT - SECAI MEP SCAFFOLD IN THE AREA - Duct Shaft - 3F-SUW-FAB130102,,40,72,48,0,192,192,120,0,0,0,,2024-11-01 08:00,,2025-11-28 08:00,2025-12-05 17:00,,2025-11-21 08:00,2025-11-28 17:00,2025-11-21 08:00,2025-11-28 17:00,2025-07-01 08:00,2025-07-21 17:00,2025-11-28 08:00,2025-12-05 17:00,,PT_Normal,,,,,BHfPcFocBkSb7uXyU0sO/w,vAVJKZtGRo6yAz4GdWc/WQ,,,N,0,0,,,,,,,,2025-07-16 14:09,2025-11-20 21:59,ARAJSHEKAR,jleon,,N,
100234315,122698,18114716,597,0,N,1,N,N,CP_Drtn,TT_Task,DT_FixedDUR2,TK_Active,ZX-18740,IMPACT - SECAI SCAFFOLD IN THE AREA - Duct Shaft - 3F-SUW-FAB130301,,40,72,48,0,120,120,40,0,0,0,,2024-11-01 08:00,,2025-11-28 08:00,2025-12-05 17:00,,2025-11-21 08:00,2025-11-28 17:00,2025-11-21 08:00,2025-11-28 17:00,2025-07-03 08:00,2025-07-09 17:00,2025-11-28 08:00,2025-12-05 17:00,,PT_Normal,,,,,wXfGgXe1zkO3Wxd9KwJ2Wg,QPOe1Fd5Q2qUBz90SOKGxA,,,N,0,0,,,,,,,,2025-07-16 14:09,2025-11-20 21:59,ARAJSHEKAR,jleon,,N,
100234322,122698,18114701,597,0,N,1,N,N,CP_Drtn,TT_Task,DT_FixedDUR2,TK_Active,FAB130313A-04,INSTALL DOOR & HARDWARE - FAB130313A,,18,448,40,0,0,0,40,0,0,0,,2025-11-18 08:00,,2025-11-25 10:00,2025-12-02 10:00,,2025-11-21 08:00,2025-11-27 17:00,2025-11-21 08:00,2025-11-27 17:00,2025-11-18 08:00,2025-11-24 17:00,2025-11-25 10:00,2025-12-02 10:00,,PT_Normal,,,,,xgD3x/dJt0q9cTgUS4Q7Dw,b9NDb0nQTxuQPo9A8gqHEg,,,N,0,0,,,,,,,,2025-07-16 14:09,2025-11-20 21:46,ARAJSHEKAR,jleon,,N,
100234389,122698,18114743,597,0,N,1,N,N,CP_Drtn,TT_Task,DT_FixedDUR2,TK_Active,FAB130305A-04,INSTALL DOOR & HARDWARE - FAB130305A,,18,448,40,0,0,0,40,0,0,0,,2025-10-21 08:00,,2025-11-25 10:00,2025-12-02 10:00,,2025-11-21 08:00,2025-11-27 17:00,2025-11-21 08:00,2025-11-27 17:00,2025-10-21 08:00,2025-10-27 17:00,2025-11-25 10:00,2025-12-02 10:00,,PT_Normal,,,,,RdhcK9EorUiDGg4nnLEHoQ,ntk/+v1ASu20LGWaBaWzuw,,,N,0,0,,,,,,,,2025-07-16 14:09,2025-11-20 21:46,ARAJSHEKAR,jleon,,N,
100234416,122698,18114788,597,0,N,1,N,N,CP_Drtn,TT_Task,DT_FixedDUR2,TK_Active,FAB130317A-04,INSTALL DOOR & HARDWARE - FAB130317A,,18,448,40,0,0,0,40,0,0,0,,2025-11-13 08:00,,2025-11-25 10:00,2025-12-02 10:00,,2025-11-21 08:00,2025-11-27 17:00,2025-11-21 08:00,2025-11-27 17:00,2025-11-13 08:00,2025-11-19 17:00,2025-11-25 10:00,2025-12-02 10:00,,PT_Normal,,,,,ZZ95sQNQy0mjwRemTRb9Zw,BwyOZwZLTZ64YFGfT9PsRQ,,,N,0,0,,,,,,,,2025-07-16 14:09,2025-11-20 21:46,ARAJSHEKAR,jleon,,N,
100234424,122698,18114710,597,0,N,1,N,N,CP_Drtn,TT_Task,DT_FixedDUR2,TK_Active,FAB130316A-04,INSTALL DOOR & HARDWARE - FAB130316A,,16,448,40,0,0,0,40,0,0,0,,2025-06-10 08:00,,2025-11-25 08:00,2025-12-01 17:00,,2025-11-21 08:00,2025-11-27 17:00,2025-11-21 08:00,2025-11-27 17:00,2025-06-10 08:00,2025-06-16 17:00,2025-11-25 08:00,2025-12-01 17:00,,PT_Normal,,,,,a+Zs9WwC8U2bJSq/sQGkbA,6TRq5pkqSfupwOZIdfNHmQ,,,N,0,0,,,,,,,,2025-07-16 14:09,2025-11-20 21:46,ARAJSHEKAR,jleon,,N,
100234441,122698,18114702,597,0,N,1,N,N,CP_Drtn,TT_Task,DT_FixedDUR2,TK_Active,FAB1-ST02C-04,INSTALL DOOR & HARDWARE - FAB1-ST02C,,-24,0,40,0,0,0,40,0,0,0,,2025-11-12 08:00,,2025-11-18 08:00,2025-11-24 17:00,,2025-11-21 08:00,2025-11-27 17:00,2025-11-21 08:00,2025-11-27 17:00,2025-11-12 08:00,2025-11-18 17:00,2025-11-18 08:00,2025-11-24 17:00,,PT_Normal,,,,,z+WSSDimNkSj7D4lcpthbg,ZkrEe26IRgC50LOTef4JUg,,,N,0,0,,,,,,,,2025-07-16 14:09,2025-11-20 21:42,ARAJSHEKAR,jleon,,N,
100234470,122698,18114704,597,0,N,1,N,N,CP_Drtn,TT_Task,DT_FixedDUR2,TK_Active,FAB1-ST20C-04,INSTALL DOOR & HARDWARE - FAB1-ST20C,,8,448,40,0,0,0,40,0,0,0,,2025-11-18 08:00,,2025-11-24 08:00,2025-11-28 17:00,,2025-11-21 08:00,2025-11-27 17:00,2025-11-21 08:00,2025-11-27 17:00,2025-11-18 08:00,2025-11-24 17:00,2025-11-24 08:00,2025-11-28 17:00,,PT_Normal,,,,,YZ1WMw+QPkWo46gQFe7TJw,mlTUjJzFQjGN9m6mQSeEvA,,,N,0,0,,,,,,,,2025-07-16 14:09,2025-11-20 21:46,ARAJSHEKAR,jleon,,N,
100234482,122698,18114705,597,0,N,1,N,N,CP_Drtn,TT_Task,DT_FixedDUR2,TK_Active,FAB1-ST21C-04,INSTALL DOOR & HARDWARE - FAB1-ST21C,,8,448,40,0,0,0,40,0,0,0,,2025-11-12 08:00,,2025-11-24 08:00,2025-11-28 17:00,,2025-11-21 08:00,2025-11-27 17:00,2025-11-21 08:00,2025-11-27 17:00,2025-11-12 08:00,2025-11-18 17:00,2025-11-24 08:00,2025-11-28 17:00,,PT_Normal,,,,,S3qJV8JE+UWEJ2N82kOdQg,xccOakD6QDiJVCak6+qQjQ,,,N,0,0,,,,,,,,2025-07-16 14:09,2025-11-20 21:46,ARAJSHEKAR,jleon,,N,
100234496,122698,18114699,597,0,N,1,N,N,CP_Drtn,TT_Task,DT_FixedDUR2,TK_Active,FAB1-ST04C-04,INSTALL DOOR & HARDWARE - FAB1-ST04C,,16,448,40,0,0,0,40,0,0,0,,2025-11-12 08:00,,2025-11-25 08:00,2025-12-01 17:00,,2025-11-21 08:00,2025-11-27 17:00,2025-11-21 08:00,2025-11-27 17:00,2025-11-12 08:00,2025-11-18 17:00,2025-11-25 08:00,2025-12-01 17:00,,PT_Normal,,,,,fUqwFcurnkyGJDY7xyJ0Dw,EYKVRzZnQjOxXUUsU+V2fQ,,,N,0,0,,,,,,,,2025-07-16 14:09,2025-11-20 21:46,ARAJSHEKAR,jleon,,N,
100234504,122698,18114698,597,0,N,1,N,N,CP_Drtn,TT_Task,DT_FixedDUR2,TK_Active,FAB1-ST19C-04,INSTALL DOOR & HARDWARE - FAB1-ST19C,,16,448,40,0,0,0,40,0,0,0,,2025-11-11 08:00,,2025-11-25 08:00,2025-12-01 17:00,,2025-11-21 08:00,2025-11-27 17:00,2025-11-21 08:00,2025-11-27 17:00,2025-11-11 08:00,2025-11-17 17:00,2025-11-25 08:00,2025-12-01 17:00,,PT_Normal,,,,,ft1EzddOME2tmh3N97zpTg,DWdD9QatSUiHBGb9VPeryA,,,N,0,0,,,,,,,,2025-07-16 14:09,2025-11-20 21:46,ARAJSHEKAR,jleon,,N,
100234511,122698,18114789,597,0,N,1,N,N,CP_Drtn,TT_Task,DT_FixedDUR2,TK_Active,FAB130116A-00,SECAI SCP WALL FINISH - FAB130116A,,-256,0,48,0,0,0,8,0,0,0,,2025-07-23 08:00,,2025-10-08 08:00,2025-10-15 17:00,,2025-11-21 08:00,2025-11-28 17:00,2025-11-21 08:00,2025-11-28 17:00,2025-07-23 08:00,2025-07-23 17:00,2025-10-08 08:00,2025-10-15 17:00,,PT_Normal,,,,,akEQB6qtRkSIrgFkxdeBJQ,+Y+o3ku6TduVHqfpcnF8Rg,,,N,0,0,,,,,,,,2025-07-16 14:09,2025-11-20 21:59,ARAJSHEKAR,jleon,,N,
100234514,122698,18114790,597,0,N,1,N,N,CP_Drtn,TT_Task,DT_FixedDUR2,TK_Active,FAB130117F-00,SECAI SCP WALL FINISH - FAB130117F,,-256,0,48,0,0,0,8,0,0,0,,2025-07-25 08:00,,2025-10-17 08:00,2025-10-24 17:00,,2025-12-02 08:00,2025-12-09 17:00,2025-12-02 08:00,2025-12-09 17:00,2025-07-25 08:00,2025-07-25 17:00,2025-10-17 08:00,2025-10-24 17:00,,PT_Normal,,,,,0X5QZz6GTUyGKB5HEM3Niw,6J7M9Q6KTL6TyKqojSiQ/g,,,N,0,0,,,,,,,,2025-07-16 14:09,2025-11-20 21:59,ARAJSHEKAR,jleon,,N,
100234517,122698,18114791,597,0,N,1,N,N,CP_Drtn,TT_Task,DT_FixedDUR2,TK_Active,FAB130117G-00,SECAI SCP WALL FINISH - FAB130117G,,-256,0,48,0,0,0,8,0,0,0,,2025-07-29 08:00,,2025-10-28 08:00,2025-11-04 17:00,,2025-12-11 08:00,2025-12-18 17:00,2025-12-11 08:00,2025-12-18 17:00,2025-07-29 08:00,2025-07-29 17:00,2025-10-28 08:00,2025-11-04 17:00,,PT_Normal,,,,,lQJQ1ceUYkWhYxCJR8PdsQ,ayUOp0KdTAC5KxUAsNUlPQ,,,N,0,0,,,,,,,,2025-07-16 14:09,2025-11-20 21:59,ARAJSHEKAR,jleon,,N,
100234520,122698,18114792,597,0,N,1,N,N,CP_Drtn,TT_Task,DT_FixedDUR2,TK_Active,FAB130117H-00,SECAI SCP WALL FINISH - FAB130117H,,-256,0,48,0,0,0,8,0,0,0,,2025-07-31 08:00,,2025-11-06 08:00,2025-11-13 17:00,,2025-12-22 08:00,2025-12-29 17:00,2025-12-22 08:00,2025-12-29 17:00,2025-07-31 08:00,2025-07-31 17:00,2025-11-06 08:00,2025-11-13 17:00,,PT_Normal,,,,,QszVc+7NFUO9CRPStKdgJg,LnRVa1lARH23nNt7ytJdsw,,,N,0,0,,,,,,,,2025-07-16 14:09,2025-11-20 21:59,ARAJSHEKAR,jleon,,N,
100234523,122698,18114793,597,0,N,1,N,N,CP_Drtn,TT_Task,DT_FixedDUR2,TK_Active,FAB130117I-00,SECAI SCP WALL FINISH - FAB130117I,,-256,0,48,0,0,0,8,0,0,0,,2025-08-04 08:00,,2025-11-17 08:00,2025-11-24 17:00,,2025-12-31 08:00,2026-01-07 17:00,2025-12-31 08:00,2026-01-07 17:00,2025-08-04 08:00,2025-08-04 17:00,2025-11-17 08:00,2025-11-24 17:00,,PT_Normal,,,,,dhO457ADyE63MayWBRJpHw,tZoEMjVAT6OZu9Y/NFH4qg,,,N,0,0,,,,,,,,2025-07-16 14:09,2025-11-20 21:59,ARAJSHEKAR,jleon,,N,
100234543,122698,18115100,597,0,N,1,N,N,CP_Drtn,TT_Task,DT_FixedDUR2,TK_Active,FAB126402A-04,INSTALL DOOR & HARDWARE - FAB126402A,,18,448,40,0,0,0,40,0,0,0,,2025-11-13 08:00,,2025-11-25 10:00,2025-12-02 10:00,,2025-11-21 08:00,2025-11-27 17:00,2025-11-21 08:00,2025-11-27 17:00,2025-11-13 08:00,2025-11-19 17:00,2025-11-25 10:00,2025-12-02 10:00,,PT_Normal,,,,,DOIvs+/Nj0qqf1AbjmdhSA,d1IrMLJWSo6leb3m0WDXDA,,,N,0,0,,,,,,,,2025-07-16 14:09,2025-11-20 21:46,ARAJSHEKAR,jleon,,N,
100234553,122698,18115112,597,0,N,1,N,N,CP_Drtn,TT_Task,DT_FixedDUR2,TK_Active,FAB126502F-04,INSTALL DOOR & HARDWARE - FAB126502F,,18,448,40,0,0,0,40,0,0,0,,2025-11-18 08:00,,2025-11-25 10:00,2025-12-02 10:00,,2025-11-21 08:00,2025-11-27 17:00,2025-11-21 08:00,2025-11-27 17:00,2025-11-18 08:00,2025-11-24 17:00,2025-11-25 10:00,2025-12-02 10:00,,PT_Normal,,,,,+t19PQqlbUi3+rXMmiXTEw,JcGTwVlRRT2wy5dcKINIfg,,,N,0,0,,,,,,,,2025-07-16 14:09,2025-11-20 21:46,ARAJSHEKAR,jleon,,N,
100234566,122698,18115085,597,0,N,1,N,N,CP_Drtn,TT_Task,DT_FixedDUR2,TK_Active,FAB126311B-04,INSTALL DOOR & HARDWARE - FAB126311B,,18,448,40,0,0,0,40,0,0,0,,2025-11-14 08:00,,2025-11-25 10:00,2025-12-02 10:00,,2025-11-21 08:00,2025-11-27 17:00,2025-11-21 08:00,2025-11-27 17:00,2025-11-14 08:00,2025-11-20 17:00,2025-11-25 10:00,2025-12-02 10:00,,PT_Normal,,,,,a/r3bMKmvkum4jN1p1R1dQ,XFCNYuiARkmf6i3c4hle7Q,,,N,0,0,,,,,,,,2025-07-16 14:09,2025-11-20 21:46,ARAJSHEKAR,jleon,,N,
100234572,122698,18115085,597,0,N,1,N,N,CP_Drtn,TT_Task,DT_FixedDUR2,TK_Active,FAB126311C-04,INSTALL DOOR & HARDWARE - FAB126311C,,18,448,40,0,0,0,40,0,0,0,,2025-09-04 08:00,,2025-11-25 10:00,2025-12-02 10:00,,2025-11-21 08:00,2025-11-27 17:00,2025-11-21 08:00,2025-11-27 17:00,2025-09-04 08:00,2025-09-10 17:00,2025-11-25 10:00,2025-12-02 10:00,,PT_Normal,,,,,q5n+0Wt5XECi6543CkR7rQ,ZRuHSRZXQtWe2EVlojzcdQ,,,N,0,0,,,,,,,,2025-07-16 14:09,2025-11-20 21:46,ARAJSHEKAR,jleon,,N,
100234584,122698,18115085,597,0,N,1,N,N,CP_Drtn,TT_Task,DT_FixedDUR2,TK_Active,FAB126311E-04,INSTALL DOOR & HARDWARE - FAB126311E,,18,448,40,0,0,0,40,0,0,0,,2025-09-05 08:00,,2025-11-25 10:00,2025-12-02 10:00,,2025-11-21 08:00,2025-11-27 17:00,2025-11-21 08:00,2025-11-27 17:00,2025-09-05 08:00,2025-09-11 17:00,2025-11-25 10:00,2025-12-02 10:00,,PT_Normal,,,,,SQegdiioMU+hgEjd3d7USA,p15tto5CT7quKbVZwXjpOA,,,N,0,0,,,,,,,,2025-07-16 14:09,2025-11-20 21:46,ARAJSHEKAR,jleon,,N,
100234593,122698,18115105,597,0,N,1,N,N,CP_Drtn,TT_Task,DT_FixedDUR2,TK_Active,FAB126110A-04,INSTALL DOOR & HARDWARE - FAB126110A,,18,448,40,0,0,0,40,0,0,0,,2025-11-13 08:00,,2025-11-25 10:00,2025-12-02 10:00,,2025-11-21 08:00,2025-11-27 17:00,2025-11-21 08:00,2025-11-27 17:00,2025-11-13 08:00,2025-11-19 17:00,2025-11-25 10:00,2025-12-02 10:00,,PT_Normal,,,,,DqDR9X6oiU+cVWsW/4n7VQ,X9lDnrD5R7KvZZS/1cPtSA,,,N,0,0,,,,,,,,2025-07-16 14:09,2025-11-20 21:46,ARAJSHEKAR,jleon,,N,
100234601,122698,18115115,597,0,N,1,N,N,CP_Drtn,TT_Task,DT_FixedDUR2,TK_Active,FAB126511A-04,INSTALL DOOR & HARDWARE - FAB126511A,,16,448,40,0,0,0,40,0,0,0,,2025-06-06 08:00,,2025-11-25 08:00,2025-12-01 17:00,,2025-11-21 08:00,2025-11-27 17:00,2025-11-21 08:00,2025-11-27 17:00,2025-06-06 08:00,2025-06-12 17:00,2025-11-25 08:00,2025-12-01 17:00,,PT_Normal,,,,,ZVlvtfCeXUyscLvkeeaP9w,+uSwfYfSTnKBEU1mTib0ew,,,N,0,0,,,,,,,,2025-07-16 14:09,2025-11-20 21:46,ARAJSHEKAR,jleon,,N,
100234619,122698,18115122,597,0,N,1,N,N,CP_Drtn,TT_Task,DT_FixedDUR2,TK_Active,FAB126506B-03,INSTALL DOOR FRAME BY SECAI - FAB126506B HANDED OVER ON 08/29,,18,80,48,0,0,0,8,0,0,0,,2025-08-29 08:00,,2025-11-25 10:00,2025-12-03 10:00,,2025-11-21 08:00,2025-11-28 17:00,2025-11-21 08:00,2025-11-28 17:00,2025-08-29 08:00,2025-08-29 17:00,2025-11-25 10:00,2025-12-03 10:00,,PT_Normal,,,,,gN12jwjGz0KxAUmDA8NQYA,I5rnEMWITAyk3OJSOvRg6Q,,,N,0,0,,,,,,,,2025-07-16 14:09,2025-11-20 21:59,ARAJSHEKAR,jleon,,N,
100234624,122698,18115122,597,100,N,1,N,N,CP_Drtn,TT_Task,DT_FixedDUR2,TK_Active,FAB126506C-04,INSTALL DOOR & HARDWARE - FAB126506C,,18,448,40,0,0,0,40,0,0,0,,2025-11-14 08:00,,2025-11-25 10:00,2025-12-02 10:00,,2025-11-21 08:00,2025-11-27 17:00,2025-11-21 08:00,2025-11-27 17:00,2025-11-14 08:00,2025-11-20 17:00,2025-11-25 10:00,2025-12-02 10:00,,PT_Normal,,,,,A1Ml0gnrmUeFhR1ZB2cHjg,K3MATnnBT9KlqQ89pp7bsA,,,N,0,0,,,,,,,,2025-07-16 14:09,2025-11-20 21:59,ARAJSHEKAR,jleon,,N,
100234630,122698,18115122,597,0,N,1,N,N,CP_Drtn,TT_Task,DT_FixedDUR2,TK_Active,FAB126506D-04,INSTALL DOOR & HARDWARE - FAB126506D,,18,448,40,0,0,0,40,0,0,0,,2025-05-14 08:00,,2025-11-25 10:00,2025-12-02 10:00,,2025-11-21 08:00,2025-11-27 17:00,2025-11-21 08:00,2025-11-27 17:00,2025-05-14 08:00,2025-05-20 17:00,2025-11-25 10:00,2025-12-02 10:00,,PT_Normal,,,,,j3iXRza54UCzQaWcKjzBmA,kcVhoj/JQiW47fOkfJWh7w,,,N,0,0,,,,,,,,2025-07-16 14:09,2025-11-20 21:46,ARAJSHEKAR,jleon,,N,
100234636,122698,18115122,597,0,N,1,N,N,CP_Drtn,TT_Task,DT_FixedDUR2,TK_Active,FAB126506E-04,INSTALL DOOR & HARDWARE - FAB126506E,,18,448,40,0,0,0,40,0,0,0,,2025-11-18 08:00,,2025-11-25 10:00,2025-12-02 10:00,,2025-11-21 08:00,2025-11-27 17:00,2025-11-21 08:00,2025-11-27 17:00,2025-11-18 08:00,2025-11-24 17:00,2025-11-25 10:00,2025-12-02 10:00,,PT_Normal,,,,,zNAS1OonUESp0Q4JTg8x3w,ZZcXrZdxSaWBZPFk16fzVQ,,,N,0,0,,,,,,,,2025-07-16 14:09,2025-11-20 21:46,ARAJSHEKAR,jleon,,N,
100234648,122698,18115125,597,0,N,1,N,N,CP_Drtn,TT_Task,DT_FixedDUR2,TK_Active,FAB126513A-04,INSTALL DOOR & HARDWARE - FAB126513A,,18,448,40,0,0,0,40,0,0,0,,2025-10-20 08:00,,2025-11-25 10:00,2025-12-02 10:00,,2025-11-21 08:00,2025-11-27 17:00,2025-11-21 08:00,2025-11-27 17:00,2025-10-20 08:00,2025-10-24 17:00,2025-11-25 10:00,2025-12-02 10:00,,PT_Normal,,,,,0aLo/Mpw2E6g/uglB1W7GA,VfMhFGjXRUCz6V8gHJi5GQ,,,N,0,0,,,,,,,,2025-07-16 14:09,2025-11-20 21:46,ARAJSHEKAR,jleon,,N,
100234671,122698,18115090,597,0,N,1,N,N,CP_Drtn,TT_Task,DT_FixedDUR2,TK_Active,FAB126310A-04,INSTALL DOOR & HARDWARE - FAB126310A,,18,448,40,0,0,0,40,0,0,0,,2025-10-23 08:00,,2025-11-25 10:00,2025-12-02 10:00,,2025-11-21 08:00,2025-11-27 17:00,2025-11-21 08:00,2025-11-27 17:00,2025-10-23 08:00,2025-10-29 17:00,2025-11-25 10:00,2025-12-02 10:00,,PT_Normal,,,,,yVmcio8Kuk6CR5LOL0/myw,BWMFha+vTDa+NebyFiUFjA,,,N,0,0,,,,,,,,2025-07-16 14:09,2025-11-20 21:46,ARAJSHEKAR,jleon,,N,
100234677,122698,18115090,597,0,N,1,N,N,CP_Drtn,TT_Task,DT_FixedDUR2,TK_Active,FAB126310B-04,INSTALL DOOR & HARDWARE - FAB126310B,,18,448,40,0,0,0,40,0,0,0,,2025-10-23 08:00,,2025-11-25 10:00,2025-12-02 10:00,,2025-11-21 08:00,2025-11-27 17:00,2025-11-21 08:00,2025-11-27 17:00,2025-10-23 08:00,2025-10-29 17:00,2025-11-25 10:00,2025-12-02 10:00,,PT_Normal,,,,,EhG0NDx2SUefxZUeOoxyCg,QUNVzHYnQlK+B1CoqCA4gA,,,N,0,0,,,,,,,,2025-07-16 14:09,2025-11-20 21:46,ARAJSHEKAR,jleon,,N,
100234688,122698,18115080,597,0,N,1,N,N,CP_Drtn,TT_Task,DT_FixedDUR2,TK_Active,FAB126102A-04,INSTALL DOOR & HARDWARE - FAB126102A,,18,448,40,0,0,0,40,0,0,0,,2025-06-06 08:00,,2025-11-25 10:00,2025-12-02 10:00,,2025-11-21 08:00,2025-11-27 17:00,2025-11-21 08:00,2025-11-27 17:00,2025-06-06 08:00,2025-06-12 17:00,2025-11-25 10:00,2025-12-02 10:00,,PT_Normal,,,,,6n8ce210lUez+Bgw2/YTRw,hTh6JulJRBS+SO1eSUcFCQ,,,N,0,0,,,,,,,,2025-07-16 14:09,2025-11-20 21:46,ARAJSHEKAR,jleon,,N,
100234703,122698,18115116,597,0,N,1,N,N,CP_Drtn,TT_Task,DT_FixedDUR2,TK_Active,FAB122106A-04,INSTALL DOOR & HARDWARE - FAB122106A,,18,448,40,0,0,0,40,0,0,0,,2025-05-15 08:00,,2025-11-25 10:00,2025-12-02 10:00,,2025-11-21 08:00,2025-11-27 17:00,2025-11-21 08:00,2025-11-27 17:00,2025-05-15 08:00,2025-05-21 17:00,2025-11-25 10:00,2025-12-02 10:00,,PT_Normal,,,,,3MVSVt0tKkCQnh6/u6szNw,FjL9xC1uT1iUBcck3zhDTA,,,N,0,0,,,,,,,,2025-07-16 14:09,2025-11-20 21:46,ARAJSHEKAR,jleon,,N,
100234722,122698,18115102,597,0,N,1,N,N,CP_Drtn,TT_Task,DT_FixedDUR2,TK_Active,FAB126107A-04,INSTALL DOOR & HARDWARE - FAB126107A,,18,448,40,0,0,0,40,0,0,0,,2025-11-10 08:00,,2025-11-25 10:00,2025-12-02 10:00,,2025-11-21 08:00,2025-11-27 17:00,2025-11-21 08:00,2025-11-27 17:00,2025-11-10 08:00,2025-11-14 17:00,2025-11-25 10:00,2025-12-02 10:00,,PT_Normal,,,,,5qRAcdYI102FnoIKE/B2nA,/fh+hiE1Q+C1zzVkjZ5YdA,,,N,0,0,,,,,,,,2025-07-16 14:09,2025-11-20 21:46,ARAJSHEKAR,jleon,,N,
100234726,122698,18115102,597,0,N,1,N,N,CP_Drtn,TT_Task,DT_FixedDUR2,TK_Active,FAB126107B-04,INSTALL DOOR & HARDWARE - FAB126107B,,18,448,40,0,0,0,40,0,0,0,,2025-10-31 08:00,,2025-11-25 10:00,2025-12-02 10:00,,2025-11-21 08:00,2025-11-27 17:00,2025-11-21 08:00,2025-11-27 17:00,2025-10-31 08:00,2025-11-06 17:00,2025-11-25 10:00,2025-12-02 10:00,,PT_Normal,,,,,HD7Ea6RUwUuFxrabXT9lQw,u/19yGQbRiSjulKrOB9IXA,,,N,0,0,,,,,,,,2025-07-16 14:09,2025-11-20 21:46,ARAJSHEKAR,jleon,,N,
100234732,122698,18115102,597,0,N,1,N,N,CP_Drtn,TT_Task,DT_FixedDUR2,TK_Active,FAB126107D-04,INSTALL DOOR & HARDWARE - FAB126107D,,18,448,40,0,0,0,40,0,0,0,,2025-11-13 08:00,,2025-11-25 10:00,2025-12-02 10:00,,2025-11-21 08:00,2025-11-27 17:00,2025-11-21 08:00,2025-11-27 17:00,2025-11-13 08:00,2025-11-19 17:00,2025-11-25 10:00,2025-12-02 10:00,,PT_Normal,,,,,s8F/HEDi10qoEuXtadIzdQ,j8yxBZ2kTYa6Mh1861sJ0Q,,,N,0,0,,,,,,,,2025-07-16 14:09,2025-11-20 21:46,ARAJSHEKAR,jleon,,N,
100234738,122698,18115102,597,0,N,1,N,N,CP_Drtn,TT_Task,DT_FixedDUR2,TK_Active,FAB126107E-04,INSTALL DOOR & HARDWARE - FAB126107E,,18,448,40,0,0,0,40,0,0,0,,2025-11-11 08:00,,2025-11-25 10:00,2025-12-02 10:00,,2025-11-21 08:00,2025-11-27 17:00,2025-11-21 08:00,2025-11-27 17:00,2025-11-11 08:00,2025-11-17 17:00,2025-11-25 10:00,2025-12-02 10:00,,PT_Normal,,,,,H/nxYK1BnkiG9b56elSTdg,/n0AQZIQRbqxF1WZJnWmNw,,,N,0,0,,,,,,,,2025-07-16 14:09,2025-11-20 21:46,ARAJSHEKAR,jleon,,N,
100234752,122698,18115050,597,0,N,1,N,N,CP_Drtn,TT_Task,DT_FixedDUR2,TK_Active,FAB126201A-04,INSTALL DOOR & HARDWARE - FAB126201A,,18,448,40,0,0,0,40,0,0,0,,2025-09-04 08:00,,2025-11-25 10:00,2025-12-02 10:00,,2025-11-21 08:00,2025-11-27 17:00,2025-11-21 08:00,2025-11-27 17:00,2025-09-04 08:00,2025-09-10 17:00,2025-11-25 10:00,2025-12-02 10:00,,PT_Normal,,,,,JPJj5vNpHEmOIlLpDBnUwA,ZebnFcBFTD2RXkJUrL8V/g,,,N,0,0,,,,,,,,2025-07-16 14:09,2025-11-20 21:46,ARAJSHEKAR,jleon,,N,
100234762,122698,18115113,597,0,N,1,N,N,CP_Drtn,TT_Task,DT_FixedDUR2,TK_Active,FAB126104D-04,INSTALL DOOR & HARDWARE - FAB126104D,,18,448,40,0,0,0,40,0,0,0,,2025-11-13 08:00,,2025-11-25 10:00,2025-12-02 10:00,,2025-11-21 08:00,2025-11-27 17:00,2025-11-21 08:00,2025-11-27 17:00,2025-11-13 08:00,2025-11-19 17:00,2025-11-25 10:00,2025-12-02 10:00,,PT_Normal,,,,,yZe8AJAmuE+KFj2lQA7Lzw,xokpDUKfRxukkiQ1nrTgmg,,,N,0,0,,,,,,,,2025-07-16 14:09,2025-11-20 21:46,ARAJSHEKAR,jleon,,N,
100234778,122698,18115106,597,0,N,1,N,N,CP_Drtn,TT_Task,DT_FixedDUR2,TK_Active,FAB126106A-04,INSTALL DOOR & HARDWARE - FAB126106A,,18,448,40,0,0,0,40,0,0,0,,2025-10-23 08:00,,2025-11-25 10:00,2025-12-02 10:00,,2025-11-21 08:00,2025-11-27 17:00,2025-11-21 08:00,2025-11-27 17:00,2025-10-23 08:00,2025-10-29 17:00,2025-11-25 10:00,2025-12-02 10:00,,PT_Normal,,,,,05Qvr0d7BUSqptIspnOFIg,GtopEtw3QKCWU9UpZdcB0A,,,N,0,0,,,,,,,,2025-07-16 14:09,2025-11-20 21:46,ARAJSHEKAR,jleon,,N,
100234784,122698,18115106,597,0,N,1,N,N,CP_Drtn,TT_Task,DT_FixedDUR2,TK_Active,FAB126106B-04,INSTALL DOOR & HARDWARE - FAB126106B,,18,448,40,0,0,0,40,0,0,0,,2025-10-22 08:00,,2025-11-25 10:00,2025-12-02 10:00,,2025-11-21 08:00,2025-11-27 17:00,2025-11-21 08:00,2025-11-27 17:00,2025-10-22 08:00,2025-10-28 17:00,2025-11-25 10:00,2025-12-02 10:00,,PT_Normal,,,,,pwq5JdKux0KzxWE1tDrlzw,5XUx8VxLTvKvbpwE2++eBQ,,,N,0,0,,,,,,,,2025-07-16 14:09,2025-11-20 21:46,ARAJSHEKAR,jleon,,N,
100234793,122698,18115110,597,0,N,1,N,N,CP_Drtn,TT_Task,DT_FixedDUR2,TK_Active,FAB126112A-04,INSTALL DOOR & HARDWARE - FAB126112A,,18,448,40,0,0,0,40,0,0,0,,2025-05-16 08:00,,2025-11-25 10:00,2025-12-02 10:00,,2025-11-21 08:00,2025-11-27 17:00,2025-11-21 08:00,2025-11-27 17:00,2025-05-16 08:00,2025-05-22 17:00,2025-11-25 10:00,2025-12-02 10:00,,PT_Normal,,,,,s0ZreG27nUG/ayGG2iK3Yg,EIB4XHSbTey89BxCTf8Bgw,,,N,0,0,,,,,,,,2025-07-16 14:09,2025-11-20 21:46,ARAJSHEKAR,jleon,,N,
100234802,122698,18115070,597,0,N,1,N,N,CP_Drtn,TT_Task,DT_FixedDUR2,TK_Active,FAB120106A-04,INSTALL DOOR & HARDWARE - FAB120106A,,32,448,40,0,0,0,40,0,0,0,,2025-08-25 08:00,,2025-11-27 08:00,2025-12-03 17:00,,2025-11-21 08:00,2025-11-27 17:00,2025-11-21 08:00,2025-11-27 17:00,2025-08-25 08:00,2025-08-29 17:00,2025-11-27 08:00,2025-12-03 17:00,,PT_Normal,,,,,PgumbRjop0WO9JOcv1vtMg,MbIJaJdUSOOeQN/BZHv0rQ,,,N,0,0,,,,,,,,2025-07-16 14:09,2025-11-20 21:46,ARAJSHEKAR,jleon,,N,
100234808,122698,18115070,597,0,N,1,N,N,CP_Drtn,TT_Task,DT_FixedDUR2,TK_Active,FAB120106B-04,INSTALL DOOR & HARDWARE - FAB120106B,,18,448,40,0,0,0,40,0,0,0,,2025-09-11 08:00,,2025-11-25 10:00,2025-12-02 10:00,,2025-11-21 08:00,2025-11-27 17:00,2025-11-21 08:00,2025-11-27 17:00,2025-09-11 08:00,2025-09-17 17:00,2025-11-25 10:00,2025-12-02 10:00,,PT_Normal,,,,,rUFN4xWip0+IP7KuPNaWPA,GoP/+gX0TeGBG7lweq1JOA,,,N,0,0,,,,,,,,2025-07-16 14:09,2025-11-20 21:46,ARAJSHEKAR,jleon,,N,
100234819,122698,18115070,597,0,N,1,N,N,CP_Drtn,TT_Task,DT_FixedDUR2,TK_Active,FAB120118K-04,INSTALL DOOR & HARDWARE - FAB120118K,,32,448,40,0,0,0,40,0,0,0,,2025-08-26 08:00,,2025-11-27 08:00,2025-12-03 17:00,,2025-11-21 08:00,2025-11-27 17:00,2025-11-21 08:00,2025-11-27 17:00,2025-08-26 08:00,2025-09-01 17:00,2025-11-27 08:00,2025-12-03 17:00,,PT_Normal,,,,,i99OJwm+3EGdz4XxJE1ByA,WqWIK7kBSW+wQ4yiGCQ3QQ,,,N,0,0,,,,,,,,2025-07-16 14:09,2025-11-20 21:46,ARAJSHEKAR,jleon,,N,
100234844,122698,18115130,597,0,N,1,N,N,CP_Drtn,TT_Task,DT_FixedDUR2,TK_Active,FAB126105A-04,INSTALL DOOR & HARDWARE - FAB126105A,,18,448,40,0,0,0,40,0,0,0,,2025-11-18 08:00,,2025-11-25 10:00,2025-12-02 10:00,,2025-11-21 08:00,2025-11-27 17:00,2025-11-21 08:00,2025-11-27 17:00,2025-11-18 08:00,2025-11-24 17:00,2025-11-25 10:00,2025-12-02 10:00,,PT_Normal,,,,,U57ToVqsjk6T3kc6dOX06Q,Fc6bnv2NRO+h5mtmREHnuA,,,N,0,0,,,,,,,,2025-07-16 14:09,2025-11-20 21:46,ARAJSHEKAR,jleon,,N,
100234850,122698,18115130,597,0,N,1,N,N,CP_Drtn,TT_Task,DT_FixedDUR2,TK_Active,FAB126109A-04,INSTALL DOOR & HARDWARE - FAB126109A,,18,448,40,0,0,0,40,0,0,0,,2025-06-06 08:00,,2025-11-25 10:00,2025-12-02 10:00,,2025-11-21 08:00,2025-11-27 17:00,2025-11-21 08:00,2025-11-27 17:00,2025-06-06 08:00,2025-06-12 17:00,2025-11-25 10:00,2025-12-02 10:00,,PT_Normal,,,,,yv2hkk8ri0utZJZTOMRy3w,fvz59Tq4TtSuO5vj8Wva6Q,,,N,0,0,,,,,,,,2025-07-16 14:09,2025-11-20 21:46,ARAJSHEKAR,jleon,,N,
100234857,122698,18115081,597,0,N,1,N,N,CP_Drtn,TT_Task,DT_FixedDUR2,TK_Active,FAB126308A-04,INSTALL DOOR & HARDWARE - FAB126308A,,48,480,40,0,0,0,40,0,0,0,,2025-11-12 08:00,,2025-12-01 08:00,2025-12-05 17:00,,2025-11-21 08:00,2025-11-27 17:00,2025-11-21 08:00,2025-11-27 17:00,2025-11-12 08:00,2025-11-18 17:00,2025-12-01 08:00,2025-12-05 17:00,,PT_Normal,,,,,0A8LRkElZU2QtvMsvD1olg,0zamLqIDSUC2ze2MdPVIHw,,,N,0,0,,,,,,,,2025-07-16 14:09,2025-11-20 21:46,ARAJSHEKAR,jleon,,N,
100234867,122698,18115096,597,0,N,1,N,N,CP_Drtn,TT_Task,DT_FixedDUR2,TK_Active,FAB126401A-04,INSTALL DOOR & HARDWARE - FAB126401A,,18,448,40,0,0,0,40,0,0,0,,2025-11-13 08:00,,2025-11-25 10:00,2025-12-02 10:00,,2025-11-21 08:00,2025-11-27 17:00,2025-11-21 08:00,2025-11-27 17:00,2025-11-13 08:00,2025-11-19 17:00,2025-11-25 10:00,2025-12-02 10:00,,PT_Normal,,,,,RUjl4FPSSEerLTQkcpNlxQ,s7znSLFiSU+mYwo0GymGtQ,,,N,0,0,,,,,,,,2025-07-16 14:09,2025-11-20 21:46,ARAJSHEKAR,jleon,,N,
100234908,122698,18115086,597,0,N,1,N,N,CP_Drtn,TT_Task,DT_FixedDUR2,TK_Active,TR-FAB126108A-04,INSTALL DOOR & HARDWARE - TR - FAB126108A,,18,448,40,0,0,0,40,0,0,0,,2025-10-08 08:00,,2025-11-25 10:00,2025-12-02 10:00,,2025-11-21 08:00,2025-11-27 17:00,2025-11-21 08:00,2025-11-27 17:00,2025-10-08 08:00,2025-10-14 17:00,2025-11-25 10:00,2025-12-02 10:00,,PT_Normal,,,,,DiZqmCrUbUiKZtqABiEs5w,ozHULJjYRLqtrMJadUDb3w,,,N,0,0,,,,,,,,2025-07-16 14:09,2025-11-20 21:46,ARAJSHEKAR,jleon,,N,
100234915,122698,18115075,597,0,N,1,N,N,CP_Drtn,TT_Task,DT_FixedDUR2,TK_Active,TR-FAB126304A-04,INSTALL DOOR & HARDWARE - TR - FAB126304A,,48,478,40,0,0,0,40,0,0,0,,2025-11-10 08:00,,2025-12-01 08:00,2025-12-05 17:00,,2025-11-21 08:00,2025-11-27 17:00,2025-11-21 08:00,2025-11-27 17:00,2025-11-10 08:00,2025-11-14 17:00,2025-12-01 08:00,2025-12-05 17:00,,PT_Normal,,,,,uwIstK/Dx0mg7tdLqJ1ToQ,t66blLzfQV6MleM77Vd1Sg,,,N,0,0,,,,,,,,2025-07-16 14:09,2025-11-20 21:46,ARAJSHEKAR,jleon,,N,
100234948,122698,18115055,597,0,N,1,N,N,CP_Drtn,TT_Task,DT_FixedDUR2,TK_Active,FAB126301A-04,INSTALL DOOR & HARDWARE - FAB126301A,,18,448,40,0,0,0,40,0,0,0,,2025-09-04 08:00,,2025-11-25 10:00,2025-12-02 10:00,,2025-11-21 08:00,2025-11-27 17:00,2025-11-21 08:00,2025-11-27 17:00,2025-09-04 08:00,2025-09-10 17:00,2025-11-25 10:00,2025-12-02 10:00,,PT_Normal,,,,,YzzL2Cm1zECN0e7e/ctYGA,9snsZ+lcTS2vlw+pBAQPrA,,,N,0,0,,,,,,,,2025-07-16 14:09,2025-11-20 21:46,ARAJSHEKAR,jleon,,N,
100234954,122698,18115055,597,0,N,1,N,N,CP_Drtn,TT_Task,DT_FixedDUR2,TK_Active,FAB126302A-04,INSTALL DOOR & HARDWARE - FAB126302A,,18,448,40,0,0,0,40,0,0,0,,2025-09-04 08:00,,2025-11-25 10:00,2025-12-02 10:00,,2025-11-21 08:00,2025-11-27 17:00,2025-11-21 08:00,2025-11-27 17:00,2025-09-04 08:00,2025-09-10 17:00,2025-11-25 10:00,2025-12-02 10:00,,PT_Normal,,,,,WvdNxKU+/0+fhcKef1PHTA,3djI+DZpTgG4TttttTNQ+w,,,N,0,0,,,,,,,,2025-07-16 14:09,2025-11-20 21:46,ARAJSHEKAR,jleon,,N,
100234976,122698,18115120,597,0,N,1,N,N,CP_Drtn,TT_Task,DT_FixedDUR2,TK_Active,FAB120501B-04,INSTALL DOOR & HARDWARE - FAB120501B,,18,448,40,0,0,0,40,0,0,0,,2025-09-09 08:00,,2025-11-25 10:00,2025-12-02 10:00,,2025-11-21 08:00,2025-11-27 17:00,2025-11-21 08:00,2025-11-27 17:00,2025-09-09 08:00,2025-09-15 17:00,2025-11-25 10:00,2025-12-02 10:00,,PT_Normal,,,,,YylzOTNeeEi3k105GzbNKw,2yXu7e9oQ0yNoqC2/wqRtg,,,N,0,0,,,,,,,,2025-07-16 14:09,2025-11-20 21:46,ARAJSHEKAR,jleon,,N,
100234989,122698,18115097,597,0,N,1,N,N,CP_Drtn,TT_Task,DT_FixedDUR2,TK_Active,FAB120508A-04,INSTALL DOOR & HARDWARE - FAB120508A,,18,448,40,0,0,0,40,0,0,0,,2025-07-10 08:00,,2025-11-25 10:00,2025-12-02 10:00,,2025-11-21 08:00,2025-11-27 17:00,2025-11-21 08:00,2025-11-27 17:00,2025-07-10 08:00,2025-07-16 17:00,2025-11-25 10:00,2025-12-02 10:00,,PT_Normal,,,,,vreMW3yTD0qFWJKgKb+BHg,xbtIn2bHQT2aVUcIpyjdvQ,,,N,0,0,,,,,,,,2025-07-16 14:09,2025-11-20 21:46,ARAJSHEKAR,jleon,,N,
100234999,122698,18115098,597,0,N,1,N,N,CP_Drtn,TT_Task,DT_FixedDUR2,TK_Active,FAB120102A-04,INSTALL DOOR & HARDWARE - FAB120102A,,18,448,40,0,0,0,40,0,0,0,,2025-10-07 08:00,,2025-11-25 10:00,2025-12-02 10:00,,2025-11-21 08:00,2025-11-27 17:00,2025-11-21 08:00,2025-11-27 17:00,2025-10-07 08:00,2025-10-13 17:00,2025-11-25 10:00,2025-12-02 10:00,,PT_Normal,,,,,vqGAJfD2aUuHQiz+AtU4pA,5Anm0PftQLidYGUAf3j6Ag,,,N,0,0,,,,,,,,2025-07-16 14:09,2025-11-20 21:46,ARAJSHEKAR,jleon,,N,
100235008,122698,18115103,597,0,N,1,N,N,CP_Drtn,TT_Task,DT_FixedDUR2,TK_Active,FAB120506D-04,INSTALL DOOR & HARDWARE - FAB120506D,,16,448,40,0,0,0,40,0,0,0,,2025-11-05 08:00,,2025-11-25 08:00,2025-12-01 17:00,,2025-11-21 08:00,2025-11-27 17:00,2025-11-21 08:00,2025-11-27 17:00,2025-11-05 08:00,2025-11-11 17:00,2025-11-25 08:00,2025-12-01 17:00,,PT_Normal,,,,,Y34G8kTatUWHzwAYkK52TA,RQHmDHSbS32clMlSFDqEBA,,,N,0,0,,,,,,,,2025-07-16 14:09,2025-11-20 21:46,ARAJSHEKAR,jleon,,N,
100235014,122698,18115103,597,0,N,1,N,N,CP_Drtn,TT_Task,DT_FixedDUR2,TK_Active,FAB120506E-04,INSTALL DOOR & HARDWARE - FAB120506E,,16,448,40,0,0,0,40,0,0,0,,2025-10-31 08:00,,2025-11-25 08:00,2025-12-01 17:00,,2025-11-21 08:00,2025-11-27 17:00,2025-11-21 08:00,2025-11-27 17:00,2025-10-31 08:00,2025-11-06 17:00,2025-11-25 08:00,2025-12-01 17:00,,PT_Normal,,,,,N73heiwhI0GFO1ZjpLLTnw,f2rYbPrsRN2Yj+rKoFZJFg,,,N,0,0,,,,,,,,2025-07-16 14:09,2025-11-20 21:46,ARAJSHEKAR,jleon,,N,
100235020,122698,18115103,597,0,N,1,N,N,CP_Drtn,TT_Task,DT_FixedDUR2,TK_Active, FAB120506A-04,INSTALL DOOR & HARDWARE - FAB120506A,,16,448,40,0,0,0,40,0,0,0,,2025-11-05 08:00,,2025-11-25 08:00,2025-12-01 17:00,,2025-11-21 08:00,2025-11-27 17:00,2025-11-21 08:00,2025-11-27 17:00,2025-11-05 08:00,2025-11-11 17:00,2025-11-25 08:00,2025-12-01 17:00,,PT_Normal,,,,,9LBYcEJh7kqr9Gh4C+BgDg,LAD65pQqTva/S/TTtexEdA,,,N,0,0,,,,,,,,2025-07-16 14:09,2025-11-20 21:46,ARAJSHEKAR,jleon,,N,
100235026,122698,18115103,597,0,N,1,N,N,CP_Drtn,TT_Task,DT_FixedDUR2,TK_Active, FAB120506B-04,INSTALL DOOR & HARDWARE - FAB120506B,,16,448,40,0,0,0,40,0,0,0,,2025-11-14 08:00,,2025-11-25 08:00,2025-12-01 17:00,,2025-11-21 08:00,2025-11-27 17:00,2025-11-21 08:00,2025-11-27 17:00,2025-11-14 08:00,2025-11-20 17:00,2025-11-25 08:00,2025-12-01 17:00,,PT_Normal,,,,,3dDWiAlwFU+eCUsAmRr9uw,9x6AP9dqQDKIVpIQ+1mxLQ,,,N,0,0,,,,,,,,2025-07-16 14:09,2025-11-20 21:46,ARAJSHEKAR,jleon,,N,
100235032,122698,18115103,597,0,N,1,N,N,CP_Drtn,TT_Task,DT_FixedDUR2,TK_Active, FAB120506C-04,INSTALL DOOR & HARDWARE - FAB120506C,,16,448,40,0,0,0,40,0,0,0,,2025-11-05 08:00,,2025-11-25 08:00,2025-12-01 17:00,,2025-11-21 08:00,2025-11-27 17:00,2025-11-21 08:00,2025-11-27 17:00,2025-11-05 08:00,2025-11-11 17:00,2025-11-25 08:00,2025-12-01 17:00,,PT_Normal,,,,,EL7zSdh1Q0aTfasOXEkmpQ,/z/qV0IoR2GpcZdfl400ZQ,,,N,0,0,,,,,,,,2025-07-16 14:09,2025-11-20 21:46,ARAJSHEKAR,jleon,,N,
100235042,122698,18115058,597,0,N,1,N,N,CP_Drtn,TT_Task,DT_FixedDUR2,TK_Active,FAB120401A-04,INSTALL DOOR & HARDWARE - FAB120401A,,18,448,40,0,0,0,40,0,0,0,,2025-10-24 08:00,,2025-11-25 10:00,2025-12-02 10:00,,2025-11-21 08:00,2025-11-27 17:00,2025-11-21 08:00,2025-11-27 17:00,2025-10-24 08:00,2025-10-30 17:00,2025-11-25 10:00,2025-12-02 10:00,,PT_Normal,,,,,fY9O2DCJTU+HK+7R5msF8g,jYheKPYZSxiTxwUaULVQhg,,,N,0,0,,,,,,,,2025-07-16 14:09,2025-11-20 21:46,ARAJSHEKAR,jleon,,N,
100235050,122698,18115058,597,0,N,1,N,N,CP_Drtn,TT_Task,DT_FixedDUR2,TK_Active,FAB120401C-04,INSTALL DOOR & HARDWARE - FAB120401C,,18,448,40,0,0,0,40,0,0,0,,2025-11-06 08:00,,2025-11-25 10:00,2025-12-02 10:00,,2025-11-21 08:00,2025-11-27 17:00,2025-11-21 08:00,2025-11-27 17:00,2025-11-06 08:00,2025-11-12 17:00,2025-11-25 10:00,2025-12-02 10:00,,PT_Normal,,,,,kiyv5NIsuECDsDea58fgag,yQDiT5jrS0u4E6++ekJbvw,,,N,0,0,,,,,,,,2025-07-16 14:09,2025-11-20 21:46,ARAJSHEKAR,jleon,,N,
100235060,122698,18115058,597,0,N,1,N,N,CP_Drtn,TT_Task,DT_FixedDUR2,TK_Active,FAB120401E-04,INSTALL DOOR & HARDWARE - FAB120401E,,18,448,40,0,0,0,40,0,0,0,,2025-06-20 08:00,,2025-11-25 10:00,2025-12-02 10:00,,2025-11-21 08:00,2025-11-27 17:00,2025-11-21 08:00,2025-11-27 17:00,2025-06-20 08:00,2025-06-26 17:00,2025-11-25 10:00,2025-12-02 10:00,,PT_Normal,,,,,dbccCIZYdUKiKQObYFLBGg,fooNcDwnSz++vWyLrk5KQg,,,N,0,0,,,,,,,,2025-07-16 14:09,2025-11-20 21:46,ARAJSHEKAR,jleon,,N,
100235064,122698,18115058,597,0,N,1,N,N,CP_Drtn,TT_Task,DT_FixedDUR2,TK_Active,FAB120401F-04,INSTALL DOOR & HARDWARE - FAB120401F,,18,448,40,0,0,0,40,0,0,0,,2025-11-06 08:00,,2025-11-25 10:00,2025-12-02 10:00,,2025-11-21 08:00,2025-11-27 17:00,2025-11-21 08:00,2025-11-27 17:00,2025-11-06 08:00,2025-11-12 17:00,2025-11-25 10:00,2025-12-02 10:00,,PT_Normal,,,,,pOXBv5s4UUe0mdyHGWGFAA,DjBI+TdUTGCypm4vHRzhpQ,,,N,0,0,,,,,,,,2025-07-16 14:09,2025-11-20 21:46,ARAJSHEKAR,jleon,,N,
100235069,122698,18115058,597,0,N,1,N,N,CP_Drtn,TT_Task,DT_FixedDUR2,TK_Active,FAB120401G-03,INSTALL DOOR FRAME BY SECAI - FAB120401G - HANDED OVER ON 10/01,,-30,0,48,0,0,0,8,0,0,0,,2025-10-01 08:00,,2025-11-17 10:00,2025-11-25 10:00,,2025-11-21 08:00,2025-11-28 17:00,2025-11-21 08:00,2025-11-28 17:00,2025-10-01 08:00,2025-10-01 17:00,2025-11-17 10:00,2025-11-25 10:00,,PT_Normal,,,,,iLjUhJhwUECnLneYmKkRcQ,t9isjNtsQr+nQXuONriAug,,,N,0,0,,,,,,,,2025-07-16 14:09,2025-11-20 21:59,ARAJSHEKAR,jleon,,N,
100235073,122698,18115058,597,0,N,1,N,N,CP_Drtn,TT_Task,DT_FixedDUR2,TK_Active,FAB120401D-11,IMPACT - INTERNAL - UNASSEMBLED TRANSOM FRAMES FAB120401D,,-38,0,48,0,0,0,250,0,0,0,,2025-06-06 08:00,,2025-11-14 10:00,2025-11-24 10:00,,2025-11-21 08:00,2025-11-28 17:00,2025-11-21 08:00,2025-11-28 17:00,2025-06-06 08:00,2025-07-21 10:00,2025-11-14 10:00,2025-11-24 10:00,,PT_Normal,,,,,UlvHZcUV8kG1K7Ynw5PIIA,UHddPHYwS8uj+Qnf2VXvnw,,,N,0,0,,,,,,,,2025-07-16 14:09,2025-11-20 21:59,ARAJSHEKAR,jleon,,N,
100235080,122698,18115058,597,0,N,1,N,N,CP_Drtn,TT_Task,DT_FixedDUR2,TK_Active,FAB120303F-04,INSTALL DOOR & HARDWARE - FAB120303F,,18,448,40,0,0,0,40,0,0,0,,2025-11-07 08:00,,2025-11-25 10:00,2025-12-02 10:00,,2025-11-21 08:00,2025-11-27 17:00,2025-11-21 08:00,2025-11-27 17:00,2025-11-07 08:00,2025-11-13 17:00,2025-11-25 10:00,2025-12-02 10:00,,PT_Normal,,,,,Ad9//X6BQEWY7krVTqpcwQ,ZPp+VhPbT6+XwlCG1dOTpQ,,,N,0,0,,,,,,,,2025-07-16 14:09,2025-11-20 21:46,ARAJSHEKAR,jleon,,N,
100235085,122698,18115058,597,0,N,1,N,N,CP_Drtn,TT_Task,DT_FixedDUR2,TK_Active,FAB120303H-04,INSTALL DOOR & HARDWARE - FAB120303H - P1,,16,448,40,0,0,0,40,0,0,0,,2025-06-30 08:00,,2025-11-25 08:00,2025-12-01 17:00,,2025-11-21 08:00,2025-11-27 17:00,2025-11-21 08:00,2025-11-27 17:00,2025-06-30 08:00,2025-07-04 17:00,2025-11-25 08:00,2025-12-01 17:00,,PT_Normal,,,,,knAC6Y1UD0Wx4hQVQg5bbQ,N7KVgx2hSm6RQt8liFqRJQ,,,N,0,0,,,,,,,,2025-07-16 14:09,2025-11-20 21:46,ARAJSHEKAR,jleon,,N,
100235100,122698,18115059,597,0,N,1,N,N,CP_Drtn,TT_Task,DT_FixedDUR2,TK_Active,FAB126512A-04,INSTALL DOOR & HARDWARE - FAB126512A,,18,448,40,0,0,0,40,0,0,0,,2025-10-28 08:00,,2025-11-25 10:00,2025-12-02 10:00,,2025-11-21 08:00,2025-11-27 17:00,2025-11-21 08:00,2025-11-27 17:00,2025-10-28 08:00,2025-11-03 17:00,2025-11-25 10:00,2025-12-02 10:00,,PT_Normal,,,,,td6AN0/FB0mN3pE84k3+GQ,PHyZ6ML5Rs+TxaDoqvFNcQ,,,N,0,0,,,,,,,,2025-07-16 14:09,2025-11-20 21:46,ARAJSHEKAR,jleon,,N,
100235107,122698,18115107,597,0,N,1,N,N,CP_Drtn,TT_Task,DT_FixedDUR2,TK_Active,FAB120510A-04,INSTALL DOOR & HARDWARE - FAB120510A,,48,478,40,0,0,0,40,0,0,0,,2025-07-09 08:00,,2025-12-01 08:00,2025-12-05 17:00,,2025-11-21 08:00,2025-11-27 17:00,2025-11-21 08:00,2025-11-27 17:00,2025-07-09 08:00,2025-07-15 17:00,2025-12-01 08:00,2025-12-05 17:00,,PT_Normal,,,,,X4eLa/ugrUqLOO4DEJodgg,qS1tBwS6QUWRE8ozeYlEPg,,,N,0,0,,,,,,,,2025-07-16 14:09,2025-11-20 21:46,ARAJSHEKAR,jleon,,N,
100235115,122698,18115121,597,0,N,1,N,N,CP_Drtn,TT_Task,DT_FixedDUR2,TK_Active,FAB120511A-03,INSTALL DOOR FRAME BY SECAI - FAB120511A - HANDED OVER TO SECAI ON 10/14,,-30,0,48,0,0,0,8,0,0,0,,2025-10-14 08:00,,2025-11-17 10:00,2025-11-25 10:00,,2025-11-21 08:00,2025-11-28 17:00,2025-11-21 08:00,2025-11-28 17:00,2025-10-14 08:00,2025-10-14 17:00,2025-11-17 10:00,2025-11-25 10:00,,PT_Normal,,,,,E/BlByJ72kyAs3bJoj+8PQ,FO14YQsdQhG4+rc+P+Hw6w,,,N,0,0,,,,,,,,2025-07-16 14:09,2025-11-20 21:59,ARAJSHEKAR,jleon,,N,
100235126,122698,18115060,597,0,N,1,N,N,CP_Drtn,TT_Task,DT_FixedDUR2,TK_Active,TR-FAB120307A-04,INSTALL DOOR & HARDWARE - TR - FAB120307A,,18,448,40,0,0,0,40,0,0,0,,2025-11-13 08:00,,2025-11-25 10:00,2025-12-02 10:00,,2025-11-21 08:00,2025-11-27 17:00,2025-11-21 08:00,2025-11-27 17:00,2025-11-13 08:00,2025-11-19 17:00,2025-11-25 10:00,2025-12-02 10:00,,PT_Normal,,,,,fAylJswUXUOsedcmhjBmWw,w97TpZ5AStKhsrfdu5OFmw,,,N,0,0,,,,,,,,2025-07-16 14:09,2025-11-20 21:46,ARAJSHEKAR,jleon,,N,
100235150,122698,18115093,597,0,N,1,N,N,CP_Drtn,TT_Task,DT_FixedDUR2,TK_Active,FAB120201A-04,INSTALL DOOR & HARDWARE - FAB120201A,,18,448,40,0,0,0,40,0,0,0,,2025-11-13 08:00,,2025-11-25 10:00,2025-12-02 10:00,,2025-11-21 08:00,2025-11-27 17:00,2025-11-21 08:00,2025-11-27 17:00,2025-11-13 08:00,2025-11-19 17:00,2025-11-25 10:00,2025-12-02 10:00,,PT_Normal,,,,,5aL7raB3g0+5YFkNJspj+A,tu2EXUcrStSh6KjSG61n9w,,,N,0,0,,,,,,,,2025-07-16 14:09,2025-11-20 21:46,ARAJSHEKAR,jleon,,N,
100235164,122698,18115061,597,0,N,1,N,N,CP_Drtn,TT_Task,DT_FixedDUR2,TK_Active,FAB120108B-04,INSTALL DOOR & HARDWARE - FAB120108B,,18,448,40,0,0,0,40,0,0,0,,2025-10-27 08:00,,2025-11-25 10:00,2025-12-02 10:00,,2025-11-21 08:00,2025-11-27 17:00,2025-11-21 08:00,2025-11-27 17:00,2025-10-27 08:00,2025-10-31 17:00,2025-11-25 10:00,2025-12-02 10:00,,PT_Normal,,,,,FARvGlo0MUu7QZ54y8yyug,gjn3hqLiRoaqUw9kEVvtSg,,,N,0,0,,,,,,,,2025-07-16 14:09,2025-11-20 21:46,ARAJSHEKAR,jleon,,N,
100235186,122698,18115077,597,0,N,1,N,N,CP_Drtn,TT_Task,DT_FixedDUR2,TK_Active,FAB120113A-03,INSTALL DOOR FRAME BY SECAI - FAB120113A HANDED OVER ON 09/05,,-30,0,48,0,0,0,8,0,0,0,,2025-09-05 08:00,,2025-11-17 10:00,2025-11-25 10:00,,2025-11-21 08:00,2025-11-28 17:00,2025-11-21 08:00,2025-11-28 17:00,2025-09-05 08:00,2025-09-05 17:00,2025-11-17 10:00,2025-11-25 10:00,,PT_Normal,,,,,3XnH+d6NXUqBLaumxl6nVA,9eMsIGFiSOaXQo9DUJpqGw,,,N,0,0,,,,,,,,2025-07-16 14:09,2025-11-20 21:59,ARAJSHEKAR,jleon,,N,
100235202,122698,18115062,597,0,N,1,N,N,CP_Drtn,TT_Task,DT_FixedDUR2,TK_Active,FAB126503A-04,INSTALL DOOR & HARDWARE - FAB126503A,,32,448,40,0,0,0,40,0,0,0,,2025-07-16 08:00,,2025-11-27 08:00,2025-12-03 17:00,,2025-11-21 08:00,2025-11-27 17:00,2025-11-21 08:00,2025-11-27 17:00,2025-07-16 08:00,2025-07-22 17:00,2025-11-27 08:00,2025-12-03 17:00,,PT_Normal,,,,,qWe8o0H2v0C72791oYCGbg,TRJpS2eWQSGlMm2SskBKow,,,N,0,0,,,,,,,,2025-07-16 14:09,2025-11-20 21:46,ARAJSHEKAR,jleon,,N,
100235208,122698,18115062,597,0,N,1,N,N,CP_Drtn,TT_Task,DT_FixedDUR2,TK_Active,FAB126503B-04,INSTALL DOOR & HARDWARE - FAB126503B,,18,448,40,0,0,0,40,0,0,0,,2025-11-13 08:00,,2025-11-25 10:00,2025-12-02 10:00,,2025-11-21 08:00,2025-11-27 17:00,2025-11-21 08:00,2025-11-27 17:00,2025-11-13 08:00,2025-11-19 17:00,2025-11-25 10:00,2025-12-02 10:00,,PT_Normal,,,,,u8aqiAhxyEmnhYrr4EGsFA,ao+NY5qwQwmw1p642Iy+lA,,,N,0,0,,,,,,,,2025-07-16 14:09,2025-11-20 21:46,ARAJSHEKAR,jleon,,N,
100235219,122698,18115111,597,0,N,1,N,N,CP_Drtn,TT_Task,DT_FixedDUR2,TK_Active,FAB120509A-04,INSTALL DOOR & HARDWARE - FAB120509A,,18,448,40,0,0,0,40,0,0,0,,2025-11-07 08:00,,2025-11-25 10:00,2025-12-02 10:00,,2025-11-21 08:00,2025-11-27 17:00,2025-11-21 08:00,2025-11-27 17:00,2025-11-07 08:00,2025-11-13 17:00,2025-11-25 10:00,2025-12-02 10:00,,PT_Normal,,,,,E9/d5mXVgkyiPpDGnd8K/A,stSD1yY2T+KN7EdMRZhGog,,,N,0,0,,,,,,,,2025-07-16 14:09,2025-11-20 21:46,ARAJSHEKAR,jleon,,N,
100235228,122698,18115124,597,0,N,1,N,N,CP_Drtn,TT_Task,DT_FixedDUR2,TK_Active,FAB120403A-04,INSTALL DOOR & HARDWARE - FAB120403A,,18,448,40,0,0,0,40,0,0,0,,2025-10-24 08:00,,2025-11-25 10:00,2025-12-02 10:00,,2025-11-21 08:00,2025-11-27 17:00,2025-11-21 08:00,2025-11-27 17:00,2025-10-24 08:00,2025-10-30 17:00,2025-11-25 10:00,2025-12-02 10:00,,PT_Normal,,,,,jEQG42VT2EewfSYAm1ac2w,TOyTt5z1RZ2vyL3jxmg+uA,,,N,0,0,,,,,,,,2025-07-16 14:09,2025-11-20 21:46,ARAJSHEKAR,jleon,,N,
100235238,122698,18115108,597,0,N,1,N,N,CP_Drtn,TT_Task,DT_FixedDUR2,TK_Active,FAB120304A-04,INSTALL DOOR & HARDWARE - FAB120304A,,18,448,40,0,0,0,40,0,0,0,,2025-09-26 08:00,,2025-11-25 10:00,2025-12-02 10:00,,2025-11-21 08:00,2025-11-27 17:00,2025-11-21 08:00,2025-11-27 17:00,2025-09-26 08:00,2025-10-02 17:00,2025-11-25 10:00,2025-12-02 10:00,,PT_Normal,,,,,fRM/jE9Ae02RYmaJQa06JA,rKWacDY5RNeUzGaH7WpY+Q,,,N,0,0,,,,,,,,2025-07-16 14:09,2025-11-20 21:46,ARAJSHEKAR,jleon,,N,
100235244,122698,18115108,597,0,N,1,N,N,CP_Drtn,TT_Task,DT_FixedDUR2,TK_Active,FAB120304B-04,INSTALL DOOR & HARDWARE - FAB120304B,,18,448,40,0,0,0,40,0,0,0,,2025-04-04 08:00,,2025-11-25 10:00,2025-12-02 10:00,,2025-11-21 08:00,2025-11-27 17:00,2025-11-21 08:00,2025-11-27 17:00,2025-04-04 08:00,2025-04-10 17:00,2025-11-25 10:00,2025-12-02 10:00,,PT_Normal,,,,,5p/JXwqiDEuXQSdeu6FOuw,TqvoI5+vTzGhXFUgAYLXsA,,,N,0,0,,,,,,,,2025-07-16 14:09,2025-11-20 21:46,ARAJSHEKAR,jleon,,N,
100235259,122698,18115078,597,0,N,1,N,N,CP_Drtn,TT_Task,DT_FixedDUR2,TK_Active,FAB120315B-04,INSTALL DOOR & HARDWARE - FAB120315B,,32,448,40,0,0,0,40,0,0,0,,2025-09-09 08:00,,2025-11-27 08:00,2025-12-03 17:00,,2025-11-21 08:00,2025-11-27 17:00,2025-11-21 08:00,2025-11-27 17:00,2025-09-09 08:00,2025-09-15 17:00,2025-11-27 08:00,2025-12-03 17:00,,PT_Normal,,,,,phF7Ys1FQkiNPy8zC3IeeA,uEE+JF96TNatgxXb1Hpv3A,,,N,0,0,,,,,,,,2025-07-16 14:09,2025-11-20 21:46,ARAJSHEKAR,jleon,,N,
100235286,122698,18115073,597,0,N,1,N,N,CP_Drtn,TT_Task,DT_FixedDUR2,TK_Active,FAB126502A-04,INSTALL DOOR & HARDWARE - FAB126502A,,48,448,40,0,0,0,40,0,0,0,,2025-05-19 08:00,,2025-12-01 08:00,2025-12-05 17:00,,2025-11-21 08:00,2025-11-27 17:00,2025-11-21 08:00,2025-11-27 17:00,2025-05-19 08:00,2025-05-23 17:00,2025-12-01 08:00,2025-12-05 17:00,,PT_Normal,,,,,WI5FayzmI0qXpKx18u1omQ,g+cZTchrQmutE7/OkRBGUg,,,N,0,0,,,,,,,,2025-07-16 14:09,2025-11-20 21:46,ARAJSHEKAR,jleon,,N,
100235289,122698,18115073,597,0,N,1,N,N,CP_Drtn,TT_Task,DT_FixedDUR2,TK_Active,FAB126502C-01,INSTALL DOOR FRAMES - FAB126502C,,18,0,48,0,0,0,8,0,0,0,,2025-08-29 08:00,,2025-11-25 10:00,2025-12-03 10:00,,2025-11-21 08:00,2025-11-28 17:00,2025-11-21 08:00,2025-11-28 17:00,2025-08-29 08:00,2025-08-29 17:00,2025-11-25 10:00,2025-12-03 10:00,,PT_Normal,,,,,QT7EbFEjBUaXtIZJTiQyMw,J5jEGLFWSJeeo20JaC7Xug,,,N,0,0,,,,,,,,2025-07-16 14:09,2025-11-20 21:59,ARAJSHEKAR,jleon,,N,
100235295,122698,18115073,597,0,N,1,N,N,CP_Drtn,TT_Task,DT_FixedDUR2,TK_Active,FAB126502D-04,INSTALL DOOR & HARDWARE - FAB126502D,,18,448,40,0,0,0,40,0,0,0,,2025-10-22 08:00,,2025-11-25 10:00,2025-12-02 10:00,,2025-11-21 08:00,2025-11-27 17:00,2025-11-21 08:00,2025-11-27 17:00,2025-10-22 08:00,2025-10-28 17:00,2025-11-25 10:00,2025-12-02 10:00,,PT_Normal,,,,,tSWp6hlsT0KQWS2EzMLwuQ,ssMdWpscQVi82lPzIEqeyg,,,N,0,0,,,,,,,,2025-07-16 14:09,2025-11-20 21:46,ARAJSHEKAR,jleon,,N,
100235301,122698,18115073,597,0,N,1,N,N,CP_Drtn,TT_Task,DT_FixedDUR2,TK_Active,FAB126502E-04,INSTALL DOOR & HARDWARE - FAB126502E,,40,448,40,0,0,0,40,0,0,0,,2025-05-15 08:00,,2025-11-28 08:00,2025-12-04 17:00,,2025-11-21 08:00,2025-11-27 17:00,2025-11-21 08:00,2025-11-27 17:00,2025-05-15 08:00,2025-05-21 17:00,2025-11-28 08:00,2025-12-04 17:00,,PT_Normal,,,,,3EfHD67SL0ehISF7d7p9GQ,xeXHsbPbQYit5Ja33HH+6A,,,N,0,0,,,,,,,,2025-07-16 14:09,2025-11-20 21:46,ARAJSHEKAR,jleon,,N,
100235314,122698,18115126,597,0,N,1,N,N,CP_Drtn,TT_Task,DT_FixedDUR2,TK_Active,FAB120402A-04,INSTALL DOOR & HARDWARE - FAB120402A,,18,448,40,0,0,0,40,0,0,0,,2025-11-12 08:00,,2025-11-25 10:00,2025-12-02 10:00,,2025-11-21 08:00,2025-11-27 17:00,2025-11-21 08:00,2025-11-27 17:00,2025-11-12 08:00,2025-11-18 17:00,2025-11-25 10:00,2025-12-02 10:00,,PT_Normal,,,,,sc8zkVZfzEWjPlxvSbeuXQ,msi81DWrTT2nqnKzeHp+uw,,,N,0,0,,,,,,,,2025-07-16 14:09,2025-11-20 21:46,ARAJSHEKAR,jleon,,N,
100235330,122698,18115064,597,0,N,1,N,N,CP_Drtn,TT_Task,DT_FixedDUR2,TK_Active,FAB120303B-04,INSTALL DOOR & HARDWARE - FAB120303B,,18,448,40,0,0,0,40,0,0,0,,2025-10-23 08:00,,2025-11-25 10:00,2025-12-02 10:00,,2025-11-21 08:00,2025-11-27 17:00,2025-11-21 08:00,2025-11-27 17:00,2025-10-23 08:00,2025-10-29 17:00,2025-11-25 10:00,2025-12-02 10:00,,PT_Normal,,,,,IKoALGCy8UCTyCGDQ0WErg,QG+wYGWWRZykqFnWvXK/mg,,,N,0,0,,,,,,,,2025-07-16 14:09,2025-11-20 21:46,ARAJSHEKAR,jleon,,N,
100235334,122698,18115064,597,0,N,1,N,N,CP_Drtn,TT_Task,DT_FixedDUR2,TK_Active,FAB120303C-04,INSTALL DOOR & HARDWARE - FAB120303C,,18,448,40,0,0,0,40,0,0,0,,2025-10-23 08:00,,2025-11-25 10:00,2025-12-02 10:00,,2025-11-21 08:00,2025-11-27 17:00,2025-11-21 08:00,2025-11-27 17:00,2025-10-23 08:00,2025-10-29 17:00,2025-11-25 10:00,2025-12-02 10:00,,PT_Normal,,,,,W2n0oZfL+kCaLzYwMfEnLQ,oNKp9IrVR+a5QC3g3Qcmiw,,,N,0,0,,,,,,,,2025-07-16 14:09,2025-11-20 21:46,ARAJSHEKAR,jleon,,N,
100235340,122698,18115064,597,0,N,1,N,N,CP_Drtn,TT_Task,DT_FixedDUR2,TK_Active,FAB120303D-04,INSTALL DOOR & HARDWARE - FAB120303D,,18,448,40,0,0,0,40,0,0,0,,2025-11-11 08:00,,2025-11-25 10:00,2025-12-02 10:00,,2025-11-21 08:00,2025-11-27 17:00,2025-11-21 08:00,2025-11-27 17:00,2025-11-11 08:00,2025-11-17 17:00,2025-11-25 10:00,2025-12-02 10:00,,PT_Normal,,,,,e0FAZsdoUkab+eiHxsMHyg,r5NTtkDNTpqB1W5uQDD2Aw,,,N,0,0,,,,,,,,2025-07-16 14:09,2025-11-20 21:46,ARAJSHEKAR,jleon,,N,
100235351,122698,18115083,597,0,N,1,N,N,CP_Drtn,TT_Task,DT_FixedDUR2,TK_Active,FAB120301A-04,INSTALL DOOR & HARDWARE - FAB120301A,,16,448,40,0,0,0,40,0,0,0,,2025-04-04 08:00,,2025-11-25 08:00,2025-12-01 17:00,,2025-11-21 08:00,2025-11-27 17:00,2025-11-21 08:00,2025-11-27 17:00,2025-04-04 08:00,2025-04-10 17:00,2025-11-25 08:00,2025-12-01 17:00,,PT_Normal,,,,,cuDQGA+eAE2mLquf8jqc5w,ItFKubmmRfGt3Yj+//sgTQ,,,N,0,0,,,,,,,,2025-07-16 14:09,2025-11-20 21:46,ARAJSHEKAR,jleon,,N,
100235360,122698,18115065,597,0,N,1,N,N,CP_Drtn,TT_Task,DT_FixedDUR2,TK_Active,FAB120105A-04,INSTALL DOOR & HARDWARE - FAB120105A,,18,448,40,0,0,0,40,0,0,0,,2025-10-28 08:00,,2025-11-25 10:00,2025-12-02 10:00,,2025-11-21 08:00,2025-11-27 17:00,2025-11-21 08:00,2025-11-27 17:00,2025-10-28 08:00,2025-11-03 17:00,2025-11-25 10:00,2025-12-02 10:00,,PT_Normal,,,,,DkRjvpMXzUepvFFfLyTRVA,KeH/gH0JQ+W2eKyZJMPGjA,,,N,0,0,,,,,,,,2025-07-16 14:09,2025-11-20 21:46,ARAJSHEKAR,jleon,,N,
100235371,122698,18115079,597,0,N,1,N,N,CP_Drtn,TT_Task,DT_FixedDUR2,TK_Active,FAB120504B-04,INSTALL DOOR & HARDWARE - FAB120504B,,18,448,40,0,0,0,40,0,0,0,,2025-11-18 08:00,,2025-11-25 10:00,2025-12-02 10:00,,2025-11-21 08:00,2025-11-27 17:00,2025-11-21 08:00,2025-11-27 17:00,2025-11-18 08:00,2025-11-24 17:00,2025-11-25 10:00,2025-12-02 10:00,,PT_Normal,,,,,7RGVa8b6/U2QMSB6o4ZelA,FmWCh6HhTICrvl4/M2DHOA,,,N,0,0,,,,,,,,2025-07-16 14:09,2025-11-20 21:46,ARAJSHEKAR,jleon,,N,
100235375,122698,18115079,597,0,N,1,N,N,CP_Drtn,TT_Task,DT_FixedDUR2,TK_Active,FAB120504D-04,INSTALL DOOR & HARDWARE - FAB120504D,,18,448,40,0,0,0,40,0,0,0,,2025-10-31 08:00,,2025-11-25 10:00,2025-12-02 10:00,,2025-11-21 08:00,2025-11-27 17:00,2025-11-21 08:00,2025-11-27 17:00,2025-10-31 08:00,2025-11-06 17:00,2025-11-25 10:00,2025-12-02 10:00,,PT_Normal,,,,,ALlQ3drt2kOw6FsDHvvkAw,wb6tgs3ISxWGX9//c/rzRg,,,N,0,0,,,,,,,,2025-07-16 14:09,2025-11-20 21:46,ARAJSHEKAR,jleon,,N,
100235387,122698,18115117,597,0,N,1,N,N,CP_Drtn,TT_Task,DT_FixedDUR2,TK_Active,FAB120507A-04,INSTALL DOOR & HARDWARE - FAB120507A,,18,448,40,0,0,0,40,0,0,0,,2025-11-13 08:00,,2025-11-25 10:00,2025-12-02 10:00,,2025-11-21 08:00,2025-11-27 17:00,2025-11-21 08:00,2025-11-27 17:00,2025-11-13 08:00,2025-11-19 17:00,2025-11-25 10:00,2025-12-02 10:00,,PT_Normal,,,,,D4EU+tWbo0S8bY4dgutZwg,jHPW2Vf9QtmgicsFpNSYFw,,,N,0,0,,,,,,,,2025-07-16 14:09,2025-11-20 21:46,ARAJSHEKAR,jleon,,N,
100235390,122698,18115117,597,0,N,1,N,N,CP_Drtn,TT_Task,DT_FixedDUR2,TK_Active,FAB120507B-01,IMPACT - SECAI SCAFFOLD IMPEDING DOOR FRAME INSTALLATION - FAB120507B,,-46,0,48,0,0,0,8,0,0,0,,2025-08-25 08:00,,2025-11-13 10:00,2025-11-21 10:00,,2025-11-21 08:00,2025-11-28 17:00,2025-11-21 08:00,2025-11-28 17:00,2025-08-25 08:00,2025-08-25 17:00,2025-11-13 10:00,2025-11-21 10:00,,PT_Normal,,,,,MIJNF/D9pU+dxUnmeIVCkg,TVOahwkPQCaUcNPhHaIusA,,,N,0,0,,,,,,,,2025-07-16 14:09,2025-11-20 21:59,ARAJSHEKAR,jleon,,N,
100235410,122698,18115128,597,0,N,1,N,N,CP_Drtn,TT_Task,DT_FixedDUR2,TK_Active,FAB120308A-04,INSTALL DOOR & HARDWARE - FAB120308A,,18,448,40,0,0,0,40,0,0,0,,2025-07-10 08:00,,2025-11-25 10:00,2025-12-02 10:00,,2025-11-21 08:00,2025-11-27 17:00,2025-11-21 08:00,2025-11-27 17:00,2025-07-10 08:00,2025-07-16 17:00,2025-11-25 10:00,2025-12-02 10:00,,PT_Normal,,,,,UYQQV4CitUK1hfBPPCOlUg,D9TR1zgeSrmkxcj9nOBS8w,,,N,0,0,,,,,,,,2025-07-16 14:09,2025-11-20 21:46,ARAJSHEKAR,jleon,,N,
100235434,122698,18115043,597,0,N,1,N,N,CP_Drtn,TT_Task,DT_FixedDUR2,TK_Active,FAB120109A-04,INSTALL DOOR & HARDWARE - FAB120109A,,18,448,40,0,0,0,40,0,0,0,,2025-09-12 08:00,,2025-11-25 10:00,2025-12-02 10:00,,2025-11-21 08:00,2025-11-27 17:00,2025-11-21 08:00,2025-11-27 17:00,2025-09-12 08:00,2025-09-18 17:00,2025-11-25 10:00,2025-12-02 10:00,,PT_Normal,,,,,t6P0VhMI2kW0IRq1FkaM3A,TbVwE6gdSs6SyDdzwt9EdA,,,N,0,0,,,,,,,,2025-07-16 14:09,2025-11-20 21:46,ARAJSHEKAR,jleon,,N,
100235440,122698,18115043,597,0,N,1,N,N,CP_Drtn,TT_Task,DT_FixedDUR2,TK_Active,FAB120109B-04,INSTALL DOOR & HARDWARE - FAB120109B,,18,448,40,0,0,0,40,0,0,0,,2025-11-12 08:00,,2025-11-25 10:00,2025-12-02 10:00,,2025-11-21 08:00,2025-11-27 17:00,2025-11-21 08:00,2025-11-27 17:00,2025-11-12 08:00,2025-11-18 17:00,2025-11-25 10:00,2025-12-02 10:00,,PT_Normal,,,,,2Ao6yIn7K0e0qPHCbUZnKA,2h6ZduuhShOdKingjEL6fA,,,N,0,0,,,,,,,,2025-07-16 14:09,2025-11-20 21:46,ARAJSHEKAR,jleon,,N,
100235446,122698,18115043,597,0,N,1,N,N,CP_Drtn,TT_Task,DT_FixedDUR2,TK_Active,FAB120109C-04,INSTALL DOOR & HARDWARE - FAB120109C,,18,448,40,0,0,0,40,0,0,0,,2025-08-26 08:00,,2025-11-25 10:00,2025-12-02 10:00,,2025-11-21 08:00,2025-11-27 17:00,2025-11-21 08:00,2025-11-27 17:00,2025-08-26 08:00,2025-09-01 17:00,2025-11-25 10:00,2025-12-02 10:00,,PT_Normal,,,,,fu0kAo0kz0uH+1zM5ZcHYg,ByO5SaMXRQ6EzCbXzQBj1w,,,N,0,0,,,,,,,,2025-07-16 14:09,2025-11-20 21:46,ARAJSHEKAR,jleon,,N,
100235454,122698,18115074,597,0,N,1,N,N,CP_Drtn,TT_Task,DT_FixedDUR2,TK_Active,FAB120112A-04,INSTALL DOOR & HARDWARE - FAB120112A,,18,448,40,0,0,0,40,0,0,0,,2025-11-07 08:00,,2025-11-25 10:00,2025-12-02 10:00,,2025-11-21 08:00,2025-11-27 17:00,2025-11-21 08:00,2025-11-27 17:00,2025-11-07 08:00,2025-11-13 17:00,2025-11-25 10:00,2025-12-02 10:00,,PT_Normal,,,,,3uU9zNW3ekWouyprIZ8tCg,ScfPek4oTKe5L5W59bYSqA,,,N,0,0,,,,,,,,2025-07-16 14:09,2025-11-20 21:46,ARAJSHEKAR,jleon,,N,
100235468,122698,18115084,597,0,N,1,N,N,CP_Drtn,TT_Task,DT_FixedDUR2,TK_Active,FAB120503A-04,INSTALL DOOR & HARDWARE - FAB120503A,,18,448,40,0,0,0,40,0,0,0,,2025-10-31 08:00,,2025-11-25 10:00,2025-12-02 10:00,,2025-11-21 08:00,2025-11-27 17:00,2025-11-21 08:00,2025-11-27 17:00,2025-10-31 08:00,2025-11-06 17:00,2025-11-25 10:00,2025-12-02 10:00,,PT_Normal,,,,,GdetdZasvEGmL5zkMT0/Mw,7vG2dgsmTtS4chWcXDWsyA,,,N,0,0,,,,,,,,2025-07-16 14:09,2025-11-20 21:46,ARAJSHEKAR,jleon,,N,
100235477,122698,18115084,597,100,N,1,N,N,CP_Drtn,TT_Task,DT_FixedDUR2,TK_Active,FAB120503D-03,INSTALL DOOR FRAME BY SECAI - FAB120503D HANDED OVER ON 08/29,,-22,0,40,0,0,0,8,0,0,0,,2025-08-29 08:00,,2025-11-18 10:00,2025-11-25 10:00,,2025-11-21 08:00,2025-11-27 17:00,2025-11-21 08:00,2025-11-27 17:00,2025-08-29 08:00,2025-08-29 17:00,2025-11-18 10:00,2025-11-25 10:00,,PT_Normal,,,,,q0rZgu85OEq7IP7kERLJ/w,RQZ/idglQrau111t3jWHEQ,,,N,0,0,,,,,,,,2025-07-16 14:09,2025-11-20 21:59,ARAJSHEKAR,jleon,,N,
100235482,122698,18115084,597,0,N,1,N,N,CP_Drtn,TT_Task,DT_FixedDUR2,TK_Active,FAB120503E-04,INSTALL DOOR & HARDWARE - FAB120503E,,18,448,40,0,0,0,40,0,0,0,,2025-10-31 08:00,,2025-11-25 10:00,2025-12-02 10:00,,2025-11-21 08:00,2025-11-27 17:00,2025-11-21 08:00,2025-11-27 17:00,2025-10-31 08:00,2025-11-06 17:00,2025-11-25 10:00,2025-12-02 10:00,,PT_Normal,,,,,9cpgpnpBdUuXFm6FA03R+A,HFPdmbuJQ1WeqqqNHQVG/g,,,N,0,0,,,,,,,,2025-07-16 14:09,2025-11-20 21:46,ARAJSHEKAR,jleon,,N,
100235500,122698,18115089,597,0,N,1,N,N,CP_Drtn,TT_Task,DT_FixedDUR2,TK_Active,FAB120505C-04,INSTALL DOOR & HARDWARE - FAB120505C,,18,448,40,0,0,0,40,0,0,0,,2025-11-05 08:00,,2025-11-25 10:00,2025-12-02 10:00,,2025-11-21 08:00,2025-11-27 17:00,2025-11-21 08:00,2025-11-27 17:00,2025-11-05 08:00,2025-11-11 17:00,2025-11-25 10:00,2025-12-02 10:00,,PT_Normal,,,,,p9CvCFwlCEOfor0h6nLXbg,hJqTEWTeTTOs0lEokvusVg,,,N,0,0,,,,,,,,2025-07-16 14:09,2025-11-20 21:46,ARAJSHEKAR,jleon,,N,
100235519,122698,18115044,597,0,N,1,N,N,CP_Drtn,TT_Task,DT_FixedDUR2,TK_Active,FAB1-ST02B-04,INSTALL DOOR & HARDWARE - FAB1-ST02B,,32,448,40,0,0,0,40,0,0,0,,2025-11-05 08:00,,2025-11-27 08:00,2025-12-03 17:00,,2025-11-21 08:00,2025-11-27 17:00,2025-11-21 08:00,2025-11-27 17:00,2025-11-05 08:00,2025-11-11 17:00,2025-11-27 08:00,2025-12-03 17:00,,PT_Normal,,,,,X0lEVIiIrkm9fmABBIycJg,DTimXIUIR2OnnkiQxqF/+A,,,N,0,0,,,,,,,,2025-07-16 14:09,2025-11-20 21:46,ARAJSHEKAR,jleon,,N,
100235542,122698,18115046,597,0,N,1,N,N,CP_Drtn,TT_Task,DT_FixedDUR2,TK_Active,FAB1-ST20B-04,INSTALL DOOR & HARDWARE - FAB1-ST20B,,8,448,40,0,0,0,40,0,0,0,,2025-11-07 08:00,,2025-11-24 08:00,2025-11-28 17:00,,2025-11-21 08:00,2025-11-27 17:00,2025-11-21 08:00,2025-11-27 17:00,2025-11-07 08:00,2025-11-13 17:00,2025-11-24 08:00,2025-11-28 17:00,,PT_Normal,,,,,KHdkTCJ6TkyF7F+QrFMJeQ,qdrvrz0dT0+OWLuJ+fMSmg,,,N,0,0,,,,,,,,2025-07-16 14:09,2025-11-20 21:46,ARAJSHEKAR,jleon,,N,
100235551,122698,18115047,597,0,N,1,N,N,CP_Drtn,TT_Task,DT_FixedDUR2,TK_Active,FAB1-ST21B-04,INSTALL DOOR & HARDWARE - FAB1-ST21B,,8,448,40,0,0,0,40,0,0,0,,2025-11-14 08:00,,2025-11-24 08:00,2025-11-28 17:00,,2025-11-21 08:00,2025-11-27 17:00,2025-11-21 08:00,2025-11-27 17:00,2025-11-14 08:00,2025-11-20 17:00,2025-11-24 08:00,2025-11-28 17:00,,PT_Normal,,,,,jzQDmXCyaEGsYO/ewe4tuw,I58/WLjZTyqWx1FhTlTveQ,,,N,0,0,,,,,,,,2025-07-16 14:09,2025-11-20 21:46,ARAJSHEKAR,jleon,,N,
100235561,122698,18115048,597,0,N,1,N,N,CP_Drtn,TT_Task,DT_FixedDUR2,TK_Active,FAB1-ST04B-04,INSTALL DOOR & HARDWARE - FAB1-ST04B,,8,448,40,0,0,0,40,0,0,0,,2025-11-06 08:00,,2025-11-24 08:00,2025-11-28 17:00,,2025-11-21 08:00,2025-11-27 17:00,2025-11-21 08:00,2025-11-27 17:00,2025-11-06 08:00,2025-11-12 17:00,2025-11-24 08:00,2025-11-28 17:00,,PT_Normal,,,,,uNDz8UQR+Um8Ps/qOcc/6Q,Arc+rF2DSDWWLdjBj0AHug,,,N,0,0,,,,,,,,2025-07-16 14:09,2025-11-20 21:46,ARAJSHEKAR,jleon,,N,
100235567,122698,18115042,597,0,N,1,N,N,CP_Drtn,TT_Task,DT_FixedDUR2,TK_Active,FAB1-ST19B-04,INSTALL DOOR & HARDWARE - FAB1-ST19B,,16,448,40,0,0,0,40,0,0,0,,2025-11-14 08:00,,2025-11-25 08:00,2025-12-01 17:00,,2025-11-21 08:00,2025-11-27 17:00,2025-11-21 08:00,2025-11-27 17:00,2025-11-14 08:00,2025-11-20 17:00,2025-11-25 08:00,2025-12-01 17:00,,PT_Normal,,,,,UEZEvAm32kmM8UKrc0UQZg,Gs+QT1d6TueFq12ChVvNWQ,,,N,0,0,,,,,,,,2025-07-16 14:09,2025-11-20 21:46,ARAJSHEKAR,jleon,,N,
100235579,122698,18115118,597,0,N,1,N,N,CP_Drtn,TT_Task,DT_FixedDUR2,TK_Active,FAB126507B-04,INSTALL DOOR & HARDWARE - FAB126507B,,18,448,40,0,0,0,40,0,0,0,,2025-11-18 08:00,,2025-11-25 10:00,2025-12-02 10:00,,2025-11-21 08:00,2025-11-27 17:00,2025-11-21 08:00,2025-11-27 17:00,2025-11-18 08:00,2025-11-24 17:00,2025-11-25 10:00,2025-12-02 10:00,,PT_Normal,,,,,Xfi3l8QqckSIf/ZS059yDg,A2Ys5QYxTDa7uU4v31ZZfQ,,,N,0,0,,,,,,,,2025-07-16 14:09,2025-11-20 21:46,ARAJSHEKAR,jleon,,N,
100235623,122698,18114932,597,0,N,1,N,N,CP_Drtn,TT_Task,DT_FixedDUR2,TK_Active,FAB116116A-04,INSTALL DOOR & HARDWARE - FAB116116A,,18,448,40,0,0,0,40,0,0,0,,2025-10-01 08:00,,2025-11-25 10:00,2025-12-02 10:00,,2025-11-21 08:00,2025-11-27 17:00,2025-11-21 08:00,2025-11-27 17:00,2025-10-01 08:00,2025-10-07 17:00,2025-11-25 10:00,2025-12-02 10:00,,PT_Normal,,,,,o4ykrYuG0ESmYEP3qkJ7ig,GIyZvlTySwmmnJYjFfCFeA,,,N,0,0,,,,,,,,2025-07-16 14:09,2025-11-20 21:46,ARAJSHEKAR,jleon,,N,
100235637,122698,18114933,597,0,N,1,N,N,CP_Drtn,TT_Task,DT_FixedDUR2,TK_Active,FAB116111B-04,INSTALL DOOR & HARDWARE - FAB116111B,,18,448,40,0,0,0,40,0,0,0,,2025-08-22 08:00,,2025-11-25 10:00,2025-12-02 10:00,,2025-11-21 08:00,2025-11-27 17:00,2025-11-21 08:00,2025-11-27 17:00,2025-08-22 08:00,2025-08-28 17:00,2025-11-25 10:00,2025-12-02 10:00,,PT_Normal,,,,,eKIdi7tDYkutC0/iUbQkpQ,NLA44xXcSJyzpRnsADVfXg,,,N,0,0,,,,,,,,2025-07-16 14:09,2025-11-20 21:46,ARAJSHEKAR,jleon,,N,
100235643,122698,18114933,597,0,N,1,N,N,CP_Drtn,TT_Task,DT_FixedDUR2,TK_Active,FAB116111C-04,INSTALL DOOR & HARDWARE - FAB116111C,,18,448,40,0,0,0,40,0,0,0,,2025-05-30 08:00,,2025-11-25 10:00,2025-12-02 10:00,,2025-11-21 08:00,2025-11-27 17:00,2025-11-21 08:00,2025-11-27 17:00,2025-05-30 08:00,2025-06-05 17:00,2025-11-25 10:00,2025-12-02 10:00,,PT_Normal,,,,,HQY1QTWNqkScYo9Qp8tBLA,veGafXUlTy++hQwyi1tPMQ,,,N,0,0,,,,,,,,2025-07-16 14:09,2025-11-20 21:46,ARAJSHEKAR,jleon,,N,
100235649,122698,18114933,597,0,N,1,N,N,CP_Drtn,TT_Task,DT_FixedDUR2,TK_Active,FAB116111D-04,INSTALL DOOR & HARDWARE - FAB116111D,,18,448,40,0,0,0,40,0,0,0,,2025-10-13 08:00,,2025-11-25 10:00,2025-12-02 10:00,,2025-11-21 08:00,2025-11-27 17:00,2025-11-21 08:00,2025-11-27 17:00,2025-10-13 08:00,2025-10-17 17:00,2025-11-25 10:00,2025-12-02 10:00,,PT_Normal,,,,,fNlpW1Ya+kykRVaW5/qd9w,c+rjg0zRRJa7hGeF8CQACg,,,N,0,0,,,,,,,,2025-07-16 14:09,2025-11-20 21:46,ARAJSHEKAR,jleon,,N,
100235655,122698,18114933,597,0,N,1,N,N,CP_Drtn,TT_Task,DT_FixedDUR2,TK_Active,FAB116111E-04,INSTALL DOOR & HARDWARE - FAB116111E,,18,448,40,0,0,0,40,0,0,0,,2025-10-01 08:00,,2025-11-25 10:00,2025-12-02 10:00,,2025-11-21 08:00,2025-11-27 17:00,2025-11-21 08:00,2025-11-27 17:00,2025-10-01 08:00,2025-10-07 17:00,2025-11-25 10:00,2025-12-02 10:00,,PT_Normal,,,,,7cxS/6UYAkqyUZ9ejhKNWA,abwXe14CSYGHQbD5CJFRMQ,,,N,0,0,,,,,,,,2025-07-16 14:09,2025-11-20 21:46,ARAJSHEKAR,jleon,,N,
100235661,122698,18114933,597,0,N,1,N,N,CP_Drtn,TT_Task,DT_FixedDUR2,TK_Active,FAB116111F-04,INSTALL DOOR & HARDWARE - FAB116111F,,18,448,40,0,0,0,40,0,0,0,,2025-10-01 08:00,,2025-11-25 10:00,2025-12-02 10:00,,2025-11-21 08:00,2025-11-27 17:00,2025-11-21 08:00,2025-11-27 17:00,2025-10-01 08:00,2025-10-07 17:00,2025-11-25 10:00,2025-12-02 10:00,,PT_Normal,,,,,Z2vX6A3P3U2ltKw0M7W8/A,c4IfALRSTD23AVl8VEM8hA,,,N,0,0,,,,,,,,2025-07-16 14:09,2025-11-20 21:46,ARAJSHEKAR,jleon,,N,
100235670,122698,18114934,597,0,N,1,N,N,CP_Drtn,TT_Task,DT_FixedDUR2,TK_Active,FAB116107A-04,INSTALL DOOR & HARDWARE - FAB116107A,,32,448,40,0,0,0,40,0,0,0,,2025-08-12 08:00,,2025-11-27 08:00,2025-12-03 17:00,,2025-11-21 08:00,2025-11-27 17:00,2025-11-21 08:00,2025-11-27 17:00,2025-08-12 08:00,2025-08-18 17:00,2025-11-27 08:00,2025-12-03 17:00,,PT_Normal,,,,,IF+HTcnHEkiSFQwo8joUgA,PnNtZCiVRMKyfwcxwwhNww,,,N,0,0,,,,,,,,2025-07-16 14:09,2025-11-20 21:46,ARAJSHEKAR,jleon,,N,
100235680,122698,18114935,597,0,N,1,N,N,CP_Drtn,TT_Task,DT_FixedDUR2,TK_Active,FAB116109A-04,INSTALL DOOR & HARDWARE - FAB116109A,,18,448,40,0,0,0,40,0,0,0,,2025-10-14 08:00,,2025-11-25 10:00,2025-12-02 10:00,,2025-11-21 08:00,2025-11-27 17:00,2025-11-21 08:00,2025-11-27 17:00,2025-10-14 08:00,2025-10-20 17:00,2025-11-25 10:00,2025-12-02 10:00,,PT_Normal,,,,,zLVGb44S70e0tvD9Ok2+Wg,1qLtXoKgRISsYJKWEoGQ3g,,,N,0,0,,,,,,,,2025-07-16 14:09,2025-11-20 21:46,ARAJSHEKAR,jleon,,N,
100235686,122698,18114935,597,0,N,1,N,N,CP_Drtn,TT_Task,DT_FixedDUR2,TK_Active,FAB116109B-04,INSTALL DOOR & HARDWARE - FAB116109B,,32,448,40,0,0,0,40,0,0,0,,2025-08-20 08:00,,2025-11-27 08:00,2025-12-03 17:00,,2025-11-21 08:00,2025-11-27 17:00,2025-11-21 08:00,2025-11-27 17:00,2025-08-20 08:00,2025-08-26 17:00,2025-11-27 08:00,2025-12-03 17:00,,PT_Normal,,,,,GF7y9fCKaUKAH4dkLiw+1A,0aCQ8XiWQEuhaA7xGF7/CA,,,N,0,0,,,,,,,,2025-07-16 14:09,2025-11-20 21:46,ARAJSHEKAR,jleon,,N,
100235693,122698,18114936,597,0,N,1,N,N,CP_Drtn,TT_Task,DT_FixedDUR2,TK_Active,FAB116203A-04,INSTALL DOOR & HARDWARE - FAB116203A,,18,448,40,0,0,0,40,0,0,0,,2025-09-19 08:00,,2025-11-25 10:00,2025-12-02 10:00,,2025-11-21 08:00,2025-11-27 17:00,2025-11-21 08:00,2025-11-27 17:00,2025-09-19 08:00,2025-09-25 17:00,2025-11-25 10:00,2025-12-02 10:00,,PT_Normal,,,,,34EIdvlpJUSL42RypXCGAw,08GnTsLXRJS/h19AyWNv8A,,,N,0,0,,,,,,,,2025-07-16 14:09,2025-11-20 21:46,ARAJSHEKAR,jleon,,N,
100235698,122698,18114936,597,0,N,1,N,N,CP_Drtn,TT_Task,DT_FixedDUR2,TK_Active,FAB116203B-04,INSTALL DOOR & HARDWARE - FAB116203B,,18,448,40,0,0,0,40,0,0,0,,2025-08-29 08:00,,2025-11-25 10:00,2025-12-02 10:00,,2025-11-21 08:00,2025-11-27 17:00,2025-11-21 08:00,2025-11-27 17:00,2025-08-29 08:00,2025-09-04 17:00,2025-11-25 10:00,2025-12-02 10:00,,PT_Normal,,,,,rrUsKfla6EyAj0oZgXiSCA,KMnb1T/2QluhEJg/uvJCcA,,,N,0,0,,,,,,,,2025-07-16 14:09,2025-11-20 21:46,ARAJSHEKAR,jleon,,N,
100235724,122698,18114814,597,0,N,1,N,N,CP_Drtn,TT_Task,DT_FixedDUR2,TK_Active,TR-FAB116112A-04,INSTALL DOOR & HARDWARE - TR - FAB116112A,,18,448,40,0,0,0,40,0,0,0,,2025-10-02 08:00,,2025-11-25 10:00,2025-12-02 10:00,,2025-11-21 08:00,2025-11-27 17:00,2025-11-21 08:00,2025-11-27 17:00,2025-10-02 08:00,2025-10-08 17:00,2025-11-25 10:00,2025-12-02 10:00,,PT_Normal,,,,,jCKlOC0UPEq3tfZF4+kQkg,KK06f7TARGWaKNCCzaaYdg,,,N,0,0,,,,,,,,2025-07-16 14:09,2025-11-20 21:46,ARAJSHEKAR,jleon,,N,
100235744,122698,18114816,597,0,N,1,N,N,CP_Drtn,TT_Task,DT_FixedDUR2,TK_Active,FAB116108A-04,INSTALL DOOR & HARDWARE - FAB116108A,,18,448,40,0,0,0,40,0,0,0,,2025-07-01 08:00,,2025-11-25 10:00,2025-12-02 10:00,,2025-11-21 08:00,2025-11-27 17:00,2025-11-21 08:00,2025-11-27 17:00,2025-07-01 08:00,2025-07-07 17:00,2025-11-25 10:00,2025-12-02 10:00,,PT_Normal,,,,,ozSF1bVtRUOYDc0nOVpeBQ,ScvD3Ud/Scy3ddmiSSY5jg,,,N,0,0,,,,,,,,2025-07-16 14:09,2025-11-20 21:46,ARAJSHEKAR,jleon,,N,
100235752,122698,18114817,597,0,N,1,N,N,CP_Drtn,TT_Task,DT_FixedDUR2,TK_Active,FAB116205A-04,INSTALL DOOR & HARDWARE - FAB116205A,,18,448,40,0,0,0,40,0,0,0,,2025-11-13 08:00,,2025-11-25 10:00,2025-12-02 10:00,,2025-11-21 08:00,2025-11-27 17:00,2025-11-21 08:00,2025-11-27 17:00,2025-11-13 08:00,2025-11-19 17:00,2025-11-25 10:00,2025-12-02 10:00,,PT_Normal,,,,,PFR6AxavW0iWbA8GbFLcBQ,qlzVeEIlSACXWOLqjwNgJg,,,N,0,0,,,,,,,,2025-07-16 14:09,2025-11-20 21:46,ARAJSHEKAR,jleon,,N,
100235761,122698,18114818,597,0,N,1,N,N,CP_Drtn,TT_Task,DT_FixedDUR2,TK_Active,FAB116206A-04,INSTALL DOOR & HARDWARE - FAB116206A,,18,448,40,0,0,0,40,0,0,0,,2025-09-24 08:00,,2025-11-25 10:00,2025-12-02 10:00,,2025-11-21 08:00,2025-11-27 17:00,2025-11-21 08:00,2025-11-27 17:00,2025-09-24 08:00,2025-09-30 17:00,2025-11-25 10:00,2025-12-02 10:00,,PT_Normal,,,,,NazUfwhmCkKfLL33oHLsaw,qeSy6fKwQYywfwZYquIANg,,,N,0,0,,,,,,,,2025-07-16 14:09,2025-11-20 21:46,ARAJSHEKAR,jleon,,N,
100235779,122698,18114819,597,0,N,1,N,N,CP_Drtn,TT_Task,DT_FixedDUR2,TK_Active,FAB116101B-00,IMPACT - PATRIOT CLADDING HEADER FIX - FAB116101B,,-38,0,40,0,0,0,120,0,0,0,,2025-06-13 08:00,,2025-11-14 10:00,2025-11-21 10:00,,2025-11-21 08:00,2025-11-27 17:00,2025-11-21 08:00,2025-11-27 17:00,2025-06-13 08:00,2025-07-03 17:00,2025-11-14 10:00,2025-11-21 10:00,,PT_Normal,,,,,ePD1nXWuDEi6cbbdUkGQaw,7CcuxJWRTrysCcOR/bZSDw,,,N,0,0,,,,,,,,2025-07-16 14:09,2025-11-20 21:59,ARAJSHEKAR,jleon,,N,
100235781,122698,18114819,597,0,N,1,N,N,CP_Drtn,TT_Task,DT_FixedDUR2,TK_Active,FAB116101B-08,IMPACT - TEMP UTILITY LINE RUNNING TROUGH THE DOOR OPENING - FAB116101B,,-38,0,40,0,0,0,120,0,0,0,,2025-06-13 08:00,,2025-11-14 10:00,2025-11-21 10:00,,2025-11-21 08:00,2025-11-27 17:00,2025-11-21 08:00,2025-11-27 17:00,2025-06-13 08:00,2025-07-03 17:00,2025-11-14 10:00,2025-11-21 10:00,,PT_Normal,,,,,kkJDfcFKpUuxXotJztrEcQ,1fDb/0LjToO3EdpizWNGKw,,,N,0,0,,,,,,,,2025-07-16 14:09,2025-11-20 21:42,ARAJSHEKAR,jleon,,N,
100235787,122698,18114820,597,0,N,1,N,N,CP_Drtn,TT_Task,DT_FixedDUR2,TK_Active,FAB116102A-04,INSTALL DOOR & HARDWARE - FAB116102A,,32,448,40,0,0,0,40,0,0,0,,2025-05-30 08:00,,2025-11-27 08:00,2025-12-03 17:00,,2025-11-21 08:00,2025-11-27 17:00,2025-11-21 08:00,2025-11-27 17:00,2025-05-30 08:00,2025-06-05 17:00,2025-11-27 08:00,2025-12-03 17:00,,PT_Normal,,,,,qByqeYMYKECVdJjQLo5dwQ,3/2JfSpRTUC5ln715Jpj2Q,,,N,0,0,,,,,,,,2025-07-16 14:09,2025-11-20 21:46,ARAJSHEKAR,jleon,,N,
100235797,122698,18114821,597,0,N,1,N,N,CP_Drtn,TT_Task,DT_FixedDUR2,TK_Active,FAB116110B-04A,INSTALL DOOR & HARDWARE - FAB116110B,,32,448,40,0,0,0,40,0,0,0,,2025-08-21 08:00,,2025-11-27 08:00,2025-12-03 17:00,,2025-11-21 08:00,2025-11-27 17:00,2025-11-21 08:00,2025-11-27 17:00,2025-08-21 08:00,2025-08-27 17:00,2025-11-27 08:00,2025-12-03 17:00,,PT_Normal,,,,,lXpwNaykHUO8h5tR3r90JQ,qUfERELCRuesNJ5gBQeWMg,,,N,0,0,,,,,,,,2025-07-16 14:09,2025-11-20 21:46,ARAJSHEKAR,jleon,,N,
100235802,122698,18114821,597,0,N,1,N,N,CP_Drtn,TT_Task,DT_FixedDUR2,TK_Active,FAB116105E-04,INSTALL DOOR & HARDWARE - FAB116105E,,32,448,40,0,0,0,40,0,0,0,,2025-01-14 08:00,,2025-11-27 08:00,2025-12-03 17:00,,2025-11-21 08:00,2025-11-27 17:00,2025-11-21 08:00,2025-11-27 17:00,2025-01-14 08:00,2025-01-20 17:00,2025-11-27 08:00,2025-12-03 17:00,,PT_Normal,,,,,WyD3idrcDkah4WHW4UFB8Q,YLYatk0lRw66Dlrm5xRdxg,,,N,0,0,,,,,,,,2025-07-16 14:09,2025-11-20 21:46,ARAJSHEKAR,jleon,,N,
100235806,122698,18114821,597,0,N,1,N,N,CP_Drtn,TT_Task,DT_FixedDUR2,TK_Active,FAB116105B-00,IOCC TO BE SUBMITTED (RFI 10986) - FAB116105B,,-48,0,40,0,0,0,150,0,0,0,,2025-07-03 07:00,,2025-11-13 08:00,2025-11-19 17:00,,2025-11-21 08:00,2025-11-27 17:00,2025-11-21 08:00,2025-11-27 17:00,2025-07-03 08:00,2025-07-29 15:00,2025-11-13 08:00,2025-11-19 17:00,,PT_Normal,,,,,1Cxxxvz9WkKDbao6CRyysw,larYeqjrTZWnJn9Q2GDctQ,,,N,0,0,,,,,,,,2025-07-16 14:09,2025-11-20 21:59,ARAJSHEKAR,jleon,,N,
100235811,122698,18114821,597,0,N,1,N,N,CP_Drtn,TT_Task,DT_FixedDUR2,TK_Active,FAB116105B-50,IMPACT - A/C UNIT INFRONT OF THE OPENING PREVENTING INSTALLATION - FAB116105B,,24,72,40,0,0,0,150,0,0,0,,2025-07-03 07:00,,2025-11-26 08:00,2025-12-02 17:00,,2025-11-21 08:00,2025-11-27 17:00,2025-11-21 08:00,2025-11-27 17:00,2025-07-03 08:00,2025-07-29 15:00,2025-11-26 08:00,2025-12-02 17:00,,PT_Normal,,,,,ByFZpFsvT0ieLkZ9qAYMBg,zPAKhRrITayuz51vGhF4WQ,,,N,0,0,,,,,,,,2025-07-16 14:09,2025-11-20 21:59,ARAJSHEKAR,jleon,,N,
100235812,122698,18114821,597,0,N,1,N,N,CP_Drtn,TT_Task,DT_FixedDUR2,TK_Active,FAB116105B-60,IMPACT - TEMP DOORS TO BE REMOVED - FAB116105B,,24,72,40,0,0,0,350,0,0,0,,2025-07-03 07:00,,2025-11-26 08:00,2025-12-02 17:00,,2025-11-21 08:00,2025-11-27 17:00,2025-11-21 08:00,2025-11-27 17:00,2025-07-03 08:00,2025-09-02 15:00,2025-11-26 08:00,2025-12-02 17:00,,PT_Normal,,,,,X82WUEW0CU2YuOfdTURTcQ,Ho4uhKWYT7qLRJZEIIQ9sQ,,,N,0,0,,,,,,,,2025-07-16 14:09,2025-11-20 21:59,ARAJSHEKAR,jleon,,N,
100235813,122698,18114821,597,0,N,1,N,N,CP_Drtn,TT_Task,DT_FixedDUR2,TK_Active,FAB116105B-70,IMPACT - MEP TRADES WORKING IN FRONT OF OPENING - FAB116105B,,24,72,40,0,0,0,150,0,0,0,,2025-07-03 07:00,,2025-11-26 08:00,2025-12-02 17:00,,2025-11-21 08:00,2025-11-27 17:00,2025-11-21 08:00,2025-11-27 17:00,2025-07-03 08:00,2025-07-29 15:00,2025-11-26 08:00,2025-12-02 17:00,,PT_Normal,,,,,Gx3EAMkWQEmBXOp0a80wBg,ycWmm65GTr6vGtO/rMmZVw,,,N,0,0,,,,,,,,2025-07-16 14:09,2025-11-20 21:59,ARAJSHEKAR,jleon,,N,
100235820,122698,18114822,597,0,N,1,N,N,CP_Drtn,TT_Task,DT_FixedDUR2,TK_Active,FAB116112A-04,INSTALL DOOR & HARDWARE - FAB116112A,,18,448,40,0,0,0,40,0,0,0,,2025-10-01 08:00,,2025-11-25 10:00,2025-12-02 10:00,,2025-11-21 08:00,2025-11-27 17:00,2025-11-21 08:00,2025-11-27 17:00,2025-10-01 08:00,2025-10-07 17:00,2025-11-25 10:00,2025-12-02 10:00,,PT_Normal,,,,,UdWITRw/PUqj1yj/C2kGEg,QjiB3NpIT2mtbWo4ADjrbA,,,N,0,0,,,,,,,,2025-07-16 14:09,2025-11-20 21:46,ARAJSHEKAR,jleon,,N,
100235829,122698,18114823,597,0,N,1,N,N,CP_Drtn,TT_Task,DT_FixedDUR2,TK_Active,FAB116201B-04,INSTALL DOOR & HARDWARE - FAB116201B,,8,448,40,0,0,0,40,0,0,0,,2025-11-07 08:00,,2025-11-24 08:00,2025-11-28 17:00,,2025-11-21 08:00,2025-11-27 17:00,2025-11-21 08:00,2025-11-27 17:00,2025-11-07 08:00,2025-11-13 17:00,2025-11-24 08:00,2025-11-28 17:00,,PT_Normal,,,,,t8ie/kuq9EGQBqnq3jmMPw,cDhYD2+SRJWavMFchSWvVQ,,,N,0,0,,,,,,,,2025-07-16 14:09,2025-11-20 21:46,ARAJSHEKAR,jleon,,N,
100235835,122698,18114823,597,0,N,1,N,N,CP_Drtn,TT_Task,DT_FixedDUR2,TK_Active,FAB116201C-04,INSTALL DOOR & HARDWARE - FAB116201C,,8,448,40,0,0,0,40,0,0,0,,2025-09-19 08:00,,2025-11-24 08:00,2025-11-28 17:00,,2025-11-21 08:00,2025-11-27 17:00,2025-11-21 08:00,2025-11-27 17:00,2025-09-19 08:00,2025-09-25 17:00,2025-11-24 08:00,2025-11-28 17:00,,PT_Normal,,,,,r7kBydly9UaGR3chfaeiJA,uK1iHqCbQaaV1JB5Ow9Xeg,,,N,0,0,,,,,,,,2025-07-16 14:09,2025-11-20 21:46,ARAJSHEKAR,jleon,,N,
100235844,122698,18114823,597,0,N,1,N,N,CP_Drtn,TT_Task,DT_FixedDUR2,TK_Active, FAB116201D-04,INSTALL DOOR & HARDWARE - FAB116201D,,16,448,40,0,0,0,40,0,0,0,,2025-08-28 08:00,,2025-11-25 08:00,2025-12-01 17:00,,2025-11-21 08:00,2025-11-27 17:00,2025-11-21 08:00,2025-11-27 17:00,2025-08-28 08:00,2025-09-03 17:00,2025-11-25 08:00,2025-12-01 17:00,,PT_Normal,,,,,9GPCqtlnFUyb2Sd2S6NWlg,ZMtxCxrGR7iLvKeAudIRTw,,,N,0,0,,,,,,,,2025-07-16 14:09,2025-11-20 21:46,ARAJSHEKAR,jleon,,N,
100235857,122698,18114824,597,0,N,1,N,N,CP_Drtn,TT_Task,DT_FixedDUR2,TK_Active,FAB116202B-04,INSTALL DOOR & HARDWARE - FAB116202B,,18,448,40,0,0,0,40,0,0,0,,2025-08-27 08:00,,2025-11-25 10:00,2025-12-02 10:00,,2025-11-21 08:00,2025-11-27 17:00,2025-11-21 08:00,2025-11-27 17:00,2025-08-27 08:00,2025-09-02 17:00,2025-11-25 10:00,2025-12-02 10:00,,PT_Normal,,,,,vsQM/czobEyJf9O0wza5pQ,+7GN02EfSWyQ5sXdWCZ58g,,,N,0,0,,,,,,,,2025-07-16 14:09,2025-11-20 21:46,ARAJSHEKAR,jleon,,N,
100235861,122698,18114824,597,0,N,1,N,N,CP_Drtn,TT_Task,DT_FixedDUR2,TK_Active,FAB116202D-04,INSTALL DOOR & HARDWARE - FAB116202D,,18,448,40,0,0,0,40,0,0,0,,2025-10-06 08:00,,2025-11-25 10:00,2025-12-02 10:00,,2025-11-21 08:00,2025-11-27 17:00,2025-11-21 08:00,2025-11-27 17:00,2025-10-06 08:00,2025-10-10 17:00,2025-11-25 10:00,2025-12-02 10:00,,PT_Normal,,,,,W60EZC4+sUeBILFC9Oyabw,cRABAXsdTBuhLe4qZkrEmQ,,,N,0,0,,,,,,,,2025-07-16 14:09,2025-11-20 21:46,ARAJSHEKAR,jleon,,N,
100235909,122698,18114938,597,0,N,1,N,N,CP_Drtn,TT_Task,DT_FixedDUR2,TK_Active,FAB116303A-04,INSTALL DOOR & HARDWARE - FAB116303A,,18,448,40,0,0,0,40,0,0,0,,2025-06-12 08:00,,2025-11-25 10:00,2025-12-02 10:00,,2025-11-21 08:00,2025-11-27 17:00,2025-11-21 08:00,2025-11-27 17:00,2025-06-12 08:00,2025-06-18 17:00,2025-11-25 10:00,2025-12-02 10:00,,PT_Normal,,,,,1kQ62moWL0qyQcHQCjL8Ww,miK0kOCKS2S4k0fxbMmmDg,,,N,0,0,,,,,,,,2025-07-16 14:09,2025-11-20 21:46,ARAJSHEKAR,jleon,,N,
100235919,122698,18114943,597,0,N,1,N,N,CP_Drtn,TT_Task,DT_FixedDUR2,TK_Active,FAB116305A-04,INSTALL DOOR & HARDWARE - FAB116305A,,18,448,40,0,0,0,40,0,0,0,,2025-10-27 08:00,,2025-11-25 10:00,2025-12-02 10:00,,2025-11-21 08:00,2025-11-27 17:00,2025-11-21 08:00,2025-11-27 17:00,2025-10-27 08:00,2025-10-31 17:00,2025-11-25 10:00,2025-12-02 10:00,,PT_Normal,,,,,pUoTYEJ3qE+qlGv4Hqx3wA,s3USjCKrSaCVu6BioAbrpQ,,,N,0,0,,,,,,,,2025-07-16 14:09,2025-11-20 21:46,ARAJSHEKAR,jleon,,N,
100235929,122698,18114943,597,0,N,1,N,N,CP_Drtn,TT_Task,DT_FixedDUR2,TK_Active,FAB116305C-04,INSTALL DOOR & HARDWARE - FAB116305C,,18,448,40,0,0,0,40,0,0,0,,2025-10-07 08:00,,2025-11-25 10:00,2025-12-02 10:00,,2025-11-21 08:00,2025-11-27 17:00,2025-11-21 08:00,2025-11-27 17:00,2025-10-07 08:00,2025-10-13 17:00,2025-11-25 10:00,2025-12-02 10:00,,PT_Normal,,,,,mrEtqQrUUkS3rUCxFtPtbQ,kn32p95/SWaResmRPa3eXQ,,,N,0,0,,,,,,,,2025-07-16 14:09,2025-11-20 21:46,ARAJSHEKAR,jleon,,N,
100235933,122698,18114943,597,0,N,1,N,N,CP_Drtn,TT_Task,DT_FixedDUR2,TK_Active,FAB116306C-04,INSTALL DOOR & HARDWARE - FAB116306C,,18,448,40,0,0,0,40,0,0,0,,2025-10-01 08:00,,2025-11-25 10:00,2025-12-02 10:00,,2025-11-21 08:00,2025-11-27 17:00,2025-11-21 08:00,2025-11-27 17:00,2025-10-01 08:00,2025-10-07 17:00,2025-11-25 10:00,2025-12-02 10:00,,PT_Normal,,,,,tosGKsfW8Eyx/gN0ho8ebQ,/0cellehRJOuwkzriGy4LA,,,N,0,0,,,,,,,,2025-07-16 14:09,2025-11-20 21:46,ARAJSHEKAR,jleon,,N,
100235941,122698,18114943,597,0,N,1,N,N,CP_Drtn,TT_Task,DT_FixedDUR2,TK_Active,FAB116306B-50,IMPACT - SO CORDS RUNNING TROUGH OPENING - FAB116306B,,32,184,40,0,0,0,150,0,0,0,,2025-07-03 07:00,,2025-11-27 08:00,2025-12-03 17:00,,2025-11-21 08:00,2025-11-27 17:00,2025-11-21 08:00,2025-11-27 17:00,2025-07-03 08:00,2025-07-29 15:00,2025-11-27 08:00,2025-12-03 17:00,,PT_Normal,,,,,Y9Eaj/6hrkiFoaLqvU8skg,PPpBUwFoTkSsE/0aWF24Tg,,,N,0,0,,,,,,,,2025-07-16 14:09,2025-11-20 21:59,ARAJSHEKAR,jleon,,N,
100235942,122698,18114943,597,0,N,1,N,N,CP_Drtn,TT_Task,DT_FixedDUR2,TK_Active,FAB116306B-60,IMPACT - TEMP CURTAIN TO BE REMOVED - FAB116306B,,-8,144,40,0,0,0,150,0,0,0,,2025-07-03 07:00,,2025-11-20 08:00,2025-11-26 17:00,,2025-11-21 08:00,2025-11-27 17:00,2025-11-21 08:00,2025-11-27 17:00,2025-07-03 08:00,2025-07-29 15:00,2025-11-20 08:00,2025-11-26 17:00,,PT_Normal,,,,,Uk6jO/LZcUuWyiVvqLiSUg,DtSagwYHR4W70PPIoXczlw,,,N,0,0,,,,,,,,2025-07-16 14:09,2025-11-20 21:59,ARAJSHEKAR,jleon,,N,
100235955,122698,18114944,597,0,N,1,N,N,CP_Drtn,TT_Task,DT_FixedDUR2,TK_Active,FAB116302A-04,INSTALL DOOR & HARDWARE - FAB116302A,,32,448,40,0,0,0,40,0,0,0,,2025-08-27 08:00,,2025-11-27 08:00,2025-12-03 17:00,,2025-11-21 08:00,2025-11-27 17:00,2025-11-21 08:00,2025-11-27 17:00,2025-08-27 08:00,2025-09-02 17:00,2025-11-27 08:00,2025-12-03 17:00,,PT_Normal,,,,,Yn5AkCixXUut8NYD4O0Gtg,17+REyUkRmebtVioG2wLUw,,,N,0,0,,,,,,,,2025-07-16 14:09,2025-11-20 21:46,ARAJSHEKAR,jleon,,N,
100235962,122698,18114945,597,0,N,1,N,N,CP_Drtn,TT_Task,DT_FixedDUR2,TK_Active,FAB116301A-04,INSTALL DOOR & HARDWARE - FAB116301A,,18,448,40,0,0,0,40,0,0,0,,2025-09-19 08:00,,2025-11-25 10:00,2025-12-02 10:00,,2025-11-21 08:00,2025-11-27 17:00,2025-11-21 08:00,2025-11-27 17:00,2025-09-19 08:00,2025-09-25 17:00,2025-11-25 10:00,2025-12-02 10:00,,PT_Normal,,,,,YZvjWGCiUkaJEeqKTdlu9g,bYt9jgDHTY2B3cbyfML5jA,,,N,0,0,,,,,,,,2025-07-16 14:09,2025-11-20 21:46,ARAJSHEKAR,jleon,,N,
100235968,122698,18114945,597,0,N,1,N,N,CP_Drtn,TT_Task,DT_FixedDUR2,TK_Active,FAB116301C-04,INSTALL DOOR & HARDWARE - FAB116301C,,18,448,40,0,0,0,40,0,0,0,,2025-10-22 08:00,,2025-11-25 10:00,2025-12-02 10:00,,2025-11-21 08:00,2025-11-27 17:00,2025-11-21 08:00,2025-11-27 17:00,2025-10-22 08:00,2025-10-28 17:00,2025-11-25 10:00,2025-12-02 10:00,,PT_Normal,,,,,KuXHLkTZz0OiwdUxN458Ig,nKYBl1LAQWO4yj1Jtygwzw,,,N,0,0,,,,,,,,2025-07-16 14:09,2025-11-20 21:46,ARAJSHEKAR,jleon,,N,
100235975,122698,18114947,597,0,N,1,N,N,CP_Drtn,TT_Task,DT_FixedDUR2,TK_Active,FAB116307A-04,INSTALL DOOR & HARDWARE - FAB116307A,,18,448,40,0,0,0,40,0,0,0,,2025-10-24 08:00,,2025-11-25 10:00,2025-12-02 10:00,,2025-11-21 08:00,2025-11-27 17:00,2025-11-21 08:00,2025-11-27 17:00,2025-10-24 08:00,2025-10-30 17:00,2025-11-25 10:00,2025-12-02 10:00,,PT_Normal,,,,,ajGorroL30+AIED5s6Bpvg,i29Q8yyTStG3DD7IRIsZbg,,,N,0,0,,,,,,,,2025-07-16 14:09,2025-11-20 21:46,ARAJSHEKAR,jleon,,N,
100235980,122698,18114947,597,0,N,1,N,N,CP_Drtn,TT_Task,DT_FixedDUR2,TK_Active,FAB116307B-04,INSTALL DOOR & HARDWARE - FAB116307B,,40,448,40,0,0,0,40,0,0,0,,2025-08-13 08:00,,2025-11-28 08:00,2025-12-04 17:00,,2025-11-21 08:00,2025-11-27 17:00,2025-11-21 08:00,2025-11-27 17:00,2025-08-13 08:00,2025-08-19 17:00,2025-11-28 08:00,2025-12-04 17:00,,PT_Normal,,,,,N9VEgLeUdUarkDE0jM0r/g,pyASTy1mREifi+myO//KCQ,,,N,0,0,,,,,,,,2025-07-16 14:09,2025-11-20 21:46,ARAJSHEKAR,jleon,,N,
100235990,122698,18114949,597,0,N,1,N,N,CP_Drtn,TT_Task,DT_FixedDUR2,TK_Active,TR-FAB116315A-04,INSTALL DOOR & HARDWARE - TR - FAB116315A,,18,448,40,0,0,0,40,0,0,0,,2025-11-10 08:00,,2025-11-25 10:00,2025-12-02 10:00,,2025-11-21 08:00,2025-11-27 17:00,2025-11-21 08:00,2025-11-27 17:00,2025-11-10 08:00,2025-11-14 17:00,2025-11-25 10:00,2025-12-02 10:00,,PT_Normal,,,,,S41ffWQwlUyS+PhLF2JtyQ,UutZATRgSVi5//QFHJe74w,,,N,0,0,,,,,,,,2025-07-16 14:09,2025-11-20 21:46,ARAJSHEKAR,jleon,,N,
100235999,122698,18114950,597,0,N,1,N,N,CP_Drtn,TT_Task,DT_FixedDUR2,TK_Active,FAB116312A-04,INSTALL DOOR & HARDWARE - FAB116312A,,18,448,40,0,0,0,40,0,0,0,,2025-04-30 08:00,,2025-11-25 10:00,2025-12-02 10:00,,2025-11-21 08:00,2025-11-27 17:00,2025-11-21 08:00,2025-11-27 17:00,2025-04-30 08:00,2025-05-06 17:00,2025-11-25 10:00,2025-12-02 10:00,,PT_Normal,,,,,OeNqBMN3bE+asowJKezwbw,TL1gXq1ETf+ynu9YeZS6mw,,,N,0,0,,,,,,,,2025-07-16 14:09,2025-11-20 21:46,ARAJSHEKAR,jleon,,N,
100236008,122698,18114952,597,0,N,1,N,N,CP_Drtn,TT_Task,DT_FixedDUR2,TK_Active,FAB116310A-04,INSTALL DOOR & HARDWARE - FAB116310A,,32,448,40,0,0,0,40,0,0,0,,2025-08-27 08:00,,2025-11-27 08:00,2025-12-03 17:00,,2025-11-21 08:00,2025-11-27 17:00,2025-11-21 08:00,2025-11-27 17:00,2025-08-27 08:00,2025-09-02 17:00,2025-11-27 08:00,2025-12-03 17:00,,PT_Normal,,,,,z4J03Ruk3EmKzGOIBwExyQ,kOHHxn+VStCbHalPuqwWig,,,N,0,0,,,,,,,,2025-07-16 14:09,2025-11-20 21:46,ARAJSHEKAR,jleon,,N,
100236017,122698,18114954,597,0,N,1,N,N,CP_Drtn,TT_Task,DT_FixedDUR2,TK_Active,FAB116401A-04,INSTALL DOOR & HARDWARE - FAB116401A,,32,448,40,0,0,0,40,0,0,0,,2025-08-22 08:00,,2025-11-27 08:00,2025-12-03 17:00,,2025-11-21 08:00,2025-11-27 17:00,2025-11-21 08:00,2025-11-27 17:00,2025-08-22 08:00,2025-08-28 17:00,2025-11-27 08:00,2025-12-03 17:00,,PT_Normal,,,,,YNJtp9heekCCyb/23hGMfw,vj3JBSf1SnqQLWyDpEDXIA,,,N,0,0,,,,,,,,2025-07-16 14:09,2025-11-20 21:46,ARAJSHEKAR,jleon,,N,
100236022,122698,18114954,597,0,N,1,N,N,CP_Drtn,TT_Task,DT_FixedDUR2,TK_Active,FAB116401B-03,INSTALL DOOR FRAME BY SECAI - FAB116401B,,-30,0,48,0,0,0,8,0,0,0,,2025-08-15 08:00,,2025-11-17 10:00,2025-11-25 10:00,,2025-11-21 08:00,2025-11-28 17:00,2025-11-21 08:00,2025-11-28 17:00,2025-08-15 08:00,2025-08-15 17:00,2025-11-17 10:00,2025-11-25 10:00,,PT_Normal,,,,,VgWVB/rfrEO97hkq+G65Ag,u9FL5P71T0SMTvD9f5w2nQ,,,N,0,0,,,,,,,,2025-07-16 14:09,2025-11-20 21:59,ARAJSHEKAR,jleon,,N,
100236038,122698,18114813,597,0,N,1,N,N,CP_Drtn,TT_Task,DT_FixedDUR2,TK_Active,FAB116308A-04,INSTALL DOOR & HARDWARE - FAB116308A,,18,448,40,0,0,0,40,0,0,0,,2025-08-22 08:00,,2025-11-25 10:00,2025-12-02 10:00,,2025-11-21 08:00,2025-11-27 17:00,2025-11-21 08:00,2025-11-27 17:00,2025-08-22 08:00,2025-08-28 17:00,2025-11-25 10:00,2025-12-02 10:00,,PT_Normal,,,,,9wbynFkr4Eqh+t5uqilTfQ,DKA7TYySQayMEcBcKhN5bg,,,N,0,0,,,,,,,,2025-07-16 14:09,2025-11-20 21:46,ARAJSHEKAR,jleon,,N,
100236042,122698,18114813,597,0,N,1,N,N,CP_Drtn,TT_Task,DT_FixedDUR2,TK_Active,FAB116308B-04,INSTALL DOOR & HARDWARE - FAB116308B,,18,448,40,0,0,0,40,0,0,0,,2025-10-08 08:00,,2025-11-25 10:00,2025-12-02 10:00,,2025-11-21 08:00,2025-11-27 17:00,2025-11-21 08:00,2025-11-27 17:00,2025-10-08 08:00,2025-10-14 17:00,2025-11-25 10:00,2025-12-02 10:00,,PT_Normal,,,,,m3ggPyPePkK9KitlTtNH1Q,A01CoYshRsmZMhDp1S+Olw,,,N,0,0,,,,,,,,2025-07-16 14:09,2025-11-20 21:46,ARAJSHEKAR,jleon,,N,
100236051,122698,18114813,597,0,N,1,N,N,CP_Drtn,TT_Task,DT_FixedDUR2,TK_Active,FAB116308D-04,INSTALL DOOR & HARDWARE - FAB116308D,,16,448,40,0,0,0,40,0,0,0,,2025-08-27 08:00,,2025-11-25 08:00,2025-12-01 17:00,,2025-11-21 08:00,2025-11-27 17:00,2025-11-21 08:00,2025-11-27 17:00,2025-08-27 08:00,2025-09-02 17:00,2025-11-25 08:00,2025-12-01 17:00,,PT_Normal,,,,,KJxY1/t3H0S6amM81hODLQ,LxKPQkD8T8SIBK7d0746Tg,,,N,0,0,,,,,,,,2025-07-16 14:09,2025-11-20 21:46,ARAJSHEKAR,jleon,,N,
100236060,122698,18114813,597,0,N,1,N,N,CP_Drtn,TT_Task,DT_FixedDUR2,TK_Active,FAB116308G-04,INSTALL DOOR & HARDWARE - FAB116308G,,18,448,40,0,0,0,40,0,0,0,,2025-08-27 08:00,,2025-11-25 10:00,2025-12-02 10:00,,2025-11-21 08:00,2025-11-27 17:00,2025-11-21 08:00,2025-11-27 17:00,2025-08-27 08:00,2025-09-02 17:00,2025-11-25 10:00,2025-12-02 10:00,,PT_Normal,,,,,IIvkeCPw40idTzSN/gl31A,2REk7k5oTo+SM4z5IXqMpQ,,,N,0,0,,,,,,,,2025-07-16 14:09,2025-11-20 21:46,ARAJSHEKAR,jleon,,N,
100236065,122698,18114813,597,0,N,1,N,N,CP_Drtn,TT_Task,DT_FixedDUR2,TK_Active,FAB116308H-04,INSTALL DOOR & HARDWARE - FAB116308H,,18,448,40,0,0,0,40,0,0,0,,2025-10-15 08:00,,2025-11-25 10:00,2025-12-02 10:00,,2025-11-21 08:00,2025-11-27 17:00,2025-11-21 08:00,2025-11-27 17:00,2025-10-15 08:00,2025-10-21 17:00,2025-11-25 10:00,2025-12-02 10:00,,PT_Normal,,,,,6JKFEMEhE065q3t6ijebyw,Gam7x0sESW+azM9GZ+Uadg,,,N,0,0,,,,,,,,2025-07-16 14:09,2025-11-20 21:46,ARAJSHEKAR,jleon,,N,
100236071,122698,18114813,597,0,N,1,N,N,CP_Drtn,TT_Task,DT_FixedDUR2,TK_Active,FAB116308J-04,INSTALL DOOR & HARDWARE - FAB116308J,,18,448,40,0,0,0,40,0,0,0,,2025-10-15 08:00,,2025-11-25 10:00,2025-12-02 10:00,,2025-11-21 08:00,2025-11-27 17:00,2025-11-21 08:00,2025-11-27 17:00,2025-10-15 08:00,2025-10-21 17:00,2025-11-25 10:00,2025-12-02 10:00,,PT_Normal,,,,,pifpIst8Ak+BpIQOqNtuiw,EdxrNu6TTCWReETChoL2QQ,,,N,0,0,,,,,,,,2025-07-16 14:09,2025-11-20 21:46,ARAJSHEKAR,jleon,,N,
100236089,122698,18114956,597,0,N,1,N,N,CP_Drtn,TT_Task,DT_FixedDUR2,TK_Active,FAB116309A-04,INSTALL DOOR & HARDWARE - FAB116309A,,32,448,40,0,0,0,40,0,0,0,,2025-08-08 08:00,,2025-11-27 08:00,2025-12-03 17:00,,2025-11-21 08:00,2025-11-27 17:00,2025-11-21 08:00,2025-11-27 17:00,2025-08-08 08:00,2025-08-14 17:00,2025-11-27 08:00,2025-12-03 17:00,,PT_Normal,,,,,EfpVa42EtE23NvitEsz1Rw,70PKBZEvQ5mD2Unnqii0QQ,,,N,0,0,,,,,,,,2025-07-16 14:09,2025-11-20 21:46,ARAJSHEKAR,jleon,,N,
100236098,122698,18114827,597,0,N,1,N,N,CP_Drtn,TT_Task,DT_FixedDUR2,TK_Active,FAB116402A-04,INSTALL DOOR & HARDWARE - FAB116402A,,18,448,40,0,0,0,40,0,0,0,,2025-10-31 08:00,,2025-11-25 10:00,2025-12-02 10:00,,2025-11-21 08:00,2025-11-27 17:00,2025-11-21 08:00,2025-11-27 17:00,2025-10-31 08:00,2025-11-06 17:00,2025-11-25 10:00,2025-12-02 10:00,,PT_Normal,,,,,2gu7bJQLakiz+f4RTjn2FQ,mX6QoIC9QRiv9mxtLR0r0w,,,N,0,0,,,,,,,,2025-07-16 14:09,2025-11-20 21:46,ARAJSHEKAR,jleon,,N,
100236108,122698,18114828,597,0,N,1,N,N,CP_Drtn,TT_Task,DT_FixedDUR2,TK_Active,FAB116404A-04,INSTALL DOOR & HARDWARE - FAB116404A,,18,448,40,0,0,0,40,0,0,0,,2025-09-08 08:00,,2025-11-25 10:00,2025-12-02 10:00,,2025-11-21 08:00,2025-11-27 17:00,2025-11-21 08:00,2025-11-27 17:00,2025-09-08 08:00,2025-09-12 17:00,2025-11-25 10:00,2025-12-02 10:00,,PT_Normal,,,,,FluDo/NVmEq0EZEvyOwG4g,DRbO+c0xQ/2Qtp7s3h+m4A,,,N,0,0,,,,,,,,2025-07-16 14:09,2025-11-20 21:46,ARAJSHEKAR,jleon,,N,
100236119,122698,18114829,597,0,N,1,N,N,CP_Drtn,TT_Task,DT_FixedDUR2,TK_Active,FAB116403A-04,INSTALL DOOR & HARDWARE - FAB116403A,,18,448,40,0,0,0,40,0,0,0,,2025-09-02 08:00,,2025-11-25 10:00,2025-12-02 10:00,,2025-11-21 08:00,2025-11-27 17:00,2025-11-21 08:00,2025-11-27 17:00,2025-09-02 08:00,2025-09-08 17:00,2025-11-25 10:00,2025-12-02 10:00,,PT_Normal,,,,,R9je0r6Sx0KT+JIxZNCbfg,Jb248c2+TMWHvnLfTBMXIQ,,,N,0,0,,,,,,,,2025-07-16 14:09,2025-11-20 21:46,ARAJSHEKAR,jleon,,N,
100236130,122698,18114830,597,0,N,1,N,N,CP_Drtn,TT_Task,DT_FixedDUR2,TK_Active,FAB116405A-04,INSTALL DOOR & HARDWARE - FAB116405A,,18,448,40,0,0,0,40,0,0,0,,2025-10-14 08:00,,2025-11-25 10:00,2025-12-02 10:00,,2025-11-21 08:00,2025-11-27 17:00,2025-11-21 08:00,2025-11-27 17:00,2025-10-14 08:00,2025-10-20 17:00,2025-11-25 10:00,2025-12-02 10:00,,PT_Normal,,,,,vGF2QRv6QkK977Osa+ALKA,NElTZrBlSKWQAAAGBaQtTA,,,N,0,0,,,,,,,,2025-07-16 14:09,2025-11-20 21:46,ARAJSHEKAR,jleon,,N,
100236147,122698,18114960,597,0,N,1,N,N,CP_Drtn,TT_Task,DT_FixedDUR2,TK_Active,FAB116407A-04,INSTALL DOOR & HARDWARE - FAB116407A,,18,448,40,0,0,0,40,0,0,0,,2025-09-24 08:00,,2025-11-25 10:00,2025-12-02 10:00,,2025-11-21 08:00,2025-11-27 17:00,2025-11-21 08:00,2025-11-27 17:00,2025-09-24 08:00,2025-09-30 17:00,2025-11-25 10:00,2025-12-02 10:00,,PT_Normal,,,,,UdvofPKqL0aP5UIXQXxqYA,x65gvg/CTMm3nQBx4//lmw,,,N,0,0,,,,,,,,2025-07-16 14:09,2025-11-20 21:46,ARAJSHEKAR,jleon,,N,
100236151,122698,18114960,597,0,N,1,N,N,CP_Drtn,TT_Task,DT_FixedDUR2,TK_Active,FAB116407B-04,INSTALL DOOR & HARDWARE - FAB116407B,,18,448,40,0,0,0,40,0,0,0,,2025-10-14 08:00,,2025-11-25 10:00,2025-12-02 10:00,,2025-11-21 08:00,2025-11-27 17:00,2025-11-21 08:00,2025-11-27 17:00,2025-10-14 08:00,2025-10-20 17:00,2025-11-25 10:00,2025-12-02 10:00,,PT_Normal,,,,,mZ+NPzkowkqZOCbbpLJbxQ,jAHM6C+GR6CVh2QOfq8TxA,,,N,0,0,,,,,,,,2025-07-16 14:09,2025-11-20 21:46,ARAJSHEKAR,jleon,,N,
100236154,122698,18114960,597,0,N,1,N,N,CP_Drtn,TT_Task,DT_FixedDUR2,TK_Active,FAB116414A-04,INSTALL DOOR & HARDWARE - FAB116414A,,18,448,40,0,0,0,40,0,0,0,,2025-09-19 08:00,,2025-11-25 10:00,2025-12-02 10:00,,2025-11-21 08:00,2025-11-27 17:00,2025-11-21 08:00,2025-11-27 17:00,2025-09-19 08:00,2025-09-25 17:00,2025-11-25 10:00,2025-12-02 10:00,,PT_Normal,,,,,1MrAoJ2MmUaSnYNWh5rZNw,6B8sbtMzSAmhkg5dfOKGwQ,,,N,0,0,,,,,,,,2025-07-16 14:09,2025-11-20 21:46,ARAJSHEKAR,jleon,,N,
100236157,122698,18114960,597,0,N,1,N,N,CP_Drtn,TT_Task,DT_FixedDUR2,TK_Active,FAB116414B-04,INSTALL DOOR & HARDWARE - FAB116414B,,18,448,40,0,0,0,40,0,0,0,,2025-11-12 08:00,,2025-11-25 10:00,2025-12-02 10:00,,2025-11-21 08:00,2025-11-27 17:00,2025-11-21 08:00,2025-11-27 17:00,2025-11-12 08:00,2025-11-18 17:00,2025-11-25 10:00,2025-12-02 10:00,,PT_Normal,,,,,yYVR3ApnOki6234Tr+r+mA,ZRyM2t+5RB634audUclFDQ,,,N,0,0,,,,,,,,2025-07-16 14:09,2025-11-20 21:46,ARAJSHEKAR,jleon,,N,
100236165,122698,18114962,597,0,N,1,N,N,CP_Drtn,TT_Task,DT_FixedDUR2,TK_Active,FAB116507A-04,INSTALL DOOR & HARDWARE - FAB116507A,,32,448,40,0,0,0,40,0,0,0,,2025-08-12 08:00,,2025-11-27 08:00,2025-12-03 17:00,,2025-11-21 08:00,2025-11-27 17:00,2025-11-21 08:00,2025-11-27 17:00,2025-08-12 08:00,2025-08-18 17:00,2025-11-27 08:00,2025-12-03 17:00,,PT_Normal,,,,,l+eu0J15H0y4MdkFF/MrLw,oXHqAy5+Q4mWziG08eAUGA,,,N,0,0,,,,,,,,2025-07-16 14:09,2025-11-20 21:46,ARAJSHEKAR,jleon,,N,
100236175,122698,18114965,597,0,N,1,N,N,CP_Drtn,TT_Task,DT_FixedDUR2,TK_Active,FAB116414C-04,INSTALL DOOR & HARDWARE - FAB116414C,,18,448,40,0,0,0,40,0,0,0,,2025-09-25 08:00,,2025-11-25 10:00,2025-12-02 10:00,,2025-11-21 08:00,2025-11-27 17:00,2025-11-21 08:00,2025-11-27 17:00,2025-09-25 08:00,2025-10-01 17:00,2025-11-25 10:00,2025-12-02 10:00,,PT_Normal,,,,,QkJC1gEFGkqqNkVh48aVVA,Nv0Y4SmwQACa+ye+1G6pnA,,,N,0,0,,,,,,,,2025-07-16 14:09,2025-11-20 21:46,ARAJSHEKAR,jleon,,N,
100236194,122698,18114968,597,0,N,1,N,N,CP_Drtn,TT_Task,DT_FixedDUR2,TK_Active,FAB116412A-04,INSTALL DOOR & HARDWARE - FAB116412A,,40,448,40,0,0,0,40,0,0,0,,2025-07-10 08:00,,2025-11-28 08:00,2025-12-04 17:00,,2025-11-21 08:00,2025-11-27 17:00,2025-11-21 08:00,2025-11-27 17:00,2025-07-10 08:00,2025-07-16 17:00,2025-11-28 08:00,2025-12-04 17:00,,PT_Normal,,,,,HCWUznw7+UmowhlOLRsTgQ,bAQGmlb0SjO9RWqhOYLx/g,,,N,0,0,,,,,,,,2025-07-16 14:09,2025-11-20 21:46,ARAJSHEKAR,jleon,,N,
100236206,122698,18114831,597,0,N,1,N,N,CP_Drtn,TT_Task,DT_FixedDUR2,TK_Active,FAB116526A-04,INSTALL DOOR & HARDWARE - FAB116526A,,18,448,40,0,0,0,40,0,0,0,,2025-11-14 08:00,,2025-11-25 10:00,2025-12-02 10:00,,2025-11-21 08:00,2025-11-27 17:00,2025-11-21 08:00,2025-11-27 17:00,2025-11-14 08:00,2025-11-20 17:00,2025-11-25 10:00,2025-12-02 10:00,,PT_Normal,,,,,cgO/62n/8k6bV1Gy0U5teQ,8v/evDk4SQWXKCgTGmNvxA,,,N,0,0,,,,,,,,2025-07-16 14:09,2025-11-20 21:46,ARAJSHEKAR,jleon,,N,
100236220,122698,18114833,597,0,N,1,N,N,CP_Drtn,TT_Task,DT_FixedDUR2,TK_Active,FAB116519A-04,INSTALL DOOR & HARDWARE - FAB116519A,,18,448,40,0,0,0,40,0,0,0,,2025-11-05 08:00,,2025-11-25 10:00,2025-12-02 10:00,,2025-11-21 08:00,2025-11-27 17:00,2025-11-21 08:00,2025-11-27 17:00,2025-11-05 08:00,2025-11-11 17:00,2025-11-25 10:00,2025-12-02 10:00,,PT_Normal,,,,,lsjbX9IjuUaePHdQwW0TlQ,kewA+UBUSOyTxaHa0Ruihg,,,N,0,0,,,,,,,,2025-07-16 14:09,2025-11-20 21:46,ARAJSHEKAR,jleon,,N,
100236240,122698,18114834,597,0,N,1,N,N,CP_Drtn,TT_Task,DT_FixedDUR2,TK_Active,FAB116518A-04,INSTALL DOOR & HARDWARE - FAB116518A,,18,448,40,0,0,0,40,0,0,0,,2025-09-24 08:00,,2025-11-25 10:00,2025-12-02 10:00,,2025-11-21 08:00,2025-11-27 17:00,2025-11-21 08:00,2025-11-27 17:00,2025-09-24 08:00,2025-09-30 17:00,2025-11-25 10:00,2025-12-02 10:00,,PT_Normal,,,,,AOuctLbr7kiPje39Kjk0Kw,YOaTRfkcTti1nEtbAnnLcw,,,N,0,0,,,,,,,,2025-07-16 14:09,2025-11-20 21:46,ARAJSHEKAR,jleon,,N,
100236248,122698,18114835,597,0,N,1,N,N,CP_Drtn,TT_Task,DT_FixedDUR2,TK_Active,FAB116509A-04,INSTALL DOOR & HARDWARE - FAB116509A,,18,448,40,0,0,0,40,0,0,0,,2025-10-21 08:00,,2025-11-25 10:00,2025-12-02 10:00,,2025-11-21 08:00,2025-11-27 17:00,2025-11-21 08:00,2025-11-27 17:00,2025-10-21 08:00,2025-10-27 17:00,2025-11-25 10:00,2025-12-02 10:00,,PT_Normal,,,,,ZXS7aYzbukGQab0KIa9zRw,HQ4Dq+n7TH6FiPyc0yXslQ,,,N,0,0,,,,,,,,2025-07-16 14:09,2025-11-20 21:46,ARAJSHEKAR,jleon,,N,
100236254,122698,18114835,597,0,N,1,N,N,CP_Drtn,TT_Task,DT_FixedDUR2,TK_Active,FAB116509B-04,INSTALL DOOR & HARDWARE - FAB116509B,,18,448,40,0,0,0,40,0,0,0,,2025-10-01 08:00,,2025-11-25 10:00,2025-12-02 10:00,,2025-11-21 08:00,2025-11-27 17:00,2025-11-21 08:00,2025-11-27 17:00,2025-10-01 08:00,2025-10-07 17:00,2025-11-25 10:00,2025-12-02 10:00,,PT_Normal,,,,,BmCkcTM7M0+cf2R3avhV3g,InCOUXuBTCKfgzXBOyS5iQ,,,N,0,0,,,,,,,,2025-07-16 14:09,2025-11-20 21:46,ARAJSHEKAR,jleon,,N,
100236260,122698,18114835,597,0,N,1,N,N,CP_Drtn,TT_Task,DT_FixedDUR2,TK_Active,FAB116509F-04,INSTALL DOOR & HARDWARE - FAB116509F,,18,448,40,0,0,0,40,0,0,0,,2025-10-29 08:00,,2025-11-25 10:00,2025-12-02 10:00,,2025-11-21 08:00,2025-11-27 17:00,2025-11-21 08:00,2025-11-27 17:00,2025-10-29 08:00,2025-11-04 17:00,2025-11-25 10:00,2025-12-02 10:00,,PT_Normal,,,,,18ASHJnVnE+suZ90hS9iJg,8E+yDhYDSY2JBviO0v/9MQ,,,N,0,0,,,,,,,,2025-07-16 14:09,2025-11-20 21:46,ARAJSHEKAR,jleon,,N,
100236274,122698,18114836,597,0,N,1,N,N,CP_Drtn,TT_Task,DT_FixedDUR2,TK_Active,FAB116523B-00,SECAI SCP WALL FINISH - FAB116523B,,24,0,48,0,0,0,8,0,0,0,,2025-08-20 08:00,,2025-11-26 08:00,2025-12-03 17:00,,2025-11-21 08:00,2025-11-28 17:00,2025-11-21 08:00,2025-11-28 17:00,2025-08-20 08:00,2025-08-20 17:00,2025-11-26 08:00,2025-12-03 17:00,,PT_Normal,,,,,AlPLjJEh50KQh9gbrT0C9w,8HkFwogvTiCiAXaOLFiO6w,,,N,0,0,,,,,,,,2025-07-16 14:09,2025-11-20 21:59,ARAJSHEKAR,jleon,,N,
100236289,122698,18114839,597,0,N,1,N,N,CP_Drtn,TT_Task,DT_FixedDUR2,TK_Active,FAB116521A-04,INSTALL DOOR & HARDWARE - FAB116521A,,16,448,40,0,0,0,40,0,0,0,,2025-10-07 08:00,,2025-11-25 08:00,2025-12-01 17:00,,2025-11-21 08:00,2025-11-27 17:00,2025-11-21 08:00,2025-11-27 17:00,2025-10-07 08:00,2025-10-13 17:00,2025-11-25 08:00,2025-12-01 17:00,,PT_Normal,,,,,PnC/p8SD0kmyU37YEJA4aA,5yt6DSDeTaChTqO9wsFwqQ,,,N,0,0,,,,,,,,2025-07-16 14:09,2025-11-20 21:46,ARAJSHEKAR,jleon,,N,
100236298,122698,18114840,597,0,N,1,N,N,CP_Drtn,TT_Task,DT_FixedDUR2,TK_Active,FAB116516A-04,INSTALL DOOR & HARDWARE - FAB116516A,,18,448,40,0,0,0,40,0,0,0,,2025-11-12 08:00,,2025-11-25 10:00,2025-12-02 10:00,,2025-11-21 08:00,2025-11-27 17:00,2025-11-21 08:00,2025-11-27 17:00,2025-11-12 08:00,2025-11-18 17:00,2025-11-25 10:00,2025-12-02 10:00,,PT_Normal,,,,,YQgxBDY4AUKWXw4GKpdLJQ,K8alv/E6SjiFh41aZQC+uQ,,,N,0,0,,,,,,,,2025-07-16 14:09,2025-11-20 21:46,ARAJSHEKAR,jleon,,N,
100236320,122698,18114843,597,0,N,1,N,N,CP_Drtn,TT_Task,DT_FixedDUR2,TK_Active,FAB116527A-04,INSTALL DOOR & HARDWARE - FAB116527A,,18,448,40,0,0,0,40,0,0,0,,2025-10-08 08:00,,2025-11-25 10:00,2025-12-02 10:00,,2025-11-21 08:00,2025-11-27 17:00,2025-11-21 08:00,2025-11-27 17:00,2025-10-08 08:00,2025-10-14 17:00,2025-11-25 10:00,2025-12-02 10:00,,PT_Normal,,,,,JtM2pfgNfE6GWhxbE8Hb6Q,ju4fdYPEST2FSgZPZuUerA,,,N,0,0,,,,,,,,2025-07-16 14:09,2025-11-20 21:46,ARAJSHEKAR,jleon,,N,
100236329,122698,18114844,597,0,N,1,N,N,CP_Drtn,TT_Task,DT_FixedDUR2,TK_Active,FAB116512C-04,INSTALL DOOR & HARDWARE - FAB116512C,,16,448,40,0,0,0,40,0,0,0,,2025-10-30 08:00,,2025-11-25 08:00,2025-12-01 17:00,,2025-11-21 08:00,2025-11-27 17:00,2025-11-21 08:00,2025-11-27 17:00,2025-10-30 08:00,2025-11-05 17:00,2025-11-25 08:00,2025-12-01 17:00,,PT_Normal,,,,,HUQQ3QlTPUui61m+HyZqRw,OyDe9xxXS5OP0kQJUgp4NA,,,N,0,0,,,,,,,,2025-07-16 14:09,2025-11-20 21:46,ARAJSHEKAR,jleon,,N,
100236341,122698,18114845,597,0,N,1,N,N,CP_Drtn,TT_Task,DT_FixedDUR2,TK_Active,FAB116513C-04,INSTALL DOOR & HARDWARE - FAB116513C,,16,448,40,0,0,0,40,0,0,0,,2025-10-29 08:00,,2025-11-25 08:00,2025-12-01 17:00,,2025-11-21 08:00,2025-11-27 17:00,2025-11-21 08:00,2025-11-27 17:00,2025-10-29 08:00,2025-11-04 17:00,2025-11-25 08:00,2025-12-01 17:00,,PT_Normal,,,,,H4v6NcDQ40+TjqKSrJnv7w,q4laRsKIQHipog2lb7d3Vg,,,N,0,0,,,,,,,,2025-07-16 14:09,2025-11-20 21:46,ARAJSHEKAR,jleon,,N,
100236347,122698,18114845,597,0,N,1,N,N,CP_Drtn,TT_Task,DT_FixedDUR2,TK_Active,FAB116513E-04,INSTALL DOOR & HARDWARE - FAB116513E,,16,448,40,0,0,0,40,0,0,0,,2025-10-14 08:00,,2025-11-25 08:00,2025-12-01 17:00,,2025-11-21 08:00,2025-11-27 17:00,2025-11-21 08:00,2025-11-27 17:00,2025-10-14 08:00,2025-10-20 17:00,2025-11-25 08:00,2025-12-01 17:00,,PT_Normal,,,,,exNfBQr3KUaGkituxAVMFQ,DPHX+qn6RB6jMHr8hpRnEA,,,N,0,0,,,,,,,,2025-07-16 14:09,2025-11-20 21:46,ARAJSHEKAR,jleon,,N,
100236350,122698,18114845,597,0,N,1,N,N,CP_Drtn,TT_Task,DT_FixedDUR2,TK_Active,FAB116513G-04,INSTALL DOOR & HARDWARE - FAB116513G,,16,448,40,0,0,0,40,0,0,0,,2025-10-08 08:00,,2025-11-25 08:00,2025-12-01 17:00,,2025-11-21 08:00,2025-11-27 17:00,2025-11-21 08:00,2025-11-27 17:00,2025-10-08 08:00,2025-10-14 17:00,2025-11-25 08:00,2025-12-01 17:00,,PT_Normal,,,,,BMIjAUDgC0G6yX9xks+EYA,RZhW+AHmRVWQ+JWyNBiW2A,,,N,0,0,,,,,,,,2025-07-16 14:09,2025-11-20 21:46,ARAJSHEKAR,jleon,,N,
100236354,122698,18114845,597,0,N,1,N,N,CP_Drtn,TT_Task,DT_FixedDUR2,TK_Active,FAB116513F-03,INSTALL DOOR FRAME BY SECAI - FAB116513F HANDED OVER ON 08/20,,-30,0,48,0,0,0,8,0,0,0,,2025-08-20 08:00,,2025-11-17 10:00,2025-11-25 10:00,,2025-11-21 08:00,2025-11-28 17:00,2025-11-21 08:00,2025-11-28 17:00,2025-08-20 08:00,2025-08-20 17:00,2025-11-17 10:00,2025-11-25 10:00,,PT_Normal,,,,,2K9aD+X1OEud6BaWLiIhNA,/3TgYQzsR0+yuZY/dDGRWA,,,N,0,0,,,,,,,,2025-07-16 14:09,2025-11-20 21:59,ARAJSHEKAR,jleon,,N,
100236356,122698,18114845,597,0,N,1,N,N,CP_Drtn,TT_Task,DT_FixedDUR2,TK_Active,FAB116513D-03,INSTALL DOOR FRAME BY SECAI - FAB116513D HANDED OVER TO SECAI ON 08/20,,-32,0,48,0,0,0,8,0,0,0,,2025-08-20 08:00,,2025-11-17 08:00,2025-11-24 17:00,,2025-11-21 08:00,2025-11-28 17:00,2025-11-21 08:00,2025-11-28 17:00,2025-08-20 08:00,2025-08-20 17:00,2025-11-17 08:00,2025-11-24 17:00,,PT_Normal,,,,,uAcATT6K90iqSuwOkqvjjg,IJGkcsIeQFmM4wbsxOvdvg,,,N,0,0,,,,,,,,2025-07-16 14:09,2025-11-20 21:59,ARAJSHEKAR,jleon,,N,
100236370,122698,18114812,597,0,N,1,N,N,CP_Drtn,TT_Task,DT_FixedDUR2,TK_Active,FAB116511B-04,INSTALL DOOR & HARDWARE - FAB116511B,,18,448,40,0,0,0,40,0,0,0,,2025-10-01 08:00,,2025-11-25 10:00,2025-12-02 10:00,,2025-11-21 08:00,2025-11-27 17:00,2025-11-21 08:00,2025-11-27 17:00,2025-10-01 08:00,2025-10-07 17:00,2025-11-25 10:00,2025-12-02 10:00,,PT_Normal,,,,,b46fijfRB0qssIo4qF2nZw,wNRWbTBJTJWlioF2G2xqyQ,,,N,0,0,,,,,,,,2025-07-16 14:09,2025-11-20 21:46,ARAJSHEKAR,jleon,,N,
100236381,122698,18114812,597,0,N,1,N,N,CP_Drtn,TT_Task,DT_FixedDUR2,TK_Active,FAB1165110B-00,IOCC TO BE SUBMITTED (RFI 10986) - FAB1165110B,,-48,0,40,0,0,0,150,0,0,0,,2025-07-03 07:00,,2025-11-13 08:00,2025-11-19 17:00,,2025-11-21 08:00,2025-11-27 17:00,2025-11-21 08:00,2025-11-27 17:00,2025-07-03 08:00,2025-07-29 15:00,2025-11-13 08:00,2025-11-19 17:00,,PT_Normal,,,,,ohyK/XqZg0+DdPNGIoTUzQ,aq6Nla+ZTH6QTWxaPZqrjw,,,N,0,0,,,,,,,,2025-07-16 14:09,2025-11-20 21:59,ARAJSHEKAR,jleon,,N,
100236386,122698,18114812,597,0,N,1,N,N,CP_Drtn,TT_Task,DT_FixedDUR2,TK_Active,FAB1165110B-60,IMPACT - LVL 2 CONCRETE BEAM IN CONFLICT WITH SHOP DRAWINGS (14FT VS 14FT 1IN) - FAB1165110B,,24,72,40,0,0,0,150,0,0,0,,2025-07-03 07:00,,2025-11-26 08:00,2025-12-02 17:00,,2025-11-21 08:00,2025-11-27 17:00,2025-11-21 08:00,2025-11-27 17:00,2025-07-03 08:00,2025-07-29 15:00,2025-11-26 08:00,2025-12-02 17:00,,PT_Normal,,,,,AXAo3iVxz06B07bczCPzgg,mhoUihGWT+2j3b42XOMl/A,,,N,0,0,,,,,,,,2025-07-16 14:09,2025-11-20 21:59,ARAJSHEKAR,jleon,,N,
100236403,122698,18114847,597,0,N,1,N,N,CP_Drtn,TT_Task,DT_FixedDUR2,TK_Active,FAB114404B-04,INSTALL DOOR & HARDWARE - FAB114404B,,18,448,40,0,0,0,40,0,0,0,,2025-11-07 08:00,,2025-11-25 10:00,2025-12-02 10:00,,2025-11-21 08:00,2025-11-27 17:00,2025-11-21 08:00,2025-11-27 17:00,2025-11-07 08:00,2025-11-13 17:00,2025-11-25 10:00,2025-12-02 10:00,,PT_Normal,,,,,+gez88Jfw0S4s8PklglUhg,nbWw4C5gRCyu23eBzrGpdg,,,N,0,0,,,,,,,,2025-07-16 14:09,2025-11-20 21:46,ARAJSHEKAR,jleon,,N,
100236412,122698,18114848,597,0,N,1,N,N,CP_Drtn,TT_Task,DT_FixedDUR2,TK_Active,FAB114403A-04,INSTALL DOOR & HARDWARE - FAB114403A,,18,448,40,0,0,0,40,0,0,0,,2025-11-06 08:00,,2025-11-25 10:00,2025-12-02 10:00,,2025-11-21 08:00,2025-11-27 17:00,2025-11-21 08:00,2025-11-27 17:00,2025-11-06 08:00,2025-11-12 17:00,2025-11-25 10:00,2025-12-02 10:00,,PT_Normal,,,,,+p++iq7D20udYKbMoTNMUw,2fmYD7QjQK+CrjSeipe4vQ,,,N,0,0,,,,,,,,2025-07-16 14:09,2025-11-20 21:46,ARAJSHEKAR,jleon,,N,
100236427,122698,18114849,597,0,N,1,N,N,CP_Drtn,TT_Task,DT_FixedDUR2,TK_Active,FAB114402A-04,INSTALL DOOR & HARDWARE - FAB114402A,,18,448,40,0,0,0,40,0,0,0,,2025-10-29 08:00,,2025-11-25 10:00,2025-12-02 10:00,,2025-11-21 08:00,2025-11-27 17:00,2025-11-21 08:00,2025-11-27 17:00,2025-10-29 08:00,2025-11-04 17:00,2025-11-25 10:00,2025-12-02 10:00,,PT_Normal,,,,,9Cp6Ax72mEKi5k8XJZocgg,r4Scs4IXTpi6T8TcPRPMPw,,,N,0,0,,,,,,,,2025-07-16 14:09,2025-11-20 21:46,ARAJSHEKAR,jleon,,N,
100236433,122698,18114849,597,0,N,1,N,N,CP_Drtn,TT_Task,DT_FixedDUR2,TK_Active,FAB114402B-04,INSTALL DOOR & HARDWARE - FAB114402B,,18,448,40,0,0,0,40,0,0,0,,2025-09-25 08:00,,2025-11-25 10:00,2025-12-02 10:00,,2025-11-21 08:00,2025-11-27 17:00,2025-11-21 08:00,2025-11-27 17:00,2025-09-25 08:00,2025-10-01 17:00,2025-11-25 10:00,2025-12-02 10:00,,PT_Normal,,,,,/wAhbqfegEO0DGxnLJEAqA,kVZOfv5eS9aJCVX/XpNygg,,,N,0,0,,,,,,,,2025-07-16 14:09,2025-11-20 21:46,ARAJSHEKAR,jleon,,N,
100236443,122698,18114850,597,0,N,1,N,N,CP_Drtn,TT_Task,DT_FixedDUR2,TK_Active,FAB114203A-04,INSTALL DOOR & HARDWARE - FAB114203A,,18,448,40,0,0,0,40,0,0,0,,2025-11-07 08:00,,2025-11-25 10:00,2025-12-02 10:00,,2025-11-21 08:00,2025-11-27 17:00,2025-11-21 08:00,2025-11-27 17:00,2025-11-07 08:00,2025-11-13 17:00,2025-11-25 10:00,2025-12-02 10:00,,PT_Normal,,,,,+AEs13G610y1EujcRW3+nQ,HOMnVTyPQkKynwzyavOzdA,,,N,0,0,,,,,,,,2025-07-16 14:09,2025-11-20 21:46,ARAJSHEKAR,jleon,,N,
100236449,122698,18114850,597,0,N,1,N,N,CP_Drtn,TT_Task,DT_FixedDUR2,TK_Active,FAB114203B-04,INSTALL DOOR & HARDWARE - FAB114203B,,32,448,40,0,0,0,40,0,0,0,,2025-07-29 08:00,,2025-11-27 08:00,2025-12-03 17:00,,2025-11-21 08:00,2025-11-27 17:00,2025-11-21 08:00,2025-11-27 17:00,2025-07-29 08:00,2025-08-04 17:00,2025-11-27 08:00,2025-12-03 17:00,,PT_Normal,,,,,w57bn67NOU+Ov2wukkA0Rg,g6FdG+XzT528lWdaxJG77w,,,N,0,0,,,,,,,,2025-07-16 14:09,2025-11-20 21:46,ARAJSHEKAR,jleon,,N,
100236458,122698,18114851,597,0,N,1,N,N,CP_Drtn,TT_Task,DT_FixedDUR2,TK_Active,FAB114155A-04,INSTALL DOOR & HARDWARE - FAB114155A,,18,448,40,0,0,0,40,0,0,0,,2025-09-12 08:00,,2025-11-25 10:00,2025-12-02 10:00,,2025-11-21 08:00,2025-11-27 17:00,2025-11-21 08:00,2025-11-27 17:00,2025-09-12 08:00,2025-09-18 17:00,2025-11-25 10:00,2025-12-02 10:00,,PT_Normal,,,,,nxuv6n21Yk27hTsATYvlJw,UGASMOlpSFKpTUbDCxy12w,,,N,0,0,,,,,,,,2025-07-16 14:09,2025-11-20 21:46,ARAJSHEKAR,jleon,,N,
100236464,122698,18114851,597,0,N,1,N,N,CP_Drtn,TT_Task,DT_FixedDUR2,TK_Active,FAB114155B-04,INSTALL DOOR & HARDWARE - FAB114155B,,18,448,40,0,0,0,40,0,0,0,,2025-10-13 08:00,,2025-11-25 10:00,2025-12-02 10:00,,2025-11-21 08:00,2025-11-27 17:00,2025-11-21 08:00,2025-11-27 17:00,2025-10-13 08:00,2025-10-17 17:00,2025-11-25 10:00,2025-12-02 10:00,,PT_Normal,,,,,D0tfKZLOnU2sIVYHJk9igw,VXPbi4X3SZSyyhhqIhK4oA,,,N,0,0,,,,,,,,2025-07-16 14:09,2025-11-20 21:46,ARAJSHEKAR,jleon,,N,
100236473,122698,18114852,597,0,N,1,N,N,CP_Drtn,TT_Task,DT_FixedDUR2,TK_Active,FAB114154A-04,INSTALL DOOR & HARDWARE - FAB114154A,,32,448,40,0,0,0,40,0,0,0,,2025-08-22 08:00,,2025-11-27 08:00,2025-12-03 17:00,,2025-11-21 08:00,2025-11-27 17:00,2025-11-21 08:00,2025-11-27 17:00,2025-08-22 08:00,2025-08-28 17:00,2025-11-27 08:00,2025-12-03 17:00,,PT_Normal,,,,,I3C+eTAueUmr25Atx9K4Hg,WyztlcPHTFKQylcBNgIMMg,,,N,0,0,,,,,,,,2025-07-16 14:09,2025-11-20 21:46,ARAJSHEKAR,jleon,,N,
100236479,122698,18114852,597,0,N,1,N,N,CP_Drtn,TT_Task,DT_FixedDUR2,TK_Active,FAB114154B-04,INSTALL DOOR & HARDWARE - FAB114154B,,18,448,40,0,0,0,40,0,0,0,,2025-10-21 08:00,,2025-11-25 10:00,2025-12-02 10:00,,2025-11-21 08:00,2025-11-27 17:00,2025-11-21 08:00,2025-11-27 17:00,2025-10-21 08:00,2025-10-27 17:00,2025-11-25 10:00,2025-12-02 10:00,,PT_Normal,,,,,BIOhiLOboECdb9vO8yCJWw,1t0zbu5pTQ6uEYI0KWVx2g,,,N,0,0,,,,,,,,2025-07-16 14:09,2025-11-20 21:46,ARAJSHEKAR,jleon,,N,
100236488,122698,18114853,597,0,N,1,N,N,CP_Drtn,TT_Task,DT_FixedDUR2,TK_Active,FAB114153A-04,INSTALL DOOR & HARDWARE - FAB114153A,,18,448,40,0,0,0,40,0,0,0,,2025-11-07 08:00,,2025-11-25 10:00,2025-12-02 10:00,,2025-11-21 08:00,2025-11-27 17:00,2025-11-21 08:00,2025-11-27 17:00,2025-11-07 08:00,2025-11-13 17:00,2025-11-25 10:00,2025-12-02 10:00,,PT_Normal,,,,,rLlWqJQn5U2w2IW/Mw9IVw,VvCh6IhlRteKYkEnGePftA,,,N,0,0,,,,,,,,2025-07-16 14:09,2025-11-20 21:46,ARAJSHEKAR,jleon,,N,
100236494,122698,18114853,597,0,N,1,N,N,CP_Drtn,TT_Task,DT_FixedDUR2,TK_Active,FAB114153B-04,INSTALL DOOR & HARDWARE - FAB114153B,,32,448,40,0,0,0,40,0,0,0,,2025-08-22 08:00,,2025-11-27 08:00,2025-12-03 17:00,,2025-11-21 08:00,2025-11-27 17:00,2025-11-21 08:00,2025-11-27 17:00,2025-08-22 08:00,2025-08-28 17:00,2025-11-27 08:00,2025-12-03 17:00,,PT_Normal,,,,,zKSw+VMNF0CVq4Al5S7EBQ,+uC0G0kuSSmku9fy2k5uzg,,,N,0,0,,,,,,,,2025-07-16 14:09,2025-11-20 21:46,ARAJSHEKAR,jleon,,N,
100236503,122698,18114854,597,0,N,1,N,N,CP_Drtn,TT_Task,DT_FixedDUR2,TK_Active,FAB114152A-04,INSTALL DOOR & HARDWARE - FAB114152A,,18,448,40,0,0,0,40,0,0,0,,2025-11-07 08:00,,2025-11-25 10:00,2025-12-02 10:00,,2025-11-21 08:00,2025-11-27 17:00,2025-11-21 08:00,2025-11-27 17:00,2025-09-12 08:00,2025-09-18 17:00,2025-11-25 10:00,2025-12-02 10:00,,PT_Normal,,,,,Yl16t+uIr0+6CRlNWwhWcg,+n8pQz0CRVSHSpNJ5p1z8A,,,N,0,0,,,,,,,,2025-07-16 14:09,2025-11-20 21:46,ARAJSHEKAR,jleon,,N,
100236521,122698,18114939,597,0,N,1,N,N,CP_Drtn,TT_Task,DT_FixedDUR2,TK_Active,FAB112155A-04,INSTALL DOOR & HARDWARE - FAB112155A,,18,448,40,0,0,0,40,0,0,0,,2025-09-24 08:00,,2025-11-25 10:00,2025-12-02 10:00,,2025-11-21 08:00,2025-11-27 17:00,2025-11-21 08:00,2025-11-27 17:00,2025-09-24 08:00,2025-09-30 17:00,2025-11-25 10:00,2025-12-02 10:00,,PT_Normal,,,,,8Pt6gDJGhkOYB9EaRhcAdQ,q2cWPjKiSGihg6GtnTknRQ,,,N,0,0,,,,,,,,2025-07-16 14:09,2025-11-20 21:46,ARAJSHEKAR,jleon,,N,
100236540,122698,18114859,597,0,N,1,N,N,CP_Drtn,TT_Task,DT_FixedDUR2,TK_Active,FAB112159A-04,INSTALL DOOR & HARDWARE - FAB112159A,,18,448,40,0,0,0,40,0,0,0,,2025-10-31 08:00,,2025-11-25 10:00,2025-12-02 10:00,,2025-11-21 08:00,2025-11-27 17:00,2025-11-21 08:00,2025-11-27 17:00,2025-10-31 08:00,2025-11-06 17:00,2025-11-25 10:00,2025-12-02 10:00,,PT_Normal,,,,,W/u7lMV/8kWnhknX3hSo+Q,/Qng03dyRGOj9owHLYmrcQ,,,N,0,0,,,,,,,,2025-07-16 14:09,2025-11-20 21:46,ARAJSHEKAR,jleon,,N,
100236546,122698,18114859,597,0,N,1,N,N,CP_Drtn,TT_Task,DT_FixedDUR2,TK_Active,FAB112159B-04,INSTALL DOOR & HARDWARE - FAB112159B,,18,448,40,0,0,0,40,0,0,0,,2025-09-25 08:00,,2025-11-25 10:00,2025-12-02 10:00,,2025-11-21 08:00,2025-11-27 17:00,2025-11-21 08:00,2025-11-27 17:00,2025-09-25 08:00,2025-10-01 17:00,2025-11-25 10:00,2025-12-02 10:00,,PT_Normal,,,,,nHg82+WtyU+rdBGcKZKZWA,93dFuXpnS6iSmq2rAm7J5A,,,N,0,0,,,,,,,,2025-07-16 14:09,2025-11-20 21:46,ARAJSHEKAR,jleon,,N,
100236555,122698,18114860,597,0,N,1,N,N,CP_Drtn,TT_Task,DT_FixedDUR2,TK_Active,FAB112160A-04,INSTALL DOOR & HARDWARE - FAB112160A,,18,448,40,0,0,0,40,0,0,0,,2025-09-24 08:00,,2025-11-25 10:00,2025-12-02 10:00,,2025-11-21 08:00,2025-11-27 17:00,2025-11-21 08:00,2025-11-27 17:00,2025-09-24 08:00,2025-09-30 17:00,2025-11-25 10:00,2025-12-02 10:00,,PT_Normal,,,,,8WIsEduZqU+r3r09c/BBDw,M4MccfHkRz250bOnW3ja+g,,,N,0,0,,,,,,,,2025-07-16 14:09,2025-11-20 21:46,ARAJSHEKAR,jleon,,N,
100236561,122698,18114861,597,0,N,1,N,N,CP_Drtn,TT_Task,DT_FixedDUR2,TK_Active,FAB112202A-04,INSTALL DOOR & HARDWARE - FAB112202A - P1,,18,448,40,0,0,0,40,0,0,0,,2025-07-08 08:00,,2025-11-25 10:00,2025-12-02 10:00,,2025-11-21 08:00,2025-11-27 17:00,2025-11-21 08:00,2025-11-27 17:00,2025-07-08 08:00,2025-07-14 17:00,2025-11-25 10:00,2025-12-02 10:00,,PT_Normal,,,,,pbl5CTSaHEWeeDtG0RcvJA,qBpfRYJVSaCvEBUoYshiZQ,,,N,0,0,,,,,,,,2025-07-16 14:09,2025-11-20 21:46,ARAJSHEKAR,jleon,,N,
100236570,122698,18114862,597,0,N,1,N,N,CP_Drtn,TT_Task,DT_FixedDUR2,TK_Active,FAB112203A-04,INSTALL DOOR & HARDWARE - FAB112203A,,18,448,40,0,0,0,40,0,0,0,,2025-10-03 08:00,,2025-11-25 10:00,2025-12-02 10:00,,2025-11-21 08:00,2025-11-27 17:00,2025-11-21 08:00,2025-11-27 17:00,2025-10-03 08:00,2025-10-09 17:00,2025-11-25 10:00,2025-12-02 10:00,,PT_Normal,,,,,gVniTagpHEChHf+5wnPOLg,idHn7LGtRCi3cP1kTY4zsA,,,N,0,0,,,,,,,,2025-07-16 14:09,2025-11-20 21:46,ARAJSHEKAR,jleon,,N,
100236576,122698,18114862,597,0,N,1,N,N,CP_Drtn,TT_Task,DT_FixedDUR2,TK_Active,FAB112203B-04,INSTALL DOOR & HARDWARE - FAB112203B,,16,448,40,0,0,0,40,0,0,0,,2025-08-21 08:00,,2025-11-25 08:00,2025-12-01 17:00,,2025-11-21 08:00,2025-11-27 17:00,2025-11-21 08:00,2025-11-27 17:00,2025-08-21 08:00,2025-08-27 17:00,2025-11-25 08:00,2025-12-01 17:00,,PT_Normal,,,,,oJJDQLyIL0Gpus3K2hlLUA,BNxELed1Qc+Zjcu2dAt4Ag,,,N,0,0,,,,,,,,2025-07-16 14:09,2025-11-20 21:46,ARAJSHEKAR,jleon,,N,
100236585,122698,18114863,597,0,N,1,N,N,CP_Drtn,TT_Task,DT_FixedDUR2,TK_Active,FAB112205A-04,INSTALL DOOR & HARDWARE - FAB112205A,,32,448,40,0,0,0,40,0,0,0,,2025-09-29 08:00,,2025-11-27 08:00,2025-12-03 17:00,,2025-11-21 08:00,2025-11-27 17:00,2025-11-21 08:00,2025-11-27 17:00,2025-09-29 08:00,2025-10-03 17:00,2025-11-27 08:00,2025-12-03 17:00,,PT_Normal,,,,,rZ2UiTKuAEKfnAob2ieI2w,6oDdcT15QPCg6neVKM7lfQ,,,N,0,0,,,,,,,,2025-07-16 14:09,2025-11-20 21:46,ARAJSHEKAR,jleon,,N,
100236591,122698,18114863,597,0,N,1,N,N,CP_Drtn,TT_Task,DT_FixedDUR2,TK_Active,FAB112205B-04,INSTALL DOOR & HARDWARE - FAB112205B,,18,448,40,0,0,0,40,0,0,0,,2025-10-03 08:00,,2025-11-25 10:00,2025-12-02 10:00,,2025-11-21 08:00,2025-11-27 17:00,2025-11-21 08:00,2025-11-27 17:00,2025-10-03 08:00,2025-10-09 17:00,2025-11-25 10:00,2025-12-02 10:00,,PT_Normal,,,,,3iQ7lX9dW0+IA7LrmIRH1g,NDHWXxWERQidsSM9zbKIFw,,,N,0,0,,,,,,,,2025-07-16 14:09,2025-11-20 21:46,ARAJSHEKAR,jleon,,N,
100236600,122698,18114865,597,0,N,1,N,N,CP_Drtn,TT_Task,DT_FixedDUR2,TK_Active,FAB112302A-04,INSTALL DOOR & HARDWARE - FAB112302A,,18,448,40,0,0,0,40,0,0,0,,2025-10-13 08:00,,2025-11-25 10:00,2025-12-02 10:00,,2025-11-21 08:00,2025-11-27 17:00,2025-11-21 08:00,2025-11-27 17:00,2025-10-13 08:00,2025-10-17 17:00,2025-11-25 10:00,2025-12-02 10:00,,PT_Normal,,,,,fcNi+XKNBEauDG3kTMp03g,LHQ+YXOeQx+kBqerHl7jQg,,,N,0,0,,,,,,,,2025-07-16 14:09,2025-11-20 21:46,ARAJSHEKAR,jleon,,N,
100236606,122698,18114865,597,0,N,1,N,N,CP_Drtn,TT_Task,DT_FixedDUR2,TK_Active,FAB112302B-04,INSTALL DOOR & HARDWARE - FAB112302B,,18,448,40,0,0,0,40,0,0,0,,2025-08-21 08:00,,2025-11-25 10:00,2025-12-02 10:00,,2025-11-21 08:00,2025-11-27 17:00,2025-11-21 08:00,2025-11-27 17:00,2025-08-21 08:00,2025-08-27 17:00,2025-11-25 10:00,2025-12-02 10:00,,PT_Normal,,,,,s2zNgiz9tkitImIzGlsMHw,e+OAYU66TfC5P1TkE36Hwg,,,N,0,0,,,,,,,,2025-07-16 14:09,2025-11-20 21:46,ARAJSHEKAR,jleon,,N,
100236615,122698,18114866,597,0,N,1,N,N,CP_Drtn,TT_Task,DT_FixedDUR2,TK_Active,FAB112303A-04,INSTALL DOOR & HARDWARE - FAB112303A,,18,448,40,0,0,0,40,0,0,0,,2025-11-03 08:00,,2025-11-25 10:00,2025-12-02 10:00,,2025-11-21 08:00,2025-11-27 17:00,2025-11-21 08:00,2025-11-27 17:00,2025-11-03 08:00,2025-11-07 17:00,2025-11-25 10:00,2025-12-02 10:00,,PT_Normal,,,,,1aarnDiEyEiw4d6DmdZWKQ,bTrk4cC1Rne34Acn+qjQjg,,,N,0,0,,,,,,,,2025-07-16 14:09,2025-11-20 21:46,ARAJSHEKAR,jleon,,N,
100236621,122698,18114866,597,0,N,1,N,N,CP_Drtn,TT_Task,DT_FixedDUR2,TK_Active,FAB112303B-04,INSTALL DOOR & HARDWARE - FAB112303B,,18,448,40,0,0,0,40,0,0,0,,2025-11-03 08:00,,2025-11-25 10:00,2025-12-02 10:00,,2025-11-21 08:00,2025-11-27 17:00,2025-11-21 08:00,2025-11-27 17:00,2025-11-03 08:00,2025-11-07 17:00,2025-11-25 10:00,2025-12-02 10:00,,PT_Normal,,,,,ZXsfDWQlDkKZjr9ZQfiygg,ykeTmtFqTKqYUPq9Kk5aHQ,,,N,0,0,,,,,,,,2025-07-16 14:09,2025-11-20 21:46,ARAJSHEKAR,jleon,,N,
100236630,122698,18114867,597,0,N,1,N,N,CP_Drtn,TT_Task,DT_FixedDUR2,TK_Active,FAB112305A-04,INSTALL DOOR & HARDWARE - FAB112305A,,18,448,40,0,0,0,40,0,0,0,,2025-09-24 08:00,,2025-11-25 10:00,2025-12-02 10:00,,2025-11-21 08:00,2025-11-27 17:00,2025-11-21 08:00,2025-11-27 17:00,2025-09-24 08:00,2025-09-30 17:00,2025-11-25 10:00,2025-12-02 10:00,,PT_Normal,,,,,Y6HZKvDCGEWLpEoaLO4Nmw,+tX/9lBcRQysM92ohMTQUA,,,N,0,0,,,,,,,,2025-07-16 14:09,2025-11-20 21:46,ARAJSHEKAR,jleon,,N,
100236645,122698,18114869,597,0,N,1,N,N,CP_Drtn,TT_Task,DT_FixedDUR2,TK_Active,FAB112408A-04,INSTALL DOOR & HARDWARE - FAB112408A,,18,448,40,0,0,0,40,0,0,0,,2025-09-02 08:00,,2025-11-25 10:00,2025-12-02 10:00,,2025-11-21 08:00,2025-11-27 17:00,2025-11-21 08:00,2025-11-27 17:00,2025-09-02 08:00,2025-09-08 17:00,2025-11-25 10:00,2025-12-02 10:00,,PT_Normal,,,,,d+R+85fpNEqYu/bUN1sXFw,umE89aPLSvKjaXIRw5ss4Q,,,N,0,0,,,,,,,,2025-07-16 14:09,2025-11-20 21:46,ARAJSHEKAR,jleon,,N,
100236654,122698,18114870,597,0,N,1,N,N,CP_Drtn,TT_Task,DT_FixedDUR2,TK_Active,FAB112407A-04,INSTALL DOOR & HARDWARE - FAB112407A,,18,448,40,0,0,0,40,0,0,0,,2025-10-29 08:00,,2025-11-25 10:00,2025-12-02 10:00,,2025-11-21 08:00,2025-11-27 17:00,2025-11-21 08:00,2025-11-27 17:00,2025-10-29 08:00,2025-11-04 17:00,2025-11-25 10:00,2025-12-02 10:00,,PT_Normal,,,,,SKuXAr7FuUybXq7q6QzqjQ,BJGDjxaoRLePXFKQyYpZag,,,N,0,0,,,,,,,,2025-07-16 14:09,2025-11-20 21:46,ARAJSHEKAR,jleon,,N,
100236660,122698,18114870,597,0,N,1,N,N,CP_Drtn,TT_Task,DT_FixedDUR2,TK_Active,FAB112407B-04,INSTALL DOOR & HARDWARE - FAB112407B,,18,448,40,0,0,0,40,0,0,0,,2025-09-25 08:00,,2025-11-25 10:00,2025-12-02 10:00,,2025-11-21 08:00,2025-11-27 17:00,2025-11-21 08:00,2025-11-27 17:00,2025-09-25 08:00,2025-10-01 17:00,2025-11-25 10:00,2025-12-02 10:00,,PT_Normal,,,,,ZCO0vi45mE2K6djPszSFvw,2fz+UOHoQJCqu0aUohIgEg,,,N,0,0,,,,,,,,2025-07-16 14:09,2025-11-20 21:46,ARAJSHEKAR,jleon,,N,
100236672,122698,18114872,597,0,N,1,N,N,CP_Drtn,TT_Task,DT_FixedDUR2,TK_Active,FAB112403A-04,INSTALL DOOR & HARDWARE - FAB112403A,,32,448,40,0,0,0,40,0,0,0,,2025-08-22 08:00,,2025-11-27 08:00,2025-12-03 17:00,,2025-11-21 08:00,2025-11-27 17:00,2025-11-21 08:00,2025-11-27 17:00,2025-08-22 08:00,2025-08-28 17:00,2025-11-27 08:00,2025-12-03 17:00,,PT_Normal,,,,,EDgdq03/FkKtJUO5qu3trA,AhSz+E0MTd6Tl8yXn9wWiQ,,,N,0,0,,,,,,,,2025-07-16 14:09,2025-11-20 21:46,ARAJSHEKAR,jleon,,N,
100236678,122698,18114872,597,0,N,1,N,N,CP_Drtn,TT_Task,DT_FixedDUR2,TK_Active,FAB112403B-04,INSTALL DOOR & HARDWARE - FAB112403B,,32,448,40,0,0,0,40,0,0,0,,2025-08-21 08:00,,2025-11-27 08:00,2025-12-03 17:00,,2025-11-21 08:00,2025-11-27 17:00,2025-11-21 08:00,2025-11-27 17:00,2025-08-21 08:00,2025-08-27 17:00,2025-11-27 08:00,2025-12-03 17:00,,PT_Normal,,,,,mXoy+AKqMUmn0rqi/a78rg,Kl2VYyOSQPCkr63w8y9xJQ,,,N,0,0,,,,,,,,2025-07-16 14:09,2025-11-20 21:46,ARAJSHEKAR,jleon,,N,
100236687,122698,18114873,597,0,N,1,N,N,CP_Drtn,TT_Task,DT_FixedDUR2,TK_Active,FAB112404A-04,INSTALL DOOR & HARDWARE - FAB112404A,,32,448,40,0,0,0,40,0,0,0,,2025-07-08 08:00,,2025-11-27 08:00,2025-12-03 17:00,,2025-11-21 08:00,2025-11-27 17:00,2025-11-21 08:00,2025-11-27 17:00,2025-07-08 08:00,2025-07-14 17:00,2025-11-27 08:00,2025-12-03 17:00,,PT_Normal,,,,,FM6qvWwtLUG1rMg4LomXQQ,9xsQwMEaSj2T/JQ5ynMyhA,,,N,0,0,,,,,,,,2025-07-16 14:09,2025-11-20 21:46,ARAJSHEKAR,jleon,,N,
100236693,122698,18114873,597,0,N,1,N,N,CP_Drtn,TT_Task,DT_FixedDUR2,TK_Active,FAB112404B-04,INSTALL DOOR & HARDWARE - FAB112404B,,18,448,40,0,0,0,40,0,0,0,,2025-09-15 08:00,,2025-11-25 10:00,2025-12-02 10:00,,2025-11-21 08:00,2025-11-27 17:00,2025-11-21 08:00,2025-11-27 17:00,2025-09-15 08:00,2025-09-19 17:00,2025-11-25 10:00,2025-12-02 10:00,,PT_Normal,,,,,HI9cR/9y00qPCf9mwtLi0g,5por21k0Ra6tXU0WjeALWQ,,,N,0,0,,,,,,,,2025-07-16 14:09,2025-11-20 21:46,ARAJSHEKAR,jleon,,N,
100236706,122698,18114940,597,0,N,1,N,N,CP_Drtn,TT_Task,DT_FixedDUR2,TK_Active,FAB110506A-04,INSTALL DOOR & HARDWARE - FAB110506A,,18,448,40,0,0,0,40,0,0,0,,2025-11-06 08:00,,2025-11-25 10:00,2025-12-02 10:00,,2025-11-21 08:00,2025-11-27 17:00,2025-11-21 08:00,2025-11-27 17:00,2025-11-06 08:00,2025-11-12 17:00,2025-11-25 10:00,2025-12-02 10:00,,PT_Normal,,,,,4uEJcqpn/UOmweSgoROdCg,ImwQcj0IQ+SCV3rkItVXhg,,,N,0,0,,,,,,,,2025-07-16 14:09,2025-11-20 21:46,ARAJSHEKAR,jleon,,N,
100236714,122698,18114940,597,0,N,1,N,N,CP_Drtn,TT_Task,DT_FixedDUR2,TK_Active,FAB110506C-04,INSTALL DOOR & HARDWARE - FAB110506C,,40,448,40,0,0,0,40,0,0,0,,2025-06-17 08:00,,2025-11-28 08:00,2025-12-04 17:00,,2025-11-21 08:00,2025-11-27 17:00,2025-11-21 08:00,2025-11-27 17:00,2025-06-17 08:00,2025-06-23 17:00,2025-11-28 08:00,2025-12-04 17:00,,PT_Normal,,,,,0lO7S+fKfEqc1oGM5DhWmQ,mIxYWqsoSUqLbl0fOi9MZg,,,N,0,0,,,,,,,,2025-07-16 14:09,2025-11-20 21:46,ARAJSHEKAR,jleon,,N,
100236718,122698,18114940,597,0,N,1,N,N,CP_Drtn,TT_Task,DT_FixedDUR2,TK_Active,FAB110506D-04,INSTALL DOOR & HARDWARE - FAB110506D,,40,448,40,0,0,0,40,0,0,0,,2025-06-17 08:00,,2025-11-28 08:00,2025-12-04 17:00,,2025-11-21 08:00,2025-11-27 17:00,2025-11-21 08:00,2025-11-27 17:00,2025-06-17 08:00,2025-06-23 17:00,2025-11-28 08:00,2025-12-04 17:00,,PT_Normal,,,,,L3pNwAJgDUq7gmYOM6+3bQ,fPpPb299Qsi65NS52GAX9A,,,N,0,0,,,,,,,,2025-07-16 14:09,2025-11-20 21:46,ARAJSHEKAR,jleon,,N,
100236722,122698,18114940,597,0,N,1,N,N,CP_Drtn,TT_Task,DT_FixedDUR2,TK_Active,FAB110506E-04,INSTALL DOOR & HARDWARE - FAB110506E,,18,448,40,0,0,0,40,0,0,0,,2025-10-22 08:00,,2025-11-25 10:00,2025-12-02 10:00,,2025-11-21 08:00,2025-11-27 17:00,2025-11-21 08:00,2025-11-27 17:00,2025-10-22 08:00,2025-10-28 17:00,2025-11-25 10:00,2025-12-02 10:00,,PT_Normal,,,,,Nabeshdw8EeyQT7VkbOxnw,qEhJVYO7RVOx2enCOEWUGQ,,,N,0,0,,,,,,,,2025-07-16 14:09,2025-11-20 21:46,ARAJSHEKAR,jleon,,N,
100236742,122698,18114974,597,0,N,1,N,N,CP_Drtn,TT_Task,DT_FixedDUR2,TK_Active,FAB110507B-04,INSTALL DOOR & HARDWARE - FAB110507B,,18,448,40,0,0,0,40,0,0,0,,2025-10-15 08:00,,2025-11-25 10:00,2025-12-02 10:00,,2025-11-21 08:00,2025-11-27 17:00,2025-11-21 08:00,2025-11-27 17:00,2025-10-15 08:00,2025-10-21 17:00,2025-11-25 10:00,2025-12-02 10:00,,PT_Normal,,,,,4UfmzzbCR0+/Byue2n3ipA,hfHqi8GoR4u9OmZK3a8LsA,,,N,0,0,,,,,,,,2025-07-16 14:09,2025-11-20 21:46,ARAJSHEKAR,jleon,,N,
100236745,122698,18114974,597,0,N,1,N,N,CP_Drtn,TT_Task,DT_FixedDUR2,TK_Active,FAB110508C-00,IOCC TO BE SUBMITTED (RFI 10986) - FAB110508C,,-104,0,40,0,0,0,130,0,0,0,,2025-07-03 07:00,,2025-11-04 08:00,2025-11-10 17:00,,2025-11-21 08:00,2025-11-27 17:00,2025-11-21 08:00,2025-11-27 17:00,2025-07-03 08:00,2025-07-25 10:00,2025-11-04 08:00,2025-11-10 17:00,,PT_Normal,,,,,9R9j2QONzEChiGmytgmTvw,amPVwxAjTXauVQr8400DEQ,,,N,0,0,,,,,,,,2025-07-16 14:09,2025-11-20 21:59,ARAJSHEKAR,jleon,,N,
100236750,122698,18114974,597,0,N,1,N,N,CP_Drtn,TT_Task,DT_FixedDUR2,TK_Active,FAB110508C-50,IMPACT - MEP MATERIAL IN FRONT OF OPENING - FAB110508C,,-32,72,40,0,0,0,150,0,0,0,,2025-07-03 07:00,,2025-11-17 08:00,2025-11-21 17:00,,2025-11-21 08:00,2025-11-27 17:00,2025-11-21 08:00,2025-11-27 17:00,2025-07-03 08:00,2025-07-29 15:00,2025-11-17 08:00,2025-11-21 17:00,,PT_Normal,,,,,yfDLsvC/R0qAs9J3XDOQiA,+DFQbGNbSi2dKIMbhPxlhw,,,N,0,0,,,,,,,,2025-07-16 14:09,2025-11-20 21:59,ARAJSHEKAR,jleon,,N,
100236751,122698,18114974,597,0,N,1,N,N,CP_Drtn,TT_Task,DT_FixedDUR2,TK_Active,FAB110508C-60,IMPACT - ELECTRICAL CONDUIT INSTALLED IN OHC LOCATION - FAB110508C,,-32,72,40,0,0,0,150,0,0,0,,2025-07-03 07:00,,2025-11-17 08:00,2025-11-21 17:00,,2025-11-21 08:00,2025-11-27 17:00,2025-11-21 08:00,2025-11-27 17:00,2025-07-03 08:00,2025-07-29 15:00,2025-11-17 08:00,2025-11-21 17:00,,PT_Normal,,,,,cXXvhM12YkanHp8bKtr64Q,kd3UxJNKRxiaEXngo7ioqw,,,N,0,0,,,,,,,,2025-07-16 14:09,2025-11-20 21:59,ARAJSHEKAR,jleon,,N,
100236758,122698,18114876,597,0,N,1,N,N,CP_Drtn,TT_Task,DT_FixedDUR2,TK_Active,FAB110504A-04,INSTALL DOOR & HARDWARE - FAB110504A,,18,448,40,0,0,0,40,0,0,0,,2025-10-22 08:00,,2025-11-25 10:00,2025-12-02 10:00,,2025-11-21 08:00,2025-11-27 17:00,2025-11-21 08:00,2025-11-27 17:00,2025-10-22 08:00,2025-10-28 17:00,2025-11-25 10:00,2025-12-02 10:00,,PT_Normal,,,,,vx4aNPl7tU6GHURgHkbz/g,1xXzjpN5QwCd/4t8oZRKsg,,,N,0,0,,,,,,,,2025-07-16 14:09,2025-11-20 21:46,ARAJSHEKAR,jleon,,N,
100236775,122698,18114878,597,0,N,1,N,N,CP_Drtn,TT_Task,DT_FixedDUR2,TK_Active,FAB110509B-04,INSTALL DOOR & HARDWARE - FAB110509B,,18,448,40,0,0,0,40,0,0,0,,2025-09-03 08:00,,2025-11-25 10:00,2025-12-02 10:00,,2025-11-21 08:00,2025-11-27 17:00,2025-11-21 08:00,2025-11-27 17:00,2025-09-03 08:00,2025-09-09 17:00,2025-11-25 10:00,2025-12-02 10:00,,PT_Normal,,,,,Zt0+WgOAz06VwNtaQ0Z1jw,cA8N7wtmRPCbyAaY9OgRww,,,N,0,0,,,,,,,,2025-07-16 14:09,2025-11-20 21:46,ARAJSHEKAR,jleon,,N,
100236810,122698,18114882,597,0,N,1,N,N,CP_Drtn,TT_Task,DT_FixedDUR2,TK_Active,FAB110516A-04,INSTALL DOOR & HARDWARE - FAB110516A,,18,448,40,0,0,0,40,0,0,0,,2025-09-27 08:00,,2025-11-25 10:00,2025-12-02 10:00,,2025-11-21 08:00,2025-11-27 17:00,2025-11-21 08:00,2025-11-27 17:00,2025-09-29 08:00,2025-10-03 17:00,2025-11-25 10:00,2025-12-02 10:00,,PT_Normal,,,,,g6hWjanyY0W9QMqo0K11sA,ncLSej5LQsadevy2xO2+WA,,,N,0,0,,,,,,,,2025-07-16 14:09,2025-11-20 21:46,ARAJSHEKAR,jleon,,N,
100236824,122698,18114883,597,0,N,1,N,N,CP_Drtn,TT_Task,DT_FixedDUR2,TK_Active,FAB110502B-04,INSTALL DOOR & HARDWARE - FAB110502B,,18,448,40,0,0,0,40,0,0,0,,2025-10-15 08:00,,2025-11-25 10:00,2025-12-02 10:00,,2025-11-21 08:00,2025-11-27 17:00,2025-11-21 08:00,2025-11-27 17:00,2025-10-15 08:00,2025-10-21 17:00,2025-11-25 10:00,2025-12-02 10:00,,PT_Normal,,,,,qngQQjVOUkO94E2fGUZpwg,OeUhsQdkTMeKvpa0Y4kGog,,,N,0,0,,,,,,,,2025-07-16 14:09,2025-11-20 21:46,ARAJSHEKAR,jleon,,N,
100236855,122698,18114886,597,0,N,1,N,N,CP_Drtn,TT_Task,DT_FixedDUR2,TK_Active,FAB110123A-04,INSTALL DOOR & HARDWARE - FAB110123A,,40,448,40,0,0,0,40,0,0,0,,2025-07-25 08:00,,2025-11-28 08:00,2025-12-04 17:00,,2025-11-21 08:00,2025-11-27 17:00,2025-11-21 08:00,2025-11-27 17:00,2025-07-25 08:00,2025-07-31 17:00,2025-11-28 08:00,2025-12-04 17:00,,PT_Normal,,,,,M/014KiUYUq45bNRCuQytw,COf9NdybSUCYf2CMvMxffQ,,,N,0,0,,,,,,,,2025-07-16 14:09,2025-11-20 21:46,ARAJSHEKAR,jleon,,N,
100236859,122698,18114886,597,0,N,1,N,N,CP_Drtn,TT_Task,DT_FixedDUR2,TK_Active,FAB110123B-04,INSTALL DOOR & HARDWARE - FAB110123B,,18,448,40,0,0,0,40,0,0,0,,2025-09-09 08:00,,2025-11-25 10:00,2025-12-02 10:00,,2025-11-21 08:00,2025-11-27 17:00,2025-11-21 08:00,2025-11-27 17:00,2025-09-09 08:00,2025-09-15 17:00,2025-11-25 10:00,2025-12-02 10:00,,PT_Normal,,,,,jNtfTUk1cUyuQgL/K74G2g,Nv/gYWjdQtesEYakogmqVg,,,N,0,0,,,,,,,,2025-07-16 14:09,2025-11-20 21:46,ARAJSHEKAR,jleon,,N,
100236871,122698,18114887,597,0,N,1,N,N,CP_Drtn,TT_Task,DT_FixedDUR2,TK_Active,FAB110402C-04,INSTALL DOOR & HARDWARE - FAB110402C,,18,448,40,0,0,0,40,0,0,0,,2025-10-06 08:00,,2025-11-25 10:00,2025-12-02 10:00,,2025-11-21 08:00,2025-11-27 17:00,2025-11-21 08:00,2025-11-27 17:00,2025-10-06 08:00,2025-10-10 17:00,2025-11-25 10:00,2025-12-02 10:00,,PT_Normal,,,,,8QHts/NLXkiO14JbTeXxOQ,aVonfMy3SgG/AeFqNFRvlA,,,N,0,0,,,,,,,,2025-07-16 14:09,2025-11-20 21:46,ARAJSHEKAR,jleon,,N,
100236886,122698,18114888,597,0,N,1,N,N,CP_Drtn,TT_Task,DT_FixedDUR2,TK_Active,FAB110306A-04,INSTALL DOOR & HARDWARE - FAB110306A,,40,448,40,0,0,0,40,0,0,0,,2025-07-24 08:00,,2025-11-28 08:00,2025-12-04 17:00,,2025-11-21 08:00,2025-11-27 17:00,2025-11-21 08:00,2025-11-27 17:00,2025-07-24 08:00,2025-07-30 17:00,2025-11-28 08:00,2025-12-04 17:00,,PT_Normal,,,,,PiFE+YGIpEqsIFe7iroK7Q,4IET1E5NR0KXMw4UbVu5ZQ,,,N,0,0,,,,,,,,2025-07-16 14:09,2025-11-20 21:46,ARAJSHEKAR,jleon,,N,
100236890,122698,18114888,597,0,N,1,N,N,CP_Drtn,TT_Task,DT_FixedDUR2,TK_Active,FAB110514A-04,INSTALL DOOR & HARDWARE - FAB110514A,,40,448,40,0,0,0,40,0,0,0,,2025-08-19 08:00,,2025-11-28 08:00,2025-12-04 17:00,,2025-11-21 08:00,2025-11-27 17:00,2025-11-21 08:00,2025-11-27 17:00,2025-08-19 08:00,2025-08-25 17:00,2025-11-28 08:00,2025-12-04 17:00,,PT_Normal,,,,,MAuS+UvTbE+lLdaoNnGEEw,RmW0otn3SA+AVFF4+FEnTg,,,N,0,0,,,,,,,,2025-07-16 14:09,2025-11-20 21:46,ARAJSHEKAR,jleon,,N,
100236893,122698,18114888,597,0,N,1,N,N,CP_Drtn,TT_Task,DT_FixedDUR2,TK_Active,FAB110514B-04,INSTALL DOOR & HARDWARE - FAB110514B,,18,448,40,0,0,0,40,0,0,0,,2025-08-19 08:00,,2025-11-25 10:00,2025-12-02 10:00,,2025-11-21 08:00,2025-11-27 17:00,2025-11-21 08:00,2025-11-27 17:00,2025-08-19 08:00,2025-08-25 17:00,2025-11-25 10:00,2025-12-02 10:00,,PT_Normal,,,,,lYIOZFhLnkSFsVgNtyoTkw,2qpmpNgYSn+46OzM9H1B2w,,,N,0,0,,,,,,,,2025-07-16 14:09,2025-11-20 21:46,ARAJSHEKAR,jleon,,N,
100236906,122698,18114889,597,0,N,1,N,N,CP_Drtn,TT_Task,DT_FixedDUR2,TK_Active,FAB110401B-04,INSTALL DOOR & HARDWARE - FAB110401B,,18,448,40,0,0,0,40,0,0,0,,2025-08-29 08:00,,2025-11-25 10:00,2025-12-02 10:00,,2025-11-21 08:00,2025-11-27 17:00,2025-11-21 08:00,2025-11-27 17:00,2025-08-29 08:00,2025-09-04 17:00,2025-11-25 10:00,2025-12-02 10:00,,PT_Normal,,,,,Pd+CVH1/s0m89t03Gn2eAQ,+11I2m3BTamxDatAf+PDgQ,,,N,0,0,,,,,,,,2025-07-16 14:09,2025-11-20 21:46,ARAJSHEKAR,jleon,,N,
100236910,122698,18114889,597,0,N,1,N,N,CP_Drtn,TT_Task,DT_FixedDUR2,TK_Active,FAB110401C-04,INSTALL DOOR & HARDWARE - FAB110401C,,18,448,40,0,0,0,40,0,0,0,,2025-09-25 08:00,,2025-11-25 10:00,2025-12-02 10:00,,2025-11-21 08:00,2025-11-27 17:00,2025-11-21 08:00,2025-11-27 17:00,2025-09-25 08:00,2025-10-01 17:00,2025-11-25 10:00,2025-12-02 10:00,,PT_Normal,,,,,+JZ7cPa1fEqnf/XYiqqlOQ,vdOMETNlTEOxJwUCotc5UA,,,N,0,0,,,,,,,,2025-07-16 14:09,2025-11-20 21:46,ARAJSHEKAR,jleon,,N,
100236932,122698,18114891,597,0,N,1,N,N,CP_Drtn,TT_Task,DT_FixedDUR2,TK_Active,FAB110307A-04,INSTALL DOOR & HARDWARE - FAB110307A,,18,448,40,0,0,0,40,0,0,0,,2025-08-29 08:00,,2025-11-25 10:00,2025-12-02 10:00,,2025-11-21 08:00,2025-11-27 17:00,2025-11-21 08:00,2025-11-27 17:00,2025-08-29 08:00,2025-09-04 17:00,2025-11-25 10:00,2025-12-02 10:00,,PT_Normal,,,,,cU1hxWhNS0C5D3qymwzJiA,a6FIJUS6QBSC7eBQe1LZsA,,,N,0,0,,,,,,,,2025-07-16 14:09,2025-11-20 21:46,ARAJSHEKAR,jleon,,N,
100236943,122698,18114892,597,0,N,1,N,N,CP_Drtn,TT_Task,DT_FixedDUR2,TK_Active,FAB110312A-04,INSTALL DOOR & HARDWARE - FAB110312A,,40,448,40,0,0,0,40,0,0,0,,2025-08-14 08:00,,2025-11-28 08:00,2025-12-04 17:00,,2025-11-21 08:00,2025-11-27 17:00,2025-11-21 08:00,2025-11-27 17:00,2025-08-14 08:00,2025-08-20 17:00,2025-11-28 08:00,2025-12-04 17:00,,PT_Normal,,,,,XJ1Yyjlnkk6VdLcrPreJ1w,mdx1IS6MRFGTwblsrvN8pQ,,,N,0,0,,,,,,,,2025-07-16 14:09,2025-11-20 21:46,ARAJSHEKAR,jleon,,N,
100236963,122698,18114894,597,0,N,1,N,N,CP_Drtn,TT_Task,DT_FixedDUR2,TK_Active,FAB110314A-04,INSTALL DOOR & HARDWARE - FAB110314A,,18,448,40,0,0,0,40,0,0,0,,2025-09-17 08:00,,2025-11-25 10:00,2025-12-02 10:00,,2025-11-21 08:00,2025-11-27 17:00,2025-11-21 08:00,2025-11-27 17:00,2025-09-17 08:00,2025-09-23 17:00,2025-11-25 10:00,2025-12-02 10:00,,PT_Normal,,,,,Webvcm8IVU+gQyWoCsBjVw,lSJkOg7dQqOeXpjqkIdB5w,,,N,0,0,,,,,,,,2025-07-16 14:09,2025-11-20 21:46,ARAJSHEKAR,jleon,,N,
100236969,122698,18114894,597,0,N,1,N,N,CP_Drtn,TT_Task,DT_FixedDUR2,TK_Active,FAB110314B-04,INSTALL DOOR & HARDWARE - FAB110314B,,18,448,40,0,0,0,40,0,0,0,,2025-09-24 08:00,,2025-11-25 10:00,2025-12-02 10:00,,2025-11-21 08:00,2025-11-27 17:00,2025-11-21 08:00,2025-11-27 17:00,2025-09-24 08:00,2025-09-30 17:00,2025-11-25 10:00,2025-12-02 10:00,,PT_Normal,,,,,lJucxYdyREitK6Cly6Rm4Q,lS5LIRjzTP61Khxj261IJA,,,N,0,0,,,,,,,,2025-07-16 14:09,2025-11-20 21:46,ARAJSHEKAR,jleon,,N,
100236985,122698,18114895,597,0,N,1,N,N,CP_Drtn,TT_Task,DT_FixedDUR2,TK_Active,FAB110313B-04,INSTALL DOOR & HARDWARE - FAB110313B,,18,448,40,0,0,0,40,0,0,0,,2025-10-20 08:00,,2025-11-25 10:00,2025-12-02 10:00,,2025-11-21 08:00,2025-11-27 17:00,2025-11-21 08:00,2025-11-27 17:00,2025-10-20 08:00,2025-10-24 17:00,2025-11-25 10:00,2025-12-02 10:00,,PT_Normal,,,,,JWUeRXlPMkWFVHslVON1aQ,Cj8eLZ4ZQKqR2DdKu+UwMA,,,N,0,0,,,,,,,,2025-07-16 14:09,2025-11-20 21:46,ARAJSHEKAR,jleon,,N,
100236992,122698,18114896,597,0,N,1,N,N,CP_Drtn,TT_Task,DT_FixedDUR2,TK_Active,TR-FAB110311A-04,INSTALL DOOR & HARDWARE - TR - FAB110311A,,32,448,40,0,0,0,40,0,0,0,,2025-09-03 08:00,,2025-11-27 08:00,2025-12-03 17:00,,2025-11-21 08:00,2025-11-27 17:00,2025-11-21 08:00,2025-11-27 17:00,2025-09-03 08:00,2025-09-09 17:00,2025-11-27 08:00,2025-12-03 17:00,,PT_Normal,,,,,WQFNUlsMJUCDJ4sl0cHRZQ,GXxziYORRDGkI8FUrSf34A,,,N,0,0,,,,,,,,2025-07-16 14:09,2025-11-20 21:46,ARAJSHEKAR,jleon,,N,
100237003,122698,18114898,597,0,N,1,N,N,CP_Drtn,TT_Task,DT_FixedDUR2,TK_Active,FAB110305A-04,INSTALL DOOR & HARDWARE - FAB110305A,,18,448,40,0,0,0,40,0,0,0,,2025-10-30 08:00,,2025-11-25 10:00,2025-12-02 10:00,,2025-11-21 08:00,2025-11-27 17:00,2025-11-21 08:00,2025-11-27 17:00,2025-10-30 08:00,2025-11-05 17:00,2025-11-25 10:00,2025-12-02 10:00,,PT_Normal,,,,,AJGEAVJtNEyD3jASlVTvlA,tQSv3U3aQpiwnManREW+3g,,,N,0,0,,,,,,,,2025-07-16 14:09,2025-11-20 21:46,ARAJSHEKAR,jleon,,N,
100237022,122698,18114899,597,0,N,1,N,N,CP_Drtn,TT_Task,DT_FixedDUR2,TK_Active,FAB110304B-04,INSTALL DOOR & HARDWARE - FAB110304B,,18,448,40,0,0,0,40,0,0,0,,2025-10-30 08:00,,2025-11-25 10:00,2025-12-02 10:00,,2025-11-21 08:00,2025-11-27 17:00,2025-11-21 08:00,2025-11-27 17:00,2025-10-30 08:00,2025-11-05 17:00,2025-11-25 10:00,2025-12-02 10:00,,PT_Normal,,,,,hY+90TVnRkSFBtldGmmMYg,6KSIvNE3SROcL9aWex20+Q,,,N,0,0,,,,,,,,2025-07-16 14:09,2025-11-20 21:46,ARAJSHEKAR,jleon,,N,
100237024,122698,18114899,597,0,N,1,N,N,CP_Drtn,TT_Task,DT_FixedDUR2,TK_Active,FAB110304D-04,INSTALL DOOR & HARDWARE - FAB110304D,,18,448,40,0,0,0,40,0,0,0,,2025-11-11 08:00,,2025-11-25 10:00,2025-12-02 10:00,,2025-11-21 08:00,2025-11-27 17:00,2025-11-21 08:00,2025-11-27 17:00,2025-11-11 08:00,2025-11-17 17:00,2025-11-25 10:00,2025-12-02 10:00,,PT_Normal,,,,,QTCRdxu5EkaHeAxk03MjNQ,94y90TeIQe+KNENrz7tNeg,,,N,0,0,,,,,,,,2025-07-16 14:09,2025-11-20 21:46,ARAJSHEKAR,jleon,,N,
100237026,122698,18114899,597,0,N,1,N,N,CP_Drtn,TT_Task,DT_FixedDUR2,TK_Active,FAB110304C-16,IMPACT - SECAI TRADE DAMAGED DOOR FRAMES - REWORK - REPAIR FRAME - FAB110304C,,-22,0,40,0,0,0,24,0,0,0,,2025-05-27 08:00,,2025-11-18 10:00,2025-11-25 10:00,,2025-11-21 08:00,2025-11-27 17:00,2025-11-21 08:00,2025-11-27 17:00,2025-06-13 08:00,2025-06-17 17:00,2025-11-18 10:00,2025-11-25 10:00,,PT_Normal,,,,,XhUeHhpRJUGUUlUxQldvHQ,1pyEmSrFSxW6462SDH4JdA,,,N,0,0,,,,,,,,2025-07-16 14:09,2025-11-20 21:59,ARAJSHEKAR,jleon,,N,
100237044,122698,18114900,597,0,N,1,N,N,CP_Drtn,TT_Task,DT_FixedDUR2,TK_Active,FAB110301C-05,PAINT & PROTECT DOORS & FRAMES - FAB110301C,,28,0,30,0,0,0,30,0,0,0,,2025-10-14 08:00,,2025-11-26 13:00,2025-12-02 10:00,,2025-11-21 08:00,2025-11-26 15:00,2025-11-21 08:00,2025-11-26 15:00,2025-10-14 08:00,2025-10-17 15:00,2025-11-26 13:00,2025-12-02 10:00,,PT_Normal,,,,,J8d8LzlN4USg2FXABYtiEg,0+yvobIHSiGKvv7l3XP7/g,,,N,0,0,,,,,,,,2025-07-16 14:09,2025-11-20 21:42,ARAJSHEKAR,jleon,,N,
100237047,122698,18114900,597,0,N,1,N,N,CP_Drtn,TT_Task,DT_FixedDUR2,TK_Active,FAB110301B-00,IOCC TO BE SUBMITTED (RFI 10986) - FAB110301B,,-72,0,8,0,0,0,100,0,0,0,,2025-07-03 07:00,,2025-11-10 08:00,2025-11-10 17:00,,2025-11-21 08:00,2025-11-21 17:00,2025-11-21 08:00,2025-11-21 17:00,2025-07-03 08:00,2025-07-21 12:00,2025-11-10 08:00,2025-11-10 17:00,,PT_Normal,,,,,R60BYeJauE6Y/Ln2JiKu8g,qIpFH4p6TniZ0hr2UuLYOA,,,N,0,0,,,,,,,,2025-07-16 14:09,2025-11-20 21:42,ARAJSHEKAR,jleon,,N,
100237052,122698,18114900,597,0,N,1,N,N,CP_Drtn,TT_Task,DT_FixedDUR2,TK_Active,FAB110301B-50,IMPACT - ROOF DRAIN LINES CONFLICT WITH SPACE REQUIRED FOR OHC MOTOR AND HOUSING - FAB110301B,,-24,48,40,0,0,0,150,0,0,0,,2025-07-03 07:00,,2025-11-18 08:00,2025-11-24 17:00,,2025-11-21 08:00,2025-11-27 17:00,2025-11-21 08:00,2025-11-27 17:00,2025-07-03 08:00,2025-07-29 15:00,2025-11-18 08:00,2025-11-24 17:00,,PT_Normal,,,,,F/Hk9fgwZE+3vVemNG/ZMw,hF9g/W9GR9i5ASUYG7ar5Q,,,N,0,0,,,,,,,,2025-07-16 14:09,2025-11-20 21:59,ARAJSHEKAR,jleon,,N,
100237053,122698,18114900,597,0,N,1,N,N,CP_Drtn,TT_Task,DT_FixedDUR2,TK_Active,FAB110301B-60,IMPACT - LVL 2 CONCRETE BEAM IN CONFLICT WITH SHOP DRAWINGS (14FT VS 14FT 1IN) - FAB110301B,,-32,40,40,0,0,0,150,0,0,0,,2025-07-03 07:00,,2025-11-17 08:00,2025-11-21 17:00,,2025-11-21 08:00,2025-11-27 17:00,2025-11-21 08:00,2025-11-27 17:00,2025-07-03 08:00,2025-07-29 15:00,2025-11-17 08:00,2025-11-21 17:00,,PT_Normal,,,,,3RZ2WEZVyEG+ttb/K1Bmmg,BlchhR2JQVCa2wE1DnLn4g,,,N,0,0,,,,,,,,2025-07-16 14:09,2025-11-20 21:59,ARAJSHEKAR,jleon,,N,
100237059,122698,18114901,597,0,N,1,N,N,CP_Drtn,TT_Task,DT_FixedDUR2,TK_Active,FAB110303A-04,INSTALL DOOR & HARDWARE - FAB110303A,,18,448,40,0,0,0,40,0,0,0,,2024-10-24 08:00,,2025-11-25 10:00,2025-12-02 10:00,,2025-11-21 08:00,2025-11-27 17:00,2025-11-21 08:00,2025-11-27 17:00,2024-10-24 08:00,2024-10-30 17:00,2025-11-25 10:00,2025-12-02 10:00,,PT_Normal,,,,,ulXBnozV+UeMB50Yrf+oUw,YFERjujLTSmUbIWhBvxsBA,,,N,0,0,,,,,,,,2025-07-16 14:09,2025-11-20 21:46,ARAJSHEKAR,jleon,,N,
100237068,122698,18114903,597,0,N,1,N,N,CP_Drtn,TT_Task,DT_FixedDUR2,TK_Active,FAB110206A-04,INSTALL DOOR & HARDWARE - FAB110206A,,18,448,40,0,0,0,40,0,0,0,,2025-10-03 08:00,,2025-11-25 10:00,2025-12-02 10:00,,2025-11-21 08:00,2025-11-27 17:00,2025-11-21 08:00,2025-11-27 17:00,2025-10-03 08:00,2025-10-09 17:00,2025-11-25 10:00,2025-12-02 10:00,,PT_Normal,,,,,gnspeGH2+U+m+R/fYuJ/Gg,iwELlUsbTz+g8ZTWmHlWfw,,,N,0,0,,,,,,,,2025-07-16 14:09,2025-11-20 21:46,ARAJSHEKAR,jleon,,N,
100237071,122698,18114903,597,0,N,1,N,N,CP_Drtn,TT_Task,DT_FixedDUR2,TK_Active,FAB110206B-04,INSTALL DOOR & HARDWARE - FAB110206B,,18,448,40,0,0,0,40,0,0,0,,2025-08-18 08:00,,2025-11-25 10:00,2025-12-02 10:00,,2025-11-21 08:00,2025-11-27 17:00,2025-11-21 08:00,2025-11-27 17:00,2025-08-18 08:00,2025-08-22 17:00,2025-11-25 10:00,2025-12-02 10:00,,PT_Normal,,,,,fxDXW31ToEuvxkofmFIamg,Rjy9eUNyREuYbGjXSiI4tA,,,N,0,0,,,,,,,,2025-07-16 14:09,2025-11-20 21:46,ARAJSHEKAR,jleon,,N,
100237079,122698,18114903,597,0,N,1,N,N,CP_Drtn,TT_Task,DT_FixedDUR2,TK_Active,FAB110122A-04,INSTALL DOOR & HARDWARE - FAB110122A,,18,448,40,0,0,0,40,0,0,0,,2025-07-25 08:00,,2025-11-25 10:00,2025-12-02 10:00,,2025-11-21 08:00,2025-11-27 17:00,2025-11-21 08:00,2025-11-27 17:00,2025-07-25 08:00,2025-07-31 17:00,2025-11-25 10:00,2025-12-02 10:00,,PT_Normal,,,,,aqR5WfiW9UacGgFA8LiLfA,e93a4aGyQ6uQuz3aB39/dQ,,,N,0,0,,,,,,,,2025-07-16 14:09,2025-11-20 21:46,ARAJSHEKAR,jleon,,N,
100237092,122698,18114801,597,0,N,1,N,N,CP_Drtn,TT_Task,DT_FixedDUR2,TK_Active,FAB110211B-04,INSTALL DOOR & HARDWARE - FAB110211B,,16,448,40,0,0,0,40,0,0,0,,2025-09-29 08:00,,2025-11-25 08:00,2025-12-01 17:00,,2025-11-21 08:00,2025-11-27 17:00,2025-11-21 08:00,2025-11-27 17:00,2025-09-29 08:00,2025-10-03 17:00,2025-11-25 08:00,2025-12-01 17:00,,PT_Normal,,,,,1wh6KfbKYEyhR8ADopD82g,rOvOjhNaShWwYe0b1R/9cQ,,,N,0,0,,,,,,,,2025-07-16 14:09,2025-11-20 21:46,ARAJSHEKAR,jleon,,N,
100237107,122698,18114905,597,0,N,1,N,N,CP_Drtn,TT_Task,DT_FixedDUR2,TK_Active,FAB110205A-04,INSTALL DOOR & HARDWARE - FAB110205A,,18,448,40,0,0,0,40,0,0,0,,2025-09-19 08:00,,2025-11-25 10:00,2025-12-02 10:00,,2025-11-21 08:00,2025-11-27 17:00,2025-11-21 08:00,2025-11-27 17:00,2025-09-19 08:00,2025-09-25 17:00,2025-11-25 10:00,2025-12-02 10:00,,PT_Normal,,,,,io62BHGFMU+ivHFzUOFrhg,AbknjCVAQ5OC2o+LKCsvpw,,,N,0,0,,,,,,,,2025-07-16 14:09,2025-11-20 21:46,ARAJSHEKAR,jleon,,N,
100237136,122698,18114906,597,0,N,1,N,N,CP_Drtn,TT_Task,DT_FixedDUR2,TK_Active,FAB110202B-04,INSTALL DOOR & HARDWARE - FAB110202B,,32,448,40,0,0,0,40,0,0,0,,2025-10-13 08:00,,2025-11-27 08:00,2025-12-03 17:00,,2025-11-21 08:00,2025-11-27 17:00,2025-11-21 08:00,2025-11-27 17:00,2025-10-13 08:00,2025-10-17 17:00,2025-11-27 08:00,2025-12-03 17:00,,PT_Normal,,,,,OL3UAqme10i1ucB7Iud4tQ,+BU7INquTamqhVZx9pRdZg,,,N,0,0,,,,,,,,2025-07-16 14:09,2025-11-20 21:46,ARAJSHEKAR,jleon,,N,
100237161,122698,18114909,597,0,N,1,N,N,CP_Drtn,TT_Task,DT_FixedDUR2,TK_Active,FAB110207A-04,INSTALL DOOR & HARDWARE - FAB110207A,,18,448,40,0,0,0,40,0,0,0,,2025-09-03 08:00,,2025-11-25 10:00,2025-12-02 10:00,,2025-11-21 08:00,2025-11-27 17:00,2025-11-21 08:00,2025-11-27 17:00,2025-09-03 08:00,2025-09-09 17:00,2025-11-25 10:00,2025-12-02 10:00,,PT_Normal,,,,,Vqcq2TCrU02IC0lI/hYvnw,JTxher6vTMix3GEvhAfBEg,,,N,0,0,,,,,,,,2025-07-16 14:09,2025-11-20 21:46,ARAJSHEKAR,jleon,,N,
100237167,122698,18114909,597,0,N,1,N,N,CP_Drtn,TT_Task,DT_FixedDUR2,TK_Active,FAB110207B-04,INSTALL DOOR & HARDWARE - FAB110207B,,18,448,40,0,0,0,40,0,0,0,,2025-09-03 08:00,,2025-11-25 10:00,2025-12-02 10:00,,2025-11-21 08:00,2025-11-27 17:00,2025-11-21 08:00,2025-11-27 17:00,2025-09-03 08:00,2025-09-09 17:00,2025-11-25 10:00,2025-12-02 10:00,,PT_Normal,,,,,dnM0zaCJ406RC4RGso7v4w,1pi6XpfsRpuwvJoMsSAu+Q,,,N,0,0,,,,,,,,2025-07-16 14:09,2025-11-20 21:46,ARAJSHEKAR,jleon,,N,
100237173,122698,18114909,597,0,N,1,N,N,CP_Drtn,TT_Task,DT_FixedDUR2,TK_Active,FAB110207C-04,INSTALL DOOR & HARDWARE - FAB110207C,,18,448,40,0,0,0,40,0,0,0,,2025-09-03 08:00,,2025-11-25 10:00,2025-12-02 10:00,,2025-11-21 08:00,2025-11-27 17:00,2025-11-21 08:00,2025-11-27 17:00,2025-09-03 08:00,2025-09-09 17:00,2025-11-25 10:00,2025-12-02 10:00,,PT_Normal,,,,,3xRReSoE9EG2m3LfWtTjNg,wo3wZzTIR6+ixLi9nPr8CA,,,N,0,0,,,,,,,,2025-07-16 14:09,2025-11-20 21:46,ARAJSHEKAR,jleon,,N,
100237180,122698,18114910,597,0,N,1,N,N,CP_Drtn,TT_Task,DT_FixedDUR2,TK_Active,FAB110204A-04,INSTALL DOOR & HARDWARE - FAB110204A,,18,448,40,0,0,0,40,0,0,0,,2025-07-11 08:00,,2025-11-25 10:00,2025-12-02 10:00,,2025-11-21 08:00,2025-11-27 17:00,2025-11-21 08:00,2025-11-27 17:00,2025-07-11 08:00,2025-07-17 17:00,2025-11-25 10:00,2025-12-02 10:00,,PT_Normal,,,,,Zurv8tomCkG6hHmtfBJRSA,kWDg2Rz4QCSGPNVXpe6WdA,,,N,0,0,,,,,,,,2025-07-16 14:09,2025-11-20 21:46,ARAJSHEKAR,jleon,,N,
100237188,122698,18114910,597,0,N,1,N,N,CP_Drtn,TT_Task,DT_FixedDUR2,TK_Active,FAB110204C-04,INSTALL DOOR & HARDWARE - FAB110204C,,18,448,40,0,0,0,40,0,0,0,,2025-09-02 08:00,,2025-11-25 10:00,2025-12-02 10:00,,2025-11-21 08:00,2025-11-27 17:00,2025-11-21 08:00,2025-11-27 17:00,2025-09-02 08:00,2025-09-08 17:00,2025-11-25 10:00,2025-12-02 10:00,,PT_Normal,,,,,Ax3ToarADkSTFW7U2GN4Tw,IYNM3eJaQF6pwPLUq5SVqA,,,N,0,0,,,,,,,,2025-07-16 14:09,2025-11-20 21:46,ARAJSHEKAR,jleon,,N,
100237235,122698,18114797,597,0,N,1,N,N,CP_Drtn,TT_Task,DT_FixedDUR2,TK_Active,FAB110111B-04,INSTALL DOOR & HARDWARE - FAB110111B,,8,448,40,0,0,0,40,0,0,0,,2025-10-15 08:00,,2025-11-24 08:00,2025-11-28 17:00,,2025-11-21 08:00,2025-11-27 17:00,2025-11-21 08:00,2025-11-27 17:00,2025-10-15 08:00,2025-10-21 17:00,2025-11-24 08:00,2025-11-28 17:00,,PT_Normal,,,,,EOwaBN7NKEa1PifI6EX7tw,C5uVno3vRMaEiYk200flOA,,,N,0,0,,,,,,,,2025-07-16 14:09,2025-11-20 21:46,ARAJSHEKAR,jleon,,N,
100237251,122698,18114946,597,0,N,1,N,N,CP_Drtn,TT_Task,DT_FixedDUR2,TK_Active,FAB110110A-04,INSTALL DOOR & HARDWARE - FAB110110A,,16,448,40,0,0,0,40,0,0,0,,2025-08-29 08:00,,2025-11-25 08:00,2025-12-01 17:00,,2025-11-21 08:00,2025-11-27 17:00,2025-11-21 08:00,2025-11-27 17:00,2025-08-29 08:00,2025-09-04 17:00,2025-11-25 08:00,2025-12-01 17:00,,PT_Normal,,,,,IdB5876y60+ACHsG7MbNyw,ifAdhipZRdCfviKqgn1l/w,,,N,0,0,,,,,,,,2025-07-16 14:09,2025-11-20 21:46,ARAJSHEKAR,jleon,,N,
100237253,122698,18114946,597,0,N,1,N,N,CP_Drtn,TT_Task,DT_FixedDUR2,TK_Active,FAB110110B-04,INSTALL DOOR & HARDWARE - FAB110110B,,16,448,40,0,0,0,40,0,0,0,,2025-10-08 08:00,,2025-11-25 08:00,2025-12-01 17:00,,2025-11-21 08:00,2025-11-27 17:00,2025-11-21 08:00,2025-11-27 17:00,2025-10-08 08:00,2025-10-14 17:00,2025-11-25 08:00,2025-12-01 17:00,,PT_Normal,,,,,FA+aIPrhZk+KLI/2s+HZGg,bwEMDLlZSzy9fRFYPU1Nvw,,,N,0,0,,,,,,,,2025-07-16 14:09,2025-11-20 21:46,ARAJSHEKAR,jleon,,N,
100237254,122698,18114946,597,0,N,1,N,N,CP_Drtn,TT_Task,DT_FixedDUR2,TK_Active,FAB110110C-04,INSTALL DOOR & HARDWARE - FAB110110C,,16,448,40,0,0,0,40,0,0,0,,2025-10-03 08:00,,2025-11-25 08:00,2025-12-01 17:00,,2025-11-21 08:00,2025-11-27 17:00,2025-11-21 08:00,2025-11-27 17:00,2025-10-03 08:00,2025-10-09 17:00,2025-11-25 08:00,2025-12-01 17:00,,PT_Normal,,,,,SeXKzhhO1kaE7tprB0eAHw,htVXS524RlC5I0VkWdP4AQ,,,N,0,0,,,,,,,,2025-07-16 14:09,2025-11-20 21:46,ARAJSHEKAR,jleon,,N,
100237255,122698,18114946,597,0,N,1,N,N,CP_Drtn,TT_Task,DT_FixedDUR2,TK_Active,FAB110110D-04,INSTALL DOOR & HARDWARE - FAB110110D,,16,448,40,0,0,0,40,0,0,0,,2025-09-09 08:00,,2025-11-25 08:00,2025-12-01 17:00,,2025-11-21 08:00,2025-11-27 17:00,2025-11-21 08:00,2025-11-27 17:00,2025-09-09 08:00,2025-09-15 17:00,2025-11-25 08:00,2025-12-01 17:00,,PT_Normal,,,,,P1eiIh05o0CEnnvJ6nhUlA,db4knAH6Qveasr242g52BQ,,,N,0,0,,,,,,,,2025-07-16 14:09,2025-11-20 21:46,ARAJSHEKAR,jleon,,N,
100237256,122698,18114946,597,0,N,1,N,N,CP_Drtn,TT_Task,DT_FixedDUR2,TK_Active,FAB110110E-04,INSTALL DOOR & HARDWARE - FAB110110E,,16,448,40,0,0,0,40,0,0,0,,2025-09-05 08:00,,2025-11-25 08:00,2025-12-01 17:00,,2025-11-21 08:00,2025-11-27 17:00,2025-11-21 08:00,2025-11-27 17:00,2025-09-05 08:00,2025-09-11 17:00,2025-11-25 08:00,2025-12-01 17:00,,PT_Normal,,,,,RIMHeEIBsUGal6I/TrgFHg,0iIjDtJlTAW6wldWGrg3gA,,,N,0,0,,,,,,,,2025-07-16 14:09,2025-11-20 21:46,ARAJSHEKAR,jleon,,N,
100237272,122698,18114948,597,0,N,1,N,N,CP_Drtn,TT_Task,DT_FixedDUR2,TK_Active,FAB110113A-04,INSTALL DOOR & HARDWARE - FAB110113A,,18,448,40,0,0,0,40,0,0,0,,2025-07-08 08:00,,2025-11-25 10:00,2025-12-02 10:00,,2025-11-21 08:00,2025-11-27 17:00,2025-11-21 08:00,2025-11-27 17:00,2025-07-08 08:00,2025-07-14 17:00,2025-11-25 10:00,2025-12-02 10:00,,PT_Normal,,,,,zGHlfRbgLEWNCPQmaI/B8g,n+IRJFzSQei7Fd4QODVL0A,,,N,0,0,,,,,,,,2025-07-16 14:09,2025-11-20 21:46,ARAJSHEKAR,jleon,,N,
100237281,122698,18114948,597,0,N,1,N,N,CP_Drtn,TT_Task,DT_FixedDUR2,TK_Active,FAB110114A-50,IMPACT - TRAPS AND TEMP DOOR TO BE REMOVED - FAB110114A,,16,0,0,0,0,0,152,0,0,0,,2025-07-03 07:00,,2025-11-24 17:00,2025-11-24 17:00,,2025-11-21 08:00,2025-11-21 08:00,2025-11-21 08:00,2025-11-21 08:00,2025-07-03 08:00,2025-07-29 17:00,2025-11-24 17:00,2025-11-24 17:00,,PT_Normal,,,,,7D1wVNo4K0u1kFgFNk9TbA,odIOpmSvTvuOnFUsZKqGAw,,,N,0,0,,,,,,,,2025-07-16 14:09,2025-11-20 21:42,ARAJSHEKAR,jleon,,N,
100237285,122698,18114948,597,0,N,1,N,N,CP_Drtn,TT_Task,DT_FixedDUR2,TK_Active,FAB110114A-60,IMPACT - ROOF DRAIN LINES CONFLICT WITH SPACE REQUIRED FOR OHC MOTOR AND HOUSING - FAB110114A,,32,16,0,0,0,0,152,0,0,0,,2025-07-03 07:00,,2025-11-26 17:00,2025-11-26 17:00,,2025-11-21 08:00,2025-11-21 08:00,2025-11-21 08:00,2025-11-21 08:00,2025-07-03 08:00,2025-07-29 17:00,2025-11-26 17:00,2025-11-26 17:00,,PT_Normal,,,,,HjK/lvlf3kO+LY5hZWmANw,Q5hO9JUWS7+t9VqWN+hELw,,,N,0,0,,,,,,,,2025-07-16 14:09,2025-11-20 21:42,ARAJSHEKAR,jleon,,N,
100237286,122698,18114948,597,0,N,1,N,N,CP_Drtn,TT_Task,DT_FixedDUR2,TK_Active,FAB110114A-70,IMPACT - MEP MATERIAL BLOCKING ACCESS - FAB110114A,,16,0,0,0,0,0,152,0,0,0,,2025-07-03 07:00,,2025-11-24 17:00,2025-11-24 17:00,,2025-11-21 08:00,2025-11-21 08:00,2025-11-21 08:00,2025-11-21 08:00,2025-07-03 08:00,2025-07-29 17:00,2025-11-24 17:00,2025-11-24 17:00,,PT_Normal,,,,,TobvYegCn0ilYmgKTTMpfw,iO64Uvs9Tme9pAbxeUix0A,,,N,0,0,,,,,,,,2025-07-16 14:09,2025-11-20 21:42,ARAJSHEKAR,jleon,,N,
100237291,122698,18114796,597,0,N,1,N,N,CP_Drtn,TT_Task,DT_FixedDUR2,TK_Active,FAB110116A-04,INSTALL DOOR & HARDWARE - FAB110116A,,18,448,40,0,0,0,40,0,0,0,,2025-10-10 08:00,,2025-11-25 10:00,2025-12-02 10:00,,2025-11-21 08:00,2025-11-27 17:00,2025-11-21 08:00,2025-11-27 17:00,2025-10-10 08:00,2025-10-16 17:00,2025-11-25 10:00,2025-12-02 10:00,,PT_Normal,,,,,FRPzHfq8M0u5TWAgbq5GWg,QjR4aQ44QG2nuK13daS28A,,,N,0,0,,,,,,,,2025-07-16 14:09,2025-11-20 21:46,ARAJSHEKAR,jleon,,N,
100237321,122698,18114912,597,0,N,1,N,N,CP_Drtn,TT_Task,DT_FixedDUR2,TK_Active,FAB110101A-04,INSTALL DOOR & HARDWARE - FAB110101A,,18,448,40,0,0,0,40,0,0,0,,2025-08-14 08:00,,2025-11-25 10:00,2025-12-02 10:00,,2025-11-21 08:00,2025-11-27 17:00,2025-11-21 08:00,2025-11-27 17:00,2025-08-14 08:00,2025-08-20 17:00,2025-11-25 10:00,2025-12-02 10:00,,PT_Normal,,,,,OSFIMUJp8UuUksaM+9luAg,AQyu4DgnTWCZDGJKIggLow,,,N,0,0,,,,,,,,2025-07-16 14:09,2025-11-20 21:46,ARAJSHEKAR,jleon,,N,
100237332,122698,18114955,597,0,N,1,N,N,CP_Drtn,TT_Task,DT_FixedDUR2,TK_Active,FAB110118A-04,INSTALL DOOR & HARDWARE - FAB110118A,,18,448,40,0,0,0,40,0,0,0,,2025-08-19 08:00,,2025-11-25 10:00,2025-12-02 10:00,,2025-11-21 08:00,2025-11-27 17:00,2025-11-21 08:00,2025-11-27 17:00,2025-08-19 08:00,2025-08-25 17:00,2025-11-25 10:00,2025-12-02 10:00,,PT_Normal,,,,,LPhhfmY9hEyHtHB3p8UM4w,41drtZGIQAmmrwP2iMaIng,,,N,0,0,,,,,,,,2025-07-16 14:09,2025-11-20 21:46,ARAJSHEKAR,jleon,,N,
100237343,122698,18114957,597,0,N,1,N,N,CP_Drtn,TT_Task,DT_FixedDUR2,TK_Active,FAB110117A-04,INSTALL DOOR & HARDWARE - FAB110117A,,18,448,40,0,0,0,40,0,0,0,,2025-10-10 08:00,,2025-11-25 10:00,2025-12-02 10:00,,2025-11-21 08:00,2025-11-27 17:00,2025-11-21 08:00,2025-11-27 17:00,2025-10-10 08:00,2025-10-16 17:00,2025-11-25 10:00,2025-12-02 10:00,,PT_Normal,,,,,IRcl+WJoYEGI1mHFLE8t+Q,x7JkTMQcQQiLeBlfC42ZGw,,,N,0,0,,,,,,,,2025-07-16 14:09,2025-11-20 21:46,ARAJSHEKAR,jleon,,N,
100237352,122698,18114959,597,0,N,1,N,N,CP_Drtn,TT_Task,DT_FixedDUR2,TK_Active,FAB110115A-04,INSTALL DOOR & HARDWARE - FAB110115A,,18,448,40,0,0,0,40,0,0,0,,2025-10-24 08:00,,2025-11-25 10:00,2025-12-02 10:00,,2025-11-21 08:00,2025-11-27 17:00,2025-11-21 08:00,2025-11-27 17:00,2025-10-24 08:00,2025-10-30 17:00,2025-11-25 10:00,2025-12-02 10:00,,PT_Normal,,,,,4XkEvVTxX0Oq9S2lWQcu3w,oiy6/Vc3TAOMBoT5Y283bA,,,N,0,0,,,,,,,,2025-07-16 14:09,2025-11-20 21:46,ARAJSHEKAR,jleon,,N,
100237367,122698,18114966,597,0,N,1,N,N,CP_Drtn,TT_Task,DT_FixedDUR2,TK_Active,FAB110102A-04,INSTALL DOOR & HARDWARE - FAB110102A,,18,448,40,0,0,0,40,0,0,0,,2025-09-25 08:00,,2025-11-25 10:00,2025-12-02 10:00,,2025-11-21 08:00,2025-11-27 17:00,2025-11-21 08:00,2025-11-27 17:00,2025-09-25 08:00,2025-10-01 17:00,2025-11-25 10:00,2025-12-02 10:00,,PT_Normal,,,,,K6ljkmSPU0ySFWQK8xg//g,AG12EA91Qum5uQzhol9DuQ,,,N,0,0,,,,,,,,2025-07-16 14:09,2025-11-20 21:46,ARAJSHEKAR,jleon,,N,
100237377,122698,18114967,597,0,N,1,N,N,CP_Drtn,TT_Task,DT_FixedDUR2,TK_Active,FAB110103A-04,INSTALL DOOR & HARDWARE - FAB110103A,,18,448,40,0,0,0,40,0,0,0,,2025-09-19 08:00,,2025-11-25 10:00,2025-12-02 10:00,,2025-11-21 08:00,2025-11-27 17:00,2025-11-21 08:00,2025-11-27 17:00,2025-09-19 08:00,2025-09-25 17:00,2025-11-25 10:00,2025-12-02 10:00,,PT_Normal,,,,,2Ous52IF30WJQ0EshQqmVA,zSpnp3lRQTK66vUcjSsbTQ,,,N,0,0,,,,,,,,2025-07-16 14:09,2025-11-20 21:46,ARAJSHEKAR,jleon,,N,
100237388,122698,18114972,597,0,N,1,N,N,CP_Drtn,TT_Task,DT_FixedDUR2,TK_Active,TR-FAB110109A-04,INSTALL DOOR & HARDWARE - TR - FAB110109A,,18,448,40,0,0,0,40,0,0,0,,2025-09-26 08:00,,2025-11-25 10:00,2025-12-02 10:00,,2025-11-21 08:00,2025-11-27 17:00,2025-11-21 08:00,2025-11-27 17:00,2025-09-26 08:00,2025-10-02 17:00,2025-11-25 10:00,2025-12-02 10:00,,PT_Normal,,,,,NRvNci7dMECWLyoFm4s6Lg,Cn4o+8fDS02uiqZkm45XXA,,,N,0,0,,,,,,,,2025-07-16 14:09,2025-11-20 21:46,ARAJSHEKAR,jleon,,N,
100237394,122698,18114973,597,0,N,1,N,N,CP_Drtn,TT_Task,DT_FixedDUR2,TK_Active,FAB112104A-00,SECAI SCP WALL FINISH - FAB112104A,,-96,0,48,0,0,0,8,0,0,0,,2025-08-22 13:00,,2025-11-25 08:00,2025-12-02 17:00,,2025-12-11 08:00,2025-12-18 17:00,2025-12-11 08:00,2025-12-18 17:00,2025-08-22 13:00,2025-08-25 12:00,2025-11-25 08:00,2025-12-02 17:00,,PT_Normal,,,,,BNCvvphoR0eKTwWj2RwIng,iQFXzxJQThee5bLTXlt3Eg,,,N,0,0,,,,,,,,2025-07-16 14:09,2025-11-20 21:59,ARAJSHEKAR,jleon,,N,
100237412,122698,18114913,597,0,N,1,N,N,CP_Drtn,TT_Task,DT_FixedDUR2,TK_Active,FAB110214A-04,INSTALL DOOR & HARDWARE - FAB110214A,,18,448,40,0,0,0,40,0,0,0,,2025-09-09 08:00,,2025-11-25 10:00,2025-12-02 10:00,,2025-11-21 08:00,2025-11-27 17:00,2025-11-21 08:00,2025-11-27 17:00,2025-09-09 08:00,2025-09-15 17:00,2025-11-25 10:00,2025-12-02 10:00,,PT_Normal,,,,,PWrthgl0K0u+5NSq2U9T9Q,mRlWKCwTQfaNNAyEZB0Yrg,,,N,0,0,,,,,,,,2025-07-16 14:09,2025-11-20 21:46,ARAJSHEKAR,jleon,,N,
100237438,122698,18114916,597,0,N,1,N,N,CP_Drtn,TT_Task,DT_FixedDUR2,TK_Active,FAB1-ST03A-04,INSTALL DOOR & HARDWARE - FAB1-ST03A,,16,448,40,0,0,0,40,0,0,0,,2025-10-13 08:00,,2025-11-25 08:00,2025-12-01 17:00,,2025-11-21 08:00,2025-11-27 17:00,2025-11-21 08:00,2025-11-27 17:00,2025-10-13 08:00,2025-10-17 17:00,2025-11-25 08:00,2025-12-01 17:00,,PT_Normal,,,,,n/glka1vRkGIujXjtP8OMw,qgx7niRxTS6nTkhnA57roA,,,N,0,0,,,,,,,,2025-07-16 14:09,2025-11-20 21:46,ARAJSHEKAR,jleon,,N,
100237448,122698,18114917,597,0,N,1,N,N,CP_Drtn,TT_Task,DT_FixedDUR2,TK_Active,FAB1-ST20A-04,INSTALL DOOR & HARDWARE - FAB1-ST20A,,16,448,40,0,0,0,40,0,0,0,,2025-10-28 08:00,,2025-11-25 08:00,2025-12-01 17:00,,2025-11-21 08:00,2025-11-27 17:00,2025-11-21 08:00,2025-11-27 17:00,2025-10-28 08:00,2025-11-03 17:00,2025-11-25 08:00,2025-12-01 17:00,,PT_Normal,,,,,XFDLKLplvkiWXjY8dtPy3g,tmOmdnrESzWk0C41X4hD8Q,,,N,0,0,,,,,,,,2025-07-16 14:09,2025-11-20 21:46,ARAJSHEKAR,jleon,,N,
100237459,122698,18114918,597,0,N,1,N,N,CP_Drtn,TT_Task,DT_FixedDUR2,TK_Active,FAB1-ST21A-04,INSTALL DOOR & HARDWARE - FAB1-ST21A,,16,448,40,0,0,0,40,0,0,0,,2025-11-07 08:00,,2025-11-25 08:00,2025-12-01 17:00,,2025-11-21 08:00,2025-11-27 17:00,2025-11-21 08:00,2025-11-27 17:00,2025-11-07 08:00,2025-11-13 17:00,2025-11-25 08:00,2025-12-01 17:00,,PT_Normal,,,,,N1tcWAUJMkyyF322xESaVA,KDxyoToZSvWGW0YFdNAvLg,,,N,0,0,,,,,,,,2025-07-16 14:09,2025-11-20 21:46,ARAJSHEKAR,jleon,,N,
100237468,122698,18114919,597,0,N,1,N,N,CP_Drtn,TT_Task,DT_FixedDUR2,TK_Active,FAB1-ST04A-04,INSTALL DOOR & HARDWARE - FAB1-ST04A,,16,448,40,0,0,0,40,0,0,0,,2025-09-29 08:00,,2025-11-25 08:00,2025-12-01 17:00,,2025-11-21 08:00,2025-11-27 17:00,2025-11-21 08:00,2025-11-27 17:00,2025-09-29 08:00,2025-10-03 17:00,2025-11-25 08:00,2025-12-01 17:00,,PT_Normal,,,,,C9ls+AJtdkidYMYD67tQKg,omgcv19bSkaWHQX/5ZGmAA,,,N,0,0,,,,,,,,2025-07-16 14:09,2025-11-20 21:46,ARAJSHEKAR,jleon,,N,
100237475,122698,18114920,597,0,N,1,N,N,CP_Drtn,TT_Task,DT_FixedDUR2,TK_Active,FAB1-ST19A-04,INSTALL DOOR & HARDWARE - FAB1-ST19A,,16,448,40,0,0,0,40,0,0,0,,2025-11-07 08:00,,2025-11-25 08:00,2025-12-01 17:00,,2025-11-21 08:00,2025-11-27 17:00,2025-11-21 08:00,2025-11-27 17:00,2025-11-07 08:00,2025-11-13 17:00,2025-11-25 08:00,2025-12-01 17:00,,PT_Normal,,,,,C4kG6qUwtUixIEGhejAV+w,sCGQjTZOQy2dNne2eqv/kg,,,N,0,0,,,,,,,,2025-07-16 14:09,2025-11-20 21:46,ARAJSHEKAR,jleon,,N,
100237511,122698,18114802,597,0,N,1,N,N,CP_Drtn,TT_Task,DT_FixedDUR2,TK_Active,FAB110208B-00,IOCC TO BE SUBMITTED (RFI 10986) - FAB110208B,,8,0,8,0,0,0,100,0,0,0,,2025-07-03 07:00,,2025-11-24 08:00,2025-11-24 17:00,,2025-11-21 08:00,2025-11-21 17:00,2025-11-21 08:00,2025-11-21 17:00,2025-07-03 08:00,2025-07-21 12:00,2025-11-24 08:00,2025-11-24 17:00,,PT_Normal,,,,,2hq++rsjy0iQNzVOBM9oYg,s9iAhHWcQZCso1Lc1QfzHg,,,N,0,0,,,,,,,,2025-07-16 14:09,2025-11-20 21:42,ARAJSHEKAR,jleon,,N,
100237513,122698,18114802,597,0,N,1,N,N,CP_Drtn,TT_Task,DT_FixedDUR2,TK_Active,FAB110208B-50,IMPACT - TRAPS TO BE REMOVED - FAB110208B,,16,8,40,0,0,0,150,0,0,0,,2025-07-03 07:00,,2025-11-25 08:00,2025-12-01 17:00,,2025-11-21 08:00,2025-11-27 17:00,2025-11-21 08:00,2025-11-27 17:00,2025-07-03 08:00,2025-07-29 15:00,2025-11-25 08:00,2025-12-01 17:00,,PT_Normal,,,,,Any89L+8z0yhSEq2JR+BJw,vQPlX2uCTMWp+PqxsCkHtA,,,N,0,0,,,,,,,,2025-07-16 14:09,2025-11-20 21:59,ARAJSHEKAR,jleon,,N,
100237517,122698,18114802,597,0,N,1,N,N,CP_Drtn,TT_Task,DT_FixedDUR2,TK_Active,FAB110208B-60,IMPACT - MEP LINES CONFLICT WITH SPACE REQUIRED FOR OHC MOTOR AND HOUSING - FAB110208B,,32,24,40,0,0,0,150,0,0,0,,2025-07-03 07:00,,2025-11-27 08:00,2025-12-03 17:00,,2025-11-21 08:00,2025-11-27 17:00,2025-11-21 08:00,2025-11-27 17:00,2025-07-03 08:00,2025-07-29 15:00,2025-11-27 08:00,2025-12-03 17:00,,PT_Normal,,,,,eJm2u1fwpEynrpphwyK2mg,yM2PoH1sQuuUuQSNDCHCsQ,,,N,0,0,,,,,,,,2025-07-16 14:09,2025-11-20 21:59,ARAJSHEKAR,jleon,,N,
100237518,122698,18114802,597,0,N,1,N,N,CP_Drtn,TT_Task,DT_FixedDUR2,TK_Active,FAB110208B-55,IMPACT - LVL 2 CONCRETE BEAM IN CONFLICT WITH SHOP DRAWINGS (14FT VS 14FT 1IN) - FAB110208B,,16,8,40,0,0,0,150,0,0,0,,2025-07-03 07:00,,2025-11-25 08:00,2025-12-01 17:00,,2025-11-21 08:00,2025-11-27 17:00,2025-11-21 08:00,2025-11-27 17:00,2025-07-03 08:00,2025-07-29 15:00,2025-11-25 08:00,2025-12-01 17:00,,PT_Normal,,,,,W0qhKs1bs0aQgDEWwKtpOg,W7zeBkX5QlOtdSlKn7scng,,,N,0,0,,,,,,,,2025-07-16 14:09,2025-11-20 21:59,ARAJSHEKAR,jleon,,N,
100237519,122698,18114802,597,0,N,1,N,N,CP_Drtn,TT_Task,DT_FixedDUR2,TK_Active,FAB110208B-70,IMPACT - EXTERIOR CIVIL WORK IN CONFLICT IN FRONT OF OPENING - FAB110208B,,16,8,40,0,0,0,150,0,0,0,,2025-07-03 07:00,,2025-11-25 08:00,2025-12-01 17:00,,2025-11-21 08:00,2025-11-27 17:00,2025-11-21 08:00,2025-11-27 17:00,2025-07-03 08:00,2025-07-29 15:00,2025-11-25 08:00,2025-12-01 17:00,,PT_Normal,,,,,Jy9vb9x/HEmLJFR0DrX5GA,tGB21QqaQhWe/QvV2hMUvw,,,N,0,0,,,,,,,,2025-07-16 14:09,2025-11-20 21:59,ARAJSHEKAR,jleon,,N,
100237521,122698,18114808,597,0,N,1,N,N,CP_Drtn,TT_Task,DT_FixedDUR2,TK_Active,FAB110501A-04,INSTALL DOOR & HARDWARE - FAB110501A,,18,448,40,0,0,0,40,0,0,0,,2025-10-22 08:00,,2025-11-25 10:00,2025-12-02 10:00,,2025-11-21 08:00,2025-11-27 17:00,2025-11-21 08:00,2025-11-27 17:00,2025-10-22 08:00,2025-10-28 17:00,2025-11-25 10:00,2025-12-02 10:00,,PT_Normal,,,,,6sPPxVVq+Uqi1+CsFMqHwg,K7/fgrmrRJC/o9JUXbcdQg,,,N,0,0,,,,,,,,2025-07-16 14:09,2025-11-20 21:46,ARAJSHEKAR,jleon,,N,
100237583,122698,18114806,597,0,N,1,N,N,CP_Drtn,TT_Task,DT_FixedDUR2,TK_Active,FAB110409C-04,INSTALL DOOR & HARDWARE - FAB110409C,,18,448,40,0,0,0,40,0,0,0,,2025-11-05 08:00,,2025-11-25 10:00,2025-12-02 10:00,,2025-11-21 08:00,2025-11-27 17:00,2025-11-21 08:00,2025-11-27 17:00,2025-11-05 08:00,2025-11-11 17:00,2025-11-25 10:00,2025-12-02 10:00,,PT_Normal,,,,,iqGjVOz6kEq12aS2ErATnw,L9CC7Ic+RqS46jmDmseXcA,,,N,0,0,,,,,,,,2025-07-16 14:09,2025-11-20 21:46,ARAJSHEKAR,jleon,,N,
100237588,122698,18114806,597,0,N,1,N,N,CP_Drtn,TT_Task,DT_FixedDUR2,TK_Active,FAB110409D-04,INSTALL DOOR & HARDWARE - FAB110409D,,18,448,40,0,0,0,40,0,0,0,,2025-11-05 08:00,,2025-11-25 10:00,2025-12-02 10:00,,2025-11-21 08:00,2025-11-27 17:00,2025-11-21 08:00,2025-11-27 17:00,2025-11-05 08:00,2025-11-11 17:00,2025-11-25 10:00,2025-12-02 10:00,,PT_Normal,,,,,TQaVbLODIE+oODbF+nMoZA,hjV3914CTD+APTGqHKzkcQ,,,N,0,0,,,,,,,,2025-07-16 14:09,2025-11-20 21:46,ARAJSHEKAR,jleon,,N,
100237613,122698,18114807,597,0,N,1,N,N,CP_Drtn,TT_Task,DT_FixedDUR2,TK_Active,FAB110408C-04,INSTALL DOOR & HARDWARE - FAB110408C,,18,448,40,0,0,0,40,0,0,0,,2025-11-14 08:00,,2025-11-25 10:00,2025-12-02 10:00,,2025-11-21 08:00,2025-11-27 17:00,2025-11-21 08:00,2025-11-27 17:00,2025-11-14 08:00,2025-11-20 17:00,2025-11-25 10:00,2025-12-02 10:00,,PT_Normal,,,,,RN0P4ECVtk6WLH6WtA5upA,gL2j3Y86SlyjEol2gxispA,,,N,0,0,,,,,,,,2025-07-16 14:09,2025-11-20 21:46,ARAJSHEKAR,jleon,,N,
100237634,122698,18114809,597,0,N,1,N,N,CP_Drtn,TT_Task,DT_FixedDUR2,TK_Active,FAB110511A-04,INSTALL DOOR & HARDWARE - FAB110511A,,18,448,40,0,0,0,40,0,0,0,,2025-11-04 08:00,,2025-11-25 10:00,2025-12-02 10:00,,2025-11-21 08:00,2025-11-27 17:00,2025-11-21 08:00,2025-11-27 17:00,2025-11-04 08:00,2025-11-10 17:00,2025-11-25 10:00,2025-12-02 10:00,,PT_Normal,,,,,2q/B7wqmkk+tVMk5j2lDWg,gqsPXnrwQ/qT/NwpRkKe5A,,,N,0,0,,,,,,,,2025-07-16 14:09,2025-11-20 21:46,ARAJSHEKAR,jleon,,N,
100237643,122698,18114795,597,0,N,1,N,N,CP_Drtn,TT_Task,DT_FixedDUR2,TK_Active,FAB112103A-04,INSTALL DOOR & HARDWARE - FAB112103A,,18,448,40,0,0,0,40,0,0,0,,2025-08-19 08:00,,2025-11-25 10:00,2025-12-02 10:00,,2025-11-21 08:00,2025-11-27 17:00,2025-11-21 08:00,2025-11-27 17:00,2025-08-19 08:00,2025-08-25 17:00,2025-11-25 10:00,2025-12-02 10:00,,PT_Normal,,,,,mIZ1nY4Y+UuwWUs7hlAx0w,CmfhHHz2RVmOUrF3p52v2Q,,,N,0,0,,,,,,,,2025-07-16 14:09,2025-11-20 21:46,ARAJSHEKAR,jleon,,N,
100237647,122698,18114795,597,0,N,1,N,N,CP_Drtn,TT_Task,DT_FixedDUR2,TK_Active,FAB112103B-04,INSTALL DOOR & HARDWARE - FAB112103B,,18,448,40,0,0,0,40,0,0,0,,2025-08-12 08:00,,2025-11-25 10:00,2025-12-02 10:00,,2025-11-21 08:00,2025-11-27 17:00,2025-11-21 08:00,2025-11-27 17:00,2025-08-12 08:00,2025-08-18 17:00,2025-11-25 10:00,2025-12-02 10:00,,PT_Normal,,,,,7rRWtxYjcEW7+3Ko+QSX3Q,On+cf0V2Tmm8rvLB/tfTRQ,,,N,0,0,,,,,,,,2025-07-16 14:09,2025-11-20 21:46,ARAJSHEKAR,jleon,,N,
100237655,122698,18114795,597,0,N,1,N,N,CP_Drtn,TT_Task,DT_FixedDUR2,TK_Active,FAB112103C-00,SECAI SCP WALL FINISH - FAB112103C,,-96,0,48,0,0,0,10,0,0,0,,2025-09-01 08:00,,2025-11-05 08:00,2025-11-12 17:00,,2025-11-21 08:00,2025-11-28 17:00,2025-11-21 08:00,2025-11-28 17:00,2025-09-01 08:00,2025-09-02 10:00,2025-11-05 08:00,2025-11-12 17:00,,PT_Normal,,,,,ju8zHr5X70Oa3nd549WzBA,/ijIYxU1QVm/STZ3Z8sM5g,,,N,0,0,,,,,,,,2025-07-16 14:09,2025-11-20 21:59,ARAJSHEKAR,jleon,,N,
100237663,122698,18114929,597,0,N,1,N,N,CP_Drtn,TT_Task,DT_FixedDUR2,TK_Active,FAB116410A-04,INSTALL DOOR & HARDWARE - FAB116410A,,18,448,40,0,0,0,40,0,0,0,,2025-08-26 08:00,,2025-11-25 10:00,2025-12-02 10:00,,2025-11-21 08:00,2025-11-27 17:00,2025-11-21 08:00,2025-11-27 17:00,2025-08-26 08:00,2025-09-01 17:00,2025-11-25 10:00,2025-12-02 10:00,,PT_Normal,,,,,7v6p9hGZjUm3RN3zjGWM3A,Eq/Kn2MxTSWlZG7s/6oXng,,,N,0,0,,,,,,,,2025-07-16 14:09,2025-11-20 21:46,ARAJSHEKAR,jleon,,N,
100237667,122698,18114929,597,0,N,1,N,N,CP_Drtn,TT_Task,DT_FixedDUR2,TK_Active,FAB116410B-04,INSTALL DOOR & HARDWARE - FAB116410B,,18,448,40,0,0,0,40,0,0,0,,2025-08-13 08:00,,2025-11-25 10:00,2025-12-02 10:00,,2025-11-21 08:00,2025-11-27 17:00,2025-11-21 08:00,2025-11-27 17:00,2025-08-13 08:00,2025-08-19 17:00,2025-11-25 10:00,2025-12-02 10:00,,PT_Normal,,,,,ktfGuhkV+kCOYyJa3VSsQw,cgYrE6ZoSSaa6JQAYoZz5Q,,,N,0,0,,,,,,,,2025-07-16 14:09,2025-11-20 21:46,ARAJSHEKAR,jleon,,N,
100237703,122698,18114964,597,0,N,1,N,N,CP_Drtn,TT_Task,DT_FixedDUR2,TK_Active,FAB114107C-04,INSTALL DOOR & HARDWARE - FAB114107C - P1,,18,448,40,0,0,0,40,0,0,0,,2025-10-30 08:00,,2025-11-25 10:00,2025-12-02 10:00,,2025-11-21 08:00,2025-11-27 17:00,2025-11-21 08:00,2025-11-27 17:00,2025-10-30 08:00,2025-11-05 17:00,2025-11-25 10:00,2025-12-02 10:00,,PT_Normal,,,,,o4tdsd2fXUeZaJ7bz3Z2eA,SeCH+CEWSPqvcqwgCDs1fg,,,N,0,0,,,,,,,,2025-07-16 14:09,2025-11-20 21:46,ARAJSHEKAR,jleon,,N,
100237709,122698,18114964,597,0,N,1,N,N,CP_Drtn,TT_Task,DT_FixedDUR2,TK_Active,FAB114107B-04,INSTALL DOOR & HARDWARE - FAB114107B,,18,448,40,0,0,0,40,0,0,0,,2025-08-29 08:00,,2025-11-25 10:00,2025-12-02 10:00,,2025-11-21 08:00,2025-11-27 17:00,2025-11-21 08:00,2025-11-27 17:00,2025-08-29 08:00,2025-09-04 17:00,2025-11-25 10:00,2025-12-02 10:00,,PT_Normal,,,,,f+hLJvVPe02PKYrQHZWzuA,p6WifxYHRZe85BUhSJgV5g,,,N,0,0,,,,,,,,2025-07-16 14:09,2025-11-20 21:46,ARAJSHEKAR,jleon,,N,
100237713,122698,18114975,597,0,N,1,N,N,CP_Drtn,TT_Task,DT_FixedDUR2,TK_Active,FAB112102A-00,SECAI SCP WALL FINISH - FAB112102A,,-96,0,48,0,0,0,10,0,0,0,,2025-08-26 10:00,,2025-11-17 08:00,2025-11-24 17:00,,2025-12-03 08:00,2025-12-10 17:00,2025-12-03 08:00,2025-12-10 17:00,2025-08-26 10:00,2025-08-27 12:00,2025-11-17 08:00,2025-11-24 17:00,,PT_Normal,,,,,aBQ8mibeukO9x1z9qd7YaQ,yRnu1yVJRiKVYCjVCgg/Ag,,,N,0,0,,,,,,,,2025-07-16 14:09,2025-11-20 21:59,ARAJSHEKAR,jleon,,N,
100237716,122698,18114976,597,0,N,1,N,N,CP_Drtn,TT_Task,DT_FixedDUR2,TK_Active,FAB112105A-00,SECAI SCP WALL FINISH - FAB112105A,,16,0,48,0,0,0,8,0,0,0,,2025-08-29 08:00,,2025-11-25 08:00,2025-12-02 17:00,,2025-11-21 08:00,2025-11-28 17:00,2025-11-21 08:00,2025-11-28 17:00,2025-08-29 08:00,2025-08-29 17:00,2025-11-25 08:00,2025-12-02 17:00,,PT_Normal,,,,,r/HQylLiEEqsHIJROcC8ZA,mzfu4qBlR5KPMRwu4gYdGA,,,N,0,0,,,,,,,,2025-07-16 14:09,2025-11-20 21:59,ARAJSHEKAR,jleon,,N,
100909970,122698,18114023,363246,0,N,1,N,N,CP_Drtn,TT_Task,DT_FixedDUR2,TK_Active,CN.SWB3.6261,IMPACT - SECAI ELEVATOR ACCESS - GL 19-16 - N LINE,,-50,0,40,0,0,0,50,0,0,0,,2025-07-01 07:00,,2025-11-14 07:00,2025-11-19 17:00,,2025-11-21 07:00,2025-11-26 17:00,2025-11-21 07:00,2025-11-26 17:00,2025-07-18 07:00,2025-07-24 17:00,2025-11-14 07:00,2025-11-19 17:00,,PT_Normal,,,,,MV8wukP5IkOVk6IO49CREQ,zEhpHhzTJUS87CYwKzGA+g,,,N,0,0,,,,,,,,2025-07-18 20:41,2025-11-20 21:42,ARAJSHEKAR,jleon,,N,
100909977,122698,18115118,597,0,N,1,N,N,CP_Drtn,TT_Task,DT_FixedDUR2,TK_Active,FAB126507A-04,INSTALL DOOR & HARDWARE - FAB126507A,,18,448,40,0,0,0,40,0,0,0,,2025-05-08 08:00,,2025-11-25 10:00,2025-12-02 10:00,,2025-11-21 08:00,2025-11-27 17:00,2025-11-21 08:00,2025-11-27 17:00,2025-05-08 08:00,2025-05-14 17:00,2025-11-25 10:00,2025-12-02 10:00,,PT_Normal,,,,,1nEvgaJdZkO/AGgTpRnErA,Z9Bj7AgsO0apU6gB3H47YQ,,,N,0,0,,,,,,,,2025-07-19 13:07,2025-11-20 21:46,jleon,jleon,,N,
100909993,122698,18114942,597,0,N,1,N,N,CP_Drtn,TT_Task,DT_FixedDUR2,TK_Active,FAB110112A-04,INSTALL DOOR & HARDWARE - FAB110112A,,18,448,40,0,0,0,40,0,0,0,,2025-07-08 08:00,,2025-11-25 10:00,2025-12-02 10:00,,2025-11-21 08:00,2025-11-27 17:00,2025-11-21 08:00,2025-11-27 17:00,2025-07-08 08:00,2025-07-14 17:00,2025-11-25 10:00,2025-12-02 10:00,,PT_Normal,,,,,3q3oxlS4QE2xL0kXWF9hvQ,0lO7S+fKfEqc1oGM5DhWmQ,,,N,0,0,,,,,,,,2025-07-19 14:24,2025-11-20 21:46,jleon,jleon,,N,
100910005,122698,18114923,597,0,N,1,N,N,CP_Drtn,TT_Task,DT_FixedDUR2,TK_Active,FAB110310A-04,INSTALL DOOR & HARDWARE - FAB110310A,,16,448,40,0,0,0,40,0,0,0,,2025-09-08 08:00,,2025-11-25 08:00,2025-12-01 17:00,,2025-11-21 08:00,2025-11-27 17:00,2025-11-21 08:00,2025-11-27 17:00,2025-09-08 08:00,2025-09-12 17:00,2025-11-25 08:00,2025-12-01 17:00,,PT_Normal,,,,,vuZJFJwdnEagjBE7Y5EctA,C9ls+AJtdkidYMYD67tQKg,,,N,0,0,,,,,,,,2025-07-19 14:51,2025-11-20 21:46,jleon,jleon,,N,
100910011,122698,18114783,597,0,N,1,N,N,CP_Drtn,TT_Task,DT_FixedDUR2,TK_Active,FAB132101C-04,INSTALL DOOR & HARDWARE - FAB132101C,,16,448,40,0,0,0,40,0,0,0,,2025-11-18 08:00,,2025-11-25 08:00,2025-12-01 17:00,,2025-11-21 08:00,2025-11-27 17:00,2025-11-21 08:00,2025-11-27 17:00,2025-11-18 08:00,2025-11-24 17:00,2025-11-25 08:00,2025-12-01 17:00,,PT_Normal,,,,,dz3y30h6f0qKLgTFnPCyJg,N/BTwLTqFkix4NB4PCt5uQ,,,N,0,0,,,,,,,,2025-07-19 15:00,2025-11-20 21:46,jleon,jleon,,N,
100910017,122698,18115003,597,0,N,1,N,N,CP_Drtn,TT_Task,DT_FixedDUR2,TK_Active,FAB146109A-04,INSTALL DOOR & HARDWARE - FAB146109A,,18,448,40,0,0,0,40,0,0,0,,2025-11-10 08:00,,2025-11-25 10:00,2025-12-02 10:00,,2025-11-21 08:00,2025-11-27 17:00,2025-11-21 08:00,2025-11-27 17:00,2025-11-10 08:00,2025-11-14 17:00,2025-11-25 10:00,2025-12-02 10:00,,PT_Normal,,,,,iiITB92R0EGJg77bw+nE0g,Wej8vB5wlESEl13PotBVmQ,,,N,0,0,,,,,,,,2025-07-19 15:43,2025-11-20 21:46,jleon,jleon,,N,
100910020,122698,18115061,597,0,N,1,N,N,CP_Drtn,TT_Task,DT_FixedDUR2,TK_Active,FAB120108A-03,INSTALL DOOR FRAME BY SECAI - FAB120108A HANDED OVER ON 06/27,,-22,0,40,0,0,0,200,0,0,0,,2025-06-27 08:00,,2025-11-18 10:00,2025-11-25 10:00,,2025-11-21 08:00,2025-11-27 17:00,2025-11-21 08:00,2025-11-27 17:00,2025-06-27 08:00,2025-07-31 17:00,2025-11-18 10:00,2025-11-25 10:00,,PT_Normal,,,,,TJc9RYXDhUu0nJO2ML/DZg,mWfMfmtTi0+6Ysf2tM3RrQ,,,N,0,0,,,,,,,,2025-07-19 16:09,2025-11-20 21:42,jleon,jleon,,N,
100910021,122698,18115061,597,0,N,1,N,N,CP_Drtn,TT_Task,DT_FixedDUR2,TK_Active,FAB120108E-03,INSTALL DOOR FRAME BY SECAI - FAB120108E HANDED OVER ON 08/29,,-30,0,48,0,0,0,8,0,0,0,,2025-08-29 08:00,,2025-11-17 10:00,2025-11-25 10:00,,2025-11-21 08:00,2025-11-28 17:00,2025-11-21 08:00,2025-11-28 17:00,2025-08-29 08:00,2025-08-29 17:00,2025-11-17 10:00,2025-11-25 10:00,,PT_Normal,,,,,03+LPobf90WtW3kA2di16Q,mWfMfmtTi0+6Ysf2tM3RrQ,,,N,0,0,,,,,,,,2025-07-19 16:09,2025-11-20 21:59,jleon,jleon,,N,
100910026,122698,18115084,597,0,N,1,N,N,CP_Drtn,TT_Task,DT_FixedDUR2,TK_Active,FAB120503B-03,INSTALL DOOR FRAME BY SECAI - FAB120503B HANDED OVER ON 08/29,,-30,0,48,0,0,0,8,0,0,0,,2025-08-29 08:00,,2025-11-17 10:00,2025-11-25 10:00,,2025-11-21 08:00,2025-11-28 17:00,2025-11-21 08:00,2025-11-28 17:00,2025-08-29 08:00,2025-08-29 17:00,2025-11-17 10:00,2025-11-25 10:00,,PT_Normal,,,,,vt29tdgZ+0eRx+bawowwpA,q0rZgu85OEq7IP7kERLJ/w,,,N,0,0,,,,,,,,2025-07-19 16:25,2025-11-20 21:59,jleon,jleon,,N,
101202662,122698,18114023,363246,0,N,1,N,N,CP_Drtn,TT_Task,DT_FixedDUR2,TK_Active,CN.SEB1.10900,BRAZOS INSTALL EDGE METAL & MEMBRANE - GL 19-28 - A LINE - L4 ROOF,,60,360,30,0,0,0,140,0,0,0,,2025-07-14 07:00,,2025-12-03 07:00,2025-12-05 17:00,,2025-11-21 07:00,2025-11-25 17:00,2025-11-21 07:00,2025-11-25 17:00,2025-07-03 07:00,2025-07-23 17:00,2025-12-03 07:00,2025-12-05 17:00,,PT_Normal,,,,,v/OCB9qJhk+BJIHAW4UEbQ,HcN201JZzk2XHSVvxBJygw,,,N,0,0,,,,,,,,2025-07-22 20:35,2025-11-20 21:42,ARAJSHEKAR,jleon,,N,
102397565,122698,18115058,597,0,N,1,N,N,CP_Drtn,TT_Task,DT_FixedDUR2,TK_Active,ZX-19885,IMPACT - SECAI ROOM ENERGIZATION PERMIT APPROVAL -Electrical Rm - 2F-SUW-FAB120401,,48,80,40,0,240,240,160,0,0,0,,2025-07-17 08:00,,2025-12-01 08:00,2025-12-05 17:00,,2025-11-21 08:00,2025-11-27 17:00,2025-11-21 08:00,2025-11-27 17:00,2025-07-17 08:00,2025-08-13 17:00,2025-12-01 08:00,2025-12-05 17:00,,PT_Top,,,,,x8IhomSOy0KNrC7hiE+7Zg,uTIlCN7ca0WGaoVHx/tLcA,,,N,0,0,,,,,,,,2025-07-30 18:23,2025-11-20 21:59,jleon,jleon,,N,
103129092,122698,18541251,597,0,N,1,N,N,CP_Drtn,TT_Task,DT_FixedDUR2,TK_Active,FAB1-ST50A-04,INSTALL DOOR & HARDWARE - FAB1-ST50A,,16,448,40,0,0,0,40,0,0,0,,2025-10-17 08:00,,2025-11-25 08:00,2025-12-01 17:00,,2025-11-21 08:00,2025-11-27 17:00,2025-11-21 08:00,2025-11-27 17:00,2025-10-17 08:00,2025-10-23 17:00,2025-11-25 08:00,2025-12-01 17:00,,PT_Normal,,,,,0dY1+X69bkiHs/ZObxaZTQ,C4kG6qUwtUixIEGhejAV+w,,,N,0,0,,,,,,,,2025-08-05 14:49,2025-11-20 21:46,jleon,jleon,,N,
103134925,122698,18541252,597,0,N,1,N,N,CP_Drtn,TT_Task,DT_FixedDUR2,TK_Active,FAB1-ST50B-04,INSTALL DOOR & HARDWARE - FAB1-ST50B,,16,448,40,0,0,0,40,0,0,0,,2025-10-16 08:00,,2025-11-25 08:00,2025-12-01 17:00,,2025-11-21 08:00,2025-11-27 17:00,2025-11-21 08:00,2025-11-27 17:00,2025-10-16 08:00,2025-10-22 17:00,2025-11-25 08:00,2025-12-01 17:00,,PT_Normal,,,,,RsqwAuegiUGTkS4ms5QbeQ,qHGd9+zDy0qv+5aiG6rj1Q,,,N,0,0,,,,,,,,2025-08-05 15:11,2025-11-20 21:46,jleon,jleon,,N,
103134929,122698,18541252,597,0,N,1,N,N,CP_Drtn,TT_Task,DT_FixedDUR2,TK_Active,FAB1-ST50C-04,INSTALL DOOR & HARDWARE - FAB1-ST50C,,16,448,40,0,0,0,40,0,0,0,,2025-11-14 08:00,,2025-11-25 08:00,2025-12-01 17:00,,2025-11-21 08:00,2025-11-27 17:00,2025-11-21 08:00,2025-11-27 17:00,2025-11-14 08:00,2025-11-20 17:00,2025-11-25 08:00,2025-12-01 17:00,,PT_Normal,,,,,lutnkqbAAEKrDFVe3qdjqA,RsqwAuegiUGTkS4ms5QbeQ,,,N,0,0,,,,,,,,2025-08-05 15:14,2025-11-20 21:46,jleon,jleon,,N,
103457141,122698,18114763,597,0,N,1,N,N,CP_Drtn,TT_Task,DT_FixedDUR2,TK_Active,ZX-20185,IMPACT - SECAI SCAFFOLD MODIFICATION - Vestibule #20 - 3F-FAB136310,,32,64,56,0,0,0,72,0,0,0,,2025-07-28 08:00,,2025-11-27 08:00,2025-12-05 17:00,,2025-11-21 08:00,2025-12-01 17:00,2025-11-21 08:00,2025-12-01 17:00,2025-06-06 08:00,2025-06-18 17:00,2025-11-27 08:00,2025-12-05 17:00,,PT_Top,,,,,2OJKNuoBc0uODPMkj60QCA,KmfN4ZiQTkG4yZ4FY+aHxA,,,N,0,0,,,,,,,,2025-08-06 17:51,2025-11-20 21:59,ARAJSHEKAR,jleon,,N,
103462793,122698,18114941,597,100,N,1,N,N,CP_Drtn,TT_Task,DT_FixedDUR2,TK_Active,ZX-20172,IMPACT - SECAI MEP SCAFFOLD IN THE AREA - Duct Shaft - 1F-SUW-FAB110112,,48,80,40,0,0,168,120,0,0,0,,2025-07-28 08:00,,2025-12-01 08:00,2025-12-05 17:00,,2025-11-21 08:00,2025-11-27 17:00,2025-11-21 08:00,2025-11-27 17:00,2025-07-28 08:00,2025-08-15 17:00,2025-12-01 08:00,2025-12-05 17:00,,PT_Top,,,,,jzZmNkMxXUGc9tqxlianzA,ZDHtGU/p8UuX8fofkJlD1Q,,,N,0,0,,,,,,,,2025-08-06 18:29,2025-11-20 21:59,jleon,jleon,,N,
103462798,122698,18114882,597,0,N,1,N,N,CP_Drtn,TT_Task,DT_FixedDUR2,TK_Active,ZX-20202,IMPACT - SECAI MEP SCAFFOLD IN THE AREA - Duct Shaft - 1F-SUW-FAB110516,,48,80,40,0,168,168,120,0,0,0,,2025-07-28 08:00,,2025-12-01 08:00,2025-12-05 17:00,,2025-11-21 08:00,2025-11-27 17:00,2025-11-21 08:00,2025-11-27 17:00,2025-07-28 08:00,2025-08-15 17:00,2025-12-01 08:00,2025-12-05 17:00,,PT_Top,,,,,U77QLU2OiU6cdwSYfMFjRQ,qKjYSeDgNUCC+vRfIWhHtw,,,N,0,0,,,,,,,,2025-08-06 18:33,2025-11-20 21:59,jleon,jleon,,N,
103465666,122698,18114922,597,0,N,1,N,N,CP_Drtn,TT_Task,DT_FixedDUR2,TK_Active,ZX-20222,IMPACT - SECAI MEP SCAFFOLD IN THE AREA - Duct Shaft Vestibule - 1F-SUW-FAB110514,,48,80,40,0,168,168,120,0,0,0,,2025-07-28 08:00,,2025-12-01 08:00,2025-12-05 17:00,,2025-11-21 08:00,2025-11-27 17:00,2025-11-21 08:00,2025-11-27 17:00,2025-07-28 08:00,2025-08-15 17:00,2025-12-01 08:00,2025-12-05 17:00,,PT_Top,,,,,H3ryYCxOy0yLC6OzQX02hw,46+9bHbFHUSLWOOjxJXf7g,,,N,0,0,,,,,,,,2025-08-06 18:46,2025-11-20 21:59,jleon,jleon,,N,
103465697,122698,18114647,363246,0,N,1,N,N,CP_Drtn,TT_Task,DT_FixedDUR2,TK_Active,CN.BB5.ST.1420,KOVACH NCR INSTALL IMP / CMP PANEL (waited on Adhesion test 3rd party 9/11) -GL 33 - GL 33 - D-F,,-40,0,100,0,80,80,70,0,0,0,,2025-08-04 07:00,,2025-11-17 07:00,2025-12-02 17:00,,2025-11-21 07:00,2025-12-08 17:00,2025-11-21 07:00,2025-12-08 17:00,2025-08-01 07:00,2025-08-11 17:00,2025-11-17 07:00,2025-12-02 17:00,,PT_Normal,,,,,9xCL2e5q7kGN7EC24E9VCQ,SmCBWNWmk0+kMCqgDGTCpw,,,N,0,0,,,,,,,,2025-08-06 19:15,2025-11-20 21:42,ARAJSHEKAR,jleon,,N,
103614085,122698,18604812,597,0,N,1,N,N,CP_Drtn,TT_Task,DT_FixedDUR2,TK_Active,FAB116412B-04,INSTALL DOOR & HARDWARE - FAB116412B,,18,448,40,0,0,0,40,0,0,0,,2025-10-06 08:00,,2025-11-25 10:00,2025-12-02 10:00,,2025-11-21 08:00,2025-11-27 17:00,2025-11-21 08:00,2025-11-27 17:00,2025-10-06 08:00,2025-10-10 17:00,2025-11-25 10:00,2025-12-02 10:00,,PT_Normal,,,,,ew3XsN/JmECuMtmF49GSnw,1ji9l1rV8k2ZyxkdeQxxtw,,,N,0,0,,,,,,,,2025-08-08 16:13,2025-11-20 21:46,jleon,jleon,,N,
103614119,122698,18604813,597,0,N,1,N,N,CP_Drtn,TT_Task,DT_FixedDUR2,TK_Active,FAB112158B-04,INSTALL DOOR & HARDWARE - FAB112158B,,18,448,40,0,0,0,40,0,0,0,,2025-11-03 08:00,,2025-11-25 10:00,2025-12-02 10:00,,2025-11-21 08:00,2025-11-27 17:00,2025-11-21 08:00,2025-11-27 17:00,2025-11-03 08:00,2025-11-07 17:00,2025-11-25 10:00,2025-12-02 10:00,,PT_Normal,,,,,s301NyjjUUeTuTe/gau5AQ,W/u7lMV/8kWnhknX3hSo+Q,,,N,0,0,,,,,,,,2025-08-08 16:29,2025-11-20 21:46,jleon,jleon,,N,
103622268,122698,18606748,597,0,N,1,N,N,CP_Drtn,TT_Task,DT_FixedDUR2,TK_Active,FAB122156B-04,INSTALL DOOR & HARDWARE - FAB122156B,,18,448,40,0,0,0,40,0,0,0,,2025-11-11 08:00,,2025-11-25 10:00,2025-12-02 10:00,,2025-11-21 08:00,2025-11-27 17:00,2025-11-21 08:00,2025-11-27 17:00,2025-11-11 08:00,2025-11-17 17:00,2025-11-25 10:00,2025-12-02 10:00,,PT_Normal,,,,,FsOFsABSV0uE9w67SN1xIw,U57ToVqsjk6T3kc6dOX06Q,,,N,0,0,,,,,,,,2025-08-08 17:44,2025-11-20 21:46,jleon,jleon,,N,
103623033,122698,18875652,597,0,N,1,N,N,CP_Drtn,TT_Task,DT_FixedDUR2,TK_Active,FAB1-ST01B-04,INSTALL DOOR & HARDWARE - FAB1-ST01B,,18,448,40,0,0,0,40,0,0,0,,2025-11-05 08:00,,2025-11-25 10:00,2025-12-02 10:00,,2025-11-21 08:00,2025-11-27 17:00,2025-11-21 08:00,2025-11-27 17:00,2025-11-05 08:00,2025-11-11 17:00,2025-11-25 10:00,2025-12-02 10:00,,PT_Normal,,,,,/UmCa0JVfUiJrtAZWD+dIw,2Ao6yIn7K0e0qPHCbUZnKA,,,N,0,0,,,,,,,,2025-08-08 17:59,2025-11-20 21:46,jleon,jleon,,N,
103623038,122698,18114875,597,0,N,1,N,N,CP_Drtn,TT_Task,DT_FixedDUR2,TK_Active,FAB1-ST01A-04,INSTALL DOOR & HARDWARE - FAB1-ST01A,,8,448,40,0,0,0,40,0,0,0,,2025-09-18 08:00,,2025-11-24 08:00,2025-11-28 17:00,,2025-11-21 08:00,2025-11-27 17:00,2025-11-21 08:00,2025-11-27 17:00,2025-09-18 08:00,2025-09-24 17:00,2025-11-24 08:00,2025-11-28 17:00,,PT_Normal,,,,,zXgTxF2YsEGAQlnTT2KmhA,EOwaBN7NKEa1PifI6EX7tw,,,N,0,0,,,,,,,,2025-08-08 18:11,2025-11-20 21:46,jleon,jleon,,N,
103624827,122698,18114794,597,0,N,1,N,N,CP_Drtn,TT_Task,DT_FixedDUR2,TK_Active,FAB134105D-04,INSTALL DOOR & HARDWARE - FAB134105D,,18,448,40,0,0,0,40,0,0,0,,2025-08-12 08:00,,2025-11-25 10:00,2025-12-02 10:00,,2025-11-21 08:00,2025-11-27 17:00,2025-11-21 08:00,2025-11-27 17:00,2025-08-12 08:00,2025-08-18 17:00,2025-11-25 10:00,2025-12-02 10:00,,PT_Normal,,,,,a9eWoHRuckC13KZP82OjVg,H6ZmhCVHz0qihB2hcnxLlA,,,N,0,0,,,,,,,,2025-08-08 19:46,2025-11-20 21:46,jleon,jleon,,N,
103624839,122698,18114804,597,0,N,1,N,N,CP_Drtn,TT_Task,DT_FixedDUR2,TK_Active,FAB110404A-04,INSTALL DOOR & HARDWARE - FAB110404A,,18,448,40,0,0,0,40,0,0,0,,2025-11-06 08:00,,2025-11-25 10:00,2025-12-02 10:00,,2025-11-21 08:00,2025-11-27 17:00,2025-11-21 08:00,2025-11-27 17:00,2025-11-06 08:00,2025-11-12 17:00,2025-11-25 10:00,2025-12-02 10:00,,PT_Normal,,,,,tYFOCb0mukOn/wIZRQfnNw,60YNHxaJo0abAwVYC5bAEQ,,,N,0,0,,,,,,,,2025-08-08 20:01,2025-11-20 21:46,jleon,jleon,,N,
103885134,122698,18114023,363246,0,N,1,N,N,CP_Drtn,TT_Task,DT_FixedDUR2,TK_Active,CN.SWB3.6271,DOCK LEVELER & accesories INSTALL - N5 PENDING ACCESORIES AND PERMANENT POWER BY SECAI,,-620,0,290,0,0,0,50,0,0,0,,2025-10-15 07:00,,2025-09-04 07:00,2025-10-14 17:00,,2025-12-03 07:00,2026-01-15 17:00,2025-12-03 07:00,2026-01-15 17:00,2025-10-15 07:00,2025-10-21 17:00,2025-09-04 07:00,2025-10-14 17:00,,PT_Normal,,,,,GwCuGiPSnk6KI68rh+AjIQ,rQLSuHFmbkG2Cgu0yp2oOg,,,N,0,0,,,,,,,,2025-08-13 13:08,2025-11-20 21:42,jleon,jleon,,N,
103885135,122698,18114023,363246,100,N,1,N,N,CP_Drtn,TT_Task,DT_FixedDUR2,TK_Active,CN.SWB3.6281,DOCK LEVELER & accesories INSTALL - N17 PENDING ACCESORIES AND PERMANENT POWER BY SECAI,,-620,0,60,0,0,0,20,0,0,0,,2025-09-15 07:00,,2025-08-26 07:00,2025-09-03 17:00,,2025-11-21 07:00,2025-12-02 17:00,2025-11-21 07:00,2025-12-02 17:00,2025-09-15 07:00,2025-09-16 17:00,2025-08-26 07:00,2025-09-03 17:00,,PT_Normal,,,,,ExlVreUl/U6M8+4VKNRPHw,GwCuGiPSnk6KI68rh+AjIQ,,,N,0,0,,,,,,,,2025-08-13 13:09,2025-11-20 21:42,jleon,jleon,,N,
103885136,122698,18114023,363246,0,N,1,N,N,CP_Drtn,TT_Task,DT_FixedDUR2,TK_Active,CN.SWB3.6291,DOCK LEVELER & accesories INSTALL- A31 PENDING ACCESORIES AND PERMANENT POWER BY SECAI,,-620,0,310,0,0,0,50,0,0,0,,2025-10-13 07:00,,2025-10-15 07:00,2025-11-26 17:00,,2026-01-16 07:00,2026-02-27 17:00,2026-01-16 07:00,2026-02-27 17:00,2025-10-13 07:00,2025-10-17 17:00,2025-10-15 07:00,2025-11-26 17:00,,PT_Normal,,,,,FL3ojEwZh0yCvdL/c1WNBw,ExlVreUl/U6M8+4VKNRPHw,,,N,0,0,,,,,,,,2025-08-13 13:10,2025-11-20 21:42,jleon,jleon,,N,
104401159,122698,18114903,597,100,N,1,N,N,CP_Drtn,TT_Task,DT_FixedDUR2,TK_Active,ZX-20335,IMPACT - SECAI SCAFFOLDS MEP - Duct Shaft - 1F-SUW-FAB110206,,48,48,40,0,0,288,96,0,0,0,,2025-06-03 08:00,,2025-12-01 08:00,2025-12-05 17:00,,2025-11-21 08:00,2025-11-27 17:00,2025-11-21 08:00,2025-11-27 17:00,2025-08-15 08:00,2025-09-01 17:00,2025-12-01 08:00,2025-12-05 17:00,,PT_Lowest,,,,,VQqOZPT/fEuer/gM7PUDNw,crmXJAUKaEKrg2r7G0r30A,,,N,0,0,,,,,,,,2025-08-14 15:10,2025-11-20 21:59,ARAJSHEKAR,jleon,,N,
104401910,122698,18114888,597,0,N,1,N,N,CP_Drtn,TT_Task,DT_FixedDUR2,TK_Active,ZX-20345,IMPACT - SECAI SCAFFOLDS MEP -Duct Shaft - 1F-SUW-FAB110306,,40,72,48,0,240,240,80,0,0,0,,2025-06-03 08:00,,2025-11-28 08:00,2025-12-05 17:00,,2025-11-21 08:00,2025-11-28 17:00,2025-11-21 08:00,2025-11-28 17:00,2025-08-15 08:00,2025-08-28 17:00,2025-11-28 08:00,2025-12-05 17:00,,PT_Lowest,,,,,iOZaTryoDUynQDXFCDDIuA,k+HBhOjr00qZjSrcLRw4vQ,,,N,0,0,,,,,,,,2025-08-14 15:12,2025-11-20 21:42,ARAJSHEKAR,jleon,,N,
104403524,122698,18604813,597,0,N,1,N,N,CP_Drtn,TT_Task,DT_FixedDUR2,TK_Active,FAB112158A-04,INSTALL DOOR & HARDWARE - FAB112158A,,18,448,40,0,0,0,40,0,0,0,,2025-09-10 08:00,,2025-11-25 10:00,2025-12-02 10:00,,2025-11-21 08:00,2025-11-27 17:00,2025-11-21 08:00,2025-11-27 17:00,2025-09-10 08:00,2025-09-16 17:00,2025-11-25 10:00,2025-12-02 10:00,,PT_Normal,,,,,5ERRYhsi10euBmOTUrULOw,s301NyjjUUeTuTe/gau5AQ,,,N,0,0,,,,,,,,2025-08-14 15:50,2025-11-20 21:46,jleon,jleon,,N,
104403539,122698,18604813,597,0,N,1,N,N,CP_Drtn,TT_Task,DT_FixedDUR2,TK_Active,FAB112158C-04,INSTALL DOOR & HARDWARE - FAB112158C,,18,448,40,0,0,0,40,0,0,0,,2025-10-29 08:00,,2025-11-25 10:00,2025-12-02 10:00,,2025-11-21 08:00,2025-11-27 17:00,2025-11-21 08:00,2025-11-27 17:00,2025-10-29 08:00,2025-11-04 17:00,2025-11-25 10:00,2025-12-02 10:00,,PT_Normal,,,,,/de81lK7X0G1WiyAxTNYsg,5ERRYhsi10euBmOTUrULOw,,,N,0,0,,,,,,,,2025-08-14 15:56,2025-11-20 21:46,jleon,jleon,,N,
104734263,122698,18114519,363246,0,N,1,N,N,CP_Drtn,TT_Task,DT_FixedDUR2,TK_Active,CN.SEB1.10980,IMPACT - IOCC 1534 SUBMIT & SECAI APPROVAL - SEB1 - GL D / 19-20 - L2 -L3,,30,0,10,0,0,0,50,0,0,0,,2025-07-11 07:00,,2025-11-26 07:00,2025-11-26 17:00,,2025-11-21 07:00,2025-11-21 17:00,2025-11-21 07:00,2025-11-21 17:00,2024-05-31 07:00,2024-06-07 17:00,2025-11-26 07:00,2025-11-26 17:00,,PT_Normal,,,,,5PmWA/LO40mEmgj63zKsUw,VdXkgNRk8EaO/KFoQoo3Lg,,,N,0,0,,,,,,,,2025-08-15 20:19,2025-11-20 21:42,ARAJSHEKAR,jleon,,N,
104734295,122698,18114518,363246,0,N,1,N,N,CP_Drtn,TT_Task,DT_FixedDUR2,TK_Active,CN.SEA5.11180,IMPACT - IOCC APPROVAL PENDING BY SECAI FOR SCAFFOLD SFRM TOUCH UP - L5&L6 - C&D-LINE - GL 3-33,,-50,0,30,0,0,0,110,0,0,0,,2025-02-13 07:00,,2025-11-14 07:00,2025-11-18 17:00,,2025-11-21 07:00,2025-11-25 17:00,2025-11-21 07:00,2025-11-25 17:00,2024-05-13 07:00,2024-05-31 17:00,2025-11-14 07:00,2025-11-18 17:00,,PT_Normal,,,,,2LpAz+0UA0qQ9B6IW+8K6Q,nB0Gp7yoqEeOB65q+vBS2g,,,N,0,0,,,,,,,,2025-08-15 20:38,2025-11-20 21:42,ARAJSHEKAR,jleon,,N,
104734932,122698,18114519,363246,0,N,1,N,N,CP_Drtn,TT_Task,DT_FixedDUR2,TK_Active,CN.SEB1.10990,IMPACT - SECAI / JACOBS DESIGN FOR HIGH TEMP PIPE PENETRATING - GL 19-20 - A LINE [SUP EXTERIOR WALL],,-70,0,10,0,330,330,200,15,0,15,,2025-08-08 07:00,,2025-11-12 07:00,2025-11-12 17:00,,2025-11-21 07:00,2025-11-21 17:00,2025-11-21 07:00,2025-11-21 17:00,2025-09-05 07:00,2025-10-02 17:00,2025-11-12 07:00,2025-11-12 17:00,,PT_Normal,,,,,mdDdSF3R/Uey5lMPzJKrXQ,xjbyfSat4UGcmEV3CrxslA,,,N,0,0,,,,,,,,2025-08-16 20:11,2025-11-20 21:42,ARAJSHEKAR,jleon,,N,
104769961,122698,18114026,363245,100,N,1,N,N,CP_Drtn,TT_Task,DT_FixedDUR2,TK_Active,INT.P1.DH&HW.1350,EXTERIOR OHC DOOR - SECAI / VELTRI TOOKOVER SCOPE - HSS ADDED STEEL,,0,0,50,0,0,0,168,0,0,0,,2025-07-15 07:00,,2025-11-21 07:00,2025-11-25 17:00,,2025-11-21 07:00,2025-11-25 17:00,2025-11-21 07:00,2025-11-25 17:00,2023-11-27 07:00,2023-12-16 15:00,2025-11-21 07:00,2025-11-25 17:00,,PT_Normal,,,,,V+gc+SHEYU+7DzCPS8F7lg,ZQHr3zlCl0arN1ntjc5OsA,,,N,0,0,,,,,,,,2025-08-18 18:15,2025-11-20 21:59,ARAJSHEKAR,jleon,,N,
104769971,122698,18114519,363246,100,N,1,N,N,CP_Drtn,TT_Task,DT_FixedDUR2,TK_Active,CN.SEB1.11030,IMPACT - CANOPY - I-BEAM PENETRATION LACK OF DESIGN - WAITING ON RFI 1808 RESPONSE,,-390,0,10,0,0,50,40,15,0,0,,2025-07-17 07:00,,2025-09-29 07:00,2025-09-29 17:00,,2025-11-21 07:00,2025-11-21 17:00,2025-11-21 07:00,2025-11-21 17:00,2025-08-01 07:00,2025-08-06 17:00,2025-09-29 07:00,2025-09-29 17:00,,PT_Normal,,,,,U6/XBup9R0uaWX4ZfEANRQ,Z80EU9mUlEelbuMcFW63yg,,,N,0,0,,,,,,,,2025-08-18 18:48,2025-11-20 21:42,ARAJSHEKAR,jleon,,N,
104770083,122698,18114514,363246,100,N,1,N,N,CP_Drtn,TT_Task,DT_FixedDUR2,TK_Active,CN.SEA1.LD.3320,IMPACT - NE / NW ADDITIONAL BOLLARDS - RFI 10236 DESIGN CHANGE - NW BOLLARDS HANDED OVER TO SECAI,,90,1210,0,0,0,0,90,0,0,0,,2025-07-23 08:00,,2025-12-05 17:00,2025-12-05 17:00,,2025-11-21 07:00,2025-11-21 07:00,2025-11-21 07:00,2025-11-21 07:00,2025-02-10 07:00,2025-02-20 17:00,2025-12-05 17:00,2025-12-05 17:00,,PT_Normal,,,,,zSW7+ZBrLEeLhTVo2uY/Xg,iIdPgX125kyqM0RKMfN99Q,,,N,0,0,,,,,,,,2025-08-18 19:10,2025-11-20 21:46,ARAJSHEKAR,jleon,,N,
105640839,122698,18115058,597,0,N,1,N,N,CP_Drtn,TT_Task,DT_FixedDUR2,TK_Active,ZX-21215,IMPACT - SECAI SCAFFOLD LIMIT -Electrical Rm - 2F-SUW-FAB120401,,48,80,40,0,240,240,160,0,0,0,,2025-07-17 08:00,,2025-12-01 08:00,2025-12-05 17:00,,2025-11-21 08:00,2025-11-27 17:00,2025-11-21 08:00,2025-11-27 17:00,2025-07-17 08:00,2025-08-13 17:00,2025-12-01 08:00,2025-12-05 17:00,,PT_Top,,,,,j1cMO7fXF0+F6kXA9zOCrQ,x8IhomSOy0KNrC7hiE+7Zg,,,N,0,0,,,,,,,,2025-08-21 13:28,2025-11-20 21:59,jleon,jleon,,N,
105641032,122698,18114730,597,0,N,1,N,N,CP_Drtn,TT_Task,DT_FixedDUR2,TK_Active,ZX-21265,IMPACT - SECAI ROOM ENERGIZATION PERMIT APPROVAL - Battery Rm - 3F-SUW-FAB130501,,56,88,32,0,240,240,160,0,0,0,,2025-07-17 08:00,,2025-12-02 08:00,2025-12-05 17:00,,2025-11-21 08:00,2025-11-26 17:00,2025-11-21 08:00,2025-11-26 17:00,2025-07-17 08:00,2025-08-13 17:00,2025-12-02 08:00,2025-12-05 17:00,,PT_Top,,,,,t7zvY8cOy0qj9RYoBjjshg,x8IhomSOy0KNrC7hiE+7Zg,,,N,0,0,,,,,,,,2025-08-21 13:35,2025-11-20 21:42,jleon,jleon,,N,
105641033,122698,18114730,597,0,N,1,N,N,CP_Drtn,TT_Task,DT_FixedDUR2,TK_Active,ZX-21275,IMPACT - SECAI SCAFFOLD LIMIT - Battery Rm - 3F-SUW-FAB130501,,56,88,32,0,240,240,160,0,0,0,,2025-07-17 08:00,,2025-12-02 08:00,2025-12-05 17:00,,2025-11-21 08:00,2025-11-26 17:00,2025-11-21 08:00,2025-11-26 17:00,2025-07-17 08:00,2025-08-13 17:00,2025-12-02 08:00,2025-12-05 17:00,,PT_Top,,,,,JtwOmSQViEWQ7pm23+vuQQ,j1cMO7fXF0+F6kXA9zOCrQ,,,N,0,0,,,,,,,,2025-08-21 13:35,2025-11-20 21:42,jleon,jleon,,N,
108411130,122698,18114939,597,0,N,1,N,N,CP_Drtn,TT_Task,DT_FixedDUR2,TK_Active,FAB112156A-04,INSTALL DOOR & HARDWARE - FAB112156A,,40,448,40,0,0,0,40,0,0,0,,2025-11-06 08:00,,2025-11-28 08:00,2025-12-04 17:00,,2025-11-21 08:00,2025-11-27 17:00,2025-11-21 08:00,2025-11-27 17:00,2025-11-06 08:00,2025-11-12 17:00,2025-11-28 08:00,2025-12-04 17:00,,PT_Normal,,,,,VT7q9+cwJEGFAXeLj7apxA,tCXb4/oAZkK0X0NXuA6bAA,,,N,0,0,,,,,,,,2025-08-28 15:15,2025-11-20 21:46,ARAJSHEKAR,jleon,,N,
109878723,122698,18114774,597,0,N,1,N,N,CP_Drtn,TT_Task,DT_FixedDUR2,TK_Active,FAB130206D-04,INSTALL DOOR & HARDWARE - FAB130206D,,18,448,40,0,0,0,40,0,0,0,,2025-09-25 08:00,,2025-11-25 10:00,2025-12-02 10:00,,2025-11-21 08:00,2025-11-27 17:00,2025-11-21 08:00,2025-11-27 17:00,2025-09-25 08:00,2025-10-01 17:00,2025-11-25 10:00,2025-12-02 10:00,,PT_Normal,,,,,ZeklRg5wvUm5Eu1lai8SiA,5J2/CyNa50SjkMtpK2rOAQ,,,N,0,0,,,,,,,,2025-09-03 20:53,2025-11-20 21:46,jleon,jleon,,N,
109886210,122698,18114794,597,0,N,1,N,N,CP_Drtn,TT_Task,DT_FixedDUR2,TK_Active,FAB134105B-04,INSTALL DOOR & HARDWARE - FAB134105B,,18,448,40,0,0,0,40,0,0,0,,2025-08-15 08:00,,2025-11-25 10:00,2025-12-02 10:00,,2025-11-21 08:00,2025-11-27 17:00,2025-11-21 08:00,2025-11-27 17:00,2025-08-15 08:00,2025-08-21 17:00,2025-11-25 10:00,2025-12-02 10:00,,PT_Normal,,,,,tpqkDfT0KkSoF3wftRj2Xw,a9eWoHRuckC13KZP82OjVg,,,N,0,0,,,,,,,,2025-09-04 12:07,2025-11-20 21:46,jleon,jleon,,N,
109887879,122698,18114810,597,0,N,1,N,N,CP_Drtn,TT_Task,DT_FixedDUR2,TK_Active,FAB1-ST05A-04,INSTALL DOOR & HARDWARE - FAB1-ST05A,,18,448,40,0,0,0,40,0,0,0,,2025-10-17 08:00,,2025-11-25 10:00,2025-12-02 10:00,,2025-11-21 08:00,2025-11-27 17:00,2025-11-21 08:00,2025-11-27 17:00,2025-10-17 08:00,2025-10-23 17:00,2025-11-25 10:00,2025-12-02 10:00,,PT_Normal,,,,,lykH/oNvxUmJF3H5TE3NWQ,vx4aNPl7tU6GHURgHkbz/g,,,N,0,0,,,,,,,,2025-09-04 13:20,2025-11-20 21:46,jleon,jleon,,N,
109887885,122698,18115049,597,0,N,1,N,N,CP_Drtn,TT_Task,DT_FixedDUR2,TK_Active,FAB1-ST18B-04,INSTALL DOOR & HARDWARE - FAB1-ST18B,,18,448,40,0,0,0,40,0,0,0,,2025-11-07 08:00,,2025-11-25 10:00,2025-12-02 10:00,,2025-11-21 08:00,2025-11-27 17:00,2025-11-21 08:00,2025-11-27 17:00,2025-11-07 08:00,2025-11-13 17:00,2025-11-25 10:00,2025-12-02 10:00,,PT_Normal,,,,,Kra7Vgv1xUCnJHTuc3cemg,vx4aNPl7tU6GHURgHkbz/g,,,N,0,0,,,,,,,,2025-09-04 13:28,2025-11-20 21:46,jleon,jleon,,N,
109888731,122698,18114899,597,0,N,1,N,N,CP_Drtn,TT_Task,DT_FixedDUR2,TK_Active,FAB110304E-65,IMPACT - SECAI SCAFFOLD IMPEDING DOOR INSTALLATION - FAB110304E,,-22,0,40,0,0,0,120,0,0,0,,2025-08-25 08:00,,2025-11-18 10:00,2025-11-25 10:00,,2025-11-21 08:00,2025-11-27 17:00,2025-11-21 08:00,2025-11-27 17:00,2025-08-25 08:00,2025-09-12 17:00,2025-11-18 10:00,2025-11-25 10:00,,PT_Normal,,,,,ufWdUQ0FekmTDHcGqzPnZQ,GPSInIn8+kKIPEPsZSc+Iw,,,N,0,0,,,,,,,,2025-09-04 14:30,2025-11-20 21:42,jleon,jleon,,N,
109908793,122698,18114023,363246,100,N,1,N,N,CP_Drtn,TT_Task,DT_FixedDUR2,TK_Active,STAIR.2820,IMPACT - SECAI TEMP ELECTRICAL PANEL/DUCT SCAFFOLD IN THE WAY - FIZ - LEVEL 02 #46,,-110,0,110,0,0,0,40,0,0,0,,2025-08-13 00:00,,2025-11-06 07:00,2025-11-20 17:00,,2025-11-21 07:00,2025-12-09 17:00,2025-11-21 07:00,2025-12-09 17:00,2024-09-20 07:00,2024-09-26 17:00,2025-11-06 07:00,2025-11-20 17:00,,PT_Normal,,,,,8aqauw2enkG7gvRhd3pCWw,dyL75kNY3kaSXhAeaQO4EQ,,,N,0,0,,,,,,,,2025-09-04 14:57,2025-11-20 21:42,ARAJSHEKAR,jleon,,N,
109918817,122698,18114912,597,100,N,1,N,N,CP_Drtn,TT_Task,DT_FixedDUR2,TK_Active,ZX-21405,IMPACT - SECAI MEP SCAFFOLD IN THE AREA - Duct Shaft Vestibule - 1F-SUW-FAB110108,,88,120,0,0,0,168,120,0,0,0,,2025-07-28 08:00,,2025-12-05 17:00,2025-12-05 17:00,,2025-11-21 08:00,2025-11-21 08:00,2025-11-21 08:00,2025-11-21 08:00,2025-07-28 08:00,2025-08-15 17:00,2025-12-05 17:00,2025-12-05 17:00,,PT_Top,,,,,UP80nYgec0S+m7HROcdSmg,RVBHiHfMj0abL4b94a7JQg,,,N,0,0,,,,,,,,2025-09-04 15:34,2025-11-20 21:42,jleon,jleon,,N,
109939176,122698,18114883,597,0,N,1,N,N,CP_Drtn,TT_Task,DT_FixedDUR2,TK_Active,FAB110502A-60,IMPACT - DOOR FRAME HIT BY A SCISSOR LIFT-REPAIR IS REQUIRED - FAB110502A,,-22,0,40,0,0,0,80,0,0,0,,2025-08-18 08:00,,2025-11-18 10:00,2025-11-25 10:00,,2025-11-21 08:00,2025-11-27 17:00,2025-11-21 08:00,2025-11-27 17:00,2025-08-18 08:00,2025-08-29 17:00,2025-11-18 10:00,2025-11-25 10:00,,PT_Normal,,,,,HIJZ8lrdF0+J4YxjCU7Cpg,60YNHxaJo0abAwVYC5bAEQ,,,N,0,0,,,,,,,,2025-09-05 14:51,2025-11-20 21:42,jleon,jleon,,N,
110023366,122698,18114958,597,0,N,1,N,N,CP_Drtn,TT_Task,DT_FixedDUR2,TK_Active,FAB116406A-60,IMPACT - SECAI SCAFFOLD IMPEDING DOOR INSTALLATION - FAB116406A,,-22,0,40,0,0,0,40,0,0,0,,2025-08-25 08:00,,2025-11-18 10:00,2025-11-25 10:00,,2025-11-21 08:00,2025-11-27 17:00,2025-11-21 08:00,2025-11-27 17:00,2025-08-25 08:00,2025-08-29 17:00,2025-11-18 10:00,2025-11-25 10:00,,PT_Normal,,,,,Yj8AmbPlxUaoZnyndBT/aw,uhMhvbANxkah5oZhgZ584g,,,N,0,0,,,,,,,,2025-09-08 18:42,2025-11-20 21:59,jleon,jleon,,N,
110024308,122698,18114883,597,0,N,1,N,N,CP_Drtn,TT_Task,DT_FixedDUR2,TK_Active,FAB110502A-70,IMPACT - SECAI (AXIOS) SCAFFOLD AND ELECTRICAL CORDS BLOCKING DOOR INSTALLATION - FAB110502A,,-22,0,40,0,0,0,80,0,0,0,,2025-08-18 08:00,,2025-11-18 10:00,2025-11-25 10:00,,2025-11-21 08:00,2025-11-27 17:00,2025-11-21 08:00,2025-11-27 17:00,2025-08-18 08:00,2025-08-29 17:00,2025-11-18 10:00,2025-11-25 10:00,,PT_Normal,,,,,mZuUDJrIGkufLxd3xGxI5Q,IrnIHAdw8U6ttxcI9SjxCw,,,N,0,0,,,,,,,,2025-09-08 19:26,2025-11-20 21:42,jleon,jleon,,N,
110024317,122698,18114813,597,0,N,1,N,N,CP_Drtn,TT_Task,DT_FixedDUR2,TK_Active,FAB116308E-60,IMPACT - SECAI ELECTRIC CORD RUNNING TROUGH OPENING IMPEDING DOOR INSTALLATION - FAB116308E,,-22,0,40,0,0,0,40,0,0,0,,2025-08-25 08:00,,2025-11-18 10:00,2025-11-25 10:00,,2025-11-21 08:00,2025-11-27 17:00,2025-11-21 08:00,2025-11-27 17:00,2025-08-25 08:00,2025-08-29 17:00,2025-11-18 10:00,2025-11-25 10:00,,PT_Normal,,,,,1fZItIo2Kku6I16tzkxQvA,1291L+cT9k+G3HRaZn3g0A,,,N,0,0,,,,,,,,2025-09-08 20:03,2025-11-20 21:59,jleon,jleon,,N,
110024323,122698,18114845,597,0,N,1,N,N,CP_Drtn,TT_Task,DT_FixedDUR2,TK_Active,FAB116513H-60,IMPACT - SECAI SCAFFOLD AND AC DUCTS IMPEDING DOOR INSTALLATION - FAB116513H,,-22,0,40,0,0,0,40,0,0,0,,2025-08-25 08:00,,2025-11-18 10:00,2025-11-25 10:00,,2025-11-21 08:00,2025-11-27 17:00,2025-11-21 08:00,2025-11-27 17:00,2025-08-25 08:00,2025-08-29 17:00,2025-11-18 10:00,2025-11-25 10:00,,PT_Normal,,,,,6Ec/3e+qLUWW9/VbFCqNUg,DcEno08nvEWJoYuwZ7/61A,,,N,0,0,,,,,,,,2025-09-08 20:19,2025-11-20 21:59,jleon,jleon,,N,
110024324,122698,18114841,597,0,N,1,N,N,CP_Drtn,TT_Task,DT_FixedDUR2,TK_Active,FAB116514A-60,IMPACT - SECAI LIGHT SWITCH LOCATED WITHIN OPENING IMPEDING DOOR FRAME INSTALLATION - FAB116514A,,-38,0,40,0,0,0,40,0,0,0,,2025-08-25 08:00,,2025-11-14 10:00,2025-11-21 10:00,,2025-11-21 08:00,2025-11-27 17:00,2025-11-21 08:00,2025-11-27 17:00,2025-08-25 08:00,2025-08-29 17:00,2025-11-14 10:00,2025-11-21 10:00,,PT_Normal,,,,,IbuyZLq5AU+DZFDITwzMKQ,42IOgM3vQEqKnO5XW096NA,,,N,0,0,,,,,,,,2025-09-08 20:21,2025-11-20 21:59,jleon,jleon,,N,
110024328,122698,18115077,597,100,N,1,N,N,CP_Drtn,TT_Task,DT_FixedDUR2,TK_Active,FAB120113A-60,IMPACT - SECAI SCAFFOLD BLOCKING TRANSPORTATION OF DOOR FRAMES - FAB120113A,,-22,8,40,0,0,0,40,0,0,0,,2025-08-25 08:00,,2025-11-18 10:00,2025-11-25 10:00,,2025-11-21 08:00,2025-11-27 17:00,2025-11-21 08:00,2025-11-27 17:00,2025-08-25 08:00,2025-08-29 17:00,2025-11-18 10:00,2025-11-25 10:00,,PT_Normal,,,,,3pqVUb9fFUe+37FpnyUE6w,iVSmKZ+n+k6BWl18gBydng,,,N,0,0,,,,,,,,2025-09-08 20:39,2025-11-20 21:59,jleon,jleon,,N,
110024568,122698,18115078,597,0,N,1,N,N,CP_Drtn,TT_Task,DT_FixedDUR2,TK_Active,FAB120315A-60,IMPACT - SECAI TEMP VENT RUNNING TROUGH OPENING IMPEDING DOOR INSTALLATION - FAB120315A,,-22,0,40,0,0,0,40,0,0,0,,2025-08-25 08:00,,2025-11-18 10:00,2025-11-25 10:00,,2025-11-21 08:00,2025-11-27 17:00,2025-11-21 08:00,2025-11-27 17:00,2025-08-25 08:00,2025-08-29 17:00,2025-11-18 10:00,2025-11-25 10:00,,PT_Normal,,,,,sw1FuGzpxUqYoxTMuE1zhA,06fpieofOUa3XGmf7skvVA,,,N,0,0,,,,,,,,2025-09-08 20:43,2025-11-20 21:59,jleon,jleon,,N,
110024569,122698,18115072,597,0,N,1,N,N,CP_Drtn,TT_Task,DT_FixedDUR2,TK_Active,FAB120314B-60,IMPACT - SECAI TEMP VENT RUNNING THROUGH OPENING IMPEDING DOOR INSTALLATION - FAB120314B,,-22,0,40,0,0,0,40,0,0,0,,2025-08-25 08:00,,2025-11-18 10:00,2025-11-25 10:00,,2025-11-21 08:00,2025-11-27 17:00,2025-11-21 08:00,2025-11-27 17:00,2025-08-25 08:00,2025-08-29 17:00,2025-11-18 10:00,2025-11-25 10:00,,PT_Normal,,,,,XbI9Jr3d7kauDZ/KEe8n6w,vT03lb+HYk+8CvVDAzHpAQ,,,N,0,0,,,,,,,,2025-09-08 20:45,2025-11-20 21:59,jleon,jleon,,N,
110024570,122698,18115072,597,0,N,1,N,N,CP_Drtn,TT_Task,DT_FixedDUR2,TK_Active,FAB120314A-60,IMPACT - SECAI TEMP VENT RUNNING THROUGH OPENING IMPEDING DOOR INSTALLATION - FAB120314A,,-22,0,40,0,0,0,40,0,0,0,,2025-08-25 08:00,,2025-11-18 10:00,2025-11-25 10:00,,2025-11-21 08:00,2025-11-27 17:00,2025-11-21 08:00,2025-11-27 17:00,2025-08-25 08:00,2025-08-29 17:00,2025-11-18 10:00,2025-11-25 10:00,,PT_Normal,,,,,MM3WeryElUKu+0qatxGT3w,XbI9Jr3d7kauDZ/KEe8n6w,,,N,0,0,,,,,,,,2025-09-08 20:52,2025-11-20 21:59,jleon,jleon,,N,
110024575,122698,18115120,597,0,N,1,N,N,CP_Drtn,TT_Task,DT_FixedDUR2,TK_Active,FAB120501A-60,IMPACT - SECAI TEMP AC DUCTS AND ELEC CONDUITS IMPEDING DOOR INSTALLATION- FAB120501A,,-22,0,40,0,0,0,40,0,0,0,,2025-08-25 08:00,,2025-11-18 10:00,2025-11-25 10:00,,2025-11-21 08:00,2025-11-27 17:00,2025-11-21 08:00,2025-11-27 17:00,2025-08-25 08:00,2025-08-29 17:00,2025-11-18 10:00,2025-11-25 10:00,,PT_Normal,,,,,w8sJ2LBynk2DIvFHPnmI1w,iBHQQYAZzE+AMFoVg8NbGg,,,N,0,0,,,,,,,,2025-09-08 21:01,2025-11-20 21:59,jleon,jleon,,N,
110024576,122698,18115084,597,100,N,1,N,N,CP_Drtn,TT_Task,DT_FixedDUR2,TK_Active,FAB120503D-60,IMPACT - SECAI SCAFFOLD BLOCKING OPENING IMPEDING FRAME INSTALLATION - FAB120503D,,-22,0,40,0,0,0,40,0,0,0,,2025-08-25 08:00,,2025-11-18 10:00,2025-11-25 10:00,,2025-11-21 08:00,2025-11-27 17:00,2025-11-21 08:00,2025-11-27 17:00,2025-08-25 08:00,2025-08-29 17:00,2025-11-18 10:00,2025-11-25 10:00,,PT_Normal,,,,,LITxQk7knEGPxGEqxagC5g,q0rZgu85OEq7IP7kERLJ/w,,,N,0,0,,,,,,,,2025-09-08 21:04,2025-11-20 21:59,jleon,jleon,,N,
110024577,122698,18115084,597,100,N,1,N,N,CP_Drtn,TT_Task,DT_FixedDUR2,TK_Active,FAB120503B-60,IMPACT - SECAI SCAFFOLD BLOCKING DOOR FRAME TRANSPORTATION - FAB120503,,-22,8,40,0,0,0,40,0,0,0,,2025-08-25 08:00,,2025-11-18 10:00,2025-11-25 10:00,,2025-11-21 08:00,2025-11-27 17:00,2025-11-21 08:00,2025-11-27 17:00,2025-08-25 08:00,2025-08-29 17:00,2025-11-18 10:00,2025-11-25 10:00,,PT_Normal,,,,,sk4yrQaj4EK1r7PArhb7EQ,LITxQk7knEGPxGEqxagC5g,,,N,0,0,,,,,,,,2025-09-08 21:07,2025-11-20 21:59,jleon,jleon,,N,
110025673,122698,18115089,597,0,N,1,N,N,CP_Drtn,TT_Task,DT_FixedDUR2,TK_Active,FAB120505A-60,IMPACT - SECAI SCAFFOLD BLOCKING DOOR FRAME TRANSPORTATION - FAB120505A,,-30,0,40,0,0,0,40,0,0,0,,2025-08-25 08:00,,2025-11-17 10:00,2025-11-24 10:00,,2025-11-21 08:00,2025-11-27 17:00,2025-11-21 08:00,2025-11-27 17:00,2025-08-25 08:00,2025-08-29 17:00,2025-11-17 10:00,2025-11-24 10:00,,PT_Normal,,,,,f73y/SBNo0G4/urjAtN1Jw,sk4yrQaj4EK1r7PArhb7EQ,,,N,0,0,,,,,,,,2025-09-08 21:11,2025-11-20 21:42,jleon,jleon,,N,
110026769,122698,18115113,597,0,N,1,N,N,CP_Drtn,TT_Task,DT_FixedDUR2,TK_Active,FAB126104E-60,IMPACT - SECAIN TEMP BENT AND TRAP IMPEDING INSTALLATION - FAB126104E,,-22,0,40,0,0,0,40,0,0,0,,2025-08-25 10:00,,2025-11-18 10:00,2025-11-25 10:00,,2025-11-21 08:00,2025-11-27 17:00,2025-11-21 08:00,2025-11-27 17:00,2025-08-25 10:00,2025-09-01 10:00,2025-11-18 10:00,2025-11-25 10:00,,PT_Normal,,,,,JkpUZuCJtUGlkemE6ohNug,HWUy+dabBkaPcNMaegILYg,,,N,0,0,,,,,,,,2025-09-08 21:15,2025-11-20 21:42,jleon,jleon,,N,
110027841,122698,18114734,597,0,N,1,N,N,CP_Drtn,TT_Task,DT_FixedDUR2,TK_Active,FAB130402B-60,IMPACT - SECAI SCAFFOLD AND TEMP VENT IMPEDING DOOR INSTALLATION- FAB130402B,,-22,0,40,0,0,0,40,0,0,0,,2025-08-25 08:00,,2025-11-18 10:00,2025-11-25 10:00,,2025-11-21 08:00,2025-11-27 17:00,2025-11-21 08:00,2025-11-27 17:00,2025-08-25 08:00,2025-08-29 17:00,2025-11-18 10:00,2025-11-25 10:00,,PT_Normal,,,,,ERTVBGqZH06Ywowu9W8N5A,IefddjtVY0ORwS3ajBG5WA,,,N,0,0,,,,,,,,2025-09-08 21:28,2025-11-20 21:59,jleon,jleon,,N,
110028193,122698,18114756,597,0,N,1,N,N,CP_Drtn,TT_Task,DT_FixedDUR2,TK_Active,FAB136401B-60,IMPACT - SECAI MEP SCAFFOLD  - FAB136401B,,-30,0,40,0,0,0,40,0,0,0,,2025-05-23 08:00,,2025-11-17 10:00,2025-11-24 10:00,,2025-11-21 08:00,2025-11-27 17:00,2025-11-21 08:00,2025-11-27 17:00,2025-08-25 08:00,2025-08-29 17:00,2025-11-17 10:00,2025-11-24 10:00,,PT_Normal,,,,,2sfbWDgDyEq1LrGtNC0BgQ,/PZ0hgfrX0isM8epnR8EbQ,,,N,0,0,,,,,,,,2025-09-08 21:37,2025-11-20 21:59,jleon,jleon,,N,
110028194,122698,18114765,597,0,N,1,N,N,CP_Drtn,TT_Task,DT_FixedDUR2,TK_Active,FAB136406A-60,IMPACT - SECAI SCAFFOLD - FAB136406A,,-30,0,40,0,0,0,40,0,0,0,,2025-05-23 08:00,,2025-11-17 10:00,2025-11-24 10:00,,2025-11-21 08:00,2025-11-27 17:00,2025-11-21 08:00,2025-11-27 17:00,2025-08-25 08:00,2025-08-29 17:00,2025-11-17 10:00,2025-11-24 10:00,,PT_Normal,,,,,mOvKDpDpFEinCfNT4NE7RQ,2sfbWDgDyEq1LrGtNC0BgQ,,,N,0,0,,,,,,,,2025-09-08 21:39,2025-11-20 21:59,jleon,jleon,,N,
110028195,122698,18114765,597,0,N,1,N,N,CP_Drtn,TT_Task,DT_FixedDUR2,TK_Active,FAB136406B-60,IMPACT - SECAI SCAFFOLD - FAB136406B,,-30,0,40,0,0,0,40,0,0,0,,2025-05-23 08:00,,2025-11-17 10:00,2025-11-24 10:00,,2025-11-21 08:00,2025-11-27 17:00,2025-11-21 08:00,2025-11-27 17:00,2025-08-25 08:00,2025-08-29 17:00,2025-11-17 10:00,2025-11-24 10:00,,PT_Normal,,,,,o+VSZIH8FUKahaCkqZZCFQ,mOvKDpDpFEinCfNT4NE7RQ,,,N,0,0,,,,,,,,2025-09-08 21:40,2025-11-20 21:59,jleon,jleon,,N,
110054586,122698,19502003,597,0,N,1,N,N,CP_Drtn,TT_Task,DT_FixedDUR2,TK_Active,FAB13K6401A-60,IMPACT - SECAI SCAFFOLD IMPEDING FRAME AND DOOR INSTALLATION - FAB13K6401A,,-30,0,40,0,0,0,40,0,0,0,,2025-05-23 08:00,,2025-11-17 10:00,2025-11-24 10:00,,2025-11-21 08:00,2025-11-27 17:00,2025-11-21 08:00,2025-11-27 17:00,2025-05-23 08:00,2025-05-29 17:00,2025-11-17 10:00,2025-11-24 10:00,,PT_Normal,,,,,ZiyyOC22RkedIeRHE0mY0A,AO8EbDujAEqscVnsm1HAAw,,,N,0,0,,,,,,,,2025-09-09 12:49,2025-11-20 21:59,jleon,jleon,,N,
110054593,122698,19502003,597,0,N,1,N,N,CP_Drtn,TT_Task,DT_FixedDUR2,TK_Active,FAB13K6401B-60,IMPACT - SECAI SCAFFOLD IMPEDING FRAME AND DOOR INSTALLATION - FAB13K6401B,,-30,0,40,0,0,0,40,0,0,0,,2025-05-23 08:00,,2025-11-17 10:00,2025-11-24 10:00,,2025-11-21 08:00,2025-11-27 17:00,2025-11-21 08:00,2025-11-27 17:00,2025-05-23 08:00,2025-05-29 17:00,2025-11-17 10:00,2025-11-24 10:00,,PT_Normal,,,,,tYgcAmYO+0uAgw06CRPwzA,ZiyyOC22RkedIeRHE0mY0A,,,N,0,0,,,,,,,,2025-09-09 12:53,2025-11-20 21:59,jleon,jleon,,N,
110054596,122698,19502004,597,0,N,1,N,N,CP_Drtn,TT_Task,DT_FixedDUR2,TK_Active,FAB13K6402A-60,IMPACT - SECAI SCAFFOLD IMPEDING FRAME AND DOOR INSTALLATION - FAB13K6402A,,-30,0,40,0,0,0,40,0,0,0,,2025-05-23 08:00,,2025-11-17 10:00,2025-11-24 10:00,,2025-11-21 08:00,2025-11-27 17:00,2025-11-21 08:00,2025-11-27 17:00,2025-05-23 08:00,2025-05-29 17:00,2025-11-17 10:00,2025-11-24 10:00,,PT_Normal,,,,,hcT16tNP7kic9uz1LGx31w,ZiyyOC22RkedIeRHE0mY0A,,,N,0,0,,,,,,,,2025-09-09 12:57,2025-11-20 21:59,jleon,jleon,,N,
110054597,122698,18114698,597,0,N,1,N,N,CP_Drtn,TT_Task,DT_FixedDUR2,TK_Active,FAB1-ST19D-60,IMPACT - SECAI SCAFFOLD IMPEDING FRAME AND DOOR INSTALLATION - FAB1-ST19D,,-104,0,40,0,0,0,40,0,0,0,,2025-05-23 08:00,,2025-11-04 08:00,2025-11-10 17:00,,2025-11-21 08:00,2025-11-27 17:00,2025-11-21 08:00,2025-11-27 17:00,2025-05-23 08:00,2025-05-29 17:00,2025-11-04 08:00,2025-11-10 17:00,,PT_Normal,,,,,4kU56lk/Y0+x1KYSZ/KQCA,ZiyyOC22RkedIeRHE0mY0A,,,N,0,0,,,,,,,,2025-09-09 13:02,2025-11-20 21:59,jleon,jleon,,N,
110116508,122698,18839252,597,0,N,1,N,N,CP_Drtn,TT_Task,DT_FixedDUR2,TK_Active,FAB116522A-04,INSTALL DOOR & HARDWARE - FAB116522A,,16,448,40,0,0,0,40,0,0,0,,2025-10-03 08:00,,2025-11-25 08:00,2025-12-01 17:00,,2025-11-21 08:00,2025-11-27 17:00,2025-11-21 08:00,2025-11-27 17:00,2025-10-03 08:00,2025-10-09 17:00,2025-11-25 08:00,2025-12-01 17:00,,PT_Normal,,,,,/L576D+y20uCji93vRApPw,exNfBQr3KUaGkituxAVMFQ,,,N,0,0,,,,,,,,2025-09-10 14:54,2025-11-20 21:46,jleon,jleon,,N,
110116608,122698,18115058,597,0,N,1,N,N,CP_Drtn,TT_Task,DT_FixedDUR2,TK_Active,FAB120401B-03,INSTALL DOOR FRAME BY SECAI - FAB120401B HANDED OVER ON 08/29,,-30,0,48,0,0,0,8,0,0,0,,2025-08-29 10:00,,2025-11-17 10:00,2025-11-25 10:00,,2025-11-21 08:00,2025-11-28 17:00,2025-11-21 08:00,2025-11-28 17:00,2025-08-29 10:00,2025-09-01 10:00,2025-11-17 10:00,2025-11-25 10:00,,PT_Normal,,,,,Oeh3hOZ65U+cqlHQFpkMhg,L80fnG5KVk6d1CdqriXrHA,,,N,0,0,,,,,,,,2025-09-10 16:28,2025-11-20 21:59,jleon,jleon,,N,
110176941,122698,18114755,597,0,N,1,N,N,CP_Drtn,TT_Task,DT_FixedDUR2,TK_Active,ZX-21485,IMPACT - SECAI MEP SCAFFOLD IN THE AREA - Duct Shaft - 3F-SUE-FAB136301,,48,80,40,0,288,288,80,0,0,0,,2025-09-11 08:00,,2025-12-01 08:00,2025-12-05 17:00,,2025-11-21 08:00,2025-11-27 17:00,2025-11-21 08:00,2025-11-27 17:00,2025-09-11 08:00,2025-09-24 17:00,2025-12-01 08:00,2025-12-05 17:00,,PT_Normal,,,,,vlqTKko2CUaxhuzQKqQ9ow,SIz/Gbn0mUCwMdPbJzZgnw,,,N,0,0,,,,,,,,2025-09-10 19:46,2025-11-20 21:59,jleon,jleon,,N,
110177775,122698,19525098,597,0,N,1,N,N,CP_Drtn,TT_Task,DT_FixedDUR2,TK_Active,FAB122153A-04,INSTALL DOOR & HARDWARE - FAB122153A,,18,448,40,0,0,0,40,0,0,0,,2025-11-14 08:00,,2025-11-25 10:00,2025-12-02 10:00,,2025-11-21 08:00,2025-11-27 17:00,2025-11-21 08:00,2025-11-27 17:00,2025-11-14 08:00,2025-11-20 17:00,2025-11-25 10:00,2025-12-02 10:00,,PT_Normal,,,,,bPmHSPbADUiLJ5qGj57ZHw,FsOFsABSV0uE9w67SN1xIw,,,N,0,0,,,,,,,,2025-09-10 19:56,2025-11-20 21:46,jleon,jleon,,N,
110177859,122698,19525100,597,0,N,1,N,N,CP_Drtn,TT_Task,DT_FixedDUR2,TK_Active,FAB122157B-04,INSTALL DOOR & HARDWARE - FAB122157B,,18,448,40,0,0,0,40,0,0,0,,2025-11-14 08:00,,2025-11-25 10:00,2025-12-02 10:00,,2025-11-21 08:00,2025-11-27 17:00,2025-11-21 08:00,2025-11-27 17:00,2025-11-14 08:00,2025-11-20 17:00,2025-11-25 10:00,2025-12-02 10:00,,PT_Normal,,,,,faYzHeWWnkWaPIj5R/eDPA,bPmHSPbADUiLJ5qGj57ZHw,,,N,0,0,,,,,,,,2025-09-10 21:05,2025-11-20 21:46,jleon,jleon,,N,
110185710,122698,18875743,597,0,N,1,N,N,CP_Drtn,TT_Task,DT_FixedDUR2,TK_Active,FAB1-ST01C-04,INSTALL DOOR & HARDWARE - FAB1-ST01C,,8,448,40,0,0,0,40,0,0,0,,2025-11-11 08:00,,2025-11-24 08:00,2025-11-28 17:00,,2025-11-21 08:00,2025-11-27 17:00,2025-11-21 08:00,2025-11-27 17:00,2025-11-11 08:00,2025-11-17 17:00,2025-11-24 08:00,2025-11-28 17:00,,PT_Normal,,,,,MsAjwlSevk6Jz4isgEh6aA,zXgTxF2YsEGAQlnTT2KmhA,,,N,0,0,,,,,,,,2025-09-11 11:41,2025-11-20 21:46,jleon,jleon,,N,
110185714,122698,18114926,597,0,N,1,N,N,CP_Drtn,TT_Task,DT_FixedDUR2,TK_Active,FAB1-ST18A-04,INSTALL DOOR & HARDWARE - FAB1-ST18A,,8,448,40,0,0,0,40,0,0,0,,2025-10-28 08:00,,2025-11-24 08:00,2025-11-28 17:00,,2025-11-21 08:00,2025-11-27 17:00,2025-11-21 08:00,2025-11-27 17:00,2025-10-28 08:00,2025-11-03 17:00,2025-11-24 08:00,2025-11-28 17:00,,PT_Normal,,,,,RPCOocWm506O/L1GnqjYYA,zXgTxF2YsEGAQlnTT2KmhA,,,N,0,0,,,,,,,,2025-09-11 11:46,2025-11-20 21:46,jleon,jleon,,N,
110186694,122698,18839246,597,0,N,1,N,N,CP_Drtn,TT_Task,DT_FixedDUR2,TK_Active,FAB1-ST22A-04,INSTALL DOOR & HARDWARE - FAB1-ST22A,,16,448,40,0,0,0,40,0,0,0,,2025-11-07 08:00,,2025-11-25 08:00,2025-12-01 17:00,,2025-11-21 08:00,2025-11-27 17:00,2025-11-21 08:00,2025-11-27 17:00,2025-11-07 08:00,2025-11-13 17:00,2025-11-25 08:00,2025-12-01 17:00,,PT_Normal,,,,,jvnNqwrlPkSYqWe6ZVMCEg,FA+aIPrhZk+KLI/2s+HZGg,,,N,0,0,,,,,,,,2025-09-11 12:38,2025-11-20 21:46,jleon,jleon,,N,
110524019,122698,18114023,363246,0,N,1,N,N,CP_Drtn,TT_Task,DT_FixedDUR2,TK_Active,CN.SWB3.6451,AWNING - INSTALL - GL 1-6 - N LINE,,-320,70,50,0,0,0,50,0,0,0,,2025-11-10 07:00,,2025-10-08 07:00,2025-10-14 17:00,,2025-11-21 07:00,2025-12-01 17:00,2025-11-21 07:00,2025-12-01 17:00,2025-11-10 07:00,2025-11-14 17:00,2025-10-08 07:00,2025-10-14 17:00,,PT_Normal,,,,,c7JSMyHPW0Gc86cx996I8A,jhlHnPz9/kGP0veQD8h6XQ,,,N,0,0,,,,,,,,2025-09-12 19:03,2025-11-20 21:42,ARAJSHEKAR,jleon,,N,
111009882,122698,18114952,597,0,N,1,N,N,CP_Drtn,TT_Task,DT_FixedDUR2,TK_Active,ZX-21535,IMPACT SECAI MEP AND CABLE TRAY IN THE AREA - Duct Shaft Vestibule - 1F-SUE-FAB116310,,48,80,40,0,0,0,80,0,0,0,,2025-08-15 08:00,,2025-12-01 08:00,2025-12-05 17:00,,2025-11-21 08:00,2025-11-27 17:00,2025-11-21 08:00,2025-11-27 17:00,2025-08-15 08:00,2025-08-28 17:00,2025-12-01 08:00,2025-12-05 17:00,,PT_Lowest,,,,,s1i9eKS5EUGasyAKAwmLDQ,x9MstBnxVE6PfW5or8waJw,,,N,0,0,,,,,,,,2025-09-17 17:56,2025-11-20 21:42,jleon,jleon,,N,
111015555,122698,18115077,597,0,N,1,N,N,CP_Drtn,TT_Task,DT_FixedDUR2,TK_Active,ZX-21545,IMPACT - SECAI TEMPERATURE CONTROL DUCTS -Elevator Hall1 - 2F-FAB120113,,0,0,56,0,240,240,80,0,0,0,,2025-09-15 08:00,,2025-11-21 08:00,2025-12-01 17:00,,2025-11-21 08:00,2025-12-01 17:00,2025-11-21 08:00,2025-12-01 17:00,2025-09-15 08:00,2025-09-26 17:00,2025-11-21 08:00,2025-12-01 17:00,,PT_Normal,,,,,VXBq3gaG50KU/VAs5tDbEQ,Z6ry6kQH1EuLk4pqqIkcyQ,,,N,0,0,,,,,,,,2025-09-17 18:03,2025-11-20 21:42,jleon,jleon,,N,
111015598,122698,18114736,597,0,N,1,N,N,CP_Drtn,TT_Task,DT_FixedDUR2,TK_Active,ZX-21555,IMPACT - SECAI MEP SCAFFOLD IN THE AREA - Duct Shaft - 3F-SUW_FAB130401,,32,0,40,0,0,0,80,0,0,0,,2025-08-26 08:00,,2025-11-27 08:00,2025-12-03 17:00,,2025-11-21 08:00,2025-11-27 17:00,2025-11-21 08:00,2025-11-27 17:00,2025-08-26 08:00,2025-09-08 17:00,2025-11-27 08:00,2025-12-03 17:00,,PT_Normal,,,,,RXjy0GdHykeWdALRbMhm/A,xwB6wrzFE028N79+7SADDQ,,,N,0,0,,,,,,,,2025-09-17 18:20,2025-11-20 21:42,jleon,jleon,,N,
111015601,122698,18114727,597,0,N,1,N,N,CP_Drtn,TT_Task,DT_FixedDUR2,TK_Active,ZX-21565,IMPACT - SECAI MEP SCAFFOLD IN THE AREA - 3F-SUW-FAB130406,,48,80,40,0,0,0,80,0,0,0,,2025-08-26 08:00,,2025-12-01 08:00,2025-12-05 17:00,,2025-11-21 08:00,2025-11-27 17:00,2025-11-21 08:00,2025-11-27 17:00,2025-08-26 08:00,2025-09-08 17:00,2025-12-01 08:00,2025-12-05 17:00,,PT_Normal,,,,,Z1tP9MjqPEuZ4dNPnXyLCw,pGzJZSsOa0+P+gOqbym6AQ,,,N,0,0,,,,,,,,2025-09-17 18:23,2025-11-20 21:59,jleon,jleon,,N,
111015602,122698,18114717,597,0,N,1,N,N,CP_Drtn,TT_Task,DT_FixedDUR2,TK_Active,ZX-21575,IMPACT - SECAI DUCT WORK - Duct Shaft - 3F-SUW-FAB130502,,48,80,40,0,0,0,80,0,0,0,,2025-09-02 08:00,,2025-12-01 08:00,2025-12-05 17:00,,2025-11-21 08:00,2025-11-27 17:00,2025-11-21 08:00,2025-11-27 17:00,2025-09-02 08:00,2025-09-15 17:00,2025-12-01 08:00,2025-12-05 17:00,,PT_Normal,,,,,ki5yLOiPYkyaufI0QvZyzw,WvIyXecKz0ON58W3BH1vsA,,,N,0,0,,,,,,,,2025-09-17 18:24,2025-11-20 21:59,jleon,jleon,,N,
111015618,122698,19640309,597,0,N,1,N,N,CP_Drtn,TT_Task,DT_FixedDUR2,TK_Active,FAB1-ST05B-04,INSTALL DOOR & HARDWARE - FAB1-ST05B,,18,448,40,0,0,0,40,0,0,0,,2025-11-05 08:00,,2025-11-25 10:00,2025-12-02 10:00,,2025-11-21 08:00,2025-11-27 17:00,2025-11-21 08:00,2025-11-27 17:00,2025-11-05 08:00,2025-11-11 17:00,2025-11-25 10:00,2025-12-02 10:00,,PT_Normal,,,,,hqrHdEHDiUu/vbm0V1enog,lykH/oNvxUmJF3H5TE3NWQ,,,N,0,0,,,,,,,,2025-09-17 19:08,2025-11-20 21:46,jleon,jleon,,N,
111015657,122698,19525100,597,0,N,1,N,N,CP_Drtn,TT_Task,DT_FixedDUR2,TK_Active,FAB122157A-03,INSTALL DOOR FRAMES - FAB122157A HANDED OVER ON 08/08,,-30,0,48,0,0,0,8,0,0,0,,2025-08-08 08:00,,2025-11-17 10:00,2025-11-25 10:00,,2025-11-21 08:00,2025-11-28 17:00,2025-11-21 08:00,2025-11-28 17:00,2025-08-08 08:00,2025-08-08 17:00,2025-11-17 10:00,2025-11-25 10:00,,PT_Normal,,,,,7zxKQ4ENEkWcBgREQnGRKQ,fNJQZ+F2o0eBjUgKezWkiw,,,N,0,0,,,,,,,,2025-09-17 19:42,2025-11-20 21:59,jleon,jleon,,N,
111016513,122698,18114904,597,0,N,1,N,N,CP_Drtn,TT_Task,DT_FixedDUR2,TK_Active,FAB1U1301A-04,INSTALL DOOR & HARDWARE - FAB1U1301A,,16,448,40,0,0,0,40,0,0,0,,2025-10-17 08:00,,2025-11-25 08:00,2025-12-01 17:00,,2025-11-21 08:00,2025-11-27 17:00,2025-11-21 08:00,2025-11-27 17:00,2025-10-17 08:00,2025-10-23 17:00,2025-11-25 08:00,2025-12-01 17:00,,PT_Normal,,,,,8QM2zr7R4EWptjGAoC0qJA,1wh6KfbKYEyhR8ADopD82g,,,N,0,0,,,,,,,,2025-09-17 19:54,2025-11-20 21:46,jleon,jleon,,N,
111016523,122698,18114904,597,0,N,1,N,N,CP_Drtn,TT_Task,DT_FixedDUR2,TK_Active,FAB1U1406A-04,INSTALL DOOR & HARDWARE - FAB1U1406A,,16,448,40,0,0,0,40,0,0,0,,2025-10-31 08:00,,2025-11-25 08:00,2025-12-01 17:00,,2025-11-21 08:00,2025-11-27 17:00,2025-11-21 08:00,2025-11-27 17:00,2025-10-31 08:00,2025-11-06 17:00,2025-11-25 08:00,2025-12-01 17:00,,PT_Normal,,,,,JbxE8v8+G0u4wiI+FmEHsA,Q8KBTxgI6Ey9SV/8xnDg7A,,,N,0,0,,,,,,,,2025-09-17 20:06,2025-11-20 21:46,jleon,jleon,,N,
111016528,122698,18114904,597,0,N,1,N,N,CP_Drtn,TT_Task,DT_FixedDUR2,TK_Active,FAB1U1407A-04,INSTALL DOOR & HARDWARE - FAB1U1407A,,16,448,40,0,0,0,40,0,0,0,,2025-11-13 08:00,,2025-11-25 08:00,2025-12-01 17:00,,2025-11-21 08:00,2025-11-27 17:00,2025-11-21 08:00,2025-11-27 17:00,2025-11-13 08:00,2025-11-19 17:00,2025-11-25 08:00,2025-12-01 17:00,,PT_Normal,,,,,ys3V7pdoLkiBaUK4LV0pWg,Q8KBTxgI6Ey9SV/8xnDg7A,,,N,0,0,,,,,,,,2025-09-17 20:10,2025-11-20 21:46,jleon,jleon,,N,
111016533,122698,18114904,597,0,N,1,N,N,CP_Drtn,TT_Task,DT_FixedDUR2,TK_Active,FAB1U1502A-04,INSTALL DOOR & HARDWARE - FAB1U1502A,,16,448,40,0,0,0,40,0,0,0,,2025-11-14 08:00,,2025-11-25 08:00,2025-12-01 17:00,,2025-11-21 08:00,2025-11-27 17:00,2025-11-21 08:00,2025-11-27 17:00,2025-11-14 08:00,2025-11-20 17:00,2025-11-25 08:00,2025-12-01 17:00,,PT_Normal,,,,,rFlvywvuGkamB4Z/f028+w,Q8KBTxgI6Ey9SV/8xnDg7A,,,N,0,0,,,,,,,,2025-09-17 20:13,2025-11-20 21:46,jleon,jleon,,N,
111016539,122698,18114904,597,0,N,1,N,N,CP_Drtn,TT_Task,DT_FixedDUR2,TK_Active,FAB1U1503A-04,INSTALL DOOR & HARDWARE - FAB1U1503A,,16,448,40,0,0,0,40,0,0,0,,2025-10-28 08:00,,2025-11-25 08:00,2025-12-01 17:00,,2025-11-21 08:00,2025-11-27 17:00,2025-11-21 08:00,2025-11-27 17:00,2025-10-28 08:00,2025-11-03 17:00,2025-11-25 08:00,2025-12-01 17:00,,PT_Normal,,,,,t/xwF511E0SwiKJzAUBiHg,Q8KBTxgI6Ey9SV/8xnDg7A,,,N,0,0,,,,,,,,2025-09-17 20:17,2025-11-20 21:46,jleon,jleon,,N,
111030582,122698,18114498,363246,100,N,1,N,N,CP_Drtn,TT_Task,DT_FixedDUR2,TK_Active,CN.SWA1.10080,"IMPACT - SECAI DIRECTION HOLD CUT SLAB, EDGE ARMOUR & LVL 1 FRAMING AND DRYWALL - ELEVATOR 5 - SECAI TO TAKE OVER",,-260,0,0,0,0,580,610,58,0,0,,2025-07-25 07:00,,2025-10-15 17:00,2025-10-15 17:00,,2025-11-21 07:00,2025-11-21 07:00,2025-11-21 07:00,2025-11-21 07:00,2025-07-25 07:00,2025-10-20 17:00,2025-10-15 17:00,2025-10-15 17:00,,PT_Normal,,,,,hshr4cstXkKLbKXCsHEDOA,pZgPMJMB+0KYeegAVomEkw,,,N,0,0,,,,,,,,2025-09-18 13:30,2025-11-20 21:42,jleon,jleon,,N,
111065785,122698,18114023,363246,0,N,1,N,N,CP_Drtn,TT_Task,DT_FixedDUR2,TK_Active,CN.BB51.ST.3662,TAPE & FLOAT SANDING INTERIOR DRYWALL & SANDING - VESTIBULE 18 - GL 33 - STAIR 18 - C-D (),,-140,0,50,0,10,10,50,0,0,0,,2025-10-06 07:00,,2025-11-12 07:00,2025-11-18 17:00,,2025-12-04 07:00,2025-12-10 17:00,2025-12-04 07:00,2025-12-10 17:00,2025-10-06 07:00,2025-10-10 17:00,2025-11-12 07:00,2025-11-18 17:00,,PT_Normal,,,,,Yl9F+4VSMkiTMWSsbOeiLw,FLX9HUQJzkKu+aeBHb7n6Q,,,N,0,0,,,,,,,,2025-09-18 15:30,2025-11-20 21:42,ARAJSHEKAR,jleon,,N,
111080253,122698,18114819,597,0,N,1,N,N,CP_Drtn,TT_Task,DT_FixedDUR2,TK_Active,FAB116104A-08,IMPACT - TEMP UTILITY LINE RUNNING TROUGH THE DOOR OPENING - FAB116104A,,-22,408,40,0,0,0,120,0,0,0,,2025-06-13 08:00,,2025-11-18 10:00,2025-11-25 10:00,,2025-11-21 08:00,2025-11-27 17:00,2025-11-21 08:00,2025-11-27 17:00,2025-06-13 08:00,2025-07-03 17:00,2025-11-18 10:00,2025-11-25 10:00,,PT_Normal,,,,,6HY5YJ2Q10ebZEwMYqQZxA,kkJDfcFKpUuxXotJztrEcQ,,,N,0,0,,,,,,,,2025-09-18 16:06,2025-11-20 21:46,jleon,jleon,,N,
112148243,122698,18114023,363246,0,N,1,N,N,CP_Drtn,TT_Task,DT_FixedDUR2,TK_Active,STAIR.2870,IMPACT - SECAI DESIGN CHANGE - SOUTH PIT HANDRAIL (M.5 13-14/18-19) - LEVEL U1-01 (SUBMITTAL APPROVAL Y_SBMT#0493-3),,10,120,20,0,0,0,50,0,0,0,,2025-09-02 07:00,,2025-11-24 07:00,2025-11-25 17:00,,2025-11-21 07:00,2025-11-24 17:00,2025-11-21 07:00,2025-11-24 17:00,2025-09-02 07:00,2025-09-08 17:00,2025-11-24 07:00,2025-11-25 17:00,,PT_Normal,,,,,BFvRZQE/j0S9M4Nl03NQLA,hIKWpsY/+0yMVvxbBHrvPg,,,N,0,0,,,,,,,,2025-09-25 12:32,2025-11-20 21:42,jleon,jleon,,N,
112148260,122698,18114023,363246,0,N,1,N,N,CP_Drtn,TT_Task,DT_FixedDUR2,TK_Active,STAIR.2880,INSTALL N19 HANDRAIL - LEVEL 01,,-200,320,190,0,0,0,30,0,0,0,,2025-10-24 07:00,,2025-11-07 07:00,2025-12-05 17:00,,2025-12-09 07:00,2026-01-07 17:00,2025-12-09 07:00,2026-01-07 17:00,2025-10-24 07:00,2025-10-28 17:00,2025-11-07 07:00,2025-12-05 17:00,,PT_Normal,,,,,2QR7p29C8kK6fxC2RENLzw,WUy8QMNR0kWW0RyCjsv9mQ,,,N,0,0,,,,,,,,2025-09-25 12:38,2025-11-20 21:46,jleon,jleon,,N,
112229095,122698,18114518,363246,0,N,1,N,N,CP_Drtn,TT_Task,DT_FixedDUR2,TK_Active,CN.SEA5.11220,IMPACT - SECAI CONSTRAINTS REMOVAL - TRAFFIC RAILS - ELEVATOR 22 - LEVEL 1 (TO BE REMOVED IN 2 MONTHS FROM 10/16),,-330,0,390,0,0,0,50,0,0,0,,2025-09-02 07:00,,2025-10-07 07:00,2025-12-02 17:00,,2025-11-21 07:00,2026-01-21 17:00,2025-11-21 07:00,2026-01-21 17:00,2025-09-02 07:00,2025-09-08 17:00,2025-10-07 07:00,2025-12-02 17:00,,PT_Normal,,,,,V+/M+7/2HkmGh6JRuDSrNA,BA1sI126QUikP2gk4qPKew,,,N,0,0,,,,,,,,2025-09-25 14:06,2025-11-20 21:42,jleon,jleon,,N,
112341914,122698,18114023,363246,0,N,1,N,N,CP_Drtn,TT_Task,DT_FixedDUR2,TK_Active,STAIR.2920,IMPACT - SECAI CONSTRAINT REMOVAL - STAIR #66 - SUW - 32-L - LEVEL 04,,-310,0,220,0,0,0,50,0,0,0,,2025-09-02 07:00,,2025-10-09 07:00,2025-11-07 17:00,,2025-11-21 07:00,2025-12-26 17:00,2025-11-21 07:00,2025-12-26 17:00,2025-09-02 07:00,2025-09-08 17:00,2025-10-09 07:00,2025-11-07 17:00,,PT_Normal,,,,,KGPyyDwl9U+JxbXGoJgXTQ,2Z95kMXsyEi/ywkPsQ2NZA,,,N,0,0,,,,,,,,2025-09-29 17:33,2025-11-20 21:42,jleon,jleon,,N,
112341916,122698,18114023,363246,0,N,1,N,N,CP_Drtn,TT_Task,DT_FixedDUR2,TK_Active,STAIR.2930,IMPACT - SECAI CONSTRAINT REMOVAL - STAIR #72 - SUE - 5-C - LEVEL 04,,-270,0,260,0,0,0,50,0,0,0,,2025-09-02 07:00,,2025-10-15 07:00,2025-11-19 17:00,,2025-11-21 07:00,2026-01-02 17:00,2025-11-21 07:00,2026-01-02 17:00,2025-09-02 07:00,2025-09-08 17:00,2025-10-15 07:00,2025-11-19 17:00,,PT_Normal,,,,,X7F5zfD5CUWEcmk5fWatvA,EuW6b7/2HE62IU0Xnv0/Cg,,,N,0,0,,,,,,,,2025-09-29 17:37,2025-11-20 21:42,jleon,jleon,,N,
112641476,122698,18114907,597,0,N,1,N,N,CP_Drtn,TT_Task,DT_FixedDUR2,TK_Active,FAB110203A-35,IMPACT - SECAI EXTERIOR TRENCH BLOCKING DOOR INSTALL - FAB110203A,,-22,0,40,0,0,0,40,0,0,0,,2025-09-16 08:00,,2025-11-18 10:00,2025-11-25 10:00,,2025-11-21 08:00,2025-11-27 17:00,2025-11-21 08:00,2025-11-27 17:00,2025-09-16 08:00,2025-09-22 17:00,2025-11-18 10:00,2025-11-25 10:00,,PT_Normal,,,,,8yBKXfPSCEatILa1iNNl0w,GqAPHTVd+E+3Mf1b2Xbywg,,,N,0,0,,,,,,,,2025-10-01 19:56,2025-11-20 21:59,jleon,jleon,,N,
112910288,122698,18114889,597,0,N,1,N,N,CP_Drtn,TT_Task,DT_FixedDUR2,TK_Active,FAB110401C-43,IMPACT - SECAI BARRICADE AND SCAFFOLD INTERFERING WITH DOOR INSTALLATION - FAB110401C,,18,448,40,0,0,0,80,0,0,0,,2025-08-18 08:00,,2025-11-25 10:00,2025-12-02 10:00,,2025-11-21 08:00,2025-11-27 17:00,2025-11-21 08:00,2025-11-27 17:00,2025-08-18 08:00,2025-08-29 17:00,2025-11-25 10:00,2025-12-02 10:00,,PT_Normal,,,,,HzFxWWZp8UCk5j7jcOBQ0g,PYw8pCmqZUmIu+DBLadLeg,,,N,0,0,,,,,,,,2025-10-02 19:59,2025-11-20 21:46,jleon,jleon,,N,
112912431,122698,18114023,363246,0,N,1,N,N,CP_Drtn,TT_Task,DT_FixedDUR2,TK_Active,CN.SWB3.6681,GL A PEDESTAL LAM - SUE - SECTOR 62 - GL A-D/8-15,,-190,0,30,0,0,0,50,0,0,0,,2025-10-27 07:00,,2025-10-27 07:00,2025-10-29 17:00,,2025-11-21 07:00,2025-11-25 17:00,2025-11-21 07:00,2025-11-25 17:00,2025-11-06 07:00,2025-11-12 17:00,2025-10-27 07:00,2025-10-29 17:00,,PT_Normal,,,,,ifjS1ha0fUS8s0Kbct9E5Q,v18VdTm9nkWaXsNIYJpbJg,,,N,0,0,,,,,,,,2025-10-03 13:20,2025-11-20 21:42,jleon,jleon,,N,
112912433,122698,18114023,363246,0,N,1,N,N,CP_Drtn,TT_Task,DT_FixedDUR2,TK_Active,CN.SWB3.6701,GL A PEDESTAL LAM - SUE - SECTOR 63 - GL A-D/15-21,,-140,20,30,0,0,0,50,0,0,0,,2025-10-27 07:00,,2025-11-03 07:00,2025-11-05 17:00,,2025-11-21 07:00,2025-11-25 17:00,2025-11-21 07:00,2025-11-25 17:00,2025-10-31 07:00,2025-11-06 17:00,2025-11-03 07:00,2025-11-05 17:00,,PT_Normal,,,,,Rg2za0cTlECPOBhes3CUxw,goTPikse6k2kZIj8SQ9EVw,,,N,0,0,,,,,,,,2025-10-03 13:20,2025-11-20 21:42,jleon,jleon,,N,
112912436,122698,18114023,363246,0,N,1,N,N,CP_Drtn,TT_Task,DT_FixedDUR2,TK_Active,CN.SWB3.6731,GL A PEDESTAL LAM - SUE - SECTOR 64 - GL A-D/21-27,,-110,0,50,0,0,0,50,0,0,0,,2025-10-31 07:00,,2025-11-06 07:00,2025-11-12 17:00,,2025-11-21 07:00,2025-12-01 17:00,2025-11-21 07:00,2025-12-01 17:00,2025-10-31 07:00,2025-11-06 17:00,2025-11-06 07:00,2025-11-12 17:00,,PT_Normal,,,,,W5L4wd2mC0aSRC4yQLUgYA,Rg2za0cTlECPOBhes3CUxw,,,N,0,0,,,,,,,,2025-10-03 13:21,2025-11-20 21:42,jleon,jleon,,N,
112912439,122698,18114023,363246,0,N,1,N,N,CP_Drtn,TT_Task,DT_FixedDUR2,TK_Active,CN.SWB3.6761,GL A PEDESTAL LAM - SUE - SECTOR 65 - GL A-D/27-33,,-60,240,50,0,0,0,50,0,0,0,,2025-10-31 07:00,,2025-11-13 07:00,2025-11-19 17:00,,2025-11-21 07:00,2025-12-01 17:00,2025-11-21 07:00,2025-12-01 17:00,2025-10-31 07:00,2025-11-06 17:00,2025-11-13 07:00,2025-11-19 17:00,,PT_Normal,,,,,JyUQmtJTv0+0ZL5PRjTDIA,W5L4wd2mC0aSRC4yQLUgYA,,,N,0,0,,,,,,,,2025-10-03 13:22,2025-11-20 21:42,jleon,jleon,,N,
112960250,122698,18114023,363246,0,N,1,N,N,CP_Drtn,TT_Task,DT_FixedDUR2,TK_Active,CN.SWB3.6931,IMPACT - MEP MATERIAL BLOCKING WORK AREA - SUW SECTOR 01-05,,-300,0,40,0,0,0,150,0,0,0,,2024-01-11 07:00,,2025-10-10 07:00,2025-10-15 17:00,,2025-11-21 07:00,2025-11-26 17:00,2025-11-21 07:00,2025-11-26 17:00,2025-01-13 07:00,2025-01-31 17:00,2025-10-10 07:00,2025-10-15 17:00,,PT_Normal,,,,,n2l2BfPn40mi9+DES0ehhg,rqCZZPAY4U6I2WcvCDf0rg,,,N,0,0,,,,,,,,2025-10-06 18:27,2025-11-20 21:42,jleon,jleon,,N,
112960251,122698,18114023,363246,0,N,1,N,N,CP_Drtn,TT_Task,DT_FixedDUR2,TK_Active,CN.SWB3.6941,IMPACT - MEP MATERIAL BLOCKING WORK AREA - SUE - SECTOR 61-65,,-300,0,40,0,0,0,150,0,0,0,,2024-01-11 07:00,,2025-10-10 07:00,2025-10-15 17:00,,2025-11-21 07:00,2025-11-26 17:00,2025-11-21 07:00,2025-11-26 17:00,2025-01-13 07:00,2025-01-31 17:00,2025-10-10 07:00,2025-10-15 17:00,,PT_Normal,,,,,LVtMmygDE0OMODL0jgVayg,rqCZZPAY4U6I2WcvCDf0rg,,,N,0,0,,,,,,,,2025-10-06 18:28,2025-11-20 21:42,jleon,jleon,,N,
112960252,122698,18114023,363246,0,N,1,N,N,CP_Drtn,TT_Task,DT_FixedDUR2,TK_Active,CN.SWB3.6951,IMPACT - MEP MATERIAL BLOCKING WORK AREA - FIZ - SECTOR 61-01-41-21,,-60,240,50,0,0,0,150,0,0,0,,2024-01-11 07:00,,2025-11-13 07:00,2025-11-19 17:00,,2025-11-21 07:00,2025-12-01 17:00,2025-11-21 07:00,2025-12-01 17:00,2025-01-13 07:00,2025-01-31 17:00,2025-11-13 07:00,2025-11-19 17:00,,PT_Normal,,,,,aeNYKvHEoUqdO75h7pGmZw,rqCZZPAY4U6I2WcvCDf0rg,,,N,0,0,,,,,,,,2025-10-06 18:28,2025-11-20 21:42,jleon,jleon,,N,
113019860,122698,18115104,597,0,N,1,N,N,CP_Drtn,TT_Task,DT_FixedDUR2,TK_Active,ZX-21665,IMPACT - SECAI MEP SCAFFOLD & TEMP POWER - Drywall & Inspect - Duct Shaft - 2F-SUW-FAB120101,,-16,0,80,0,240,240,120,0,0,0,,2025-09-25 08:00,,2025-11-19 08:00,2025-12-02 17:00,,2025-11-21 08:00,2025-12-04 17:00,2025-11-21 08:00,2025-12-04 17:00,2025-09-25 08:00,2025-10-15 17:00,2025-11-19 08:00,2025-12-02 17:00,,PT_Lowest,,,,,tB4C9MxUCEqpzvxjn3T10w,4ICBO8GQNE+B0zaOvE17Ew,,,N,0,0,,,,,,,,2025-10-08 13:59,2025-11-20 21:59,jleon,jleon,,N,
113019914,122698,18115115,597,0,N,1,N,N,CP_Drtn,TT_Task,DT_FixedDUR2,TK_Active,ZX-21685,IMPACT - SECAI MEP PIPES - Drywall & Inspect - PR Lifter Vestibule - 2F-FAB126511,,48,80,40,0,240,240,80,0,0,0,,2025-10-03 08:00,,2025-12-01 08:00,2025-12-05 17:00,,2025-11-21 08:00,2025-11-27 17:00,2025-11-21 08:00,2025-11-27 17:00,2025-10-03 08:00,2025-10-16 17:00,2025-12-01 08:00,2025-12-05 17:00,,PT_Low,,,,,HbiFNWXY1021Mv/ErBTySA,qJceNx3l80GMiukiUEAfmw,,,N,0,0,,,,,,,,2025-10-08 14:26,2025-11-20 21:42,jleon,jleon,,N,
113020430,122698,18114795,597,0,N,1,N,N,CP_Drtn,TT_Task,DT_FixedDUR2,TK_Active,FAB112103E-04,INSTALL DOOR & HARDWARE - FAB112103E,,16,448,40,0,0,0,40,0,0,0,,2025-10-03 08:00,,2025-11-25 08:00,2025-12-01 17:00,,2025-11-21 08:00,2025-11-27 17:00,2025-11-21 08:00,2025-11-27 17:00,2025-10-03 08:00,2025-10-09 17:00,2025-11-25 08:00,2025-12-01 17:00,,PT_Normal,,,,,9pFLDJhjmUSVa1qyGnGpeQ,K37nNNCYokWWE4zhMgJisA,,,N,0,0,,,,,,,,2025-10-08 19:22,2025-11-20 21:46,jleon,jleon,,N,
113025493,122698,18114538,597,0,N,1,N,N,CP_Drtn,TT_Task,DT_FixedDUR2,TK_Active,IMPACT3 - constraint,IMPACT - PRICING FOR IOCC - RFI 1779/1781/1835 DOOR THRESHOLD AND WP - SHOP DWG - ALL LEVEL 4 EXTERIOR DOORS,,-110,0,24,0,0,0,80,0,0,0,,2025-09-23 08:00,,2025-11-03 10:00,2025-11-06 10:00,,2025-11-21 08:00,2025-11-25 17:00,2025-11-21 08:00,2025-11-25 17:00,2025-09-23 08:00,2025-10-06 17:00,2025-11-03 10:00,2025-11-06 10:00,,PT_Normal,,,,,p4be81ILFkC4xJxoY7O9+g,/DTNy40uNkWnY5HmHPNbHg,,,N,0,0,,,,,,,,2025-10-09 14:36,2025-11-20 21:42,jleon,jleon,,N,
113331699,122698,18114023,363246,0,N,1,N,N,CP_Drtn,TT_Task,DT_FixedDUR2,TK_Active,CN.BB51.ST.3692,IMPACT - SECAI TOOKOVER - IOCC 1578 (GDA) MATERIAL LEAD TIME - VERTICAL EJ FROM BERG- LVL 3/4 - VESTIBULE 5 -,,-80,0,10,0,10,10,150,0,0,0,,2025-10-13 07:00,,2025-11-11 07:00,2025-11-11 17:00,,2025-11-21 07:00,2025-11-21 17:00,2025-11-21 07:00,2025-11-21 17:00,2025-10-13 07:00,2025-10-31 17:00,2025-11-11 07:00,2025-11-11 17:00,,PT_Normal,,,,,PSnbZRZTJ0+LyY88oLPOhQ,TLgAtEGLxUiL/BgVxVFsNw,,,N,0,0,,,,,,,,2025-10-10 15:50,2025-11-20 21:42,jleon,jleon,,N,
113338721,122698,18114023,363246,0,N,1,N,N,CP_Drtn,TT_Task,DT_FixedDUR2,TK_Active,CN.ST.36851,IMPACT - IOCC 1578 (GDA) - VESTIBULE EXP JOINT - GL 33 - STAIR 18 - C-D,,-140,0,70,0,0,0,150,0,0,0,,2025-10-13 07:00,,2025-11-03 07:00,2025-11-11 17:00,,2025-11-21 07:00,2025-12-03 17:00,2025-11-21 07:00,2025-12-03 17:00,2025-10-13 07:00,2025-10-31 17:00,2025-11-03 07:00,2025-11-11 17:00,,PT_Normal,,,,,On4kGzkBFUGzsZjjncrJeg,iPZFc7GBYEmAQeruNPo6aQ,,,N,0,0,,,,,,,,2025-10-10 18:27,2025-11-20 21:42,jleon,jleon,,N,
113566357,122698,18114538,597,0,N,1,N,N,CP_Drtn,TT_Task,DT_FixedDUR2,TK_Active,IMPACT5 - constraint,IMPACT - RFI SECAI-FAB-A-10843 - Hollow Metal Doors - Clean Room Paint System Confirmation,,-64,368,120,0,0,0,120,0,0,0,,2025-05-14 08:00,,2025-11-11 08:00,2025-12-01 17:00,,2025-11-21 08:00,2025-12-11 17:00,2025-11-21 08:00,2025-12-11 17:00,2025-05-14 08:00,2025-06-03 17:00,2025-11-11 08:00,2025-12-01 17:00,,PT_Normal,,,,,SyZFKTLp9kGHdBt1zI/yGA,sScm6qnOs0KvF85zSc73dg,,,N,0,0,,,,,,,,2025-10-13 18:41,2025-11-20 21:46,jleon,jleon,,N,
114072474,122698,18114833,597,0,N,1,N,N,CP_Drtn,TT_Task,DT_FixedDUR2,TK_Active,FAB116519D-17,IMPACT - PRICING REQURED FOR DESIGN CHANGE - FAB116519D - C/29.5,,-8,0,40,0,0,0,40,0,0,0,,2025-10-15 08:00,,2025-11-20 08:00,2025-11-26 17:00,,2025-11-21 08:00,2025-11-27 17:00,2025-11-21 08:00,2025-11-27 17:00,2025-10-15 08:00,2025-10-21 17:00,2025-11-20 08:00,2025-11-26 17:00,,PT_Normal,,,,,tgRcQgLy+UaZA1RttMd1UA,Y67ilghFtkS8YS+VEqhGKQ,,,N,0,0,,,,,,,,2025-10-17 14:17,2025-11-20 21:42,jleon,jleon,,N,
114085842,122698,18114518,363245,0,N,1,N,N,CP_Drtn,TT_Task,DT_FixedDUR2,TK_Active,CN.SWB5.11160,SECAI TOOKOVER- Reinstall INSULATION - INSTALLATION - NW- BREEZEWAY,,-40,0,20,0,580,580,20,58,0,58,,2025-10-13 07:00,,2025-11-17 07:00,2025-11-18 17:00,,2025-11-21 07:00,2025-11-22 17:00,2025-11-21 07:00,2025-11-22 17:00,2025-10-05 07:00,2025-10-06 17:00,2025-11-17 07:00,2025-11-18 17:00,,PT_Normal,,,,,UsHbsmYHe0CPY431ZnyT+g,3y2q1L9ubEqVe/9470qzmg,,,N,0,0,,,,,,,,2025-10-17 15:22,2025-11-20 21:42,ARAJSHEKAR,jleon,,N,
115120506,122698,18114023,363246,0,N,1,N,N,CP_Drtn,TT_Task,DT_FixedDUR2,TK_Active,STAIR.3060,IMPACT - FABRICATION/MATERIAL ON SITE- N19 HANDRAIL - LEVEL 01,,-200,0,100,0,0,0,100,0,0,0,,2025-10-16 07:00,,2025-10-24 07:00,2025-11-06 17:00,,2025-11-21 07:00,2025-12-08 17:00,2025-11-21 07:00,2025-12-08 17:00,2025-10-16 07:00,2025-10-29 17:00,2025-10-24 07:00,2025-11-06 17:00,,PT_Normal,,,,,96nFzIAtgkmu3ylkUVFjqA,+VRdWeW5yUiHbocmfdZ6oA,,,N,0,0,,,,,,,,2025-10-23 15:32,2025-11-20 21:42,jleon,jleon,,N,
115466912,122698,18114899,597,0,N,1,N,N,CP_Drtn,TT_Task,DT_FixedDUR2,TK_Active,FAB110304A-70,IMPACT - SECAI COORDS RUNNING TROUGH OPEING - FAB110304A,,-22,0,40,0,0,0,80,0,0,0,,2025-10-14 08:00,,2025-11-18 10:00,2025-11-25 10:00,,2025-11-21 08:00,2025-11-27 17:00,2025-11-21 08:00,2025-11-27 17:00,2025-10-14 08:00,2025-10-27 17:00,2025-11-18 10:00,2025-11-25 10:00,,PT_Normal,,,,,HvQmb0u44E6lsTgtYo6lzA,SnXdsx44uUaCYhRe1w4DpA,,,N,0,0,,,,,,,,2025-10-28 16:44,2025-11-20 21:59,jleon,jleon,,N,
115466915,122698,18114804,597,0,N,1,N,N,CP_Drtn,TT_Task,DT_FixedDUR2,TK_Active,FAB110404D-70,IMPACT - SECAI SCAFFOLD IMPEDING DOOR INSTALLATION AND SECAI MISSING DRYWALL COMPLETION - FAB110404D,,-22,0,40,0,0,0,80,0,0,0,,2025-09-16 08:00,,2025-11-18 10:00,2025-11-25 10:00,,2025-11-21 08:00,2025-11-27 17:00,2025-11-21 08:00,2025-11-27 17:00,2025-09-16 08:00,2025-09-29 17:00,2025-11-18 10:00,2025-11-25 10:00,,PT_Normal,,,,,UGwCvaipD0OCcvw4UFeVCA,i6kHkgVvVkC06g7+vFAjcQ,,,N,0,0,,,,,,,,2025-10-28 16:51,2025-11-20 21:59,jleon,jleon,,N,
115466919,122698,18114968,597,0,N,1,N,N,CP_Drtn,TT_Task,DT_FixedDUR2,TK_Active,FAB116413A-21,IMPACT - SECAI DUCTWORK IN DOOR SWING PATH - FAB116413A,,-22,0,40,0,0,0,80,0,0,0,,2025-09-29 08:00,,2025-11-18 10:00,2025-11-25 10:00,,2025-11-21 08:00,2025-11-27 17:00,2025-11-21 08:00,2025-11-27 17:00,2025-09-25 08:00,2025-10-08 17:00,2025-11-18 10:00,2025-11-25 10:00,,PT_Normal,,,,,BZuuefwcBkyrcjvQhBcu8g,1ji9l1rV8k2ZyxkdeQxxtw,,,N,0,0,,,,,,,,2025-10-28 17:00,2025-11-20 21:59,jleon,jleon,,N,
115466920,122698,18114931,597,0,N,1,N,N,CP_Drtn,TT_Task,DT_FixedDUR2,TK_Active,FAB116103A-6,IMPACT - SECAI ELECTRICAL/LIGHT SWITCH PANEL IN THE OPENING - FAB116103A,,-30,0,40,0,0,0,80,0,0,0,,2025-08-28 08:00,,2025-11-17 10:00,2025-11-24 10:00,,2025-11-21 08:00,2025-11-27 17:00,2025-11-21 08:00,2025-11-27 17:00,2025-08-28 08:00,2025-09-10 17:00,2025-11-17 10:00,2025-11-24 10:00,,PT_Normal,,,,,JNEqPBPdZEKtyYKu7OXrcA,aGRFer0TxEW8lefVtK4XsQ,,,N,0,0,,,,,,,,2025-10-28 17:03,2025-11-20 21:59,jleon,jleon,,N,
115466921,122698,18114826,597,0,N,1,N,N,CP_Drtn,TT_Task,DT_FixedDUR2,TK_Active,FAB116304C-70,IMPACT SECAI SCAFFOLD - FAB116304C,,-22,0,40,0,0,0,80,0,0,0,,2025-10-23 08:00,,2025-11-18 10:00,2025-11-25 10:00,,2025-11-21 08:00,2025-11-27 17:00,2025-11-21 08:00,2025-11-27 17:00,2025-10-27 08:00,2025-11-07 17:00,2025-11-18 10:00,2025-11-25 10:00,,PT_Normal,,,,,/MDNNyiea0ujunNvUSKcmg,d0OdrncmD0KJDZlDpCHoJA,,,N,0,0,,,,,,,,2025-10-28 17:04,2025-11-20 21:59,jleon,jleon,,N,
115466922,122698,18114945,597,0,N,1,N,N,CP_Drtn,TT_Task,DT_FixedDUR2,TK_Active,FAB116301B-35,IMPACT - SECAI DUCT CLASH WITH DOOR SWING- FAB116301B,,-22,0,40,0,0,0,80,0,0,0,,2025-09-26 08:00,,2025-11-18 10:00,2025-11-25 10:00,,2025-11-21 08:00,2025-11-27 17:00,2025-11-21 08:00,2025-11-27 17:00,2025-09-26 08:00,2025-10-09 17:00,2025-11-18 10:00,2025-11-25 10:00,,PT_Normal,,,,,r69btNlJaUKaplT6/VRNSA,PZNEM8fomkeCSWJ/LITkVg,,,N,0,0,,,,,,,,2025-10-28 17:08,2025-11-20 21:59,jleon,jleon,,N,
115467834,122698,18115053,597,0,N,1,N,N,CP_Drtn,TT_Task,DT_FixedDUR2,TK_Active,FAB124102B-21,IMPACT - SECAI MEP SCAFFOLD - FAB124102B,,-22,0,40,0,0,0,80,0,0,0,,2025-10-23 08:00,,2025-11-18 10:00,2025-11-25 10:00,,2025-11-21 08:00,2025-11-27 17:00,2025-11-21 08:00,2025-11-27 17:00,2025-10-23 08:00,2025-11-05 17:00,2025-11-18 10:00,2025-11-25 10:00,,PT_Normal,,,,,hqvjot40pEef5qmPneV1+Q,JzneXmI0A0ahEWm+3lXi4w,,,N,0,0,,,,,,,,2025-10-28 18:53,2025-11-20 21:59,jleon,jleon,,N,
115468346,122698,18115076,597,0,N,1,N,N,CP_Drtn,TT_Task,DT_FixedDUR2,TK_Active,FAB124101B-21,IMPACT - SECAI MEP SCAFFOLD - FAB124101B,,-22,0,40,0,0,0,80,0,0,0,,2025-10-20 08:00,,2025-11-18 10:00,2025-11-25 10:00,,2025-11-21 08:00,2025-11-27 17:00,2025-11-21 08:00,2025-11-27 17:00,2025-10-20 08:00,2025-10-31 17:00,2025-11-18 10:00,2025-11-25 10:00,,PT_Normal,,,,,8hWOKyMSk0OUEylw1KuTXQ,uu3QYL7xrEus/DgfI2fG0g,,,N,0,0,,,,,,,,2025-10-28 18:54,2025-11-20 21:59,jleon,jleon,,N,
115468347,122698,18115076,597,0,N,1,N,N,CP_Drtn,TT_Task,DT_FixedDUR2,TK_Active,FAB124101A-21,IMPACT - SECAI MEP SCAFFOLD - FAB124101A,,-22,0,40,0,0,0,80,0,0,0,,2025-10-20 08:00,,2025-11-18 10:00,2025-11-25 10:00,,2025-11-21 08:00,2025-11-27 17:00,2025-11-21 08:00,2025-11-27 17:00,2025-10-20 08:00,2025-10-31 17:00,2025-11-18 10:00,2025-11-25 10:00,,PT_Normal,,,,,UuRiG1FAckukR9VI3ELCFA,mk13kO06mEaMsJPVd7AOCw,,,N,0,0,,,,,,,,2025-10-28 18:55,2025-11-20 21:59,jleon,jleon,,N,
115468349,122698,18115123,597,0,N,1,N,N,CP_Drtn,TT_Task,DT_FixedDUR2,TK_Active,FAB126505A-60,IMPACT- SECAI REMOVED FRAME AWAITING REINSTALLATION BY SECAI - FAB126505A,,0,0,40,0,0,0,80,0,0,0,,2025-08-12 08:00,,2025-11-21 08:00,2025-11-27 17:00,,2025-11-21 08:00,2025-11-27 17:00,2025-11-21 08:00,2025-11-27 17:00,2025-08-12 08:00,2025-08-25 17:00,2025-11-21 08:00,2025-11-27 17:00,,PT_Normal,,,,,zjd/5qlwykecdLGcm78upw,OE2H2/mAA0S+M+BpBHfrUw,,,N,0,0,,,,,,,,2025-10-28 19:03,2025-11-20 21:59,jleon,jleon,,N,
115468350,122698,18114736,597,0,N,1,N,N,CP_Drtn,TT_Task,DT_FixedDUR2,TK_Active,FAB130401A-6,IMPACT - SECAI MEP SCAFFOLD - FAB130401A,,-22,0,40,0,0,0,80,0,0,0,,2025-08-20 08:00,,2025-11-18 10:00,2025-11-25 10:00,,2025-11-21 08:00,2025-11-27 17:00,2025-11-21 08:00,2025-11-27 17:00,2025-08-20 08:00,2025-09-02 17:00,2025-11-18 10:00,2025-11-25 10:00,,PT_Normal,,,,,Bh7iVpT3ukiwis+HA9BIPw,dGMM69MozUCI/VM2X43p/g,,,N,0,0,,,,,,,,2025-10-28 19:06,2025-11-20 21:59,jleon,jleon,,N,
115468351,122698,18508364,597,0,N,1,N,N,CP_Drtn,TT_Task,DT_FixedDUR2,TK_Active,FAB132102A-60,IMPACT - SECAI MEP SCAFFOLD - FAB132102A,,-32,0,40,0,0,0,80,0,0,0,,2025-10-23 08:00,,2025-11-17 08:00,2025-11-21 17:00,,2025-11-21 08:00,2025-11-27 17:00,2025-11-21 08:00,2025-11-27 17:00,2025-10-23 08:00,2025-11-05 17:00,2025-11-17 08:00,2025-11-21 17:00,,PT_Normal,,,,,2p01ejhuOUW20ekIRWopwA,KqjCHvQRY0+3h4m6Zze04A,,,N,0,0,,,,,,,,2025-10-28 19:07,2025-11-20 21:59,jleon,jleon,,N,
115468352,122698,18114753,597,0,N,1,N,N,CP_Drtn,TT_Task,DT_FixedDUR2,TK_Active,FAB136302B-60,IMPACT - TEMP A/C UNIT - FAB136302B,,-62,0,80,0,0,0,80,0,0,0,,2025-08-20 08:00,,2025-11-11 10:00,2025-11-25 10:00,,2025-11-21 08:00,2025-12-04 17:00,2025-11-21 08:00,2025-12-04 17:00,2025-08-20 08:00,2025-09-02 17:00,2025-11-11 10:00,2025-11-25 10:00,,PT_Normal,,,,,8a3geChprk6eqLUFQBM+Mg,9QvhEHOjPk+5wWp8ayddlQ,,,N,0,0,,,,,,,,2025-10-28 19:09,2025-11-20 21:42,jleon,jleon,,N,
115603818,122698,18115067,597,0,N,1,N,N,CP_Drtn,TT_Task,DT_FixedDUR2,TK_Active,ZX-21705,IMPACT - SECAI Temp air ducts - Elevator Hall #03 - 2F-FAB120305,,-88,0,120,0,240,240,120,0,0,0,,2025-10-01 08:00,,2025-11-06 08:00,2025-11-26 17:00,,2025-11-21 08:00,2025-12-11 17:00,2025-11-21 08:00,2025-12-11 17:00,2025-10-01 08:00,2025-10-21 17:00,2025-11-06 08:00,2025-11-26 17:00,,PT_Normal,,,,,3kL5ZKRY6UGX5xBGvVuNHQ,xiwiKqjigk+2FUXlEbg+Mg,,,N,0,0,,,,,,,,2025-10-29 18:25,2025-11-20 21:42,jleon,jleon,,N,
115603819,122698,18115128,597,0,N,1,N,N,CP_Drtn,TT_Task,DT_FixedDUR2,TK_Active,ZX-21715,IMPACT - SECAI TEMP DUCTS - Duct Shaft - 2F-SUW-FAB120312,,-8,0,80,0,0,0,120,0,0,0,,2025-10-01 08:00,,2025-11-20 08:00,2025-12-03 17:00,,2025-11-21 08:00,2025-12-04 17:00,2025-11-21 08:00,2025-12-04 17:00,2025-10-01 08:00,2025-10-21 17:00,2025-11-20 08:00,2025-12-03 17:00,,PT_Low,,,,,EJEqQ7pj1kKgOC0MucsA4g,rgNtV8gcTESSGHtHXRP4YQ,,,N,0,0,,,,,,,,2025-10-29 18:26,2025-11-20 21:59,jleon,jleon,,N,
115603834,122698,18115130,597,0,N,1,N,N,CP_Drtn,TT_Task,DT_FixedDUR2,TK_Active,ZX-21725,IMPACT - SECAI MEP SCAFFOLD IN THE AREA - Duct Shaft - 2F-SUE-FAB126105,,-8,0,80,0,0,0,120,0,0,0,,2025-10-01 08:00,,2025-11-20 08:00,2025-12-03 17:00,,2025-11-21 08:00,2025-12-04 17:00,2025-11-21 08:00,2025-12-04 17:00,2025-10-01 08:00,2025-10-21 17:00,2025-11-20 08:00,2025-12-03 17:00,,PT_Low,,,,,Q6T2mzUZB0CksbcxBbzNJw,az6FgmrlWUKNjN6BoXQCiA,,,N,0,0,,,,,,,,2025-10-29 18:28,2025-11-20 21:59,jleon,jleon,,N,
115603839,122698,18115096,597,0,N,1,N,N,CP_Drtn,TT_Task,DT_FixedDUR2,TK_Active,ZX-21735,IMPACT - SECAI MEP SCAFFOLD IN THE AREA- Duct Shaft - 2F-SUE-FAB126401,,-48,0,80,0,240,240,120,0,0,0,,2025-10-01 08:00,,2025-11-13 08:00,2025-11-26 17:00,,2025-11-21 08:00,2025-12-04 17:00,2025-11-21 08:00,2025-12-04 17:00,2025-10-01 08:00,2025-10-21 17:00,2025-11-13 08:00,2025-11-26 17:00,,PT_Low,,,,,3tMUudd0FUCoKU5X6aHcVw,LGgXp9z8f0S01x8NmuttzA,,,N,0,0,,,,,,,,2025-10-29 18:29,2025-11-20 21:59,jleon,jleon,,N,
115603841,122698,18115096,597,0,N,1,N,N,CP_Drtn,TT_Task,DT_FixedDUR2,TK_Active,ZX-21745,IMPACT - SECAI MEP PIPES AND DUCTWORK - Duct Shaft - 2F-SUE-FAB126401,,-48,0,80,0,240,240,120,0,0,0,,2025-10-01 08:00,,2025-11-13 08:00,2025-11-26 17:00,,2025-11-21 08:00,2025-12-04 17:00,2025-11-21 08:00,2025-12-04 17:00,2025-10-01 08:00,2025-10-21 17:00,2025-11-13 08:00,2025-11-26 17:00,,PT_Low,,,,,v30GMk2INUq9xFmoBmBwAQ,3tMUudd0FUCoKU5X6aHcVw,,,N,0,0,,,,,,,,2025-10-29 18:30,2025-11-20 21:59,jleon,jleon,,N,
115603843,122698,18115096,597,0,N,1,N,N,CP_Drtn,TT_Task,DT_FixedDUR2,TK_Active,ZX-21755,IMPACT - SECAI DEMO DRYWALL - Duct Shaft - 2F-SUE-FAB126401,,-48,0,80,0,240,240,120,0,0,0,,2025-10-01 08:00,,2025-11-13 08:00,2025-11-26 17:00,,2025-11-21 08:00,2025-12-04 17:00,2025-11-21 08:00,2025-12-04 17:00,2025-10-01 08:00,2025-10-21 17:00,2025-11-13 08:00,2025-11-26 17:00,,PT_Low,,,,,Vi7MrV3uzUSUXSdmMi8glw,v30GMk2INUq9xFmoBmBwAQ,,,N,0,0,,,,,,,,2025-10-29 18:31,2025-11-20 21:59,jleon,jleon,,N,
115603844,122698,18115100,597,0,N,1,N,N,CP_Drtn,TT_Task,DT_FixedDUR2,TK_Active,ZX-21765,IMPACT- SECAI MEP SCAFFOLD - Clean Vestibule #19 - 2F-FAB126402,,-8,0,80,0,0,0,120,0,0,0,,2025-10-01 08:00,,2025-11-20 08:00,2025-12-03 17:00,,2025-11-21 08:00,2025-12-04 17:00,2025-11-21 08:00,2025-12-04 17:00,2025-10-01 08:00,2025-10-21 17:00,2025-11-20 08:00,2025-12-03 17:00,,PT_High,,,,,7SIUj6eAQk2jz6EyEMl8GQ,AKFxMwH6SUGLXkG9wribOQ,,,N,0,0,,,,,,,,2025-10-29 18:32,2025-11-20 21:59,jleon,jleon,,N,
115603884,122698,18114968,597,0,N,1,N,N,CP_Drtn,TT_Task,DT_FixedDUR2,TK_Active,ZX-21785,IMPACT - SECAI MEP SCAFFOLD IN THE AREA - Duct Shaft - 1F-SUE-FAB116413,,0,0,80,0,0,0,120,0,0,0,,2025-10-01 08:00,,2025-11-21 08:00,2025-12-04 17:00,,2025-11-21 08:00,2025-12-04 17:00,2025-11-21 08:00,2025-12-04 17:00,2025-10-01 08:00,2025-10-21 17:00,2025-11-21 08:00,2025-12-04 17:00,,PT_Lowest,,,,,yOWFJK/+80mrBdGMWGZQmQ,ha63TWLqHUiP8fKfTJ844g,,,N,0,0,,,,,,,,2025-10-29 18:43,2025-11-20 21:59,jleon,jleon,,N,
115603887,122698,18114834,597,0,N,1,N,N,CP_Drtn,TT_Task,DT_FixedDUR2,TK_Active,ZX-21795,IMPACT - SECAI MEP SCAFFOLD IN THE AREA - Duct Shaft - 1F-SUE-FAB116518,,8,40,80,0,0,0,120,0,0,0,,2025-10-01 08:00,,2025-11-24 08:00,2025-12-05 17:00,,2025-11-21 08:00,2025-12-04 17:00,2025-11-21 08:00,2025-12-04 17:00,2025-10-01 08:00,2025-10-21 17:00,2025-11-24 08:00,2025-12-05 17:00,,PT_Lowest,,,,,BIPGhVA4J06+xkvTWKuUhA,kcul0+wj/kS21jLZ/P0+FQ,,,N,0,0,,,,,,,,2025-10-29 18:44,2025-11-20 21:59,jleon,jleon,,N,
115603950,122698,18115128,597,0,N,1,N,N,CP_Drtn,TT_Task,DT_FixedDUR2,TK_Active,ZX-21805,IMPACT - SECAI MEP SCAFFOLD IN THE AREA - Duct Shaft - 2F-SUW-FAB120312,,-8,0,80,0,0,0,120,0,0,0,,2025-10-01 08:00,,2025-11-20 08:00,2025-12-03 17:00,,2025-11-21 08:00,2025-12-04 17:00,2025-11-21 08:00,2025-12-04 17:00,2025-10-01 08:00,2025-10-21 17:00,2025-11-20 08:00,2025-12-03 17:00,,PT_Low,,,,,e/92qj3rdEWBlpG+vi9VUg,EJEqQ7pj1kKgOC0MucsA4g,,,N,0,0,,,,,,,,2025-10-29 18:53,2025-11-20 21:59,jleon,jleon,,N,
115603952,122698,18115124,597,0,N,1,N,N,CP_Drtn,TT_Task,DT_FixedDUR2,TK_Active,ZX-21815,IMPACT - SECAI MEP SCAFFOLD IN THE AREA - Duct Shaft - 2F-SUW-FAB120403,,8,40,80,0,240,240,120,0,0,0,,2025-10-01 08:00,,2025-11-24 08:00,2025-12-05 17:00,,2025-11-21 08:00,2025-12-04 17:00,2025-11-21 08:00,2025-12-04 17:00,2025-10-01 08:00,2025-10-21 17:00,2025-11-24 08:00,2025-12-05 17:00,,PT_Low,,,,,ViAnPdKWgk2bCGp6HKOzFw,l0GmDUqdWUOq9V2048B0fg,,,N,0,0,,,,,,,,2025-10-29 18:54,2025-11-20 21:59,jleon,jleon,,N,
115603954,122698,18115114,597,0,N,1,N,N,CP_Drtn,TT_Task,DT_FixedDUR2,TK_Active,ZX-21825,IMPACT - SECAI SCAFFLOD IN THE AREA - Duct Shaft - 2F-SUW-FAB120512,,8,40,80,0,240,240,120,0,0,0,,2025-10-01 08:00,,2025-11-24 08:00,2025-12-05 17:00,,2025-11-21 08:00,2025-12-04 17:00,2025-11-21 08:00,2025-12-04 17:00,2025-10-01 08:00,2025-10-21 17:00,2025-11-24 08:00,2025-12-05 17:00,,PT_Low,,,,,SqChD916UkiUMzqP+qFJ6A,/5cDPRwiDUClc0XaUpjc3g,,,N,0,0,,,,,,,,2025-10-29 18:55,2025-11-20 21:59,jleon,jleon,,N,
115604005,122698,18115055,597,0,N,1,N,N,CP_Drtn,TT_Task,DT_FixedDUR2,TK_Active,ZX-21835,IMPACT - SECAI MEP SCAFFOLD IN THE AREA - Duct Shaft - 2F-SUE-FAB126301,,8,40,80,0,0,0,120,0,0,0,,2025-10-01 08:00,,2025-11-24 08:00,2025-12-05 17:00,,2025-11-21 08:00,2025-12-04 17:00,2025-11-21 08:00,2025-12-04 17:00,2025-10-01 08:00,2025-10-21 17:00,2025-11-24 08:00,2025-12-05 17:00,,PT_Low,,,,,EvHWbYvKgkGirHeHO9/Agg,/CPyZd9iW0mmv/b65SKZzw,,,N,0,0,,,,,,,,2025-10-29 18:57,2025-11-20 21:59,jleon,jleon,,N,
115604006,122698,18115105,597,0,N,1,N,N,CP_Drtn,TT_Task,DT_FixedDUR2,TK_Active,ZX-21845,IMPACT - SECAI MEP SCAFFOLD IN THE AREA - Duct Shaft - 2F-SUE-FAB126403,,-8,0,80,0,0,0,120,0,0,0,,2025-10-01 08:00,,2025-11-20 08:00,2025-12-03 17:00,,2025-11-21 08:00,2025-12-04 17:00,2025-11-21 08:00,2025-12-04 17:00,2025-10-01 08:00,2025-10-21 17:00,2025-11-20 08:00,2025-12-03 17:00,,PT_Low,,,,,y5QwbqR4TkWM+BNHYLfl2A,WORdZ2iw+UOoGeOB2nE+GA,,,N,0,0,,,,,,,,2025-10-29 18:58,2025-11-20 21:59,jleon,jleon,,N,
115604007,122698,18115119,597,0,N,1,N,N,CP_Drtn,TT_Task,DT_FixedDUR2,TK_Active,ZX-21855,IMPACT - SECAI MEP SCAFFOLD IN THE AREA - Duct Shaft - 2F-SUE-FAB126510,,0,0,80,0,0,0,120,0,0,0,,2025-10-01 08:00,,2025-11-21 08:00,2025-12-04 17:00,,2025-11-21 08:00,2025-12-04 17:00,2025-11-21 08:00,2025-12-04 17:00,2025-10-01 08:00,2025-10-21 17:00,2025-11-21 08:00,2025-12-04 17:00,,PT_Low,,,,,nsNfbVGXKUipsva7LJIFIQ,lmSMqRhk9kSDcnhIPyM96g,,,N,0,0,,,,,,,,2025-10-29 18:59,2025-11-20 21:59,jleon,jleon,,N,
115604008,122698,18115118,597,0,N,1,N,N,CP_Drtn,TT_Task,DT_FixedDUR2,TK_Active,ZX-21865,IMPACT - SECAI MEP SCAFFOLD IN THE AREA - Duct Shaft - 2F-SUE-FAB126507,,0,0,80,0,0,0,120,0,0,0,,2025-10-01 08:00,,2025-11-21 08:00,2025-12-04 17:00,,2025-11-21 08:00,2025-12-04 17:00,2025-11-21 08:00,2025-12-04 17:00,2025-10-01 08:00,2025-10-21 17:00,2025-11-21 08:00,2025-12-04 17:00,,PT_Low,,,,,7KYD+YPyMUyh3tXdwqjC3w,65DwLyl2SEWPnUXEuxcUpw,,,N,0,0,,,,,,,,2025-10-29 19:00,2025-11-20 21:59,jleon,jleon,,N,
115604009,122698,18114747,597,0,N,1,N,N,CP_Drtn,TT_Task,DT_FixedDUR2,TK_Active,ZX-21875,SECAI - MEP SCAFFOLD IN THE AREA - Duct Shaft - 3F-SUE-FAB136105,,-8,0,80,0,0,0,120,0,0,0,,2025-10-01 08:00,,2025-11-20 08:00,2025-12-03 17:00,,2025-11-21 08:00,2025-12-04 17:00,2025-11-21 08:00,2025-12-04 17:00,2025-10-01 08:00,2025-10-21 17:00,2025-11-20 08:00,2025-12-03 17:00,,PT_Normal,,,,,feHI962zOUmRTeBkivNFGQ,I0t5ptYekU+b+qrp7gVAAA,,,N,0,0,,,,,,,,2025-10-29 19:02,2025-11-20 21:59,jleon,jleon,,N,
115604010,122698,18114752,597,0,N,1,N,N,CP_Drtn,TT_Task,DT_FixedDUR2,TK_Active,ZX-21885,IMPACT - SECAI MEP SCAFFOLD IN THE AREA - Duct Shaft - 3F-SUE-FAB136201,,-24,0,80,0,288,288,120,0,0,0,,2025-10-01 08:00,,2025-11-18 08:00,2025-12-01 17:00,,2025-11-21 08:00,2025-12-04 17:00,2025-11-21 08:00,2025-12-04 17:00,2025-10-01 08:00,2025-10-21 17:00,2025-11-18 08:00,2025-12-01 17:00,,PT_Normal,,,,,QXkvUfMYDUycR2lopBT84A,EYwLm9H++0qlWO+BFTB2Gw,,,N,0,0,,,,,,,,2025-10-29 19:03,2025-11-20 21:59,jleon,jleon,,N,
115604011,122698,18114756,597,0,N,1,N,N,CP_Drtn,TT_Task,DT_FixedDUR2,TK_Active,ZX-21895,IMPACT- SECAI MEP SCAFFOLD IN THE AREA - Duct Shaft - 3F-SUE-FAB136401,,-32,0,120,0,288,288,120,0,0,0,,2025-08-18 08:00,,2025-11-17 08:00,2025-12-05 17:00,,2025-11-21 08:00,2025-12-11 17:00,2025-11-21 08:00,2025-12-11 17:00,2025-11-07 08:00,2025-11-27 17:00,2025-11-17 08:00,2025-12-05 17:00,,PT_Normal,,,,,4emQ9JO8aEm/N++yfZwUCg,VmwVRcyUR0mKoL5qLal0BA,,,N,0,0,,,,,,,,2025-10-29 19:04,2025-11-20 21:42,jleon,jleon,,N,
115604036,122698,18114758,597,0,N,1,N,N,CP_Drtn,TT_Task,DT_FixedDUR2,TK_Active,ZX-21905,IMPACT - SECAI MEP SCAFFOLD IN THE AREA - Duct Shaft - 3F-SUE-FAB136405,,8,40,80,0,288,288,120,0,0,0,,2025-10-01 08:00,,2025-11-24 08:00,2025-12-05 17:00,,2025-11-21 08:00,2025-12-04 17:00,2025-11-21 08:00,2025-12-04 17:00,2025-10-01 08:00,2025-10-21 17:00,2025-11-24 08:00,2025-12-05 17:00,,PT_Low,,,,,ndtESRKZ60Ogo6HZB3Wdug,Cd/dXjZsOkmjFHvd2GKkQQ,,,N,0,0,,,,,,,,2025-10-29 19:06,2025-11-20 21:59,jleon,jleon,,N,
115605210,122698,18114707,597,0,N,1,N,N,CP_Drtn,TT_Task,DT_FixedDUR2,TK_Active,ZX-21915,IMPACT- SECAI MEP SCAFFOLD IN THE AREA - Duct Shaft - 3F-SUE-FAB136507,,-8,0,80,0,168,168,120,0,0,0,,2025-10-01 08:00,,2025-11-20 08:00,2025-12-03 17:00,,2025-11-21 08:00,2025-12-04 17:00,2025-11-21 08:00,2025-12-04 17:00,2025-10-01 08:00,2025-10-21 17:00,2025-11-20 08:00,2025-12-03 17:00,,PT_Normal,,,,,r7/nZ5rANUSU/mmvK9rxBg,gB1JTZxoL06NEQ/bAzMFEw,,,N,0,0,,,,,,,,2025-10-29 19:08,2025-11-20 21:59,jleon,jleon,,N,
115605849,122698,18876582,597,0,N,1,N,N,CP_Drtn,TT_Task,DT_FixedDUR2,TK_Active,ZX-21925,IMPACT - SECAI MEP SCAFFOLD IN THE AREA - Duct Shaft - L4 - SUW-FAB140102,,-16,0,80,0,0,0,120,0,0,0,,2025-10-01 08:00,,2025-11-19 08:00,2025-12-02 17:00,,2025-11-21 08:00,2025-12-04 17:00,2025-11-21 08:00,2025-12-04 17:00,2025-10-01 08:00,2025-10-21 17:00,2025-11-19 08:00,2025-12-02 17:00,,PT_Low,,,,,LJFHQcxOok+HeQvh2VyNjQ,11f3DTB1oEiO5jBm3ulvsw,,,N,0,0,,,,,,,,2025-10-29 19:17,2025-11-20 21:59,jleon,jleon,,N,
115606701,122698,18114023,363246,0,N,1,N,N,CP_Drtn,TT_Task,DT_FixedDUR2,TK_Active,CN.SWA4.7610,IMPACT - SECAI MODIFIED SCAFFOLD FOR GRADE WORK - GDA WP IMPACTED - N30-31 TRESTLE B INFILL,,-130,0,50,0,0,0,60,0,0,0,,2025-10-24 07:00,,2025-11-04 07:00,2025-11-10 17:00,,2025-11-21 07:00,2025-12-01 17:00,2025-11-21 07:00,2025-12-01 17:00,2025-10-27 07:00,2025-11-03 17:00,2025-11-04 07:00,2025-11-10 17:00,,PT_Normal,,,,,8gSO/jgr90GaC3NUF0mhXg,TnN8ivwWwEewmcTMle5PFA,,,N,0,0,,,,,,,,2025-10-29 19:35,2025-11-20 21:42,ARAJSHEKAR,jleon,,N,
115633205,122698,18114974,597,0,N,1,N,N,CP_Drtn,TT_Task,DT_FixedDUR2,TK_Active,FAB110507A-04A,INSTALL DOOR & HARDWARE - FAB110507A,,18,448,40,0,0,0,40,0,0,0,,2025-11-05 08:00,,2025-11-25 10:00,2025-12-02 10:00,,2025-11-21 08:00,2025-11-27 17:00,2025-11-21 08:00,2025-11-27 17:00,2025-11-05 08:00,2025-11-11 17:00,2025-11-25 10:00,2025-12-02 10:00,,PT_Normal,,,,,w552cEObBUK8IZVT4p1HPg,1g8qDDAMk06jUONhCl8IUw,,,N,0,0,,,,,,,,2025-10-30 14:20,2025-11-20 21:46,jleon,jleon,,N,
115854040,122698,18114538,597,0,N,1,N,N,CP_Drtn,TT_Task,DT_FixedDUR2,TK_Active,FAB1-MS.PAINT,DOOR PAINT PENDING BUILDING CONDITION AND SECAI DIRECTION,,-920,0,488,0,0,0,560,0,0,0,,2025-10-27 08:00,,2025-06-13 08:00,2025-09-05 17:00,,2025-11-21 08:00,2026-02-13 17:00,2025-11-21 08:00,2026-02-13 17:00,2025-10-27 08:00,2026-01-30 17:00,2025-06-13 08:00,2025-09-05 17:00,,PT_Normal,,,,,aoNaJh3kuky4BU4gYf9ASw,d0IBvPGdXk+71oWLrWGozw,,,Y,0,0,,,,,,,,2025-10-30 16:21,2025-11-20 21:46,jleon,jleon,,N,
115891092,122698,18114023,363246,0,N,1,N,N,CP_Drtn,TT_Task,DT_FixedDUR2,TK_Active,STAIR.3070,IMPACT - SECAI TEMP RAMP REMOVAL - MEZZANINE GUARDRAIL STAIR #61 - SUW - 3-L - LEVEL 04G,,-80,0,50,0,0,0,50,0,0,0,,2025-10-27 07:00,,2025-11-11 07:00,2025-11-17 17:00,,2025-11-21 07:00,2025-12-01 17:00,2025-11-21 07:00,2025-12-01 17:00,2025-10-27 07:00,2025-10-31 17:00,2025-11-11 07:00,2025-11-17 17:00,,PT_Normal,,,,,hkRQFLH4vUOmwGODBSBVWQ,rSayTGGuZEK9eyojcVNqXQ,,,N,0,0,,,,,,,,2025-10-30 18:59,2025-11-20 21:42,jleon,jleon,,N,
115891172,122698,18114023,363246,0,N,1,N,N,CP_Drtn,TT_Task,DT_FixedDUR2,TK_Active,STAIR.3080,IMPACT - FABRICATION/MATERIAL- RFI 1843 - Roof Ramp Transitions - RAMP #32-B/ #32-L - SUE/SUW - 3 - LEVEL 4,,-10,40,50,0,0,0,50,0,0,0,,2025-10-23 07:00,,2025-11-20 07:00,2025-11-26 17:00,,2025-11-21 07:00,2025-12-01 17:00,2025-11-21 07:00,2025-12-01 17:00,2025-10-23 07:00,2025-10-29 17:00,2025-11-20 07:00,2025-11-26 17:00,,PT_Normal,,,,,HYPtqV9gzk+LRQhLLISJ7g,y/Qwtj95DEyNEoCETJxuiQ,,,N,0,0,,,,,,,,2025-10-30 19:03,2025-11-20 21:42,jleon,jleon,,N,
115891873,122698,18114779,597,0,N,1,N,N,CP_Drtn,TT_Task,DT_FixedDUR2,TK_Active,FAB130111C-70,IMPACT - SECAI FRAME REINSTALL - FAB130111C,,10,0,40,0,0,0,80,0,0,0,,2025-07-25 08:00,,2025-11-24 10:00,2025-12-01 10:00,,2025-11-21 08:00,2025-11-27 17:00,2025-11-21 08:00,2025-11-27 17:00,2025-07-25 08:00,2025-08-07 17:00,2025-11-24 10:00,2025-12-01 10:00,,PT_Normal,,,,,35TylBSu7UyKGP3z0QywpA,tvIkJYFkO0Gbz8692zfq0Q,,,N,0,0,,,,,,,,2025-10-30 20:09,2025-11-20 21:59,jleon,jleon,,N,
115911796,122698,18115052,597,0,N,1,N,N,CP_Drtn,TT_Task,DT_FixedDUR2,TK_Active,EJ-0001,IMPACT - SECAI Electrical Panel and cable tray impeading VEJ instal - Thermohygrostat Rm - 2F-FAB120104,,-32,0,40,0,240,240,40,0,0,0,,2025-10-16 08:00,,2025-11-17 08:00,2025-11-21 17:00,,2025-11-21 08:00,2025-11-27 17:00,2025-11-21 08:00,2025-11-27 17:00,2025-10-16 08:00,2025-10-22 17:00,2025-11-17 08:00,2025-11-21 17:00,,PT_Low,,,,,vUUF0Pz0GEiuFDws6EmqHg,iOitpKMSxEmL+gs1ZngIFA,,,N,0,0,,,,,,,,2025-10-31 14:33,2025-11-20 21:42,jleon,jleon,,N,
115999580,122698,18115130,597,0,N,1,N,N,CP_Drtn,TT_Task,DT_FixedDUR2,TK_Active,EJ-0003,IMPACT - IOCC 1548 (Scaffold) to be approved by SECAI - Duct Shaft - 2F-SUE-FAB126105,,-32,0,80,0,240,240,120,0,0,0,,2025-08-14 08:00,,2025-11-17 08:00,2025-11-28 17:00,,2025-11-21 08:00,2025-12-04 17:00,2025-11-21 08:00,2025-12-04 17:00,2025-08-14 08:00,2025-09-03 17:00,2025-11-17 08:00,2025-11-28 17:00,,PT_Low,,,,,1K2EtJtzP0SgO3ade65uxw,vUUF0Pz0GEiuFDws6EmqHg,,,N,0,0,,,,,,,,2025-10-31 14:39,2025-11-20 21:59,jleon,jleon,,N,
115999589,122698,18115100,597,0,N,1,N,N,CP_Drtn,TT_Task,DT_FixedDUR2,TK_Active,EJ-0005,IMPACT - SECAI MEP SCAFFOLD IN THE AREA- Clean Vestibule #19 - 2F-FAB126402,,-32,0,40,0,240,240,40,0,0,0,,2025-10-06 08:00,,2025-11-17 08:00,2025-11-21 17:00,,2025-11-21 08:00,2025-11-27 17:00,2025-11-21 08:00,2025-11-27 17:00,2025-10-06 08:00,2025-10-10 17:00,2025-11-17 08:00,2025-11-21 17:00,,PT_Low,,,,,uQ+RIriS1E2IJB4WnxMUpw,1K2EtJtzP0SgO3ade65uxw,,,N,0,0,,,,,,,,2025-10-31 14:46,2025-11-20 21:42,jleon,jleon,,N,
115999594,122698,18115126,597,0,N,1,N,N,CP_Drtn,TT_Task,DT_FixedDUR2,TK_Active,EJ-0007,IMPACT - SECAI CRC coating pending to be finished- Clean Vestibule #04 - 2F-FAB120402,,8,0,40,0,240,240,40,0,0,0,,2025-10-06 08:00,,2025-11-24 08:00,2025-11-28 17:00,,2025-11-21 08:00,2025-11-27 17:00,2025-11-21 08:00,2025-11-27 17:00,2025-10-06 08:00,2025-10-10 17:00,2025-11-24 08:00,2025-11-28 17:00,,PT_Low,,,,,hQD1Ycw+zkiJH4PcjUV7NA,uQ+RIriS1E2IJB4WnxMUpw,,,N,0,0,,,,,,,,2025-10-31 14:53,2025-11-20 21:42,jleon,jleon,,N,
116001269,122698,18115050,597,0,N,1,N,N,CP_Drtn,TT_Task,DT_FixedDUR2,TK_Active,EJ-0009,IMPACT - SECAI CRC coating pending to be finished- Clean Vestibule #21 - 2F-FAB126201,,8,0,40,0,240,240,40,0,0,0,,2025-10-06 08:00,,2025-11-24 08:00,2025-11-28 17:00,,2025-11-21 08:00,2025-11-27 17:00,2025-11-21 08:00,2025-11-27 17:00,2025-10-06 08:00,2025-10-10 17:00,2025-11-24 08:00,2025-11-28 17:00,,PT_Low,,,,,igZ8H7xbFkWV1cLFEmLBbw,hQD1Ycw+zkiJH4PcjUV7NA,,,N,0,0,,,,,,,,2025-10-31 14:57,2025-11-20 21:42,jleon,jleon,,N,
116001271,122698,18115100,597,0,N,1,N,N,CP_Drtn,TT_Task,DT_FixedDUR2,TK_Active,EJ-0011,IMPACT - SECAI CRC coating pending to be finished - Clean Vestibule #19 - 2F-FAB126402,,8,0,40,0,240,240,40,0,0,0,,2025-10-06 08:00,,2025-11-24 08:00,2025-11-28 17:00,,2025-11-21 08:00,2025-11-27 17:00,2025-11-21 08:00,2025-11-27 17:00,2025-10-06 08:00,2025-10-10 17:00,2025-11-24 08:00,2025-11-28 17:00,,PT_Low,,,,,0VOvGMiVwUCphh5lIEZ23Q,hQD1Ycw+zkiJH4PcjUV7NA,,,N,0,0,,,,,,,,2025-10-31 14:59,2025-11-20 21:42,jleon,jleon,,N,
116001282,122698,18115109,597,0,N,1,N,N,CP_Drtn,TT_Task,DT_FixedDUR2,TK_Active,EJ-0013,IMPACT - SECAI CRC coating pending to be finished - T/L Maint. Rm 23 - 2F-SUE-FAB126501,,8,0,40,0,240,240,40,0,0,0,,2025-10-06 08:00,,2025-11-24 08:00,2025-11-28 17:00,,2025-11-21 08:00,2025-11-27 17:00,2025-11-21 08:00,2025-11-27 17:00,2025-10-06 08:00,2025-10-10 17:00,2025-11-24 08:00,2025-11-28 17:00,,PT_Low,,,,,tNZg7jRcXkm9diYZPaO7TQ,igZ8H7xbFkWV1cLFEmLBbw,,,N,0,0,,,,,,,,2025-10-31 15:13,2025-11-20 21:42,jleon,jleon,,N,
116001285,122698,18115115,597,0,N,1,N,N,CP_Drtn,TT_Task,DT_FixedDUR2,TK_Active,EJ-0015,IMPACT - SECAI CRC coating pending to be finished - PR Lifter Vestibule - 2F-FAB126511,,8,0,40,0,240,240,40,0,0,0,,2025-10-06 08:00,,2025-11-24 08:00,2025-11-28 17:00,,2025-11-21 08:00,2025-11-27 17:00,2025-11-21 08:00,2025-11-27 17:00,2025-10-06 08:00,2025-10-10 17:00,2025-11-24 08:00,2025-11-28 17:00,,PT_Low,,,,,aHbFCoY0gUWHe7CBD5Xi9Q,tNZg7jRcXkm9diYZPaO7TQ,,,N,0,0,,,,,,,,2025-10-31 15:14,2025-11-20 21:42,jleon,jleon,,N,
116001289,122698,18114731,597,0,N,1,N,N,CP_Drtn,TT_Task,DT_FixedDUR2,TK_Active,EJ-0017,IMPACT - SECAI CRC coating pending to be finished - PR Lifter Rm - 3F-SUE-FAB126509,,8,0,40,0,240,240,40,0,0,0,,2025-10-06 08:00,,2025-11-24 08:00,2025-11-28 17:00,,2025-11-21 08:00,2025-11-27 17:00,2025-11-21 08:00,2025-11-27 17:00,2025-10-06 08:00,2025-10-10 17:00,2025-11-24 08:00,2025-11-28 17:00,,PT_Low,,,,,tt8tVRVC20KYIl2/bly7PQ,aHbFCoY0gUWHe7CBD5Xi9Q,,,N,0,0,,,,,,,,2025-10-31 15:16,2025-11-20 21:42,jleon,jleon,,N,
116001302,122698,20333487,597,0,N,1,N,N,CP_Drtn,TT_Task,DT_FixedDUR2,TK_Active,EJ-0020,"IMPACT - SECAI firestopping installation at Columns 1-5, 12-13, 17-19, 25-29 & 32-33 - Level 2 - SUE - Line D",,8,0,40,0,240,240,40,0,0,0,,2025-10-06 08:00,,2025-11-24 08:00,2025-11-28 17:00,,2025-11-21 08:00,2025-11-27 17:00,2025-11-21 08:00,2025-11-27 17:00,2025-10-06 08:00,2025-10-10 17:00,2025-11-24 08:00,2025-11-28 17:00,,PT_Low,,,,,WZPdkPvz7kSjnJi08MyBvA,tt8tVRVC20KYIl2/bly7PQ,,,N,0,0,,,,,,,,2025-10-31 15:19,2025-11-20 21:42,jleon,jleon,,N,
116001303,122698,18114502,363248,100,N,1,N,N,CP_Drtn,TT_Task,DT_FixedDUR2,TK_Active,CN.SWA5..6300,IMPACT - SECAI TOOKOVER FOR EGRESS - STAIR #1 - 5/L - ALL LEVELS,,-218,0,48,580,0,580,10,58,58,0,,2025-10-10 07:00,,2025-10-27 09:00,2025-10-31 17:00,,2025-11-21 07:00,2025-11-26 15:00,2025-11-21 07:00,2025-11-26 15:00,2025-07-28 07:00,2025-07-28 17:00,2025-10-27 09:00,2025-10-31 17:00,,PT_Normal,,,,,oGY36wrgJEyv9wr4YtNR/w,esjE6NmwTk2zDE0k6eJFow,,,N,580,58,,,,,,,,2025-10-31 15:27,2025-11-20 21:42,ARAJSHEKAR,jleon,,N,
116001305,122698,20333488,597,0,N,1,N,N,CP_Drtn,TT_Task,DT_FixedDUR2,TK_Active,EJ-0022,"IMPACT - SECAI firestopping installation at Columns 1-6, 10-11, 17-19, 23-24, 29 & 32-33 - Level 2 - SUW - Line K",,8,0,40,0,240,240,40,0,0,0,,2025-10-06 08:00,,2025-11-24 08:00,2025-11-28 17:00,,2025-11-21 08:00,2025-11-27 17:00,2025-11-21 08:00,2025-11-27 17:00,2025-10-06 08:00,2025-10-10 17:00,2025-11-24 08:00,2025-11-28 17:00,,PT_Low,,,,,o/FbR8TicESJdqFX16XeLA,WZPdkPvz7kSjnJi08MyBvA,,,N,0,0,,,,,,,,2025-10-31 15:27,2025-11-20 21:42,jleon,jleon,,N,
116001306,122698,18114023,363248,100,N,1,N,N,CP_Drtn,TT_Task,DT_FixedDUR2,TK_Active,CN.SWA5..6310,IMPACT - SECAI TOOKOVER FOR EGRESS - STAIR #22 - 6/D - ALL LEVELS[/DAY],,-218,0,48,0,0,10,10,0,0,0,,2025-10-10 07:00,,2025-10-27 09:00,2025-10-31 17:00,,2025-11-21 07:00,2025-11-26 15:00,2025-11-21 07:00,2025-11-26 15:00,2025-08-16 07:00,2025-08-16 17:00,2025-10-27 09:00,2025-10-31 17:00,,PT_Normal,,,,,4HqkdApuz0mUFNmSEzml1g,eQnSnAjDSEaJyzMz5D5z0Q,,,N,0,0,,,,,,,,2025-10-31 15:31,2025-11-20 21:42,ARAJSHEKAR,jleon,,N,
116005829,122698,18114752,597,0,N,1,N,N,CP_Drtn,TT_Task,DT_FixedDUR2,TK_Active,EJ-0024,IMPACT - IOCC 1548 (Scaffold) to be approved by SECAI - Duct Shaft - 3F-SUE-FAB136201,,-32,0,80,0,240,240,120,0,0,0,,2025-08-14 08:00,,2025-11-17 08:00,2025-11-28 17:00,,2025-11-21 08:00,2025-12-04 17:00,2025-11-21 08:00,2025-12-04 17:00,2025-08-14 08:00,2025-09-03 17:00,2025-11-17 08:00,2025-11-28 17:00,,PT_Low,,,,,QNWbgfUZkEaESL3fDIB4NQ,1K2EtJtzP0SgO3ade65uxw,,,N,0,0,,,,,,,,2025-10-31 16:07,2025-11-20 21:59,jleon,jleon,,N,
116005831,122698,18114756,597,0,N,1,N,N,CP_Drtn,TT_Task,DT_FixedDUR2,TK_Active,EJ-0026,IMPACT - SECAI MEP SCAFFOLD IN THE AREA- Duct Shaft - 3F-SUE-FAB136401,,8,0,40,0,240,240,40,0,0,0,,2025-10-16 08:00,,2025-11-24 08:00,2025-11-28 17:00,,2025-11-21 08:00,2025-11-27 17:00,2025-11-21 08:00,2025-11-27 17:00,2025-10-06 08:00,2025-10-10 17:00,2025-11-24 08:00,2025-11-28 17:00,,PT_Low,,,,,852iCOhrwEi3W25rILZ2Kw,uQ+RIriS1E2IJB4WnxMUpw,,,N,0,0,,,,,,,,2025-10-31 16:17,2025-11-20 21:42,jleon,jleon,,N,
116010377,122698,20335381,597,0,N,1,N,N,CP_Drtn,TT_Task,DT_FixedDUR2,TK_Active,EJ-0031,"IMPACT - SECAI firestopping installation at Columns 1-6, 10-11, 17-19, 23-24, 29 & 32-33 - Level 3 - SUW - Line K",,8,0,40,0,240,240,40,0,0,0,,2025-10-06 08:00,,2025-11-24 08:00,2025-11-28 17:00,,2025-11-21 08:00,2025-11-27 17:00,2025-11-21 08:00,2025-11-27 17:00,2025-10-06 08:00,2025-10-10 17:00,2025-11-24 08:00,2025-11-28 17:00,,PT_Low,,,,,U+jBpFUntEyypQcqoA1QEg,o/FbR8TicESJdqFX16XeLA,,,N,0,0,,,,,,,,2025-10-31 16:33,2025-11-20 21:42,jleon,jleon,,N,
116010379,122698,20335382,597,0,N,1,N,N,CP_Drtn,TT_Task,DT_FixedDUR2,TK_Active,EJ-0033,"IMPACT - SECAI firestopping installation at Columns 1-5, 12-13, 17-19, 25-29 & 32-33 - Level 3 - SUE - Line D",,8,0,40,0,240,240,40,0,0,0,,2025-10-06 08:00,,2025-11-24 08:00,2025-11-28 17:00,,2025-11-21 08:00,2025-11-27 17:00,2025-11-21 08:00,2025-11-27 17:00,2025-10-06 08:00,2025-10-10 17:00,2025-11-24 08:00,2025-11-28 17:00,,PT_Low,,,,,+PmNipDCZEaWIRV6uUgiyA,WZPdkPvz7kSjnJi08MyBvA,,,N,0,0,,,,,,,,2025-10-31 16:35,2025-11-20 21:42,jleon,jleon,,N,
116026650,122698,18114023,363246,0,N,1,N,N,CP_Drtn,TT_Task,DT_FixedDUR2,TK_Active,CN.SWB3.7141,IMPACT - SECAI MEP WATER INTRUSION - ALL AIRLOCKS - SUE,,-300,0,40,0,0,0,150,0,0,0,,2025-10-27 07:00,,2025-10-10 07:00,2025-10-15 17:00,,2025-11-21 07:00,2025-11-26 17:00,2025-11-21 07:00,2025-11-26 17:00,2025-01-13 07:00,2025-01-31 17:00,2025-10-10 07:00,2025-10-15 17:00,,PT_Normal,,,,,nuAvHvKQ9ESMMTdmcIv5Fg,LVtMmygDE0OMODL0jgVayg,,,N,0,0,,,,,,,,2025-10-31 19:42,2025-11-20 21:42,ARAJSHEKAR,jleon,,N,
116077228,122698,18114734,597,0,N,1,N,N,CP_Drtn,TT_Task,DT_FixedDUR2,TK_Active,FAB130402E-70,IMPACT - SECAI TEMP DOOR & DRYWALL REMOVAL - HEADER/GOAL POST INSTALL - PATRIOT - FAB130402E - M/19,,16,0,40,0,0,0,40,0,0,0,,2025-10-29 08:00,,2025-11-25 08:00,2025-12-01 17:00,,2025-11-21 08:00,2025-11-27 17:00,2025-11-21 08:00,2025-11-27 17:00,2025-10-29 08:00,2025-11-04 17:00,2025-11-25 08:00,2025-12-01 17:00,,PT_Normal,,,,,X7Mh5zsIY0SaiGhMW7Ja5A,d6ax259lc0mlvfEj4uGr0Q,,,N,0,0,,,,,,,,2025-11-04 16:41,2025-11-20 21:42,jleon,jleon,,N,
116080897,122698,18114730,597,0,N,1,N,N,CP_Drtn,TT_Task,DT_FixedDUR2,TK_Active,FAB130501A-50,GOAL POST MODIFY BASEPLATES - PATRIOT - FAB130501A - M/27,,-80,0,0,0,0,0,32,0,0,0,,2025-11-18 08:00,,2025-11-06 17:00,2025-11-06 17:00,2025-10-20 16:00,2025-11-21 08:00,2025-11-21 08:00,2025-11-21 08:00,2025-11-21 08:00,2025-11-18 08:00,2025-11-21 17:00,2025-11-06 17:00,2025-11-06 17:00,,PT_Normal,,,,,ukj7Gwhj4kSrGoTdeYVZIQ,fIHezj5YoUuphN/m/5vrag,,,N,0,0,,,,,,,,2025-11-04 19:28,2025-11-20 21:59,jleon,jleon,,N,
116081961,122698,18114023,363246,0,N,1,N,N,CP_Drtn,TT_Task,DT_FixedDUR2,TK_Active,STAIR.3100,FABRICATION/MATERIAL ON SITE - STAIR # 91 - FIZ - 1-F.2 - LEVEL 03,,-60,250,50,0,0,0,50,0,0,0,,2025-10-31 07:00,,2025-11-13 07:00,2025-11-19 17:00,,2025-11-21 07:00,2025-12-01 17:00,2025-11-21 07:00,2025-12-01 17:00,2025-10-31 07:00,2025-11-06 17:00,2025-11-13 07:00,2025-11-19 17:00,,PT_Normal,,,,,73lQcF9jQk6edJY1Fdg4jA,qcImgVmKQ0eT015H0y4weA,,,N,0,0,,,,,,,,2025-11-04 20:14,2025-11-20 21:42,jleon,jleon,,N,
116115118,122698,18115105,597,0,N,1,N,N,CP_Drtn,TT_Task,DT_FixedDUR2,TK_Active,EJ-0036,Install & Inspection Vertical Expansion Joint (Emseal) D/26 - Duct Shaft - 2F-SUE-FAB126403,,56,0,24,0,240,240,24,0,0,0,,2025-11-07 08:00,,2025-12-02 08:00,2025-12-04 17:00,,2025-11-21 08:00,2025-11-25 17:00,2025-11-21 08:00,2025-11-25 17:00,2025-11-07 08:00,2025-11-11 17:00,2025-12-02 08:00,2025-12-04 17:00,,PT_Low,,,,,b68fIFH+5k6hY8E0NfN3/Q,/dHD6hCe6UqCvE6vsIlUkg,,,N,0,0,,,,,,,,2025-11-05 14:45,2025-11-20 21:42,jleon,jleon,,N,
116115120,122698,18115074,597,0,N,1,N,N,CP_Drtn,TT_Task,DT_FixedDUR2,TK_Active,EJ-0039,Complete Frame EJ gap (scaffold needed) - Duct Shaft - 2F-SUW-FAB120112,,-40,0,64,0,240,240,104,0,0,0,,2025-10-31 08:00,,2025-11-14 08:00,2025-11-25 17:00,,2025-11-21 08:00,2025-12-02 17:00,2025-11-21 08:00,2025-12-02 17:00,2025-10-31 08:00,2025-11-18 17:00,2025-11-14 08:00,2025-11-25 17:00,,PT_Lowest,,,,,5JdGLVez4kK63SLb6htHMA,FPZyA3wduEyhYYG/z1aCfA,,,N,0,0,,,,,,,,2025-11-05 14:53,2025-11-20 21:59,jleon,jleon,,N,
116720544,122698,18115065,597,0,N,1,N,N,CP_Drtn,TT_Task,DT_FixedDUR2,TK_Active,ZX-21945,IMPACT - SECAI MEP WORK PREVENTING INSTALL - Fire Alarm 1 - 2F-FAB120105,,40,0,40,0,0,0,80,0,0,0,,2025-11-03 08:00,,2025-11-28 08:00,2025-12-04 17:00,,2025-11-21 08:00,2025-11-27 17:00,2025-11-21 08:00,2025-11-27 17:00,2025-11-03 08:00,2025-11-14 17:00,2025-11-28 08:00,2025-12-04 17:00,,PT_Normal,,,,,OiipWLJ2BE234bj8Gcm+2Q,7NI/LZ9aIkSds8ZcRH2t3A,,,N,0,0,,,,,,,,2025-11-05 20:39,2025-11-20 21:59,jleon,jleon,,N,
116720546,122698,18115075,597,0,N,1,N,N,CP_Drtn,TT_Task,DT_FixedDUR2,TK_Active,ZX-21955,IMPACT - SECAI MEP CABLE TRAY PREVENTING INSTALL - IT/Security 20 - 2F-FABTR-FAB126304,,32,0,40,0,0,0,80,0,0,0,,2025-11-03 08:00,,2025-11-27 08:00,2025-12-03 17:00,,2025-11-21 08:00,2025-11-27 17:00,2025-11-21 08:00,2025-11-27 17:00,2025-11-03 08:00,2025-11-14 17:00,2025-11-27 08:00,2025-12-03 17:00,,PT_Normal,,,,,XnHn5n2W/UCxBvbILHfq6Q,BIcBGS8bu06GtXCuwA1Uow,,,N,0,0,,,,,,,,2025-11-05 20:42,2025-11-20 21:59,jleon,jleon,,N,
116831383,122698,18115099,597,0,N,1,N,N,CP_Drtn,TT_Task,DT_FixedDUR2,TK_Active,EJ-0051,IMPACT - SECAI SCAFFOLD & CONCRETE OVER COVER - Expansion Joint K/10-10.2 - Duct Shaft - 2F-SUW-FAB120110,,-32,0,80,0,240,240,80,0,0,0,,2025-10-31 08:00,,2025-11-17 08:00,2025-11-28 17:00,,2025-11-21 08:00,2025-12-04 17:00,2025-11-21 08:00,2025-12-04 17:00,2025-10-31 08:00,2025-11-13 17:00,2025-11-17 08:00,2025-11-28 17:00,,PT_Low,,,,,jpQO3QO1rEWTmikXSrP8ig,AlSLJ3n03EOeLFsI/SU6Ow,,,N,0,0,,,,,,,,2025-11-06 13:44,2025-11-20 21:42,jleon,jleon,,N,
116833434,122698,18115128,597,0,N,1,N,N,CP_Drtn,TT_Task,DT_FixedDUR2,TK_Active,EJ-0053,IMPACT - SECAI SCAFFOLD OVER COVER - Expansion Joint K/18.8-19 - Duct Shaft - 2F-SUW-FAB120312,,8,0,40,0,240,240,80,0,0,0,,2025-10-31 08:00,,2025-11-24 08:00,2025-11-28 17:00,,2025-11-21 08:00,2025-11-27 17:00,2025-11-21 08:00,2025-11-27 17:00,2025-10-31 08:00,2025-11-13 17:00,2025-11-24 08:00,2025-11-28 17:00,,PT_Low,,,,,YPnd09veRUmPqrkwoOgVeQ,jpQO3QO1rEWTmikXSrP8ig,,,N,0,0,,,,,,,,2025-11-06 14:09,2025-11-20 21:59,jleon,jleon,,N,
116927937,122698,18115050,597,0,N,1,N,N,CP_Drtn,TT_Task,DT_FixedDUR2,TK_Active,EJ-0076,IMPACT - EJ DAMAGED BY SECAI TP - VJAC installation D/13 - Clean Vestibule #21 - 2F-FAB126201,,8,0,40,0,240,240,40,0,0,0,,2025-10-27 08:00,,2025-11-24 08:00,2025-11-28 17:00,,2025-11-21 08:00,2025-11-27 17:00,2025-11-21 08:00,2025-11-27 17:00,2025-10-27 08:00,2025-10-31 17:00,2025-11-24 08:00,2025-11-28 17:00,,PT_Low,,,,,2TCMvyCdvkOyMNyIznu16w,Sv8LETI9S06/vw6VCLrijA,,,N,0,0,,,,,,,,2025-11-07 15:54,2025-11-20 21:42,jleon,jleon,,N,
116927959,122698,18115050,597,0,N,1,N,N,CP_Drtn,TT_Task,DT_FixedDUR2,TK_Active,EJ-0077,IMPACT - SECAI SGP PANEL INSTALL - VJAC installation D/13.2 - Clean Vestibule #21 - 2F-FAB126201,,8,0,40,0,240,240,40,0,0,0,,2025-09-29 08:00,,2025-11-24 08:00,2025-11-28 17:00,,2025-11-21 08:00,2025-11-27 17:00,2025-11-21 08:00,2025-11-27 17:00,2025-09-29 08:00,2025-10-03 17:00,2025-11-24 08:00,2025-11-28 17:00,,PT_Low,,,,,juqa7cJQPUGRZoNsveF3cg,7qd5IPiU8EmOsf1IFwA8Hg,,,N,0,0,,,,,,,,2025-11-07 16:09,2025-11-20 21:42,jleon,jleon,,N,
116927960,122698,18115100,597,0,N,1,N,N,CP_Drtn,TT_Task,DT_FixedDUR2,TK_Active,EJ-0078,IMPACT - SECAI SGP PANEL INSTALL - VJAC installation D/25 - Clean Vestibule #19 - 2F-FAB126402,,8,40,40,0,240,240,40,0,0,0,,2025-09-29 08:00,,2025-11-24 08:00,2025-11-28 17:00,,2025-11-21 08:00,2025-11-27 17:00,2025-11-21 08:00,2025-11-27 17:00,2025-09-29 08:00,2025-10-03 17:00,2025-11-24 08:00,2025-11-28 17:00,,PT_Low,,,,,ilrKzaXqnk6htSwPD5AFnA,cZVcfo1UJUeakBv8Ob1YDw,,,N,0,0,,,,,,,,2025-11-07 16:12,2025-11-20 21:42,jleon,jleon,,N,
116927962,122698,18115100,597,0,N,1,N,N,CP_Drtn,TT_Task,DT_FixedDUR2,TK_Active,EJ-0079,IMPACT - SECAI SGP PANEL INSTALL - VJAC installation D/25.2 - Clean Vestibule #19 - 2F-FAB126402,,8,0,40,0,240,240,40,0,0,0,,2025-09-29 08:00,,2025-11-24 08:00,2025-11-28 17:00,,2025-11-21 08:00,2025-11-27 17:00,2025-11-21 08:00,2025-11-27 17:00,2025-09-29 08:00,2025-10-03 17:00,2025-11-24 08:00,2025-11-28 17:00,,PT_Low,,,,,+1Osko8xcEeG4a5cJtP/cw,IOjeWrUvU0ugfJsUXU6bQQ,,,N,0,0,,,,,,,,2025-11-07 16:13,2025-11-20 21:42,jleon,jleon,,N,
116927970,122698,18115109,597,0,N,1,N,N,CP_Drtn,TT_Task,DT_FixedDUR2,TK_Active,EJ-0080,IMPACT - SECAI SGP PANEL INSTALL - VJAC installation D/27 - T/L Maint. Rm 23 - 2F-SUE-FAB126501,,8,0,40,0,240,240,40,0,0,0,,2025-09-29 08:00,,2025-11-24 08:00,2025-11-28 17:00,,2025-11-21 08:00,2025-11-27 17:00,2025-11-21 08:00,2025-11-27 17:00,2025-09-29 08:00,2025-10-03 17:00,2025-11-24 08:00,2025-11-28 17:00,,PT_Low,,,,,IkG7QrCxcUSoHJKt6Q610w,BpK1Sv1dh0+91Kvjm2Oy1g,,,N,0,0,,,,,,,,2025-11-07 16:15,2025-11-20 21:42,jleon,jleon,,N,
116927971,122698,18115109,597,0,N,1,N,N,CP_Drtn,TT_Task,DT_FixedDUR2,TK_Active,EJ-0081,IMPACT - SECAI SGP PANEL INSTALL - VJAC installation D/28 - T/L Maint. Rm 23 - 2F-SUE-FAB126501,,8,0,40,0,240,240,40,0,0,0,,2025-09-29 08:00,,2025-11-24 08:00,2025-11-28 17:00,,2025-11-21 08:00,2025-11-27 17:00,2025-11-21 08:00,2025-11-27 17:00,2025-09-29 08:00,2025-10-03 17:00,2025-11-24 08:00,2025-11-28 17:00,,PT_Low,,,,,iLJn7gesuEqquh37k1K5jw,D83LxBGttUiSRiUpRXG8sg,,,N,0,0,,,,,,,,2025-11-07 16:16,2025-11-20 21:42,jleon,jleon,,N,
116927973,122698,18115115,597,0,N,1,N,N,CP_Drtn,TT_Task,DT_FixedDUR2,TK_Active,EJ-0082,IMPACT - SECAI MEP SCAFFOLD - VJAC installation D/28.8 - PR Lifter Vestibule - 2F-FAB126511,,8,0,40,0,240,240,40,0,0,0,,2025-10-27 08:00,,2025-11-24 08:00,2025-11-28 17:00,,2025-11-21 08:00,2025-11-27 17:00,2025-11-21 08:00,2025-11-27 17:00,2025-10-27 08:00,2025-10-31 17:00,2025-11-24 08:00,2025-11-28 17:00,,PT_Low,,,,,lyB6cZH2Y0S3PvgYMif4Iw,CnkxQ6RXA0aqs9dmU49PeQ,,,N,0,0,,,,,,,,2025-11-07 16:20,2025-11-20 21:42,jleon,jleon,,N,
116927974,122698,18115127,597,0,N,1,N,N,CP_Drtn,TT_Task,DT_FixedDUR2,TK_Active,EJ-0083,IMPACT - SECAI ENERGIZED PANELS - VJAC installation K/3 - Thermohygrostat Rm - 2F-FAB120103,,8,0,40,0,240,240,40,0,0,0,,2025-09-29 08:00,,2025-11-24 08:00,2025-11-28 17:00,,2025-11-21 08:00,2025-11-27 17:00,2025-11-21 08:00,2025-11-27 17:00,2025-09-29 08:00,2025-10-03 17:00,2025-11-24 08:00,2025-11-28 17:00,,PT_Low,,,,,f8v3moCmpkeE+zhdgj3fkA,rcH4mOdO9EKcXMGcNFYYsw,,,N,0,0,,,,,,,,2025-11-07 16:21,2025-11-20 21:42,jleon,jleon,,N,
116930867,122698,18115093,597,0,N,1,N,N,CP_Drtn,TT_Task,DT_FixedDUR2,TK_Active,EJ-0089,IMPACT - SECAI SGP PANEL INSTALL - VJAC installation K/11 - Clean Vestibule #02 - 2F-FAB120201,,8,0,40,0,240,240,40,0,0,0,,2025-09-29 08:00,,2025-11-24 08:00,2025-11-28 17:00,,2025-11-21 08:00,2025-11-27 17:00,2025-11-21 08:00,2025-11-27 17:00,2025-09-29 08:00,2025-10-03 17:00,2025-11-24 08:00,2025-11-28 17:00,,PT_Low,,,,,ZlZEHIQabEa9cWFQK719lQ,1M3lofcG+0Gl6Jroq0MQzA,,,N,0,0,,,,,,,,2025-11-07 16:49,2025-11-20 21:42,jleon,jleon,,N,
116930870,122698,18115093,597,0,N,1,N,N,CP_Drtn,TT_Task,DT_FixedDUR2,TK_Active,EJ-0090,IMPACT - SECAI SGP PANEL INSTALL - VJAC installation K/11.5 - Clean Vestibule #02 - 2F-FAB120201,,8,0,40,0,240,240,40,0,0,0,,2025-09-29 08:00,,2025-11-24 08:00,2025-11-28 17:00,,2025-11-21 08:00,2025-11-27 17:00,2025-11-21 08:00,2025-11-27 17:00,2025-09-29 08:00,2025-10-03 17:00,2025-11-24 08:00,2025-11-28 17:00,,PT_Low,,,,,f/rRN5WoMkKX1AOYFk1jPA,ZlZEHIQabEa9cWFQK719lQ,,,N,0,0,,,,,,,,2025-11-07 16:51,2025-11-20 21:42,jleon,jleon,,N,
116930914,122698,18115126,597,0,N,1,N,N,CP_Drtn,TT_Task,DT_FixedDUR2,TK_Active,EJ-0095,IMPACT - SECAI SGP PANEL INSTALL - VJAC installation K/23 - Duct Shaft - 2F-SUW-FAB120312,,8,0,40,0,240,240,40,0,0,0,,2025-09-29 08:00,,2025-11-24 08:00,2025-11-28 17:00,,2025-11-21 08:00,2025-11-27 17:00,2025-11-21 08:00,2025-11-27 17:00,2025-09-29 08:00,2025-10-03 17:00,2025-11-24 08:00,2025-11-28 17:00,,PT_Low,,,,,NAQzpWziE0WDpDdjkDyegg,oXhnZJBPQUaiqonGfjlZ8A,,,N,0,0,,,,,,,,2025-11-07 17:10,2025-11-20 21:42,jleon,jleon,,N,
116948951,122698,18114713,597,0,N,1,N,N,CP_Drtn,TT_Task,DT_FixedDUR2,TK_Active,EJ-0116,IMPACT - SECAI MEP SCAFFOLD - HEJ (Emseal) D/28.5-29 - Wafer I/O Entrance - 3F-FAB136501,,8,0,40,0,240,240,40,0,0,0,,2025-09-29 08:00,,2025-11-24 08:00,2025-11-28 17:00,,2025-11-21 08:00,2025-11-27 17:00,2025-11-21 08:00,2025-11-27 17:00,2025-09-29 08:00,2025-10-03 17:00,2025-11-24 08:00,2025-11-28 17:00,,PT_Low,,,,,cx0w6Q8G6ku1PRvBYiCvMw,a4G/P7lQckeLzNwxh4uzfA,,,N,0,0,,,,,,,,2025-11-08 16:57,2025-11-20 21:42,jleon,jleon,,N,
116948956,122698,18114722,597,0,N,1,N,N,CP_Drtn,TT_Task,DT_FixedDUR2,TK_Active,EJ-0119,Grout Grinding - HEJ (Emseal) K/10.11.8 - Duct Shaft - 3F-SUW-FAB130112,,8,0,40,0,240,240,40,0,0,0,,2025-09-29 08:00,,2025-11-24 08:00,2025-11-28 17:00,,2025-11-21 08:00,2025-11-27 17:00,2025-11-21 08:00,2025-11-27 17:00,2025-09-29 08:00,2025-10-03 17:00,2025-11-24 08:00,2025-11-28 17:00,,PT_Low,,,,,2gfj3LfsL06YII6e6fdiow,cx0w6Q8G6ku1PRvBYiCvMw,,,N,0,0,,,,,,,,2025-11-08 17:13,2025-11-20 21:42,jleon,jleon,,N,
116961065,122698,18114765,597,0,N,1,N,N,CP_Drtn,TT_Task,DT_FixedDUR2,TK_Active,EJ-0122,IMPACT - SECAI FINISH DRYWALL (NO WALL FRAMED)- VEJ D/25 - Clean Vestibule #19 - 3F-FAB136406,,8,0,40,0,240,240,40,0,0,0,,2025-09-29 08:00,,2025-11-24 08:00,2025-11-28 17:00,,2025-11-21 08:00,2025-11-27 17:00,2025-11-21 08:00,2025-11-27 17:00,2025-09-29 08:00,2025-10-03 17:00,2025-11-24 08:00,2025-11-28 17:00,,PT_Low,,,,,CRvvMVR4hUex1n0cLQt27A,ReY8OrIyqUuil18mw566bw,,,N,0,0,,,,,,,,2025-11-10 13:11,2025-11-20 21:42,jleon,jleon,,N,
116961067,122698,18114766,597,100,N,1,N,N,CP_Drtn,TT_Task,DT_FixedDUR2,TK_Active,EJ-0124,Material procurement VEJ D/32 - Airlock 18 - 3F-FAB136506,,8,0,40,0,0,240,80,0,0,0,,2025-11-03 08:00,,2025-11-24 08:00,2025-11-28 17:00,,2025-11-21 08:00,2025-11-27 17:00,2025-11-21 08:00,2025-11-27 17:00,2025-11-03 08:00,2025-11-14 17:00,2025-11-24 08:00,2025-11-28 17:00,,PT_Low,,,,,ArZdiYOWxk6vU3HP9xmcHQ,KFf0VZoi9Eajd+qhk5d2qQ,,,N,0,0,,,,,,,,2025-11-10 13:31,2025-11-20 21:59,jleon,jleon,,N,
116961069,122698,18114736,597,100,N,1,N,N,CP_Drtn,TT_Task,DT_FixedDUR2,TK_Active,EJ-0125,Material procurement VEJ K/18.8 - Duct Shaft - 3F-SUW_FAB130401,,8,0,40,0,0,240,80,0,0,0,,2025-11-03 08:00,,2025-11-24 08:00,2025-11-28 17:00,,2025-11-21 08:00,2025-11-27 17:00,2025-11-21 08:00,2025-11-27 17:00,2025-11-03 08:00,2025-11-14 17:00,2025-11-24 08:00,2025-11-28 17:00,,PT_Low,,,,,+nw0zycOnk+Qds7OqSPU+A,ArZdiYOWxk6vU3HP9xmcHQ,,,N,0,0,,,,,,,,2025-11-10 13:33,2025-11-20 21:59,jleon,jleon,,N,
116987058,122698,18114773,597,0,N,1,N,N,CP_Drtn,TT_Task,DT_FixedDUR2,TK_Active,EJ-0129,IMPACT - SECAI SGP PANEL INSTALL - VJAC installation D/22.8 - Clean Vestibule #4 - 3F-FAB130403,,8,0,40,0,240,240,40,0,0,0,,2025-09-29 08:00,,2025-11-24 08:00,2025-11-28 17:00,,2025-11-21 08:00,2025-11-27 17:00,2025-11-21 08:00,2025-11-27 17:00,2025-09-29 08:00,2025-10-03 17:00,2025-11-24 08:00,2025-11-28 17:00,,PT_Low,,,,,ury//wmIX0aXMj9kmJU9mg,ilrKzaXqnk6htSwPD5AFnA,,,N,0,0,,,,,,,,2025-11-10 17:31,2025-11-20 21:42,jleon,jleon,,N,
116987060,122698,18114768,597,0,N,1,N,N,CP_Drtn,TT_Task,DT_FixedDUR2,TK_Active,EJ-0131,IMPACT - SECAI SGP PANEL INSTALL - VJAC installation K/32 - Airlock 5 - 3F-SUW-FAB130505,,8,0,40,0,240,240,40,0,0,0,,2025-09-29 08:00,,2025-11-24 08:00,2025-11-28 17:00,,2025-11-21 08:00,2025-11-27 17:00,2025-11-21 08:00,2025-11-27 17:00,2025-09-29 08:00,2025-10-03 17:00,2025-11-24 08:00,2025-11-28 17:00,,PT_Low,,,,,t3lJ1Of+5UqmFVGnLehYKw,ury//wmIX0aXMj9kmJU9mg,,,N,0,0,,,,,,,,2025-11-10 17:37,2025-11-20 21:42,jleon,jleon,,N,
116989536,122698,18114722,597,0,N,1,N,N,CP_Drtn,TT_Task,DT_FixedDUR2,TK_Active,EJ-0133,Material Procurement - VJAC installation K/5.8 - Duct Shaft - 3F-SUW-FAB130112,,8,0,40,0,240,240,80,0,0,0,,2025-11-03 08:00,,2025-11-24 08:00,2025-11-28 17:00,,2025-11-21 08:00,2025-11-27 17:00,2025-11-21 08:00,2025-11-27 17:00,2025-11-03 08:00,2025-11-14 17:00,2025-11-24 08:00,2025-11-28 17:00,,PT_Low,,,,,rqj+MLvhYEGZlAzPDLspdw,t3lJ1Of+5UqmFVGnLehYKw,,,N,0,0,,,,,,,,2025-11-10 17:42,2025-11-20 21:59,jleon,jleon,,N,
117010916,122698,18115031,597,0,N,1,N,N,CP_Drtn,TT_Task,DT_FixedDUR2,TK_Active,EJ-0164,IMPACT - SECAI RA FLLOR PANEL INSTALL - VEJ K/4 - Fire Alarm 1 - 4F-SUW-FAB140103,,8,0,40,0,240,240,40,0,0,0,,2025-09-29 08:00,,2025-11-24 08:00,2025-11-28 17:00,,2025-11-21 08:00,2025-11-27 17:00,2025-11-21 08:00,2025-11-27 17:00,2025-09-29 08:00,2025-10-03 17:00,2025-11-24 08:00,2025-11-28 17:00,,PT_Low,,,,,QISTC1DtTEq9B8TnZMOzDQ,CRvvMVR4hUex1n0cLQt27A,,,N,0,0,,,,,,,,2025-11-10 20:13,2025-11-20 21:42,jleon,jleon,,N,
117010919,122698,18115031,597,0,N,1,N,N,CP_Drtn,TT_Task,DT_FixedDUR2,TK_Active,EJ-0166,IMPACT - SECAI RA FLLOR PANEL INSTALL - VEJ K/4.3 - Fire Alarm 1 - 4F-SUW-FAB140103,,8,0,40,0,240,240,40,0,0,0,,2025-09-29 08:00,,2025-11-24 08:00,2025-11-28 17:00,,2025-11-21 08:00,2025-11-27 17:00,2025-11-21 08:00,2025-11-27 17:00,2025-09-29 08:00,2025-10-03 17:00,2025-11-24 08:00,2025-11-28 17:00,,PT_Low,,,,,KZ54Lf4n/Uqkw/qLDmoUFg,QISTC1DtTEq9B8TnZMOzDQ,,,N,0,0,,,,,,,,2025-11-10 20:18,2025-11-20 21:42,jleon,jleon,,N,
117010921,122698,18115030,597,0,N,1,N,N,CP_Drtn,TT_Task,DT_FixedDUR2,TK_Active,EJ-0168,IMPACT - SECAI RA FLLOR PANEL INSTALL - VEJ K/4.8 - IT/Security 1 - 4F-SUW-FAB140105,,8,0,40,0,240,240,40,0,0,0,,2025-09-29 08:00,,2025-11-24 08:00,2025-11-28 17:00,,2025-11-21 08:00,2025-11-27 17:00,2025-11-21 08:00,2025-11-27 17:00,2025-09-29 08:00,2025-10-03 17:00,2025-11-24 08:00,2025-11-28 17:00,,PT_Low,,,,,8jiz3klBjUyVly8vbHMurw,QISTC1DtTEq9B8TnZMOzDQ,,,N,0,0,,,,,,,,2025-11-10 20:21,2025-11-20 21:42,jleon,jleon,,N,
117010923,122698,18115032,597,0,N,1,N,N,CP_Drtn,TT_Task,DT_FixedDUR2,TK_Active,EJ-0170,IMPACT - SECAI RA FLLOR PANEL INSTALL - VEJ K/5 - Elevator Hall #01 - 4F-SUW-FAB140101,,8,0,40,0,240,240,40,0,0,0,,2025-09-29 08:00,,2025-11-24 08:00,2025-11-28 17:00,,2025-11-21 08:00,2025-11-27 17:00,2025-11-21 08:00,2025-11-27 17:00,2025-09-29 08:00,2025-10-03 17:00,2025-11-24 08:00,2025-11-28 17:00,,PT_Low,,,,,DimV0NmYDUqF6jTLq+R85A,8jiz3klBjUyVly8vbHMurw,,,N,0,0,,,,,,,,2025-11-10 20:23,2025-11-20 21:42,jleon,jleon,,N,
117010925,122698,18115018,597,0,N,1,N,N,CP_Drtn,TT_Task,DT_FixedDUR2,TK_Active,EJ-0172,IMPACT - SECAI RA FLLOR PANEL INSTALL - VEJ K/32 - IT/Security 5 - 4F-SUW-FAB140503,,8,0,40,0,240,240,40,0,0,0,,2025-09-29 08:00,,2025-11-24 08:00,2025-11-28 17:00,,2025-11-21 08:00,2025-11-27 17:00,2025-11-21 08:00,2025-11-27 17:00,2025-09-29 08:00,2025-10-03 17:00,2025-11-24 08:00,2025-11-28 17:00,,PT_Low,,,,,hh4rxFqrJEqNOzscZQ2Djg,DimV0NmYDUqF6jTLq+R85A,,,N,0,0,,,,,,,,2025-11-10 20:26,2025-11-20 21:42,jleon,jleon,,N,
117010927,122698,18115020,597,0,N,1,N,N,CP_Drtn,TT_Task,DT_FixedDUR2,TK_Active,EJ-0174,IMPACT - SECAI RA FLLOR PANEL INSTALL - VEJ K/32.8 - Elevator Hall #05 - 4F-SUW-FAB140508,,8,0,40,0,240,240,40,0,0,0,,2025-09-29 08:00,,2025-11-24 08:00,2025-11-28 17:00,,2025-11-21 08:00,2025-11-27 17:00,2025-11-21 08:00,2025-11-27 17:00,2025-09-29 08:00,2025-10-03 17:00,2025-11-24 08:00,2025-11-28 17:00,,PT_Low,,,,,ILWio47ayUCz6KNSo54wdA,hh4rxFqrJEqNOzscZQ2Djg,,,N,0,0,,,,,,,,2025-11-10 20:30,2025-11-20 21:42,jleon,jleon,,N,
117010929,122698,18115008,597,0,N,1,N,N,CP_Drtn,TT_Task,DT_FixedDUR2,TK_Active,EJ-0176,IMPACT - SECAI RA FLOOR PANEL INSTALL - VEJ D/32 - IT/Security 18 - 4F-SUE-FAB146508,,8,0,40,0,240,240,40,0,0,0,,2025-09-29 08:00,,2025-11-24 08:00,2025-11-28 17:00,,2025-11-21 08:00,2025-11-27 17:00,2025-11-21 08:00,2025-11-27 17:00,2025-09-29 08:00,2025-10-03 17:00,2025-11-24 08:00,2025-11-28 17:00,,PT_Low,,,,,Nwou3Q0TcUqi6B5j+GYtWA,hh4rxFqrJEqNOzscZQ2Djg,,,N,0,0,,,,,,,,2025-11-10 20:33,2025-11-20 21:42,jleon,jleon,,N,
117010931,122698,18115010,597,0,N,1,N,N,CP_Drtn,TT_Task,DT_FixedDUR2,TK_Active,EJ-0178,IMPACT - SECAI RA FLOOR PANEL INSTALL - VEJ D/32.8 - Elevator Hall #18 - 4F-SUE-FAB146507,,8,0,40,0,240,240,40,0,0,0,,2025-09-29 08:00,,2025-11-24 08:00,2025-11-28 17:00,,2025-11-21 08:00,2025-11-27 17:00,2025-11-21 08:00,2025-11-27 17:00,2025-09-29 08:00,2025-10-03 17:00,2025-11-24 08:00,2025-11-28 17:00,,PT_Low,,,,,ljdn7OgFT0yOhH5GLZBufQ,Nwou3Q0TcUqi6B5j+GYtWA,,,N,0,0,,,,,,,,2025-11-10 20:35,2025-11-20 21:42,jleon,jleon,,N,
117010933,122698,18115130,597,0,N,1,N,N,CP_Drtn,TT_Task,DT_FixedDUR2,TK_Active,EJ-0180,IMPACT - SECAI SCAFFOLD TO BE BUILT D/5.8 - Duct Shaft - 2F-SUE-FAB126105,,-32,0,80,0,240,240,120,0,0,0,,2025-08-14 08:00,,2025-11-17 08:00,2025-11-28 17:00,,2025-11-21 08:00,2025-12-04 17:00,2025-11-21 08:00,2025-12-04 17:00,2025-08-14 08:00,2025-09-03 17:00,2025-11-17 08:00,2025-11-28 17:00,,PT_Low,,,,,F61uzx3iC0+11EK/F1L5MA,1K2EtJtzP0SgO3ade65uxw,,,N,0,0,,,,,,,,2025-11-10 20:41,2025-11-20 21:59,jleon,jleon,,N,
117208916,122698,18114815,597,0,N,1,N,N,CP_Drtn,TT_Task,DT_FixedDUR2,TK_Active,FAB116106B-50,IMPACT - SECAI TRADES WORKING AT OPENING IMPEDING DOOR INSTALL - FAB116106B,,-62,0,80,0,0,0,120,0,0,0,,2025-10-23 08:00,,2025-11-11 10:00,2025-11-25 10:00,,2025-11-21 08:00,2025-12-04 17:00,2025-11-21 08:00,2025-12-04 17:00,2025-10-23 08:00,2025-11-12 17:00,2025-11-11 10:00,2025-11-25 10:00,,PT_Normal,,,,,6uBsMyuK5kayWe+z3QvqKg,aWkEnO9I706TMsfLADzfog,,,N,0,0,,,,,,,,2025-11-12 17:51,2025-11-20 21:59,jleon,jleon,,N,
117208946,122698,18114933,597,0,N,1,N,N,CP_Drtn,TT_Task,DT_FixedDUR2,TK_Active,FAB116111A-50,IMPACT - SECAI SCAFFOLD IMPEDING DOOR INSTALL - FAB116111A,,-62,0,80,0,0,0,120,0,0,0,,2025-10-29 08:00,,2025-11-11 10:00,2025-11-25 10:00,,2025-11-21 08:00,2025-12-04 17:00,2025-11-21 08:00,2025-12-04 17:00,2025-10-29 08:00,2025-11-18 17:00,2025-11-11 10:00,2025-11-25 10:00,,PT_Normal,,,,,8Y4cgJjjEEa3Mj/sa/lmgw,qc2v4S+Lb06BDIquvHQkUg,,,N,0,0,,,,,,,,2025-11-12 19:16,2025-11-20 21:59,jleon,jleon,,N,
117208951,122698,18114847,597,0,N,1,N,N,CP_Drtn,TT_Task,DT_FixedDUR2,TK_Active,FAB114404A-50,IMPACT - SECAI SCAFFOLD IMPEDING DOOR INSTALL - FAB114404A,,-62,0,80,0,0,0,120,0,0,0,,2025-10-29 08:00,,2025-11-11 10:00,2025-11-25 10:00,,2025-11-21 08:00,2025-12-04 17:00,2025-11-21 08:00,2025-12-04 17:00,2025-10-29 08:00,2025-11-18 17:00,2025-11-11 10:00,2025-11-25 10:00,,PT_Normal,,,,,kgPrHvHI7k6e8gisdAggUA,wuxtPFYCH0u1/dsQ6uQN5A,,,N,0,0,,,,,,,,2025-11-12 19:18,2025-11-20 21:59,jleon,jleon,,N,
117208955,122698,18115122,597,0,N,1,N,N,CP_Drtn,TT_Task,DT_FixedDUR2,TK_Active,FAB126506B-50,IMPACT - SECAI SCAFFOLD IMPEDING DOOR INSTALL - FAB126506B,,-62,0,80,0,0,0,120,0,0,0,,2025-10-29 08:00,,2025-11-11 10:00,2025-11-25 10:00,,2025-11-21 08:00,2025-12-04 17:00,2025-11-21 08:00,2025-12-04 17:00,2025-10-29 08:00,2025-11-18 17:00,2025-11-11 10:00,2025-11-25 10:00,,PT_Normal,,,,,d+z/A4YRSkurGm3mf+jl3w,epwt+1scwk2YIH62QzT/iA,,,N,0,0,,,,,,,,2025-11-12 19:22,2025-11-20 21:59,jleon,jleon,,N,
117208958,122698,18114740,597,0,N,1,N,N,CP_Drtn,TT_Task,DT_FixedDUR2,TK_Active,FAB130311A-50,IMPACT - SECAI MATERIAL AND SCAFFOLD IMPEDING DOOR INSTALL - FAB130311A,,-62,0,80,0,0,0,120,0,0,0,,2025-10-29 08:00,,2025-11-11 10:00,2025-11-25 10:00,,2025-11-21 08:00,2025-12-04 17:00,2025-11-21 08:00,2025-12-04 17:00,2025-10-29 08:00,2025-11-18 17:00,2025-11-11 10:00,2025-11-25 10:00,,PT_Normal,,,,,oDhnC3d8FU2GDBFJU/YoKg,W8KS5w9B6EWJbMR6+PzeYw,,,N,0,0,,,,,,,,2025-11-12 19:24,2025-11-20 21:59,jleon,jleon,,N,
117208963,122698,18114943,597,0,N,1,N,N,CP_Drtn,TT_Task,DT_FixedDUR2,TK_Active,FAB116305B-50,IMPACT - FRAME CONSTANTLY HIT DUE HEAY TRAFFIC - FAB116305B,,-22,0,40,0,0,0,40,0,0,0,,2025-11-12 08:00,,2025-11-18 10:00,2025-11-25 10:00,,2025-11-21 08:00,2025-11-27 17:00,2025-11-21 08:00,2025-11-27 17:00,2025-11-12 08:00,2025-11-18 17:00,2025-11-18 10:00,2025-11-25 10:00,,PT_Normal,,,,,385o/y8ZsUW+BiWZmrMJ6Q,cG1/CeoXQEu2PRfQkzAR/w,,,N,0,0,,,,,,,,2025-11-12 19:28,2025-11-20 21:42,jleon,jleon,,N,
117208964,122698,18115045,597,0,N,1,N,N,CP_Drtn,TT_Task,DT_FixedDUR2,TK_Active,FAB1-ST03B-50,IMPACT - SECAI SCAFFOLD IMPEDING DOOR INSTALL - FAB1-ST03B,,-32,0,40,0,0,0,80,0,0,0,,2025-11-06 08:00,,2025-11-17 08:00,2025-11-21 17:00,,2025-11-21 08:00,2025-11-27 17:00,2025-11-21 08:00,2025-11-27 17:00,2025-11-06 08:00,2025-11-19 17:00,2025-11-17 08:00,2025-11-21 17:00,,PT_Normal,,,,,T9P6mEuwLEyqI3J2r5Nztw,YerTcHeF1E2pAvhsjMhPhw,,,N,0,0,,,,,,,,2025-11-12 19:31,2025-11-20 21:59,jleon,jleon,,N,
117208967,122698,18114703,597,0,N,1,N,N,CP_Drtn,TT_Task,DT_FixedDUR2,TK_Active,FAB1-ST03C-50,IMPACT - SECAI SCAFFOLD IMPEDING DOOR INSTALL - FAB1-ST03C,,-24,0,40,0,0,0,80,0,0,0,,2025-11-06 08:00,,2025-11-18 08:00,2025-11-24 17:00,,2025-11-21 08:00,2025-11-27 17:00,2025-11-21 08:00,2025-11-27 17:00,2025-11-06 08:00,2025-11-19 17:00,2025-11-18 08:00,2025-11-24 17:00,,PT_Normal,,,,,sAhnYJbgqUGzEtDLSudqxA,rdnMHCx5WEOYqXSySMVzCQ,,,N,0,0,,,,,,,,2025-11-12 19:32,2025-11-20 21:59,jleon,jleon,,N,
117208970,122698,18115117,597,0,N,1,N,N,CP_Drtn,TT_Task,DT_FixedDUR2,TK_Active,FAB120507C-50,IMPACT - SECAI POWER CABLES RUNNING THROUGH OPENING - FAB120507C,,-22,0,40,0,0,0,80,0,0,0,,2025-11-06 08:00,,2025-11-18 10:00,2025-11-25 10:00,,2025-11-21 08:00,2025-11-27 17:00,2025-11-21 08:00,2025-11-27 17:00,2025-11-06 08:00,2025-11-19 17:00,2025-11-18 10:00,2025-11-25 10:00,,PT_Normal,,,,,ORtGgqPplU+5GMI3aDAIXQ,Z9Bj7AgsO0apU6gB3H47YQ,,,N,0,0,,,,,,,,2025-11-12 19:35,2025-11-20 21:59,jleon,jleon,,N,
117631060,122698,18114023,363246,100,N,1,N,N,CP_Drtn,TT_Task,DT_FixedDUR2,TK_Active,CN.SWB5.11180,IMPACT - SECAI HAS NOT TURNED OVER PLATFORM FOR T&F - ELEVATOR 5,,-400,0,140,0,0,0,460,0,0,0,,2025-10-01 07:00,,2025-09-26 07:00,2025-10-15 17:00,,2025-11-21 07:00,2025-12-12 17:00,2025-11-21 07:00,2025-12-12 17:00,2025-10-01 07:00,2025-12-05 17:00,2025-09-26 07:00,2025-10-15 17:00,,PT_Normal,,,,,i2kpKYNgX0C4ERsRu9nO9g,ZtXSGY0p80mltnj8hQSGng,,,N,0,0,,,,,,,,2025-11-13 19:30,2025-11-20 21:42,jleon,jleon,,N,
117636337,122698,18114502,363248,0,N,1,N,N,CP_Drtn,TT_Task,DT_FixedDUR2,TK_Active,CN.SWA5..6320,INSTALL DOOR FRAMES - STAIR #19 - 26/D - ALL LEVELS,,30,0,50,0,580,580,50,58,0,58,,2025-05-29 07:00,,2025-11-25 07:00,2025-12-02 17:00,,2025-11-21 07:00,2025-11-26 17:00,2025-11-21 07:00,2025-11-26 17:00,2025-05-29 07:00,2025-06-03 17:00,2025-11-25 07:00,2025-12-02 17:00,,PT_Normal,,,,,J7lWY7wgZUmeBVrn1s9wvw,6Se4VyUy8Uu58PBn1g3lLg,,,N,0,0,,,,,,,,2025-11-13 21:10,2025-11-20 21:42,jleon,jleon,,N,
117636338,122698,18114502,363248,0,N,1,N,N,CP_Drtn,TT_Task,DT_FixedDUR2,TK_Active,CN.SWA5..6330,INSTALL - DOOR/HARDWARE/PAINT - STAIR #19 - 26/D - ALL LEVELS,,30,1380,30,0,580,580,30,58,0,58,,2025-11-07 07:00,,2025-12-03 07:00,2025-12-05 17:00,,2025-11-29 07:00,2025-12-02 17:00,2025-11-29 07:00,2025-12-02 17:00,2025-11-07 07:00,2025-11-10 17:00,2025-12-03 07:00,2025-12-05 17:00,,PT_Normal,,,,,k5YkICvepkmMlz7P3zoOzw,J7lWY7wgZUmeBVrn1s9wvw,,,N,0,0,,,,,,,,2025-11-13 21:11,2025-11-20 21:46,jleon,jleon,,N,
117636345,122698,18114502,363248,0,N,1,N,N,CP_Drtn,TT_Task,DT_FixedDUR2,TK_Active,CN.SWA5..6350,INSTALL - DOOR/HARDWARE/PAINT - STAIR #1 - 5/L - ALL LEVELS,,80,1430,30,0,580,580,30,58,0,58,,2025-09-18 07:00,,2025-12-03 07:00,2025-12-05 17:00,,2025-11-21 07:00,2025-11-24 17:00,2025-11-21 07:00,2025-11-24 17:00,2025-11-07 07:00,2025-11-10 17:00,2025-12-03 07:00,2025-12-05 17:00,,PT_Normal,,,,,ffDGpUWO7EOKQH8Um/tQHw,k5YkICvepkmMlz7P3zoOzw,,,N,0,0,,,,,,,,2025-11-13 21:19,2025-11-20 21:46,jleon,jleon,,N,
117636347,122698,18114502,363248,0,N,1,N,N,CP_Drtn,TT_Task,DT_FixedDUR2,TK_Active,CN.SWA5..6360,INSTALL DOOR FRAMES - STAIR #22 - 6/D - ALL LEVELS,,30,0,50,0,580,580,50,58,0,58,,2025-10-22 07:00,,2025-11-25 07:00,2025-12-02 17:00,,2025-11-21 07:00,2025-11-26 17:00,2025-11-21 07:00,2025-11-26 17:00,2025-05-29 07:00,2025-06-03 17:00,2025-11-25 07:00,2025-12-02 17:00,,PT_Normal,,,,,TWpOfgPG3US6HWen9J0P0g,z9ej/CkHRECaM17Ie1LOtQ,,,N,0,0,,,,,,,,2025-11-13 21:20,2025-11-20 21:42,jleon,jleon,,N,
117636348,122698,18114502,363248,0,N,1,N,N,CP_Drtn,TT_Task,DT_FixedDUR2,TK_Active,CN.SWA5..6370,INSTALL - DOOR/HARDWARE/PAINT - STAIR #22 - 6/D - ALL LEVELS,,30,1380,30,0,580,580,30,58,0,58,,2025-11-07 07:00,,2025-12-03 07:00,2025-12-05 17:00,,2025-11-29 07:00,2025-12-02 17:00,2025-11-29 07:00,2025-12-02 17:00,2025-11-07 07:00,2025-11-10 17:00,2025-12-03 07:00,2025-12-05 17:00,,PT_Normal,,,,,+oApz5nQE0uknPafw5cneA,ffDGpUWO7EOKQH8Um/tQHw,,,N,0,0,,,,,,,,2025-11-13 21:20,2025-11-20 21:46,jleon,jleon,,N,
117636351,122698,18114502,363248,0,N,1,N,N,CP_Drtn,TT_Task,DT_FixedDUR2,TK_Active,CN.SWA5..6390,INSTALL - DOOR/HARDWARE/PAINT - STAIR #50 - 29/L - ALL LEVELS,,80,1430,30,0,580,580,30,58,0,58,,2025-10-02 07:00,,2025-12-03 07:00,2025-12-05 17:00,,2025-11-21 07:00,2025-11-24 17:00,2025-11-21 07:00,2025-11-24 17:00,2025-11-07 07:00,2025-11-10 17:00,2025-12-03 07:00,2025-12-05 17:00,,PT_Normal,,,,,0Mjbi6o9fkK4jVcWagq7MQ,+oApz5nQE0uknPafw5cneA,,,N,0,0,,,,,,,,2025-11-13 21:21,2025-11-20 21:46,jleon,jleon,,N,
117636378,122698,18114502,363248,0,N,1,N,N,CP_Drtn,TT_Task,DT_FixedDUR2,TK_Active,CN.SWA5..6400,IMPACT - SECAI MEP WORK IN THE AREA - STAIR #4 - 23/L - ALL LEVELS,,10,0,50,0,580,580,50,58,0,58,,2025-11-13 07:00,,2025-11-22 07:00,2025-11-29 17:00,,2025-11-21 07:00,2025-11-26 17:00,2025-11-21 07:00,2025-11-26 17:00,2025-11-12 07:00,2025-11-17 17:00,2025-11-22 07:00,2025-11-29 17:00,,PT_Normal,,,,,PDTdzz6UmUSLUs8eVtsqmA,ZBJmgWZOBkOZBwxLXdn2pQ,,,N,0,0,,,,,,,,2025-11-13 21:32,2025-11-20 21:42,jleon,jleon,,N,
117667245,122698,18114023,363246,0,N,1,N,N,CP_Drtn,TT_Task,DT_FixedDUR2,TK_Active,CN.SWB3.7151,"IMPACT - WATER INTRUSION, EXCESSIVE MUD AND DEBRIS IN AIRLOCKS - SUE - SECTOR 61/62/63/64/65",,-270,30,10,0,0,0,10,0,0,0,,2025-06-12 07:00,,2025-10-15 07:00,2025-10-15 17:00,,2025-11-21 07:00,2025-11-21 17:00,2025-11-21 07:00,2025-11-21 17:00,2025-06-12 07:00,2025-06-12 17:00,2025-10-15 07:00,2025-10-15 17:00,,PT_Normal,,,,,YuUa8Im/EE6jVbhDNIxprA,FK5bWferbk6IBiqXHG4tvw,,,N,0,0,,,,,,,,2025-11-17 15:07,2025-11-20 21:42,jleon,jleon,,N,
117884968,122698,18114538,597,0,N,1,N,N,CP_Drtn,TT_Task,DT_FixedDUR2,TK_Active,FAB1-DI-001,INSTALL DOOR & HARDWARE (419 OF 622),,-200,0,8,0,0,0,40,0,0,0,,2025-11-17 08:00,,2025-10-17 08:00,2025-10-17 17:00,,2025-11-21 08:00,2025-11-21 17:00,2025-11-21 08:00,2025-11-21 17:00,2025-11-17 08:00,2025-11-21 17:00,2025-10-17 08:00,2025-10-17 17:00,,PT_Normal,,,,,TdqMHJLGYE+dC0uvj4bKyw,aoNaJh3kuky4BU4gYf9ASw,,,N,0,0,,,,,,,,2025-11-19 14:46,2025-11-20 21:46,jleon,jleon,,N,
118050544,122698,18876588,597,0,N,1,N,N,CP_Drtn,TT_Task,DT_FixedDUR2,TK_Active,FAB1-ST18D-04,INSTALL DOOR & HARDWARE - FAB1-ST18D,,8,448,40,0,0,0,40,0,0,0,,2025-11-18 08:00,,2025-11-24 08:00,2025-11-28 17:00,,2025-11-21 08:00,2025-11-27 17:00,2025-11-21 08:00,2025-11-27 17:00,2025-11-18 08:00,2025-11-24 17:00,2025-11-24 08:00,2025-11-28 17:00,,PT_Normal,,,,,vRH8PpPkUk6mZwQrxpsxrg,RPCOocWm506O/L1GnqjYYA,,,N,0,0,,,,,,,,2025-11-20 15:04,2025-11-20 21:46,jleon,jleon,,N,
