Task Code,Task Description,Status,Planned Start,Planned Finish,Actual Start,Actual Finish
MS.ALL.MS.1090,GC - STRUCTURAL STEEL ERECTION COMPLETE - Incl Elevator Door fronts,Not Started,2025-11-20 17:00,2025-11-20 17:00,,
CN.BB51.ST.2050,BERG - INSTALL DOOR FRAMES - GL 33 - STAIR 5 - K-L - demo drywall and Install PART OF FRAMING,Complete,2025-09-04 07:00,2025-09-11 17:00,2025-08-11 07:00,2025-09-16 17:00
CN.BB51.ST.2110,INSTALL - DOOR/HARDWARE/PAINT - GL 33 - STAIR 5 - K-L(),Active,2025-10-17 07:00,2025-10-23 17:00,2025-10-17 07:00,
CN.BB51.ST.2460,BERG - INSTALL DOOR FRAMES - GL 33 - STAIR 18 - C-D (Procurement),Active,2025-09-04 07:00,2025-09-15 17:00,2025-08-04 07:00,
CN.BB51.ST.2490,INSTALL - DOOR/HARDWARE/PAINT - GL 33 - STAIR 18 - C-D (),Not Started,2025-12-22 07:00,2025-12-26 17:00,,
ELEVHSS290,IMPACT - SWO ISSUED FOR ALL REMAINING HSS STEEL DOOR OPENINGS / AWAIT SECAI DIRECTION TO PROCEED,Complete,2024-05-03 07:00,2024-08-13 17:00,2024-04-25 07:00,2025-01-06 17:00
CN.SWB5.2410,CCD 248 - FRAME & HANG TEMP DRYWALL ENCLOSURE - GL5 & A-LINE - SE PENTHOUSE,Complete,2024-05-24 07:00,2024-06-10 17:00,2024-05-22 07:00,2024-05-30 17:00
INT.DH.1000,IMPACT - Y_RFI 1209 - PREP & SUBMIT RFI FOR INTERIOR DOOR DESIGN,Complete,2024-05-31 07:00,2024-06-21 17:00,2024-02-05 07:00,2024-02-20 17:00
INT.DH.1030,IMPACT - DRB-007 / DRB-008 - SECAI ISSUES INTERIOR DOOR REDESIGN TO YATES,Complete,2024-06-17 07:00,2024-07-19 17:00,2024-03-07 07:00,2024-04-04 17:00
INT.DH.1040,"IMPACT - CCD 302 - YATES PREP & SUBMIT CCD: C&B DOOR SCHEDULE CHANGES AS PER RFI 1209, DRB-007, DRB-008",Complete,2024-06-24 07:00,2024-07-25 17:00,2024-04-05 07:00,2024-05-07 17:00
INT.DH.1050,"IMPACT - CCD 302 - SECAI REVIEW & APPROVE CCD: C&B DOOR SCHEDULE CHANGES AS PER RFI 1209, DRB-007, DRB-008",Complete,2024-06-28 07:00,2024-07-22 17:00,2024-05-08 07:00,2024-05-20 17:00
INT.DH.1060,IMPACT - CCD 302 - YATES/C&B PREPARE SUBMITTAL FOR INTERIOR DOOR REDESIGN,Complete,2024-07-05 07:00,2024-07-16 17:00,2024-05-21 07:00,2024-05-30 17:00
INT.DH.1070,IMPACT - CCD 302 - SECAI/JACOBS REVIEW & APPROVE SUBMITTAL FOR INTERIOR DOOR REDESIGN (DRB-008) - REVISE & RESUBMIT,Complete,2024-06-10 07:00,2024-06-28 17:00,2024-05-31 07:00,2024-07-08 17:00
INT.DH.2000,IMPACT - Y_SBMT 524 - PREPARE & SUBMIT AUTO ALUMINUM DOOR SUBMITTAL - CLEAN ROOMS,Complete,2024-05-31 07:00,2024-06-06 17:00,2023-12-01 07:00,2023-12-14 17:00
INT.DH.2010,IMPACT - SECAI REVIEW & APPROVE AUTO ALUMINUM DOOR SUBMITTAL - CLEAN ROOMS - REVISE & RESUBMIT,Complete,2024-05-31 07:00,2024-06-06 17:00,2023-12-15 07:00,2023-12-21 17:00
INT.DH.2020,IMPACT - PREPARE & SUBMIT AUTO ALUMINUM DOOR SUBMITTAL - CLEAN ROOMS - R1,Complete,2024-05-31 07:00,2024-06-06 17:00,2023-12-22 07:00,2024-02-06 17:00
INT.DH.2030,IMPACT - SECAI REVIEW & APPROVE TO AUTO ALUMINUM DOOR SUBMITTAL - CLEAN ROOMS - R1 - REVISE & RESUBMIT,Complete,2024-05-31 07:00,2024-06-06 17:00,2024-02-07 07:00,2024-02-20 17:00
INT.DH.2040,IMPACT - PREPARE & SUBMIT AUTO ALUMINUM DOOR SUBMITTAL - CLEAN ROOMS - R2,Complete,2024-05-31 07:00,2024-06-06 17:00,2024-02-21 07:00,2024-04-08 17:00
INT.DH.2050,IMPACT - SECAI REVIEW & APPROVE TO AUTO ALUMINUM DOOR SUBMITTAL - CLEAN ROOMS - R2 - REVISE & RESUBMIT,Complete,2024-05-31 07:00,2024-06-06 17:00,2024-04-09 07:00,2024-04-18 17:00
INT.DH.2060,IMPACT - PREPARE & SUBMIT AUTO ALUMINUM DOOR SUBMITTAL - CLEAN ROOMS - R3,Complete,2024-05-31 07:00,2024-06-06 17:00,2024-04-19 07:00,2024-05-08 17:00
INT.DH.2070,IMPACT - SECAI REVIEW & APPROVE TO AUTO ALUMINUM DOOR SUBMITTAL - CLEAN ROOMS - R3 - REVISE & RESUBMIT,Complete,2024-05-31 07:00,2024-06-06 17:00,2024-05-08 07:00,2024-05-21 17:00
CN.SWB5.2560,IMPACT - BERG INSTALL STUD FRAMED MEP OPENINGS - NW PENTHOUSE - SOUTH WALL,Complete,2024-08-23 07:00,2024-08-29 17:00,2024-08-12 07:00,2024-08-16 17:00
CN.SWB5.9150,IMPACT - BERG INSTALL STUD FRAMED MEP OPENINGS - SW PENTHOUSE - NORTH & SOUTH WALLS,Complete,2024-07-17 07:00,2024-07-30 17:00,2024-07-02 07:00,2024-07-16 17:00
CN.SWB5.9180,IMPACT - BERG INSTALL STUD FRAMED MEP OPENINGS - NE PENTHOUSE - SOUTH WALL,Complete,2024-08-09 07:00,2024-08-19 17:00,2024-07-24 07:00,2024-08-02 17:00
CN.SWA5.DS.3020,REMEDY - FRAME & DRYWALL (INT) - SWA5 - GL 6-3 - K LINE - L2,Complete,2024-07-17 07:00,2024-08-06 17:00,2024-07-17 07:00,2024-08-07 17:00
INT.DH.1090,PREP & SUBMIT EXTERIOR DOOR AND FRAMES SHOP DRAWINGS (Y_SBMT#686),Complete,2024-05-31 07:00,2024-06-17 17:00,2023-07-10 07:00,2023-07-25 17:00
INT.DH.1100,SECAI REVIEW EXTERIOR DOOR & FRAMES SHOP DRAWINGS (Y_SBMT#686),Complete,2024-05-31 07:00,2024-06-17 17:00,2023-07-26 07:00,2023-08-28 17:00
INT.DH.1110,IMPACT - SECAI ISSUE DESIGN REVISION TO YATES - EXTERIOR DOOR & FRAMES,Complete,2024-05-31 07:00,2024-06-13 17:00,2023-08-29 07:00,2023-09-08 17:00
INT.DH.1120,IMPACT - PREP & SUBMIT EXTERIOR DOOR & FRAMES SHOP DRAWINGS - REVISED DESIGN,Complete,2024-05-31 07:00,2024-06-17 17:00,2023-09-11 07:00,2023-10-02 17:00
INT.DH.1130,IMPACT - SECAI REVIEW & APPROVE EXTERIOR DOOR & FRAMES SHOP DRAWINGS - REVISED DESIGN,Complete,2024-05-31 07:00,2024-06-17 17:00,2023-10-03 07:00,2023-10-24 17:00
INT.DH.1140,IMPACT - Y_RFI 1058 - PREP & SUBMIT RFI TO CLARIFY R-VALUE - EXTERIOR DOOR & FRAMES,Complete,2024-05-31 07:00,2024-06-07 17:00,2023-10-25 07:00,2023-11-07 17:00
INT.DH.1150,IMPACT - Y_RFI 1058 - SECAI REVIEW & REPSOND CLARIFYING R-VALUE - EXTERIOR DOOR & FRAMES,Complete,2024-05-31 07:00,2024-05-31 17:00,2023-11-08 07:00,2023-11-08 17:00
INT.DH.1160,IMPACT - Y_RFI 1072 - PREP & SUBMIT RFI TO CLARIFY THERMAL RATING - EXTERIOR DOOR & FRAMES,Complete,2024-05-31 07:00,2024-06-07 17:00,2023-11-09 07:00,2023-11-16 17:00
INT.DH.1170,IMPACT - Y_RFI 1072 - SECAI REVIEW & RESPOND CLARIFYING THERMAL RATING - EXTERIOR DOOR & FRAMES,Complete,2024-05-31 07:00,2024-06-17 17:00,2023-11-17 07:00,2023-11-29 17:00
INT.DH.1180,IMPACT - Y_RFI 1072 - YATES REOPENS RFI AFTER CONFERENCE CALL WITH JACOBS - EXTERIOR DOOR & FRAMES,Complete,2024-05-31 07:00,2024-05-31 17:00,2023-11-30 07:00,2023-11-30 17:00
INT.DH.1190,IMPACT - Y_RFI 1072 - SECAI/JACOBS/SAMOO/YATES COORDINATE THERMAL RATING REQS - EXTERIOR DOOR & FRAMES,Complete,2024-05-31 07:00,2024-06-25 17:00,2023-12-01 07:00,2024-04-08 17:00
INT.DH.1200,IMPACT - Y_RFI 1072 - SECAI REQUESTS YATES SUBMIT FORMAL SUBMITTAL TO CLOSE RFI - EXTERIOR DOOR & FRAMES,Complete,2024-05-31 07:00,2024-05-31 17:00,2024-04-09 07:00,2024-04-09 17:00
INT.DH.1210,IMPACT - Y_SBMT 0600 - PREP & SUBMIT CECO FRAME & MEDALLION DOOR SUBMITTAL - EXTERIOR DOOR & FRAMES,Complete,2024-05-31 07:00,2024-06-07 17:00,2024-04-10 07:00,2024-04-18 17:00
INT.DH.1220,IMPACT - Y_SBMT 0600 - SECAI REVIEW & APPROVE CECO FRAME & MEDALLION DOOR SUBMITTAL - EXTERIOR DOOR & FRAMES,Complete,2024-05-31 07:00,2024-06-17 17:00,2024-04-19 07:00,2024-04-24 17:00
INT.DH.1230,IMPACT - Y_RFI 1072 - SECAI CLOSES RFI AFTER APPROVAL OF Y_SBMT 1072 - EXTERIOR DOOR & FRAMES,Complete,2024-05-31 07:00,2024-06-07 17:00,2024-04-25 07:00,2024-05-01 17:00
INT.DH.1240,IMPACT - Y_RFI 1326 - PREP & SUBMIT RFI TO CLARIFY OVERSIZED FRAME SPEC - EXTERIOR DOOR & FRAMES,Complete,2024-05-31 07:00,2024-06-07 17:00,2024-05-02 07:00,2024-05-07 17:00
INT.DH.1250,IMPACT - Y_RFI 1326 - SECAI REVIEW & PROVIDE CLARIFICATION ON OVERSIZED FRAMES - EXTERIOR DOOR & FRAMES,Complete,2024-05-31 07:00,2024-06-17 17:00,2024-05-08 07:00,2024-05-15 17:00
INT.DH.1290,IMPACT - YATES SUBMIT REQUEST TO SECAI FOR DOOR INSTALLATION PRIORITY LIST - NEEDED TO DEVISE INSTALL SEQUENCE,Complete,2024-05-31 07:00,2024-06-17 17:00,2024-04-17 07:00,2024-11-02 17:00
INT.DH.0000,PREP & SUBMIT INTERIOR DOORS & FRAMES PRODUCT DATA (Y_SBMT#681),Complete,2024-05-31 07:00,2024-06-17 17:00,2023-09-14 07:00,2023-10-04 17:00
INT.DH.0010,SECAI REVIEW & REJECT INTERIOR DOORS & FRAMES PRODUCT DATA (Y_SBMT#681),Complete,2024-05-31 07:00,2024-06-17 17:00,2023-10-05 07:00,2023-10-25 17:00
INT.DH.0020,IMPACT - PREP & SUBMIT INTERIOR DOORS & FRAMES PRODUCT DATA - R1 (Y_SBMT#681),Complete,2024-05-31 07:00,2024-06-17 17:00,2023-10-26 07:00,2023-11-27 17:00
INT.DH.0030,IMPACT - SECAI REVIEW & REJECT INTERIOR DOORS & FRAMES PRODUCT DATA - R1 (Y_SBMT#681),Complete,2024-05-31 07:00,2024-06-17 17:00,2023-11-28 07:00,2023-12-12 17:00
INT.DH.0040,IMPACT - Y_RFI 1008 - PREP & SUBMIT RFI TO RESOLVE FIRE RATING ISSUE WITH OVERSIZED INTERIOR DOORS,Complete,2024-05-31 07:00,2024-05-31 17:00,2023-10-26 07:00,2023-10-26 17:00
INT.DH.0050,IMPACT - Y_RFI 1008 - SECAI REVIEW & PROVIDES RESPONSE TO FIRE RATING RFI FOR OVERSIZED INTERIOR DOORS,Complete,2024-05-31 07:00,2024-06-17 17:00,2023-10-27 07:00,2024-01-09 17:00
INT.DH.0060,IMPACT - Y_RFI 1298 - PREP & SUBMIT RFI TO CLARIFY FIRE RATINGS FOR REVISED INTERIOR DOOR OPENINGS,Complete,2024-05-31 07:00,2024-06-17 17:00,2024-04-05 07:00,2024-04-18 17:00
INT.DH.0070,IMPACT - Y_RFI 1298 - SAMOO PROVIDES RESPONSE FOR FIRE RATINGS FOR REVISED INTERIOR DOOR OPENINGS,Complete,2024-05-31 07:00,2024-06-17 17:00,2024-04-19 07:00,2024-04-30 17:00
INT.DH.0080,IMPACT - Y_RFI 1298 - JACOBS REVIEW & RESPONSE FOR FIRE RATINGS FOR REVISED INTERIOR DOOR OPENINGS,Complete,2024-05-31 07:00,2024-06-07 17:00,2024-05-01 07:00,2024-05-07 17:00
INT.DH.1300,IMPACT - CCD 346 - PREP & SUBMIT CCD - EXTERIOR DOOR FRAME CHANGE TO KEY FRAME & GASKETING FOR OVERSIZED FRAME,Complete,2024-06-07 07:00,2024-06-13 17:00,2024-05-16 07:00,2024-06-04 17:00
INT.DH.1310,IMPACT - CCD 346 - SECAI REVIEW & REJECT CCD - SEEKING ALTERNATIVE TO MODIFIED STANDARD DOOR FRAMES,Complete,2024-06-07 07:00,2024-06-24 17:00,2024-06-05 07:00,2024-06-06 17:00
INT.DH.1320,IMPACT - CCD 346 - Y_RFI 1377 - YATES PREP & SUBMIT RFI FOR EXTERIOR DOOR FRAME SPEC CLARIFICATION,Complete,2024-06-20 07:00,2024-06-25 17:00,2024-06-07 07:00,2024-06-13 17:00
INT.DH.1330,IMPACT - CCD 346 - Y_RFI 1377 - SECAI REVIEW & RESPOND/SIGN RFI FOR EXTERIOR DOOR FRAME SPEC CLARIFICATION,Complete,2024-06-28 07:00,2024-07-16 17:00,2024-06-14 07:00,2024-06-27 17:00
INT.DH.2080,IMPACT - CCD 345 - PREP & SUBMIT CCD FOR INTERIOR DOORS (DRB-009 PACKAGE),Complete,2024-07-08 07:00,2024-07-22 17:00,2024-05-02 07:00,2024-06-05 17:00
INT.DH.2090,IMPACT - CCD 367 - PREP & SUBMIT CCD FOR INTERIOR DOORS (DRB-010 PACKAGE),Complete,2024-06-28 07:00,2024-07-16 17:00,2024-05-31 07:00,2024-06-13 17:00
INT.DH.2100,IMPACT - CCD 345 - SECAI REVIEW & APPROVE CCD FOR INTERIOR DOORS (DRB-009 PACKAGE),Complete,2024-07-08 07:00,2024-07-22 17:00,2024-06-06 07:00,2024-06-10 17:00
INT.DH.2140,IMPACT - CCD 367 - SECAI REVIEW & APPROVE CCD FOR INTERIOR DOORS (DRB-010 PACKAGE),Complete,2024-06-28 07:00,2024-07-16 17:00,2024-06-14 07:00,2024-06-20 17:00
STAIR.1780,INSTALL & INSPECT STAIR/RAMP # 5-C - SUE - 5-B - LEVEL 04 - Pending door sill angle,Complete,2024-10-17 07:00,2024-10-28 17:00,2024-10-24 07:00,2025-09-25 17:00
CN.SEA5.9850,REMAINING FRAME & DRYWALL - IT/SECURITY 22 - SEA5 FIZ - GL 6-1 - L1(PENDING DRYWALL REMEDY),Complete,2024-08-27 07:00,2024-09-04 17:00,2024-08-08 07:00,2024-08-13 17:00
CN.SEA5.10305,REMAINING FRAME & DRYWALL - IT/ SECURITY 1 - GL 3-6 - L1 - K LINE,Complete,2024-08-05 07:00,2024-08-12 17:00,2024-08-05 07:00,2024-08-10 17:00
CN.SEA5.10570,IMPACT - DEMO DOOR FRAME & MOBILIZE EQUIPMENT FOR FIREPROOFING - MECHANICAL ROOM - ELEVATOR 22,Complete,2024-08-09 07:00,2024-08-15 17:00,2024-08-05 07:00,2024-08-06 17:00
CN.SEA5.10590,IMPACT - REINSTALL TEMP DOOR FRAMES - MECHANICAL ROOM - ELEVATOR 22,Complete,2024-08-26 07:00,2024-09-05 17:00,2024-08-12 07:00,2024-08-27 17:00
CN.SEA5.10660,"FINAL TURNOVER - SHAFT, DOOR FRONTS, MECHANICAL ROOM - ELEVATOR 22",Not Started,2026-01-26 17:00,2026-01-26 17:00,,
CN.SWB5.10040,SECAI - AWAIT ELEVATOR COMPLETION & TURNOVER FOR HSS DOOR OPENINGS - 8/13,Complete,2024-11-21 07:00,2025-01-13 17:00,2024-11-21 07:00,2025-07-16 17:00
CN.SWB5.10100,"FINAL TURNOVER - DOOR FRONTS, MECHANICAL ROOM (WITH PERM DOOR) - ELEVATOR 5",Not Started,2025-11-24 17:00,2025-11-24 17:00,,
CN.SWB5.10120,PREP & INSTALL PERMANENT DOOR & FRAME - MECHANICAL ROOM - FAB110504A - ELEVATOR 5,Active,2024-09-27 07:00,2024-11-08 17:00,2024-10-01 07:00,
CN.SWB5.10130,"COMPLETE REMAINING FRAMING, DRYWALL, FIRE CAULKING - DOOR FRONTS - ELEVATOR 5 - LVL1 SECAI TOOK OVER",Complete,2025-09-04 07:00,2025-09-24 17:00,2025-08-26 07:00,2025-09-29 07:00
CN.SWB5.10140,TAPE & FLOAT -SHAFT & DOOR FRONTS - ELEVATOR 5,Not Started,2025-12-15 07:00,2025-12-19 17:00,,
CN.SEB55330,"FINAL TURNOVER - DOOR FRONTS, MECHANICAL ROOM (WITH PERM DOOR) - ELEVATOR 19",Not Started,2025-12-10 17:00,2025-12-10 17:00,,
CN.SEB1.10170,"IMPACT - CCD FOR DOOR MODIFICATION - VOC ROOM SUPPORT STEEL, BENT PLATE & DECKING - GL 17-18 - L LINE (DS AREA)",Complete,2024-09-13 07:00,2024-09-26 17:00,2024-09-03 07:00,2024-10-12 17:00
CN.SWB5.10510,IMPACT - DOOR OPENING FIX FOR SECAI ELEVATOR EQUIPMENT - MECHANICAL ROOM - FAB110504A - ELEVATOR 5,Active,2024-09-27 07:00,2024-11-08 17:00,2024-10-01 07:00,
INT.DH.2210,IMPACT - SECAI returned the submittal for the doors saying to revise to the new DRB.,Complete,2025-01-13 07:00,2025-01-13 17:00,2024-07-08 07:00,2024-07-08 17:00
INT.DH.2220,IMPACT - Meeting: SECAI stated they wanted to have 2 weeks for design develop. & new door schedule would be issued,Complete,2025-01-13 07:00,2025-01-14 17:00,2024-07-09 07:00,2024-07-10 17:00
INT.DH.2230,IMPACT - Notice of Delay of Door Procurement was sent to SECAI,Complete,2025-01-13 07:00,2025-01-14 17:00,2024-07-11 07:00,2024-07-12 17:00
INT.DH.2240,IMPACT - Yates was provided a Door sch. that we were to complete the submitt. based on and for C&B to review.,Complete,2025-01-13 07:00,2025-01-27 17:00,2024-07-15 07:00,2024-07-26 17:00
INT.DH.2250,IMPACT - The review of all doors was completed by both C&B and Jacobs/SAMOO,Complete,2025-01-13 07:00,2025-02-14 17:00,2024-07-29 07:00,2024-08-28 17:00
INT.DH.2260,"IMPACT - Interior Door, Frame and Hardware Product Data - PACKAGE 1 (REV 0) Submitted - FILTER 1",Complete,2025-01-13 07:00,2025-01-14 17:00,2024-08-29 07:00,2024-08-30 17:00
INT.DH.2270,"IMPACT - Int. Door, Frame & Hardware Product Data - Resubm. on meetings with Jacobs/SAMOO PACK 1 (REV 1) - FILTER 1",Complete,2025-01-13 07:00,2025-01-13 17:00,2024-09-02 07:00,2024-09-05 17:00
INT.DH.2280,"IMPACT - Int. Door, Frame & Hardware Product Data - Resubm. Revise  Jacobs Review PACK 1 (REV 1) - FILTER 1",Complete,2025-01-13 07:00,2025-01-13 17:00,2024-09-09 07:00,2024-09-09 17:00
INT.DH.2290,"IMPACT - Interior Door, Frame and Hardware Product Data  Submitted - Filter 3",Complete,2025-01-13 07:00,2025-01-16 17:00,2024-09-06 07:00,2024-09-11 17:00
INT.DH.2300,"IMPACT - Interior Door, Frame and Hardware Product Data  Submitted - Filter 2",Complete,2025-01-13 07:00,2025-01-16 17:00,2024-09-06 07:00,2024-09-11 17:00
INT.DH.2310,"IMPACT - Int. Door, Frame and Hardware Product Data)  Resubmit. - PACKAGE 1 (REV 3 - FILTER 1",Complete,2025-01-13 07:00,2025-01-15 17:00,2024-09-10 07:00,2024-09-13 17:00
INT.DH.2320,"IMPACT - Interior Door, Frame and Hardware Product Data - Remaining Doors REV 0 - Submitted",Complete,2025-01-13 07:00,2025-01-17 17:00,2024-09-12 07:00,2024-09-17 17:00
INT.DH.2330,"IMPACT - CCD #473 - Cook and Boardman - HM Doors, Frames, and Hardware for Filters 1-3 was submitted to SECAI",Complete,2025-01-13 07:00,2025-01-15 17:00,2024-09-16 07:00,2024-09-19 17:00
INT.DH.2340,"IMPACT - Int. Door, Frame & Hardware Product Data - Remaining Doors REV 0  Returned Revise and Resubmit",Complete,2025-01-13 07:00,2025-01-20 17:00,2024-09-18 07:00,2024-09-26 17:00
INT.DH.2350,"IMPACT - Int. Door, Frame and Hardware Product Data  Returned Approved as Noted - PACKAGE 1 (REV 3) - FILTER 1",Complete,2025-01-13 07:00,2025-01-29 17:00,2024-09-16 07:00,2024-10-03 17:00
INT.DH.2360,"IMPACT - Int. Door, Frame and Hardware Product Data - Remaining Doors REV 1  Submitted",Complete,2025-01-13 07:00,2025-01-16 17:00,2024-09-27 07:00,2024-10-01 17:00
INT.DH.2370,"IMPACT - Int. Door, Frame and Hardware Product Data  Returned Approved as Noted - Filter 3",Complete,2025-01-13 07:00,2025-02-04 17:00,2024-09-12 07:00,2024-10-04 17:00
INT.DH.2380,"IMPACT - Int. Door, Frame and Hardware Product Data  Returned Approved as Noted - Filter 2",Complete,2025-01-13 07:00,2025-02-04 17:00,2024-09-12 07:00,2024-10-04 17:00
INT.DH.2390,"IMPACT - Door, Frame and Hardware Product Data - Remaining Doors REV 1  Returned Approved as Noted",Complete,2025-01-13 07:00,2025-01-23 17:00,2024-10-02 07:00,2024-10-14 17:00
INT.DH.2400,IMPACT - Submit. clarif. sent to SECAI. Prev. appr. items were now unapp. in the latest returned submit (Int. frames),Complete,2025-01-13 07:00,2025-01-13 17:00,2024-10-18 07:00,2024-10-30 17:00
INT.DH.2420,"IMPACT - CCD #473 - Cook and Boardman - HM Doors, Frames, and Hardware for Filters 1-3 was executed",Complete,2025-01-13 07:00,2025-02-26 17:00,2024-09-20 07:00,2024-11-04 17:00
INT.DH.2430,IMPACT - Yates meeting with SECAI & SAS to review door mockup & inst.; Yates received app. to begin frame inst,Complete,2025-01-13 07:00,2025-01-13 17:00,2024-11-14 07:00,2024-11-14 17:00
INT.DH.2440,"IMPACT - CCD #538 - Cook & Boardman - HM Doors, Frames, & HW for remaining doors submitted to SECAI",Complete,2025-01-13 07:00,2025-01-30 17:00,2024-11-01 07:00,2024-11-19 17:00
INT.DH.2450,"IMPACT - CCD #538 - Cook and Boardman - HM Doors, Frames, and Hardware for remaining doors was executed",Complete,2025-01-13 07:00,2025-03-21 17:00,2024-11-26 07:00,2024-11-26 17:00
INT.DH.2460,IMPACT - Procurement - Damaged Doors,Complete,2025-01-13 07:00,2025-04-25 17:00,2024-10-25 07:00,2025-05-05 07:00
INT.DH.2470,IMPACT - Procurement - Replacement Doors in Filters 1-3 - ALL DOOR FRAMES TO BE ONSITE 2/20,Complete,2025-01-13 07:00,2025-04-25 17:00,2024-11-11 07:00,2025-02-05 07:00
INT.DH.2480,IMPACT - Procurement - Replacement Doors (Remaining Doors) - ALL DOORS TO BE ONSITE 3/26,Complete,2025-01-13 07:00,2025-04-25 17:00,2024-12-06 07:00,2025-03-26 07:00
INT.DH.2490,IMPACT - DOOR COATING MOCK UP APPROVAL,Complete,2025-01-13 07:00,2025-04-25 17:00,2024-10-25 07:00,2025-01-17 07:00
INT.DH.2500,IMPACT - Frame installation on HOLD until SECAI/SAS provides with an approved inspection plan forward for remidiation,Complete,2025-01-13 07:00,2025-04-25 17:00,2024-12-05 07:00,2024-12-12 17:00
INT.DH.2510,IMPACT - Procurement - Sansblast/Prime/Paint Ext.Door Frames - Delivery,Complete,2025-01-13 07:00,2025-04-25 17:00,2024-12-06 07:00,2025-03-20 07:00
INT.DH.2520,IMPACT - IOCC 1428 - 4 HM Frames Fire rated - Fabrication 10 weeks,Complete,2025-04-04 07:00,2025-06-27 17:00,2025-03-18 07:00,2025-04-10 07:00
CN.SWA4.7360,IMPACT - MKM FRAMING & SHEATHING COLD FRAME & INSULATION - N30-31 TRESTLE B INFILL - EXTERIOR,Complete,2025-10-01 07:00,2025-10-28 17:00,2025-09-18 07:00,2025-10-10 13:00
INT.DH.2530,"IMPACT - SECAI directive to hold up doors until 5/15 - LVL 2- FAB120112A, FAB120201A, FAB126109A, FAB126401B",Complete,2025-01-13 07:00,2025-04-25 17:00,2025-04-21 07:00,2025-05-16 17:00
INT.DH.2540,IMPACT - SECAI directive to hold up doors until 5/25 - LVL 3- FAB130502B -,Complete,2025-01-13 07:00,2025-04-25 17:00,2025-04-15 07:00,2025-05-30 07:00
INT.DH.2550,"IMPACT - SECAI directive to hold up doors until 6/20 - LVL 1- FAB110101A, FAB110402C, FAB110514A,FAB110514B, FAB116202D,",Complete,2025-01-13 07:00,2025-04-25 17:00,2025-04-21 07:00,2025-06-20 17:00
INT.DH.2560,IMPACT - RFI 10662 - RAISED ACCESS FLOOR DESIGN CONFLICT - LVL 1 - DOOR FRAMES,Complete,2025-01-13 07:00,2025-04-25 17:00,2025-04-23 07:00,2025-06-02 07:00
INT.DH.2570,IMPACT - DESIGN CHANGE RFI 9750 - OHC TO HM FRAME - LVL 3,Complete,2025-01-13 07:00,2025-04-25 17:00,2025-01-06 00:00,2025-01-13 17:00
INT.DH.2590,IMPACT - RFI 10662 - PATRIOT STAIR REMOVAL & INSTALL THRESHOLD - LVL 1 - DOOR FRAMES,Active,2025-10-06 07:00,2025-10-17 17:00,2025-09-17 07:00,
FIZ.WEST.1101,PARAPET WALL FRP & FRAME DRYWALL - ROOF - SWA - L3 - J-G GL 1-3,Complete,2023-12-01 07:00,2023-12-04 17:00,2023-12-01 07:00,2023-12-05 11:00
CN.FIZ1.2310,IMPACT Pending Man Power Issue due to NO Payment DOOR FRAMES -,Complete,2024-12-31 07:00,2025-01-03 17:00,2024-12-17 07:00,2025-01-08 17:00
CN.FIZ1.2320,INSTALL FRAMES & DOORS - SUE - 62 - GL 8-15 & A-E - L3,Active,2025-02-14 07:00,2025-02-18 17:00,2025-01-15 07:00,
CN.FIZ1.2350,INSTALL FRAMES & DOORS - SUE - 61 - GL 1-8 & A-E - L3,Active,2025-02-17 07:00,2025-02-19 17:00,2025-01-16 00:00,
CN.FIZ1.2380,INSTALL FRAMES & DOORS - SUE - 63 - GL 15-21 & A-E - L3,Active,2025-02-12 07:00,2025-02-14 17:00,2025-01-29 07:00,
CN.FIZ1.2410,INSTALL FRAMES & DOORS - SUE - 64 - GL 21-27 & A-E - L3,Active,2025-02-10 07:00,2025-02-12 17:00,2025-01-29 07:00,
CN.FIZ1.2440,INSTALL FRAMES & DOORS - SUE - 65 - GL 27-33 & A-E - L3,Active,2025-02-04 07:00,2025-02-06 17:00,2025-01-16 07:00,
CN.FIZ1.2900,INSTALL FRAMES & DOORS - SUE - 62 - GL 8-15 & A-E - L2,Active,2025-08-25 07:00,2025-08-27 17:00,2025-04-28 07:00,
CN.FIZ1.2940,INSTALL FRAMES & DOORS - SUE - 61 - GL 1-8 & A-E - L2,Active,2025-08-27 07:00,2025-08-29 17:00,2025-02-25 07:00,
CN.FIZ1.2870,INSTALL FRAMES & DOORS - SUE - 63 - GL 15-21 & A-E - L2,Active,2025-08-21 07:00,2025-08-25 17:00,2025-03-28 07:00,
CN.FIZ1.2830,INSTALL FRAMES & DOORS - SUE - 64 - GL 21-27 & A-E - L2,Active,2025-08-19 07:00,2025-08-21 17:00,2025-03-28 07:00,
CN.FIZ1.2790,INSTALL FRAMES & DOORS - SUE - 65 - GL 27-33 & A-E - L2,Active,2025-08-18 07:00,2025-08-20 17:00,2025-02-26 07:00,
CN.FIZ1.3140,INSTALL FRAMES & DOORS - SUE - 62 - GL 8-15 & A-E - L1,Active,2025-08-19 07:00,2025-08-21 17:00,2025-03-26 07:00,
CN.FIZ1.3180,INSTALL FRAMES & DOORS - SUE - 61 - GL 1-8 & A-E - L1,Active,2025-08-19 07:00,2025-08-21 17:00,2025-03-17 07:00,
CN.FIZ1.3110,INSTALL FRAMES & DOORS - SUE - 63 - GL 15-21 & A-E - L1,Active,2025-08-19 07:00,2025-08-21 17:00,2025-03-21 07:00,
CN.FIZ1.3070,INSTALL FRAMES & DOORS - SUE - 64 - GL 21-27 & A-E - L1,Active,2025-08-18 07:00,2025-08-20 17:00,2025-04-18 07:00,
CN.FIZ1.3030,INSTALL FRAMES & DOORS - SUE - 65 - GL 27-33 & A-E - L1,Active,2025-08-21 07:00,2025-08-25 17:00,2025-03-14 07:00,
CN.FIZ1.3230,INSTALL FRAMES & DOORS - SUW - 01 - GL 1-8 & J-N - L3,Active,2025-02-19 07:00,2025-02-21 17:00,2025-01-08 07:00,
CN.FIZ1.3270,INSTALL FRAMES & DOORS - SUW - 02 - GL 8-15 & J-N - L3,Active,2025-02-21 07:00,2025-02-25 17:00,2025-01-17 07:00,
CN.FIZ1.3310,INSTALL FRAMES - SUW - 03 - GL 15-21 & J-N - L3,Active,2025-02-24 07:00,2025-02-26 17:00,2025-01-21 07:00,
CN.FIZ1.3350,INSTALL FRAMES & DOORS - SUW - 04 - GL 21-27 & J-N - L3,Active,2025-02-26 07:00,2025-02-28 17:00,2025-01-22 07:00,
CN.FIZ1.3390,INSTALL FRAMES & DOORSS - SUW - 05 - GL 27-33 & J-N - L3,Active,2025-02-28 07:00,2025-03-04 17:00,2025-01-20 07:00,
CN.FIZ1.3510,INSTALL FRAMES & DOORS - SUW - 01 - GL 1-8 & J-N - L2,Active,2025-01-16 07:00,2025-01-20 17:00,2025-02-03 07:00,
CN.FIZ1.3470,INSTALL FRAMES & DOORS - SUW - 02 - GL 8-15 & J-N - L2,Active,2025-02-18 07:00,2025-02-20 17:00,2025-02-18 07:00,
CN.FIZ1.3540,INSTALL FRAMES & DOORS - SUW - 03 - GL 15-21 & J-N - L2,Active,2025-02-19 07:00,2025-02-21 17:00,2025-02-19 07:00,
CN.FIZ1.3580,INSTALL FRAMES & DOORS - SUW - 04 - GL 21-27 & J-N - L2,Active,2025-04-01 07:00,2025-04-03 17:00,2025-04-01 07:00,
CN.FIZ1.3620,INSTALL FRAMES & DOORS - SUW - 05 - GL 27-33 & J-N - L2,Active,2025-02-18 07:00,2025-02-20 17:00,2025-02-18 07:00,
CN.FIZ1.3760,INSTALL FRAMES & DOORS - SUW - 01 - GL 1-8 & J-N - L1,Active,2025-03-10 07:00,2025-03-12 17:00,2025-03-10 07:00,
CN.FIZ1.3720,INSTALL FRAMES & DOORS - SUW - 02 - GL 8-15 & J-N - L1,Active,2025-07-02 07:00,2025-07-07 17:00,2025-07-10 07:00,
CN.FIZ1.3790,INSTALL FRAMES & DOORS - SUW - 03 - GL 15-21 & J-N - L1,Active,2025-04-03 07:00,2025-04-07 17:00,2025-04-03 07:00,
CN.FIZ1.3830,INSTALL FRAMES & DOORS - SUW - 04 - GL 21-27 & J-N - L1,Not Started,2025-11-21 07:00,2025-11-21 17:00,,
CN.FIZ1.3870,INSTALL FRAMES & DOORS - SUW - 05 - GL 27-31 & J-N - L1,Active,2025-03-17 07:00,2025-03-19 17:00,2025-03-17 07:00,
CN.FIZ1.4360,IMPACT - INSTALL/REWORK DRYWALL FRAMING AROUND DOORS - SUE - 62 - GL 8-15 & A-E - L3,Complete,2025-02-04 07:00,2025-02-10 17:00,2025-01-13 07:00,2025-06-16 10:00
CN.FIZ1.4370,IMPACT - INSTALL/REWORK DRYWALL FRAMING AROUND DOORS - SUE - 61 - GL 1-8 & A-E - L3,Complete,2025-02-06 07:00,2025-02-12 17:00,2025-01-14 07:00,2025-06-02 17:00
CN.FIZ1.4350,IMPACT - INSTALL/REWORK DRYWALL FRAMING AROUND DOORS - SUE - 63 - GL 15-21 & A-E - L3,Complete,2025-02-03 07:00,2025-02-07 17:00,2025-01-10 07:00,2025-06-25 17:00
CN.FIZ1.4340,IMPACT - INSTALL/REWORK DRYWALL FRAMING AROUND DOORS - SUE - 64 - GL 21-27 & A-E - L3,Complete,2025-01-30 07:00,2025-02-05 17:00,2025-01-09 07:00,2025-06-12 17:00
CN.FIZ1.4320,IMPACT - INSTALL/REWORK DRYWALL FRAMING AROUND DOORS - SUE - 66 - GL 33-40 & A-E - L3,Complete,2025-01-27 07:00,2025-01-31 17:00,2025-01-06 07:00,2025-06-02 17:00
CN.FIZ1.4380,IMPACT - INSTALL/REWORK DRYWALL FRAMING AROUND DOORS - SUW - 01 - GL 1-8 & J-N - L3,Complete,2025-02-10 07:00,2025-02-14 17:00,2025-01-15 07:00,2025-06-19 17:00
CN.FIZ1.4390,IMPACT - INSTALL/REWORK DRYWALL FRAMING AROUND DOORS - SUW - 02 - GL 8-15 & J-N - L3,Complete,2025-02-11 07:00,2025-02-17 17:00,2025-01-16 07:00,2025-06-17 17:00
CN.FIZ1.4400,IMPACT - INSTALL/REWORK DRYWALL FRAMING AROUND DOORS - SUW - 03 - GL 15-21 & J-N - L3,Complete,2025-02-13 07:00,2025-02-19 17:00,2025-01-17 07:00,2025-05-30 17:00
CN.FIZ1.4410,IMPACT - INSTALL/REWORK DRYWALL FRAMING AROUND DOORS - SUW - 04 - GL 21-27 & J-N - L3,Complete,2025-02-17 07:00,2025-02-21 17:00,2025-01-20 07:00,2025-06-06 17:00
CN.FIZ1.4420,IMPACT - INSTALL/REWORK DRYWALL FRAMING AROUND DOORS - SUW - 05 - GL 27-33 & J-N - L3,Complete,2025-02-18 07:00,2025-02-24 17:00,2025-01-22 07:00,2025-05-28 17:00
CN.FIZ1.5040,INSTALL DOOR HARDWARE - SUE - 62 - GL 8-15 - A - L1 - Ext.,Not Started,2025-12-08 07:00,2025-12-10 17:00,,
CN.FIZ1.4930,INSTALL FRAMES & DOORS- SUE - 62 - GL 8-15 - A - L1 - Ext.,Active,2025-08-28 07:00,2025-09-02 17:00,2025-06-23 07:00,
CN.FIZ1.5100,INSTALL DOOR HARDWARE - SUE - 61 - GL 1-8 & - A - L1 - Ext.,Not Started,2025-12-08 07:00,2025-12-10 17:00,,
CN.FIZ1.4990,INSTALL FRAMES & DOORS - SUE - 61 - GL 1-8 - A - L1 - Ext.,Active,2025-09-03 07:00,2025-09-05 17:00,2025-07-30 07:00,
CN.FIZ1.4980,INSTALL DOOR HARDWARE - SUE - 63 - GL 15-21 - A - L1 - Ext.,Not Started,2025-12-08 07:00,2025-12-10 17:00,,
CN.FIZ1.4880,INSTALL FRAMES & DOORS - SUE - 63 - GL 15-21 - A - L1 - Ext.,Not Started,2025-11-26 07:00,2025-12-02 17:00,,
CN.FIZ1.4920,INSTALL DOOR HARDWARE - SUE - 64 - GL 21-27 - A - L1 - Ext.,Not Started,2025-12-03 07:00,2025-12-05 17:00,,
CN.FIZ1.4820,INSTALL FRAMES & DOORS - SUE - 64 - GL 21-27 - A - L1 - Ext.,Active,2025-08-20 07:00,2025-08-22 17:00,2025-06-09 07:00,
CN.FIZ1.4860,INSTALL DOOR HARDWARE - SUE - 65 - GL 27-33 - A - L1 - Ext.,Not Started,2025-12-03 07:00,2025-12-05 17:00,,
CN.FIZ1.4760,INSTALL FRAMES & DOORS - SUE - 65 - GL 27-33 - A - L1 - Ext.,Active,2025-08-15 07:00,2025-08-19 17:00,2025-04-21 07:00,
CN.FIZ1.4720,IMPACT - SECAI HOLD UP INSTALL DOOR FRAMES - LVL 1 - A & N LINE EXTERIOR - SUE - 66 - GL 33-40 - A - L1 - Ext.,Complete,2025-03-21 07:00,2025-03-25 17:00,2025-03-27 07:00,2025-06-18 17:00
CN.FIZ1.4840,PAINT & PROTECT DOORS & FRAMES - SUE - 65 - GL 27-33 - A - L1 - Ext.,Not Started,2025-11-26 07:00,2025-12-02 17:00,,
CN.FIZ1.4900,PAINT & PROTECT DOORS & FRAMES - SUE - 64 - GL 21-27 - A - L1 - Ext.,Not Started,2025-11-26 07:00,2025-12-02 17:00,,
CN.FIZ1.4960,PAINT & PROTECT DOORS & FRAMES - SUE - 63 - GL 15-21 - A - L1 - Ext.,Not Started,2025-12-03 07:00,2025-12-05 17:00,,
CN.FIZ1.5020,PAINT & PROTECT DOORS & FRAMES - SUE - 62 - GL 8-15 - A - L1 - Ext.,Not Started,2025-12-03 07:00,2025-12-05 17:00,,
CN.FIZ1.5080,PAINT & PROTECT DOORS & FRAMES - SUE - 61 - GL 1-8 - A - L1 - Ext.,Not Started,2025-12-03 07:00,2025-12-05 17:00,,
CN.FIZ1.5160,INSTALL DOOR HARDWARE - SUW - 01 - GL 1-8 N - L1 - Ext.,Not Started,2025-12-11 07:00,2025-12-15 17:00,,
CN.FIZ1.5050,INSTALL FRAMES & DOORS - SUW - 01 - GL 1-8 N - L1 - Ext.,Not Started,2025-12-03 07:00,2025-12-05 17:00,,
CN.FIZ1.5140,PAINT & PROTECT DOORS & FRAMES - SUW - 01 - GL 1-8 N - L1 - Ext.,Not Started,2025-12-08 07:00,2025-12-10 17:00,,
CN.FIZ1.5220,INSTALL DOOR HARDWARE - SUW - 02 - GL 8-15 - N - L1 - Ext.,Not Started,2025-12-11 07:00,2025-12-15 17:00,,
CN.FIZ1.5110,INSTALL FRAMES & DOORS - SUW - 02 - GL 8-15 - N - L1 - Ext.,Active,2025-06-13 07:00,2025-06-17 17:00,2025-06-13 07:00,
CN.FIZ1.5200,PAINT & PROTECT DOORS & FRAMES - SUW - 02 - GL 8-15 - N - L1 - Ext.,Not Started,2025-12-08 07:00,2025-12-10 17:00,,
CN.FIZ1.5280,INSTALL DOOR HARDWARE - SUW - 03 - GL 15-21 - N - L1 - Ext.,Not Started,2025-12-11 07:00,2025-12-15 17:00,,
CN.FIZ1.5170,INSTALL FRAMES & DOORS - SUW - 03 - GL 15-21 - N - L1 - Ext.,Active,2025-07-02 07:00,2025-07-07 17:00,2025-07-02 07:00,
CN.FIZ1.5260,PAINT & PROTECT DOORS & FRAMES - SUW - 03 - GL 15-21 - N - L1 - Ext.,Not Started,2025-12-08 07:00,2025-12-10 17:00,,
CN.FIZ1.5330,INSTALL DOOR HARDWARE - SUW - 04 - GL 21-27 - N - L1 - Ext.,Not Started,2025-12-11 07:00,2025-12-15 17:00,,
CN.FIZ1.5230,INSTALL FRAMES & DOORS - SUW - 04 - GL 21-27 - N - L1 - Ext.,Active,2025-05-20 07:00,2025-05-22 17:00,2025-05-20 07:00,
CN.FIZ1.5310,PAINT & PROTECT DOORS & FRAMES - SUW - 04 - GL 21-27 - N - L1 - Ext.,Not Started,2025-12-08 07:00,2025-12-10 17:00,,
CN.FIZ1.5370,INSTALL DOOR HARDWARE - SUW - 05 - GL 27-31 - N - L1 - Ext.,Not Started,2025-12-11 07:00,2025-12-15 17:00,,
CN.FIZ1.5290,INSTALL FRAMES & DOORS - SUW - 05 - GL 27-31 - N - L1 - Ext.,Active,2025-05-23 07:00,2025-05-28 17:00,2025-05-23 07:00,
CN.FIZ1.5350,PAINT & PROTECT DOORS & FRAMES - SUW - 05 - GL 27-31 - N - L1 - Ext.,Not Started,2025-12-08 07:00,2025-12-10 17:00,,
CN.FIZ1.5410,"IMPACT - By SECAI Request, remove 6 and suspen 7 doors inst. (Total 13) - SUE - L3",Complete,2025-01-27 07:00,2025-02-07 17:00,2025-02-17 07:00,2025-04-02 17:00
CN.FIZ1.5430,"IMPACT - B/32.5, Battery Rm., FAB126503A , Secai has closed this door opening - SUE - 65 - GL 27-33 & A-E - L2",Complete,2025-02-26 07:00,2025-03-04 17:00,2025-02-17 07:00,2025-06-16 15:00
CN.FIZ1.5560,IMPACT - SECAI HOLD UP DOOR FRAME INSTALLATION - SUW - 05 - GL 27-33 & J-N - L3,Active,2025-02-24 07:00,2025-02-28 17:00,2025-01-23 07:00,
CN.FIZ1.5570,IMPACT - SECAI HOLD UP DOOR FRAME REMOVAL REQUEST - SUE - 61 - GL 1-8 & A-E - L3,Complete,2025-02-06 07:00,2025-02-12 17:00,2025-01-14 07:00,2025-07-25 17:00
CN.FIZ1.5580,IMPACT - SECAI HOLD UP DOOR FRAME REMOVAL REQUEST - SUE - 62 - GL 8-15 & A-E - L3,Complete,2025-02-04 07:00,2025-02-10 17:00,2025-05-13 07:00,2025-06-02 07:00
FIZ.EAST.1101,PARAPET WALL FRP & FRAME DRYWALL - ROOF - FIZ3 - SEA - L4 GL 1-3 - E-G,Complete,2024-01-24 16:00,2024-01-28 16:00,2024-01-10 16:00,2024-01-18 11:00
FIZ.EAST.2291,IMPACT - RFI XXXX - PARAPET WALL FRP & FRAME DRYWALL - ROOF - FIZ3 - SEA - L4 GL 1-3 - E-G,Complete,2024-01-24 16:00,2024-01-28 16:00,2024-01-18 16:00,2024-03-12 11:00
FIZ.EAST.2301,REMAINING PARAPET WALL FRP & FRAME DRYWALL - ROOF - FIZ3 - SEA - L4 GL 1-3 - E-G,Complete,2024-03-12 07:00,2024-03-19 17:00,2024-03-12 07:00,2024-03-15 11:00
CN.SWA1.1180,PH1- AD STEEL FRAME INSTALL - SWA-1 fab side(14-17),Complete,2023-11-07 15:00,2023-11-10 09:00,2023-10-29 15:00,2023-11-10 09:00
CN.SWA1.1570,PH1- DS STEEL FRAME INSTALL - SWA-1 Comeback Sup Side(14-17),Complete,2023-11-05 08:00,2023-11-08 14:00,2023-11-05 08:00,2023-11-10 15:00
CN.SWA1.1600,PH1- INSTALL H FRAME - ROLL UP DOOR - SWA-1 - L1-WASTE WATER TANK RM NORTH- GL 18-15 K-N,Not Started,2025-11-21 07:00,2025-11-24 17:00,,
CN.AB.AR.4700,INSTALL ROLL UP DOORS - SWA-1 - L1 - (N17.5 - 301B) WASTE WATER RM NORTH - (MEP ROUGH IN NOT INCLUDED),Not Started,2025-11-26 07:00,2025-12-01 17:00,,
CN.SWA1.1332,REMEDY - FRAME & DRYWALL - SWA1- GL 18-15 K LINE L2,Complete,2024-07-18 07:00,2024-08-08 17:00,2024-07-17 07:00,2024-08-03 17:00
CN.AB.AR.4810,OVERHEAD DOOR DIMENSIONS FIELD MEASURE- SUW1 - GL 18-15 - L1 - C-E,Complete,2023-11-27 08:00,2023-11-28 14:00,2023-11-16 08:00,2023-11-17 16:00
CN.SWA1.6650,INSTALL ELEVATOR HSS STEEL DOOR OPENINGS - ELEVATOR 03 - SWB-1 - ALL LEVELS GL 19-16 [INCOMPLETE SWO],Complete,2024-04-15 07:00,2024-04-30 17:00,2024-03-18 07:00,2024-04-24 17:00
CN.SWA1.9660,COMPLETE REMAINING HSS STEEL DOOR OPENINGS - ELEVATOR 03,Complete,2025-01-08 07:00,2025-01-31 17:00,2025-01-08 07:00,2025-01-16 17:00
CN.SWA1.9690,"COMPLETE REMAINING FRAMING, DRYWALL, FIRE CAULKING - INTERIOR SHAFT & DOOR FRONTS - ELEVATOR 03",Complete,2025-02-26 07:00,2025-03-21 17:00,2025-02-26 07:00,2025-03-24 17:00
CN.SWA1.9710,INSTALL PERMANENT DOOR & FRAME - MECHANICAL ROOM - FAB110303A - ELEVATOR 03,Complete,2025-04-21 07:00,2025-04-28 17:00,2025-03-26 07:00,2025-04-01 13:00
CN.SWA1.9720,"FINAL TURNOVER - SHAFT, DOOR FRONT, MECHANICAL ROOM - ELEVATOR 03 - Complete turned over on",Complete,2025-05-21 17:00,2025-05-21 17:00,2025-04-25 17:00,2025-04-25 17:00
CN.SWA1.9730,"COMPLETE FRAMING, DRYWALL, FIRE CAULKING - DOOR FRONTS - ELEVATOR 03",Complete,2025-04-21 07:00,2025-05-09 17:00,2025-03-18 12:00,2025-03-25 17:00
CN.SWA1.9740,TAPE & FLOAT - DOOR FRONTS - ELEVATOR 03,Complete,2025-05-12 07:00,2025-05-21 17:00,2025-04-16 07:00,2025-04-22 17:00
CN.SWA1.9750,SECAI - INSTALL ELEVATOR DOOR FRONTS - ELEVATOR 03,Complete,2025-04-25 07:00,2025-05-01 17:00,2025-04-14 07:00,2025-04-15 17:00
CN.SWA1.9780,SECAI - ELEVATOR C-CHANNEL DOOR JAMBS DESIGN / QUOTE CLARIFICATION RFI 1570 - ELEVATOR 03(NOT REQUIRED),Complete,2024-12-23 07:00,2024-12-31 17:00,2024-09-19 07:00,2024-11-01 17:00
CN.SWA1.9810,SECAI - ELEVATOR C-CHANNEL DOOR JAMBS DESIGN / QUOTE CLARIFICATION RFI 1570  - ELEVATOR 20(NOT REQUIRED),Complete,2024-12-23 07:00,2024-12-31 17:00,2024-09-19 07:00,2024-11-01 17:00
CN.SWA1.9830,SECAI - ELEVATOR C-CHANNEL DOOR JAMBS DESIGN / QUOTE CLARIFICATION  RF1 1570- ELEVATOR 22(NOT REQUIRED),Complete,2024-12-23 07:00,2024-12-31 17:00,2024-09-19 07:00,2024-11-01 17:00
CN.SWA1.9860,SECAI - ELEVATOR C-CHANNEL DOOR JAMBS DESIGN / QUOTE CLARIFICATION  - ELEVATOR 5,Complete,2024-12-23 07:00,2024-12-31 17:00,2024-09-19 07:00,2024-10-29 17:00
CN.SWA1.9870,ELEVATOR C-CHANNEL DOOR FAB & INSTALL - ELEVATOR 5- no longer needed C Channel,Complete,2024-11-21 07:00,2025-02-17 17:00,2024-10-22 12:00,2024-10-29 17:00
CN.SWA1.9890,SECAI - ELEVATOR C-CHANNEL DOOR JAMBS DESIGN / QUOTE CLARIFICATION RFI- 1570  - ELEVATOR 1B(NOT REQUIRED),Complete,2024-12-23 07:00,2024-12-31 17:00,2024-09-19 07:00,2024-11-01 17:00
CN.SWA1.9920,SECAI - ELEVATOR C-CHANNEL DOOR JAMBS DESIGN / QUOTE CLARIFICATION- RFI 1570  - ELEVATOR 01(NOT REQUIRED),Complete,2024-12-23 07:00,2024-12-31 17:00,2024-09-19 07:00,2024-11-01 17:00
CN.SWA2.1130,PH1- AD STEEL FRAME INSTALL - SWA-2 fab side,Complete,2023-10-24 07:00,2023-10-28 09:00,2023-10-23 07:00,2023-10-28 10:00
CN.SWA2.1490,PH1- DS STEEL FRAME INSTALL - SWA-2 Comeback Sup Side (10-14),Complete,2023-10-30 07:00,2023-11-04 09:00,2023-10-30 07:00,2023-11-04 10:00
CN.SWA2.1262,REMEDY - FRAME & DRYWALL - SWA2 - GL 9-16 - K LINE - L2,Complete,2024-07-22 07:00,2024-08-12 17:00,2024-07-22 07:00,2024-08-05 17:00
CN.SWA3.1110,PH1- AD STEEL FRAME INSTALL - SWA-3 fab side,Complete,2023-10-02 07:00,2023-10-03 13:00,2023-10-02 07:00,2023-10-08 13:00
CN.SWA3.1500,PH1- DS STEEL FRAME INSTALL - SWA-3 Comeback Sup Side,Complete,2023-10-12 07:00,2023-10-13 13:00,2023-10-12 07:00,2023-10-13 13:00
CN.SWA3.1312,REMEDY - FRAME & DRYWALL - SWA3-  GL 12-9 - K LINE - L2,Complete,2024-07-15 07:00,2024-08-02 17:00,2024-07-15 07:00,2024-08-05 17:00
CN.SWA3.1920,INSTALL ELEVATOR HSS STEEL DOOR OPENINGS - ELEVATOR 2,Complete,2025-06-17 07:00,2025-06-30 17:00,2025-06-17 07:00,2025-06-26 17:00
CN.SWA3.9560,IMPACT - SECAI - INSTALL ELEVATOR DOOR JAMBS - ELEVATOR 2 - WAITING FOR SCHEDULE,Complete,2025-08-08 07:00,2025-08-21 17:00,2025-08-05 07:00,2025-08-18 17:00
CN.SWA3.9570,IMPACT - INSTALL DRYWALL & FIRE CAULKING - DOOR FRONTS - ELEVATOR 2,Complete,2025-09-19 07:00,2025-09-23 17:00,2025-09-19 07:00,2025-10-31 17:00
CN.SWA3.9580,INSTALL PERMANENT DOOR & FRAME - MECHANICAL ROOM - FAB110205A - ELEVATOR 2,Not Started,2025-11-24 07:00,2025-11-24 07:00,,
CN.SWA3.9590,"FINAL TURNOVER - DOOR FRONTS, MECHANICAL ROOM (WITH PERM DOOR) - ELEVATOR 2",Not Started,2025-11-24 07:00,2025-11-24 07:00,,
CN.SWA3.9610,TAPE & FLOAT - SHAFT - DOOR FRONTS - ELEVATOR 2,Complete,2025-11-04 07:00,2025-11-10 17:00,2025-11-04 07:00,2025-11-07 17:00
CN.SWA4.1110,PH1- AD STEEL FRAME INSTALL - SWA-4 fab side,Complete,2023-08-28 07:00,2023-09-02 15:00,2023-08-24 07:00,2023-08-26 16:00
CN.SWA4.1490,PH1- DS STEEL FRAME INSTALL - SWA-4 Comeback Sup Side,Complete,2023-08-28 13:00,2023-09-03 11:00,2023-08-26 13:00,2023-09-11 14:00
CN.SWA4.1302,REMEDY - FRAME & DRYWALL - SWA4 - GL 9-6 - K LINE - L2,Complete,2024-07-16 07:00,2024-08-05 17:00,2024-07-16 07:00,2024-08-05 17:00
CN.SWA5.1120,PH1- AD STEEL FRAME INSTALL - SWA-5 fab side,Complete,2023-06-12 07:00,2023-06-18 13:00,2023-06-12 07:00,2023-06-19 15:00
CN.AB.AR.1440,INSTALL ELEVATOR HSS STEEL DOOR OPENINGS - ELEVATOR 01,Complete,2025-08-25 07:00,2025-09-22 17:00,2025-07-17 07:00,2025-07-24 17:00
CN.SWB5.1980,PH1- INSTALL EXTERIOR DOOR / LOUVERS FRAMES - SW PENTHOUSE,Not Started,2025-11-21 07:00,2025-11-21 17:00,,
CN.SWA5.1460,PH1- DS STEEL FRAME INSTALL - SWA-5,Complete,2023-10-14 08:00,2023-10-15 14:00,2023-10-14 08:00,2023-10-15 16:00
CN.SWA5.R.4700,INSTALL ROLL UP DOORS - SWA5 - GL 6-1 - L1 - L-N - (MEP ROUGH IN NOT INCLUDED),Not Started,2025-11-26 07:00,2025-12-01 17:00,,
CN.AB.AR.6810,INSTALL ELEVATOR HSS STEEL DOOR OPENINGS - ELEVATOR 01A,Complete,2025-03-03 07:00,2025-03-21 17:00,2025-03-03 07:00,2025-03-11 17:00
CN.AB.AR.6830,INSTALL ELEVATOR HSS STEEL DOOR OPENINGS - ELEVATOR 01B,Complete,2025-03-12 07:00,2025-04-01 17:00,2025-03-12 07:00,2025-04-23 17:00
CN.SWA5..2170,INSTALL - DOOR FRAMES  - STAIR #3 - 18/L - ALL LEVELS,Complete,2025-10-16 07:00,2025-10-18 17:00,2025-02-18 07:00,2025-09-29 17:00
CN.AB.AR.7480,IMPACT - SECAI - INSTALL ELEVATOR DOOR JAMBS - ELEVATOR 01B - WAITING FOR SCHEDULE & RFI ANSWER FOR WALL THICKNESS,Complete,2025-06-09 07:00,2025-06-20 17:00,2025-05-19 07:00,2025-06-06 17:00
CN.AB.AR.7500,INSTALL PERMANENT DOOR & FRAME - MECHANICAL ROOM - FAB140110A - ELEVATOR 01B,Not Started,2025-11-21 07:00,2025-11-21 07:00,,
CN.AB.AR.7510,"FINAL TURNOVER - DOOR FRONTS, MECHANICAL ROOM (WITH PERM DOOR) - ELEVATOR 01B",Not Started,2025-11-21 07:00,2025-11-21 07:00,,
CN.AB.AR.7530,TAPE & FLOAT - SHAFT & DOOR FRONTS - ELEVATOR 01B,Complete,2025-08-13 13:00,2025-08-18 13:00,2025-08-13 13:00,2025-08-18 13:00
CN.SWA5..3780,SECAI TOOK OVER - TAPE & FLOAT - INTERIOR SHAFT & DOOR FRONTS- ELEVATOR 01,Active,2025-11-10 07:00,2025-11-19 17:00,2025-11-10 07:00,
CN.AB.AR.7560,"SECAI TOOK OVER 9/17 ONLY L1 - INSTALL REMAINING FRAMING, DRYWALL & FIRE CAULKING - SHAFT & DOOR FRONTS - ELEVATOR 01",Complete,2024-07-08 07:00,2024-07-17 17:00,2024-07-08 07:00,2025-09-19 17:00
CN.AB.AR.7570,INSTALL PERMANENT DOOR & FRAME - MECHANICAL ROOM - FAB110115A - ELEVATOR 01,Not Started,2025-11-21 07:00,2025-12-01 17:00,,
CN.AB.AR.7590,"FINAL TURNOVER - DOOR FRONTS, MECHANICAL ROOM (WITH PERM DOOR) - ELEVATOR 01",Not Started,2025-12-01 17:00,2025-12-01 17:00,,
CN.AB.AR.7660,IMPACT - SECAI - INSTALL ELEVATOR DOOR JAMBS- ELEVATOR 01A -A WAITING FOR SCHEDULE,Complete,2025-06-09 07:00,2025-06-20 17:00,2025-05-12 07:00,2025-06-05 07:00
CN.AB.AR.7670,"IMPACT - INSTALL REMAINING FRAMING, DRYWALL & FIRE CAULKING - SHAFT & DOOR FRONTS - ELEVATOR 01A",Complete,2025-06-06 07:00,2025-07-07 17:00,2025-06-06 07:00,2025-07-30 17:00
CN.AB.AR.7680,IMPACT - TAPE & FLOAT FUR OUTS - SHAFT & DOOR FRONTS - ELEVATOR 01A - Lvl 2 and 3 Cable tray in the way (SECAI to remov,Not Started,2025-11-21 07:00,2025-12-01 17:00,,
CN.AB.AR.7700,"FINAL TURNOVER - DOOR FRONTS, MECHANICAL ROOM (WITH PERM DOOR) - ELEVATOR 01A",Not Started,2025-12-01 17:00,2025-12-01 17:00,,
CN.AB.AR.7750,INSTALL PERMANENT DOOR & FRAME - MAN DOOR - FAB120401G - ELEVATOR 01B,Not Started,2025-11-21 07:00,2025-11-21 07:00,,
CN.SWA5..4180,INSTALL - DOOR FRAMES - STAIR #2 - 11/L - ALL LEVELS,Complete,2025-10-10 07:00,2025-10-10 17:00,2025-05-06 07:00,2025-08-06 17:00
CN.SWA5..4190,INSTALL - DOOR & HARDWARE - STAIR #2 - 11/L - ALL LEVELS,Active,2025-09-16 07:00,2025-09-20 17:00,2025-09-16 07:00,
CN.SWA5..4300,INSTALL DOOR FRAMES - STAIR #21 - 13/D - ALL LEVELS,Complete,2025-10-11 07:00,2025-10-11 17:00,2025-02-13 07:00,2025-11-07 07:00
CN.SWA5..4310,INSTALL - DOOR & HARDWARE - STAIR #21 - 13/D - ALL LEVELS,Active,2025-11-07 07:00,2025-11-12 17:00,2025-11-07 07:00,
CN.SWA5..4410,INSTALL - DOOR FRAMES  - STAIR #20 - 19/D - ALL LEVELS,Active,2025-10-15 07:00,2025-10-17 17:00,2025-09-10 07:00,
CN.SWA5..4420,INSTALL - DOOR & HARDWARE  - STAIR #20 - 19/D - ALL LEVELS,Active,2025-10-28 07:00,2025-11-01 17:00,2025-10-28 07:00,
CN.SWA5..4550,FRAME & 1ST LAYER DRYWALL CEILINGS - INSTALL & INSPECT - STAIR #3 - 18/L - ALL LEVELS,Complete,2025-09-30 07:00,2025-10-02 17:00,2025-09-30 07:00,2025-10-02 17:00
CN.SWA5..4560,INSTALL - DOOR & HARDWARE  - STAIR #3 - 18/L - ALL LEVELS,Active,2025-10-13 07:00,2025-10-17 17:00,2025-10-13 07:00,
CN.SWA5..4720,INSTALL DOOR FRAMES - STAIR #4 - 23/L - ALL LEVELS (),Complete,2025-10-10 07:00,2025-10-13 17:00,2025-05-27 07:00,2025-09-29 17:00
CN.SWA5..4730,INSTALL - DOOR & HARDWARE  - STAIR #4 - 23/L - ALL LEVELS,Active,2025-09-29 07:00,2025-10-15 17:00,2025-09-29 07:00,
CN.AB.AR.8750,IMPACT - WAITING ON EJ FROM WALL TO COLUMN - SHAFT & DOOR FRONTS - ELEVATOR 01A,Complete,2025-06-30 11:00,2025-07-15 11:00,2025-06-30 11:00,2025-07-28 07:00
CN.SWB1.1140,PH1- AD STEEL FRAME INSTALL - SWB-1 fab side,Complete,2023-08-28 07:00,2023-09-02 15:00,2023-08-24 07:00,2023-09-08 09:00
CN.SWB1.1490,PH1- DS STEEL FRAME INSTALL - SWB-1 Comeback Sup Side,Complete,2023-09-18 07:00,2023-09-22 09:00,2023-09-15 07:00,2023-09-19 09:00
CN.SWB1.1292,REMEDY - FRAME & DRYWALL - SWB1- GL 18-21 K LINE -  L2,Complete,2024-06-24 07:00,2024-07-05 17:00,2024-06-22 07:00,2024-08-03 17:00
CN.SWB2.1130,PH1- AD STEEL FRAME INSTALL - SWB-2 fab side,Complete,2023-09-16 08:00,2023-09-18 12:00,2023-09-16 08:00,2023-09-18 15:00
CN.SWB2.1470,PH1- DS STEEL FRAME INSTALL - SWB-2 Comeback Sup Side,Complete,2023-09-21 11:00,2023-09-23 15:00,2023-09-21 11:00,2023-09-23 16:00
CN.SWB2.1292,REMEDY - FRAME & DRYWALL - SWB2- GL 21-24 K LINE -  L2,Complete,2024-06-18 07:00,2024-06-28 17:00,2024-06-18 07:00,2024-08-01 17:00
CN.SWB3.1140,PH1- AD STEEL FRAME INSTALL - SWB-3 fab side,Complete,2023-09-29 07:00,2023-10-02 09:00,2023-09-29 07:00,2023-10-02 15:00
CN.SWB3.1450,PH1- DS STEEL FRAME INSTALL - SWB-3 Comeback Sup Side,Complete,2023-10-02 15:00,2023-10-05 17:00,2023-10-02 15:00,2023-10-06 17:00
CN.SWB3.1282,REMEDY - FRAME & DRYWALL -SWB2-  GL 22-28 K LINE -  L2,Complete,2024-06-18 07:00,2024-06-28 17:00,2024-06-18 07:00,2024-07-29 17:00
CN.SWB4.1130,PH1- AD STEEL FRAME INSTALL - SWB-4 fab side,Complete,2023-10-07 08:00,2023-10-09 12:00,2023-10-07 08:00,2023-10-11 17:00
CN.SWB4.1470,PH1- DS STEEL FRAME INSTALL - SWB-4 Comeback Sup Side,Complete,2023-10-12 07:00,2023-10-14 11:00,2023-10-12 07:00,2023-10-14 12:00
CN.SWB4.1282,REMEDY - FRAME & DRYWALL  SIDE -SWB2  L2 GL 27-30  K LINE,Complete,2024-07-23 07:00,2024-07-26 17:00,2024-07-19 07:00,2024-08-26 17:00
CN.SWB4R.4640,IMPACT - DAMAGED DOORS & PRECAST CONNECTION ISSUES - SWB-1- WASTE SOLVENT RM - GL 27-30 K-N,Complete,2024-09-12 07:00,2024-10-08 17:00,2024-09-12 07:00,2025-06-27 17:00
CN.SWB5.1130,PH1- AD STEEL FRAME INSTALL - SWB-5 fab side,Complete,2023-10-15 15:00,2023-10-18 18:00,2023-10-15 15:00,2023-10-20 09:00
CN.SWB5.1800,PH1- INSTALL EXTERIOR DOOR / LOUVERS FRAMES - NW PENTHOUSE,Not Started,2025-12-04 07:00,2025-12-08 17:00,,
CN.SWB5.1820,PH1- INSTALL EXTERIOR DOORS / LOUVERS - NW PENTHOUSE,Not Started,2025-12-09 07:00,2025-12-11 17:00,,
CN.SWB5.2130,PH1- DS STEEL FRAME INSTALL - SWB-5 Comeback Sup Side,Complete,2023-10-21 08:00,2023-10-25 10:30,2023-10-21 08:00,2023-10-25 15:00
CN.SWB5.1941,METAL STUD FRAMING (2hr) w DOOR FRAMES - SWB-5 - L1 only - GCS STORAGE GL 30-33 K-N,Complete,2024-01-17 07:00,2024-01-22 13:00,2024-01-16 07:00,2024-01-22 17:00
CN.SWB54671,H FRAME FOR ROLL UP DOOR - SWB-5 - L1 only - GCS STORAGE GL 30-33 K-N,Not Started,2025-11-21 07:00,2025-11-24 17:00,,
CN.SWB5.1272,REMEDY - FRAME & DRYWALL 2 SIDE -SWB5  L2 GL 30-33 K LINE,Complete,2024-07-22 07:00,2024-07-25 17:00,2024-07-22 07:00,2024-09-20 17:00
CN.SWB5.1412,INSTALL ELEVATOR HSS STEEL DOOR OPENINGS - ELEVATOR 5 - TURNOVER TO SECAI,Complete,2025-08-08 07:00,2025-09-05 17:00,2025-07-17 07:00,2025-07-25 17:00
CN.SWB5.6410,DOOR FRAMES BITUMINOUS COATING (2 Exterior) - NW PENTHOUSE,Not Started,2025-11-21 07:00,2025-11-21 17:00,,
CN.SEA1.1110,PH1- AD STEEL FRAME INSTALL TIER 1 - SEA-1 fab side,Complete,2023-06-10 14:00,2023-06-16 12:00,2023-05-09 16:00,2023-05-19 17:00
CN.AB.AR.1940,METAL STUD FRAMING (2hr) w DOOR FRAMES - SEA1 - GL 19-16 - L1 - C-A - (Leave Out holding work)- MECHANICAL ROOM 3 SOUTH,Complete,2024-01-06 11:00,2024-01-13 11:00,2024-01-06 11:00,2024-01-09 12:00
CN.SEA1.5130,PH1- DS STEEL FRAME INSTALL - SEA-1 Comeback Sup Side GL 19-16,Complete,2023-09-30 08:00,2023-10-07 10:00,2023-09-26 08:00,2023-09-30 17:00
CN.SEA1.4671,H FRAME FOR ROLL UP DOOR - MECHANICAL ROOM 3 SOUTH - SEA1 - GL 19-16 - C-A - L1,Complete,2024-09-03 07:00,2024-09-04 17:00,2024-09-03 07:00,2024-09-07 17:00
CN.AB.AR.4670,INSTALL ROLL UP DOORS (MEP ROUGH IN NOT INCLUDED) - SEA1 - GL 19-16 - C-A - L1,Not Started,2025-11-26 07:00,2025-11-26 17:00,,
CN.AB.AR.4710,METAL STUD FRAMING (2hr) w DOOR FRAMES - SEA1 - GL 19-16 - L3 - C-A - ELECTRICAL ROOM 2,Complete,2024-01-04 09:00,2024-01-10 15:00,2023-12-20 09:00,2023-12-30 17:00
CN.SEA1.DS..3080,REMEDY - FRAME & DRYWALL - SEA1 - GL 19-16 - D LINE - L2,Complete,2024-06-24 07:00,2024-07-05 17:00,2024-06-24 07:00,2024-07-02 17:00
CN.AB.AR.4800,OVERHEAD DOOR DIMENSIONS FIELD MEASURE- SEA1 - GL 19-16 - L1 - C-A,Complete,2023-11-27 08:00,2023-11-28 14:00,2023-11-16 08:00,2023-11-17 16:00
CN.SEA1.6540,INSTALL ELEVATOR HSS STEEL DOOR OPENINGS - ELEVATOR 20 - SEA1 - GL 19-16 - B-C - L3,Complete,2024-04-08 07:00,2024-04-18 11:00,2024-03-25 07:00,2025-01-20 17:00
CN.SEA1.DS..4090,REMEDY - FRAME & DRYWALL - SEA1 - GL 15-20 - C LINE - L2,Active,2024-10-15 07:00,2024-11-08 17:00,2024-10-07 07:00,
CN.SEA1.10295,"COMPLETE REMAINING FRAMING, DRYWALL, FIRE CAULKING - INTERIOR SHAFT & DOOR FRONTS - ELEVATOR 20 - complete 5/9",Complete,2025-04-23 07:00,2025-05-16 17:00,2025-03-10 07:00,2025-04-11 17:00
CN.SEA1.10305,IMPACT - COMPLETE REMAINING HSS STEEL DOOR OPENINGS - ELEVATOR 20,Complete,2025-01-16 07:00,2025-02-02 17:00,2025-01-16 07:00,2025-02-20 17:00
CN.SEA1.10325,DESCOPED - TAPE & FLOAT - DOOR FRONTS & SHAFT - ELEVATOR 20,Complete,2025-09-12 07:00,2025-09-16 17:00,2025-07-02 08:31,2025-07-03 17:00
CN.SEA1.10335,SECAI - INSTALL ELEVATOR DOOR FRAMES - ELEVATOR 20 - SECAI TO PROVIDE SCHEDULE,Complete,2025-07-18 07:00,2025-07-24 17:00,2025-06-30 12:00,2025-07-03 17:00
CN.SEA1.10415,DRYWALL - DOOR FRONTS - ELEVATOR 20,Complete,2025-04-22 07:00,2025-05-09 17:00,2025-04-22 07:00,2025-05-09 17:00
CN.SEA2.1110,PH1- AD STEEL FRAME INSTALL - SEA-2 fab side,Complete,2023-05-23 07:00,2023-05-28 15:00,2023-05-23 07:00,2023-06-02 15:00
CN.SEA2.1420,PH1- DS STEEL FRAME INSTALL - SEA-2 Comeback Sup Side,Complete,2023-07-25 13:00,2023-07-30 11:00,2023-07-13 13:00,2023-07-17 17:00
CN.SEA2.6670,REMEDY - FRAME & DRYWALL- SEA2 - GL 16-13 - L2 - D LINE,Complete,2024-07-22 07:00,2024-08-12 17:00,2024-07-19 07:00,2024-07-30 17:00
CN.SEA3.1140,PH1- AD STEEL FRAME INSTALL - SEA-3 fab side,Complete,2023-06-12 07:00,2023-06-16 17:00,2023-06-06 07:00,2023-06-10 17:00
CN.SEA3.1580,PH1- DS STEEL FRAME INSTALL - SEA-3 Comeback Sup Side,Complete,2023-07-24 07:00,2023-07-28 15:00,2023-07-17 07:00,2023-07-29 11:00
CN.SEA4.1120,PH1- AD STEEL FRAME INSTALL - SEA-4 fab side,Complete,2023-08-21 07:00,2023-08-26 15:00,2023-08-12 07:00,2023-08-14 16:00
CN.SEA4.1420,PH1- DS STEEL FRAME INSTALL - SEA-4 Comeback Sup Side,Complete,2023-08-28 07:00,2023-09-02 15:00,2023-08-15 07:00,2023-08-20 16:00
CN.SEA4.1121,REMEDY - FRAME & DRYWALL - SEA4 - GL 9-6 - D LINE - L2,Complete,2024-07-18 07:00,2024-08-08 17:00,2024-07-18 07:00,2024-08-06 17:00
CN.SEA4.6580,REMEDY - FRAME & DRYWALL - SEA4 - GL 13-9 - D LINE - L2,Complete,2024-07-26 07:00,2024-08-19 17:00,2024-07-17 07:00,2024-08-06 17:00
CN.SEA4.6710,REMEDY - FRAME & DRYWALL - SEA4 - GL 5-10 - C LINE - L2,Active,2024-10-07 07:00,2024-10-31 17:00,2024-10-07 07:00,
CN.SEA4.6730,REMEDY - FRAME & DRYWALL - SEA4 - GL 10-15 - C LINE - L2,Active,2024-08-05 07:00,2024-08-28 17:00,2024-08-05 07:00,
CN.SEA5.1120,PH1- AD STEEL FRAME INSTALL - SEA-5 fab side,Complete,2023-08-28 07:00,2023-09-06 09:00,2023-08-28 07:00,2023-09-15 10:00
CN.SWB5.1600,PH1- INSTALL EXTERIOR DOOR / LOUVERS FRAMES - NE PENTHOUSE,Not Started,2025-11-25 07:00,2025-12-01 17:00,,
CN.SWB5.1610,PH1- INSTALL EXTERIOR DOORS / LOUVERS - NE PENTHOUSE,Not Started,2025-11-25 07:00,2025-12-01 17:00,,
CN.SEA5.1440,PH1- DS STEEL FRAME INSTALL - SEA5 FIZ - GL 6-1 - C-E - ROOF Comeback Sup Side,Complete,2023-11-02 07:00,2023-11-05 09:00,2023-11-02 07:00,2023-11-05 12:00
CN.SEA51941,METAL STUD FRAMING (2hr) w DOOR FRAMES - SEA5 FIZ - GL 6-1 - L1 - C-A - OAC MECHANICAL RM & I/O ROOM 1,Complete,2023-10-14 08:00,2023-10-19 14:00,2023-10-14 08:00,2023-11-17 17:00
CN.SEA5.1292,REMEDY - FRAME & DRYWALL - SEA5 FIZ - GL 3-6 - D LINE - L2,Complete,2024-07-15 07:00,2024-08-02 17:00,2024-07-19 07:00,2024-08-06 17:00
CN.AB.AR.6510,INSTALL VIP ROOM GLASS WINDOW & FRAME - SEA5 FIZ - GL 2 - G-F - L3,Complete,2024-09-23 07:00,2024-10-03 17:00,2024-09-21 07:00,2024-09-26 17:00
CN.SEA5.6560,INSTALL ELEVATOR HSS STEEL DOOR OPENINGS - ELEVATOR 22 - SEA5 - GL 6-1 - L2-3,Complete,2024-04-08 07:00,2024-04-18 11:00,2024-03-25 07:00,2024-04-24 17:00
CN.SEA5.9000,IMPACT - REMEDY - FRAME & DRYWALL - SEA5 FIZ - GL 6-3 - D LINE - L1,Complete,2024-07-26 07:00,2024-08-19 17:00,2024-07-22 07:00,2024-09-19 17:00
CN.SEA5.9030,IMPACT - REMEDY - FRAME & DRYWALL - SEA5- GL 9-6 - D LINE - L1,Complete,2024-08-16 07:00,2024-08-30 17:00,2024-08-08 07:00,2024-09-07 17:00
CN.SEA5.9060,IMPACT - REMEDY - FRAME & DRYWALL - SEA3 - GL 13-9 - D LINE - L1,Complete,2024-08-09 07:00,2024-08-26 17:00,2024-08-02 07:00,2024-09-05 17:00
CN.SEA5.9080,IMPACT - REMEDY - FRAME & DRYWALL - SEA2 - GL 16-13 - D LINE - L1,Complete,2024-07-17 07:00,2024-08-06 17:00,2024-07-17 07:00,2024-08-27 17:00
CN.SEA5.9110,IMPACT - REMEDY - FRAME & DRYWALL - SEA3 - GL 19-16 - D LINE - L1,Complete,2024-08-09 07:00,2024-08-26 17:00,2024-08-03 07:00,2024-08-27 17:00
CN.SEA5.9140,IMPACT - REMEDY - FRAME & DRYWALL - SEA3 - GL 19-22 - D LINE - L1,Complete,2024-07-17 07:00,2024-08-06 17:00,2024-07-17 07:00,2024-08-27 17:00
CN.SEA5.9170,IMPACT - REMEDY - FRAME & DRYWALL - SEA3 - GL 22-25 - D LINE - L1,Complete,2024-07-15 07:00,2024-08-02 17:00,2024-07-15 07:00,2024-08-27 17:00
CN.SEA5.9200,IMPACT - REMEDY - FRAME & DRYWALL - SEB3 - GL 25-28 - D LINE - L1,Complete,2024-07-15 07:00,2024-08-02 17:00,2024-07-15 07:00,2024-08-23 17:00
CN.SEA5.9230,IMPACT - REMEDY - FRAME & DRYWALL - SEA3 - GL 28-31 - D LINE - L1,Complete,2024-07-16 07:00,2024-08-05 17:00,2024-07-16 07:00,2024-08-23 17:00
CN.SEA5.9260,IMPACT - REMEDY - FRAME & DRYWALL - SWA3 - GL 31-33 - D LINE - L1,Complete,2024-07-15 07:00,2024-08-02 17:00,2024-07-15 07:00,2024-08-23 17:00
CN.SEA5.9300,IMPACT - REMEDY - FRAME & DRYWALL - SUW4 - GL 9-6 - K LINE - L1,Complete,2024-07-31 07:00,2024-08-23 17:00,2024-07-22 07:00,2024-09-07 17:00
CN.SEA5.9330,IMPACT - REMEDY - FRAME & DRYWALL - SWA3 - GL 12-9 - K LINE - L1,Complete,2024-08-23 07:00,2024-09-16 17:00,2024-08-12 07:00,2024-09-05 17:00
CN.SEA5.9360,IMPACT - REMEDY - FRAME & DRYWALL - SWA3 - GL 15-12 - K LINE - L1,Complete,2024-08-23 07:00,2024-08-27 17:00,2024-08-07 07:00,2024-09-05 17:00
CN.SEA5.9390,IMPACT - REMEDY - FRAME & DRYWALL - SWA3 - GL 18-15 - K LINE - L1,Complete,2024-08-23 07:00,2024-09-12 17:00,2024-08-01 07:00,2024-09-04 17:00
CN.SEA5.9420,IMPACT - REMEDY - FRAME & DRYWALL - SWB3 - GL 18-21 - K LINE - L1,Complete,2024-07-26 07:00,2024-08-19 17:00,2024-07-24 07:00,2024-08-21 17:00
CN.SEA5.9450,IMPACT - REMEDY - FRAME & DRYWALL - SWB3 - GL 21-24 - K LINE - L1,Complete,2024-07-16 07:00,2024-08-05 17:00,2024-07-16 07:00,2024-08-19 17:00
CN.SEA5.9480,IMPACT - REMEDY - FRAME & DRYWALL - SWB3 - GL 24-27 - K LINE - L1,Complete,2024-07-16 07:00,2024-08-05 17:00,2024-07-16 07:00,2024-08-19 17:00
CN.SEA5.9510,IMPACT - REMEDY - FRAME & DRYWALL - SWB3 - GL 27-30 - K LINE - L1,Complete,2024-07-16 07:00,2024-08-05 17:00,2024-07-16 07:00,2024-08-15 17:00
CN.SEA5.9540,IMPACT - REMEDY - FRAME & DRYWALL - SWB3 - GL 30-33 - K LINE - L1,Complete,2024-07-18 07:00,2024-08-08 17:00,2024-07-18 07:00,2024-08-15 17:00
CN.SEA5.9570,IMPACT - REMEDY - FRAME & DRYWALL - SEA5- GL 5-10 - C LINE - L1,Complete,2024-07-15 07:00,2024-08-02 17:00,2024-07-15 07:00,2024-08-15 17:00
CN.SEA5.9600,IMPACT - REMEDY - FRAME & DRYWALL - SEA5- GL 10-13 - C LINE - L1,Complete,2024-07-17 07:00,2024-08-06 17:00,2024-07-17 07:00,2024-08-15 17:00
CN.SEA5.9630,IMPACT - REMEDY - FRAME & DRYWALL - SEA5- GL 13-16 - C LINE - L1,Complete,2024-07-18 07:00,2024-08-08 17:00,2024-07-18 07:00,2024-08-26 17:00
CN.SEA5.9660,IMPACT - REMEDY - FRAME & DRYWALL - SEA5- GL 16-19 - C LINE - L1,Complete,2024-09-03 07:00,2024-09-26 17:00,2024-07-27 07:00,2024-08-24 17:00
CN.SEA5.9690,IMPACT - REMEDY - FRAME & DRYWALL - SEA5- GL 19-22 - C LINE - L1,Complete,2024-07-18 07:00,2024-08-08 17:00,2024-07-18 07:00,2024-08-24 17:00
CN.SEA5.9720,IMPACT - REMEDY - FRAME & DRYWALL - SEA5- GL 22-25 - C LINE - L1,Complete,2024-08-27 07:00,2024-09-19 17:00,2024-08-01 07:00,2024-08-24 17:00
CN.SEA5.9750,IMPACT - REMEDY - FRAME & DRYWALL - 1 LINE - L1- A-N,Complete,2024-06-06 07:00,2024-07-18 17:00,2024-06-06 07:00,2024-07-30 17:00
CN.SEA5.9780,IMPACT - REMEDY - FRAME & DRYWALL - 3 LINE - L1- A-N,Complete,2024-06-11 07:00,2024-07-16 17:00,2024-06-11 07:00,2024-07-25 17:00
CN.SEA5.9821,IMPACT - REMEDY - FRAME & DRYWALL - 1 LINE - L3 - A-N,Complete,2024-06-24 07:00,2024-08-01 17:00,2024-06-24 07:00,2024-09-26 17:00
CN.SEA5.9855,REMEDY - FRAME & DRYWALL - SEA5 - DATA CENTER 2  - GL G-N - D LINE - 1 LINE,Complete,2024-09-20 07:00,2024-10-10 17:00,2024-09-17 07:00,2024-09-30 17:00
CN.SEA5.9885,REMEDY - FRAME & DRYWALL - SEA5 - DATA CENTER 2  - GL G-N - D LINE - 3 LINE,Complete,2024-09-26 07:00,2024-10-15 17:00,2024-09-23 07:00,2025-08-22 17:00
CN.SEA5.10125,IMPACT - REMEDY - FRAME & DRYWALL - SUW4 - GL 3-6 - K LINE - L1,Complete,2024-07-22 07:00,2024-08-12 17:00,2024-07-22 07:00,2024-09-23 17:00
CN.SEA5.10245,IMPACT - REMEDY - FRAME & DRYWALL - SEA5 FIZ - GL 3-5 - C LINE - L1,Complete,2024-07-15 07:00,2024-08-02 17:00,2024-07-15 07:00,2024-08-15 17:00
CN.SEA5.10610,latcon - INSTALL ELEVATOR HSS STEEL DOOR FRONTS - ELEVATOR 22 - 5 per front,Complete,2025-05-13 07:00,2025-06-18 17:00,2025-05-19 07:00,2025-07-03 17:00
CN.SWB5.10890,CEILING STUD FRAME FIX W/ PROPER SPACING - NE - BREEZEWAY - (removal & install framing),Complete,2025-09-04 07:00,2025-09-13 17:00,2025-09-04 07:00,2025-09-07 17:00
CN.SEB1.1110,PH1- AD STEEL FRAME INSTALL - SEB-1 fab side - (South crane moves here),Complete,2023-10-10 13:00,2023-10-13 15:00,2023-10-04 13:00,2023-10-08 08:00
CN.SEB1.1410,PH1- DS STEEL FRAME INSTALL - SEB-1 Comeback Sup Side,Complete,2023-10-09 08:00,2023-10-12 10:00,2023-10-09 08:00,2023-10-12 10:00
CN.SEB1.7420,REMEDY - FRAME & DRYWALL (INT) - SEB2 - GL 22-25 - D LINE - L2,Complete,2024-06-17 07:00,2024-06-21 17:00,2024-06-17 07:00,2024-08-02 17:00
CN.SEB1.8950,REMEDY - FRAME & DRYWALL- SEB1- GL 19-22 -  L2 - D LINE,Complete,2024-06-17 07:00,2024-06-27 17:00,2024-06-17 07:00,2024-08-06 17:00
CN.SEB1.10050,REMEDY - FRAME & DRYWALL (INT) - SEB2 - GL 20-25 - C LINE - L2,Not Started,2025-12-01 07:00,2025-12-05 17:00,,
CN.SEB2.1110,PH1- AD STEEL FRAME INSTALL - SEB-2 fab side,Complete,2023-09-22 15:00,2023-09-25 17:00,2023-09-22 15:00,2023-09-27 11:00
CN.SEB2.1400,PH1- DS STEEL FRAME INSTALL - SEB-2 Comeback Sup Side,Complete,2023-09-29 07:00,2023-10-02 09:00,2023-09-29 07:00,2023-10-03 13:00
CN.SEB3.1110,PH1- AD STEEL FRAME INSTALL - SEB-3 fab side,Complete,2023-09-22 09:00,2023-09-24 13:00,2023-09-15 09:00,2023-09-17 16:00
CN.SEB3.1440,PH1- DS STEEL FRAME INSTALL - SEB-3 Comeback Sup Side,Complete,2023-09-29 09:00,2023-10-01 13:00,2023-09-20 07:00,2023-09-22 16:00
CN.SEB31051,REMEDY - FRAME & DRYWALL (INT) - SEB3 - GL 25-28 - D LINE - L2,Complete,2024-07-23 07:00,2024-07-31 17:00,2024-07-23 07:00,2024-08-12 17:00
CN.SEB3R.4880,IMPACT - ALUMINIUM SLIDING DOOR -SHOP DRAWINGS & FAB - GOAL POSTS - 7A WAFER I/O - SEB3 - GL 25-28 - C-A - L1,Active,2024-09-13 07:00,2024-09-20 17:00,2024-09-13 07:00,
CN.SEB4.1120,PH1- AD STEEL FRAME INSTALL - SEB-4 fab side,Complete,2023-09-05 07:00,2023-09-08 17:00,2023-09-05 07:00,2023-09-08 17:00
CN.SEB4.1470,PH1- DS STEEL FRAME INSTALL - SEB-4 Comeback Sup Side,Complete,2023-09-19 13:00,2023-09-23 15:00,2023-09-11 13:00,2023-09-15 16:00
CN.SEB4.1051,REMEDY - FRAME & DRYWALL (INT) - SEB4 - GL 28-31 - D LINE - L2,Complete,2024-07-22 07:00,2024-07-30 17:00,2024-07-22 07:00,2024-08-12 17:00
CN.SEB4.9030,SECAI - INSTALL ELEVATOR DOOR JAMBS - ELEVATOR 19 - WAITING FOR SCHEDULE - (9/13 ETA turnover),Complete,2025-09-04 07:00,2025-09-17 17:00,2025-08-13 11:51,2025-08-18 17:00
CN.SEB4.9040,INSTALL DRYWALL & FIRE CAULKING - DOOR FRONTS - ELEVATOR 19,Complete,2025-09-18 07:00,2025-10-09 17:00,2025-08-20 07:00,2025-08-29 17:00
CN.SEB4.9050,INSTALL PERMANENT DOOR & FRAME - MECHANICAL ROOM - FAB116526A - ELEVATOR 19,Not Started,2025-12-09 07:00,2025-12-10 17:00,,
CN.SEB4.9070,TAPE & FLOAT - SHAFT & DOOR FRONTS  - ELEVATOR 19,Complete,2025-09-02 07:00,2025-09-08 17:00,2025-09-02 07:00,2025-09-05 17:00
CN.SEB4.9090,INSTALL PERMANENT DOOR & FRAME - MAN DOOR - FAB126502F - ELEVATOR 19,Not Started,2025-11-21 07:00,2025-11-24 17:00,,
CN.SEB5.1120,PH1- AD STEEL FRAME INSTALL - SEB-5 fab side,Complete,2023-08-21 07:00,2023-08-26 15:00,2023-08-17 15:00,2023-08-24 11:00
CN.SWB5.1720,IMPACT - SECAI DEMO TEMP DOOR FRAMES - RE-INSTALL DOOR FRAMES & DOORS - MCC/ IO ROOM - SE PENTHOUSE,Active,2024-10-10 07:00,2024-10-11 17:00,2024-09-26 07:00,
CN.SWB5.1740,PH1- INSTALL EXTERIOR DOORS / LOUVERS - SE PENTHOUSE - MCC ROOF ROOF,Not Started,2025-11-24 07:00,2025-11-26 17:00,,
CN.SEB5.1450,PH1- DS STEEL FRAME INSTALL - SEB-5 Comeback Sup Side,Complete,2023-08-31 11:00,2023-09-06 09:00,2023-08-24 11:00,2023-09-02 09:00
CN.SEB54671,H FRAME FOR ROLL UP DOOR - SEB5 - GL 31-33 - C-A - L1,Not Started,2025-11-21 07:00,2025-11-21 17:00,,
CN.SEB5.4670,INSTALL ROLL UP DOORS (MEP ROUGH IN NOT INCLUDED) - SEA5 - GL 31-33 - C-A - L1,Not Started,2025-11-26 07:00,2025-11-26 17:00,,
CN.SEB5.1041,REMEDY - FRAME & DRYWALL (INT)- SEB5 - GL 31-33 - D LINE - L2,Complete,2024-07-22 07:00,2024-07-30 17:00,2024-07-22 07:00,2024-08-12 17:00
CN.SEB5.6560,INSTALL ELEVATOR HSS STEEL DOOR OPENINGS - ELEVATOR 18 - Expected finish 5/9,Complete,2025-05-07 07:00,2025-05-19 17:00,2025-04-28 07:00,2025-05-16 17:00
CN.SEB5.9300,PREP & INSTALL INSTALL PERMANENT DOOR & FRAME - MECHANICAL ROOM - FAB116514A - ELEVATOR 18,Active,2024-10-01 07:00,2024-10-25 17:00,2024-10-01 07:00,
CN.SEB5.9310,"FINAL TURNOVER - DOOR FRONTS, MECHANICAL ROOM (WITH PERM DOOR) - ELEVATOR 18",Not Started,2025-12-01 17:00,2025-12-01 17:00,,
CN.SEB5.9320,"COMPLETE REMAINING FRAMING, DRYWALL, FIRE CAULKING - DOOR FRONTS - ELEVATOR 18",Complete,2025-06-18 07:00,2025-07-21 17:00,2025-06-05 07:00,2025-07-31 17:00
CN.SEB5.9330,INTERIOR SHAFT & TAPE & FLOAT - SHAFT & DOOR FRONTS  - ELEVATOR 18,Active,2025-09-04 07:00,2025-09-17 17:00,2025-08-25 07:00,
CN.SEB5.9420,"COMPLETE REMAINING FRAMING, DRYWALL, FIRE CAULKING - SHAFT & DOOR FRONTS - ELEVATOR 01B -",Complete,2025-06-13 07:00,2025-07-10 17:00,2025-06-19 07:00,2025-08-01 17:00
INT.P1.DH&HW.1120,Execute Subcontract / NTP - Doors & Hardware - INTERIOR - TEMPORARY,Complete,2023-05-08 07:00,2023-05-14 12:00,2023-04-24 09:00,2023-06-24 16:00
INT.P2.WDP.1320,Execute Subcontract - Wall / Door Protection,Complete,2023-11-11 15:00,2023-11-13 11:00,2023-10-17 15:00,2023-10-19 12:00
INT.P1.DH&HW.1130,Subcontractor Submit Shop Drawings / Product Data - Doors & Hardware - INTERIOR,Complete,2023-08-01 13:00,2023-08-12 09:00,2023-07-03 13:00,2023-09-13 09:00
INT.P2.WDP.1330,Subcontractor Submit Shop Drawings / Product Data - Wall / Door Protection,Complete,2023-10-02 07:00,2023-10-06 15:00,2023-09-11 07:00,2023-09-23 16:00
INT.P1.DH&HW.1140,IMPACT - SECAI / Jacobs Review / Approve shop Drawings - Doors & Hardware - INTERIOR,Complete,2023-10-09 07:00,2023-10-18 14:00,2023-09-14 07:00,2024-01-18 17:00
INT.P1.DH&HW.1150,Fabrication / Lead time - Doors & Hardware - INTERIOR TEMPORARY,Complete,2023-10-09 07:00,2023-10-25 10:30,2023-10-02 07:00,2023-10-30 15:00
DS.SECAI.1140,EXT Door Schedule,Complete,2023-02-20 08:00,2023-02-20 08:00,2023-01-30 08:00,2023-01-30 08:00
DS.SECAI.1150,INT Door Schedule,Complete,2023-02-20 08:00,2023-02-20 08:00,2023-01-30 08:00,2023-01-30 08:00
INT.P1.DH&HW.1160,Execute Subcontract/ NTP - Doors & Hardware - PERMANENT,Complete,2023-08-01 13:00,2023-08-05 13:00,2023-06-08 07:00,2023-06-24 11:00
INT.P1.DH&HW.1170,Subcontractor Submit Shop Drawings / Product Data - Doors & Hardware - PERMANENT,Complete,2023-08-05 14:00,2023-08-16 10:00,2023-07-03 14:00,2023-10-03 17:00
INT.P1.DH&HW.1180,Jacobs Review / Approve shop Drawings - Doors & Hardware - PERMANENT,Complete,2023-10-02 07:00,2023-10-11 13:00,2023-10-04 07:00,2023-10-09 16:00
INT.P1.DH&HW.1190,Fabrication / Lead time - Doors & Hardware Exterior - PERMANENT,Complete,2023-10-09 07:00,2023-11-21 11:00,2023-10-10 07:00,2024-02-25 17:00
INT.P1.DH&HW.1200,Execute RFA - Doors & Hardware - OVERHEAD,Complete,2023-08-28 07:00,2023-09-06 17:00,2023-08-28 07:00,2023-10-20 13:00
INT.P1.DH&HW.1210,Subcontractor Submit Shop Drawings / Product Data - Doors & Hardware - OVERHEAD,Complete,2023-10-17 13:00,2023-10-29 09:00,2023-09-14 14:51,2023-09-26 17:00
INT.P1.DH&HW.1220,Jacobs Review / Approve shop Drawings - Doors & Hardware - OVERHEAD,Complete,2023-11-02 13:00,2023-11-12 09:00,2023-09-28 07:00,2023-10-10 13:00
INT.P1.DH&HW.1230,Fabrication / Lead time - Doors & Hardware - OVERHEAD,Complete,2023-11-27 07:00,2023-12-16 15:00,2023-11-18 07:00,2023-12-22 11:00
INT.P1.DH&HW.1240,SECAI DIRECTIVE TO FABRICATE BASED ON SAMOO 6.6 - Doors & Hardware - INTERIOR,Complete,2023-08-01 13:00,2023-08-12 09:00,2023-09-07 07:00,2023-09-13 09:00
INT.P1.DH&HW.1250,C&B OUTREACH MANUFACTURERS - Doors & Hardware - INTERIOR,Complete,2023-08-01 13:00,2023-08-12 09:00,2023-09-14 07:00,2023-10-12 09:00
IMP.DH&HW.1270,IMPACT - FABRICATE / DELIVER AUTOMATIC ALUMINUM DOORS - QA-1/SA-1 - CLEAN ROOMS (14-16 WEEK LEADTIME),Complete,2023-11-30 07:00,2024-04-04 17:00,2024-05-23 07:00,2025-03-07 17:00
EXT.P1.DH&HW.1270,SECAI DIRECTIVE TO FABRICATE BASED ON SAMOO 6.6 - Doors & Hardware - EXTERIOR,Complete,2023-08-01 13:00,2023-08-12 09:00,2023-09-07 07:00,2023-09-13 09:00
INT.P1.DH&HW.1270,Fabrication / Lead time - Exterior Door Frames - PERMANENT,Complete,2023-10-09 07:00,2023-11-21 11:00,2023-10-10 07:00,2024-02-23 13:00
IMP.DH&HW.1280,IMPACT - Y_SBMT 0626 - PREP & SUBMIT AUTOMATIC ALUMINUM SLIDING DOOR DA-1 SHOP DRAWINGS,Complete,2023-11-30 07:00,2023-12-15 17:00,2024-05-22 07:00,2024-06-11 17:00
IMP.DH&HW.1290,IMPACT - Y_SBMT 0626 - SECAI REVIEW AUTOMATIC ALUMINUM SLIDING DOOR - DA-1 SHOP DRAWINGS - REVISE & RESUBMIT,Complete,2023-11-30 07:00,2023-12-15 17:00,2024-06-12 07:00,2024-06-20 17:00
IMP.DH&HW.1300,IMPACT - Y_SBMT 0626 - Submit Re-Submit AUTOMATIC ALUMINUM SLIDING DOOR - DA-1 SHOP DRAWINGS - R1-R4,Complete,2024-06-28 07:00,2024-07-16 17:00,2024-06-21 07:00,2025-04-07 11:00
IMP.DH&HW.1310,IMPACT - Y_SBMT 0626 - SECAI REVIEW & APPROVE AUTOMATIC ALUMINUM SLIDING DOOR - DA-1 SHOP DRAWINGS - R1-R4,Complete,2025-08-19 11:00,2025-09-03 11:00,2024-10-02 11:00,2025-04-23 11:00
IMP.DH&HW.1320,IMPACT - Y_SBMT 0626 - FABRICATE / DELIVER AUTOMATIC ALUMINUM DOORS DA-1 - CLEAN ROOMS (14-16 WEEK LEADTIME),Complete,2025-09-03 11:00,2025-10-08 11:00,2024-06-12 11:00,2024-10-04 11:00
INT.P1.DH&HW.1280,INTERIOR OVERHEAD COILING DOORS - CCD Negotiation,Complete,2023-11-27 07:00,2023-12-16 15:00,2024-11-11 07:00,2024-12-19 11:00
INT.P1.DH&HW.1290,INTERIOR OVERHEAD COILING DOORS - SAS Redesign - confirmed 1/6/25,Complete,2023-11-27 07:00,2023-12-16 15:00,2024-12-18 07:00,2025-01-06 11:00
INT.P1.DH&HW.1300,IMPACT - INTERIOR OVERHEAD COILING DOORS - UNDER REDESIGN - Y-1356 -SHOP DWGS R1 -R2 - REVIEW AND APPROVAL,Complete,2023-11-27 07:00,2023-12-16 15:00,2025-01-13 07:00,2025-05-30 10:00
INT.P1.DH&HW.1310,INTERIOR OVERHEAD COILING DOORS - RFI ISSUED / ANWERED,Complete,2023-11-27 07:00,2023-12-16 15:00,2025-01-06 07:00,2025-01-10 11:00
INT.P1.DH&HW.1320,IMPACT - INTERIOR OVERHEAD COILING DOORS - UNDER REDESIGN - FABRICATION LEAD TIME,Complete,2025-08-20 07:00,2025-09-29 17:00,2025-06-02 07:00,2025-08-08 17:00
A2000,ALL YATES DOOR FRAME INSPECTION - FAB110110B - turnover frames to SECAI to install,Complete,2025-06-20 08:00,2025-07-21 17:00,2025-06-20 08:00,2025-08-28 17:00
MS.SECAI.GC,SECAI - CONDITION BUILDING - drives door paint,Complete,2025-08-15 08:00,2025-08-15 17:00,2025-08-15 08:00,2025-08-15 17:00
FAB1-A1010,DOORS SCOPE SUBSTANTIAL COMPLETION - SCP Panels L1 FIZ driving,Not Started,2026-05-15 17:00,2026-05-15 17:00,,
IMPACT2 - constraint,IMPACT - RFI 1779/1781/1835 DOOR THRESHOLD AND WP - SHOP DWG - ALL LEVEL 4 EXTERIOR DOORS,Complete,2025-06-20 08:00,2025-07-17 17:00,2025-05-27 08:00,2025-09-23 08:00
IMPACT1 - constraint,IMPACT - PENDING CLADDING MODIFICATION (DBLE DOORS) & CABINET DOORS,Complete,2025-06-20 08:00,2025-07-17 16:00,2025-06-20 08:00,2025-08-22 08:00
FAB146106A-03,INSTALL DOOR FRAMES - FAB146106A,Not Started,2025-11-21 08:00,2025-11-21 17:00,,
FAB146106A-04,INSTALL DOOR & HARDWARE - FAB146106A,Not Started,2025-11-24 08:00,2025-11-28 17:00,,
FAB146106A-05,PAINT & PROTECT DOORS & FRAMES -  FAB146106A,Not Started,2026-02-16 08:00,2026-02-19 15:00,,
FAB146106B-03,INSTALL DOOR FRAMES - FAB146106B,Complete,2025-11-13 08:00,2025-11-13 17:00,2025-11-13 08:00,2025-11-13 17:00
FAB146106B-04,INSTALL DOOR & HARDWARE - FAB146106B,Not Started,2025-11-21 08:00,2025-11-27 17:00,,
FAB146106B-05,PAINT & PROTECT DOORS & FRAMES -  FAB146106B,Not Started,2026-02-16 08:00,2026-02-19 15:00,,
FAB146107A-03,INSTALL DOOR FRAMES - FAB146107A,Not Started,2025-12-01 08:00,2025-12-02 17:00,,
FAB146107A-04,INSTALL DOOR & HARDWARE - FAB146107A,Not Started,2025-12-03 08:00,2025-12-09 17:00,,
FAB146107A-05,PAINT & PROTECT DOORS & FRAMES -  FAB146107A,Not Started,2026-02-16 08:00,2026-02-19 15:00,,
FAB146107A-30,IMPACT - SECAI LAYDOWN FOR DOORS AND FRAMES - FAB146107A,Active,2025-07-09 08:00,2025-07-15 17:00,2025-07-09 08:00,
FAB146105A-01,INSTALL DOOR FRAMES - FAB146105A,Not Started,2025-12-10 08:00,2025-12-10 17:00,,
FAB146105A-04,INSTALL DOOR & HARDWARE - FAB146105A,Not Started,2025-12-12 08:00,2025-12-18 17:00,,
FAB146105A-05,PAINT & PROTECT DOORS & FRAMES -  FAB146105A,Not Started,2026-02-16 08:00,2026-02-19 15:00,,
FAB146105D-03,INSTALL DOOR FRAMES - FAB146105D,Not Started,2025-11-28 08:00,2025-11-28 17:00,,
FAB146105D-04,INSTALL DOOR & HARDWARE - FAB146105D,Not Started,2025-12-01 08:00,2025-12-05 17:00,,
FAB146105D-05,PAINT & PROTECT DOORS & FRAMES - FAB146105D,Not Started,2026-02-16 08:00,2026-02-19 15:00,,
FAB146109B-01,INSTALL DOOR FRAMES - FAB146109B,Not Started,2025-12-10 08:00,2025-12-10 17:00,,
FAB146109B-04,INSTALL DOOR & HARDWARE - FAB146109B,Not Started,2025-12-12 08:00,2025-12-18 17:00,,
FAB146109C-01,INSTALL DOOR FRAMES - FAB146109C,Not Started,2025-12-10 08:00,2025-12-10 17:00,,
FAB146109C-04,INSTALL DOOR & HARDWARE - FAB146109C,Not Started,2025-12-12 08:00,2025-12-18 17:00,,
FAB146110B-02,INSTALL DOOR FRAMES - FAB146110B,Not Started,2025-12-10 08:00,2025-12-10 17:00,,
FAB146110B-04,INSTALL DOOR & HARDWARE - FAB146110B,Not Started,2025-12-12 08:00,2025-12-18 17:00,,
FAB146109B-05,PAINT & PROTECT DOORS & FRAMES -  FAB146109B,Not Started,2026-02-16 08:00,2026-02-19 15:00,,
FAB146109C-05,PAINT & PROTECT DOORS & FRAMES -  FAB146109C,Not Started,2026-02-16 08:00,2026-02-19 15:00,,
FAB146110B-05,PAINT & PROTECT DOORS & FRAMES -  FAB146110B,Not Started,2026-02-16 08:00,2026-02-19 15:00,,
FAB146101A-01,IMPACT - INSTALL/REWORK DRYWALL FRAMING AROUND DOORS - FAB146101A,Complete,2025-05-07 08:00,2025-05-15 17:00,2025-05-07 08:00,2025-05-07 17:00
FAB146101A-03,INSTALL DOOR FRAMES - FAB146101A,Complete,2025-08-18 13:00,2025-08-19 12:00,2025-05-07 00:00,2025-05-07 16:00
FAB146101A-04,INSTALL DOOR & HARDWARE - FAB146101A,Active,2025-11-10 08:00,2025-11-14 17:00,2025-11-10 08:00,
FAB146101A-05,PAINT & PROTECT DOORS & FRAMES -  FAB146101A,Not Started,2026-02-16 08:00,2026-02-19 15:00,,
FAB146101B-01,IMPACT - INSTALL/REWORK DRYWALL FRAMING AROUND DOORS - FAB146101B,Complete,2025-05-07 08:00,2025-05-15 17:00,2025-05-07 08:00,2025-05-07 17:00
FAB146101B-03,INSTALL DOOR FRAMES - FAB146101B,Complete,2025-08-18 13:00,2025-08-19 12:00,2025-05-07 00:00,2025-05-07 16:00
FAB146101B-04,INSTALL DOOR & HARDWARE - FAB146101B,Active,2025-11-10 08:00,2025-11-14 17:00,2025-11-10 08:00,
FAB146101B-05,PAINT & PROTECT DOORS & FRAMES -  FAB146101B,Not Started,2026-02-16 08:00,2026-02-19 15:00,,
FAB146102A-03,INSTALL DOOR FRAMES - FAB146102A,Complete,2025-09-12 08:00,2025-09-12 17:00,2025-09-12 08:00,2025-09-12 17:00
FAB146102A-04,INSTALL DOOR & HARDWARE - FAB146102A,Not Started,2025-11-21 08:00,2025-11-27 17:00,,
FAB146102A-05,PAINT & PROTECT DOORS & FRAMES -  FAB146102A,Not Started,2026-02-16 08:00,2026-02-19 15:00,,
TR-FAB146103A-03,INSTALL DOOR FRAMES - TR - FAB146103A,Complete,2025-06-27 08:00,2025-06-27 17:00,2025-06-27 08:00,2025-06-27 17:00
TR-FAB146103A-04,INSTALL DOOR & HARDWARE - TR - FAB146103A,Not Started,2025-11-21 08:00,2025-11-27 17:00,,
TR-FAB146103A-05,PAINT & PROTECT DOORS & FRAMES -  TR - FAB146103A,Not Started,2026-02-16 08:00,2026-02-19 15:00,,
FAB142101D-03,INSTALL DOOR FRAMES - FAB142101D,Not Started,2025-11-21 08:00,2025-11-21 17:00,,
FAB142101D-04,INSTALL DOOR & HARDWARE - FAB142101D,Not Started,2025-11-24 08:00,2025-11-28 17:00,,
FAB142101D-05,PAINT & PROTECT DOORS & FRAMES -  FAB142101D,Not Started,2026-02-16 08:00,2026-02-19 15:00,,
FAB142101E-03,INSTALL DOOR FRAMES - FAB142101E,Not Started,2025-11-21 08:00,2025-11-21 17:00,,
FAB142101E-04,INSTALL DOOR & HARDWARE - FAB142101E,Not Started,2025-11-24 08:00,2025-11-28 17:00,,
FAB142101E-05,PAINT & PROTECT DOORS & FRAMES -  FAB142101E,Not Started,2026-02-16 08:00,2026-02-19 15:00,,
FAB142101F-03,INSTALL DOOR FRAMES - FAB142101F,Not Started,2025-11-21 08:00,2025-11-21 17:00,,
FAB142101F-04,INSTALL DOOR & HARDWARE - FAB142101F,Not Started,2025-11-24 08:00,2025-11-28 17:00,,
FAB142101F-05,PAINT & PROTECT DOORS & FRAMES -  FAB142101F,Not Started,2026-02-16 08:00,2026-02-19 15:00,,
FAB146303A-01,INSTALL DOOR FRAMES - FAB146303A,Not Started,2025-12-10 08:00,2025-12-11 17:00,,
FAB146303A-04,INSTALL DOOR & HARDWARE - FAB146303A,Not Started,2025-12-15 08:00,2025-12-19 17:00,,
FAB146303A-05,PAINT & PROTECT DOORS & FRAMES -  FAB146303A,Not Started,2026-02-16 08:00,2026-02-19 15:00,,
FAB146303B-03,INSTALL DOOR FRAMES - FAB146303B,Not Started,2025-11-21 08:00,2025-11-21 17:00,,
FAB146303B-04,INSTALL DOOR & HARDWARE - FAB146303B,Not Started,2025-11-24 08:00,2025-11-28 17:00,,
FAB146303B-05,PAINT & PROTECT DOORS & FRAMES -  FAB146303B,Not Started,2026-02-16 08:00,2026-02-19 15:00,,
FAB146303C-03,INSTALL DOOR FRAMES - FAB146303C,Not Started,2025-11-21 08:00,2025-11-21 17:00,,
FAB146303C-04,INSTALL DOOR & HARDWARE - FAB146303C,Not Started,2025-11-24 08:00,2025-11-28 17:00,,
FAB146303C-05,PAINT & PROTECT DOORS & FRAMES -  FAB146303C,Not Started,2026-02-16 08:00,2026-02-19 15:00,,
FAB146303B-11,IMPACT - PROCUREMENT - REORDERED DOORS (JAMB DEPTH ISSUE),Complete,2025-06-09 08:00,2025-08-12 17:00,2025-06-09 08:00,2025-07-14 17:00
TR-FAB146508A-01,IMPACT - INSTALL/REWORK DRYWALL FRAMING AROUND DOORS - TR - FAB146508A,Complete,2025-09-29 08:00,2025-09-30 17:00,2025-09-29 08:00,2025-09-30 17:00
TR-FAB146508A-03,INSTALL DOOR FRAMES - TR - FAB146508A,Complete,2025-09-30 08:00,2025-09-30 17:00,2025-09-30 08:00,2025-09-30 17:00
TR-FAB146508A-04,INSTALL DOOR & HARDWARE - TR - FAB146508A,Not Started,2025-11-21 08:00,2025-11-27 17:00,,
TR-FAB146508A-05,PAINT & PROTECT DOORS & FRAMES -  TR - FAB146508A,Not Started,2026-02-16 08:00,2026-02-19 15:00,,
FAB146506A-01,IMPACT - INSTALL/REWORK DRYWALL FRAMING AROUND DOORS - FAB146506A,Complete,2025-09-03 08:00,2025-09-04 17:00,2025-09-03 08:00,2025-09-04 17:00
FAB146506A-03,INSTALL DOOR FRAMES - FAB146506A,Complete,2025-09-05 08:00,2025-09-05 17:00,2025-09-05 08:00,2025-09-05 17:00
FAB146506A-04,INSTALL DOOR & HARDWARE - FAB146506A,Not Started,2025-11-21 08:00,2025-11-27 17:00,,
FAB146506A-05,PAINT & PROTECT DOORS & FRAMES - FAB146506A,Not Started,2026-02-16 08:00,2026-02-19 15:00,,
FAB146506A-11,IMPACT - PROCUREMENT - Reordered doors (Wall Thickness and Door Swing Design Changes),Complete,2025-06-20 08:00,2025-08-14 17:00,2025-06-20 08:00,2025-07-14 17:00
FAB146507A-01,INSTALL DOOR FRAMES - FAB146507A,Complete,2025-07-23 08:00,2025-07-23 17:00,2025-07-23 08:00,2025-07-23 17:00
FAB146507A-07,DOOR FRAME PAINT & 1ST COAT - FAB146507A,Not Started,2026-02-16 08:00,2026-02-18 17:00,,
FAB146507A-04,INSTALL DOOR & HARDWARE - FAB146507A,Not Started,2026-02-19 08:00,2026-02-25 17:00,,
FAB146507A-05,PAINT & PROTECT DOORS & FRAMES -  FAB146507A,Not Started,2026-02-26 08:00,2026-03-03 15:00,,
FAB146507B-01,INSTALL DOOR FRAMES - FAB146507B,Not Started,2025-12-01 08:00,2025-12-01 17:00,,
FAB146507B-04,INSTALL DOOR & HARDWARE - FAB146507B,Not Started,2025-12-03 08:00,2025-12-09 17:00,,
FAB146507B-05,PAINT & PROTECT DOORS & FRAMES -  FAB146507B,Not Started,2026-02-16 08:00,2026-02-19 15:00,,
FAB146507C-01,IMPACT - INSTALL/REWORK DRYWALL FRAMING AROUND DOORS - FAB146507C,Complete,2025-07-09 08:00,2025-07-10 17:00,2025-07-09 08:00,2025-07-10 17:00
FAB146507C-03,INSTALL DOOR FRAMES - FAB146507C,Complete,2025-07-11 08:00,2025-07-11 17:00,2025-07-11 08:00,2025-07-11 17:00
FAB146507C-04,INSTALL DOOR & HARDWARE - FAB146507C,Active,2025-11-18 08:00,2025-11-24 17:00,2025-11-18 08:00,
FAB146507C-05,PAINT & PROTECT DOORS & FRAMES -  FAB146507C,Not Started,2026-02-16 08:00,2026-02-19 15:00,,
FAB146502A-03,INSTALL DOOR FRAMES - FAB146502A,Not Started,2025-12-10 08:00,2025-12-10 17:00,,
FAB146502A-04,INSTALL DOOR & HARDWARE - FAB146502A,Not Started,2025-12-11 08:00,2025-12-17 17:00,,
FAB146502A-05,PAINT & PROTECT DOORS & FRAMES -  FAB146502A,Not Started,2026-02-16 08:00,2026-02-19 15:00,,
FAB146503A-01,INSTALL DOOR FRAMES - FAB146503A,Not Started,2025-12-10 08:00,2025-12-10 17:00,,
FAB146503A-04,INSTALL DOOR & HARDWARE - FAB146503A,Not Started,2025-12-12 08:00,2025-12-18 17:00,,
FAB146503A-05,PAINT & PROTECT DOORS & FRAMES -  FAB146503A,Not Started,2026-02-16 08:00,2026-02-19 15:00,,
FAB146503B-03,INSTALL DOOR FRAMES - FAB146503B,Not Started,2025-11-21 08:00,2025-11-21 17:00,,
FAB146503B-04,INSTALL DOOR & HARDWARE - FAB146503B,Not Started,2025-11-24 08:00,2025-11-28 17:00,,
FAB146503B-05,PAINT & PROTECT DOORS & FRAMES - FAB146503B,Not Started,2026-02-16 08:00,2026-02-19 15:00,,
TR-FAB140503A-01,IMPACT - INSTALL/REWORK DRYWALL FRAMING AROUND DOORS - TR - FAB140503A,Complete,2025-05-01 08:00,2025-05-02 17:00,2025-05-01 08:00,2025-05-02 17:00
TR-FAB140503A-03,INSTALL DOOR FRAMES - TR - FAB140503A,Complete,2025-05-05 08:00,2025-05-05 17:00,2025-05-05 08:00,2025-05-05 17:00
TR-FAB140503A-04,INSTALL DOOR & HARDWARE - TR - FAB140503A,Not Started,2025-11-21 08:00,2025-11-27 17:00,,
TR-FAB140503A-05,PAINT & PROTECT DOORS & FRAMES -  TR - FAB140503A,Not Started,2026-02-16 08:00,2026-02-19 15:00,,
FAB140507A-03,INSTALL DOOR FRAMES - FAB140507A,Complete,2025-06-20 08:00,2025-06-27 17:00,2025-06-11 08:00,2025-06-12 16:00
FAB140507A-04,INSTALL DOOR & HARDWARE - FAB140507A,Not Started,2025-11-21 08:00,2025-11-27 17:00,,
FAB140507A-05,PAINT & PROTECT DOORS & FRAMES -  FAB140507A,Not Started,2026-02-16 08:00,2026-02-19 15:00,,
FAB140508A-01,INSTALL DOOR FRAMES - FAB140508A,Not Started,2025-12-01 08:00,2025-12-01 17:00,,
FAB140508A-04,INSTALL DOOR & HARDWARE - FAB140508A,Not Started,2025-12-03 08:00,2025-12-09 17:00,,
FAB140508A-05,PAINT & PROTECT DOORS & FRAMES -  FAB140508A,Not Started,2026-02-16 08:00,2026-02-19 15:00,,
FAB140508B-01,INSTALL DOOR FRAMES - FAB140508B,Complete,2025-07-11 08:00,2025-07-11 17:00,2025-07-11 08:00,2025-07-11 17:00
FAB140508B-04,INSTALL DOOR & HARDWARE - FAB140508B,Not Started,2025-11-21 08:00,2025-11-27 17:00,,
FAB140508B-05,PAINT & PROTECT DOORS & FRAMES -  FAB140508B,Not Started,2026-02-16 08:00,2026-02-19 15:00,,
FAB140501A-03,INSTALL DOOR FRAMES - FAB140501A,Not Started,2025-12-10 08:00,2025-12-10 17:00,,
FAB140501A-04,INSTALL DOOR & HARDWARE - FAB140501A,Not Started,2025-12-11 08:00,2025-12-17 17:00,,
FAB140501A-05,PAINT & PROTECT DOORS & FRAMES -  FAB140501A,Not Started,2026-02-16 08:00,2026-02-19 15:00,,
FAB140509A-01,INSTALL DOOR FRAMES - FAB140509A,Not Started,2025-11-21 08:00,2025-11-21 17:00,,
FAB140509A-04,INSTALL DOOR & HARDWARE - FAB140509A,Not Started,2025-11-24 08:00,2025-11-28 17:00,,
FAB140509A-05,PAINT & PROTECT DOORS & FRAMES -  FAB140509A,Not Started,2026-02-16 08:00,2026-02-19 15:00,,
FAB140509B-01,INSTALL DOOR FRAMES - FAB140509B,Not Started,2025-12-10 08:00,2025-12-10 17:00,,
FAB140509B-04,INSTALL DOOR & HARDWARE - FAB140509B,Not Started,2025-12-12 08:00,2025-12-18 17:00,,
FAB140509B-05,PAINT & PROTECT DOORS & FRAMES -  FAB140509B,Not Started,2026-02-16 08:00,2026-02-19 15:00,,
FAB140510A-03,INSTALL DOOR FRAMES - FAB140510A,Not Started,2025-11-21 08:00,2025-11-21 17:00,,
FAB140510A-04,INSTALL DOOR & HARDWARE - FAB140510A,Not Started,2025-11-24 08:00,2025-11-28 17:00,,
FAB140510A-05,PAINT & PROTECT DOORS & FRAMES -  FAB140510A,Not Started,2026-02-16 08:00,2026-02-19 15:00,,
FAB140502A-03,INSTALL DOOR FRAMES - FAB140502A,Not Started,2025-11-21 08:00,2025-11-21 17:00,,
FAB140502A-04,INSTALL DOOR & HARDWARE - FAB140502A,Not Started,2025-11-24 08:00,2025-11-28 17:00,,
FAB140502A-05,PAINT & PROTECT DOORS & FRAMES -  FAB140502A,Not Started,2026-02-16 08:00,2026-02-19 15:00,,
FAB142101B-03,INSTALL DOOR FRAMES - FAB142101B,Not Started,2025-11-21 08:00,2025-11-21 17:00,,
FAB142101B-04,INSTALL DOOR & HARDWARE - FAB142101B,Not Started,2025-11-24 08:00,2025-11-28 17:00,,
FAB142101B-05,PAINT & PROTECT DOORS & FRAMES -  FAB142101B,Not Started,2026-02-16 08:00,2026-02-19 15:00,,
FAB142101C-03,INSTALL DOOR FRAMES - FAB142101C,Not Started,2025-11-21 08:00,2025-11-21 17:00,,
FAB142101C -04,INSTALL DOOR & HARDWARE - FAB142101C,Not Started,2025-11-24 08:00,2025-11-28 17:00,,
FAB142101C-05,PAINT & PROTECT DOORS & FRAMES -  FAB142101C,Not Started,2026-02-16 08:00,2026-02-19 15:00,,
FAB140303A-01,INSTALL DOOR FRAMES - FAB140303A,Not Started,2025-12-10 08:00,2025-12-10 17:00,,
FAB140303A-04,INSTALL DOOR & HARDWARE - FAB140303A,Not Started,2025-12-12 08:00,2025-12-18 17:00,,
FAB140303A-05,PAINT & PROTECT DOORS & FRAMES - FAB140303A,Not Started,2026-02-16 08:00,2026-02-19 15:00,,
FAB140303B-01,INSTALL DOOR FRAMES - FAB140303B,Complete,2025-07-03 08:00,2025-07-03 17:00,2025-05-22 08:00,2025-05-22 16:00
FAB140303B-04,INSTALL DOOR & HARDWARE - FAB140303B,Active,2025-09-10 08:00,2025-09-16 17:00,2025-09-10 08:00,
FAB140303B-05,PAINT & PROTECT DOORS & FRAMES - FAB140303B,Not Started,2026-02-16 08:00,2026-02-19 15:00,,
FAB140303C-01,INSTALL DOOR FRAMES - FAB140303C,Complete,2025-07-03 08:00,2025-07-03 17:00,2025-05-22 08:00,2025-05-22 16:00
FAB140303C-04,INSTALL DOOR & HARDWARE - FAB140303C,Not Started,2025-12-01 08:00,2025-12-05 17:00,,
FAB140303C-05,PAINT & PROTECT DOORS & FRAMES  - FAB140303C,Not Started,2026-02-16 08:00,2026-02-19 15:00,,
FAB140301A-01,INSTALL DOOR FRAMES - FAB140301A,Not Started,2025-12-10 08:00,2025-12-10 17:00,,
FAB140301A-04,INSTALL DOOR & HARDWARE - FAB140301A,Not Started,2025-12-12 08:00,2025-12-18 17:00,,
FAB140301A-05,PAINT & PROTECT DOORS & FRAMES -  FAB140301A,Not Started,2026-02-16 08:00,2026-02-19 15:00,,
FAB140201A-01,IMPACT - INSTALL/REWORK DRYWALL FRAMING AROUND DOORS - FAB140201A,Complete,2025-07-30 08:00,2025-08-07 17:00,2025-07-11 08:00,2025-07-11 17:00
FAB140201A-03,INSTALL DOOR FRAMES - FAB140201A,Complete,2025-08-11 08:00,2025-08-11 17:00,2025-07-11 08:00,2025-07-11 17:00
FAB140201A-04,INSTALL DOOR & HARDWARE - FAB140201A,Not Started,2025-11-21 08:00,2025-11-27 17:00,,
FAB140201A-05,PAINT & PROTECT DOORS & FRAMES -  FAB140201A,Not Started,2026-02-16 08:00,2026-02-19 15:00,,
FAB142101A-03,INSTALL DOOR FRAMES - FAB142101A,Not Started,2025-11-21 08:00,2025-11-21 17:00,,
FAB142101A-04,INSTALL DOOR & HARDWARE - FAB142101A,Not Started,2025-11-24 08:00,2025-11-28 17:00,,
FAB142101A-05,PAINT & PROTECT DOORS & FRAMES -  FAB142101A,Not Started,2026-02-16 08:00,2026-02-19 15:00,,
TR-FAB140105A-03,INSTALL DOOR FRAMES - TR - FAB140105A,Complete,2025-07-03 08:00,2025-07-11 17:00,2025-07-03 08:00,2025-07-03 17:00
TR-FAB140105A-04,INSTALL DOOR & HARDWARE - TR - FAB140105A,Not Started,2025-11-21 08:00,2025-11-27 17:00,,
TR-FAB140105A-05,PAINT & PROTECT DOORS & FRAMES -  TR - FAB140105A,Not Started,2026-02-16 08:00,2026-02-19 15:00,,
FAB140103A-03,INSTALL DOOR FRAMES - FAB140103A,Not Started,2025-11-21 08:00,2025-11-21 17:00,,
FAB140103A-04,INSTALL DOOR & HARDWARE - FAB140103A,Not Started,2025-11-24 08:00,2025-11-28 17:00,,
FAB140103A-05,PAINT & PROTECT DOORS & FRAMES -  FAB140103A,Not Started,2026-02-16 08:00,2026-02-19 15:00,,
FAB140103A-11,IMPACT - PROCUREMENT - REORDERED DOORS (JAMB DEPTH ISSUE),Complete,2025-06-20 08:00,2025-08-14 17:00,2025-06-20 08:00,2025-06-30 17:00
FAB140101A-01,INSTALL DOOR FRAMES - FAB140101A,Not Started,2025-12-10 08:00,2025-12-10 17:00,,
FAB140101A-04,INSTALL DOOR & HARDWARE - FAB140101A,Not Started,2025-12-12 08:00,2025-12-18 17:00,,
FAB140101A-05,PAINT & PROTECT DOORS & FRAMES -  FAB140101A,Not Started,2026-02-16 08:00,2026-02-19 15:00,,
FAB140101B-01,INSTALL DOOR FRAMES - FAB140101B,Not Started,2025-12-10 08:00,2025-12-10 17:00,,
FAB140101B-04,INSTALL DOOR & HARDWARE - FAB140101B,Not Started,2025-12-12 08:00,2025-12-18 17:00,,
FAB140101B-05,PAINT & PROTECT DOORS & FRAMES -  FAB140101B,Not Started,2026-02-16 08:00,2026-02-19 15:00,,
FAB140601C-01,INSTALL DOOR FRAMES - FAB140601C,Not Started,2025-12-10 08:00,2025-12-10 17:00,,
FAB140601C-04,INSTALL DOOR & HARDWARE - FAB140601C,Not Started,2025-12-12 08:00,2025-12-18 17:00,,
FAB140601C-05,PAINT & PROTECT DOORS & FRAMES -  FAB140601C,Not Started,2026-02-16 08:00,2026-02-19 15:00,,
FAB140601B-01,INSTALL DOOR FRAMES - FAB140601B,Not Started,2025-12-10 08:00,2025-12-10 17:00,,
FAB140601B-04,INSTALL DOOR & HARDWARE - FAB140601B,Not Started,2025-12-12 08:00,2025-12-18 17:00,,
FAB140601B-05,PAINT & PROTECT DOORS & FRAMES -  FAB140601B,Not Started,2026-02-16 08:00,2026-02-19 15:00,,
FAB140106A-01,IMPACT - INSTALL/REWORK DRYWALL FRAMING AROUND DOORS - FAB140106A,Complete,2025-09-08 08:00,2025-09-09 17:00,2025-09-08 08:00,2025-09-09 17:00
FAB140106A-03,INSTALL DOOR FRAMES - FAB140106A,Complete,2025-09-11 08:00,2025-09-11 17:00,2025-09-11 08:00,2025-09-11 17:00
FAB140106A-04,INSTALL DOOR & HARDWARE - FAB140106A,Active,2025-11-19 08:00,2025-11-25 17:00,2025-11-19 08:00,
FAB140106A-05,PAINT & PROTECT DOORS & FRAMES -  FAB140106A,Not Started,2026-02-16 08:00,2026-02-19 15:00,,
FAB140106B-01,INSTALL DOOR FRAMES - FAB140106B,Not Started,2025-12-10 08:00,2025-12-10 17:00,,
FAB140106B-04,INSTALL DOOR & HARDWARE - FAB140106B,Not Started,2025-12-12 08:00,2025-12-18 17:00,,
FAB140106B-05,PAINT & PROTECT DOORS & FRAMES -  FAB140106B,Not Started,2026-02-16 08:00,2026-02-19 15:00,,
FAB140106A-40,IMPACT - SECAI LAYDOWN FOR DOORS AND FRAMES - FAB140106A,Complete,2025-07-09 08:00,2025-07-15 17:00,2025-07-09 08:00,2025-09-08 17:00
FAB140109A-01,INSTALL DOOR FRAMES - FAB140109A,Complete,2025-09-08 08:00,2025-09-08 17:00,2025-09-08 08:00,2025-09-08 17:00
FAB140109A-04,INSTALL DOOR & HARDWARE - FAB140109A,Active,2025-09-10 08:00,2025-09-16 17:00,2025-09-10 08:00,
FAB140109A-05,PAINT & PROTECT DOORS & FRAMES -  FAB140109A,Not Started,2026-02-16 08:00,2026-02-19 15:00,,
FAB140109A-30,IMPACT - SECAI LAYDOWN FOR DOORS AND FRAMES - FAB140109A,Complete,2025-07-09 08:00,2025-07-15 17:00,2025-07-09 08:00,2025-09-04 17:00
FAB140104A-01,IMPACT - INSTALL/REWORK DRYWALL FRAMING AROUND DOORS - FAB140104A,Complete,2025-05-01 08:00,2025-05-09 17:00,2025-05-01 08:00,2025-05-06 17:00
FAB140104A-03,INSTALL DOOR FRAMES - FAB140104A,Complete,2025-09-11 08:00,2025-09-11 17:00,2025-05-06 00:00,2025-05-06 16:00
FAB140104A-04,INSTALL DOOR & HARDWARE - FAB140104A,Active,2025-11-10 08:00,2025-11-14 17:00,2025-11-10 08:00,
FAB140104A-05,PAINT & PROTECT DOORS & FRAMES -  FAB140104A,Not Started,2026-02-16 08:00,2026-02-19 15:00,,
FAB140104B-03,INSTALL DOOR FRAMES - FAB140104BB,Not Started,2025-11-21 08:00,2025-11-21 17:00,,
FAB140104B-04,INSTALL DOOR & HARDWARE - FAB140104BB,Not Started,2025-11-24 08:00,2025-11-28 17:00,,
FAB140104B-05,PAINT & PROTECT DOORS & FRAMES -  FAB140104B,Not Started,2026-02-16 08:00,2026-02-19 15:00,,
FAB140110A-03,INSTALL DOOR FRAMES - FAB140110A,Not Started,2025-11-21 08:00,2025-11-21 17:00,,
FAB140110A-04,INSTALL DOOR & HARDWARE - FAB140110A,Not Started,2025-11-24 08:00,2025-11-28 17:00,,
FAB140110A-05,PAINT & PROTECT DOORS & FRAMES -  FAB140110A,Not Started,2026-02-16 08:00,2026-02-19 15:00,,
FAB140401A-03,INSTALL DOOR FRAMES - FAB140401A,Not Started,2025-11-21 08:00,2025-11-21 17:00,,
FAB140401A-04,INSTALL DOOR & HARDWARE - FAB140401A,Not Started,2025-11-24 08:00,2025-11-28 17:00,,
FAB140401A-05,PAINT & PROTECT DOORS & FRAMES -  FAB140401A,Not Started,2026-02-16 08:00,2026-02-20 17:00,,
FAB1-ST20D-03,INSTALL DOOR FRAMES - FAB1-ST20D,Not Started,2025-11-21 08:00,2025-11-21 17:00,,
FAB1-ST20D-04,INSTALL DOOR & HARDWARE - FAB1-ST20D,Not Started,2025-11-24 08:00,2025-11-28 17:00,,
FAB1-ST20D-05,PAINT & PROTECT DOORS & FRAMES - FAB1-ST20D,Not Started,2026-02-16 08:00,2026-02-20 17:00,,
FAB142102A-03,INSTALL DOOR FRAMES - FAB142102A,Not Started,2025-11-21 08:00,2025-11-21 17:00,,
FAB142102A-04,INSTALL DOOR & HARDWARE - FAB142102A,Not Started,2025-11-24 08:00,2025-11-28 17:00,,
FAB142102A-05,PAINT & PROTECT DOORS & FRAMES -  FAB142102A,Not Started,2026-02-16 08:00,2026-02-19 15:00,,
FAB145101C-02,INSTALL DOOR FRAMES - FAB145101C,Complete,2025-06-27 08:00,2025-06-30 17:00,2025-06-30 08:00,2025-06-30 16:00
FAB145101C-04,INSTALL DOOR & HARDWARE - FAB145101C,Not Started,2025-11-21 08:00,2025-11-27 17:00,,
FAB145101C-03,SECAI ROUGH IN FRAME - FAB145101C,Complete,2025-07-10 08:00,2025-07-10 17:00,2025-06-30 08:00,2025-06-30 16:00
FAB145101C-05,PAINT & PROTECT DOORS & FRAMES -  FAB145101C,Not Started,2026-02-16 08:00,2026-02-19 15:00,,
FAB166101A-04,INSTALL DOOR & HARDWARE - FAB166101A,Not Started,2025-12-12 08:00,2025-12-18 17:00,,
FAB166101A-05,PAINT & PROTECT DOORS & FRAMES -  FAB166101A,Not Started,2026-02-16 08:00,2026-02-19 17:00,,
FAB166101A-03,INSTALL DOOR FRAMES - FAB166101A,Not Started,2025-12-10 08:00,2025-12-10 17:00,,
FAB130505A-03,INSTALL DOOR FRAMES - FAB130505A,Complete,2025-06-13 08:00,2025-06-23 17:00,2025-01-20 08:00,2025-01-20 16:00
FAB130505A-04,INSTALL DOOR & HARDWARE - FAB130505A,Active,2025-06-13 08:00,2025-06-19 17:00,2025-06-13 08:00,
FAB130505A-05,PAINT & PROTECT DOORS & FRAMES -  FAB130505A,Not Started,2026-02-16 08:00,2026-02-17 17:00,,
FAB130505C-01,IMPACT - INSTALL/REWORK DRYWALL FRAMING AROUND DOORS - FAB136102C,Complete,2025-07-29 08:00,2025-08-06 17:00,2025-07-29 08:00,2025-08-06 17:00
FAB130505C-03,INSTALL DOOR FRAMES - FAB130505C,Complete,2025-08-06 08:00,2025-08-06 17:00,2025-08-06 08:00,2025-08-06 17:00
FAB130505C-04,INSTALL DOOR & HARDWARE - FAB130505C,Not Started,2025-11-21 08:00,2025-11-27 17:00,,
FAB130505C-05,PAINT & PROTECT DOORS & FRAMES -  FAB130505C,Not Started,2026-02-16 08:00,2026-02-19 15:00,,
FAB136108B-03,INSTALL DOOR FRAMES - FAB136108B,Complete,2025-06-02 08:00,2025-06-02 17:00,2025-01-24 08:00,2025-01-24 16:00
FAB136108B-04,INSTALL DOOR & HARDWARE - FAB136108B,Active,2025-05-07 08:00,2025-05-13 17:00,2025-05-07 08:00,
FAB136108B-05,PAINT & PROTECT DOORS & FRAMES -  FAB136108B,Not Started,2026-02-16 08:00,2026-02-19 15:00,,
FAB136108C-03,INSTALL DOOR FRAMES - FAB136108C,Complete,2025-06-09 13:00,2025-06-10 12:00,2025-02-13 00:00,2025-02-13 12:00
FAB136108C-04,INSTALL DOOR & HARDWARE - FAB136108C,Active,2025-06-11 08:00,2025-06-17 17:00,2025-06-11 08:00,
FAB136108C-05,PAINT & PROTECT DOORS & FRAMES -  FAB136108C,Not Started,2026-02-16 08:00,2026-02-19 15:00,,
FAB136107A-03,INSTALL DOOR FRAMES - FAB136107A,Complete,2025-07-23 13:00,2025-07-24 12:00,2025-01-08 12:00,2025-01-08 12:00
FAB136107A-04,INSTALL DOOR & HARDWARE - FAB136107A,Not Started,2025-11-21 08:00,2025-11-27 17:00,,
FAB136107A-05,PAINT & PROTECT DOORS & FRAMES -  FAB136107A,Not Started,2026-02-16 08:00,2026-02-19 15:00,,
FAB136107C-03,INSTALL DOOR FRAMES - FAB136107C,Complete,2025-09-25 10:00,2025-10-06 10:00,2025-07-22 10:00,2025-07-23 10:00
FAB136107C-04,INSTALL DOOR & HARDWARE - FAB136107C,Not Started,2025-11-21 08:00,2025-11-27 17:00,,
FAB136107C-05,PAINT & PROTECT DOORS & FRAMES -  FAB136107C,Not Started,2026-02-16 08:00,2026-02-19 15:00,,
FAB136107D-01,IMPACT - INSTALL/REWORK DRYWALL FRAMING AROUND DOORS - FAB136107D,Complete,2025-09-22 10:00,2025-10-01 10:00,2025-03-27 10:00,2025-04-04 10:00
FAB136107D-03,INSTALL DOOR FRAMES - FAB136107D,Complete,2025-07-23 13:00,2025-07-24 12:00,2025-04-04 00:00,2025-04-04 12:00
FAB136107D-04,INSTALL DOOR & HARDWARE - FAB136107D,Not Started,2025-11-21 08:00,2025-11-27 17:00,,
FAB136107D-05,PAINT & PROTECT DOORS & FRAMES -  FAB136107D,Not Started,2026-02-16 08:00,2026-02-19 15:00,,
FAB136107C-11,IMPACT - SECAI - ADDED FIRE RATED DOORS (CONCEPT FRAMES INC) - Design changed installed,Complete,2025-07-25 08:00,2025-08-01 17:00,2025-07-09 11:35,2025-07-17 15:00
FAB136203A-03,INSTALL DOOR FRAMES - FAB136203A,Complete,2025-06-11 13:00,2025-06-12 12:00,2025-01-17 00:00,2025-01-17 12:00
FAB136203A-04,INSTALL DOOR & HARDWARE - FAB136203A,Not Started,2025-11-21 08:00,2025-11-27 17:00,,
FAB136203A-05,PAINT & PROTECT DOORS & FRAMES -  FAB136203A,Not Started,2026-02-16 08:00,2026-02-19 15:00,,
FAB136203B-03,INSTALL DOOR FRAMES - FAB136203B,Complete,2025-06-11 13:00,2025-06-12 12:00,2025-01-23 00:00,2025-01-23 12:00
FAB136203B-04,INSTALL DOOR & HARDWARE - FAB136203B,Active,2025-06-19 08:00,2025-06-25 17:00,2025-06-19 08:00,
FAB136203B-05,PAINT & PROTECT DOORS & FRAMES -  FAB136203B,Not Started,2026-02-16 08:00,2026-02-17 17:00,,
FAB136311A-03,INSTALL DOOR FRAMES - FAB136311A,Complete,2025-10-20 08:00,2025-10-20 17:00,2025-10-20 08:00,2025-10-20 17:00
FAB136311A-04,INSTALL DOOR & HARDWARE - FAB136311A,Not Started,2025-11-21 08:00,2025-11-27 17:00,,
FAB136311A-05,PAINT & PROTECT DOORS & FRAMES - FAB136311A,Not Started,2026-02-16 08:00,2026-02-19 15:00,,
FAB136311B-01,INSTALL DOOR FRAMES - FAB136311B,Complete,2025-09-29 08:00,2025-09-29 17:00,2025-09-29 08:00,2025-09-29 17:00
FAB136311B-04,INSTALL DOOR & HARDWARE - FAB136311B,Not Started,2025-11-21 08:00,2025-11-27 17:00,,
FAB136311B-05,PAINT & PROTECT DOORS & FRAMES  - FAB136311B,Not Started,2026-02-16 08:00,2026-02-19 15:00,,
FAB136310C-03,INSTALL DOOR FRAMES - FAB136310C,Complete,2025-05-27 08:00,2025-06-04 17:00,2025-01-15 08:00,2025-01-15 16:00
FAB136310C-04,INSTALL DOOR & HARDWARE - FAB136310C,Active,2025-04-01 08:00,2025-04-07 17:00,2025-04-01 08:00,
FAB136310C-05,PAINT & PROTECT DOORS & FRAMES -  FAB136310C,Not Started,2026-02-16 08:00,2026-02-17 17:00,,
FAB136310D-03,INSTALL DOOR FRAMES - FAB136310D,Complete,2025-01-24 08:00,2025-02-27 17:00,2025-01-27 08:00,2025-01-27 16:00
FAB136310D-04,INSTALL DOOR & HARDWARE - FAB136310D,Not Started,2025-11-21 08:00,2025-11-27 17:00,,
FAB136310D-05,PAINT & PROTECT DOORS & FRAMES -  FAB136310D,Not Started,2026-02-16 08:00,2026-02-19 15:00,,
FAB136406A-03,INSTALL DOOR FRAMES - FAB136406A,Not Started,2025-11-28 08:00,2025-11-28 17:00,,
FAB136406A-04,INSTALL DOOR & HARDWARE - FAB136406A,Not Started,2025-12-01 08:00,2025-12-05 17:00,,
FAB136406A-05,PAINT & PROTECT DOORS & FRAMES -  FAB136406A,Not Started,2026-02-16 08:00,2026-02-19 15:00,,
FAB136406B-03,INSTALL DOOR FRAMES  - FAB136406B,Not Started,2025-11-28 08:00,2025-11-28 17:00,,
FAB136406B-04,INSTALL DOOR & HARDWARE - FAB136406B,Not Started,2025-12-01 08:00,2025-12-05 17:00,,
FAB136406B-05,PAINT & PROTECT DOORS & FRAMES -  FAB136406B,Not Started,2026-02-16 08:00,2026-02-19 15:00,,
FAB136406C-03,INSTALL DOOR FRAMES  - FAB136406C,Complete,2025-01-27 08:00,2025-01-27 17:00,2025-01-27 08:00,2025-01-27 17:00
FAB136406C-04,INSTALL DOOR & HARDWARE - FAB136406C,Not Started,2025-11-21 08:00,2025-11-27 17:00,,
FAB136406C-05,PAINT & PROTECT DOORS & FRAMES -  FAB136406C,Not Started,2026-02-16 08:00,2026-02-19 15:00,,
FAB136407A-03,INSTALL DOOR FRAMES - FAB136407A,Complete,2025-06-10 08:00,2025-06-18 17:00,2025-05-23 08:00,2025-05-23 08:00
FAB136407A-04,INSTALL DOOR & HARDWARE - FAB136407A,Not Started,2025-11-21 08:00,2025-11-27 17:00,,
FAB136407A-05,PAINT & PROTECT DOORS & FRAMES - FAB136407A,Not Started,2026-02-16 08:00,2026-02-19 15:00,,
FAB136407B-03,INSTALL DOOR FRAMES - FAB136407B,Complete,2025-06-10 08:00,2025-06-18 17:00,2025-05-12 08:00,2025-05-13 16:00
FAB136407B-04,INSTALL DOOR & HARDWARE - FAB136407B,Not Started,2025-11-21 08:00,2025-11-27 17:00,,
FAB136407B-05,PAINT & PROTECT DOORS & FRAMES - FAB136407B,Not Started,2026-02-16 08:00,2026-02-19 15:00,,
FAB136502C-04,INSTALL DOOR & HARDWARE - FAB136502C,Not Started,2025-11-21 08:00,2025-11-27 17:00,,
FAB136502C-05,PAINT & PROTECT DOORS & FRAMES -  FAB136502C,Not Started,2026-02-16 08:00,2026-02-19 15:00,,
FAB136502C-03,INSTALL DOOR FRAMES - FAB136502C,Complete,2025-10-20 08:00,2025-10-20 17:00,2025-10-20 08:00,2025-10-20 17:00
FAB136502B-04,INSTALL DOOR & HARDWARE - FAB136502B,Not Started,2025-12-01 08:00,2025-12-05 17:00,,
FAB136502B-05,PAINT & PROTECT DOORS & FRAMES -  FAB136502B,Not Started,2026-02-16 08:00,2026-02-19 15:00,,
FAB136502B-03,INSTALL DOOR FRAME BY SECAI - FAB136502B - HANDED OVER ON 10/01,Active,2025-10-01 08:00,2025-10-01 17:00,2025-10-01 08:00,
FAB136502C-8,IMPACT - WELDING REQUIRED ON FRAME - FAB136502C,Complete,2025-07-03 08:00,2025-07-10 17:00,2025-07-03 08:00,2025-10-20 17:00
FAB136505A-03,INSTALL DOOR FRAMES - FAB136505A,Complete,2025-05-27 08:00,2025-06-04 17:00,2025-01-14 08:00,2025-01-17 16:00
FAB136505A-04,INSTALL DOOR & HARDWARE - FAB136505A,Not Started,2025-12-01 08:00,2025-12-05 17:00,,
FAB136505A-05,PAINT & PROTECT DOORS & FRAMES - FAB136505A,Not Started,2026-02-16 08:00,2026-02-19 15:00,,
FAB136505B-01,IMPACT - INSTALL/REWORK DRYWALL FRAMING AROUND DOORS- FAB136505B,Complete,2025-06-23 08:00,2025-07-01 17:00,2025-01-08 08:00,2025-01-16 16:00
FAB136505B-04,INSTALL DOOR & HARDWARE - FAB136505B,Not Started,2025-11-21 08:00,2025-11-27 17:00,,
FAB136505B-05,PAINT & PROTECT DOORS & FRAMES - FAB136505B,Not Started,2026-02-16 08:00,2026-02-19 15:00,,
FAB136505C-03,INSTALL DOOR FRAMES - FAB136505C,Complete,2025-06-27 08:00,2025-06-27 17:00,2025-06-25 08:00,2025-06-26 17:00
FAB136505C-04,INSTALL DOOR & HARDWARE - FAB136505C,Active,2025-11-18 08:00,2025-11-24 17:00,2025-11-18 08:00,
FAB136505C-05,PAINT & PROTECT DOORS & FRAMES - FAB136505C,Not Started,2026-02-16 08:00,2026-02-19 15:00,,
FAB136505A-03A,INSTALL DOOR FRAMES - RE-ORDERED - FAB136505A,Active,2025-08-18 08:00,2025-09-25 17:00,2025-08-18 08:00,
FAB130504A-03,INSTALL DOOR FRAMES - FAB130504A,Complete,2025-05-29 08:00,2025-06-06 17:00,2025-04-28 08:00,2025-04-28 16:00
FAB130504A-04,INSTALL DOOR & HARDWARE - FAB130504A,Active,2025-06-11 08:00,2025-06-17 17:00,2025-06-11 08:00,
FAB130504A-05,PAINT & PROTECT DOORS & FRAMES -  FAB130504A,Not Started,2026-02-16 08:00,2026-02-17 17:00,,
FAB130504B-03,INSTALL DOOR FRAMES - FAB130504B,Complete,2025-05-29 08:00,2025-06-06 17:00,2025-04-03 08:00,2025-04-03 16:00
FAB130504B-04,INSTALL DOOR & HARDWARE - FAB130504B,Active,2025-05-19 08:00,2025-05-23 17:00,2025-05-19 08:00,
FAB130504B-05,PAINT & PROTECT DOORS & FRAMES -  FAB130504B,Not Started,2026-02-16 08:00,2026-02-17 17:00,,
FAB130504C-03,INSTALL DOOR FRAMES - FAB130504C,Complete,2025-05-29 08:00,2025-05-29 17:00,2025-04-07 08:00,2025-04-07 16:00
FAB130504C-04,INSTALL DOOR & HARDWARE - FAB130504C,Active,2025-05-19 08:00,2025-05-23 17:00,2025-05-19 08:00,
FAB130504C-05,PAINT & PROTECT DOORS & FRAMES - FAB130504C,Not Started,2026-02-16 08:00,2026-02-17 17:00,,
FAB130505B-03,INSTALL DOOR FRAMES - FAB130505B,Not Started,2025-11-21 08:00,2025-11-21 17:00,,
FAB130505B-04,INSTALL DOOR & HARDWARE - FAB130505B,Not Started,2025-11-24 08:00,2025-11-28 17:00,,
FAB130505B-05,PAINT & PROTECT DOORS & FRAMES -  FAB130505B,Not Started,2026-02-16 08:00,2026-02-19 15:00,,
FAB130507B-01,IMPACT - INSTALL/REWORK DRYWALL FRAMING AROUND DOORS- FAB130507B,Complete,2025-05-15 08:00,2025-05-23 17:00,2025-05-07 08:00,2025-05-15 17:00
FAB130507B-03,INSTALL DOOR FRAMES - FAB130507B,Complete,2025-05-15 08:00,2025-05-15 17:00,2025-05-15 08:00,2025-05-15 17:00
FAB130507B-04,INSTALL DOOR & HARDWARE - FAB130507B,Active,2025-11-18 08:00,2025-11-24 17:00,2025-11-18 08:00,
FAB130507B-05,PAINT & PROTECT DOORS & FRAMES -  FAB130507B,Not Started,2026-02-16 08:00,2026-02-19 15:00,,
FAB130507C-01,DOOR ASSEMBLY - FAB130507C,Not Started,2026-01-19 08:00,2026-01-20 17:00,,
FAB130507C-02,DOOR PACKAGE INSTALL - FAB130507C,Not Started,2026-01-19 08:00,2026-01-20 17:00,,
FAB130403A-01,INSTALL DOOR FRAMES - FAB130403A,Complete,2025-06-23 08:00,2025-07-01 17:00,2025-01-21 08:00,2025-01-22 16:00
FAB130403A-03,INSTALL DOOR FRAMES - FAB130403A,Complete,2025-01-22 08:00,2025-01-22 17:00,2025-01-22 08:00,2025-01-22 17:00
FAB130403A-04,INSTALL DOOR & HARDWARE - FAB130403A,Not Started,2025-11-21 08:00,2025-11-27 17:00,,
FAB130403A-05,PAINT & PROTECT DOORS & FRAMES - FAB130403A,Not Started,2026-02-16 08:00,2026-02-19 15:00,,
FAB130315A-01,IMPACT - INSTALL/REWORK DRYWALL FRAMING AROUND DOORS - FAB130315A,Complete,2025-07-24 08:00,2025-08-01 17:00,2025-07-24 08:00,2025-08-01 17:00
FAB130315A-03,INSTALL DOOR FRAMES - FAB130315A,Complete,2025-08-01 08:00,2025-08-01 17:00,2025-08-01 08:00,2025-08-01 17:00
FAB130315A-04,INSTALL DOOR & HARDWARE - FAB130315A,Active,2025-11-18 08:00,2025-11-24 17:00,2025-11-18 08:00,
FAB130315A-05,PAINT & PROTECT DOORS & FRAMES -  FAB130315A,Not Started,2026-02-16 08:00,2026-02-19 15:00,,
FAB130319A-03,INSTALL DOOR FRAMES - FAB130319A,Complete,2025-06-27 08:00,2025-07-07 17:00,2025-05-30 08:00,2025-05-30 16:00
FAB130319A-04,INSTALL DOOR & HARDWARE - FAB130319A,Active,2025-11-13 08:00,2025-11-19 17:00,2025-11-13 08:00,
FAB130319A-05,PAINT & PROTECT DOORS & FRAMES - FAB130319A,Not Started,2026-02-16 08:00,2026-02-19 15:00,,
FAB130319B-03,INSTALL DOOR FRAMES - FAB130319B,Complete,2025-06-27 08:00,2025-07-07 17:00,2025-05-30 08:00,2025-05-30 16:00
FAB130319B-04,INSTALL DOOR & HARDWARE - FAB130319B,Active,2025-11-13 08:00,2025-11-19 17:00,2025-11-13 08:00,
FAB130319B-05,PAINT & PROTECT DOORS & FRAMES - FAB130319B,Not Started,2026-02-16 08:00,2026-02-19 15:00,,
FAB130319C-01,IMPACT - INSTALL/REWORK DRYWALL FRAMING AROUND DOORS - FAB130319C,Complete,2025-06-27 08:00,2025-07-07 17:00,2025-02-19 08:00,2025-02-27 16:00
FAB130319C-03,INSTALL DOOR FRAMES - FAB130319C,Complete,2025-06-23 13:00,2025-06-24 12:00,2025-02-27 00:00,2025-02-27 08:00
FAB130319C-04,INSTALL DOOR & HARDWARE - FAB130319C,Active,2025-09-10 08:00,2025-09-16 17:00,2025-09-10 08:00,
FAB130319C-05,PAINT & PROTECT DOORS & FRAMES - FAB130319C,Not Started,2026-02-16 08:00,2026-02-19 15:00,,
FAB130310A-03,INSTALL DOOR FRAMES - FAB130310A,Complete,2025-09-29 13:00,2025-09-30 12:00,2025-04-04 00:00,2025-04-04 12:00
FAB130310A-04,INSTALL DOOR & HARDWARE - FAB130310A,Active,2025-11-18 08:00,2025-11-24 17:00,2025-11-18 08:00,
FAB130310A-05,PAINT & PROTECT DOORS & FRAMES - FAB130310A,Not Started,2026-02-16 08:00,2026-02-19 15:00,,
FAB130310B-03,INSTALL DOOR FRAMES - FAB130310B,Complete,2025-09-29 13:00,2025-09-30 12:00,2025-01-31 00:00,2025-01-31 12:00
FAB130310B-04,INSTALL DOOR & HARDWARE - FAB130310B,Active,2025-11-18 08:00,2025-11-24 17:00,2025-11-18 08:00,
FAB130310B-05,PAINT & PROTECT DOORS & FRAMES - FAB130310B,Not Started,2026-02-16 08:00,2026-02-19 15:00,,
FAB130310C-03,INSTALL DOOR FRAMES - FAB130310C,Complete,2025-07-29 08:00,2025-07-29 17:00,2025-07-29 08:00,2025-07-29 17:00
FAB130310C-04,INSTALL DOOR & HARDWARE - FAB130310C,Not Started,2025-11-21 08:00,2025-11-27 17:00,,
FAB130310C-05,PAINT & PROTECT DOORS & FRAMES - FAB130310C,Not Started,2026-02-16 08:00,2026-02-19 15:00,,
FAB130303A-03,INSTALL DOOR FRAMES - FAB130303A,Complete,2025-06-03 08:00,2025-06-11 17:00,2025-04-28 08:00,2025-04-28 16:00
FAB130303A-04,INSTALL DOOR & HARDWARE - FAB130303A,Active,2025-10-21 08:00,2025-10-27 17:00,2025-10-21 08:00,
FAB130303A-05,PAINT & PROTECT DOORS & FRAMES -  FAB130303A,Not Started,2026-02-16 08:00,2026-02-19 15:00,,
FAB130303B-01,INSTALL DOOR FRAMES - FAB130303B,Complete,2025-06-17 08:00,2025-06-25 17:00,2025-06-05 08:00,2025-06-05 16:00
FAB130303B-04,INSTALL DOOR & HARDWARE - FAB130303B,Active,2025-06-17 08:00,2025-06-23 17:00,2025-06-17 08:00,
FAB130303B-05,PAINT & PROTECT DOORS & FRAMES -  FAB130303B,Not Started,2026-02-16 08:00,2026-02-17 17:00,,
FAB130303A-65,IMPACT - RE-INSTALL CORRECT FRAME - FAB130303A,Complete,2025-06-20 08:00,2025-06-25 15:00,2025-06-20 08:00,2025-06-23 14:00
TR-FAB130109A-01,IMPACT - INSTALL/REWORK DRYWALL FRAMING AROUND DOORS - TR - FAB130109A,Complete,2025-07-09 08:00,2025-07-16 17:00,2025-07-09 08:00,2025-07-16 17:00
TR-FAB130109A-03,INSTALL DOOR FRAMES - TR - FAB130109A,Complete,2025-07-16 08:00,2025-07-16 17:00,2025-07-16 08:00,2025-07-16 17:00
TR-FAB130109A-04,INSTALL DOOR & HARDWARE - TR - FAB130109A,Not Started,2025-11-21 08:00,2025-11-27 17:00,,
TR-FAB130109A-05,PAINT & PROTECT DOORS & FRAMES - TR - FAB130109A,Not Started,2026-02-16 08:00,2026-02-19 15:00,,
TR-FAB130109A-11,IMPACT - PROCUREMENT - Reordered doors (Wall Thickness and Door Swing Design Changes),Complete,2025-06-09 08:00,2025-08-15 17:00,2025-06-09 08:00,2025-07-14 17:00
FAB136504A-03,INSTALL DOOR FRAMES - FAB136504A,Complete,2025-07-16 08:00,2025-07-16 17:00,2025-01-15 00:00,2025-01-16 16:00
FAB136504A-04,INSTALL DOOR & HARDWARE - FAB136504A,Not Started,2025-11-21 08:00,2025-11-27 17:00,,
FAB136504A-05,PAINT & PROTECT DOORS & FRAMES - FAB136504A,Not Started,2026-02-16 08:00,2026-02-19 15:00,,
FAB136504B-03,INSTALL DOOR FRAMES - FAB136504B,Not Started,2025-11-21 08:00,2025-11-21 17:00,,
FAB136504B-04,INSTALL DOOR & HARDWARE - FAB136504B,Not Started,2025-11-24 08:00,2025-11-28 17:00,,
FAB136504B-05,PAINT & PROTECT DOORS & FRAMES - FAB136504B,Not Started,2026-02-16 08:00,2026-02-19 15:00,,
FAB136504C-07,DOOR INSTALL - FAB136504C (OHC),Not Started,2025-12-03 08:00,2025-12-04 17:00,,
FAB130111B-03,INSTALL DOOR FRAMES - FAB130111B,Complete,2025-08-08 08:00,2025-08-08 17:00,2025-08-09 08:00,2025-08-09 17:00
FAB130111B-04,INSTALL DOOR & HARDWARE - FAB130111B,Active,2025-11-13 08:00,2025-11-19 17:00,2025-11-13 08:00,
FAB130111B-05,PAINT & PROTECT DOORS & FRAMES -  FAB130111B,Not Started,2026-02-16 08:00,2026-02-19 15:00,,
FAB130111C-03,INSTALL DOOR FRAMES - FAB130111C,Complete,2025-06-02 08:00,2025-06-02 17:00,2025-01-24 08:00,2025-01-24 16:00
FAB130111C-04,INSTALL DOOR & HARDWARE - FAB130111C,Not Started,2025-11-28 08:00,2025-11-28 17:00,,
FAB130111C-05,PAINT & PROTECT DOORS & FRAMES -  FAB130111C,Not Started,2026-02-16 08:00,2026-02-19 15:00,,
FAB120311A-01,IMPACT - INSTALL/REWORK DRYWALL FRAMING AROUND DOORS - FAB120311A,Complete,2025-03-21 08:00,2025-03-31 17:00,2025-03-21 08:00,2025-03-31 17:00
FAB120311A-04,INSTALL DOOR & HARDWARE - FAB120311A,Active,2025-06-18 08:00,2025-06-24 17:00,2025-06-18 08:00,
FAB120311A-05,PAINT & PROTECT DOORS & FRAMES -  FAB120311A,Not Started,2026-02-16 08:00,2026-02-19 17:00,,
FAB130111C-60,IMPACT - SECAI REMOVED FRAME - REINSTALL - FAB130111C,Complete,2025-07-25 08:00,2025-07-25 17:00,2025-07-25 08:00,2025-07-25 17:00
FAB120311A-03,INSTALL DOOR FRAMES - FAB120311A,Complete,2025-03-31 08:00,2025-03-31 17:00,2025-03-31 08:00,2025-03-31 17:00
FAB134101A-03,INSTALL DOOR FRAMES - FAB134101A,Complete,2025-10-21 08:00,2025-10-21 17:00,2025-10-21 08:00,2025-10-21 17:00
FAB134101A-04,INSTALL DOOR & HARDWARE - FAB134101A,Not Started,2025-11-21 08:00,2025-11-27 17:00,,
FAB134101A-05,PAINT & PROTECT DOORS & FRAMES - FAB134101A,Not Started,2026-02-16 08:00,2026-02-19 15:00,,
FAB134101D-01,IMPACT - INSTALL/REWORK DRYWALL FRAMING AROUND DOORS - FAB134101D,Complete,2025-10-16 08:00,2025-10-17 17:00,2025-10-16 08:00,2025-10-17 17:00
FAB134101D-03,INSTALL DOOR FRAMES - FAB134101D,Complete,2025-10-20 08:00,2025-10-20 17:00,2025-10-20 08:00,2025-10-20 17:00
FAB134101D-04,INSTALL DOOR & HARDWARE - FAB134101D,Not Started,2025-11-21 08:00,2025-11-27 17:00,,
FAB134101D-05,PAINT & PROTECT DOORS & FRAMES - FAB134101D,Not Started,2026-02-16 08:00,2026-02-19 15:00,,
FAB134101A-22,IMPACT - PROCUREMENT DOOR FRAMES - FAB134101A,Active,2025-07-03 10:00,2025-08-28 10:00,2025-06-19 10:00,
FAB134103A-01,INSTALL DOOR FRAMES - FAB134103A,Complete,2025-10-24 08:00,2025-10-24 17:00,2025-10-24 08:00,2025-10-24 17:00
FAB134103A-04,INSTALL DOOR & HARDWARE - FAB134103A,Active,2025-11-18 08:00,2025-11-24 17:00,2025-11-18 08:00,
FAB134103A-05,PAINT & PROTECT DOORS & FRAMES - FAB134103A,Not Started,2026-02-16 08:00,2026-02-19 15:00,,
FAB134103C-03,INSTALL DOOR FRAMES - FAB134103C,Complete,2025-05-30 08:00,2025-06-09 17:00,2025-05-14 08:00,2025-05-16 16:00
FAB134103C-04,INSTALL DOOR & HARDWARE - FAB134103C,Not Started,2025-12-01 08:00,2025-12-05 17:00,,
FAB134103C-05,PAINT & PROTECT DOORS & FRAMES - FAB134103C,Not Started,2026-02-16 08:00,2026-02-19 15:00,,
FAB134103D-01,INSTALL DOOR FRAMES - FAB134103D,Complete,2025-06-26 08:00,2025-06-26 17:00,2025-06-27 08:00,2025-06-27 08:00
FAB134103D-04,INSTALL DOOR & HARDWARE - FAB134103D,Active,2025-11-18 08:00,2025-11-24 17:00,2025-11-18 08:00,
FAB134103D-05,PAINT & PROTECT DOORS & FRAMES - FAB134103D,Not Started,2026-02-16 08:00,2026-02-19 15:00,,
FAB134103A-21,PROCUREMENT - FRAME RE-ORDER - FAB134103A,Complete,2025-06-20 08:00,2025-08-14 17:00,2025-06-20 08:00,2025-10-20 17:00
FAB134104A-03,INSTALL DOOR FRAMES - FAB134104A,Complete,2025-10-22 08:00,2025-10-22 17:00,2025-10-22 08:00,2025-10-22 17:00
FAB134104A-04,INSTALL DOOR & HARDWARE - FAB134104A,Not Started,2025-11-21 08:00,2025-11-27 17:00,,
FAB134104A-05,PAINT & PROTECT DOORS & FRAMES -  FAB134104A,Not Started,2026-02-16 08:00,2026-02-19 17:00,,
FAB136102A-03,INSTALL DOOR FRAMES - FAB136102A,Complete,2025-05-13 08:00,2025-05-13 17:00,2025-05-13 08:00,2025-05-13 17:00
FAB136102A-04,INSTALL DOOR & HARDWARE - FAB136102A,Not Started,2025-11-21 08:00,2025-11-27 17:00,,
FAB136102A-05,PAINT & PROTECT DOORS & FRAMES -  FAB136102A,Not Started,2026-02-16 08:00,2026-02-19 15:00,,
FAB136102B-01,DOOR ASSEMBLY - FAB136102B,Complete,2025-08-06 08:00,2025-08-07 17:00,2025-08-06 08:00,2025-08-07 17:00
FAB136102B-02,DOOR PACKAGE INSTALL - FAB136102B,Complete,2025-08-06 08:00,2025-08-07 17:00,2025-08-06 08:00,2025-08-07 17:00
FAB136105A-01,IMPACT - INSTALL/REWORK DRYWALL FRAMING AROUND DOORS - FAB136105A,Complete,2025-05-05 08:00,2025-05-06 17:00,2025-05-05 08:00,2025-05-06 17:00
FAB136105A-03,INSTALL DOOR FRAMES - FAB136105A,Complete,2025-08-18 13:00,2025-08-19 12:00,2025-05-05 00:00,2025-05-06 12:00
FAB136105A-04,INSTALL DOOR & HARDWARE - FAB136105A,Not Started,2025-11-21 08:00,2025-11-27 17:00,,
FAB136105A-05,PAINT & PROTECT DOORS & FRAMES - FAB136105A,Not Started,2026-02-16 08:00,2026-02-19 15:00,,
FAB136114A-03,INSTALL DOOR FRAMES - FAB136114A,Complete,2025-07-07 13:00,2025-07-08 12:00,2025-01-15 00:00,2025-01-16 12:00
FAB136114A-04,INSTALL DOOR & HARDWARE - FAB136114A,Active,2025-07-09 08:00,2025-07-15 17:00,2025-07-09 08:00,
FAB136114A-05,PAINT & PROTECT DOORS & FRAMES -  FAB136114A,Not Started,2026-02-16 08:00,2026-02-19 15:00,,
FAB136302A-01,IMPACT - INSTALL/REWORK DRYWALL FRAMING AROUND DOORS - FAB136302A HANDED OVER TO SECAI ON 08/29,Complete,2025-08-18 08:00,2025-08-26 17:00,2025-08-29 08:00,2025-08-29 17:00
FAB136302A-03,INSTALL DOOR FRAMES - FAB136302A,Complete,2025-08-29 08:00,2025-08-29 17:00,2025-08-29 08:00,2025-11-14 17:00
FAB136302A-04,INSTALL DOOR & HARDWARE - FAB136302A,Active,2025-11-17 08:00,2025-11-21 17:00,2025-11-17 08:00,
FAB136302A-05,PAINT & PROTECT DOORS & FRAMES - FAB136302A,Not Started,2026-02-16 08:00,2026-02-19 15:00,,
FAB136302B-03,INSTALL DOOR FRAMES - FAB136302B,Not Started,2025-12-05 08:00,2025-12-05 17:00,,
FAB136302B-04,INSTALL DOOR & HARDWARE - FAB136302B,Not Started,2025-12-05 08:00,2025-12-11 17:00,,
FAB136302B-05,PAINT & PROTECT DOORS & FRAMES - FAB136302B,Not Started,2026-02-16 08:00,2026-02-19 15:00,,
FAB136302C-01,IMPACT - INSTALL/REWORK DRYWALL FRAMING AROUND DOORS - FAB136302C HANDED OVER TO SECAI ON 08/29,Complete,2025-08-28 08:00,2025-08-29 17:00,2025-08-29 08:00,2025-08-29 17:00
FAB136302C-03,INSTALL DOOR FRAME BY SECAI - FAB136302C HANDED OVER ON 08/29,Active,2025-08-29 08:00,2025-08-29 17:00,2025-08-29 08:00,
FAB136302C-04,INSTALL DOOR & HARDWARE - FAB136302C,Not Started,2025-12-01 08:00,2025-12-05 17:00,,
FAB136302C-05,PAINT & PROTECT DOORS & FRAMES - FAB136302C,Not Started,2026-02-16 08:00,2026-02-19 15:00,,
FAB136302D-01,IMPACT - INSTALL/REWORK DRYWALL FRAMING AROUND DOORS - FAB136302D,Complete,2025-01-17 08:00,2025-01-27 17:00,2025-01-17 08:00,2025-01-27 17:00
FAB136302D-03,INSTALL DOOR FRAMES - FAB136302D,Complete,2025-08-18 08:00,2025-08-18 17:00,2025-01-27 00:00,2025-01-27 16:00
FAB136302D-04,INSTALL DOOR & HARDWARE - FAB136302D,Active,2025-11-17 08:00,2025-11-21 17:00,2025-11-17 08:00,
FAB136302D-05,PAINT & PROTECT DOORS & FRAMES - FAB136302D,Not Started,2026-02-16 08:00,2026-02-19 15:00,,
FAB136302E-01,IMPACT - INSTALL/REWORK DRYWALL FRAMING AROUND DOORS - FAB136302E,Complete,2025-05-16 08:00,2025-05-26 17:00,2025-05-16 08:00,2025-05-21 17:00
FAB136302E-03,INSTALL DOOR FRAMES - FAB136302E,Complete,2025-08-18 08:00,2025-08-18 17:00,2025-05-21 00:00,2025-05-21 16:00
FAB136302E-04,INSTALL DOOR & HARDWARE - FAB136302E,Active,2025-11-18 08:00,2025-11-24 17:00,2025-11-18 08:00,
FAB136302E-05,PAINT & PROTECT DOORS & FRAMES - FAB136302E,Not Started,2026-02-16 08:00,2026-02-19 15:00,,
FAB136302F-01,IMPACT - INSTALL/REWORK DRYWALL FRAMING AROUND DOORS - FAB136302F,Complete,2025-04-28 08:00,2025-05-06 17:00,2025-04-28 08:00,2025-05-06 17:00
FAB136302F-03,INSTALL DOOR FRAMES - FAB136302F,Complete,2025-08-18 08:00,2025-08-18 17:00,2025-05-06 00:00,2025-05-06 16:00
FAB136302F-04,INSTALL DOOR & HARDWARE - FAB136302F,Active,2025-11-06 08:00,2025-11-12 17:00,2025-11-06 08:00,
FAB136302F-05,PAINT & PROTECT DOORS & FRAMES - FFAB136302F,Not Started,2026-02-16 08:00,2026-02-19 15:00,,
FAB136302G-01,IMPACT - INSTALL/REWORK DRYWALL FRAMING AROUND DOORS - FAB136302G HANDED OVER TO SECAI ON 08/29,Complete,2025-08-28 08:00,2025-08-29 17:00,2025-08-29 08:00,2025-08-29 17:00
FAB136302G-03,INSTALL DOOR FRAME BY SECAI- FAB136302G HANDED OVER TO SECAI ON 08/29,Complete,2025-08-29 08:00,2025-08-29 17:00,2025-08-29 08:00,2025-11-04 17:00
FAB136302G-04,INSTALL DOOR & HARDWARE - FAB136302G,Active,2025-11-06 08:00,2025-11-12 17:00,2025-11-06 08:00,
FAB136302G-05,PAINT & PROTECT DOORS & FRAMES - FAB136302G,Not Started,2026-02-16 08:00,2026-02-19 15:00,,
FAB136302H-01,IMPACT - INSTALL/REWORK DRYWALL FRAMING AROUND DOORS - FAB136302H,Complete,2025-01-16 08:00,2025-01-24 17:00,2025-01-16 08:00,2025-01-24 17:00
FAB136302H-03,INSTALL DOOR FRAMES - FAB136302H,Complete,2025-08-18 08:00,2025-08-18 17:00,2025-01-24 00:00,2025-01-24 16:00
FAB136302H-04,INSTALL DOOR & HARDWARE - FAB136302H,Active,2025-11-07 08:00,2025-11-13 17:00,2025-11-07 08:00,
FAB136302H-05,PAINT & PROTECT DOORS & FRAMES - FAB136302H,Not Started,2026-02-16 08:00,2026-02-19 15:00,,
FAB136302J-01,IMPACT - INSTALL/REWORK DRYWALL FRAMING AROUND DOORS - FAB136302J HANDED OVER TO SECAI ON 08/29,Complete,2025-08-28 08:00,2025-08-29 17:00,2025-08-29 08:00,2025-08-29 17:00
FAB136302J-03,INSTALL DOOR FRAME BY SECAI - FAB136302J HANDED OVER ON 08/29,Complete,2025-08-29 08:00,2025-08-29 17:00,2025-08-29 08:00,2025-11-03 17:00
FAB136302J-04,INSTALL DOOR & HARDWARE - FAB136302J,Active,2025-11-04 08:00,2025-11-10 17:00,2025-11-04 08:00,
FAB136302J-05,PAINT & PROTECT DOORS & FRAMES - FAB136302J,Not Started,2026-02-16 08:00,2026-02-19 15:00,,
FAB136302G-11,IMPACT - INTERNAL - UNASSEMBLED TRANSOM FRAMES FAB136302G HANDED OVER TO SECAI ON 08/29,Complete,2025-06-20 08:00,2025-07-10 17:00,2025-06-20 08:00,2025-08-29 17:00
FAB136302J-11,IMPACT - INTERNAL - UNASSEMBLED TRANSOM FRAMES FAB136302J HANDED OVER TO SECAI ON 08/29,Complete,2025-06-20 08:00,2025-07-10 17:00,2025-06-20 08:00,2025-08-29 17:00
FAB136408A-03,INSTALL DOOR FRAMES - FAB136408A,Complete,2025-07-03 08:00,2025-07-03 17:00,2025-07-03 08:00,2025-07-03 17:00
FAB136408A-04,INSTALL DOOR & HARDWARE - FAB136408A,Not Started,2025-11-21 08:00,2025-11-27 17:00,,
FAB136408A-05,PAINT & PROTECT DOORS & FRAMES -  FAB136408A,Not Started,2026-02-16 08:00,2026-02-19 15:00,,
FAB136106A-01,IMPACT - INSTALL/REWORK DRYWALL FRAMING AROUND DOORS - FAB136106A,Complete,2025-01-14 08:00,2025-01-15 17:00,2025-01-14 08:00,2025-01-15 17:00
FAB136106A-03,INSTALL DOOR FRAMES - FAB136106A,Complete,2025-07-09 13:00,2025-07-10 12:00,2025-01-16 00:00,2025-01-17 12:00
FAB136106A-04,INSTALL DOOR & HARDWARE - FAB136106A,Active,2025-07-09 08:00,2025-07-15 17:00,2025-07-09 08:00,
FAB136106A-05,PAINT & PROTECT DOORS & FRAMES - FAB136106A,Not Started,2026-02-16 08:00,2026-02-19 15:00,,
FAB134106A-03,INSTALL DOOR FRAMES - FAB134106A,Complete,2025-07-17 13:00,2025-07-18 12:00,2025-04-30 00:00,2025-04-30 16:00
FAB134106A-04,INSTALL DOOR & HARDWARE - FAB134106A,Active,2025-08-15 08:00,2025-08-21 17:00,2025-08-15 08:00,
FAB134106A-05,PAINT & PROTECT DOORS & FRAMES -  FAB134106A,Not Started,2026-02-16 08:00,2026-02-16 17:00,,
FAB134106C-01,DOOR ASSEMBLY - FAB134106C,Not Started,2025-12-03 08:00,2025-12-04 17:00,,
FAB134106C-02,DOOR PACKAGE INSTALL - FAB134106C,Not Started,2025-12-03 08:00,2025-12-04 17:00,,
FAB134106B-07,DOOR INSTALL - FAB134106B (OHC),Not Started,2025-11-21 08:00,2025-11-24 17:00,,
FAB136308A-01,IMPACT - INSTALL/REWORK DRYWALL FRAMING AROUND DOORS - FAB136308A,Complete,2025-01-17 08:00,2025-01-27 17:00,2025-01-17 08:00,2025-01-27 17:00
FAB136308A-03,INSTALL DOOR FRAMES - FAB136308A,Complete,2025-07-25 08:00,2025-07-25 17:00,2025-01-27 00:00,2025-01-27 16:00
FAB136308A-04,INSTALL DOOR & HARDWARE - FAB136308A,Not Started,2025-11-21 08:00,2025-11-27 17:00,,
FAB136308A-05,PAINT & PROTECT DOORS & FRAMES - FAB136308A,Not Started,2026-02-16 08:00,2026-02-19 15:00,,
TR-FAB136112A-03,INSTALL DOOR FRAMES - TR - FAB136112A,Complete,2025-08-14 08:00,2025-08-22 17:00,2025-07-18 08:00,2025-07-18 17:00
TR-FAB136112A-04,INSTALL DOOR & HARDWARE - TR - FAB136112A,Not Started,2025-11-21 08:00,2025-11-27 17:00,,
TR-FAB136112A-05,PAINT & PROTECT DOORS & FRAMES -  TR - FAB136112A,Not Started,2026-02-16 08:00,2026-02-19 15:00,,
TR-FAB136112A-11,IMPACT - PROCUREMENT - Reordered doors (Wall Thickness and Door Swing Design Changes),Complete,2025-06-20 08:00,2025-08-14 17:00,2025-06-20 08:00,2025-07-14 17:00
FAB130402A-03,INSTALL DOOR FRAMES - FAB130402A,Complete,2025-07-28 13:00,2025-07-29 12:00,2025-02-13 00:00,2025-02-13 12:00
FAB130402A-04,INSTALL DOOR & HARDWARE - FAB130402A,Active,2025-11-13 08:00,2025-11-19 17:00,2025-11-13 08:00,
FAB130402A-05,PAINT & PROTECT DOORS & FRAMES -  FAB130402A,Not Started,2026-02-16 08:00,2026-02-19 15:00,,
FAB130402B-01,IMPACT - INSTALL/REWORK DRYWALL FRAMING AROUND DOORS - FAB130402B,Complete,2025-04-30 08:00,2025-05-01 17:00,2025-04-30 08:00,2025-05-01 17:00
FAB130402B-03,INSTALL DOOR FRAMES - FAB130402B,Complete,2025-05-01 08:00,2025-05-01 17:00,2025-05-01 08:00,2025-05-01 17:00
FAB130402B-04,INSTALL DOOR & HARDWARE - FAB130402B,Not Started,2025-11-28 08:00,2025-12-04 17:00,,
FAB130402B-05,PAINT & PROTECT DOORS & FRAMES -  FAB130402B,Not Started,2026-02-16 08:00,2026-02-19 15:00,,
FAB130402C-03,INSTALL DOOR FRAMES - FAB130402C,Complete,2025-07-28 13:00,2025-07-29 12:00,2025-01-22 00:00,2025-01-22 12:00
FAB130402C-04,INSTALL DOOR & HARDWARE - FAB130402C,Not Started,2025-11-21 08:00,2025-11-27 17:00,,
FAB130402C-05,PAINT & PROTECT DOORS & FRAMES -  FAB130402C,Not Started,2026-02-16 08:00,2026-02-19 15:00,,
FAB130402D-03,INSTALL DOOR FRAMES - FAB130402D,Not Started,2025-12-12 08:00,2025-12-12 17:00,,
FAB130402D-04,INSTALL DOOR & HARDWARE - FAB130402D,Not Started,2025-12-12 08:00,2025-12-18 17:00,,
FAB130402D-05,PAINT & PROTECT DOORS & FRAMES -  FAB130402D,Not Started,2026-02-16 08:00,2026-02-19 15:00,,
FAB130402D-11,IMPACT - INTERNAL - UNASSEMBLED TRANSOM FRAMES,Active,2025-06-20 08:00,2025-07-10 17:00,2025-06-20 08:00,
FAB1-ST50D-03,INSTALL DOOR FRAMES - FAB1-ST50D,Complete,2025-09-16 08:00,2025-09-16 17:00,2025-09-16 08:00,2025-09-16 17:00
FAB1-ST50D-04,INSTALL DOOR & HARDWARE - FAB1-ST50D,Active,2025-10-02 08:00,2025-10-08 17:00,2025-10-02 08:00,
FAB1-ST50D-05,PAINT & PROTECT DOORS & FRAMES - FAB1-ST50D,Not Started,2026-02-16 08:00,2026-02-19 15:00,,
FAB1-ST50D-50,IMPACT - PROCUREMENT - REORDERED DOORS (JAMB DEPTH ISSUE),Complete,2025-09-03 08:00,2025-11-20 10:00,2025-06-09 08:00,2025-07-14 10:00
FAB130402E-07,DOOR INSTALL - FAB130402E (OHC),Not Started,2025-12-19 08:00,2025-12-22 17:00,,
TR-FAB130307A-01,IMPACT - INSTALL/REWORK DRYWALL FRAMING AROUND DOORS - TR - FAB130307A,Complete,2025-01-15 08:00,2025-01-23 17:00,2025-01-15 08:00,2025-01-23 17:00
TR-FAB130307A-03,INSTALL DOOR FRAMES - TR - FAB130307A,Complete,2025-06-27 13:00,2025-06-30 12:00,2025-01-23 00:00,2025-01-23 12:00
TR-FAB130307A-04,INSTALL DOOR & HARDWARE - TR - FAB130307A,Active,2025-10-20 08:00,2025-10-24 17:00,2025-10-20 08:00,
TR-FAB130307A-05,PAINT & PROTECT DOORS & FRAMES - TR - FAB130307A,Not Started,2026-02-16 08:00,2026-02-19 15:00,,
FAB136510A-01,IMPACT - INSTALL/REWORK DRYWALL FRAMING AROUND DOORS - FAB136510A,Complete,2025-05-05 08:00,2025-05-13 17:00,2025-05-05 08:00,2025-05-09 17:00
FAB136510A-03,INSTALL DOOR FRAMES - FAB136510A,Complete,2025-07-28 13:00,2025-07-29 12:00,2025-05-08 00:00,2025-05-09 12:00
FAB136510A-04,INSTALL DOOR & HARDWARE - FAB136510A,Active,2025-07-09 08:00,2025-07-15 17:00,2025-07-09 08:00,
FAB136510A-05,PAINT & PROTECT DOORS & FRAMES -  FAB136510A,Not Started,2026-02-16 08:00,2026-02-19 15:00,,
FAB130408A-03,INSTALL DOOR FRAMES - FAB130408A,Not Started,2025-11-21 08:00,2025-11-21 17:00,,
FAB130408A-04,INSTALL DOOR & HARDWARE - FAB130408A,Not Started,2025-11-24 08:00,2025-11-28 17:00,,
FAB130408A-05,PAINT & PROTECT DOORS & FRAMES -  FAB130408A,Not Started,2026-02-16 08:00,2026-02-19 17:00,,
FAB130401A-01,IMPACT - INSTALL/REWORK DRYWALL FRAMING AROUND DOORS - FAB130401A,Complete,2025-02-05 08:00,2025-02-13 17:00,2025-02-05 08:00,2025-02-13 17:00
FAB130401A-03,INSTALL DOOR FRAMES - FAB130401A,Complete,2025-07-31 13:00,2025-08-01 12:00,2025-02-13 00:00,2025-02-13 12:00
FAB130401A-04,INSTALL DOOR & HARDWARE - FAB130401A,Not Started,2025-11-28 08:00,2025-12-04 17:00,,
FAB130401A-05,PAINT & PROTECT DOORS & FRAMES -  FAB130401A,Not Started,2026-02-16 08:00,2026-02-19 15:00,,
FAB130311A-01,IMPACT - INSTALL/REWORK DRYWALL FRAMING AROUND DOORS - FAB130311A,Complete,2025-07-14 08:00,2025-07-22 17:00,2025-05-12 08:00,2025-05-20 16:00
FAB130311A-03,INSTALL DOOR FRAMES - FAB130311A,Complete,2025-07-24 08:00,2025-07-24 17:00,2025-05-27 08:00,2025-05-29 08:00
FAB130311A-04,INSTALL DOOR & HARDWARE - FAB130311A,Not Started,2025-12-05 08:00,2025-12-11 17:00,,
FAB130311A-05,PAINT & PROTECT DOORS & FRAMES - FAB130311A,Not Started,2026-02-16 08:00,2026-02-19 15:00,,
FAB130311B-03,INSTALL DOOR FRAMES - FAB130311B,Not Started,2025-11-28 08:00,2025-11-28 17:00,,
FAB130311B-04,INSTALL DOOR & HARDWARE - FAB130311B,Not Started,2025-12-01 08:00,2025-12-05 17:00,,
FAB130311B-05,PAINT & PROTECT DOORS & FRAMES - FAB130311B,Not Started,2026-02-16 08:00,2026-02-19 15:00,,
FAB130102A-03,INSTALL DOOR FRAMES - FAB130102A,Complete,2025-08-08 08:00,2025-08-08 17:00,2025-01-20 00:00,2025-01-20 16:00
FAB130102A-04,INSTALL DOOR & HARDWARE - FAB130102A,Not Started,2025-11-21 08:00,2025-11-27 17:00,,
FAB130102A-05,PAINT & PROTECT DOORS & FRAMES - FAB130102A,Not Started,2026-02-16 08:00,2026-02-19 15:00,,
FAB136401A-01,IMPACT - INSTALL/REWORK DRYWALL FRAMING AROUND DOORS - FAB136401A FRAME HANDED OVER TO SECAI 07/18,Complete,2025-07-18 08:00,2025-07-28 17:00,2025-07-18 08:00,2025-07-18 17:00
FAB136401A-02,SECAI ROUGH IN/SECURITY - FAB136401A FRAME HANDED OVER TO SECAI 07/18,Complete,2025-07-18 08:00,2025-07-18 17:00,2025-07-18 08:00,2025-07-18 17:00
FAB136401A-03,INSTALL DOOR FRAME BY SECAI - FAB136401A HANDED OVER TO SECAI 07/18,Complete,2025-09-17 08:00,2025-09-17 17:00,2025-08-11 08:00,2025-08-12 17:00
FAB136401A-04,INSTALL DOOR & HARDWARE - FAB136401A,Not Started,2025-11-21 08:00,2025-11-27 17:00,,
FAB136401A-05,PAINT & PROTECT DOORS & FRAMES -  FAB136401A,Not Started,2026-02-16 08:00,2026-02-19 15:00,,
FAB136401A-11,IMPACT - SECAI - DIRECTIVE TO HOLD FRAME INSTALLATION FRAME HANDED OVER TO SECAI 07/18,Complete,2025-07-18 08:00,2025-07-28 10:00,2025-07-18 08:00,2025-07-18 10:00
FAB136401B-03,INSTALL DOOR FRAMES - FAB136401B,Not Started,2025-11-28 08:00,2025-11-28 17:00,,
FAB136401B-04,INSTALL DOOR & HARDWARE - FAB136401B,Not Started,2025-12-01 08:00,2025-12-05 17:00,,
FAB136401B-05,PAINT & PROTECT DOORS & FRAMES - FAB136401B,Not Started,2026-02-16 08:00,2026-02-19 15:00,,
FAB130501A-04,INSTALL DOOR & HARDWARE - FAB130501A,Not Started,2025-11-24 08:00,2025-11-28 17:00,,
FAB130501A-05,PAINT & PROTECT DOORS & FRAMES -  FAB130501A,Not Started,2026-02-16 08:00,2026-02-19 15:00,,
FAB130501A-03,INSTALL DOOR FRAMES - FAB130501A,Not Started,2025-11-21 08:00,2025-11-21 17:00,,
FAB130313A-03,INSTALL DOOR FRAMES - FAB130313A,Complete,2025-05-19 13:00,2025-05-20 12:00,2025-05-19 13:00,2025-05-20 12:00
FAB130313A-04,INSTALL DOOR & HARDWARE - FAB130313A,Active,2025-11-18 08:00,2025-11-24 17:00,2025-11-18 08:00,
FAB130313A-05,PAINT & PROTECT DOORS & FRAMES - FAB130313A,Not Started,2026-02-16 08:00,2026-02-19 15:00,,
FAB130502A-01,IMPACT - INSTALL/REWORK DRYWALL FRAMING AROUND DOORS - FAB130502A,Complete,2025-01-10 08:00,2025-01-20 17:00,2025-01-10 08:00,2025-01-20 17:00
FAB130502A-04,INSTALL DOOR & HARDWARE - FAB130502A,Not Started,2025-11-21 08:00,2025-11-27 17:00,,
FAB130502A-05,PAINT & PROTECT DOORS & FRAMES - FAB130502A,Not Started,2026-02-16 08:00,2026-02-19 15:00,,
FAB130502B-04,INSTALL DOOR & HARDWARE - FAB130502B,Not Started,2025-11-25 08:00,2025-12-01 17:00,,
FAB130502B-05,PAINT & PROTECT DOORS & FRAMES - FAB130502B,Not Started,2026-02-16 08:00,2026-02-19 15:00,,
FAB130502B-11,IMPACT - SECAI - DIRECTIVE TO HOLD FRAME INSTALLATION,Not Started,2025-11-21 08:00,2025-11-21 17:00,,
FAB130406A-01,IMPACT - INSTALL/REWORK DRYWALL FRAMING AROUND DOORS - FAB130406A,Complete,2025-01-14 08:00,2025-01-22 17:00,2025-01-14 08:00,2025-01-22 17:00
FAB130406A-03,INSTALL DOOR FRAMES - FAB130406A,Complete,2025-07-22 13:00,2025-07-23 12:00,2025-01-22 00:00,2025-01-22 12:00
FAB130406A-04,INSTALL DOOR & HARDWARE - FAB130406A,Not Started,2025-11-21 08:00,2025-11-27 17:00,,
FAB130406A-05,PAINT & PROTECT DOORS & FRAMES - FAB130406A,Not Started,2026-02-16 08:00,2026-02-19 15:00,,
FAB130204A-01,INSTALL DOOR FRAMES - FAB130204A,Complete,2025-01-17 08:00,2025-01-27 17:00,2025-01-17 08:00,2025-01-17 17:00
FAB130204A-04,INSTALL DOOR & HARDWARE - FAB130204A,Not Started,2025-11-21 08:00,2025-11-27 17:00,,
FAB130204A-05,PAINT & PROTECT DOORS & FRAMES - FAB130204A,Not Started,2026-02-16 08:00,2026-02-19 15:00,,
FAB126509A-01,IMPACT - INSTALL/REWORK DRYWALL FRAMING AROUND DOORS - FAB126509A,Complete,2025-09-26 08:00,2025-09-29 17:00,2025-09-26 08:00,2025-09-29 17:00
FAB126509A-03,INSTALL DOOR FRAMES - FAB126509A,Complete,2025-09-29 08:00,2025-09-29 17:00,2025-09-29 08:00,2025-09-29 17:00
FAB126509A-04,INSTALL DOOR & HARDWARE - FAB126509A,Not Started,2025-11-21 08:00,2025-11-27 17:00,,
FAB126509A-05,PAINT & PROTECT DOORS & FRAMES -  FAB126509A,Not Started,2026-02-16 08:00,2026-02-19 15:00,,
FAB130305A-01,IMPACT - INSTALL/REWORK DRYWALL FRAMING AROUND DOORS - FAB130305A,Complete,2025-03-27 08:00,2025-04-04 17:00,2025-03-27 08:00,2025-04-03 17:00
FAB130305A-03,INSTALL DOOR FRAMES - FAB130305A,Complete,2025-06-27 13:00,2025-06-30 12:00,2025-04-03 00:00,2025-04-03 12:00
FAB130305A-04,INSTALL DOOR & HARDWARE - FAB130305A,Active,2025-10-21 08:00,2025-10-27 17:00,2025-10-21 08:00,
FAB130305A-05,PAINT & PROTECT DOORS & FRAMES - FAB130305A,Not Started,2026-02-16 08:00,2026-02-19 15:00,,
TR-FAB136306A-01,IMPACT - INSTALL/REWORK DRYWALL FRAMING AROUND DOORS - TR - FAB136306A,Complete,2025-01-09 08:00,2025-01-17 17:00,2025-01-09 08:00,2025-01-17 17:00
TR-FAB136306A-03,INSTALL DOOR FRAMES - TR - FAB136306A,Complete,2025-01-17 08:00,2025-01-17 17:00,2025-01-17 08:00,2025-01-17 17:00
TR-FAB136306A-04,INSTALL DOOR & HARDWARE - TR - FAB136306A,Not Started,2025-11-21 08:00,2025-11-27 17:00,,
TR-FAB136306A-05,PAINT & PROTECT DOORS & FRAMES -  TR - FAB136306A,Not Started,2026-02-16 08:00,2026-02-19 15:00,,
FAB130317A-03,INSTALL DOOR FRAMES - FAB130317A,Complete,2025-07-09 13:00,2025-07-10 12:00,2025-05-11 00:00,2025-05-12 16:00
FAB130317A-04,INSTALL DOOR & HARDWARE - FAB130317A,Active,2025-11-13 08:00,2025-11-19 17:00,2025-11-13 08:00,
FAB130317A-05,PAINT & PROTECT DOORS & FRAMES - FAB130317A,Not Started,2026-02-16 08:00,2026-02-19 15:00,,
FAB130316A-01,IMPACT - INSTALL/REWORK DRYWALL FRAMING AROUND DOORS- FAB130316A,Complete,2025-06-06 08:00,2025-06-16 17:00,2025-05-06 08:00,2025-05-06 16:00
FAB130316A-03,INSTALL DOOR FRAMES - FAB130316A,Complete,2025-06-24 13:00,2025-06-25 12:00,2025-05-06 00:00,2025-05-06 12:00
FAB130316A-04,INSTALL DOOR & HARDWARE - FAB130316A,Active,2025-06-10 08:00,2025-06-16 17:00,2025-06-10 08:00,
FAB130316A-05,PAINT & PROTECT DOORS & FRAMES - FAB130316A,Not Started,2026-02-16 08:00,2026-02-19 17:00,,
FAB1-ST02C-03,INSTALL DOOR FRAMES - FAB1-ST02C,Complete,2025-07-01 08:00,2025-07-01 17:00,2025-07-01 08:00,2025-07-01 16:00
FAB1-ST02C-04,INSTALL DOOR & HARDWARE - FAB1-ST02C,Active,2025-11-12 08:00,2025-11-18 17:00,2025-11-12 08:00,
FAB1-ST02C-05,PAINT & PROTECT DOORS & FRAMES - FAB1-ST02C,Not Started,2026-02-16 08:00,2026-02-20 17:00,,
FAB1-ST02D-04,INSTALL DOOR & HARDWARE - FAB1-ST02D-03,Not Started,2025-11-28 08:00,2025-12-04 17:00,,
FAB1-ST02D-05,PAINT & PROTECT DOORS & FRAMES - FAB1-ST02D-03,Not Started,2026-02-16 08:00,2026-02-19 17:00,,
FAB1-ST02D-03,INSTALL DOOR FRAMES - FAB1-ST02D-03,Complete,2025-08-06 08:00,2025-08-06 17:00,2025-08-06 08:00,2025-08-06 17:00
FAB1-ST03C-01,IMPACT - INSTALL/REWORK DRYWALL FRAMING AROUND DOORS - FAB1-ST03C,Complete,2025-04-01 08:00,2025-04-09 17:00,2025-04-01 08:00,2025-04-07 17:00
FAB1-ST03C-03,INSTALL DOOR FRAMES - FAB1-ST03C,Complete,2025-04-07 08:00,2025-04-07 17:00,2025-04-07 08:00,2025-04-07 17:00
FAB1-ST03C-04,INSTALL DOOR & HARDWARE - FAB1-ST03C,Not Started,2025-11-28 08:00,2025-12-04 17:00,,
FAB1-ST03C-05,PAINT & PROTECT DOORS & FRAMES - FAB1-ST03C,Not Started,2026-02-16 08:00,2026-02-19 17:00,,
FAB1-ST20C-01,IMPACT - INSTALL/REWORK DRYWALL FRAMING AROUND DOORS - FAB1-ST20C,Complete,2025-09-09 08:00,2025-09-10 17:00,2025-09-09 08:00,2025-09-10 17:00
FAB1-ST20C-03,INSTALL DOOR FRAMES - FAB1-ST20C,Complete,2025-09-10 08:00,2025-09-10 17:00,2025-09-10 08:00,2025-09-10 17:00
FAB1-ST20C-04,INSTALL DOOR & HARDWARE - FAB1-ST20C,Active,2025-11-18 08:00,2025-11-24 17:00,2025-11-18 08:00,
FAB1-ST20C-05,PAINT & PROTECT DOORS & FRAMES - FAB1-ST20C,Not Started,2026-02-16 08:00,2026-02-20 17:00,,
FAB1-ST21C-01,IMPACT - INSTALL/REWORK DRYWALL FRAMING AROUND DOORS - FAB1-ST21C,Complete,2025-02-05 08:00,2025-02-13 17:00,2025-02-05 08:00,2025-02-13 17:00
FAB1-ST21C-03,INSTALL DOOR FRAMES - FAB1-ST21C,Complete,2025-02-13 08:00,2025-02-13 17:00,2025-02-13 08:00,2025-02-13 17:00
FAB1-ST21C-04,INSTALL DOOR & HARDWARE - FAB1-ST21C,Active,2025-11-12 08:00,2025-11-18 17:00,2025-11-12 08:00,
FAB1-ST21C-05,PAINT & PROTECT DOORS & FRAMES - FAB1-ST21C,Not Started,2026-02-16 08:00,2026-02-20 17:00,,
FAB1-ST21D-03,INSTALL DOOR FRAMES - FAB1-ST21D,Complete,2025-06-27 08:00,2025-06-27 17:00,2025-07-01 08:00,2025-07-01 08:00
FAB1-ST21D-04,INSTALL DOOR & HARDWARE - FAB1-ST21D,Not Started,2025-11-21 08:00,2025-11-27 17:00,,
FAB1-ST21D-05,PAINT & PROTECT DOORS & FRAMES - FAB1-ST21D,Not Started,2026-02-16 08:00,2026-02-20 17:00,,
FAB1-ST04C-01,IMPACT - INSTALL/REWORK DRYWALL FRAMING AROUND DOORS - FAB1-ST04C,Complete,2025-09-04 08:00,2025-09-05 17:00,2025-09-04 08:00,2025-09-05 17:00
FAB1-ST04C-03,INSTALL DOOR FRAMES - FAB1-ST04C,Complete,2025-09-05 08:00,2025-09-05 17:00,2025-09-05 08:00,2025-09-05 17:00
FAB1-ST04C-04,INSTALL DOOR & HARDWARE - FAB1-ST04C,Active,2025-11-12 08:00,2025-11-18 17:00,2025-11-12 08:00,
FAB1-ST04C-05,PAINT & PROTECT DOORS & FRAMES - FAB1-ST04C,Not Started,2026-02-16 08:00,2026-02-19 17:00,,
FAB1-ST19C-04,INSTALL DOOR & HARDWARE - FAB1-ST19C,Active,2025-11-11 08:00,2025-11-17 17:00,2025-11-11 08:00,
FAB1-ST19C-05,PAINT & PROTECT DOORS & FRAMES - FAB1-ST19C,Not Started,2026-02-16 08:00,2026-02-19 17:00,,
FAB130116A-01,DOOR ASSEMBLY - FAB130116A,Not Started,2025-12-05 08:00,2025-12-08 17:00,,
FAB130116A-02,DOOR PACKAGE INSTALL - FAB130116A,Not Started,2025-12-05 08:00,2025-12-08 17:00,,
FAB130117F-01,DOOR ASSEMBLY - FAB130117F,Not Started,2025-12-10 08:00,2025-12-11 17:00,,
FAB130117F-02,DOOR PACKAGE INSTALL - FAB130117F,Not Started,2025-12-10 08:00,2025-12-11 17:00,,
FAB130117G-01,DOOR ASSEMBLY - FAB130117G,Not Started,2025-12-19 08:00,2025-12-22 17:00,,
FAB130117G-02,DOOR PACKAGE INSTALL - FAB130117G,Not Started,2025-12-19 08:00,2025-12-22 17:00,,
FAB130117H-01,DOOR ASSEMBLY - FAB130117H,Not Started,2025-12-30 08:00,2025-12-31 17:00,,
FAB130117H-02,DOOR PACKAGE INSTALL - FAB130117H,Not Started,2025-12-30 08:00,2025-12-31 17:00,,
FAB130117I-01,DOOR ASSEMBLY - FAB130117I,Not Started,2026-01-08 08:00,2026-01-09 17:00,,
FAB130117I-02,DOOR PACKAGE INSTALL - FAB130117I,Not Started,2026-01-08 08:00,2026-01-09 17:00,,
FAB134105A-01,DOOR ASSEMBLY - FAB134105A,Complete,2025-08-06 08:00,2025-08-07 17:00,2025-08-06 08:00,2025-08-07 17:00
FAB134105A-02,DOOR PACKAGE INSTALL - FAB134105A,Complete,2025-08-06 08:00,2025-08-07 17:00,2025-08-06 08:00,2025-08-07 17:00
FAB134105C-01,DOOR ASSEMBLY - FAB134105C,Complete,2025-08-06 08:00,2025-08-07 17:00,2025-08-06 08:00,2025-08-07 17:00
FAB134105C-02,DOOR PACKAGE INSTALL - FAB134105C,Complete,2025-08-06 08:00,2025-08-07 17:00,2025-08-06 08:00,2025-08-07 17:00
FAB126402A-03,INSTALL DOOR FRAMES - FAB126402A,Complete,2025-08-04 13:00,2025-08-05 12:00,2025-03-28 00:00,2025-03-28 16:00
FAB126402A-04,INSTALL DOOR & HARDWARE - FAB126402A,Active,2025-11-13 08:00,2025-11-19 17:00,2025-11-13 08:00,
FAB126402A-05,PAINT & PROTECT DOORS & FRAMES -  FAB126402A,Not Started,2026-02-16 08:00,2026-02-19 15:00,,
FAB126502F-01,DOOR FRAME HANDED OVER TO SECAI ON 10/01 - FAB126502F,Complete,2025-10-01 08:00,2025-10-01 17:00,2025-10-01 08:00,2025-10-01 17:00
FAB126502F-03,INSTALL DOOR FRAME BY SECAI - FAB126502F - HANDED OVER TO SECAI ON 10/01,Complete,2025-10-01 08:00,2025-10-01 17:00,2025-10-01 08:00,2025-11-17 17:00
FAB126502F-04,INSTALL DOOR & HARDWARE - FAB126502F,Active,2025-11-18 08:00,2025-11-24 17:00,2025-11-18 08:00,
FAB126502F-05,PAINT & PROTECT DOORS & FRAMES -  FAB126502F,Not Started,2026-02-16 08:00,2026-02-19 15:00,,
FAB126502F-30,IMPACT - REORDER FRAME -Elevator #19 - 2F - FAB1-EL19,Complete,2025-09-15 08:00,2025-10-01 17:00,2025-09-15 08:00,2025-10-01 17:00
FAB126311B-01,IMPACT - INSTALL/REWORK DRYWALL FRAMING AROUND DOORS - FAB126311B,Complete,2025-04-01 08:00,2025-04-09 17:00,2025-04-01 08:00,2025-04-09 17:00
FAB126311B-03,INSTALL DOOR FRAMES - FAB126311B,Complete,2025-07-15 13:00,2025-07-16 12:00,2025-04-09 00:00,2025-04-09 16:00
FAB126311B-04,INSTALL DOOR & HARDWARE - FAB126311B,Active,2025-11-14 08:00,2025-11-20 17:00,2025-11-14 08:00,
FAB126311B-05,PAINT & PROTECT DOORS & FRAMES - FAB126311B,Not Started,2026-02-16 08:00,2026-02-19 15:00,,
FAB126311C-01,IMPACT - INSTALL/REWORK DRYWALL FRAMING AROUND DOORS - FAB126311C,Complete,2025-04-01 08:00,2025-04-09 17:00,2025-04-01 08:00,2025-04-09 17:00
FAB126311C-03,INSTALL DOOR FRAMES - FAB126311C,Complete,2025-07-15 13:00,2025-07-16 12:00,2025-04-09 00:00,2025-04-09 16:00
FAB126311C-04,INSTALL DOOR & HARDWARE - FAB126311C,Active,2025-09-04 08:00,2025-09-10 17:00,2025-09-04 08:00,
FAB126311C-05,PAINT & PROTECT DOORS & FRAMES - FAB126311C,Not Started,2026-02-16 08:00,2026-02-19 15:00,,
FAB126311D-01,IMPACT - INSTALL/REWORK DRYWALL FRAMING AROUND DOORS - FAB126311D,Complete,2025-04-02 08:00,2025-04-10 17:00,2025-04-02 08:00,2025-04-09 17:00
FAB126311D-03,INSTALL DOOR FRAMES - FAB126311D,Complete,2025-07-15 13:00,2025-07-16 12:00,2025-04-09 00:00,2025-04-09 16:00
FAB126311D-04,INSTALL DOOR & HARDWARE - FAB126311D,Not Started,2025-11-21 08:00,2025-11-27 17:00,,
FAB126311D-05,PAINT & PROTECT DOORS & FRAMES - FAB126311D,Not Started,2026-02-16 08:00,2026-02-19 15:00,,
FAB126311E-01,IMPACT - INSTALL/REWORK DRYWALL FRAMING AROUND DOORS - FAB126311E,Complete,2025-02-26 08:00,2025-03-06 17:00,2025-02-26 08:00,2025-03-06 17:00
FAB126311E-03,INSTALL DOOR FRAMES - FAB126311E,Complete,2025-03-06 08:00,2025-03-06 17:00,2025-03-06 08:00,2025-03-06 17:00
FAB126311E-04,INSTALL DOOR & HARDWARE - FAB126311E,Active,2025-09-05 08:00,2025-09-11 17:00,2025-09-05 08:00,
FAB126311E-05,PAINT & PROTECT DOORS & FRAMES - FAB126311E,Not Started,2026-02-16 08:00,2026-02-19 15:00,,
FAB126110A-01,IMPACT - INSTALL/REWORK DRYWALL FRAMING AROUND DOORS - FAB126110A,Complete,2025-05-08 08:00,2025-05-16 17:00,2025-05-08 08:00,2025-05-16 17:00
FAB126110A-03,INSTALL DOOR FRAMES - FAB126110A,Complete,2025-05-16 08:00,2025-05-16 17:00,2025-05-16 08:00,2025-05-16 17:00
FAB126110A-04,INSTALL DOOR & HARDWARE - FAB126110A,Active,2025-11-13 08:00,2025-11-19 17:00,2025-11-13 08:00,
FAB126110A-05,PAINT & PROTECT DOORS & FRAMES -  FAB126110A,Not Started,2026-02-16 08:00,2026-02-19 15:00,,
FAB126511A-03,INSTALL DOOR FRAMES - FAB126511A,Complete,2025-04-09 08:00,2025-04-09 17:00,2025-04-09 08:00,2025-04-09 17:00
FAB126511A-04,INSTALL DOOR & HARDWARE - FAB126511A,Active,2025-06-06 08:00,2025-06-12 17:00,2025-06-06 08:00,
FAB126511A-05,PAINT & PROTECT DOORS & FRAMES -  FAB126511A,Not Started,2026-02-16 08:00,2026-02-19 17:00,,
FAB126511A-07,DOOR FRAME PAINT & 1ST COAT - FAB126511A,Complete,2025-05-26 08:00,2025-05-30 17:00,2025-05-26 08:00,2025-05-30 17:00
FAB126501A-01,IMPACT - INSTALL/REWORK DRYWALL FRAMING AROUND DOORS - FAB126501A,Complete,2025-05-12 08:00,2025-05-20 17:00,2025-05-12 08:00,2025-05-16 17:00
FAB126501A-03,INSTALL DOOR FRAMES - FAB126501A,Complete,2025-08-12 13:00,2025-08-13 12:00,2025-05-15 00:00,2025-05-16 16:00
FAB126501A-04,INSTALL DOOR & HARDWARE - FAB126501A,Not Started,2025-11-21 08:00,2025-11-27 17:00,,
FAB126501A-05,PAINT & PROTECT DOORS & FRAMES -  FAB126501A,Not Started,2026-02-16 08:00,2026-02-19 15:00,,
FAB126506B-01,IMPACT - INSTALL/REWORK DRYWALL FRAMING AROUND DOORS - FAB126506B HANDED OVER TO SECAI ON 08/29,Complete,2025-08-28 08:00,2025-08-29 17:00,2025-08-29 08:00,2025-08-29 17:00
FAB126506B-03,INSTALL DOOR FRAME BY SECAI - FAB126506B HANDED OVER ON 08/29,Active,2025-08-29 08:00,2025-08-29 17:00,2025-08-29 08:00,
FAB126506B-04,INSTALL DOOR & HARDWARE - FAB126506B,Not Started,2025-12-05 08:00,2025-12-11 17:00,,
FAB126506B-05,PAINT & PROTECT DOORS & FRAMES -  FAB126506B,Not Started,2026-02-16 08:00,2026-02-19 15:00,,
FAB126506C-03,INSTALL DOOR FRAME BY SECAI - FAB126506C HANDED OVER ON 10/27,Complete,2025-10-27 08:00,2025-10-27 17:00,2025-10-27 08:00,2025-11-13 17:00
FAB126506C-04,INSTALL DOOR & HARDWARE - FAB126506C,Active,2025-11-14 08:00,2025-11-20 17:00,2025-11-14 08:00,
FAB126506C-05,PAINT & PROTECT DOORS & FRAMES -  FAB126506C,Not Started,2026-02-16 08:00,2026-02-19 15:00,,
FAB126506D-01,IMPACT - INSTALL/REWORK DRYWALL FRAMING AROUND DOORS - FAB126506D,Complete,2025-02-18 08:00,2025-02-26 17:00,2025-02-18 08:00,2025-02-26 17:00
FAB126506D-03,INSTALL DOOR FRAMES - FAB126506D,Complete,2025-07-17 13:00,2025-07-18 12:00,2025-02-26 00:00,2025-02-26 16:00
FAB126506D-04,INSTALL DOOR & HARDWARE - FAB126506D,Active,2025-05-14 08:00,2025-05-20 17:00,2025-05-14 08:00,
FAB126506D-05,PAINT & PROTECT DOORS & FRAMES -  FAB126506D,Not Started,2026-02-16 08:00,2026-02-19 15:00,,
FAB126506E-01,IMPACT - INSTALL/REWORK DRYWALL FRAMING AROUND DOORS - FAB126506E HANDED OVER TO SECAI ON 08/29,Complete,2025-08-28 08:00,2025-08-29 17:00,2025-08-29 08:00,2025-08-29 17:00
FAB126506E-04,INSTALL DOOR & HARDWARE - FAB126506E,Active,2025-11-18 08:00,2025-11-24 17:00,2025-11-18 08:00,
FAB126506E-05,PAINT & PROTECT DOORS & FRAMES -  FAB126506E,Not Started,2026-02-16 08:00,2026-02-19 15:00,,
FAB126506E-11,IMPACT - PROCUREMENT - REORDERED DOORS (JAMB DEPTH ISSUE) FAB126506E,Complete,2025-06-20 08:00,2025-08-14 17:00,2025-06-20 08:00,2025-06-30 17:00
FAB126506E-03,INSTALL DOOR FRAME BY SECAI - FAB126506E HANDED OVER ON 08/29,Complete,2025-08-29 08:00,2025-08-29 17:00,2025-08-29 08:00,2025-09-16 17:00
FAB126513A-01,IMPACT - INSTALL/REWORK DRYWALL FRAMING AROUND DOORS - FAB126513A,Complete,2025-02-27 08:00,2025-03-07 17:00,2025-02-27 08:00,2025-03-07 17:00
FAB126513A-03,INSTALL DOOR FRAMES - FAB126513A,Complete,2025-09-08 13:00,2025-09-09 12:00,2025-03-07 00:00,2025-03-07 16:00
FAB126513A-04,INSTALL DOOR & HARDWARE - FAB126513A,Active,2025-10-20 08:00,2025-10-24 17:00,2025-10-20 08:00,
FAB126513A-05,PAINT & PROTECT DOORS & FRAMES -  FAB126513A,Not Started,2026-02-16 08:00,2026-02-19 15:00,,
FAB126505A-03,INSTALL DOOR FRAMES - FAB126505A,Complete,2025-07-02 08:00,2025-07-02 17:00,2025-07-31 08:00,2025-07-31 16:00
FAB126505A-04,INSTALL DOOR & HARDWARE - FAB126505A,Not Started,2025-11-28 08:00,2025-12-04 17:00,,
FAB126505A-05,PAINT & PROTECT DOORS & FRAMES -  FAB126505A,Not Started,2026-02-16 08:00,2026-02-16 17:00,,
FAB126505B-01,IMPACT - INSTALL/REWORK DRYWALL FRAMING AROUND DOORS - FAB126505B,Complete,2025-03-05 08:00,2025-03-13 17:00,2025-03-05 08:00,2025-03-13 17:00
FAB126505B-03,INSTALL DOOR FRAMES - FAB126505B,Complete,2025-08-04 13:00,2025-08-05 12:00,2025-03-13 00:00,2025-03-13 16:00
FAB126505B-04,INSTALL DOOR & HARDWARE - FAB126505B,Not Started,2025-11-21 08:00,2025-11-27 17:00,,
FAB126505B-05,PAINT & PROTECT DOORS & FRAMES -  FAB126505B,Not Started,2026-02-16 08:00,2026-02-19 15:00,,
FAB126310A-03,INSTALL DOOR FRAME BY SECAI - FAB126310A HANDED OVER TO SECAI 06/27,Complete,2025-06-30 08:00,2025-07-11 17:00,2025-06-28 08:00,2025-10-22 17:00
FAB126310A-04,INSTALL DOOR & HARDWARE - FAB126310A,Active,2025-10-23 08:00,2025-10-29 17:00,2025-10-23 08:00,
FAB126310A-05,PAINT & PROTECT DOORS & FRAMES - FAB126310A,Not Started,2026-02-16 08:00,2026-02-19 15:00,,
FAB126310B-01,IMPACT - INSTALL/REWORK DRYWALL FRAMING AROUND DOORS - FAB126310B,Complete,2025-02-25 10:00,2025-03-06 10:00,2025-02-25 10:00,2025-03-06 10:00
FAB126310B-03,INSTALL DOOR FRAMES - FAB126310B,Complete,2025-07-10 13:00,2025-07-11 12:00,2025-03-06 00:00,2025-03-06 16:00
FAB126310B-04,INSTALL DOOR & HARDWARE - FAB126310B,Active,2025-10-23 08:00,2025-10-29 17:00,2025-10-23 08:00,
FAB126310B-05,PAINT & PROTECT DOORS & FRAMES - FAB126310B,Not Started,2026-02-16 08:00,2026-02-19 15:00,,
FAB126310A-13,DOOR FRAME HANDED OVER TO SECAI 06/27- FAB126310A,Complete,2025-06-27 08:00,2025-06-27 17:00,2025-06-27 08:00,2025-06-27 16:00
FAB126102A-01,IMPACT - INSTALL/REWORK DRYWALL FRAMING AROUND DOORS - FAB126102A,Complete,2025-05-01 08:00,2025-05-09 17:00,2025-05-01 08:00,2025-05-05 17:00
FAB126102A-03,INSTALL DOOR FRAMES - FAB126102A,Complete,2025-08-26 08:00,2025-08-26 17:00,2025-05-05 00:00,2025-05-05 16:00
FAB126102A-04,INSTALL DOOR & HARDWARE - FAB126102A,Active,2025-06-06 08:00,2025-06-12 17:00,2025-06-06 08:00,
FAB126102A-05,PAINT & PROTECT DOORS & FRAMES -  FAB126102A,Not Started,2026-02-16 08:00,2026-02-19 15:00,,
FAB122106A-01,IMPACT - INSTALL/REWORK DRYWALL FRAMING AROUND DOORS - FAB122106A,Complete,2025-08-18 08:00,2025-08-26 17:00,2025-05-07 08:00,2025-05-15 17:00
FAB122106A-03,INSTALL DOOR FRAMES - FAB122106A,Complete,2025-05-15 08:00,2025-05-15 17:00,2025-05-15 08:00,2025-05-15 17:00
FAB122106A-04,INSTALL DOOR & HARDWARE - FAB122106A,Active,2025-05-15 08:00,2025-05-21 17:00,2025-05-15 08:00,
FAB122106A-05,PAINT & PROTECT DOORS & FRAMES -  FAB122106A,Not Started,2026-02-16 08:00,2026-02-19 15:00,,
FAB122106B-01,IMPACT - INSTALL/REWORK DRYWALL FRAMING AROUND DOORS - FAB122106B,Complete,2025-05-07 08:00,2025-05-15 17:00,2025-05-07 08:00,2025-05-15 17:00
FAB122106B-03,INSTALL DOOR FRAMES - FAB122106B,Complete,2025-05-15 08:00,2025-05-15 17:00,2025-05-15 08:00,2025-05-15 17:00
FAB122106B-04,INSTALL DOOR & HARDWARE - FAB122106B,Not Started,2025-11-21 08:00,2025-11-27 17:00,,
FAB122106B-05,PAINT & PROTECT DOORS & FRAMES -  FAB122106B,Not Started,2026-02-16 08:00,2026-02-19 15:00,,
FAB122106C-01,IMPACT - INSTALL/REWORK DRYWALL FRAMING AROUND DOORS - FAB122106C,Complete,2025-05-15 08:00,2025-05-23 17:00,2025-05-07 08:00,2025-05-15 17:00
FAB122106C-03,INSTALL DOOR FRAMES - FAB122106C,Complete,2025-05-15 08:00,2025-05-15 17:00,2025-05-15 08:00,2025-05-15 17:00
FAB122106C-04,INSTALL DOOR & HARDWARE - FAB122106C,Not Started,2025-11-21 08:00,2025-11-27 17:00,,
FAB122106C-05,PAINT & PROTECT DOORS & FRAMES -  FAB122106C,Not Started,2026-02-16 08:00,2026-02-19 15:00,,
FAB126107A-01,INSTALL DOOR FRAME BY SECAI - FAB126107A HANDED OVER ON 08/29,Complete,2025-08-29 08:00,2025-08-29 17:00,2025-08-29 08:00,2025-11-07 17:00
FAB126107A-04,INSTALL DOOR & HARDWARE - FAB126107A,Active,2025-11-10 08:00,2025-11-14 17:00,2025-11-10 08:00,
FAB126107A-05,PAINT & PROTECT DOORS & FRAMES - FAB126107A,Not Started,2026-02-16 08:00,2026-02-19 15:00,,
FAB126107B-01,INSTALL DOOR FRAMES - FAB126107B,Complete,2025-07-29 08:00,2025-07-29 17:00,2025-07-29 08:00,2025-07-29 17:00
FAB126107B-04,INSTALL DOOR & HARDWARE - FAB126107B,Active,2025-10-31 08:00,2025-11-06 17:00,2025-10-31 08:00,
FAB126107B-05,PAINT & PROTECT DOORS & FRAMES - FAB126107B,Not Started,2026-02-16 08:00,2026-02-19 15:00,,
FAB126107D-01,IMPACT - INSTALL/REWORK DRYWALL FRAMING AROUND DOORS - FAB126107D,Complete,2025-03-25 08:00,2025-04-02 17:00,2025-03-25 08:00,2025-04-01 17:00
FAB126107D-03,INSTALL DOOR FRAMES - FAB126107D,Complete,2025-07-11 13:00,2025-07-14 12:00,2025-03-31 00:00,2025-04-01 16:00
FAB126107D-04,INSTALL DOOR & HARDWARE - FAB126107D,Active,2025-11-13 08:00,2025-11-19 17:00,2025-11-13 08:00,
FAB126107D-05,PAINT & PROTECT DOORS & FRAMES - FAB126107D,Not Started,2026-02-16 08:00,2026-02-19 15:00,,
FAB126107E-01,IMPACT - INSTALL/REWORK DRYWALL FRAMING AROUND DOORS - FAB126107E,Complete,2025-04-01 08:00,2025-04-09 17:00,2025-04-01 08:00,2025-04-11 17:00
FAB126107E-03,INSTALL DOOR FRAMES - FAB126107E,Complete,2025-07-11 13:00,2025-07-14 12:00,2025-04-11 00:00,2025-04-11 16:00
FAB126107E-04,INSTALL DOOR & HARDWARE - FAB126107E,Active,2025-11-11 08:00,2025-11-17 17:00,2025-11-11 08:00,
FAB126107E-05,PAINT & PROTECT DOORS & FRAMES - FAB126107E,Not Started,2026-02-16 08:00,2026-02-19 15:00,,
FAB126107A-11,IMPACT - PROCUREMENT - REORDERED DOORS (JAMB DEPTH ISSUE),Complete,2025-07-10 08:00,2025-09-12 17:00,2025-06-09 08:00,2025-07-14 17:00
FAB126107B-11,IMPACT - PROCUREMENT - REORDERED DOORS (JAMB DEPTH ISSUE),Complete,2025-07-10 08:00,2025-09-12 17:00,2025-06-09 08:00,2025-07-14 17:00
FAB126201A-01,IMPACT - INSTALL/REWORK DRYWALL FRAMING AROUND DOORS - FAB126201A,Complete,2025-03-20 08:00,2025-03-28 17:00,2025-03-20 08:00,2025-03-28 17:00
FAB126201A-03,INSTALL DOOR FRAMES - FAB126201A,Complete,2025-06-27 13:00,2025-06-30 12:00,2025-03-28 00:00,2025-03-28 16:00
FAB126201A-04,INSTALL DOOR & HARDWARE - FAB126201A,Active,2025-09-04 08:00,2025-09-10 17:00,2025-09-04 08:00,
FAB126201A-05,PAINT & PROTECT DOORS & FRAMES - FAB126201A,Not Started,2026-02-16 08:00,2026-02-19 15:00,,
FAB126104D-01,INSTALL DOOR FRAME BY SECAI - FAB126104D HANDED OVER 06/27,Complete,2025-06-27 08:00,2025-07-10 17:00,2025-06-28 08:00,2025-08-13 08:00
FAB126104D-04,INSTALL DOOR & HARDWARE - FAB126104D,Active,2025-11-13 08:00,2025-11-19 17:00,2025-11-13 08:00,
FAB126104D-05,PAINT & PROTECT DOORS & FRAMES - FAB126104D,Not Started,2026-02-16 08:00,2026-02-19 15:00,,
FAB126104E-01,INSTALL DOOR FRAMES - FAB126104E,Not Started,2025-12-01 08:00,2025-12-02 17:00,,
FAB126104E-04,INSTALL DOOR & HARDWARE - FAB126104E,Not Started,2025-11-28 08:00,2025-12-04 17:00,,
FAB126104E-05,PAINT & PROTECT DOORS & FRAMES - FAB126104E,Not Started,2026-02-16 08:00,2026-02-19 15:00,,
FAB126104E-11,IMPACT - INTERNAL - UNASSEMBLED TRANSOM FRAMES,Not Started,2025-11-21 08:00,2025-11-28 17:00,,
FAB126104D-40,DOOR FRAME HANDED OVER TO SECAI ON 06/27 - FAB126104D,Complete,2025-06-27 08:00,2025-06-27 17:00,2025-06-27 08:00,2025-06-27 16:00
FAB126106A-03,INSTALL DOOR FRAMES - FAB126106A,Complete,2025-10-03 08:00,2025-10-03 17:00,2025-10-03 08:00,2025-10-03 17:00
FAB126106A-04,INSTALL DOOR & HARDWARE - FAB126106A,Active,2025-10-23 08:00,2025-10-29 17:00,2025-10-23 08:00,
FAB126106A-05,PAINT & PROTECT DOORS & FRAMES - FAB126106A,Not Started,2026-02-16 08:00,2026-02-19 15:00,,
FAB126106B-01,IMPACT - INSTALL/REWORK DRYWALL FRAMING AROUND DOORS - FAB126106B,Complete,2025-02-17 08:00,2025-02-25 17:00,2025-02-17 08:00,2025-02-25 17:00
FAB126106B-03,INSTALL DOOR FRAMES - FAB126106B,Complete,2025-08-18 13:00,2025-08-19 12:00,2025-02-25 00:00,2025-02-25 16:00
FAB126106B-04,INSTALL DOOR & HARDWARE - FAB126106B,Active,2025-10-22 08:00,2025-10-28 17:00,2025-10-22 08:00,
FAB126106B-05,PAINT & PROTECT DOORS & FRAMES - FAB126106B,Not Started,2026-02-16 08:00,2026-02-19 15:00,,
FAB126112A-01,IMPACT - INSTALL/REWORK DRYWALL FRAMING AROUND DOORS - FAB126112A,Complete,2025-05-12 08:00,2025-05-20 17:00,2025-05-12 08:00,2025-05-16 17:00
FAB126112A-03,INSTALL DOOR FRAMES - FAB126112A,Complete,2025-07-28 13:00,2025-07-29 12:00,2025-05-15 00:00,2025-05-16 16:00
FAB126112A-04,INSTALL DOOR & HARDWARE - FAB126112A,Active,2025-05-16 08:00,2025-05-22 17:00,2025-05-16 08:00,
FAB126112A-05,PAINT & PROTECT DOORS & FRAMES - FAB126112A,Not Started,2026-02-16 08:00,2026-02-19 15:00,,
FAB120106A-01,IMPACT - INSTALL/REWORK DRYWALL FRAMING AROUND DOORS - FAB120106A,Complete,2025-08-01 08:00,2025-08-11 17:00,2025-07-08 13:00,2025-07-15 17:00
FAB120106A-03,INSTALL DOOR FRAMES - FAB120106A,Complete,2025-08-01 08:00,2025-08-01 17:00,2025-07-21 08:00,2025-07-22 17:00
FAB120106A-04,INSTALL DOOR & HARDWARE - FAB120106A,Active,2025-08-25 08:00,2025-08-29 17:00,2025-08-25 08:00,
FAB120106A-05,PAINT & PROTECT DOORS & FRAMES - FAB120106A,Not Started,2026-02-16 08:00,2026-02-17 17:00,,
FAB120106B-01,IMPACT - INSTALL/REWORK DRYWALL FRAMING AROUND DOORS - FAB120106B,Complete,2025-08-01 08:00,2025-08-01 17:00,2025-07-14 08:00,2025-07-17 17:00
FAB120106B-03,INSTALL DOOR FRAME  - FAB120106B,Complete,2025-08-01 08:00,2025-08-01 17:00,2025-07-23 08:00,2025-07-23 17:00
FAB120106B-04,INSTALL DOOR & HARDWARE - FAB120106B,Active,2025-09-11 08:00,2025-09-17 17:00,2025-09-11 08:00,
FAB120106B-05,PAINT & PROTECT DOORS & FRAMES - FAB120106B,Not Started,2026-02-16 08:00,2026-02-19 15:00,,
FAB120106C-03,INSTALL DOOR FRAMES - FAB120106C,Not Started,2025-11-21 08:00,2025-11-21 17:00,,
FAB120106C-04,INSTALL DOOR & HARDWARE - FAB120106C,Not Started,2025-11-24 08:00,2025-11-28 17:00,,
FAB120106C-05,PAINT & PROTECT DOORS & FRAMES - FAB120106C,Not Started,2026-02-16 08:00,2026-02-19 15:00,,
FAB120118K-03,INSTALL DOOR FRAMES - FAB120118K,Complete,2025-06-30 08:00,2025-06-30 17:00,2025-06-30 08:00,2025-06-30 16:00
FAB120118K-04,INSTALL DOOR & HARDWARE - FAB120118K,Active,2025-08-26 08:00,2025-09-01 17:00,2025-08-26 08:00,
FAB120118K-05,PAINT & PROTECT DOORS & FRAMES - FAB120118K,Not Started,2026-02-16 08:00,2026-02-17 17:00,,
FAB120106B-60,IMPACT - SECAI MEP SCAFFOLD IMPEDING DOOR INSTALLATION- FAB120106B,Complete,2025-08-01 08:00,2025-09-11 17:00,2025-07-04 08:00,2025-09-10 17:00
FAB120118K-6,DOOR PREP - FAB120118K,Complete,2025-06-30 08:00,2025-07-11 17:00,2025-06-30 08:00,2025-08-25 08:00
FAB120103A-01,IMPACT - INSTALL/REWORK DRYWALL FRAMING AROUND DOORS - FAB120103A,Complete,2025-09-24 08:00,2025-09-25 17:00,2025-09-24 08:00,2025-09-25 17:00
FAB120103A-03,INSTALL DOOR FRAMES - FAB120103A,Complete,2025-09-25 08:00,2025-09-25 17:00,2025-09-25 08:00,2025-09-25 17:00
FAB120103A-04,INSTALL DOOR & HARDWARE - FAB120103A,Not Started,2025-11-21 08:00,2025-11-27 17:00,,
FAB120103A-05,PAINT & PROTECT DOORS & FRAMES -  FAB120103A,Not Started,2026-02-16 08:00,2026-02-19 15:00,,
FAB126105A-01,IMPACT - INSTALL/REWORK DRYWALL FRAMING AROUND DOORS - FAB126105A,Complete,2025-05-01 08:00,2025-05-02 17:00,2025-05-01 08:00,2025-05-02 17:00
FAB126105A-03,INSTALL DOOR FRAMES - FAB126105A,Complete,2025-08-12 13:00,2025-08-13 12:00,2025-05-04 00:00,2025-05-05 12:00
FAB126105A-04,INSTALL DOOR & HARDWARE - FAB126105A,Active,2025-11-18 08:00,2025-11-24 17:00,2025-11-18 08:00,
FAB126105A-05,PAINT & PROTECT DOORS & FRAMES -  FAB126105A,Not Started,2026-02-16 08:00,2026-02-19 15:00,,
FAB126109A-01,IMPACT - INSTALL/REWORK DRYWALL FRAMING AROUND DOORS - FAB126109A,Complete,2025-05-08 08:00,2025-05-16 17:00,2025-05-08 08:00,2025-05-19 17:00
FAB126109A-03,INSTALL DOOR FRAMES - FAB126109A,Complete,2025-05-19 08:00,2025-05-19 17:00,2025-05-19 08:00,2025-05-19 17:00
FAB126109A-04,INSTALL DOOR & HARDWARE - FAB126109A,Active,2025-06-06 08:00,2025-06-12 17:00,2025-06-06 08:00,
FAB126109A-05,PAINT & PROTECT DOORS & FRAMES - FAB126109A,Not Started,2026-02-16 08:00,2026-02-19 15:00,,
FAB126308A-03,INSTALL DOOR FRAME BY SECAI - FAB126308A HANDED OVER 06/27,Complete,2025-06-27 08:00,2025-07-10 17:00,2025-06-28 08:00,2025-10-30 17:00
FAB126308A-04,INSTALL DOOR & HARDWARE - FAB126308A,Active,2025-11-12 08:00,2025-11-18 17:00,2025-11-12 08:00,
FAB126308A-05,PAINT & PROTECT DOORS & FRAMES - FAB126308A,Not Started,2026-02-16 08:00,2026-02-19 17:00,,
FAB126308A-13,DOOR FRAME HANDED OVER TO SECAI ON 06/27- FAB126308A,Complete,2025-06-27 08:00,2025-06-27 17:00,2025-06-27 08:00,2025-06-27 16:00
FAB126401A-01,IMPACT - INSTALL/REWORK DRYWALL FRAMING AROUND DOORS - FAB126401A,Complete,2025-07-09 08:00,2025-07-17 17:00,2025-07-09 08:00,2025-07-17 17:00
FAB126401A-03,INSTALL DOOR FRAMES - FAB126401A,Complete,2025-07-17 08:00,2025-07-17 17:00,2025-07-17 08:00,2025-07-17 17:00
FAB126401A-04,INSTALL DOOR & HARDWARE - FAB126401A,Active,2025-11-13 08:00,2025-11-19 17:00,2025-11-13 08:00,
FAB126401A-05,PAINT & PROTECT DOORS & FRAMES - FAB126401A,Not Started,2026-02-16 08:00,2026-02-19 15:00,,
FAB126401B-01,IMPACT - INSTALL/REWORK DRYWALL FRAMING AROUND DOORS - FAB126401B,Complete,2025-07-21 08:00,2025-07-29 17:00,2025-07-21 08:00,2025-07-29 17:00
FAB126401B-03,INSTALL DOOR FRAMES - FAB126401B,Complete,2025-07-29 08:00,2025-07-29 17:00,2025-07-29 08:00,2025-07-29 17:00
FAB126401B-04,INSTALL DOOR & HARDWARE - FAB126401B,Not Started,2025-11-21 08:00,2025-11-27 17:00,,
FAB126401B-05,PAINT & PROTECT DOORS & FRAMES - FAB126401B,Not Started,2026-02-16 08:00,2026-02-19 15:00,,
FAB120104A-03,INSTALL DOOR FRAMES - FAB120104A,Complete,2025-10-27 08:00,2025-10-27 17:00,2025-10-27 08:00,2025-10-27 17:00
FAB120104A-04,INSTALL DOOR & HARDWARE - FAB120104A,Not Started,2025-11-21 08:00,2025-11-27 17:00,,
FAB120104A-05,PAINT & PROTECT DOORS & FRAMES -  FAB120104A,Not Started,2026-02-16 08:00,2026-02-19 15:00,,
FAB124102A-01,SECAI TURNOVER FOR ACELERATION - INSTALL/REWORK DRYWALL FRAMING AROUND DOORS - FAB124102A,Complete,2025-07-17 08:00,2025-07-25 17:00,2025-06-16 08:00,2025-06-16 16:00
FAB124102A-03,INSTALL DOOR FRAMES - FAB124102A,Complete,2025-10-17 08:00,2025-10-17 17:00,2025-10-17 08:00,2025-10-17 17:00
FAB124102A-04,INSTALL DOOR & HARDWARE - FAB124102A,Not Started,2025-11-21 08:00,2025-11-27 17:00,,
FAB124102A-05,PAINT & PROTECT DOORS & FRAMES - FAB124102A,Not Started,2026-02-16 08:00,2026-02-19 15:00,,
FAB124102B-03,INSTALL DOOR FRAMES - FAB124102B,Complete,2025-10-22 08:00,2025-10-22 17:00,2025-10-22 08:00,2025-10-22 17:00
FAB124102B-04,INSTALL DOOR & HARDWARE - FAB124102B,Not Started,2025-11-28 08:00,2025-12-04 17:00,,
FAB124102B-05,PAINT & PROTECT DOORS & FRAMES - FAB124102B,Not Started,2026-02-16 08:00,2026-02-19 15:00,,
FAB124102B-11,IMPACT - PROCUREMENT - REORDERED DOORS (JAMB DEPTH ISSUE),Complete,2025-06-20 08:00,2025-08-14 17:00,2025-06-20 08:00,2025-06-30 17:00
TR-FAB126108A-01,IMPACT - INSTALL/REWORK DRYWALL FRAMING AROUND DOORS - TR - FAB126108A,Complete,2025-05-12 08:00,2025-05-20 17:00,2025-05-12 08:00,2025-05-16 17:00
TR-FAB126108A-03,INSTALL DOOR FRAMES - TR - FAB126108A,Complete,2025-07-31 13:00,2025-08-01 12:00,2025-05-15 00:00,2025-05-16 16:00
TR-FAB126108A-04,INSTALL DOOR & HARDWARE - TR - FAB126108A,Active,2025-10-08 08:00,2025-10-14 17:00,2025-10-08 08:00,
TR-FAB126108A-05,PAINT & PROTECT DOORS & FRAMES - TR - FAB126108A,Not Started,2026-02-16 08:00,2026-02-19 15:00,,
TR-FAB126304A-01,INSTALL DOOR FRAMES - TR - FAB126304A,Complete,2025-11-07 08:00,2025-11-07 17:00,2025-11-07 08:00,2025-11-07 17:00
TR-FAB126304A-04,INSTALL DOOR & HARDWARE - TR - FAB126304A,Active,2025-11-10 08:00,2025-11-14 17:00,2025-11-10 08:00,
TR-FAB126304A-05,PAINT & PROTECT DOORS & FRAMES - TR - FAB126304A,Not Started,2026-02-16 08:00,2026-02-19 15:00,,
FAB124101A-01,IMPACT - INSTALL/REWORK DRYWALL FRAMING AROUND DOORS - FAB124101A,Complete,2025-10-08 08:00,2025-10-14 17:00,2025-10-08 08:00,2025-10-14 17:00
FAB124101A-03,INSTALL DOOR FRAMES - FAB124101A,Complete,2025-10-17 08:00,2025-10-17 08:00,2025-10-17 08:00,2025-10-17 08:00
FAB124101A-04,INSTALL DOOR & HARDWARE - FAB124101A,Not Started,2025-11-28 08:00,2025-12-04 17:00,,
FAB124101A-05,PAINT & PROTECT DOORS & FRAMES - FAB124101A,Not Started,2026-02-16 08:00,2026-02-19 15:00,,
FAB124101B-01,IMPACT - INSTALL/REWORK DRYWALL FRAMING AROUND DOORS - FAB124101B,Complete,2025-10-08 08:00,2025-10-14 17:00,2025-10-08 08:00,2025-10-14 17:00
FAB124101B-03,INSTALL DOOR FRAMES - FAB124101B,Complete,2025-10-17 08:00,2025-10-17 17:00,2025-10-17 08:00,2025-10-17 17:00
FAB124101B-04,INSTALL DOOR & HARDWARE - FAB124101B,Not Started,2025-11-28 08:00,2025-12-04 17:00,,
FAB124101B-05,PAINT & PROTECT DOORS & FRAMES - FAB124101B,Not Started,2026-02-16 08:00,2026-02-19 15:00,,
FAB124101A-11,IMPACT - PROCUREMENT - REORDERED DOORS (JAMB DEPTH ISSUE),Complete,2025-06-09 08:00,2025-08-12 17:00,2025-06-09 08:00,2025-07-14 17:00
FAB124101B-11,IMPACT - PROCUREMENT - REORDERED DOORS (JAMB DEPTH ISSUE),Complete,2025-06-09 08:00,2025-08-12 17:00,2025-06-09 08:00,2025-07-14 17:00
FAB126301A-01,IMPACT - INSTALL/REWORK DRYWALL FRAMING AROUND DOORS - FAB126301A,Complete,2025-04-24 08:00,2025-05-02 17:00,2025-04-24 08:00,2025-05-02 17:00
FAB126301A-03,INSTALL DOOR FRAMES - FAB126301A,Complete,2025-08-19 13:00,2025-08-20 12:00,2025-05-02 00:00,2025-05-02 16:00
FAB126301A-04,INSTALL DOOR & HARDWARE - FAB126301A,Active,2025-09-04 08:00,2025-09-10 17:00,2025-09-04 08:00,
FAB126301A-05,PAINT & PROTECT DOORS & FRAMES -  FAB126301A,Not Started,2026-02-16 08:00,2026-02-19 15:00,,
FAB126302A-01,IMPACT - INSTALL/REWORK DRYWALL FRAMING AROUND DOORS - FAB126302A,Complete,2025-02-17 08:00,2025-02-25 17:00,2025-02-17 08:00,2025-02-25 17:00
FAB126302A-03,INSTALL DOOR FRAMES - FAB126302A,Complete,2025-02-25 08:00,2025-02-25 17:00,2025-02-25 08:00,2025-02-25 17:00
FAB126302A-04,INSTALL DOOR & HARDWARE - FAB126302A,Active,2025-09-04 08:00,2025-09-10 17:00,2025-09-04 08:00,
FAB126302A-05,PAINT & PROTECT DOORS & FRAMES -  FAB126302A,Not Started,2026-02-16 08:00,2026-02-19 15:00,,
FAB120501A-01,IMPACT - INSTALL/REWORK DRYWALL FRAMING AROUND DOORS - FAB120501A,Complete,2025-05-16 08:00,2025-05-26 17:00,2025-05-16 08:00,2025-05-21 17:00
FAB120501A-03,INSTALL DOOR FRAMES - FAB120501A,Complete,2025-07-22 13:00,2025-07-23 12:00,2025-05-20 00:00,2025-05-21 16:00
FAB120501A-04,INSTALL DOOR & HARDWARE - FAB120501A,Not Started,2025-11-28 08:00,2025-12-04 17:00,,
FAB120501A-05,PAINT & PROTECT DOORS & FRAMES - FAB120501A,Not Started,2026-02-16 08:00,2026-02-19 15:00,,
FAB120501B-01,IMPACT - INSTALL/REWORK DRYWALL FRAMING AROUND DOORS - FAB120501B,Complete,2025-05-05 08:00,2025-05-13 17:00,2025-05-05 08:00,2025-05-12 17:00
FAB120501B-03,INSTALL DOOR FRAMES - FAB120501B,Complete,2025-07-22 13:00,2025-07-23 12:00,2025-05-11 00:00,2025-05-12 16:00
FAB120501B-04,INSTALL DOOR & HARDWARE - FAB120501B,Active,2025-09-09 08:00,2025-09-15 17:00,2025-09-09 08:00,
FAB120501B-05,PAINT & PROTECT DOORS & FRAMES -  FAB120501B,Not Started,2026-02-16 08:00,2026-02-19 15:00,,
FAB120508A-01,IMPACT - INSTALL/REWORK DRYWALL FRAMING AROUND DOORS - FAB120508A,Complete,2025-04-25 08:00,2025-05-05 17:00,2025-04-25 08:00,2025-05-02 17:00
FAB120508A-03,INSTALL DOOR FRAMES - FAB120508A,Complete,2025-06-26 13:00,2025-06-27 12:00,2025-05-01 00:00,2025-05-02 16:00
FAB120508A-04,INSTALL DOOR & HARDWARE - FAB120508A,Active,2025-07-10 08:00,2025-07-16 17:00,2025-07-10 08:00,
FAB120508A-05,PAINT & PROTECT DOORS & FRAMES - FAB120508A,Not Started,2026-02-16 08:00,2026-02-19 15:00,,
FAB120102A-01,IMPACT - INSTALL/REWORK DRYWALL FRAMING AROUND DOORS - FAB120102A,Complete,2025-04-07 08:00,2025-04-15 17:00,2025-04-07 08:00,2025-04-14 17:00
FAB120102A-03,INSTALL DOOR FRAMES - FAB120102A,Complete,2025-08-21 13:00,2025-08-22 12:00,2025-04-14 00:00,2025-04-14 16:00
FAB120102A-04,INSTALL DOOR & HARDWARE - FAB120102A,Active,2025-10-07 08:00,2025-10-13 17:00,2025-10-07 08:00,
FAB120102A-05,PAINT & PROTECT DOORS & FRAMES -  FAB120102A,Not Started,2026-02-16 08:00,2026-02-19 15:00,,
FAB120506D-01,IMPACT - INSTALL/REWORK DRYWALL FRAMING AROUND DOORS - FAB120506D,Complete,2025-02-19 08:00,2025-02-27 17:00,2025-02-19 00:00,2025-02-27 17:00
FAB120506D-03,INSTALL DOOR FRAMES - FAB120506D,Complete,2025-07-25 13:00,2025-07-28 12:00,2025-02-27 00:00,2025-02-27 16:00
FAB120506D-04,INSTALL DOOR & HARDWARE - FAB120506D,Active,2025-11-05 08:00,2025-11-11 17:00,2025-11-05 08:00,
FAB120506D-05,PAINT & PROTECT DOORS & FRAMES -  FAB120506D,Not Started,2026-02-16 08:00,2026-02-19 17:00,,
FAB120506E-01,IMPACT - INSTALL/REWORK DRYWALL FRAMING AROUND DOORS - FAB120506E,Complete,2025-02-12 08:00,2025-02-20 17:00,2025-02-12 08:00,2025-02-20 17:00
FAB120506E-03,INSTALL DOOR FRAMES - FAB120506E,Complete,2025-07-25 13:00,2025-07-28 12:00,2025-02-20 00:00,2025-02-20 16:00
FAB120506E-04,INSTALL DOOR & HARDWARE - FAB120506E,Active,2025-10-31 08:00,2025-11-06 17:00,2025-10-31 08:00,
FAB120506E-05,PAINT & PROTECT DOORS & FRAMES -  FAB120506E,Not Started,2026-02-16 08:00,2026-02-19 17:00,,
FAB120506A-00,IMPACT - SECAI SCAFFOLD IMPEDING DOOR FRAME INSTALLATION - FAB120506A,Complete,2025-06-20 08:00,2025-06-26 17:00,2025-06-20 08:00,2025-10-03 17:00
 FAB120506A-04,INSTALL DOOR & HARDWARE - FAB120506A,Active,2025-11-05 08:00,2025-11-11 17:00,2025-11-05 08:00,
 FAB120506A-05,PAINT & PROTECT DOORS & FRAMES -  FAB120506A,Not Started,2026-02-16 08:00,2026-02-19 17:00,,
FAB120506B-00,IMPACT - SECAI SCAFFOLD IMPEDING DOOR FRAME INSTALLATION - FAB120506B,Complete,2025-06-20 08:00,2025-06-26 17:00,2025-06-20 08:00,2025-10-03 17:00
 FAB120506B-04,INSTALL DOOR & HARDWARE - FAB120506B,Active,2025-11-14 08:00,2025-11-20 17:00,2025-11-14 08:00,
 FAB120506B-05,PAINT & PROTECT DOORS & FRAMES -  FAB120506B,Not Started,2026-02-16 08:00,2026-02-19 17:00,,
FAB120506C-00,IMPACT - SECAI SCAFFOLD IMPEDING DOOR FRAME INSTALLATION - FAB120506C,Complete,2025-06-20 08:00,2025-06-26 17:00,2025-06-20 08:00,2025-10-03 17:00
 FAB120506C-04,INSTALL DOOR & HARDWARE - FAB120506C,Active,2025-11-05 08:00,2025-11-11 17:00,2025-11-05 08:00,
 FAB120506C-05,PAINT & PROTECT DOORS & FRAMES - FAB120506C,Not Started,2026-02-16 08:00,2026-02-19 17:00,,
FAB120506A-03,INSTALL DOOR FRAMES - FAB120506A,Complete,2025-10-07 08:00,2025-10-07 17:00,2025-10-07 08:00,2025-10-07 17:00
FAB120506B-03,INSTALL DOOR FRAMES - FAB120506B,Complete,2025-10-06 08:00,2025-10-06 17:00,2025-10-06 08:00,2025-10-06 17:00
FAB120506C-03,INSTALL DOOR FRAMES - FAB120506C,Complete,2025-10-07 08:00,2025-10-07 17:00,2025-10-07 08:00,2025-10-07 17:00
FAB120401A-01,INSTALL DOOR FRAME BY SECAI - FAB120401A HANDED OVER 06/27,Complete,2025-06-30 08:00,2025-07-11 17:00,2025-06-28 08:00,2025-09-16 17:00
FAB120401A-04,INSTALL DOOR & HARDWARE - FAB120401A,Active,2025-10-24 08:00,2025-10-30 17:00,2025-10-24 08:00,
FAB120401A-05,PAINT & PROTECT DOORS & FRAMES -  FAB120401A,Not Started,2026-02-16 08:00,2026-02-19 15:00,,
FAB120401B-04,INSTALL DOOR & HARDWARE - FAB120401B,Not Started,2025-12-01 08:00,2025-12-05 17:00,,
FAB120401B-05,PAINT & PROTECT DOORS & FRAMES - FAB120401B,Not Started,2026-02-16 08:00,2026-02-19 15:00,,
FAB120401C-01,INSTALL DOOR FRAME BY SECAI - FAB120401C HANDED OVER 06/27,Complete,2025-06-27 08:00,2025-07-10 17:00,2025-06-28 08:00,2025-11-05 17:00
FAB120401C-04,INSTALL DOOR & HARDWARE - FAB120401C,Active,2025-11-06 08:00,2025-11-12 17:00,2025-11-06 08:00,
FAB120401C-05,PAINT & PROTECT DOORS & FRAMES -  FAB120401C,Not Started,2026-02-16 08:00,2026-02-19 15:00,,
FAB120401D-01,SECAI - INSTALL DOOR FRAMES - FAB120401D,Not Started,2025-12-01 08:00,2025-12-01 17:00,,
FAB120401D-04,INSTALL DOOR & HARDWARE - FAB120401D,Not Started,2025-12-02 08:00,2025-12-08 17:00,,
FAB120401D-05,PAINT & PROTECT DOORS & FRAMES -  FAB120401D,Not Started,2026-02-16 08:00,2026-02-19 15:00,,
FAB120401E-01,IMPACT - INSTALL/REWORK DRYWALL FRAMING AROUND DOORS - FAB120401E,Complete,2025-06-25 08:00,2025-06-25 17:00,2025-06-12 08:00,2025-06-20 16:00
FAB120401E-03,INSTALL DOOR FRAME & INSPECT - FAB120401E,Complete,2025-07-02 08:00,2025-07-02 17:00,2025-06-20 08:00,2025-06-20 16:00
FAB120401E-04,INSTALL DOOR & HARDWARE - FAB120401E,Active,2025-06-20 08:00,2025-06-26 17:00,2025-06-20 08:00,
FAB120401E-05,PAINT & PROTECT DOORS & FRAMES -  FAB120401E,Not Started,2026-02-16 08:00,2026-02-19 15:00,,
FAB120401F-01,INSTALL DOOR FRAME BY SECAI - FAB120401F - HANDED OVER ON 10/14,Complete,2025-10-14 08:00,2025-10-14 17:00,2025-10-14 08:00,2025-11-05 17:00
FAB120401F-04,INSTALL DOOR & HARDWARE - FAB120401F,Active,2025-11-06 08:00,2025-11-12 17:00,2025-11-06 08:00,
FAB120401F-05,PAINT & PROTECT DOORS & FRAMES -  FAB120401F,Not Started,2026-02-16 08:00,2026-02-19 15:00,,
FAB120401G-70,DOOR FRAME HANDED OVER TO SECAI ON 10/01 - FAB120401G,Complete,2025-10-01 08:00,2025-10-01 17:00,2025-10-01 08:00,2025-10-01 17:00
FAB120401G-03,INSTALL DOOR FRAME BY SECAI - FAB120401G - HANDED OVER ON 10/01,Active,2025-10-01 08:00,2025-10-01 17:00,2025-10-01 08:00,
FAB120401G-04,INSTALL DOOR & HARDWARE - FAB120401G,Not Started,2025-12-01 08:00,2025-12-05 17:00,,
FAB120401G-05,PAINT & PROTECT DOORS & FRAMES -  FAB120401G,Not Started,2026-02-16 08:00,2026-02-19 15:00,,
FAB120401D-11,IMPACT - INTERNAL - UNASSEMBLED TRANSOM FRAMES FAB120401D,Active,2025-06-06 08:00,2025-07-21 10:00,2025-06-06 08:00,
FAB120401F-11,IMPACT - INTERNAL - UNASSEMBLED TRANSOM FRAMES FAB120401F - DOOR FRAME HANDED OVER TO SECAI ON 10/14,Complete,2025-06-06 08:00,2025-07-21 10:00,2025-06-06 08:00,2025-10-14 17:00
FAB120401G-11,"IMPACT - INTERNAL - ELEVATOR WORK, SCAFFOLD IN THE WAY - DOOR FRAME HANDED OVER TO SECAI ON 10/01",Complete,2025-06-06 08:00,2025-06-16 10:00,2025-06-06 08:00,2025-10-01 17:00
FAB120401G-21,PROCUREMENT - RE-ORDER - DOOR FRAMES - FAB120401G,Complete,2025-06-16 08:00,2025-08-01 17:00,2025-06-05 08:00,2025-07-14 17:00
FAB120303F-01,IMPACT - INSTALL/REWORK DRYWALL FRAMING AROUND DOORS - FAB120303F HANDED OVER TO SECAI ON 08/29,Complete,2025-08-29 08:00,2025-08-29 17:00,2025-08-29 08:00,2025-08-29 17:00
FAB120303F-03,INSTALL DOOR FRAME BY SECAI - FAB120303F HANDED OVER ON 08/29,Complete,2025-08-29 08:00,2025-08-29 17:00,2025-08-29 08:00,2025-11-06 17:00
FAB120303F-04,INSTALL DOOR & HARDWARE - FAB120303F,Active,2025-11-07 08:00,2025-11-13 17:00,2025-11-07 08:00,
FAB120303F-05,PAINT & PROTECT DOORS & FRAMES -  FAB120303F,Not Started,2026-02-16 08:00,2026-02-19 15:00,,
FAB120303H-01,IMPACT - INSTALL/REWORK DRYWALL FRAMING AROUND DOORS - FAB120303FH - P1,Complete,2025-06-27 08:00,2025-06-27 17:00,2025-06-27 08:00,2025-06-27 16:00
FAB120303H-04,INSTALL DOOR & HARDWARE - FAB120303H - P1,Active,2025-06-30 08:00,2025-07-04 17:00,2025-06-30 08:00,
FAB120303H-05,PAINT & PROTECT DOORS & FRAMES -  FAB120303H,Not Started,2026-02-16 08:00,2026-02-19 17:00,,
FAB120303H-03,INSTALL DOOR FRAMES - FAB120303H,Complete,2025-06-27 08:00,2025-06-27 17:00,2025-06-30 08:00,2025-06-30 16:00
FAB120401C-13,DOOR FRAME HANDED OVER TO SECAI ON 06/27 - FAB120401C,Complete,2025-06-27 08:00,2025-06-27 17:00,2025-06-27 08:00,2025-06-27 16:00
FAB120401A-13,DOOR FRAME HANDED OVER TO SECAI ON 06/27 - FAB120401A,Complete,2025-06-27 08:00,2025-06-27 17:00,2025-06-27 08:00,2025-06-27 16:00
FAB126512A-03,INSTALL DOOR FRAMES - FAB126512A,Complete,2025-10-23 08:00,2025-10-23 17:00,2025-10-23 08:00,2025-10-23 17:00
FAB126512A-04,INSTALL DOOR & HARDWARE - FAB126512A,Active,2025-10-28 08:00,2025-11-03 17:00,2025-10-28 08:00,
FAB126512A-05,PAINT & PROTECT DOORS & FRAMES - FAB126512A,Not Started,2026-02-16 08:00,2026-02-19 15:00,,
FAB120510A-01,SECAI - INSTALL DOOR FRAMES - FAB120510A,Complete,2025-07-11 10:00,2025-07-22 10:00,2025-07-09 10:00,2025-07-09 10:00
FAB120510A-04,INSTALL DOOR & HARDWARE - FAB120510A,Active,2025-07-09 08:00,2025-07-15 17:00,2025-07-09 08:00,
FAB120510A-05,PAINT & PROTECT DOORS & FRAMES - FAB120510A,Not Started,2026-02-16 08:00,2026-02-19 15:00,,
FAB120511A-01,DOOR FRAME HANDED OVER TO SECAI ON 10/14 - FAB120511A,Complete,2025-10-14 08:00,2025-10-14 17:00,2025-10-14 08:00,2025-10-14 17:00
FAB120511A-03,INSTALL DOOR FRAME BY SECAI - FAB120511A - HANDED OVER TO SECAI ON 10/14,Active,2025-10-14 08:00,2025-10-14 17:00,2025-10-14 08:00,
FAB120511A-04,INSTALL DOOR & HARDWARE - FAB120511A,Not Started,2025-12-01 08:00,2025-12-05 17:00,,
FAB120511A-05,PAINT & PROTECT DOORS & FRAMES -  FAB120511A,Not Started,2026-02-16 08:00,2026-02-19 15:00,,
TR-FAB120307A-01,IMPACT - INSTALL/REWORK DRYWALL FRAMING AROUND DOORS - TR - FAB120307A,Complete,2025-05-21 08:00,2025-05-29 17:00,2025-05-21 08:00,2025-05-29 17:00
TR-FAB120307A-03,INSTALL DOOR FRAMES - TR - FAB120307A,Complete,2025-05-29 08:00,2025-05-29 17:00,2025-05-29 08:00,2025-05-29 17:00
TR-FAB120307A-04,INSTALL DOOR & HARDWARE - TR - FAB120307A,Active,2025-11-13 08:00,2025-11-19 17:00,2025-11-13 08:00,
TR-FAB120307A-05,PAINT & PROTECT DOORS & FRAMES - TR - FAB120307A,Not Started,2026-02-16 08:00,2026-02-19 15:00,,
FAB120314A-01,IMPACT - INSTALL/REWORK DRYWALL FRAMING AROUND DOORS - FAB120314A,Complete,2025-04-01 08:00,2025-04-09 17:00,2025-04-01 08:00,2025-04-09 17:00
FAB120314A-03,INSTALL DOOR FRAMES - FAB120314A,Complete,2025-07-21 13:00,2025-07-22 12:00,2025-04-09 00:00,2025-04-09 16:00
FAB120314A-04,INSTALL DOOR & HARDWARE - FAB120314A,Not Started,2025-11-28 08:00,2025-12-04 17:00,,
FAB120314A-05,PAINT & PROTECT DOORS & FRAMES - FAB120314A,Not Started,2026-02-16 08:00,2026-02-19 15:00,,
FAB120314B-01,IMPACT - INSTALL/REWORK DRYWALL FRAMING AROUND DOORS - FAB120314B,Complete,2025-02-13 08:00,2025-02-21 17:00,2025-02-13 08:00,2025-02-21 17:00
FAB120314B-03,INSTALL DOOR FRAMES - FAB120314B,Complete,2025-07-21 13:00,2025-07-22 12:00,2025-02-21 00:00,2025-02-21 16:00
FAB120314B-04,INSTALL DOOR & HARDWARE - FAB120314B,Not Started,2025-11-28 08:00,2025-12-04 17:00,,
FAB120314B-05,PAINT & PROTECT DOORS & FRAMES - FAB120314B,Not Started,2026-02-16 08:00,2026-02-19 15:00,,
FAB120201A-01,IMPACT - INSTALL/REWORK DRYWALL FRAMING AROUND DOORS - FAB120201A,Complete,2025-02-10 08:00,2025-02-18 17:00,2025-02-10 08:00,2025-02-18 17:00
FAB120201A-03,INSTALL DOOR FRAMES - FAB120201A,Complete,2025-07-10 13:00,2025-07-11 12:00,2025-02-18 00:00,2025-02-18 16:00
FAB120201A-04,INSTALL DOOR & HARDWARE - FAB120201A,Active,2025-11-13 08:00,2025-11-19 17:00,2025-11-13 08:00,
FAB120201A-05,PAINT & PROTECT DOORS & FRAMES - FAB120201A,Not Started,2026-02-16 08:00,2026-02-19 15:00,,
FAB120108A-13,DOOR FRAME HANDED OVER TO SECAI - FAB120108A,Complete,2025-06-27 08:00,2025-06-27 17:00,2025-06-27 08:00,2025-06-27 17:00
FAB120108A-04,INSTALL DOOR & HARDWARE - FAB120108A,Not Started,2025-11-28 08:00,2025-12-04 17:00,,
FAB120108A-05,PAINT & PROTECT DOORS & FRAMES - FAB120108A,Not Started,2026-02-16 08:00,2026-02-19 15:00,,
FAB120108B-13,DOOR FRAME HANDED OVER TO SECAI ON 06/27 - FAB120108B,Complete,2025-06-27 08:00,2025-06-27 17:00,2025-06-27 08:00,2025-06-27 08:00
FAB120108B-03,INSTALL DOOR FRAME BY SECAI - FAB120108B HANDED OVER ON 06/27,Complete,2025-06-27 08:00,2025-07-10 17:00,2025-06-28 08:00,2025-09-15 17:00
FAB120108B-04,INSTALL DOOR & HARDWARE - FAB120108B,Active,2025-10-27 08:00,2025-10-31 17:00,2025-10-27 08:00,
FAB120108B-05,PAINT & PROTECT DOORS & FRAMES - FAB120108B,Not Started,2026-02-16 08:00,2026-02-19 15:00,,
FAB120108D-75,DOOR FRAME HANDED OVER TO SECAI ON 10/03 - FAB120108D,Complete,2025-10-03 08:00,2025-10-03 17:00,2025-10-03 08:00,2025-10-03 17:00
FAB120108D-03,INSTALL DOOR FRAME BY SECAI - FAB120108D - HANDED OVER ON 10/03,Complete,2025-10-02 08:00,2025-10-02 17:00,2025-10-02 08:00,2025-10-02 17:00
FAB120108D-04,INSTALL DOOR & HARDWARE - FAB120108D,Not Started,2025-12-01 08:00,2025-12-05 17:00,,
FAB120108D-05,PAINT & PROTECT DOORS & FRAMES - FAB120108D,Not Started,2026-02-16 08:00,2026-02-19 15:00,,
FAB120108E-13,DOOR FRAME HANDED OVER TO SECAI ON 08/29 - FAB120108E,Complete,2025-08-29 08:00,2025-08-29 17:00,2025-08-29 08:00,2025-08-29 17:00
FAB120108E-04,INSTALL DOOR & HARDWARE - FAB120108E,Not Started,2025-12-01 08:00,2025-12-05 17:00,,
FAB120108E-05,PAINT & PROTECT DOORS & FRAMES - FAB120108E,Not Started,2026-02-16 08:00,2026-02-19 15:00,,
FAB120108D-11,IMPACT - PROCUREMENT - REORDERED DOOR FRAME (JAMB DEPTH ISSUE) FAB120108D,Complete,2025-06-20 08:00,2025-08-14 17:00,2025-06-20 08:00,2025-06-30 17:00
FAB120108E-11,IMPACT - PROCUREMENT - REORDERED DOOR FRAME (JAMB DEPTH ISSUE) FAB120108E,Complete,2025-06-20 08:00,2025-08-14 17:00,2025-06-20 08:00,2025-06-30 17:00
FAB120108A-21,IMPACT - RFI 9489 HOLLOWMETAL FRAME CLASH WITH GOALPOST BASE PLATES,Complete,2025-06-20 08:00,2025-06-30 10:00,2024-11-04 08:00,2025-06-27 17:00
FAB120113A-01,IMPACT - INSTALL/REWORK DRYWALL FRAMING AROUND DOORS - FAB120113A HANDED OVER TO SECAI 09/05,Complete,2025-09-05 08:00,2025-09-08 17:00,2025-09-05 08:00,2025-09-05 17:00
FAB120113A-03,INSTALL DOOR FRAME BY SECAI - FAB120113A HANDED OVER ON 09/05,Active,2025-09-05 08:00,2025-09-05 17:00,2025-09-05 08:00,
FAB120113A-04,INSTALL DOOR & HARDWARE - FAB120113A,Not Started,2025-12-01 08:00,2025-12-05 17:00,,
FAB120113A-05,PAINT & PROTECT DOORS & FRAMES - FAB120113A,Not Started,2026-02-16 08:00,2026-02-19 15:00,,
FAB120113B-01,IMPACT - INSTALL/REWORK DRYWALL FRAMING AROUND DOORS - FAB120113B,Complete,2025-03-21 08:00,2025-03-31 17:00,2025-03-21 08:00,2025-03-31 17:00
FAB120113B-03,INSTALL DOOR FRAMES - FAB120113B,Complete,2025-09-03 13:00,2025-09-04 12:00,2025-03-31 00:00,2025-03-31 16:00
FAB120113B-04,INSTALL DOOR & HARDWARE - FAB120113B,Not Started,2025-11-21 08:00,2025-11-27 17:00,,
FAB120113B-05,PAINT & PROTECT DOORS & FRAMES - FAB120113B,Not Started,2026-02-16 08:00,2026-02-19 15:00,,
FAB126503A-01,INSTALL/REWORK DRYWALL FRAMING AROUND DOORS - FAB126503A,Complete,2025-07-04 08:00,2025-07-14 17:00,2025-07-04 08:00,2025-07-14 17:00
FAB126503A-03,INSTALL DOOR FRAMES - FAB126503A,Complete,2025-07-15 08:00,2025-07-15 17:00,2025-07-15 08:00,2025-07-15 17:00
FAB126503A-04,INSTALL DOOR & HARDWARE - FAB126503A,Active,2025-07-16 08:00,2025-07-22 17:00,2025-07-16 08:00,
FAB126503A-05,PAINT & PROTECT DOORS & FRAMES - FAB126503A,Not Started,2026-02-16 08:00,2026-02-17 17:00,,
FAB126503B-01,INSTALL/REWORK DRYWALL FRAMING AROUND DOORS - FAB126503B,Complete,2025-06-18 08:00,2025-06-26 17:00,2025-06-18 08:00,2025-06-26 17:00
FAB126503B-03,INSTALL DOOR FRAMES - FAB126503B,Complete,2025-06-26 08:00,2025-06-26 17:00,2025-06-26 08:00,2025-06-26 17:00
FAB126503B-04,INSTALL DOOR & HARDWARE - FAB126503B,Active,2025-11-13 08:00,2025-11-19 17:00,2025-11-13 08:00,
FAB126503B-05,PAINT & PROTECT DOORS & FRAMES - FAB126503B,Not Started,2026-02-16 08:00,2026-02-19 15:00,,
FAB120509A-01,IMPACT - INSTALL/REWORK DRYWALL FRAMING AROUND DOORS - FAB120509A,Complete,2025-02-10 08:00,2025-02-18 17:00,2025-02-10 08:00,2025-02-18 17:00
FAB120509A-03,INSTALL DOOR FRAMES - FAB120509A,Complete,2025-09-04 13:00,2025-09-05 12:00,2025-02-18 00:00,2025-02-18 16:00
FAB120509A-04,INSTALL DOOR & HARDWARE - FAB120509A,Active,2025-11-07 08:00,2025-11-13 17:00,2025-11-07 08:00,
FAB120509A-05,PAINT & PROTECT DOORS & FRAMES -  FAB120509A,Not Started,2026-02-16 08:00,2026-02-19 15:00,,
FAB120403A-01,IMPACT - INSTALL/REWORK DRYWALL FRAMING AROUND DOORS  - FAB120403A,Complete,2025-05-19 08:00,2025-05-27 17:00,2025-05-19 08:00,2025-05-22 17:00
FAB120403A-03,INSTALL DOOR FRAMES - FAB120403A,Complete,2025-05-22 08:00,2025-05-22 17:00,2025-05-22 08:00,2025-05-22 17:00
FAB120403A-04,INSTALL DOOR & HARDWARE - FAB120403A,Active,2025-10-24 08:00,2025-10-30 17:00,2025-10-24 08:00,
FAB120403A-05,PAINT & PROTECT DOORS & FRAMES -  FAB120403A,Not Started,2026-02-16 08:00,2026-02-19 15:00,,
FAB120304A-01,IMPACT - INSTALL/REWORK DRYWALL FRAMING AROUND DOORS - FAB120304A,Complete,2025-02-11 08:00,2025-02-19 17:00,2025-02-11 08:00,2025-02-19 17:00
FAB120304A-03,INSTALL DOOR FRAMES - FAB120304A,Complete,2025-08-08 13:00,2025-08-11 12:00,2025-02-19 00:00,2025-02-19 16:00
FAB120304A-04,INSTALL DOOR & HARDWARE - FAB120304A,Active,2025-09-26 08:00,2025-10-02 17:00,2025-09-26 08:00,
FAB120304A-05,PAINT & PROTECT DOORS & FRAMES - FAB120304A,Not Started,2026-02-16 08:00,2026-02-19 15:00,,
FAB120304B-01,IMPACT - INSTALL/REWORK DRYWALL FRAMING AROUND DOORS - FAB120304B,Complete,2025-02-11 08:00,2025-02-19 17:00,2025-02-11 08:00,2025-02-19 17:00
FAB120304B-03,INSTALL DOOR FRAMES - FAB120304B,Complete,2025-08-08 13:00,2025-08-11 12:00,2025-02-19 00:00,2025-02-19 16:00
FAB120304B-04,INSTALL DOOR & HARDWARE - FAB120304B,Active,2025-04-04 08:00,2025-04-10 17:00,2025-04-04 08:00,
FAB120304B-05,PAINT & PROTECT DOORS & FRAMES - FAB120304B,Not Started,2026-02-16 08:00,2026-02-19 15:00,,
FAB120315A-01,IMPACT - INSTALL/REWORK DRYWALL FRAMING AROUND DOORS - FAB120315A,Complete,2025-05-01 08:00,2025-05-09 17:00,2025-05-01 08:00,2025-05-08 17:00
FAB120315A-03,INSTALL DOOR FRAMES - FAB120315A,Complete,2025-07-23 13:00,2025-07-24 12:00,2025-05-08 00:00,2025-05-08 16:00
FAB120315A-04,INSTALL DOOR & HARDWARE - FAB120315A,Not Started,2025-11-28 08:00,2025-12-04 17:00,,
FAB120315A-05,PAINT & PROTECT DOORS & FRAMES - FAB120315A,Not Started,2026-02-16 08:00,2026-02-19 15:00,,
FAB120315B-01,IMPACT - INSTALL/REWORK DRYWALL FRAMING AROUND DOORS - FAB120315B,Complete,2025-04-01 08:00,2025-04-09 17:00,2025-03-26 08:00,2025-04-01 17:00
FAB120315B-03,INSTALL DOOR FRAMES - FAB120315B,Complete,2025-07-23 13:00,2025-07-24 12:00,2025-04-01 00:00,2025-04-01 16:00
FAB120315B-04,INSTALL DOOR & HARDWARE - FAB120315B,Active,2025-09-09 08:00,2025-09-15 17:00,2025-09-09 08:00,
FAB120315B-05,PAINT & PROTECT DOORS & FRAMES - FAB120315B,Not Started,2026-02-16 08:00,2026-02-17 17:00,,
TR-FAB120107A-01,IMPACT - INSTALL/REWORK DRYWALL FRAMING AROUND DOORS - TR - FAB120107A,Complete,2025-08-13 08:00,2025-08-13 08:00,2025-08-13 08:00,2025-08-13 08:00
TR-FAB120107A-03,INSTALL DOOR FRAMES - TR - FAB120107A,Complete,2025-08-13 08:00,2025-08-13 17:00,2025-08-13 08:00,2025-08-13 08:00
TR-FAB120107A-04,INSTALL DOOR & HARDWARE - TR - FAB120107A,Not Started,2025-11-21 08:00,2025-11-27 17:00,,
TR-FAB120107A-05,PAINT & PROTECT DOORS & FRAMES - TR - FAB120107A,Not Started,2026-02-16 08:00,2026-02-19 15:00,,
TR-FAB120107A-11,IMPACT - PROCUREMENT - Reordered doors (Wall Thickness and Door Swing Design Changes),Complete,2025-06-09 08:00,2025-08-04 17:00,2025-06-09 08:00,2025-07-14 17:00
FAB126502A-01,INSTALL/REWORK DRYWALL FRAMING AROUND DOORS - FAB126502A,Complete,2025-07-22 08:00,2025-07-30 17:00,2025-07-22 08:00,2025-07-30 17:00
FAB126502A-03,INSTALL DOOR FRAMES - FAB126502A,Complete,2025-07-30 13:00,2025-07-31 12:00,2025-07-30 13:00,2025-07-31 12:00
FAB126502A-04,INSTALL DOOR & HARDWARE - FAB126502A,Active,2025-05-19 08:00,2025-05-23 17:00,2025-05-19 08:00,
FAB126502A-05,PAINT & PROTECT DOORS & FRAMES - FAB126502A,Not Started,2026-02-16 08:00,2026-02-16 08:00,,
FAB126502C-01,INSTALL DOOR FRAMES - FAB126502C,Active,2025-08-29 08:00,2025-08-29 17:00,2025-08-29 08:00,
FAB126502C-04,INSTALL DOOR & HARDWARE - FAB126502C,Not Started,2025-11-21 08:00,2025-11-27 17:00,,
FAB126502C-05,PAINT & PROTECT DOORS & FRAMES - FAB126502C,Not Started,2026-02-16 08:00,2026-02-19 15:00,,
FAB126502D-03,INSTALL DOOR FRAME BY SECAI - FAB126502D HANDED OVER 06/27,Complete,2025-06-27 08:00,2025-07-10 17:00,2025-06-28 08:00,2025-09-17 17:00
FAB126502D-04,INSTALL DOOR & HARDWARE - FAB126502D,Active,2025-10-22 08:00,2025-10-28 17:00,2025-10-22 08:00,
FAB126502D-05,PAINT & PROTECT DOORS & FRAMES - FAB126502D,Not Started,2026-02-16 08:00,2026-02-19 15:00,,
FAB126502E-01,INSTALL/REWORK DRYWALL FRAMING AROUND DOORS - FAB126502E,Complete,2025-07-22 08:00,2025-07-30 17:00,2025-05-08 08:00,2025-05-13 16:00
FAB126502E-03,INSTALL DOOR FRAMES - FAB126502E,Complete,2025-07-30 13:00,2025-07-31 12:00,2025-05-13 00:00,2025-05-14 16:00
FAB126502E-04,INSTALL DOOR & HARDWARE - FAB126502E,Active,2025-05-15 08:00,2025-05-21 17:00,2025-05-15 08:00,
FAB126502E-05,PAINT & PROTECT DOORS & FRAMES - FAB126502E,Not Started,2026-02-16 08:00,2026-02-16 17:00,,
FAB126502D-13,DOOR FRAME HANDED OVER TO SECAI ON 06/27 - FAB126502D,Complete,2025-06-27 08:00,2025-06-27 17:00,2025-06-27 08:00,2025-06-27 16:00
FAB120402A-01,IMPACT - INSTALL/REWORK DRYWALL FRAMING AROUND DOORS - FAB120402A,Complete,2025-05-29 08:00,2025-06-06 17:00,2025-05-29 08:00,2025-05-30 08:00
FAB120402A-03,INSTALL DOOR FRAMES - FAB120402A,Complete,2025-05-30 08:00,2025-05-30 17:00,2025-05-30 08:00,2025-05-30 17:00
FAB120402A-04,INSTALL DOOR & HARDWARE - FAB120402A,Active,2025-11-12 08:00,2025-11-18 17:00,2025-11-12 08:00,
FAB120402A-05,PAINT & PROTECT DOORS & FRAMES -  FAB120402A,Not Started,2026-02-16 08:00,2026-02-19 15:00,,
FAB120303A-01,IMPACT - INSTALL/REWORK DRYWALL FRAMING AROUND DOORS - FAB120303A,Complete,2025-03-20 08:00,2025-03-28 17:00,2025-03-20 08:00,2025-03-28 17:00
FAB120303A-03,INSTALL DOOR FRAMES - FAB120303A,Complete,2025-07-14 13:00,2025-07-15 12:00,2025-03-28 00:00,2025-03-28 16:00
FAB120303A-04,INSTALL DOOR & HARDWARE - FAB120303A,Not Started,2025-11-21 08:00,2025-11-27 17:00,,
FAB120303A-05,PAINT & PROTECT DOORS & FRAMES - FAB120303A,Not Started,2026-02-16 08:00,2026-02-19 15:00,,
FAB120303B-01,IMPACT - INSTALL/REWORK DRYWALL FRAMING AROUND DOORS - FAB120303B,Complete,2025-02-25 08:00,2025-03-05 17:00,2025-02-25 08:00,2025-03-05 17:00
FAB120303B-03,INSTALL DOOR FRAMES - FAB120303B,Complete,2025-07-14 13:00,2025-07-15 12:00,2025-03-05 00:00,2025-03-05 16:00
FAB120303B-04,INSTALL DOOR & HARDWARE - FAB120303B,Active,2025-10-23 08:00,2025-10-29 17:00,2025-10-23 08:00,
FAB120303B-05,PAINT & PROTECT DOORS & FRAMES - FAB120303B,Not Started,2026-02-16 08:00,2026-02-19 15:00,,
FAB120303C-01,IMPACT - INSTALL/REWORK DRYWALL FRAMING AROUND DOORS - FAB120303C,Complete,2025-08-12 08:00,2025-08-20 17:00,2025-07-15 08:00,2025-07-16 17:00
FAB120303C-04,INSTALL DOOR & HARDWARE - FAB120303C,Active,2025-10-23 08:00,2025-10-29 17:00,2025-10-23 08:00,
FAB120303C-05,PAINT & PROTECT DOORS & FRAMES - FAB120303C,Not Started,2026-02-16 08:00,2026-02-19 15:00,,
FAB120303D-03,INSTALL DOOR FRAMES BY SECAI - FAB120303D HANDED OVER ON 08/15,Complete,2025-08-15 08:00,2025-08-15 17:00,2025-08-15 08:00,2025-11-07 17:00
FAB120303D-04,INSTALL DOOR & HARDWARE - FAB120303D,Active,2025-11-11 08:00,2025-11-17 17:00,2025-11-11 08:00,
FAB120303D-05,PAINT & PROTECT DOORS & FRAMES - FAB120303D,Not Started,2026-02-16 08:00,2026-02-19 15:00,,
FAB120303C-11,IMPACT - PROCUREMENT - REORDERED DOORS (JAMB DEPTH ISSUE),Complete,2025-06-09 08:00,2025-08-12 17:00,2025-06-09 08:00,2025-07-14 17:00
FAB120303D-11,IMPACT - PROCUREMENT - REORDERED DOORS (JAMB DEPTH ISSUE),Complete,2025-06-09 08:00,2025-08-12 17:00,2025-06-09 08:00,2025-07-14 17:00
FAB120301A-01,IMPACT - INSTALL/REWORK DRYWALL FRAMING AROUND DOORS - FAB120301A,Complete,2025-02-25 08:00,2025-03-05 17:00,2025-02-25 08:00,2025-03-05 17:00
FAB120301A-03,INSTALL DOOR FRAMES - FAB120301A,Complete,2025-09-22 13:00,2025-09-23 12:00,2025-03-05 00:00,2025-03-05 16:00
FAB120301A-04,INSTALL DOOR & HARDWARE - FAB120301A,Active,2025-04-04 08:00,2025-04-10 17:00,2025-04-04 08:00,
FAB120301A-05,PAINT & PROTECT DOORS & FRAMES -  FAB120301A,Not Started,2026-02-16 08:00,2026-02-19 17:00,,
FAB120105A-01,IMPACT - INSTALL/REWORK DRYWALL FRAMING AROUND DOORS - FAB120105A,Complete,2025-03-14 08:00,2025-03-24 17:00,2025-03-14 08:00,2025-03-24 17:00
FAB120105A-03,INSTALL DOOR FRAMES - FAB120105A,Complete,2025-03-24 08:00,2025-03-24 17:00,2025-03-24 08:00,2025-03-24 17:00
FAB120105A-04,INSTALL DOOR & HARDWARE - FAB120105A,Active,2025-10-28 08:00,2025-11-03 17:00,2025-10-28 08:00,
FAB120105A-05,PAINT & PROTECT DOORS & FRAMES - FAB120105A,Not Started,2026-02-16 08:00,2026-02-19 15:00,,
FAB120504B-01,DOOR FRAME HANDED OVER TO SECAI ON 10/01 - FAB120504B,Complete,2025-10-01 08:00,2025-10-01 17:00,2025-10-01 08:00,2025-10-01 17:00
FAB120504B-04,INSTALL DOOR & HARDWARE - FAB120504B,Active,2025-11-18 08:00,2025-11-24 17:00,2025-11-18 08:00,
FAB120504B-05,PAINT & PROTECT DOORS & FRAMES - FAB120504B,Not Started,2026-02-16 08:00,2026-02-19 15:00,,
FAB120504B-03,INSTALL DOOR FRAME BY SECAI - FAB120504B - HANDED OVER ON 10/01,Complete,2025-10-01 08:00,2025-10-02 17:00,2025-10-01 08:00,2025-10-06 17:00
FAB120504D-04,INSTALL DOOR & HARDWARE - FAB120504D,Active,2025-10-31 08:00,2025-11-06 17:00,2025-10-31 08:00,
FAB120504D-05,PAINT & PROTECT DOORS & FRAMES - FAB120504D,Not Started,2026-02-16 08:00,2026-02-19 15:00,,
FAB120507A-04,INSTALL DOOR & HARDWARE - FAB120507A,Active,2025-11-13 08:00,2025-11-19 17:00,2025-11-13 08:00,
FAB120507A-05,PAINT & PROTECT DOORS & FRAMES -  FAB120507A,Not Started,2026-02-16 08:00,2026-02-19 15:00,,
FAB120507B-01,IMPACT - SECAI SCAFFOLD IMPEDING DOOR FRAME INSTALLATION - FAB120507B,Active,2025-08-25 08:00,2025-08-25 17:00,2025-08-25 08:00,
FAB120507B-04,INSTALL DOOR & HARDWARE - FAB120507B,Not Started,2025-12-03 08:00,2025-12-09 17:00,,
FAB120507B-05,PAINT & PROTECT DOORS & FRAMES -  FAB120507B,Not Started,2026-02-16 08:00,2026-02-19 15:00,,
FAB120507C-01,IMPACT - INSTALL/REWORK DRYWALL FRAMING AROUND DOORS - FAB120507C,Complete,2025-02-13 08:00,2025-02-21 17:00,2025-02-13 08:00,2025-02-21 17:00
FAB120507C-03,INSTALL DOOR FRAMES - FAB120507C,Complete,2025-08-18 13:00,2025-08-19 12:00,2025-02-21 00:00,2025-02-21 16:00
FAB120507C-04,INSTALL DOOR & HARDWARE - FAB120507C,Not Started,2025-11-28 08:00,2025-12-04 17:00,,
FAB120507C-05,PAINT & PROTECT DOORS & FRAMES -  FAB120507C,Not Started,2026-02-16 08:00,2026-02-19 15:00,,
FAB120507A-03,INSTALL DOOR FRAMES - FAB120507A,Complete,2025-11-11 08:00,2025-11-11 17:00,2025-11-11 08:00,2025-11-11 17:00
FAB120507B-03,INSTALL DOOR FRAMES - FAB120507B,Not Started,2025-12-01 08:00,2025-12-01 17:00,,
FAB120308A-01,IMPACT - INSTALL/REWORK DRYWALL FRAMING AROUND DOORS - FAB120308A,Complete,2025-02-25 08:00,2025-03-05 17:00,2025-02-25 08:00,2025-03-05 17:00
FAB120308A-03,INSTALL DOOR FRAMES - FAB120308A,Complete,2025-03-05 08:00,2025-03-05 17:00,2025-03-05 08:00,2025-03-05 17:00
FAB120308A-04,INSTALL DOOR & HARDWARE - FAB120308A,Active,2025-07-10 08:00,2025-07-16 17:00,2025-07-10 08:00,
FAB120308A-05,PAINT & PROTECT DOORS & FRAMES -  FAB120308A,Not Started,2026-02-16 08:00,2026-02-19 15:00,,
FAB120305A-07,DOOR INSTALL - FAB120305A (OHC),Not Started,2025-12-09 08:00,2025-12-10 17:00,,
FAB120109A-01,IMPACT - INSTALL/REWORK DRYWALL FRAMING AROUND DOORS - FAB120109A,Complete,2025-03-24 08:00,2025-04-01 17:00,2025-03-24 08:00,2025-03-31 17:00
FAB120109A-03,INSTALL DOOR FRAMES  - FAB120109A,Complete,2025-07-23 13:00,2025-07-24 12:00,2025-03-31 00:00,2025-03-31 08:00
FAB120109A-04,INSTALL DOOR & HARDWARE - FAB120109A,Active,2025-09-12 08:00,2025-09-18 17:00,2025-09-12 08:00,
FAB120109A-05,PAINT & PROTECT DOORS & FRAMES - FAB120109A,Not Started,2026-02-16 08:00,2026-02-19 15:00,,
FAB120109B-01,IMPACT - INSTALL/REWORK DRYWALL FRAMING AROUND DOORS - FAB120109B,Complete,2025-02-12 08:00,2025-02-20 17:00,2025-02-12 08:00,2025-02-20 17:00
FAB120109B-03,INSTALL DOOR FRAMES  - FAB120109B,Complete,2025-07-23 13:00,2025-07-24 12:00,2025-02-20 00:00,2025-02-20 16:00
FAB120109B-04,INSTALL DOOR & HARDWARE - FAB120109B,Active,2025-11-12 08:00,2025-11-18 17:00,2025-11-12 08:00,
FAB120109B-05,PAINT & PROTECT DOORS & FRAMES - FAB120109B,Not Started,2026-02-16 08:00,2026-02-19 15:00,,
FAB120109C-01,IMPACT - INSTALL/REWORK DRYWALL FRAMING AROUND DOORS - FAB120109C,Complete,2025-05-01 08:00,2025-05-09 17:00,2025-05-01 08:00,2025-05-05 17:00
FAB120109C-03,INSTALL DOOR FRAMES - FAB120109C,Complete,2025-07-23 13:00,2025-07-24 12:00,2025-05-04 00:00,2025-05-05 16:00
FAB120109C-04,INSTALL DOOR & HARDWARE - FAB120109C,Active,2025-08-26 08:00,2025-09-01 17:00,2025-08-26 08:00,
FAB120109C-05,PAINT & PROTECT DOORS & FRAMES - FAB120109C,Not Started,2026-02-16 08:00,2026-02-19 15:00,,
FAB120112A-01,IMPACT - INSTALL/REWORK DRYWALL FRAMING AROUND DOORS - FAB120112A,Complete,2025-07-21 08:00,2025-07-29 17:00,2025-07-21 08:00,2025-07-29 17:00
FAB120112A-03,INSTALL DOOR FRAMES - FAB120112A,Complete,2025-07-29 08:00,2025-07-29 17:00,2025-07-29 08:00,2025-07-29 17:00
FAB120112A-04,INSTALL DOOR & HARDWARE - FAB120112A,Active,2025-11-07 08:00,2025-11-13 17:00,2025-11-07 08:00,
FAB120112A-05,PAINT & PROTECT DOORS & FRAMES -  FAB120112A,Not Started,2026-02-16 08:00,2026-02-19 15:00,,
ZX-18270,IMPACT - RFI DOOR FRONT DESIGN - Elevator #1B - 2F-1FAB-EL1B,Complete,2025-05-13 08:00,2025-05-26 17:00,2025-05-13 08:00,2025-06-10 16:00
FAB120503A-01,IMPACT - INSTALL/REWORK DRYWALL FRAMING AROUND DOORS - FAB120503A,Complete,2025-02-13 08:00,2025-02-21 17:00,2025-02-13 08:00,2025-02-21 17:00
FAB120503A-03,INSTALL DOOR FRAMES - FAB120503A,Complete,2025-07-10 13:00,2025-07-11 12:00,2025-02-21 00:00,2025-02-21 16:00
FAB120503A-04,INSTALL DOOR & HARDWARE - FAB120503A,Active,2025-10-31 08:00,2025-11-06 17:00,2025-10-31 08:00,
FAB120503A-05,PAINT & PROTECT DOORS & FRAMES - FAB120503A,Not Started,2026-02-16 08:00,2026-02-19 15:00,,
FAB120503B-01,IMPACT - INSTALL/REWORK DRYWALL FRAMING AROUND DOORS - FAB120503B HANDED OVER TO SECAI ON 08/29,Complete,2025-08-29 08:00,2025-09-01 17:00,2025-08-29 08:00,2025-08-29 17:00
FAB120503B-04,INSTALL DOOR & HARDWARE - FAB120503B,Not Started,2025-12-01 08:00,2025-12-05 17:00,,
FAB120503B-05,PAINT & PROTECT DOORS & FRAMES - FAB120503B,Not Started,2026-02-16 08:00,2026-02-19 15:00,,
FAB120503D-01,IMPACT - INSTALL/REWORK DRYWALL FRAMING AROUND DOORS - FAB120503D HANDED OVER TO SECAI ON 08/29,Complete,2025-08-28 08:00,2025-08-29 17:00,2025-08-29 08:00,2025-08-29 17:00
FAB120503D-03,INSTALL DOOR FRAME BY SECAI - FAB120503D HANDED OVER ON 08/29,Active,2025-08-29 08:00,2025-08-29 17:00,2025-08-29 08:00,
FAB120503D-04,INSTALL DOOR & HARDWARE - FAB120503D,Not Started,2025-11-28 08:00,2025-12-04 17:00,,
FAB120503D-05,PAINT & PROTECT DOORS & FRAMES - FAB120503D,Not Started,2026-02-16 08:00,2026-02-19 15:00,,
FAB120503E-01,IMPACT - INSTALL/REWORK DRYWALL FRAMING AROUND DOORS - FAB120503E,Complete,2025-07-24 08:00,2025-08-01 17:00,2025-07-24 08:00,2025-08-01 17:00
FAB120503E-04,INSTALL DOOR & HARDWARE - FAB120503E,Active,2025-10-31 08:00,2025-11-06 17:00,2025-10-31 08:00,
FAB120503E-05,PAINT & PROTECT DOORS & FRAMES - FAB120503E,Not Started,2026-02-16 08:00,2026-02-19 15:00,,
FAB120503D-00,IMPACT - PROCUREMENT - REORDERED DOORS (JAMB DEPTH ISSUE),Complete,2025-06-09 08:00,2025-08-12 17:00,2025-06-09 08:00,2025-07-14 17:00
FAB120503E-00,IMPACT - PROCUREMENT - REORDERED DOORS (JAMB DEPTH ISSUE),Complete,2025-06-09 08:00,2025-08-12 17:00,2025-06-09 08:00,2025-07-14 17:00
FAB120505A-03,INSTALL DOOR FRAMES - FAB120505A,Not Started,2025-11-28 08:00,2025-11-28 17:00,,
FAB120505A-04,INSTALL DOOR & HARDWARE - FAB120505A,Not Started,2025-12-01 08:00,2025-12-05 17:00,,
FAB120505A-05,PAINT & PROTECT DOORS & FRAMES - FAB120505A,Not Started,2026-02-16 08:00,2026-02-19 15:00,,
FAB120505C-01,IMPACT - INSTALL/REWORK DRYWALL FRAMING AROUND DOORS - FAB120505C,Complete,2025-02-24 08:00,2025-03-04 17:00,2025-02-24 08:00,2025-03-04 17:00
FAB120505C-03,INSTALL DOOR FRAMES - FAB120505C,Complete,2025-08-13 13:00,2025-08-14 12:00,2025-03-04 00:00,2025-03-04 16:00
FAB120505C-04,INSTALL DOOR & HARDWARE - FAB120505C,Active,2025-11-05 08:00,2025-11-11 17:00,2025-11-05 08:00,
FAB120505C-05,PAINT & PROTECT DOORS & FRAMES - FAB120505C,Not Started,2026-02-16 08:00,2026-02-19 15:00,,
FAB120505A-11,IMPACT - INTERNAL - UNASSEMBLED TRANSOM FRAMES,Not Started,2025-11-21 08:00,2025-11-24 17:00,,
FAB120505B-07,DOOR INSTALL - FAB120505B (OHC),Not Started,2025-12-08 08:00,2025-12-09 17:00,,
FAB1-ST02B-01,IMPACT - INSTALL/REWORK DRYWALL FRAMING AROUND DOORS - FAB1-ST02B,Complete,2025-02-10 08:00,2025-02-18 17:00,2025-02-10 08:00,2025-02-18 17:00
FAB1-ST02B-03,INSTALL DOOR FRAMES - FAB1-ST02B,Complete,2025-02-18 08:00,2025-02-18 17:00,2025-02-18 08:00,2025-02-18 17:00
FAB1-ST02B-04,INSTALL DOOR & HARDWARE - FAB1-ST02B,Active,2025-11-05 08:00,2025-11-11 17:00,2025-11-05 08:00,
FAB1-ST02B-05,PAINT & PROTECT DOORS & FRAMES - FAB1-ST02B,Not Started,2026-02-16 08:00,2026-02-17 17:00,,
FAB1-ST03B-01,IMPACT - INSTALL/REWORK DRYWALL FRAMING AROUND DOORS - FAB1-ST03B,Complete,2025-02-10 08:00,2025-02-18 17:00,2025-02-10 08:00,2025-02-18 17:00
FAB1-ST03B-03,INSTALL DOOR FRAMES - FAB1-ST03B,Complete,2025-02-18 08:00,2025-02-18 17:00,2025-02-18 08:00,2025-02-18 17:00
FAB1-ST03B-04,INSTALL DOOR & HARDWARE - FAB1-ST03B,Not Started,2025-11-28 08:00,2025-12-04 17:00,,
FAB1-ST03B-05,PAINT & PROTECT DOORS & FRAMES - FAB1-ST03B,Not Started,2026-02-16 08:00,2026-02-20 17:00,,
FAB1-ST20B-01,IMPACT - INSTALL/REWORK DRYWALL FRAMING AROUND DOORS - FAB1-ST20B,Complete,2025-10-10 08:00,2025-10-13 17:00,2025-10-10 08:00,2025-10-13 17:00
FAB1-ST20B-03,INSTALL DOOR FRAMES - FAB1-ST20B,Complete,2025-10-13 08:00,2025-10-13 17:00,2025-10-13 08:00,2025-10-13 17:00
FAB1-ST20B-04,INSTALL DOOR & HARDWARE - FAB1-ST20B,Active,2025-11-07 08:00,2025-11-13 17:00,2025-11-07 08:00,
FAB1-ST20B-05,PAINT & PROTECT DOORS & FRAMES - FAB1-ST20B,Not Started,2026-02-16 08:00,2026-02-20 17:00,,
FAB1-ST21B-01,INSTALL DOOR FRAMES - FAB1-ST21B,Complete,2025-06-27 08:00,2025-06-27 17:00,2025-06-30 08:00,2025-06-30 16:00
FAB1-ST21B-04,INSTALL DOOR & HARDWARE - FAB1-ST21B,Active,2025-11-14 08:00,2025-11-20 17:00,2025-11-14 08:00,
FAB1-ST21B-05,PAINT & PROTECT DOORS & FRAMES - FAB1-ST21B,Not Started,2026-02-16 08:00,2026-02-20 17:00,,
FAB1-ST04B-01,IMPACT - INSTALL/REWORK DRYWALL FRAMING AROUND DOORS - FAB1-ST04B,Complete,2025-08-25 08:00,2025-08-26 17:00,2025-08-25 08:00,2025-08-26 17:00
FAB1-ST04B-03,INSTALL DOOR FRAMES - FAB1-ST04B,Complete,2025-08-26 08:00,2025-08-26 17:00,2025-08-26 08:00,2025-08-26 17:00
FAB1-ST04B-04,INSTALL DOOR & HARDWARE - FAB1-ST04B,Active,2025-11-06 08:00,2025-11-12 17:00,2025-11-06 08:00,
FAB1-ST04B-05,PAINT & PROTECT DOORS & FRAMES - FAB1-ST04B,Not Started,2026-02-16 08:00,2026-02-20 17:00,,
FAB1-ST19B-04,INSTALL DOOR & HARDWARE - FAB1-ST19B,Active,2025-11-14 08:00,2025-11-20 17:00,2025-11-14 08:00,
FAB1-ST19B-05,PAINT & PROTECT DOORS & FRAMES - FAB1-ST19B,Not Started,2026-02-16 08:00,2026-02-19 17:00,,
FAB126507B-70,DOOR FRAME HANDED OVER TO SECAI ON 10/14 - FAB126507B,Complete,2025-10-14 08:00,2025-10-14 17:00,2025-10-14 08:00,2025-10-14 17:00
FAB126507B-03,INSTALL DOOR FRAME BY SECAI - FAB126507B  - HANDED OVER ON 10/14,Complete,2025-10-14 08:00,2025-10-14 17:00,2025-10-14 08:00,2025-11-17 17:00
FAB126507B-04,INSTALL DOOR & HARDWARE - FAB126507B,Active,2025-11-18 08:00,2025-11-24 17:00,2025-11-18 08:00,
FAB126507B-05,PAINT & PROTECT DOORS & FRAMES -  FAB126507B,Not Started,2026-02-16 08:00,2026-02-19 15:00,,
FAB130103A-01,IMPACT - INSTALL/REWORK DRYWALL FRAMING AROUND DOORS - FAB130103A,Complete,2025-01-20 08:00,2025-01-28 17:00,2025-01-20 08:00,2025-01-27 17:00
FAB130103A-03,INSTALL DOOR FRAMES - FAB130103A,Complete,2025-08-12 13:00,2025-08-13 12:00,2025-01-27 00:00,2025-01-27 16:00
FAB130103A-04,INSTALL DOOR & HARDWARE - FAB130103A,Not Started,2025-11-21 08:00,2025-11-27 17:00,,
FAB130103A-05,PAINT & PROTECT DOORS & FRAMES -  FAB130103A,Not Started,2026-02-16 08:00,2026-02-19 15:00,,
FAB130103B-03,INSTALL DOOR FRAMES - FAB130103B,Complete,2025-07-28 08:00,2025-07-28 17:00,2025-07-22 08:00,2025-07-22 17:00
FAB130103B-04,INSTALL DOOR & HARDWARE - FAB130103B,Not Started,2025-11-21 08:00,2025-11-27 17:00,,
FAB130103B-05,PAINT & PROTECT DOORS & FRAMES -  FAB130103B,Not Started,2026-02-16 08:00,2026-02-19 15:00,,
FAB130103C-01,IMPACT - INSTALL/REWORK DRYWALL FRAMING AROUND DOORS - FAB130103C,Complete,2025-03-26 08:00,2025-04-03 17:00,2025-03-26 08:00,2025-04-03 17:00
FAB130103C-03,INSTALL DOOR FRAMES - FAB130103C,Complete,2025-08-12 13:00,2025-08-13 12:00,2025-04-03 00:00,2025-04-03 16:00
FAB130103C-04,INSTALL DOOR & HARDWARE - FAB130103C,Not Started,2025-11-21 08:00,2025-11-27 17:00,,
FAB130103C-05,PAINT & PROTECT DOORS & FRAMES -  FAB130103C,Not Started,2026-02-16 08:00,2026-02-19 15:00,,
FAB130103B-11,IMPACT - SECAI - ADDED FIRE RATED DOORS (CONCEPT FRAMES INC),Complete,2025-06-27 08:00,2025-07-17 17:00,2025-06-27 08:00,2025-07-18 10:00
FAB130103B-07,DOOR FRAME PREP AND PLACEMENT- FAB130103B,Complete,2025-07-03 08:00,2025-07-09 17:00,2025-07-03 08:00,2025-07-21 17:00
FAB116103A-04,INSTALL DOOR & HARDWARE - FAB116103A,Not Started,2025-12-01 08:00,2025-12-05 17:00,,
FAB116103A-05,PAINT & PROTECT DOORS & FRAMES - FAB116103A,Not Started,2026-02-16 08:00,2026-02-19 15:00,,
ZX-5370,SECAI TOOK OVER FOR ACCELERATION - Control Joint & Inspect - Fire Alarm 22-1F-FAB116116 SECAI INSTALLED DOOR FRAME,Complete,2025-06-19 08:00,2025-06-20 17:00,2025-06-19 08:00,2025-06-19 17:00
FAB116116A-01,IMPACT - INSTALL/REWORK DRYWALL FRAMING AROUND DOORS - FAB116116A HANDED OVER TO SECAI ON 08/20,Complete,2025-08-20 08:00,2025-08-21 17:00,2025-08-20 08:00,2025-08-20 17:00
FAB116116A-03,INSTALL DOOR FRAME BY SECAI - FAB116116A HANDED OVER TO SECAI ON 08/20,Complete,2025-08-20 08:00,2025-08-20 17:00,2025-08-20 08:00,2025-09-06 08:00
FAB116116A-04,INSTALL DOOR & HARDWARE - FAB116116A,Active,2025-10-01 08:00,2025-10-07 17:00,2025-10-01 08:00,
FAB116116A-05,PAINT & PROTECT DOORS & FRAMES - FAB116116A,Not Started,2026-02-16 08:00,2026-02-19 15:00,,
FAB116116A-11,IMPACT - PROCUREMENT - REORDERED DOORS (JAMB DEPTH ISSUE),Complete,2025-06-20 08:00,2025-08-14 17:00,2025-06-20 08:00,2025-06-30 17:00
FAB116111A-01,INSTALL DOOR FRAME BY SECAI - FAB116111A HANDED OVER TO SECAI ON 07/18,Complete,2025-08-29 08:00,2025-09-04 17:00,2025-08-29 08:00,2025-09-05 08:00
FAB116111A-04,INSTALL DOOR & HARDWARE - FAB116111A,Not Started,2025-12-05 08:00,2025-12-11 17:00,,
FAB116111A-05,PAINT & PROTECT DOORS & FRAMES - FAB116111A,Not Started,2026-02-16 08:00,2026-02-19 15:00,,
FAB116111B-01,IMPACT - INSTALL/REWORK DRYWALL FRAMING AROUND DOORS - FAB116111B,Complete,2025-06-10 08:00,2025-06-18 17:00,2025-03-10 08:00,2025-03-17 08:00
FAB116111B-03,INSTALL DOOR FRAMES - FAB116111B,Complete,2025-09-23 13:00,2025-09-24 12:00,2025-03-17 00:00,2025-03-17 16:00
FAB116111B-04,INSTALL DOOR & HARDWARE - FAB116111B,Active,2025-08-22 08:00,2025-08-28 17:00,2025-08-22 08:00,
FAB116111B-05,PAINT & PROTECT DOORS & FRAMES - FAB116111B,Not Started,2026-02-16 08:00,2026-02-19 15:00,,
FAB116111C-01,IMPACT - INSTALL/REWORK DRYWALL FRAMING AROUND DOORS - FAB116111C,Complete,2025-06-10 08:00,2025-06-18 17:00,2025-04-01 08:00,2025-04-07 08:00
FAB116111C-03,INSTALL DOOR FRAMES - FAB116111C,Complete,2025-09-23 13:00,2025-09-24 12:00,2025-04-07 00:00,2025-04-07 16:00
FAB116111C-04,INSTALL DOOR & HARDWARE - FAB116111C,Active,2025-05-30 08:00,2025-06-05 17:00,2025-05-30 08:00,
FAB116111C-05,PAINT & PROTECT DOORS & FRAMES - FAB116111C,Not Started,2026-02-16 08:00,2026-02-19 15:00,,
FAB116111D-01,IMPACT - INSTALL/REWORK DRYWALL FRAMING AROUND DOORS - FAB116111D,Complete,2025-06-10 08:00,2025-06-18 17:00,2025-05-01 08:00,2025-05-01 08:00
FAB116111D-03,INSTALL DOOR FRAMES - FAB116111D,Complete,2025-10-10 08:00,2025-10-10 17:00,2025-10-10 08:00,2025-10-10 17:00
FAB116111D-04,INSTALL DOOR & HARDWARE - FAB116111D,Active,2025-10-13 08:00,2025-10-17 17:00,2025-10-13 08:00,
FAB116111D-05,PAINT & PROTECT DOORS & FRAMES - FAB116111D,Not Started,2026-02-16 08:00,2026-02-19 15:00,,
FAB116111E-13,DOOR FRAME HANDED OVER TO SECAI ON 07/18 - FAB116111E,Complete,2025-07-18 08:00,2025-07-18 17:00,2025-07-18 08:00,2025-07-18 08:00
FAB116111E-03,INSTALL DOOR FRAME BY SECAI - FAB116111E HANDED OVER TO SECAI ON 07/18,Complete,2025-07-18 08:00,2025-07-18 17:00,2025-07-18 08:00,2025-09-10 08:00
FAB116111E-04,INSTALL DOOR & HARDWARE - FAB116111E,Active,2025-10-01 08:00,2025-10-07 17:00,2025-10-01 08:00,
FAB116111E-05,PAINT & PROTECT DOORS & FRAMES - FAB116111E,Not Started,2026-02-16 08:00,2026-02-19 15:00,,
FAB116111F-01,IMPACT - INSTALL/REWORK DRYWALL FRAMING AROUND DOORS - FAB116111F,Complete,2025-06-10 08:00,2025-06-18 17:00,2025-03-24 08:00,2025-04-01 08:00
FAB116111F-03,INSTALL DOOR FRAMES - FAB116111F,Complete,2025-09-23 13:00,2025-09-24 12:00,2025-04-01 00:00,2025-04-01 16:00
FAB116111F-04,INSTALL DOOR & HARDWARE - FAB116111F,Active,2025-10-01 08:00,2025-10-07 17:00,2025-10-01 08:00,
FAB116111F-05,PAINT & PROTECT DOORS & FRAMES - FAB116111F,Not Started,2026-02-16 08:00,2026-02-19 15:00,,
FAB116111E-11,IMPACT - PROCUREMENT - Reordered doors (Wall Thickness and Door Swing Design Changes),Complete,2025-06-09 08:00,2025-07-21 17:00,2025-06-09 08:00,2025-07-14 17:00
FAB116107A-03,INSTALL DOOR FRAMES - FAB116107A,Complete,2025-07-30 08:00,2025-07-30 17:00,2025-07-30 08:00,2025-07-30 17:00
FAB116107A-04,INSTALL DOOR & HARDWARE - FAB116107A,Active,2025-08-12 08:00,2025-08-18 17:00,2025-08-12 08:00,
FAB116107A-05,PAINT & PROTECT DOORS & FRAMES - FAB116107A,Not Started,2026-02-16 08:00,2026-02-17 17:00,,
FAB116107A-07,DOOR FRAME PAINT & 1ST COAT - FAB116107A,Complete,2025-08-06 08:00,2025-08-08 17:00,2025-08-06 08:00,2025-08-08 17:00
FAB116109A-01,IMPACT - INSTALL/REWORK DRYWALL FRAMING AROUND DOORS - FAB116109A,Complete,2025-05-12 08:00,2025-05-20 17:00,2025-05-12 08:00,2025-05-16 17:00
FAB116109A-03,INSTALL DOOR FRAMES - FAB116109A,Complete,2025-09-19 13:00,2025-09-22 12:00,2025-05-15 00:00,2025-05-16 16:00
FAB116109A-04,INSTALL DOOR & HARDWARE - FAB116109A,Active,2025-10-14 08:00,2025-10-20 17:00,2025-10-14 08:00,
FAB116109A-05,PAINT & PROTECT DOORS & FRAMES - FAB116109A,Not Started,2026-02-16 08:00,2026-02-19 15:00,,
FAB116109B-01,IMPACT - INSTALL/REWORK DRYWALL FRAMING AROUND DOORS - FAB116109B,Complete,2025-09-15 08:00,2025-09-23 17:00,2025-07-15 08:00,2025-07-18 17:00
FAB116109B-03,INSTALL DOOR FRAMES - FAB116109B,Complete,2025-09-25 08:00,2025-09-25 17:00,2025-07-24 08:00,2025-07-25 17:00
FAB116109B-04,INSTALL DOOR & HARDWARE - FAB116109B,Active,2025-08-20 08:00,2025-08-26 17:00,2025-08-20 08:00,
FAB116109B-05,PAINT & PROTECT DOORS & FRAMES - FAB116109B,Not Started,2026-02-16 08:00,2026-02-17 17:00,,
FAB116203A-03,INSTALL DOOR FRAMES - FAB116203A HANDED OVER TO SECAI 07/07,Complete,2025-07-09 08:00,2025-07-22 17:00,2025-07-09 08:00,2025-09-18 17:00
FAB116203A-04,INSTALL DOOR & HARDWARE - FAB116203A,Active,2025-09-19 08:00,2025-09-25 17:00,2025-09-19 08:00,
FAB116203A-05,PAINT & PROTECT DOORS & FRAMES - FAB116203A,Not Started,2026-02-16 08:00,2026-02-19 15:00,,
FAB116203B-03,INSTALL DOOR FRAMES - FAB116203B,Complete,2025-07-11 08:00,2025-07-11 17:00,2025-07-07 08:00,2025-07-07 17:00
FAB116203B-04,INSTALL DOOR & HARDWARE - FAB116203B,Active,2025-08-29 08:00,2025-09-04 17:00,2025-08-29 08:00,
FAB116203B-05,PAINT & PROTECT DOORS & FRAMES - FAB116203B,Not Started,2026-02-16 08:00,2026-02-19 15:00,,
FAB116203C-03,INSTALL DOOR FRAMES - FAB116203C,Complete,2025-07-11 08:00,2025-07-11 17:00,2025-07-11 08:00,2025-07-11 17:00
FAB116203C-04,INSTALL DOOR & HARDWARE - FAB116203C,Not Started,2025-11-21 08:00,2025-11-27 17:00,,
FAB116203C-05,PAINT & PROTECT DOORS & FRAMES - FAB116203C,Not Started,2026-02-16 08:00,2026-02-19 15:00,,
FAB116203B-07,DOOR FRAME PAINT & 1ST COAT - FAB116203B,Complete,2025-08-25 08:00,2025-08-27 17:00,2025-08-25 08:00,2025-08-27 17:00
FAB116203A-13,DOOR FRAME HANDED OVER TO SECAI ON 07/07- FAB116203A,Complete,2025-07-07 08:00,2025-07-07 17:00,2025-07-07 08:00,2025-07-07 16:00
TR-FAB116112A-01,IMPACT - INSTALL/REWORK DRYWALL FRAMING AROUND DOORS - TR - FAB116112A,Complete,2025-09-01 08:00,2025-09-09 17:00,2025-09-05 08:00,2025-09-05 17:00
TR-FAB116112A-03,INSTALL DOOR FRAME BY SECAI - TR - FAB116112A,Complete,2025-09-05 08:00,2025-09-05 17:00,2025-09-05 08:00,2025-09-29 08:00
TR-FAB116112A-04,INSTALL DOOR & HARDWARE - TR - FAB116112A,Active,2025-10-02 08:00,2025-10-08 17:00,2025-10-02 08:00,
TR-FAB116112A-05,PAINT & PROTECT DOORS & FRAMES -  TR - FAB116112A,Not Started,2026-02-16 08:00,2026-02-19 15:00,,
TR-FAB116112A-11,IMPACT - PROCUREMENT - Reordered doors (Wall Thickness and Door Swing Design Changes),Complete,2025-06-20 08:00,2025-08-14 17:00,2025-04-14 08:00,2025-05-12 17:00
FAB116106B-04,INSTALL DOOR & HARDWARE - FAB116106B,Not Started,2025-12-05 08:00,2025-12-11 17:00,,
FAB116106B-05,PAINT & PROTECT DOORS & FRAMES - FAB116106B,Not Started,2026-02-16 08:00,2026-02-19 15:00,,
FAB116106B-03,INSTALL DOOR FRAMES - FAB116106B,Complete,2025-06-13 08:00,2025-06-13 17:00,2025-06-13 08:00,2025-06-13 16:00
FAB116108A-01,IMPACT - INSTALL/REWORK DRYWALL FRAMING AROUND DOORS - FAB116108A,Complete,2025-06-25 08:00,2025-07-03 17:00,2025-06-25 08:00,2025-06-25 17:00
FAB116108A-03,INSTALL DOOR FRAMES - FAB116108A,Complete,2025-08-07 08:00,2025-08-07 17:00,2025-06-26 08:00,2025-06-26 17:00
FAB116108A-04,INSTALL DOOR & HARDWARE - FAB116108A,Active,2025-07-01 08:00,2025-07-07 17:00,2025-07-01 08:00,
FAB116108A-05,PAINT & PROTECT DOORS & FRAMES - FAB116108A,Not Started,2026-02-16 08:00,2026-02-19 15:00,,
FAB116205A-03,INSTALL DOOR FRAMES - FAB116205A,Complete,2025-10-22 08:00,2025-10-22 17:00,2025-10-22 08:00,2025-10-22 17:00
FAB116205A-04,INSTALL DOOR & HARDWARE - FAB116205A,Active,2025-11-13 08:00,2025-11-19 17:00,2025-11-13 08:00,
FAB116205A-05,PAINT & PROTECT DOORS & FRAMES - FAB116205A,Not Started,2026-02-16 08:00,2026-02-19 15:00,,
FAB116206A-01,IMPACT - INSTALL/REWORK DRYWALL FRAMING AROUND DOORS - FAB116206A,Complete,2025-08-13 08:00,2025-08-21 17:00,2025-08-13 08:00,2025-08-21 17:00
FAB116206A-03,INSTALL DOOR FRAMES - FAB116206A,Complete,2025-08-22 08:00,2025-08-22 17:00,2025-08-22 08:00,2025-08-22 17:00
FAB116206A-04,INSTALL DOOR & HARDWARE - FAB116206A,Active,2025-09-24 08:00,2025-09-30 17:00,2025-09-24 08:00,
FAB116206A-05,PAINT & PROTECT DOORS & FRAMES - FAB116206A,Not Started,2026-02-16 08:00,2026-02-19 15:00,,
FAB116206A-11,IMPACT - SECAI - DIRECTIVE TO HOLD FRAME INSTALLATION,Complete,2025-08-21 08:00,2025-08-21 17:00,2025-08-21 08:00,2025-08-21 17:00
FAB116101B-02,INSTALL DOOR FRAMES - FAB116101B,Not Started,2025-11-28 08:00,2025-11-28 17:00,,
FAB116101B-04,INSTALL DOOR & HARDWARE - FAB116101B,Not Started,2025-12-02 08:00,2025-12-08 17:00,,
FAB116101B-05,PAINT & PROTECT DOORS & FRAMES - FAB116101B,Not Started,2026-02-16 08:00,2026-02-19 15:00,,
FAB116101E-03,INSTALL DOOR FRAMES - FAB116101E,Not Started,2025-11-21 08:00,2025-11-21 17:00,,
FAB116101E-04,INSTALL DOOR & HARDWARE - FAB116101E,Not Started,2025-11-24 08:00,2025-11-28 17:00,,
FAB116101E-05,PAINT & PROTECT DOORS & FRAMES - FAB116101E,Not Started,2026-02-16 08:00,2026-02-19 15:00,,
FAB116101B-08,IMPACT - TEMP UTILITY LINE RUNNING TROUGH THE DOOR OPENING - FAB116101B,Active,2025-06-13 08:00,2025-07-03 17:00,2025-06-13 08:00,
FAB116102A-01,IMPACT - INSTALL/REWORK DRYWALL FRAMING AROUND DOORS - FAB116102A,Complete,2025-03-25 08:00,2025-04-02 17:00,2025-03-25 08:00,2025-04-02 17:00
FAB116102A-03,INSTALL DOOR FRAMES - FAB116102A,Complete,2025-09-10 13:00,2025-09-11 12:00,2025-04-02 00:00,2025-04-02 16:00
FAB116102A-04,INSTALL DOOR & HARDWARE - FAB116102A,Active,2025-05-30 08:00,2025-06-05 17:00,2025-05-30 08:00,
FAB116102A-05,PAINT & PROTECT DOORS & FRAMES - FAB116102A,Not Started,2026-02-16 08:00,2026-02-17 17:00,,
FAB116110B-01,IMPACT - REWORK DRYWALL FOR/AND DOOR FRAME INSTALL BY SECAI - FAB116110B,Complete,2025-09-17 08:00,2025-09-25 17:00,2025-06-27 08:00,2025-06-27 16:00
FAB116110B-05,PAINT & PROTECT DOORS & FRAMES - FAB116110B,Not Started,2026-02-16 08:00,2026-02-17 17:00,,
FAB116110B-04A,INSTALL DOOR & HARDWARE - FAB116110B,Active,2025-08-21 08:00,2025-08-27 17:00,2025-08-21 08:00,
FAB116110B-11,IMPACT - PROCUREMENT - REORDERED DOORS (JAMB DEPTH ISSUE),Complete,2025-06-09 08:00,2025-07-29 10:00,2025-06-09 08:00,2025-07-14 10:00
FAB116105E-01,IMPACT - INSTALL/REWORK DRYWALL FRAMING AROUND DOORS - FAB116105E,Complete,2025-01-13 08:00,2025-01-13 17:00,2025-01-13 08:00,2025-01-13 17:00
FAB116105E-03,INSTALL DOOR FRAMES - FAB116105E,Complete,2025-01-14 08:00,2025-01-14 17:00,2025-01-14 08:00,2025-01-14 17:00
FAB116105E-04,INSTALL DOOR & HARDWARE - FAB116105E,Active,2025-01-14 08:00,2025-01-20 17:00,2025-01-14 08:00,
FAB116105E-05,PAINT & PROTECT DOORS & FRAMES - FAB116105E,Not Started,2026-02-16 08:00,2026-02-17 17:00,,
FAB116105B-04,DOOR INSTALL - FAB116105B (OHC),Not Started,2025-12-12 08:00,2025-12-15 17:00,,
FAB116105B-60,IMPACT - TEMP DOORS TO BE REMOVED - FAB116105B,Active,2025-07-03 08:00,2025-09-02 15:00,2025-07-03 07:00,
FAB116110B-03A,INSTALL DOOR FRAMES - REORDERED DOORS (JAMB DEPTH ISSUE) - FAB116110B,Complete,2025-07-25 08:00,2025-07-25 17:00,2025-07-25 08:00,2025-07-25 17:00
FAB116112A-01,IMPACT - INSTALL/REWORK DRYWALL FRAMING AROUND DOORS - FAB116112A,Complete,2025-05-12 08:00,2025-05-13 17:00,2025-05-12 08:00,2025-05-13 17:00
FAB116112A-03,INSTALL DOOR FRAMES - FAB116112A,Complete,2025-09-30 13:00,2025-10-01 12:00,2025-05-13 00:00,2025-05-14 16:00
FAB116112A-04,INSTALL DOOR & HARDWARE - FAB116112A,Active,2025-10-01 08:00,2025-10-07 17:00,2025-10-01 08:00,
FAB116112A-05,PAINT & PROTECT DOORS & FRAMES - FAB116112A,Not Started,2026-02-16 08:00,2026-02-19 15:00,,
FAB116201B-04,INSTALL DOOR & HARDWARE - FAB116201B,Active,2025-11-07 08:00,2025-11-13 17:00,2025-11-07 08:00,
FAB116201B-05,PAINT & PROTECT DOORS & FRAMES - FAB116201B,Not Started,2026-02-16 08:00,2026-02-20 17:00,,
FAB116201C-01,IMPACT - INSTALL/REWORK DRYWALL FRAMING AROUND DOORS - FAB116201C,Complete,2025-07-07 08:00,2025-07-07 17:00,2025-07-07 08:00,2025-07-07 17:00
FAB116201C-02,DOOR FRAME HANDED OVER TO SECAI 07/10 - FAB116201C,Complete,2025-07-07 08:00,2025-07-07 17:00,2025-07-07 08:00,2025-07-07 17:00
FAB116201C-03,INSTALL DOOR FRAME BY SECAI - FAB116201C HANDED OVER 07/10,Complete,2025-07-07 08:00,2025-07-07 17:00,2025-07-07 08:00,2025-09-18 08:00
FAB116201C-04,INSTALL DOOR & HARDWARE - FAB116201C,Active,2025-09-19 08:00,2025-09-25 17:00,2025-09-19 08:00,
FAB116201C-05,PAINT & PROTECT DOORS & FRAMES - FAB116201C,Not Started,2026-02-16 08:00,2026-02-20 17:00,,
 FAB116201A-04,INSTALL DOOR & HARDWARE - FAB116201A,Not Started,2025-11-21 08:00,2025-11-27 17:00,,
 FAB116201A-05,PAINT & PROTECT DOORS & FRAMES - FAB116201A,Not Started,2026-02-16 08:00,2026-02-19 17:00,,
 FAB116201D-03,INSTALL DOOR FRAMES - FAB116201D,Complete,2025-07-10 08:00,2025-07-10 17:00,2025-06-23 08:00,2025-06-23 16:00
 FAB116201D-04,INSTALL DOOR & HARDWARE - FAB116201D,Active,2025-08-28 08:00,2025-09-03 17:00,2025-08-28 08:00,
 FAB116201D-05,PAINT & PROTECT DOORS & FRAMES - FAB116201D,Not Started,2026-02-16 08:00,2026-02-19 17:00,,
FAB116201A-03,INSTALL DOOR FRAMES - FAB116201A,Complete,2025-08-11 08:00,2025-08-11 17:00,2025-08-11 08:00,2025-08-11 17:00
FAB116201B-03,INSTALL DOOR FRAMES - FAB116201B,Complete,2025-11-06 08:00,2025-11-06 17:00,2025-11-06 08:00,2025-11-06 17:00
FAB116202B-02,INSTALL DOOR FRAMES - FAB116202B,Complete,2025-06-26 08:00,2025-06-26 17:00,2025-06-25 08:00,2025-06-25 17:00
FAB116202B-07,DOOR FRAME PAINT & 1ST COAT - FAB116202B,Complete,2025-08-26 08:00,2025-08-28 17:00,2025-08-26 08:00,2025-08-26 17:00
FAB116202B-04,INSTALL DOOR & HARDWARE - FAB116202B,Active,2025-08-27 08:00,2025-09-02 17:00,2025-08-27 08:00,
FAB116202B-05,PAINT & PROTECT DOORS & FRAMES - FAB116202B,Not Started,2026-02-16 08:00,2026-02-19 15:00,,
FAB116202D-01,INSTALL DOOR FRAMES - FAB116202D,Complete,2025-07-29 08:00,2025-07-29 17:00,2025-07-29 08:00,2025-07-29 08:00
FAB116202D-04,INSTALL DOOR & HARDWARE - FAB116202D,Active,2025-10-06 08:00,2025-10-10 17:00,2025-10-06 08:00,
FAB116202D-05,PAINT & PROTECT DOORS & FRAMES - FAB116202D,Not Started,2026-02-16 08:00,2026-02-19 15:00,,
FAB116202D-11,IMPACT - PROCUREMENT - Reordered doors (Wall Thickness and Door Swing Design Changes),Complete,2025-07-10 08:00,2025-07-31 17:00,2025-06-09 08:00,2025-07-14 17:00
FAB116204A-03,INSTALL DOOR FRAMES - FAB116204A,Not Started,2025-11-21 08:00,2025-11-21 17:00,,
FAB116204A-04,INSTALL DOOR & HARDWARE - FAB116204A,Not Started,2025-11-24 08:00,2025-11-28 17:00,,
FAB116204A-05,PAINT & PROTECT DOORS & FRAMES - FAB116204A,Not Started,2026-02-16 08:00,2026-02-19 15:00,,
FAB116204B-01,IMPACT - INSTALL/REWORK DRYWALL FRAMING AROUND DOORS - FAB116204B,Complete,2025-03-18 08:00,2025-03-26 17:00,2025-03-18 08:00,2025-03-26 17:00
FAB116204B-03,INSTALL DOOR FRAME - FAB116204B,Complete,2025-03-26 13:00,2025-03-27 12:00,2025-03-26 13:00,2025-03-26 17:00
FAB116204B-04,DOOR INSTALL - FAB116204B,Complete,2025-09-24 08:00,2025-09-24 17:00,2025-09-24 08:00,2025-09-24 17:00
FAB116204B-05,PAINT & PROTECT DOORS & FRAMES - FAB116204B,Not Started,2026-02-16 08:00,2026-02-19 15:00,,
FAB116304A-03,INSTALL DOOR FRAMES - FAB116304A,Complete,2025-08-11 08:00,2025-08-11 17:00,2025-08-11 08:00,2025-08-11 08:00
FAB116304A-04,INSTALL DOOR & HARDWARE - FAB116304A,Not Started,2025-11-21 08:00,2025-11-27 17:00,,
FAB116304A-05,PAINT & PROTECT DOORS & FRAMES - FAB116304A,Not Started,2026-02-16 08:00,2026-02-19 15:00,,
FAB116304B-03,INSTALL DOOR FRAMES - FAB116304B,Complete,2025-07-28 08:00,2025-07-28 17:00,2025-07-21 08:00,2025-07-21 17:00
FAB116304B-04,DOOR INSTALL - FAB116304B,Complete,2025-08-29 08:00,2025-08-29 17:00,2025-08-27 08:00,2025-08-27 17:00
FAB116304B-05,PAINT & PROTECT DOORS & FRAMES - FAB116304B,Complete,2025-08-20 08:00,2025-08-25 15:00,2025-08-20 08:00,2025-08-25 15:00
FAB116304B-06,INSTALL DOOR HARDWARE - FAB116304B,Not Started,2025-11-21 08:00,2025-11-24 17:00,,
FAB116304C-60,DOOR FRAME HANDED OVER TO SECAI ON 07/18 - FAB116304C,Complete,2025-07-18 08:00,2025-07-18 17:00,2025-07-18 08:00,2025-07-18 17:00
FAB116304C-03,INSTALL DOOR FRAME BY SECAI - FAB116304C HANDED OVER ON 07/18,Complete,2025-07-18 08:00,2025-07-24 17:00,2025-07-18 08:00,2025-09-11 08:00
FAB116304C-04,INSTALL DOOR & HARDWARE - FAB116304C,Not Started,2025-11-28 08:00,2025-12-04 17:00,,
FAB116304C-05,PAINT & PROTECT DOORS & FRAMES - FAB116304C,Not Started,2026-02-16 08:00,2026-02-19 15:00,,
FAB116304B-07,DOOR FRAME PAINT & 1ST COAT - FAB116304B,Complete,2025-07-25 08:00,2025-07-29 17:00,2025-07-22 08:00,2025-07-23 17:00
FAB116303A-03,INSTALL DOOR FRAMES - FAB116303A,Complete,2025-08-15 08:00,2025-08-15 17:00,2025-06-12 08:00,2025-06-12 16:00
FAB116303A-04,INSTALL DOOR & HARDWARE - FAB116303A,Active,2025-06-12 08:00,2025-06-18 17:00,2025-06-12 08:00,
FAB116303A-05,PAINT & PROTECT DOORS & FRAMES - FAB116303A,Not Started,2026-02-16 08:00,2026-02-19 15:00,,
FAB116303A-11,IMPACT - SECAI - DIRECTIVE TO HOLD FRAME INSTALLATION,Complete,2025-06-20 08:00,2025-06-30 10:00,2025-06-09 08:00,2025-06-11 10:00
FAB116305A-25,DOOR FRAME HANDED OVER TO SECAI ON 07/07 - FAB116305A,Complete,2025-07-07 08:00,2025-07-07 17:00,2025-07-07 08:00,2025-07-07 17:00
FAB116305A-03,INSTALL DOOR FRAME BY SECAI - FAB116305A HANDED OVER ON 07/07,Complete,2025-07-17 08:00,2025-08-20 17:00,2025-07-17 08:00,2025-10-20 17:00
FAB116305A-04,INSTALL DOOR & HARDWARE - FAB116305A,Active,2025-10-27 08:00,2025-10-31 17:00,2025-10-27 08:00,
FAB116305A-05,PAINT & PROTECT DOORS & FRAMES - FAB116305A,Not Started,2026-02-16 08:00,2026-02-19 15:00,,
FAB116305B-01,IMPACT - INSTALL/REWORK DRYWALL FRAMING AROUND DOORS - FAB116305B,Complete,2025-10-08 08:00,2025-10-16 17:00,2025-03-12 08:00,2025-03-21 16:00
FAB116305B-03,INSTALL DOOR FRAMES - FAB116305B,Complete,2025-09-19 13:00,2025-09-22 12:00,2025-03-21 00:00,2025-03-21 16:00
FAB116305B-04,INSTALL DOOR & HARDWARE - FAB116305B,Not Started,2025-11-28 08:00,2025-12-04 17:00,,
FAB116305B-05,PAINT & PROTECT DOORS & FRAMES - FAB116305B,Not Started,2026-02-16 08:00,2026-02-19 15:00,,
FAB116305C-04,INSTALL DOOR & HARDWARE - FAB116305C,Active,2025-10-07 08:00,2025-10-13 17:00,2025-10-07 08:00,
FAB116305C-05,PAINT & PROTECT DOORS & FRAMES - FAB116305C,Not Started,2026-02-16 08:00,2026-02-19 15:00,,
FAB116305C-11,IMPACT - PROCUREMENT - Reordered doors (Wall Thickness and Door Swing Design Changes),Complete,2025-06-09 08:00,2025-08-04 17:00,2025-06-09 08:00,2025-07-14 17:00
FAB116306C-04,INSTALL DOOR & HARDWARE - FAB116306C,Active,2025-10-01 08:00,2025-10-07 17:00,2025-10-01 08:00,
FAB116306C-05,PAINT & PROTECT DOORS & FRAMES - FAB116306C,Not Started,2026-02-16 08:00,2026-02-19 15:00,,
FAB116306B-03,SECAI DOOR ROUGH IN/SECURITY - FAB116306B,Not Started,2025-12-29 08:00,2025-12-30 17:00,,
FAB116306B-04,DOOR INSTALL - FAB116306B (OHC),Not Started,2025-12-31 08:00,2026-01-01 17:00,,
FAB116306C-25,DOOR FRAME HANDED OVER TO SECAI ON 07/07 - FAB116306C,Complete,2025-07-07 08:00,2025-07-07 17:00,2025-07-07 08:00,2025-07-07 17:00
FAB116306C-03,INSTALL DOOR FRAME BY SECAI - FAB116306C HANDED OVER ON 07/07,Complete,2025-07-09 08:00,2025-07-22 17:00,2025-07-09 08:00,2025-09-09 08:00
FAB116302A-01,IMPACT - INSTALL/REWORK DRYWALL FRAMING AROUND DOORS - FAB116302A - HANDED OVER TO SECAI ON 08/20,Complete,2025-10-06 08:00,2025-10-14 17:00,2025-08-20 13:00,2025-08-20 17:00
FAB116302A-03,INSTALL DOOR FRAME BY SECAI - FAB116302A - HANDED OVER TO SECAI ON 08/20,Complete,2025-10-15 08:00,2025-10-15 17:00,2025-08-20 08:00,2025-08-20 17:00
FAB116302A-04,INSTALL DOOR & HARDWARE - FAB116302A,Active,2025-08-27 08:00,2025-09-02 17:00,2025-08-27 08:00,
FAB116302A-05,PAINT & PROTECT DOORS & FRAMES - FAB116302A,Not Started,2026-02-16 08:00,2026-02-17 17:00,,
FAB116301A-03,INSTALL DOOR FRAMES - FAB116301A,Complete,2025-08-28 13:00,2025-08-29 12:00,2025-04-22 00:00,2025-04-22 16:00
FAB116301A-04,INSTALL DOOR & HARDWARE - FAB116301A,Active,2025-09-19 08:00,2025-09-25 17:00,2025-09-19 08:00,
FAB116301A-05,PAINT & PROTECT DOORS & FRAMES - FAB116301A,Not Started,2026-02-16 08:00,2026-02-19 15:00,,
FAB116301B-04,INSTALL DOOR & HARDWARE - FAB116301B,Not Started,2025-11-28 08:00,2025-12-04 17:00,,
FAB116301B-05,PAINT & PROTECT DOORS & FRAMES - FAB116301B,Not Started,2026-02-16 08:00,2026-02-19 15:00,,
FAB116301C-04,INSTALL DOOR & HARDWARE - FAB116301C,Active,2025-10-22 08:00,2025-10-28 17:00,2025-10-22 08:00,
FAB116301C-05,PAINT & PROTECT DOORS & FRAMES - FAB116301C,Not Started,2026-02-16 08:00,2026-02-19 15:00,,
FAB116307A-01,INSTALL DOOR FRAMES BY SECAI - FAB116307A,Complete,2025-10-15 08:00,2025-10-15 17:00,2025-10-15 08:00,2025-10-15 17:00
FAB116307A-04,INSTALL DOOR & HARDWARE - FAB116307A,Active,2025-10-24 08:00,2025-10-30 17:00,2025-10-24 08:00,
FAB116307A-05,PAINT & PROTECT DOORS & FRAMES - FAB116307A,Not Started,2026-02-16 08:00,2026-02-19 15:00,,
FAB116307B-03,INSTALL DOOR FRAMES - FAB116307B,Complete,2025-06-20 08:00,2025-06-20 17:00,2025-05-14 08:00,2025-05-14 16:00
FAB116307B-04,INSTALL DOOR & HARDWARE - FAB116307B,Active,2025-08-13 08:00,2025-08-19 17:00,2025-08-13 08:00,
FAB116307B-05,PAINT & PROTECT DOORS & FRAMES - FAB116307B,Not Started,2026-02-16 08:00,2026-02-16 17:00,,
FAB116307B-07,DOOR FRAME PAINT & 1ST COAT - FAB116307B,Complete,2025-08-19 08:00,2025-08-25 17:00,2025-08-11 08:00,2025-08-11 17:00
TR-FAB116315A-01,IMPACT - INSTALL/REWORK DRYWALL FRAMING AROUND DOORS - TR - FAB116315A,Complete,2025-07-25 08:00,2025-08-04 17:00,2025-07-25 08:00,2025-08-04 17:00
TR-FAB116315A-03,INSTALL DOOR FRAMES - TR - FAB116315A,Complete,2025-08-04 08:00,2025-08-04 17:00,2025-08-05 08:00,2025-08-05 17:00
TR-FAB116315A-04,INSTALL DOOR & HARDWARE - TR - FAB116315A,Active,2025-11-10 08:00,2025-11-14 17:00,2025-11-10 08:00,
TR-FAB116315A-05,PAINT & PROTECT DOORS & FRAMES - TR - FAB116315A,Not Started,2026-02-16 08:00,2026-02-19 15:00,,
FAB116312A-01,IMPACT - INSTALL/REWORK DRYWALL FRAMING AROUND DOORS - FAB116312A,Complete,2025-04-22 08:00,2025-04-30 17:00,2025-04-22 08:00,2025-04-30 17:00
FAB116312A-03,INSTALL DOOR FRAMES - FAB116312A,Complete,2025-08-26 08:00,2025-08-26 17:00,2025-04-30 00:00,2025-04-30 16:00
FAB116312A-04,INSTALL DOOR & HARDWARE - FAB116312A,Active,2025-04-30 08:00,2025-05-06 17:00,2025-04-30 08:00,
FAB116312A-05,PAINT & PROTECT DOORS & FRAMES - FAB116312A,Not Started,2026-02-16 08:00,2026-02-19 15:00,,
FAB116310A-03,IMPACT - INSTALL DOOR FRAMES - FAB116310A,Complete,2025-05-09 08:00,2025-05-12 17:00,2025-05-09 08:00,2025-05-09 17:00
FAB116310A-04,INSTALL DOOR & HARDWARE - FAB116310A,Active,2025-08-27 08:00,2025-09-02 17:00,2025-08-27 08:00,
FAB116310A-05,PAINT & PROTECT DOORS & FRAMES - FAB116310A,Not Started,2026-02-16 08:00,2026-02-17 17:00,,
FAB116401A-01,IMPACT - INSTALL/REWORK DRYWALL FRAMING AROUND DOORS - FAB116401A,Complete,2025-03-25 08:00,2025-04-02 17:00,2025-03-25 08:00,2025-04-02 17:00
FAB116401A-03,INSTALL DOOR FRAMES - FAB116401A,Complete,2025-08-18 13:00,2025-08-19 12:00,2025-04-02 00:00,2025-04-02 16:00
FAB116401A-04,INSTALL DOOR & HARDWARE - FAB116401A,Active,2025-08-22 08:00,2025-08-28 17:00,2025-08-22 08:00,
FAB116401A-05,PAINT & PROTECT DOORS & FRAMES - FAB116401A,Not Started,2026-02-16 08:00,2026-02-17 17:00,,
FAB116401B-01,IMPACT - INSTALL/REWORK DRYWALL FRAMING AROUND DOORS - FAB116401B,Complete,2025-08-15 08:00,2025-08-15 08:00,2025-08-15 08:00,2025-08-15 08:00
FAB116401B-03,INSTALL DOOR FRAME BY SECAI - FAB116401B,Active,2025-08-15 08:00,2025-08-15 17:00,2025-08-15 08:00,
FAB116401B-04,INSTALL DOOR & HARDWARE - FAB116401B,Not Started,2025-12-01 08:00,2025-12-05 17:00,,
FAB116401B-05,PAINT & PROTECT DOORS & FRAMES - FAB116401B,Not Started,2026-02-16 08:00,2026-02-19 15:00,,
FAB116401B-11,IMPACT - SECAI - DIRECTIVE TO HOLD FRAME INSTALLATION,Complete,2025-08-15 08:00,2025-08-15 08:00,2025-08-15 08:00,2025-08-15 08:00
FAB116408A-01,IMPACT - INSTALL/REWORK DRYWALL FRAMING AROUND DOORS - FAB116408A,Complete,2025-03-25 08:00,2025-04-02 17:00,2025-03-25 08:00,2025-04-02 17:00
FAB116408A-03,INSTALL DOOR FRAMES - FAB116408A,Complete,2025-04-02 08:00,2025-04-02 17:00,2025-04-02 08:00,2025-04-02 17:00
FAB116408A-04,INSTALL DOOR & HARDWARE - FAB116408A,Not Started,2025-11-21 08:00,2025-11-27 17:00,,
FAB116408A-05,PAINT & PROTECT DOORS & FRAMES -  FAB116408A,Not Started,2026-02-16 08:00,2026-02-19 15:00,,
FAB116308A-01,IMPACT - INSTALL/REWORK DRYWALL FRAMING AROUND DOORS - FAB116308A,Complete,2025-08-12 08:00,2025-08-12 17:00,2025-08-12 08:00,2025-08-12 17:00
FAB116308A-04,INSTALL DOOR & HARDWARE - FAB116308A,Active,2025-08-22 08:00,2025-08-28 17:00,2025-08-22 08:00,
FAB116308A-05,PAINT & PROTECT DOORS & FRAMES - FAB116308A,Not Started,2026-02-16 08:00,2026-02-19 15:00,,
FAB116308B-03,SECAI - INSTALL DOOR FRAMES - FAB116308B TO HAND OVER 07/07,Complete,2025-07-09 08:00,2025-07-22 17:00,2025-07-09 08:00,2025-09-15 17:00
FAB116308B-04,INSTALL DOOR & HARDWARE - FAB116308B,Active,2025-10-08 08:00,2025-10-14 17:00,2025-10-08 08:00,
FAB116308B-05,PAINT & PROTECT DOORS & FRAMES - FAB116308B,Not Started,2026-02-16 08:00,2026-02-19 15:00,,
FAB116308C-04,INSTALL DOOR & HARDWARE - FAB116308C,Not Started,2025-11-24 08:00,2025-11-28 17:00,,
FAB116308C-05,PAINT & PROTECT DOORS & FRAMES - FAB116308C,Not Started,2026-02-16 08:00,2026-02-19 15:00,,
FAB116308D-03,INSTALL DOOR FRAMES - FAB116308D,Complete,2025-07-10 08:00,2025-07-10 17:00,2025-06-19 08:00,2025-06-19 16:00
FAB116308D-04,INSTALL DOOR & HARDWARE - FAB116308D,Active,2025-08-27 08:00,2025-09-02 17:00,2025-08-27 08:00,
FAB116308D-05,PAINT & PROTECT DOORS & FRAMES - FAB116308D,Not Started,2026-02-16 08:00,2026-02-19 17:00,,
FAB116308E-04,INSTALL DOOR & HARDWARE - FAB116308E,Not Started,2025-11-28 08:00,2025-12-04 17:00,,
FAB116308E-05,PAINT & PROTECT DOORS & FRAMES - FAB116308E,Not Started,2026-02-16 08:00,2026-02-19 15:00,,
FAB116308G-03,INSTALL DOOR FRAMES - FAB116308G,Complete,2025-06-19 08:00,2025-06-19 17:00,2025-06-19 08:00,2025-06-19 17:00
FAB116308G-04,INSTALL DOOR & HARDWARE - FAB116308G,Active,2025-08-27 08:00,2025-09-02 17:00,2025-08-27 08:00,
FAB116308G-05,PAINT & PROTECT DOORS & FRAMES - FAB116308G,Not Started,2026-02-16 08:00,2026-02-19 15:00,,
FAB116308H-02,DOOR FRAME HANDED OVER TO SECAI ON 07/10 - FAB116308H,Complete,2025-07-10 08:00,2025-07-10 17:00,2025-07-10 08:00,2025-07-10 17:00
FAB116308H-03,INSTALL DOOR FRAME BY SECAI - FAB116308H HANDED OVER ON 07/10,Complete,2025-07-07 08:00,2025-08-08 17:00,2025-07-10 08:00,2025-10-03 17:00
FAB116308H-04,INSTALL DOOR & HARDWARE - FAB116308H,Active,2025-10-15 08:00,2025-10-21 17:00,2025-10-15 08:00,
FAB116308H-05,PAINT & PROTECT DOORS & FRAMES - FAB116308H,Not Started,2026-02-16 08:00,2026-02-19 15:00,,
FAB116308J-01,IMPACT - INSTALL/REWORK DRYWALL FRAMING AROUND DOORS - FAB116308J,Complete,2025-08-11 08:00,2025-08-19 17:00,2025-08-11 08:00,2025-08-19 17:00
FAB116308J-03,INSTALL DOOR FRAMES - FAB116308J,Complete,2025-08-19 08:00,2025-08-19 17:00,2025-08-19 08:00,2025-08-19 17:00
FAB116308J-04,INSTALL DOOR & HARDWARE - FAB116308J,Active,2025-10-15 08:00,2025-10-21 17:00,2025-10-15 08:00,
FAB116308J-05,PAINT & PROTECT DOORS & FRAMES - FAB116308J,Not Started,2026-02-16 08:00,2026-02-19 15:00,,
FAB116308J-11,IMPACT - PROCUREMENT - REORDERED DOORS (JAMB DEPTH ISSUE),Complete,2025-06-20 08:00,2025-08-14 17:00,2025-06-20 08:00,2025-06-30 17:00
FAB116308D-07,DOOR FRAME PAINT & 1ST COAT - FAB116308D,Complete,2025-08-27 08:00,2025-08-29 17:00,2025-08-26 08:00,2025-08-26 17:00
FAB116308G-07,DOOR FRAME PAINT & 1ST COAT - FAB116308G,Complete,2025-07-28 08:00,2025-07-30 17:00,2025-07-28 08:00,2025-07-30 17:00
FAB116308C-03,INSTALL DOOR FRAMES - FAB116308C,Complete,2025-08-06 08:00,2025-08-06 17:00,2025-08-06 08:00,2025-08-06 17:00
FAB116308E-03,INSTALL DOOR FRAMES - FAB116308E,Complete,2025-08-11 08:00,2025-08-11 17:00,2025-08-06 08:00,2025-08-06 17:00
FAB116308B-13,DOOR FRAME HANDED OVER TO SECAI ON 07/07- FAB116308B,Complete,2025-07-07 08:00,2025-07-07 17:00,2025-07-07 08:00,2025-07-07 16:00
FAB116309A-03,INSTALL DOOR FRAMES - FAB116309A,Complete,2025-06-20 08:00,2025-06-20 17:00,2025-06-12 08:00,2025-06-12 16:00
FAB116309A-04,INSTALL DOOR & HARDWARE - FAB116309A,Active,2025-08-08 08:00,2025-08-14 17:00,2025-08-08 08:00,
FAB116309A-05,PAINT & PROTECT DOORS & FRAMES - FAB116309A,Not Started,2026-02-16 08:00,2026-02-17 17:00,,
FAB116309A-07,DOOR FRAME PAINT & 1ST COAT - FAB116309A,Complete,2025-08-05 08:00,2025-08-07 17:00,2025-08-05 08:00,2025-08-07 17:00
FAB116402A-03,INSTALL DOOR FRAMES - FAB116402A,Complete,2025-09-19 08:00,2025-09-19 17:00,2025-09-20 08:00,2025-09-20 17:00
FAB116402A-04,INSTALL DOOR & HARDWARE - FAB116402A,Active,2025-10-31 08:00,2025-11-06 17:00,2025-10-31 08:00,
FAB116402A-05,PAINT & PROTECT DOORS & FRAMES - FAB116402A,Not Started,2026-02-16 08:00,2026-02-19 15:00,,
FAB116404A-01,IMPACT - INSTALL/REWORK DRYWALL FRAMING AROUND DOORS - FAB116404A,Complete,2025-08-01 08:00,2025-08-11 17:00,2025-08-01 08:00,2025-08-08 17:00
FAB116404A-03,INSTALL DOOR FRAMES - FAB116404A,Complete,2025-08-08 08:00,2025-08-08 17:00,2025-08-09 08:00,2025-08-09 17:00
FAB116404A-04,INSTALL DOOR & HARDWARE - FAB116404A,Active,2025-09-08 08:00,2025-09-12 17:00,2025-09-08 08:00,
FAB116404A-05,PAINT & PROTECT DOORS & FRAMES - FAB116404A,Not Started,2026-02-16 08:00,2026-02-19 15:00,,
FAB116403A-03,INSTALL DOOR FRAMES - FAB116403A,Complete,2025-06-20 08:00,2025-06-20 17:00,2025-06-09 08:00,2025-06-09 16:00
FAB116403A-07,DOOR FRAME PAINT & 1ST COAT - FAB116403A,Complete,2025-08-27 08:00,2025-08-29 17:00,2025-08-27 08:00,2025-08-29 17:00
FAB116403A-04,INSTALL DOOR & HARDWARE - FAB116403A,Active,2025-09-02 08:00,2025-09-08 17:00,2025-09-02 08:00,
FAB116403A-05,PAINT & PROTECT DOORS & FRAMES - FAB116403A,Not Started,2026-02-16 08:00,2026-02-19 15:00,,
FAB116405A-01,IMPACT - INSTALL/REWORK DRYWALL FRAMING AROUND DOORS - FAB116405A,Complete,2025-08-11 08:00,2025-08-19 17:00,2025-08-11 08:00,2025-08-12 17:00
FAB116405A-03,INSTALL DOOR FRAMES - FAB116405A,Complete,2025-08-12 08:00,2025-08-12 17:00,2025-08-12 08:00,2025-08-12 17:00
FAB116405A-04,INSTALL DOOR & HARDWARE - FAB116405A,Active,2025-10-14 08:00,2025-10-20 17:00,2025-10-14 08:00,
FAB116405A-05,PAINT & PROTECT DOORS & FRAMES - FAB116405A,Not Started,2026-02-16 08:00,2026-02-19 15:00,,
FAB116406A-01,IMPACT - INSTALL/REWORK DRYWALL FRAMING AROUND DOORS - FAB116406A,Complete,2025-03-17 08:00,2025-03-25 17:00,2025-03-17 08:00,2025-03-25 17:00
FAB116406A-03,INSTALL DOOR FRAMES - FAB116406A,Complete,2025-09-19 13:00,2025-09-22 12:00,2025-03-25 00:00,2025-03-25 16:00
FAB116406A-04,INSTALL DOOR & HARDWARE - FAB116406A,Not Started,2025-11-28 08:00,2025-12-04 17:00,,
FAB116406A-05,PAINT & PROTECT DOORS & FRAMES -  FAB116406A,Not Started,2026-02-16 08:00,2026-02-19 15:00,,
FAB116407A-03,INSTALL DOOR FRAMES - FAB116407A,Complete,2025-10-21 13:00,2025-10-22 12:00,2025-04-02 00:00,2025-04-02 16:00
FAB116407A-04,INSTALL DOOR & HARDWARE - FAB116407A,Active,2025-09-24 08:00,2025-09-30 17:00,2025-09-24 08:00,
FAB116407A-05,PAINT & PROTECT DOORS & FRAMES -  FAB116407A,Not Started,2026-02-16 08:00,2026-02-19 15:00,,
FAB116407B-03,INSTALL DOOR FRAMES - FAB116407B,Complete,2025-10-21 13:00,2025-10-22 12:00,2025-04-02 00:00,2025-04-02 16:00
FAB116407B-04,INSTALL DOOR & HARDWARE - FAB116407B,Active,2025-10-14 08:00,2025-10-20 17:00,2025-10-14 08:00,
FAB116407B-05,PAINT & PROTECT DOORS & FRAMES -  FAB116407B,Not Started,2026-02-16 08:00,2026-02-19 15:00,,
FAB116414A-04,INSTALL DOOR & HARDWARE - FAB116414A,Active,2025-09-19 08:00,2025-09-25 17:00,2025-09-19 08:00,
FAB116414A-05,PAINT & PROTECT DOORS & FRAMES -  FAB116414A,Not Started,2026-02-16 08:00,2026-02-19 15:00,,
FAB116414B-04,INSTALL DOOR & HARDWARE - FAB116414B,Active,2025-11-12 08:00,2025-11-18 17:00,2025-11-12 08:00,
FAB116414B-05,PAINT & PROTECT DOORS & FRAMES -  FAB116414B,Not Started,2026-02-16 08:00,2026-02-19 15:00,,
FAB116507A-03,INSTALL DOOR FRAMES - FAB116507A,Complete,2025-09-05 13:00,2025-09-08 12:00,2025-03-14 00:00,2025-03-14 16:00
FAB116507A-04,INSTALL DOOR & HARDWARE - FAB116507A,Active,2025-08-12 08:00,2025-08-18 17:00,2025-08-12 08:00,
FAB116507A-05,PAINT & PROTECT DOORS & FRAMES -  FAB116507A,Not Started,2026-02-16 08:00,2026-02-17 17:00,,
FAB116507A-07,DOOR FRAME PAINT & 1ST COAT - FAB116507A,Complete,2025-08-06 08:00,2025-08-08 17:00,2025-08-06 08:00,2025-08-08 17:00
FAB116414C-01,IMPACT - INSTALL/REWORK DRYWALL FRAMING AROUND DOORS - FAB116414C,Complete,2025-04-01 08:00,2025-04-09 17:00,2025-04-01 08:00,2025-04-07 17:00
FAB116414C-03,INSTALL DOOR FRAMES - FAB116414C,Complete,2025-04-07 08:00,2025-04-07 17:00,2025-04-07 08:00,2025-04-07 17:00
FAB116414C-04,INSTALL DOOR & HARDWARE - FAB116414C,Active,2025-09-25 08:00,2025-10-01 17:00,2025-09-25 08:00,
FAB116414C-05,PAINT & PROTECT DOORS & FRAMES - FAB116414C,Not Started,2026-02-16 08:00,2026-02-19 15:00,,
FAB116501A-01,DOOR ASSEMBLY - FAB116501A,Complete,2025-10-29 08:00,2025-10-30 17:00,2025-10-29 08:00,2025-10-30 17:00
FAB116501A-02,DOOR PACKAGE INSTALL - FAB116501A,Complete,2025-10-29 08:00,2025-10-30 17:00,2025-10-29 08:00,2025-10-30 17:00
FAB116413A-01,IMPACT - INSTALL/REWORK DRYWALL FRAMING AROUND DOORS - FAB116413A,Complete,2025-09-26 08:00,2025-09-26 17:00,2025-09-26 08:00,2025-09-26 17:00
FAB116413A-03,INSTALL DOOR FRAMES - FAB116413A,Complete,2025-09-26 08:00,2025-09-26 17:00,2025-09-27 08:00,2025-09-27 17:00
FAB116413A-04,INSTALL DOOR & HARDWARE - FAB116413A,Not Started,2025-11-28 08:00,2025-12-04 17:00,,
FAB116413A-05,PAINT & PROTECT DOORS & FRAMES -  FAB116413A,Not Started,2026-02-16 08:00,2026-02-19 15:00,,
FAB116412A-01,IMPACT - INSTALL/REWORK DRYWALL FRAMING AROUND DOORS - FAB116412A,Complete,2025-03-24 08:00,2025-04-01 17:00,2025-03-24 08:00,2025-04-01 17:00
FAB116412A-03,INSTALL DOOR FRAMES - FAB116412A,Complete,2025-04-01 08:00,2025-04-01 17:00,2025-04-01 08:00,2025-04-01 17:00
FAB116412A-04,INSTALL DOOR & HARDWARE - FAB116412A,Active,2025-07-10 08:00,2025-07-16 17:00,2025-07-10 08:00,
FAB116412A-05,PAINT & PROTECT DOORS & FRAMES -  FAB116412A,Not Started,2026-02-16 08:00,2026-02-16 17:00,,
FAB116526A-03,INSTALL DOOR FRAMES - FAB116526A,Complete,2025-10-20 13:00,2025-10-21 12:00,2025-10-20 13:00,2025-10-21 12:00
FAB116526A-04,INSTALL DOOR & HARDWARE - FAB116526A,Active,2025-11-14 08:00,2025-11-20 17:00,2025-11-14 08:00,
FAB116526A-05,PAINT & PROTECT DOORS & FRAMES -  FAB116526A,Not Started,2026-02-16 08:00,2026-02-19 15:00,,
FAB116520A-01,INSTALL DOOR FRAMES - FAB116520A,Complete,2025-10-21 08:00,2025-10-21 17:00,2025-10-21 08:00,2025-10-21 17:00
FAB116520A-04,INSTALL DOOR & HARDWARE - FAB116520A,Not Started,2025-11-21 08:00,2025-11-27 17:00,,
FAB116520A-05,PAINT & PROTECT DOORS & FRAMES -  FAB116520A,Not Started,2026-02-16 08:00,2026-02-19 15:00,,
FAB116519A-03,INSTALL DOOR FRAMES - FAB116519A,Complete,2025-04-09 08:00,2025-04-10 17:00,2025-04-09 08:00,2025-04-11 17:00
FAB116519A-04,INSTALL DOOR & HARDWARE - FAB116519A,Active,2025-11-05 08:00,2025-11-11 17:00,2025-11-05 08:00,
FAB116519A-05,PAINT & PROTECT DOORS & FRAMES -  FAB116519A,Not Started,2026-02-16 08:00,2026-02-19 15:00,,
FAB116519B-01,DOOR ASSEMBLY - FAB116519B,Not Started,2025-11-21 08:00,2025-11-24 17:00,,
FAB116519B-02,DOOR PACKAGE INSTALL - FAB116519B,Not Started,2025-11-21 08:00,2025-11-24 17:00,,
FAB116519D-07,DOOR INSTALL - FAB116519D (OHC),Not Started,2025-12-05 08:00,2025-12-08 17:00,,
FAB116518A-01,INSTALL/REWORK DRYWALL FRAMING AROUND DOORS - FAB116518A,Complete,2025-06-16 08:00,2025-06-24 17:00,2025-06-16 08:00,2025-06-24 17:00
FAB116518A-03,INSTALL DOOR FRAMES - FAB116518A,Complete,2025-06-25 08:00,2025-06-25 17:00,2025-06-25 08:00,2025-06-25 17:00
FAB116518A-04,INSTALL DOOR & HARDWARE - FAB116518A,Active,2025-09-24 08:00,2025-09-30 17:00,2025-09-24 08:00,
FAB116518A-05,PAINT & PROTECT DOORS & FRAMES -  FAB116518A,Not Started,2026-02-16 08:00,2026-02-19 15:00,,
FAB116509A-03,INSTALL DOOR FRAMES - FAB116509A,Complete,2025-08-12 08:00,2025-08-12 17:00,2025-08-12 08:00,2025-08-12 17:00
FAB116509A-04,INSTALL DOOR & HARDWARE - FAB116509A,Active,2025-10-21 08:00,2025-10-27 17:00,2025-10-21 08:00,
FAB116509A-05,PAINT & PROTECT DOORS & FRAMES -  FAB116509A,Not Started,2026-02-16 08:00,2026-02-19 15:00,,
FAB116509B-02,INSTALL DOOR FRAMES - FAB116509B,Complete,2025-06-20 08:00,2025-06-20 17:00,2025-03-19 08:00,2025-03-19 16:00
FAB116509B-04,INSTALL DOOR & HARDWARE - FAB116509B,Active,2025-10-01 08:00,2025-10-07 17:00,2025-10-01 08:00,
FAB116509B-05,PAINT & PROTECT DOORS & FRAMES -  FAB116509B,Not Started,2026-02-16 08:00,2026-02-19 15:00,,
FAB116509F-03,INSTALL DOOR FRAMES - FAB116509F,Complete,2025-10-28 08:00,2025-10-28 17:00,2025-10-28 08:00,2025-10-28 17:00
FAB116509F-04,INSTALL DOOR & HARDWARE - FAB116509F,Active,2025-10-29 08:00,2025-11-04 17:00,2025-10-29 08:00,
FAB116509F-05,PAINT & PROTECT DOORS & FRAMES -  FAB116509F,Not Started,2026-02-16 08:00,2026-02-19 15:00,,
FAB116509C-03,INSTALL DOOR FRAMES - FAB116509C,Not Started,2025-11-21 08:00,2025-11-21 17:00,,
FAB116509C-04,INSTALL DOOR & HARDWARE - FAB116509C,Not Started,2025-11-24 08:00,2025-11-28 17:00,,
FAB116509C-05,PAINT & PROTECT DOORS & FRAMES -  FAB116509C,Not Started,2026-02-16 08:00,2026-02-19 15:00,,
FAB116523B-01,DOOR ASSEMBLY - FAB116523B,Not Started,2025-12-01 08:00,2025-12-02 17:00,,
FAB116523B-02,DOOR PACKAGE INSTALL - FAB116523B,Not Started,2025-12-01 08:00,2025-12-02 17:00,,
FAB116521A-01,IMPACT - INSTALL/REWORK DRYWALL FRAMING AROUND DOORS - FAB116521A,Complete,2025-09-01 08:00,2025-09-02 17:00,2025-09-01 08:00,2025-09-02 17:00
FAB116521A-03,INSTALL DOOR FRAMES - FAB116521A,Complete,2025-09-02 08:00,2025-09-02 17:00,2025-09-02 08:00,2025-09-02 17:00
FAB116521A-04,INSTALL DOOR & HARDWARE - FAB116521A,Active,2025-10-07 08:00,2025-10-13 17:00,2025-10-07 08:00,
FAB116521A-05,PAINT & PROTECT DOORS & FRAMES -  FAB116521A,Not Started,2026-02-16 08:00,2026-02-19 15:00,,
FAB116516A-03,INSTALL DOOR FRAMES - FAB116516A,Complete,2025-11-12 08:00,2025-11-12 17:00,2025-11-12 08:00,2025-11-12 17:00
FAB116516A-04,INSTALL DOOR & HARDWARE - FAB116516A,Active,2025-11-12 08:00,2025-11-18 17:00,2025-11-12 08:00,
FAB116516A-05,PAINT & PROTECT DOORS & FRAMES -  FAB116516A,Not Started,2026-02-16 08:00,2026-02-19 15:00,,
FAB116514A-04,INSTALL DOOR & HARDWARE - FAB116514A,Not Started,2025-12-02 08:00,2025-12-08 17:00,,
FAB116514A-05,PAINT & PROTECT DOORS & FRAMES -  FAB116514A,Not Started,2026-02-16 08:00,2026-02-19 15:00,,
FAB116514A-03,INSTALL DOOR FRAMES - FAB116514A,Not Started,2025-11-28 08:00,2025-12-01 17:00,,
FAB116527A-01,IMPACT - INSTALL/REWORK DRYWALL FRAMING AROUND DOORS - FAB116527A,Complete,2025-10-03 08:00,2025-10-07 17:00,2025-10-03 08:00,2025-10-07 17:00
FAB116527A-03,INSTALL DOOR FRAMES - FAB116527A,Complete,2025-10-07 08:00,2025-10-07 17:00,2025-10-07 08:00,2025-10-07 17:00
FAB116527A-04,INSTALL DOOR & HARDWARE - FAB116527A,Active,2025-10-08 08:00,2025-10-14 17:00,2025-10-08 08:00,
FAB116527A-05,PAINT & PROTECT DOORS & FRAMES -  FAB116527A,Not Started,2026-02-16 08:00,2026-02-19 15:00,,
FAB116512C-01,IMPACT - INSTALL/REWORK DRYWALL FRAMING AROUND DOORS - FAB116512C HANDED OVER TO SECAI ON 08/20,Complete,2025-08-20 08:00,2025-08-21 17:00,2025-08-20 08:00,2025-08-20 17:00
FAB116512C-03,INSTALL DOOR FRAME BY SECAI - FAB116512C HANDED OVER TO SECAI ON 08/20,Complete,2025-08-20 08:00,2025-08-20 17:00,2025-08-20 08:00,2025-09-06 17:00
FAB116512C-04,INSTALL DOOR & HARDWARE - FAB116512C,Active,2025-10-30 08:00,2025-11-05 17:00,2025-10-30 08:00,
FAB116512C-05,PAINT & PROTECT DOORS & FRAMES -  FAB116512C,Not Started,2026-02-16 08:00,2026-02-19 17:00,,
FAB116513F-04,INSTALL DOOR & HARDWARE - FAB116513F,Not Started,2025-12-01 08:00,2025-12-05 17:00,,
FAB116513F-05,PAINT & PROTECT DOORS & FRAMES -  FAB116513F,Not Started,2026-02-16 08:00,2026-02-19 15:00,,
FAB116513H-04,INSTALL DOOR & HARDWARE - FAB116513H,Not Started,2025-11-28 08:00,2025-12-04 17:00,,
FAB116513H-05,PAINT & PROTECT DOORS & FRAMES -  FAB116513H,Not Started,2026-02-16 08:00,2026-02-19 15:00,,
FAB116513C-04,INSTALL DOOR & HARDWARE - FAB116513C,Active,2025-10-29 08:00,2025-11-04 17:00,2025-10-29 08:00,
FAB116513C-05,PAINT & PROTECT DOORS & FRAMES -  FAB116513C,Not Started,2026-02-16 08:00,2026-02-19 17:00,,
FAB116513D-04,INSTALL DOOR & HARDWARE - FAB116513D,Not Started,2025-12-01 08:00,2025-12-05 17:00,,
FAB116513D-05,PAINT & PROTECT DOORS & FRAMES -  FAB116513D,Not Started,2026-02-16 08:00,2026-02-19 17:00,,
FAB116513E-04,INSTALL DOOR & HARDWARE - FAB116513E,Active,2025-10-14 08:00,2025-10-20 17:00,2025-10-14 08:00,
FAB116513E-05,PAINT & PROTECT DOORS & FRAMES -  FAB116513E,Not Started,2026-02-16 08:00,2026-02-19 17:00,,
FAB116513G-04,INSTALL DOOR & HARDWARE - FAB116513G,Active,2025-10-08 08:00,2025-10-14 17:00,2025-10-08 08:00,
FAB116513G-05,PAINT & PROTECT DOORS & FRAMES -  FAB116513G,Not Started,2026-02-16 08:00,2026-02-19 17:00,,
FAB116513E-11,IMPACT - PROCUREMENT - Reordered doors (Wall Thickness and Door Swing Design Changes) FAB116513E/F/G,Complete,2025-07-10 08:00,2025-09-16 15:00,2025-06-09 08:00,2025-07-14 15:00
FAB116513F-03,INSTALL DOOR FRAME BY SECAI - FAB116513F HANDED OVER ON 08/20,Active,2025-08-20 08:00,2025-08-20 17:00,2025-08-20 08:00,
FAB116513C-03,INSTALL DOOR FRAME - FAB116513C,Complete,2025-10-28 08:00,2025-10-28 17:00,2025-10-28 08:00,2025-10-28 17:00
FAB116513D-03,INSTALL DOOR FRAME BY SECAI - FAB116513D HANDED OVER TO SECAI ON 08/20,Active,2025-08-20 08:00,2025-08-20 17:00,2025-08-20 08:00,
FAB116513E-03,INSTALL DOOR FRAME BY SECAI - FAB116513E HANDED OVER TO SECAI ON 07/17,Complete,2025-07-17 08:00,2025-08-20 17:00,2025-07-17 08:00,2025-09-22 08:00
FAB116513G-03,INSTALL DOOR FRAME BY SECAI - FAB116513G HANDED OVER TO SECAI ON 07/17,Complete,2025-07-17 08:00,2025-08-20 17:00,2025-07-17 08:00,2025-09-08 08:00
FAB116511A-03,INSTALL DOOR FRAMES - FAB116511A,Complete,2025-08-25 13:00,2025-08-26 12:00,2025-05-21 00:00,2025-05-21 16:00
FAB116511A-04,INSTALL DOOR & HARDWARE - FAB116511A,Not Started,2025-11-21 08:00,2025-11-27 17:00,,
FAB116511A-05,PAINT & PROTECT DOORS & FRAMES -  FAB116511A,Not Started,2026-02-16 08:00,2026-02-19 15:00,,
FAB116511B-01,IMPACT - INSTALL/REWORK DRYWALL FRAMING AROUND DOORS - FAB116511B BAKER/DESCOPE,Complete,2025-06-10 08:00,2025-06-10 17:00,2025-06-10 08:00,2025-06-10 16:00
FAB116511B-03,INSTALL DOOR FRAMES - FAB116511B,Complete,2025-07-28 08:00,2025-07-28 17:00,2025-07-28 08:00,2025-07-28 17:00
FAB116511B-04,INSTALL DOOR & HARDWARE - FAB116511B,Active,2025-10-01 08:00,2025-10-07 17:00,2025-10-01 08:00,
FAB116511B-05,PAINT & PROTECT DOORS & FRAMES -  FAB116511B,Not Started,2026-02-16 08:00,2026-02-19 15:00,,
FAB116511G-03,INSTALL DOOR FRAMES - FAB116511G,Complete,2025-08-04 08:00,2025-08-04 17:00,2025-08-04 08:00,2025-08-04 17:00
FAB116511G-04,INSTALL DOOR & HARDWARE - FAB116511G,Not Started,2025-11-21 08:00,2025-11-27 17:00,,
FAB116511G-05,PAINT & PROTECT DOORS & FRAMES -  FAB116511G,Not Started,2026-02-16 08:00,2026-02-19 15:00,,
FAB116511B-11,IMPACT - PROCUREMENT - Reordered doors (Wall Thickness and Door Swing Design Changes),Complete,2025-06-09 08:00,2025-08-04 17:00,2025-06-09 08:00,2025-07-14 17:00
FAB1165110B-04,DOOR INSTALL - FAB1165110B (OHC),Not Started,2025-12-12 08:00,2025-12-15 17:00,,
FAB114404A-01,IMPACT - INSTALL/REWORK DRYWALL FRAMING AROUND DOORS - FAB114404A,Complete,2025-06-10 08:00,2025-06-10 08:00,2025-03-17 08:00,2025-03-24 08:00
FAB114404A-03,INSTALL DOOR FRAMES - FAB114404A,Complete,2025-09-11 13:00,2025-09-12 12:00,2025-03-24 00:00,2025-03-24 16:00
FAB114404A-04,INSTALL DOOR & HARDWARE - FAB114404A,Not Started,2025-12-05 08:00,2025-12-11 17:00,,
FAB114404A-05,PAINT & PROTECT DOORS & FRAMES - FAB114404A,Not Started,2026-02-16 08:00,2026-02-19 15:00,,
FAB114404B-01,IMPACT - INSTALL/REWORK DRYWALL FRAMING AROUND DOORS - FAB114404B,Complete,2025-06-10 08:00,2025-06-10 08:00,2025-03-03 08:00,2025-03-11 08:00
FAB114404B-03,INSTALL DOOR FRAMES - FAB114404B,Complete,2025-09-11 13:00,2025-09-12 12:00,2025-03-11 00:00,2025-03-11 16:00
FAB114404B-04,INSTALL DOOR & HARDWARE - FAB114404B,Active,2025-11-07 08:00,2025-11-13 17:00,2025-11-07 08:00,
FAB114404B-05,PAINT & PROTECT DOORS & FRAMES - FAB114404B,Not Started,2026-02-16 08:00,2026-02-19 15:00,,
FAB114403A-01,IMPACT - INSTALL/REWORK DRYWALL FRAMING AROUND DOORS - FAB114403A,Complete,2025-06-10 08:00,2025-06-10 08:00,2025-03-03 08:00,2025-03-12 08:00
FAB114403A-03,INSTALL DOOR FRAMES - FAB114403A,Complete,2025-09-10 13:00,2025-09-11 12:00,2025-03-12 00:00,2025-03-12 08:00
FAB114403A-04,INSTALL DOOR & HARDWARE - FAB114403A,Active,2025-11-06 08:00,2025-11-12 17:00,2025-11-06 08:00,
FAB114403A-05,PAINT & PROTECT DOORS & FRAMES - FAB114403A,Not Started,2026-02-16 08:00,2026-02-19 15:00,,
FAB114403B-01,IMPACT - INSTALL/REWORK DRYWALL FRAMING AROUND DOORS - FAB114403B,Complete,2025-06-10 08:00,2025-06-10 08:00,2025-03-05 08:00,2025-03-14 08:00
FAB114403B-03,INSTALL DOOR FRAMES - FAB114403B,Complete,2025-09-10 13:00,2025-09-11 12:00,2025-03-14 00:00,2025-03-14 16:00
FAB114403B-04,DOOR INSTALL - FAB114403B,Complete,2025-09-25 08:00,2025-09-25 17:00,2025-09-25 08:00,2025-09-25 17:00
FAB114403B-05,PAINT & PROTECT DOORS & FRAMES - FAB114403B,Complete,2025-09-23 08:00,2025-09-26 15:00,2025-09-23 08:00,2025-09-26 15:00
FAB114403B-06,INSTALL DOOR HARDWARE - FAB114403B,Not Started,2025-11-21 08:00,2025-11-26 15:00,,
FAB114402A-01,IMPACT - INSTALL/REWORK DRYWALL FRAMING AROUND DOORS BY SECAI - FAB114402A BAKER/DESCOPE,Complete,2025-06-10 08:00,2025-06-10 08:00,2025-06-10 08:00,2025-06-10 08:00
FAB114402A-03,INSTALL DOOR FRAMES - FAB114402A,Complete,2025-06-10 08:00,2025-06-10 08:00,2025-06-17 08:00,2025-06-17 08:00
FAB114402A-04,INSTALL DOOR & HARDWARE - FAB114402A,Active,2025-10-29 08:00,2025-11-04 17:00,2025-10-29 08:00,
FAB114402A-05,PAINT & PROTECT DOORS & FRAMES - FAB114402A,Not Started,2026-02-16 08:00,2026-02-19 15:00,,
FAB114402B-01,IMPACT - INSTALL/REWORK DRYWALL FRAMING AROUND DOORS - FAB114402B,Complete,2025-06-10 08:00,2025-06-10 08:00,2025-03-04 08:00,2025-03-12 08:00
FAB114402B-03,INSTALL DOOR FRAMES - FAB114402B,Complete,2025-09-16 13:00,2025-09-17 12:00,2025-03-12 00:00,2025-03-12 16:00
FAB114402B-04,INSTALL DOOR & HARDWARE - FAB114402B,Active,2025-09-25 08:00,2025-10-01 17:00,2025-09-25 08:00,
FAB114402B-05,PAINT & PROTECT DOORS & FRAMES - FAB114402B,Not Started,2026-02-16 08:00,2026-02-19 15:00,,
FAB114402A-11,IMPACT - SECAI - MEP CONDUIT BLOCKING FRAME INSTALLATION,Complete,2025-06-20 08:00,2025-06-30 10:00,2025-05-19 08:00,2025-06-13 10:00
FAB114203A-01,IMPACT - INSTALL/REWORK DRYWALL FRAMING AROUND DOORS - FAB114203A,Complete,2025-06-10 08:00,2025-06-10 08:00,2025-03-04 08:00,2025-03-13 08:00
FAB114203A-03,INSTALL DOOR FRAMES - FAB114203A,Complete,2025-09-19 13:00,2025-09-22 12:00,2025-03-13 00:00,2025-03-13 16:00
FAB114203A-04,INSTALL DOOR & HARDWARE - FAB114203A,Active,2025-11-07 08:00,2025-11-13 17:00,2025-11-07 08:00,
FAB114203A-05,PAINT & PROTECT DOORS & FRAMES - FAB114203A,Not Started,2026-02-16 08:00,2026-02-19 15:00,,
FAB114203B-01,IMPACT - INSTALL/REWORK DRYWALL FRAMING AROUND DOORS - FAB114203B,Complete,2025-06-10 08:00,2025-06-10 08:00,2025-03-04 08:00,2025-06-13 08:00
FAB114203B-03,INSTALL DOOR FRAMES - FAB114203B,Complete,2025-09-19 13:00,2025-09-22 12:00,2025-03-13 00:00,2025-03-13 16:00
FAB114203B-04,INSTALL DOOR & HARDWARE - FAB114203B,Active,2025-07-29 08:00,2025-08-04 17:00,2025-07-29 08:00,
FAB114203B-05,PAINT & PROTECT DOORS & FRAMES - FAB114203B,Not Started,2026-02-16 08:00,2026-02-17 17:00,,
FAB114155A-01,IMPACT - INSTALL/REWORK DRYWALL FRAMING AROUND DOORS BY SECAI - FAB114155A,Complete,2025-09-23 08:00,2025-10-01 17:00,2025-03-05 08:00,2025-03-13 16:00
FAB114155A-03,INSTALL DOOR FRAMES - FAB114155A,Complete,2025-09-16 13:00,2025-09-17 12:00,2025-03-13 00:00,2025-03-13 08:00
FAB114155A-04,INSTALL DOOR & HARDWARE - FAB114155A,Active,2025-09-12 08:00,2025-09-18 17:00,2025-09-12 08:00,
FAB114155A-05,PAINT & PROTECT DOORS & FRAMES - FAB114155A,Not Started,2026-02-16 08:00,2026-02-19 15:00,,
FAB114155B-01,IMPACT - INSTALL/REWORK DRYWALL FRAMING AROUND DOORS BY SECAI - FAB114155B,Complete,2025-09-23 08:00,2025-10-01 17:00,2025-03-18 08:00,2025-03-26 16:00
FAB114155B-03,INSTALL DOOR FRAMES - FAB114155B,Complete,2025-09-16 13:00,2025-09-17 12:00,2025-03-26 00:00,2025-03-26 16:00
FAB114155B-04,INSTALL DOOR & HARDWARE - FAB114155B,Active,2025-10-13 08:00,2025-10-17 17:00,2025-10-13 08:00,
FAB114155B-05,PAINT & PROTECT DOORS & FRAMES - FAB114155B,Not Started,2026-02-16 08:00,2026-02-19 15:00,,
FAB114154A-01,IMPACT - INSTALL/REWORK DRYWALL FRAMING AROUND DOORS - FAB114154A,Complete,2025-03-04 08:00,2025-03-04 08:00,2025-03-04 08:00,2025-03-11 17:00
FAB114154A-03,INSTALL DOOR FRAMES - FAB114154A,Complete,2025-03-11 08:00,2025-03-11 08:00,2025-03-11 08:00,2025-03-11 08:00
FAB114154A-04,INSTALL DOOR & HARDWARE - FAB114154A,Active,2025-08-22 08:00,2025-08-28 17:00,2025-08-22 08:00,
FAB114154A-05,PAINT & PROTECT DOORS & FRAMES - FAB114154A,Not Started,2026-02-16 08:00,2026-02-17 17:00,,
FAB114154B-01,IMPACT - INSTALL/REWORK DRYWALL FRAMING AROUND DOORS - FAB114154B,Complete,2025-03-03 08:00,2025-03-03 08:00,2025-03-04 08:00,2025-03-11 17:00
FAB114154B-03,INSTALL DOOR FRAMES - FAB114154B,Complete,2025-06-10 08:00,2025-06-10 08:00,2025-03-11 08:00,2025-03-11 08:00
FAB114154B-04,INSTALL DOOR & HARDWARE - FAB114154B,Active,2025-10-21 08:00,2025-10-27 17:00,2025-10-21 08:00,
FAB114154B-05,PAINT & PROTECT DOORS & FRAMES - FAB114154B,Not Started,2026-02-16 08:00,2026-02-19 15:00,,
FAB114153A-01,IMPACT - INSTALL/REWORK DRYWALL FRAMING AROUND DOORS BY SECAI - FAB114153A,Complete,2025-06-10 08:00,2025-06-10 08:00,2025-03-03 08:00,2025-03-11 08:00
FAB114153A-03,INSTALL DOOR FRAMES - FAB114153A,Complete,2025-10-16 13:00,2025-10-17 12:00,2025-03-11 00:00,2025-03-11 16:00
FAB114153A-04,INSTALL DOOR & HARDWARE - FAB114153A,Active,2025-11-07 08:00,2025-11-13 17:00,2025-11-07 08:00,
FAB114153A-05,PAINT & PROTECT DOORS & FRAMES - FAB114153A,Not Started,2026-02-16 08:00,2026-02-19 15:00,,
FAB114153B-01,IMPACT - INSTALL/REWORK DRYWALL FRAMING AROUND DOORS BY SECAI - FAB114153B,Complete,2025-06-10 08:00,2025-06-10 08:00,2025-03-25 08:00,2025-03-25 08:00
FAB114153B-03,INSTALL DOOR FRAMES - FAB114153B,Complete,2025-10-16 13:00,2025-10-17 12:00,2025-03-25 00:00,2025-03-25 16:00
FAB114153B-04,INSTALL DOOR & HARDWARE - FAB114153B,Active,2025-08-22 08:00,2025-08-28 17:00,2025-08-22 08:00,
FAB114153B-05,PAINT & PROTECT DOORS & FRAMES - FAB114153B,Not Started,2026-02-16 08:00,2026-02-17 17:00,,
FAB114152A-01,IMPACT - INSTALL/REWORK DRYWALL FRAMING AROUND DOORS - FAB114152A,Complete,2025-06-10 08:00,2025-06-10 08:00,2025-03-11 08:00,2025-03-20 08:00
FAB114152A-03,INSTALL DOOR FRAMES - FAB114152A,Complete,2025-09-17 13:00,2025-09-18 12:00,2025-03-20 00:00,2025-03-20 16:00
FAB114152A-04,INSTALL DOOR & HARDWARE - FAB114152A,Active,2025-09-12 08:00,2025-09-18 17:00,2025-11-07 08:00,
FAB114152A-05,PAINT & PROTECT DOORS & FRAMES - FAB114152A,Not Started,2026-02-16 08:00,2026-02-19 15:00,,
FAB114152B-01,IMPACT - INSTALL/REWORK DRYWALL FRAMING AROUND DOORS - FAB114152B,Complete,2025-06-10 08:00,2025-06-10 08:00,2025-03-11 08:00,2025-03-20 08:00
FAB114152B-03,INSTALL DOOR FRAMES - FAB114152B,Complete,2025-09-17 13:00,2025-09-18 12:00,2025-03-20 00:00,2025-03-20 16:00
FAB114152B-04,INSTALL DOOR & HARDWARE - FAB114152B,Not Started,2025-11-21 08:00,2025-11-27 17:00,,
FAB114152B-05,PAINT & PROTECT DOORS & FRAMES - FAB114152B,Not Started,2026-02-16 08:00,2026-02-19 15:00,,
FAB112155A-25,DOOR FRAME HANDED OVER TO SECAI 08/14 - FAB112155A,Complete,2025-08-05 08:00,2025-08-13 17:00,2025-08-14 08:00,2025-08-14 16:00
FAB112155A-35,INSTALL DOOR FRAME BY SECAI - FAB112155A HANDED OVER 08/14,Complete,2025-09-18 08:00,2025-09-24 17:00,2025-08-15 08:00,2025-08-22 17:00
FAB112155A-04,INSTALL DOOR & HARDWARE - FAB112155A,Active,2025-09-24 08:00,2025-09-30 17:00,2025-09-24 08:00,
FAB112155A-05,PAINT & PROTECT DOORS & FRAMES - FAB112155A,Not Started,2026-02-16 08:00,2026-02-19 15:00,,
FAB112155B-01,IMPACT - REWORK DRYWALL FOR/AND INSTALL DOOR FRAMES - FAB112155B,Complete,2025-08-05 08:00,2025-08-13 17:00,2025-03-10 08:00,2025-03-19 16:00
FAB112155B-03,INSTALL DOOR FRAMES - FAB112155B,Complete,2025-09-22 13:00,2025-09-23 12:00,2025-03-19 00:00,2025-03-19 16:00
FAB112155B-04,INSTALL DOOR & HARDWARE - FAB112155B,Not Started,2025-11-21 08:00,2025-11-27 17:00,,
FAB112155B-05,PAINT & PROTECT DOORS & FRAMES - FAB112155B,Not Started,2026-02-16 08:00,2026-02-19 15:00,,
FAB112159A-01,IMPACT - INSTALL/REWORK DRYWALL FRAMING AROUND DOORS - FAB112159A,Complete,2025-09-24 08:00,2025-09-24 17:00,2025-09-24 08:00,2025-09-24 17:00
FAB112159A-03,INSTALL DOOR FRAMES - FAB112159A,Complete,2025-09-24 08:00,2025-09-24 17:00,2025-09-24 08:00,2025-09-24 17:00
FAB112159A-04,INSTALL DOOR & HARDWARE - FAB112159A,Active,2025-10-31 08:00,2025-11-06 17:00,2025-10-31 08:00,
FAB112159A-05,PAINT & PROTECT DOORS & FRAMES - FAB112159A,Not Started,2026-02-16 08:00,2026-02-19 15:00,,
FAB112159B-01,IMPACT - INSTALL/REWORK DRYWALL FRAMING AROUND DOORS - FAB112159B,Complete,2025-03-19 08:00,2025-03-27 17:00,2025-03-19 08:00,2025-03-27 17:00
FAB112159B-03,INSTALL DOOR FRAMES - FAB112159B,Complete,2025-08-04 13:00,2025-08-05 12:00,2025-03-27 00:00,2025-03-27 08:00
FAB112159B-04,INSTALL DOOR & HARDWARE - FAB112159B,Active,2025-09-25 08:00,2025-10-01 17:00,2025-09-25 08:00,
FAB112159B-05,PAINT & PROTECT DOORS & FRAMES - FAB112159B,Not Started,2026-02-16 08:00,2026-02-19 15:00,,
FAB112160A-01,IMPACT - INSTALL/REWORK DRYWALL FRAMING AROUND DOORS - FAB112160A,Complete,2025-04-07 08:00,2025-04-15 17:00,2025-04-07 08:00,2025-04-15 17:00
FAB112160A-03,INSTALL DOOR FRAMES FAB112160A,Complete,2025-08-07 13:00,2025-08-08 12:00,2025-04-15 00:00,2025-04-15 16:00
FAB112160A-04,INSTALL DOOR & HARDWARE - FAB112160A,Active,2025-09-24 08:00,2025-09-30 17:00,2025-09-24 08:00,
FAB112160A-05,PAINT & PROTECT DOORS & FRAMES - FAB112160A,Not Started,2026-02-16 08:00,2026-02-19 15:00,,
FAB112202A-03,INSTALL DOOR FRAMES - FAB112202A P-1,Complete,2025-07-03 08:00,2025-07-03 17:00,2025-07-03 08:00,2025-07-03 16:00
FAB112202A-04,INSTALL DOOR & HARDWARE - FAB112202A - P1,Active,2025-07-08 08:00,2025-07-14 17:00,2025-07-08 08:00,
FAB112202A-05,PAINT & PROTECT DOORS & FRAMES - FAB112202A,Not Started,2026-02-16 08:00,2026-02-19 15:00,,
FAB112203A-01,IMPACT - INSTALL/REWORK DRYWALL FRAMING AROUND DOORS - FAB112203A,Complete,2025-06-10 08:00,2025-06-10 08:00,2025-03-01 08:00,2025-03-10 08:00
FAB112203A-03,INSTALL DOOR FRAMES - FAB112203A,Complete,2025-09-23 13:00,2025-09-24 12:00,2025-03-10 00:00,2025-03-10 16:00
FAB112203A-04,INSTALL DOOR & HARDWARE - FAB112203A,Active,2025-10-03 08:00,2025-10-09 17:00,2025-10-03 08:00,
FAB112203A-05,PAINT & PROTECT DOORS & FRAMES - FAB112203A,Not Started,2026-02-16 08:00,2026-02-19 15:00,,
FAB112203B-01,IMPACT - INSTALL/REWORK DRYWALL FRAMING AROUND DOORS - FAB112203B,Complete,2025-06-10 08:00,2025-06-10 08:00,2025-03-01 08:00,2025-03-10 08:00
FAB112203B-03,INSTALL DOOR FRAMES - FAB112203B,Complete,2025-09-23 13:00,2025-09-24 12:00,2025-03-10 00:00,2025-03-10 16:00
FAB112203B-04,INSTALL DOOR & HARDWARE - FAB112203B,Active,2025-08-21 08:00,2025-08-27 17:00,2025-08-21 08:00,
FAB112203B-05,PAINT & PROTECT DOORS & FRAMES - FAB112203B,Not Started,2026-02-16 08:00,2026-02-19 17:00,,
FAB112205A-01,IMPACT - INSTALL/REWORK DRYWALL FRAMING AROUND DOORS BY SECAI - FAB112205A BAKER/DESCOPE,Complete,2025-06-10 08:00,2025-06-10 08:00,2025-03-17 08:00,2025-03-24 08:00
FAB112205A-03,INSTALL DOOR FRAMES - FAB112205A,Complete,2025-09-08 13:00,2025-09-09 12:00,2025-03-24 00:00,2025-03-24 16:00
FAB112205A-04,INSTALL DOOR & HARDWARE - FAB112205A,Active,2025-09-29 08:00,2025-10-03 17:00,2025-09-29 08:00,
FAB112205A-05,PAINT & PROTECT DOORS & FRAMES - FAB112205A,Not Started,2026-02-16 08:00,2026-02-17 17:00,,
FAB112205B-01,IMPACT - INSTALL/REWORK DRYWALL FRAMING AROUND DOORS - FAB112205B,Complete,2025-06-10 08:00,2025-06-10 08:00,2025-03-17 08:00,2025-03-24 08:00
FAB112205B-03,INSTALL DOOR FRAMES - FAB112205B,Complete,2025-09-08 13:00,2025-09-09 12:00,2025-03-24 00:00,2025-03-24 16:00
FAB112205B-04,INSTALL DOOR & HARDWARE - FAB112205B,Active,2025-10-03 08:00,2025-10-09 17:00,2025-10-03 08:00,
FAB112205B-05,PAINT & PROTECT DOORS & FRAMES - FAB112205B,Not Started,2026-02-16 08:00,2026-02-19 15:00,,
FAB112302A-01,IMPACT - INSTALL/REWORK DRYWALL FRAMING AROUND DOORS - FAB112302A,Complete,2025-06-10 08:00,2025-06-10 08:00,2025-03-04 08:00,2025-03-13 08:00
FAB112302A-03,INSTALL DOOR FRAMES - FAB112302A,Complete,2025-09-19 13:00,2025-09-22 12:00,2025-03-13 00:00,2025-03-13 16:00
FAB112302A-04,INSTALL DOOR & HARDWARE - FAB112302A,Active,2025-10-13 08:00,2025-10-17 17:00,2025-10-13 08:00,
FAB112302A-05,PAINT & PROTECT DOORS & FRAMES - FAB112302A,Not Started,2026-02-16 08:00,2026-02-19 15:00,,
FAB112302B-01,IMPACT - INSTALL/REWORK DRYWALL FRAMING AROUND DOORS - FAB112302B,Complete,2025-06-10 08:00,2025-06-10 08:00,2025-03-20 08:00,2025-03-20 08:00
FAB112302B-03,INSTALL DOOR FRAMES - FAB112302B,Complete,2025-09-19 13:00,2025-09-22 12:00,2025-03-20 00:00,2025-03-20 16:00
FAB112302B-04,INSTALL DOOR & HARDWARE - FAB112302B,Active,2025-08-21 08:00,2025-08-27 17:00,2025-08-21 08:00,
FAB112302B-05,PAINT & PROTECT DOORS & FRAMES - FAB112302B,Not Started,2026-02-16 08:00,2026-02-19 15:00,,
FAB112303A-01,IMPACT - INSTALL/REWORK DRYWALL FRAMING AROUND DOORS BY SECAI - FAB112303A,Complete,2025-03-17 08:00,2025-03-17 08:00,2025-03-17 08:00,2025-03-27 17:00
FAB112303A-03,INSTALL DOOR FRAMES - FAB112303A,Complete,2025-09-04 13:00,2025-09-05 12:00,2025-03-27 00:00,2025-03-27 16:00
FAB112303A-04,INSTALL DOOR & HARDWARE - FAB112303A,Active,2025-11-03 08:00,2025-11-07 17:00,2025-11-03 08:00,
FAB112303A-05,PAINT & PROTECT DOORS & FRAMES - FAB112303A,Not Started,2026-02-16 08:00,2026-02-19 15:00,,
FAB112303B-01,IMPACT - INSTALL/REWORK DRYWALL FRAMING AROUND DOORS BY SECAI - FAB112303B,Complete,2025-06-10 08:00,2025-06-10 08:00,2025-03-11 08:00,2025-03-20 08:00
FAB112303B-03,INSTALL DOOR FRAMES - FAB112303B,Complete,2025-09-04 13:00,2025-09-05 12:00,2025-03-20 00:00,2025-03-20 16:00
FAB112303B-04,INSTALL DOOR & HARDWARE - FAB112303B,Active,2025-11-03 08:00,2025-11-07 17:00,2025-11-03 08:00,
FAB112303B-05,PAINT & PROTECT DOORS & FRAMES - FAB112303B,Not Started,2026-02-16 08:00,2026-02-19 15:00,,
FAB112305A-01,IMPACT - INSTALL/REWORK DRYWALL FRAMING AROUND DOORS - FAB112305A,Complete,2025-06-10 08:00,2025-06-18 17:00,2025-03-03 08:00,2025-03-11 08:00
FAB112305A-03,INSTALL DOOR FRAMES - FAB112305A,Complete,2025-09-15 13:00,2025-09-16 12:00,2025-03-11 00:00,2025-03-11 16:00
FAB112305A-04,INSTALL DOOR & HARDWARE - FAB112305A,Active,2025-09-24 08:00,2025-09-30 17:00,2025-09-24 08:00,
FAB112305A-05,PAINT & PROTECT DOORS & FRAMES - FAB112305A,Not Started,2026-02-16 08:00,2026-02-19 15:00,,
FAB112305B-01,IMPACT - INSTALL/REWORK DRYWALL FRAMING AROUND DOORS - FAB112305B,Complete,2025-10-01 08:00,2025-10-01 17:00,2025-10-01 08:00,2025-10-01 17:00
FAB112305B-03,INSTALL DOOR FRAMES - FAB112305B,Complete,2025-10-01 08:00,2025-10-01 17:00,2025-10-01 08:00,2025-10-01 17:00
FAB112305B-04,INSTALL DOOR & HARDWARE - FAB112305B,Not Started,2025-11-21 08:00,2025-11-27 17:00,,
FAB112305B-05,PAINT & PROTECT DOORS & FRAMES - FAB112305B,Not Started,2026-02-16 08:00,2026-02-19 15:00,,
FAB112408A-01,IMPACT - OPEN DRYWALL TO/AND INSTALL DOOR FRAME BY SECAI - FAB112408A,Complete,2025-08-26 08:00,2025-09-03 17:00,2025-06-27 08:00,2025-06-27 16:00
FAB112408A-03,INSTALL DOOR FRAMES - FAB112408A,Complete,2025-09-05 08:00,2025-09-05 17:00,2025-06-27 08:00,2025-06-27 16:00
FAB112408A-04,INSTALL DOOR & HARDWARE - FAB112408A,Active,2025-09-02 08:00,2025-09-08 17:00,2025-09-02 08:00,
FAB112408A-05,PAINT & PROTECT DOORS & FRAMES - FAB112408A,Not Started,2026-02-16 08:00,2026-02-19 15:00,,
FAB112407A-25,DOOR FRAME HANDED OVER TO SECAI 08/13 - FAB112407A,Complete,2025-08-13 08:00,2025-08-13 17:00,2025-08-13 08:00,2025-08-13 17:00
FAB112407A-03,INSTALL DOOR FRAME BY SECAI - FAB112407A HANDED OVER 08/13,Complete,2025-08-13 08:00,2025-08-19 17:00,2025-08-13 08:00,2025-08-21 17:00
FAB112407A-04,INSTALL DOOR & HARDWARE - FAB112407A,Active,2025-10-29 08:00,2025-11-04 17:00,2025-10-29 08:00,
FAB112407A-05,PAINT & PROTECT DOORS & FRAMES - FAB112407A,Not Started,2026-02-16 08:00,2026-02-19 15:00,,
FAB112407B-01,IMPACT - INSTALL/REWORK DRYWALL FRAMING AROUND DOORS - FAB112407B,Complete,2025-04-07 08:00,2025-04-15 17:00,2025-04-07 08:00,2025-04-15 17:00
FAB112407B-03,INSTALL DOOR FRAMES - FAB112407B,Complete,2025-08-18 13:00,2025-08-19 12:00,2025-04-15 00:00,2025-04-15 16:00
FAB112407B-04,INSTALL DOOR & HARDWARE - FAB112407B,Active,2025-09-25 08:00,2025-10-01 17:00,2025-09-25 08:00,
FAB112407B-05,PAINT & PROTECT DOORS & FRAMES - FAB112407B,Not Started,2026-02-16 08:00,2026-02-19 15:00,,
FAB112403A-01,IMPACT - INSTALL/REWORK DRYWALL FRAMING AROUND DOORS - FAB112403A,Complete,2025-06-10 08:00,2025-06-10 08:00,2025-03-11 08:00,2025-03-20 08:00
FAB112403A-03,INSTALL DOOR FRAMES - FAB112403A,Complete,2025-09-29 13:00,2025-09-30 12:00,2025-03-20 00:00,2025-03-20 16:00
FAB112403A-04,INSTALL DOOR & HARDWARE - FAB112403A,Active,2025-08-22 08:00,2025-08-28 17:00,2025-08-22 08:00,
FAB112403A-05,PAINT & PROTECT DOORS & FRAMES - FAB112403A,Not Started,2026-02-16 08:00,2026-02-17 17:00,,
FAB112403B-01,IMPACT - INSTALL/REWORK DRYWALL FRAMING AROUND DOORS - FAB112403B,Complete,2025-06-10 08:00,2025-06-10 08:00,2025-05-01 08:00,2025-05-09 08:00
FAB112403B-03,INSTALL DOOR FRAMES - FAB112403B,Complete,2025-09-29 13:00,2025-09-30 12:00,2025-05-08 00:00,2025-05-09 16:00
FAB112403B-04,INSTALL DOOR & HARDWARE - FAB112403B,Active,2025-08-21 08:00,2025-08-27 17:00,2025-08-21 08:00,
FAB112403B-05,PAINT & PROTECT DOORS & FRAMES - FAB112403B,Not Started,2026-02-16 08:00,2026-02-17 17:00,,
FAB112404A-01,IMPACT - INSTALL/REWORK DRYWALL FRAMING AROUND DOORS - FAB112404A,Complete,2025-03-07 08:00,2025-03-17 17:00,2025-03-07 08:00,2025-03-17 17:00
FAB112404A-03,INSTALL DOOR FRAMES - FAB112404A,Complete,2025-08-22 13:00,2025-08-25 12:00,2025-03-17 00:00,2025-03-17 16:00
FAB112404A-04,INSTALL DOOR & HARDWARE - FAB112404A,Active,2025-07-08 08:00,2025-07-14 17:00,2025-07-08 08:00,
FAB112404A-05,PAINT & PROTECT DOORS & FRAMES - FAB112404A,Not Started,2026-02-16 08:00,2026-02-17 17:00,,
FAB112404B-01,IMPACT - INSTALL/REWORK DRYWALL FRAMING AROUND DOORS - FAB112404B,Complete,2025-09-03 08:00,2025-09-04 17:00,2025-09-03 08:00,2025-09-04 17:00
FAB112404B-03,INSTALL DOOR FRAMES - FAB112404B,Complete,2025-09-05 08:00,2025-09-05 17:00,2025-09-05 08:00,2025-09-05 17:00
FAB112404B-04,INSTALL DOOR & HARDWARE - FAB112404B,Active,2025-09-15 08:00,2025-09-19 17:00,2025-09-15 08:00,
FAB112404B-05,PAINT & PROTECT DOORS & FRAMES - FAB112404B,Not Started,2026-02-16 08:00,2026-02-19 15:00,,
FAB110506A-03,INSTALL DOOR FRAMES - FAB110506A,Complete,2025-08-08 08:00,2025-08-08 17:00,2025-08-08 08:00,2025-08-08 17:00
FAB110506A-04,INSTALL DOOR & HARDWARE - FAB110506A,Active,2025-11-06 08:00,2025-11-12 17:00,2025-11-06 08:00,
FAB110506A-05,PAINT & PROTECT DOORS & FRAMES - FAB110506A,Not Started,2026-02-16 08:00,2026-02-19 15:00,,
FAB110506B-03,INSTALL DOOR FRAMES - FAB110506B,Complete,2025-07-17 08:00,2025-07-17 17:00,2025-05-23 08:00,2025-05-23 08:00
FAB110506B-04,DOOR INSTALL - FAB110506B,Complete,2025-10-02 08:00,2025-10-02 17:00,2025-10-02 08:00,2025-10-02 17:00
FAB110506B-05,PAINT & PROTECT DOORS & FRAMES - FAB110506B,Complete,2025-10-08 08:00,2025-10-13 15:00,2025-10-08 08:00,2025-10-12 15:00
FAB110506B-06,INSTALL DOOR HARDWARE - FAB110506B,Complete,2025-10-23 08:00,2025-10-28 15:00,2025-10-23 08:00,2025-10-28 15:00
FAB110506C-03,INSTALL DOOR FRAMES - FAB110506C,Complete,2025-06-05 13:00,2025-06-06 12:00,2025-03-18 00:00,2025-03-18 16:00
FAB110506C-04,INSTALL DOOR & HARDWARE - FAB110506C,Active,2025-06-17 08:00,2025-06-23 17:00,2025-06-17 08:00,
FAB110506C-05,PAINT & PROTECT DOORS & FRAMES - FAB110506C,Not Started,2026-02-16 08:00,2026-02-16 17:00,,
FAB110506D-03,INSTALL DOOR FRAMES - FAB110506D,Complete,2025-06-05 13:00,2025-06-06 12:00,2025-03-31 00:00,2025-03-31 16:00
FAB110506D-04,INSTALL DOOR & HARDWARE - FAB110506D,Active,2025-06-17 08:00,2025-06-23 17:00,2025-06-17 08:00,
FAB110506D-05,PAINT & PROTECT DOORS & FRAMES - FAB110506D,Not Started,2026-02-16 08:00,2026-02-16 17:00,,
FAB110506E-03,INSTALL DOOR FRAMES - FAB110506E,Complete,2025-06-06 08:00,2025-06-19 17:00,2025-06-03 08:00,2025-06-03 16:00
FAB110506E-04,INSTALL DOOR & HARDWARE - FAB110506E,Active,2025-10-22 08:00,2025-10-28 17:00,2025-10-22 08:00,
FAB110506E-05,PAINT & PROTECT DOORS & FRAMES - FAB110506E,Not Started,2026-02-16 08:00,2026-02-19 15:00,,
FAB110506B-07,DOOR FRAME PAINT & 1ST COAT - FAB110506B,Complete,2025-10-01 08:00,2025-10-01 08:00,2025-10-01 08:00,2025-10-01 08:00
FAB110507A-03A,INSTALL DOOR FRAMES - FAB110507A,Complete,2025-10-27 13:00,2025-10-28 12:00,2025-10-27 13:00,2025-10-28 12:00
FAB110507A-03,INSTALL DOOR FRAMES - FAB110507A,Complete,2025-08-19 08:00,2025-08-19 17:00,2025-08-19 08:00,2025-08-19 17:00
FAB110507A-05,PAINT & PROTECT DOORS & FRAMES - FAB110507A,Not Started,2026-02-16 08:00,2026-02-19 15:00,,
FAB110507B-01,SECAI TURNOVER FOR ACELERATION - INSTALL/REWORK DRYWALL FRAMING AROUND DOORS - FAB110507B,Complete,2025-07-25 08:00,2025-08-04 17:00,2025-06-27 08:00,2025-06-27 16:00
FAB110507B-03,SECAI TURNOVER FOR ACELERATION - INSTALL FRAME & DRYWALL AROUND DOORS - FAB110507B,Complete,2025-08-01 08:00,2025-08-01 17:00,2025-08-01 08:00,2025-08-01 17:00
FAB110507B-04,INSTALL DOOR & HARDWARE - FAB110507B,Active,2025-10-15 08:00,2025-10-21 17:00,2025-10-15 08:00,
FAB110507B-05,PAINT & PROTECT DOORS & FRAMES - FAB110507B,Not Started,2026-02-16 08:00,2026-02-19 15:00,,
FAB110508C-04,INSTALL DOOR & HARDWARE - FAB110508C,Not Started,2025-12-16 08:00,2025-12-22 17:00,,
FAB110504A-01,IMPACT - INSTALL/REWORK DRYWALL FRAMING AROUND DOORS - FAB110504A,Complete,2025-10-14 08:00,2025-10-20 17:00,2025-10-14 08:00,2025-10-20 17:00
FAB110504A-03,INSTALL DOOR FRAMES - FAB110504A,Complete,2025-10-21 08:00,2025-10-21 17:00,2025-10-21 08:00,2025-10-21 17:00
FAB110504A-04,INSTALL DOOR & HARDWARE - FAB110504A,Active,2025-10-22 08:00,2025-10-28 17:00,2025-10-22 08:00,
FAB110504A-05,PAINT & PROTECT DOORS & FRAMES - FAB110504A,Not Started,2026-02-16 08:00,2026-02-19 15:00,,
FAB110509A-03,INSTALL DOOR FRAMES - FAB110509A,Complete,2025-07-31 08:00,2025-07-31 17:00,2025-07-31 08:00,2025-07-31 17:00
FAB110509A-07,DOOR FRAME PAINT & 1ST COAT - FAB110509A,Complete,2025-08-25 08:00,2025-08-27 17:00,2025-08-25 08:00,2025-08-27 17:00
FAB110509A-04,DOOR INSTALL - FAB110509A,Complete,2025-08-29 08:00,2025-08-29 17:00,2025-08-29 08:00,2025-08-29 17:00
FAB110509A-05,PAINT & PROTECT DOORS & FRAMES - FAB110509A,Complete,2025-10-15 08:00,2025-10-20 15:00,2025-10-15 08:00,2025-10-20 15:00
FAB110509A-06,INSTALL DOOR HARDWARE - FAB110509A,Not Started,2025-11-21 08:00,2025-11-26 15:00,,
FAB110509B-03,INSTALL DOOR FRAMES - FAB110509B,Complete,2025-07-14 13:00,2025-07-15 12:00,2025-04-10 00:00,2025-04-10 16:00
FAB110509B-04,INSTALL DOOR & HARDWARE - FAB110509B,Active,2025-09-03 08:00,2025-09-09 17:00,2025-09-03 08:00,
FAB110509B-05,PAINT & PROTECT DOORS & FRAMES - FAB110509B,Not Started,2026-02-16 08:00,2026-02-19 15:00,,
FAB110509A-09,IMPACT DOOR FRAME REMEDIATION - FAB110509A,Complete,2025-08-20 08:00,2025-08-20 17:00,2025-07-30 08:00,2025-07-30 17:00
FAB110510A-02,INSTALL DOOR FRAMES - FAB110510A,Complete,2025-08-05 08:00,2025-08-05 17:00,2025-08-05 08:00,2025-08-05 17:00
FAB110510A-07,DOOR FRAME PAINT & 1ST COAT - FAB110510A,Complete,2025-08-07 08:00,2025-08-13 17:00,2025-08-07 08:00,2025-08-13 17:00
FAB110510A-04,DOOR INSTALL - FAB110510A,Complete,2025-08-14 08:00,2025-08-14 17:00,2025-08-14 08:00,2025-08-14 17:00
FAB110510A-05,PAINT & PROTECT DOORS & FRAMES - FAB110510A,Complete,2025-10-15 08:00,2025-10-20 15:00,2025-10-15 08:00,2025-10-20 15:00
FAB110510A-06,INSTALL DOOR HARDWARE - FAB110510A,Not Started,2025-11-21 08:00,2025-11-26 15:00,,
FAB110508A-01,IMPACT - INSTALL/REWORK DRYWALL FRAMING AROUND DOORS - FAB110508A,Complete,2025-09-02 08:00,2025-09-03 17:00,2025-09-02 08:00,2025-09-03 17:00
FAB110508A-03,INSTALL DOOR FRAMES - FAB110508A,Complete,2025-09-04 08:00,2025-09-04 17:00,2025-09-04 08:00,2025-09-04 17:00
FAB110508A-04,DOOR INSTALL - FAB110508A,Complete,2025-10-07 08:00,2025-10-07 17:00,2025-10-07 08:00,2025-10-07 17:00
FAB110508A-05,PAINT & PROTECT DOORS & FRAMES - FAB110508A,Complete,2025-10-14 15:00,2025-10-20 12:00,2025-10-14 15:00,2025-10-17 15:00
FAB110508A-06,INSTALL DOOR HARDWARE - FAB110508A,Not Started,2025-11-21 08:00,2025-11-26 15:00,,
FAB110508A-11,IMPACT - PROCUREMENT - Reordered doors (Wall Thickness and Door Swing Design Changes),Complete,2025-06-20 08:00,2025-08-14 17:00,2025-06-20 08:00,2025-07-14 17:00
FAB110516A-01,IMPACT - INSTALL/REWORK DRYWALL FRAMING AROUND DOORS - FAB110516A,Complete,2025-03-07 08:00,2025-03-17 17:00,2025-03-07 08:00,2025-03-17 17:00
FAB110516A-03,INSTALL DOOR FRAMES - FAB110516A,Complete,2025-10-03 13:00,2025-10-06 12:00,2025-03-17 00:00,2025-03-17 16:00
FAB110516A-04,INSTALL DOOR & HARDWARE - FAB110516A,Active,2025-09-29 08:00,2025-10-03 17:00,2025-09-27 08:00,
FAB110516A-05,PAINT & PROTECT DOORS & FRAMES - FAB110516A,Not Started,2026-02-16 08:00,2026-02-19 15:00,,
FAB110502A-03,INSTALL DOOR FRAMES - FAB110502A,Complete,2025-06-19 13:00,2025-06-20 12:00,2025-03-26 00:00,2025-03-26 16:00
FAB110502A-04,INSTALL DOOR & HARDWARE - FAB110502A,Not Started,2025-11-28 08:00,2025-12-04 17:00,,
FAB110502A-05,PAINT & PROTECT DOORS & FRAMES - FAB110502A,Not Started,2026-02-16 08:00,2026-02-19 15:00,,
FAB110502B-03,INSTALL DOOR FRAMES - FAB110502B,Complete,2025-06-19 13:00,2025-06-20 12:00,2025-04-08 00:00,2025-04-08 16:00
FAB110502B-04,INSTALL DOOR & HARDWARE - FAB110502B,Active,2025-10-15 08:00,2025-10-21 17:00,2025-10-15 08:00,
FAB110502B-05,PAINT & PROTECT DOORS & FRAMES - FAB110502B,Not Started,2026-02-16 08:00,2026-02-19 15:00,,
FAB110503B-01,IMPACT - INSTALL/REWORK DRYWALL FRAMING AROUND DOORS - FAB110503B,Complete,2025-09-16 08:00,2025-09-17 17:00,2025-09-16 08:00,2025-09-17 17:00
FAB110503B-03,INSTALL DOOR FRAMES - FAB110503B,Complete,2025-09-19 08:00,2025-09-19 17:00,2025-09-19 08:00,2025-09-19 17:00
FAB110503B-04,INSTALL DOOR & HARDWARE - FAB110503B,Not Started,2025-11-21 08:00,2025-11-27 17:00,,
FAB110503B-05,PAINT & PROTECT DOORS & FRAMES - FAB110503B,Not Started,2026-02-16 08:00,2026-02-19 15:00,,
FAB110513A-01,IMPACT - INSTALL/REWORK DRYWALL FRAMING AROUND DOORS - FAB110513A,Complete,2025-10-09 08:00,2025-10-17 17:00,2025-07-14 08:00,2025-07-14 17:00
FAB110513A-03,INSTALL DOOR FRAMES - FAB110513A,Not Started,2025-11-21 08:00,2025-11-21 17:00,,
FAB110513A-04,INSTALL DOOR & HARDWARE - FAB110513A,Not Started,2025-11-24 08:00,2025-11-28 17:00,,
FAB110513A-05,PAINT & PROTECT DOORS & FRAMES - FAB110513A,Not Started,2026-02-16 08:00,2026-02-19 15:00,,
FAB110123A-01,IMPACT - INSTALL/REWORK DRYWALL FRAMING AROUND DOORS - FAB110123A,Complete,2025-08-11 08:00,2025-08-19 17:00,2025-07-15 08:00,2025-07-16 17:00
FAB110123A-03,INSTALL DOOR FRAMES - FAB110123A,Complete,2025-08-21 08:00,2025-08-21 17:00,2025-07-21 08:00,2025-07-21 17:00
FAB110123A-04,INSTALL DOOR & HARDWARE - FAB110123A,Active,2025-07-25 08:00,2025-07-31 17:00,2025-07-25 08:00,
FAB110123A-05,PAINT & PROTECT DOORS & FRAMES - FAB110123A,Not Started,2026-02-16 08:00,2026-02-16 17:00,,
FAB110123B-01,INSTALL DOOR FRAMES - FAB110123B,Complete,2025-09-08 08:00,2025-09-16 17:00,2025-07-16 08:00,2025-07-21 17:00
FAB110123B-04,INSTALL DOOR & HARDWARE - FAB110123B,Active,2025-09-09 08:00,2025-09-15 17:00,2025-09-09 08:00,
FAB110123B-05,PAINT & PROTECT DOORS & FRAMES - FAB110123B,Not Started,2026-02-16 08:00,2026-02-19 15:00,,
FAB110123A-11,IMPACT - PROCUREMENT - Reordered doors (Wall Thickness and Door Swing Design Changes),Complete,2025-06-20 08:00,2025-08-28 17:00,2025-06-20 08:00,2025-07-14 17:00
FAB110123B-11,IMPACT - PROCUREMENT - Reordered doors (Wall Thickness and Door Swing Design Changes),Complete,2025-06-20 08:00,2025-08-28 17:00,2025-06-20 08:00,2025-07-14 17:00
FAB110402A-05,PAINT & PROTECT DOORS & FRAMES - FAB110402A,Complete,2025-10-15 08:00,2025-10-20 17:00,2025-10-15 08:00,2025-10-20 17:00
FAB110402A-06,INSTALL DOOR HARDWARE - FAB110402A,Not Started,2025-11-21 08:00,2025-11-26 15:00,,
FAB110402C-04,INSTALL DOOR & HARDWARE - FAB110402C,Active,2025-10-06 08:00,2025-10-10 17:00,2025-10-06 08:00,
FAB110402C-05,PAINT & PROTECT DOORS & FRAMES - FAB110402C,Not Started,2026-02-16 08:00,2026-02-19 15:00,,
FAB110402C-6,IMPACT - SECAI DIRECTIVE HOLD FRAME - FAB110402C - UNTIL 6/20,Complete,2025-06-06 08:00,2025-06-06 17:00,2025-05-05 08:00,2025-09-19 17:00
FAB110402A-04,DOOR INSTALL - FAB110402A,Complete,2025-08-19 08:00,2025-08-19 17:00,2025-08-19 08:00,2025-08-19 17:00
FAB110402A-02,INSTALL DOOR FRAMES - FAB110402A,Complete,2025-07-02 08:00,2025-07-02 17:00,2025-07-02 08:00,2025-07-02 16:00
FAB110402A-07,DOOR FRAME PAINT & 1ST COAT - FAB110402A,Complete,2025-07-25 08:00,2025-07-29 17:00,2025-07-25 08:00,2025-07-29 17:00
FAB110306A-03,INSTALL DOOR FRAMES - FAB110306A,Complete,2025-08-25 08:00,2025-08-25 17:00,2025-07-22 08:00,2025-07-23 16:00
FAB110306A-04,INSTALL DOOR & HARDWARE - FAB110306A,Active,2025-07-24 08:00,2025-07-30 17:00,2025-07-24 08:00,
FAB110306A-05,PAINT & PROTECT DOORS & FRAMES - FAB110306A,Not Started,2026-02-16 08:00,2026-02-16 17:00,,
FAB110306A-11,IMPACT - PROCUREMENT - Reordered doors (Wall Thickness and Door Swing Design Changes),Complete,2025-06-09 08:00,2025-07-21 17:00,2025-06-09 08:00,2025-07-14 17:00
FAB110514A-04,INSTALL DOOR & HARDWARE - FAB110514A,Active,2025-08-19 08:00,2025-08-25 17:00,2025-08-19 08:00,
FAB110514A-05,PAINT & PROTECT DOORS & FRAMES - FAB110514A,Not Started,2026-02-16 08:00,2026-02-16 17:00,,
FAB110514B-04,INSTALL DOOR & HARDWARE - FAB110514B,Active,2025-08-19 08:00,2025-08-25 17:00,2025-08-19 08:00,
FAB110514B-05,PAINT & PROTECT DOORS & FRAMES - FAB110514B,Not Started,2026-02-16 08:00,2026-02-19 15:00,,
FAB110401A-03,INSTALL DOOR FRAMES - FAB110401A,Complete,2025-06-20 08:00,2025-06-20 17:00,2025-05-20 08:00,2025-05-20 08:00
FAB110401A-04,DOOR INSTALL - FAB110401A,Complete,2025-09-17 08:00,2025-09-17 17:00,2025-09-17 08:00,2025-09-17 17:00
FAB110401A-05,PAINT & PROTECT DOORS & FRAMES - FAB110401A,Complete,2025-10-08 08:00,2025-10-13 15:00,2025-10-08 08:00,2025-10-12 15:00
FAB110401A-06,INSTALL DOOR HARDWARE - FAB110401A,Not Started,2025-11-21 08:00,2025-11-26 15:00,,
FAB110401B-03,INSTALL DOOR FRAMES - FAB110401B,Complete,2025-06-20 08:00,2025-06-20 17:00,2025-05-21 08:00,2025-05-21 16:00
FAB110401B-04,INSTALL DOOR & HARDWARE - FAB110401B,Active,2025-08-29 08:00,2025-09-04 17:00,2025-08-29 08:00,
FAB110401B-05,PAINT & PROTECT DOORS & FRAMES - FAB110401B,Not Started,2026-02-16 08:00,2026-02-19 15:00,,
FAB110401C-01,INSTALL DOOR FRAME BY SECAI - FAB110401C HANDED OVER 06/27,Complete,2025-06-27 08:00,2025-07-10 17:00,2025-06-28 08:00,2025-08-12 17:00
FAB110401C-04,INSTALL DOOR & HARDWARE - FAB110401C,Active,2025-09-25 08:00,2025-10-01 17:00,2025-09-25 08:00,
FAB110401C-05,PAINT & PROTECT DOORS & FRAMES - FAB110401C,Not Started,2026-02-16 08:00,2026-02-19 15:00,,
FAB110401A-07,DOOR FRAME PAINT & 1ST COAT - FAB110401A,Complete,2025-07-25 08:00,2025-07-29 17:00,2025-07-25 08:00,2025-07-29 17:00
FAB110401B-07,DOOR FRAME PAINT & 1ST COAT - FAB110401B,Complete,2025-08-25 08:00,2025-08-27 17:00,2025-08-25 08:00,2025-08-27 17:00
FAB110401C-13,DOOR FRAME HANDED OVER TO SECAI ON 06/27 - FAB110401C,Complete,2025-07-03 08:00,2025-07-03 17:00,2025-06-27 08:00,2025-06-27 16:00
FAB110309A-03,INSTALL DOOR FRAMES - FAB110309A,Complete,2025-06-25 13:00,2025-06-26 12:00,2025-04-08 00:00,2025-04-08 12:00
FAB110309A-04,DOOR INSTALL - FAB110309A,Complete,2025-08-14 08:00,2025-08-14 17:00,2025-08-14 08:00,2025-08-14 17:00
FAB110309A-05,PAINT & PROTECT DOORS & FRAMES - FAB110309A,Complete,2025-10-14 08:00,2025-10-17 15:00,2025-10-14 08:00,2025-10-16 15:00
FAB110309A-06,INSTALL DOOR HARDWARE - FAB110309A,Not Started,2025-11-21 08:00,2025-11-26 15:00,,
FAB110307A-03,INSTALL DOOR FRAMES - FAB110307A,Complete,2025-08-05 08:00,2025-08-05 17:00,2025-08-05 08:00,2025-08-05 17:00
FAB110307A-07,DOOR FRAME PAINT & 1ST COAT - FAB110307A,Complete,2025-08-07 08:00,2025-08-11 17:00,2025-08-07 08:00,2025-08-11 17:00
FAB110307A-04,INSTALL DOOR & HARDWARE - FAB110307A,Active,2025-08-29 08:00,2025-09-04 17:00,2025-08-29 08:00,
FAB110307A-05,PAINT & PROTECT DOORS & FRAMES - FAB110307A,Not Started,2026-02-16 08:00,2026-02-19 15:00,,
FAB110307A-09,IMPACT DOOR FRAME REMEDIATION - FAB110307A,Complete,2025-08-04 08:00,2025-08-04 17:00,2025-08-04 08:00,2025-08-04 17:00
FAB110312A-03,INSTALL DOOR FRAMES - FAB110312A,Complete,2025-08-18 13:00,2025-08-19 12:00,2024-07-09 00:00,2024-07-10 12:00
FAB110312A-04,INSTALL DOOR & HARDWARE - FAB110312A,Active,2025-08-14 08:00,2025-08-20 17:00,2025-08-14 08:00,
FAB110312A-05,PAINT & PROTECT DOORS & FRAMES - FAB110312A,Not Started,2026-02-16 08:00,2026-02-16 17:00,,
FAB110308A-03,INSTALL DOOR FRAMES - FAB110308A,Complete,2025-08-08 08:00,2025-08-08 17:00,2025-08-08 08:00,2025-08-08 17:00
FAB110308A-04,DOOR INSTALL - FAB110308A,Complete,2025-10-10 08:00,2025-10-10 17:00,2025-10-10 08:00,2025-10-10 17:00
FAB110308A-05,PAINT & PROTECT DOORS & FRAMES - FAB110308A,Complete,2025-10-14 08:00,2025-10-17 15:00,2025-10-14 08:00,2025-10-17 15:00
FAB110308A-06,INSTALL DOOR HARDWARE - FAB110308A,Not Started,2025-11-21 08:00,2025-11-26 15:00,,
FAB110308A-07,DOOR FRAME PAINT & 1ST COAT - FAB110308A,Complete,2025-10-06 08:00,2025-10-08 17:00,2025-10-06 08:00,2025-10-08 17:00
FAB110308A-09,IMPACT DOOR FRAME REMEDIATION  - FAB110308A,Complete,2025-08-20 08:00,2025-08-20 17:00,2025-08-06 08:00,2025-08-06 17:00
FAB110314A-03,INSTALL DOOR FRAMES - FAB110314A,Complete,2025-06-20 13:00,2025-06-23 12:00,2025-04-14 00:00,2025-04-14 12:00
FAB110314A-04,INSTALL DOOR & HARDWARE - FAB110314A,Active,2025-09-17 08:00,2025-09-23 17:00,2025-09-17 08:00,
FAB110314A-05,PAINT & PROTECT DOORS & FRAMES - FAB110314A,Not Started,2026-02-16 08:00,2026-02-19 15:00,,
FAB110314B-01,IMPACT - INSTALL/REWORK DRYWALL FRAMING AROUND DOORS - FAB110314B,Complete,2025-09-16 08:00,2025-09-17 17:00,2025-09-16 08:00,2025-09-17 17:00
FAB110314B-03,INSTALL DOOR FRAMES - FAB110314B,Complete,2025-09-17 08:00,2025-09-17 17:00,2025-09-17 08:00,2025-09-17 17:00
FAB110314B-04,INSTALL DOOR & HARDWARE - FAB110314B,Active,2025-09-24 08:00,2025-09-30 17:00,2025-09-24 08:00,
FAB110314B-05,PAINT & PROTECT DOORS & FRAMES - FAB110314B,Not Started,2026-02-16 08:00,2026-02-19 15:00,,
FAB110313A-01,IMPACT - INSTALL/REWORK DRYWALL FRAMING AROUND DOORS - FAB110313A,Complete,2025-09-01 08:00,2025-09-01 17:00,2025-09-01 08:00,2025-09-01 17:00
FAB110313A-03,INSTALL DOOR FRAMES - FAB110313A,Complete,2025-09-03 08:00,2025-09-03 17:00,2025-09-03 08:00,2025-09-03 17:00
FAB110313A-04,DOOR INSTALL - FAB110313A,Complete,2025-09-17 08:00,2025-09-17 17:00,2025-09-17 08:00,2025-09-17 17:00
FAB110313A-05,PAINT & PROTECT DOORS & FRAMES - FAB110313A,Complete,2025-10-14 08:00,2025-10-17 15:00,2025-10-14 08:00,2025-10-17 15:00
FAB110313A-06,INSTALL DOOR HARDWARE - FAB110313A,Not Started,2025-11-21 08:00,2025-11-26 15:00,,
FAB110313B-03,INSTALL DOOR FRAMES - FAB110313B,Complete,2025-10-17 08:00,2025-10-17 17:00,2025-10-17 08:00,2025-10-17 17:00
FAB110313B-04,INSTALL DOOR & HARDWARE - FAB110313B,Active,2025-10-20 08:00,2025-10-24 17:00,2025-10-20 08:00,
FAB110313B-05,PAINT & PROTECT DOORS & FRAMES - FAB110313B,Not Started,2026-02-16 08:00,2026-02-19 15:00,,
TR-FAB110311A-03,INSTALL DOOR FRAMES - TR - FAB110311A,Complete,2025-07-15 13:00,2025-07-16 12:00,2024-05-22 00:00,2024-05-23 12:00
TR-FAB110311A-04,INSTALL DOOR & HARDWARE - TR - FAB110311A,Active,2025-09-03 08:00,2025-09-09 17:00,2025-09-03 08:00,
TR-FAB110311A-05,PAINT & PROTECT DOORS & FRAMES -  TR - FAB110311A,Not Started,2026-02-16 08:00,2026-02-17 17:00,,
FAB110305B-02,INSTALL DOOR FRAMES BY SECAI - FAB110305B,Complete,2025-07-02 13:00,2025-07-03 12:00,2025-07-02 12:00,2025-07-02 12:00
FAB110305B-04,DOOR INSTALL - FAB110305B,Complete,2025-08-18 08:00,2025-08-18 17:00,2025-08-18 08:00,2025-08-18 17:00
FAB110305A-01,INSTALL/REWORK DRYWALL FRAMING AROUND DOORS - FAB110305A,Complete,2025-10-06 08:00,2025-10-14 17:00,2025-10-06 08:00,2025-10-14 17:00
FAB110305A-03,INSTALL DOOR FRAMES - FAB110305A,Complete,2025-10-15 08:00,2025-10-15 17:00,2025-10-15 08:00,2025-10-15 17:00
FAB110305A-04,INSTALL DOOR & HARDWARE - FAB110305A,Active,2025-10-30 08:00,2025-11-05 17:00,2025-10-30 08:00,
FAB110305A-05,PAINT & PROTECT DOORS & FRAMES - FAB110305A,Not Started,2026-02-16 08:00,2026-02-19 15:00,,
FAB110305B-07,DOOR FRAME PAINT & 1ST COAT - FAB110305B,Complete,2025-07-25 08:00,2025-07-29 17:00,2025-07-25 08:00,2025-07-29 17:00
FAB110305B-05,PAINT & PROTECT DOORS & FRAMES - FAB110305B,Complete,2025-10-15 08:00,2025-10-20 17:00,2025-10-15 08:00,2025-10-20 17:00
FAB110305B-06,INSTALL DOOR HARDWARE - FAB110305B,Not Started,2025-11-21 08:00,2025-11-26 15:00,,
FAB110304A-03,INSTALL DOOR FRAME BY SECAI - FAB110304A HANDED OVER TO SECAI 07/18,Complete,2025-07-18 08:00,2025-07-31 17:00,2025-07-21 08:00,2025-10-14 08:00
FAB110304C-03,INSTALL DOOR FRAMES - FAB110304C,Complete,2025-06-20 13:00,2025-06-23 12:00,2025-04-11 00:00,2025-04-11 12:00
FAB110304D-03,INSTALL DOOR FRAMES - FAB110304D,Complete,2025-06-06 13:00,2025-06-09 12:00,2025-04-03 00:00,2025-04-03 12:00
FAB110304E-03,INSTALL DOOR FRAMES - FAB110304E,Complete,2025-06-06 13:00,2025-06-09 12:00,2025-04-10 00:00,2025-04-10 12:00
FAB110304A-04,INSTALL DOOR & HARDWARE - FAB110304A,Not Started,2025-11-28 08:00,2025-12-04 17:00,,
FAB110304B-03,INSTALL DOOR FRAMES - FAB110304B (REMOVED DURING DRYWALL REMEDIATION),Complete,2025-10-15 08:00,2025-10-15 17:00,2025-10-15 08:00,2025-10-15 17:00
FAB110304B-04,INSTALL DOOR & HARDWARE - FAB110304B,Active,2025-10-30 08:00,2025-11-05 17:00,2025-10-30 08:00,
FAB110304C-04,INSTALL DOOR & HARDWARE - FAB110304C,Not Started,2025-11-28 08:00,2025-12-04 17:00,,
FAB110304D-04,INSTALL DOOR & HARDWARE - FAB110304D,Active,2025-11-11 08:00,2025-11-17 17:00,2025-11-11 08:00,
FAB110304E-04,INSTALL DOOR & HARDWARE - FAB110304E,Not Started,2025-11-28 08:00,2025-12-04 17:00,,
FAB110304C-16,IMPACT - SECAI TRADE DAMAGED DOOR FRAMES - REWORK - REPAIR FRAME - FAB110304C,Active,2025-06-13 08:00,2025-06-17 17:00,2025-05-27 08:00,
FAB110304A-05,PAINT & PROTECT DOORS & FRAMES - FAB110304A,Not Started,2026-02-16 08:00,2026-02-19 15:00,,
FAB110304B-05,PAINT & PROTECT DOORS & FRAMES - FAB110304B,Not Started,2026-02-16 08:00,2026-02-19 15:00,,
FAB110304C-05,PAINT & PROTECT DOORS & FRAMES - FAB110304C,Not Started,2026-02-16 08:00,2026-02-19 15:00,,
FAB110304D-05,PAINT & PROTECT DOORS & FRAMES - FAB110304D,Not Started,2026-02-16 08:00,2026-02-19 15:00,,
FAB110304E-05,PAINT & PROTECT DOORS & FRAMES - FAB110304E,Not Started,2026-02-16 08:00,2026-02-19 15:00,,
FAB110301C-03,SECAI - INSTALL DOOR FRAMES - FAB110301C,Complete,2025-06-20 08:00,2025-06-20 17:00,2025-05-08 08:00,2025-05-08 16:00
FAB110301C-04,DOOR INSTALL - FAB110301C,Complete,2025-05-22 08:00,2025-05-22 17:00,2025-05-22 08:00,2025-05-22 17:00
FAB110301C-05,PAINT & PROTECT DOORS & FRAMES - FAB110301C,Active,2025-10-14 08:00,2025-10-17 15:00,2025-10-14 08:00,
FAB110301C-06,INSTALL DOOR HARDWARE - FAB110301C,Not Started,2025-11-26 15:00,2025-12-02 12:00,,
FAB110301B-04,INSTALL DOOR & HARDWARE - FAB110301B,Not Started,2025-12-10 08:00,2025-12-16 17:00,,
FAB110303A-03,INSTALL DOOR FRAMES - FAB110303A,Complete,2024-10-24 08:00,2024-10-24 17:00,2024-10-24 08:00,2024-10-24 17:00
FAB110303A-04,INSTALL DOOR & HARDWARE - FAB110303A,Active,2024-10-24 08:00,2024-10-30 17:00,2024-10-24 08:00,
FAB110303A-05,PAINT & PROTECT DOORS & FRAMES - FAB110303A,Not Started,2026-02-16 08:00,2026-02-19 15:00,,
FAB110206A-04,INSTALL DOOR & HARDWARE - FAB110206A,Active,2025-10-03 08:00,2025-10-09 17:00,2025-10-03 08:00,
FAB110206A-05,PAINT & PROTECT DOORS & FRAMES - FAB110206A,Not Started,2026-02-16 08:00,2026-02-19 15:00,,
FAB110206B-04,INSTALL DOOR & HARDWARE - FAB110206B,Active,2025-08-18 08:00,2025-08-22 17:00,2025-08-18 08:00,
FAB110206B-05,PAINT & PROTECT DOORS & FRAMES - FAB110206B,Not Started,2026-02-16 08:00,2026-02-19 15:00,,
FAB110206A-11,IMPACT - PROCUREMENT - Reordered doors (Wall Thickness and Door Swing Design Changes),Complete,2025-07-10 08:00,2025-08-21 17:00,2025-06-09 08:00,2025-07-14 17:00
FAB110206B-11,IMPACT - PROCUREMENT - Reordered doors (Wall Thickness and Door Swing Design Changes),Complete,2025-06-09 08:00,2025-07-21 17:00,2025-06-09 08:00,2025-07-14 17:00
FAB110122A-01,IMPACT - INSTALL/REWORK DRYWALL FRAMING AROUND DOORS - FAB110122A,Complete,2025-07-25 08:00,2025-08-04 17:00,2025-07-08 13:00,2025-07-16 17:00
FAB110122A-03,INSTALL DOOR FRAMES - FAB110122A,Complete,2025-08-06 08:00,2025-08-06 17:00,2025-07-23 08:00,2025-07-23 17:00
FAB110122A-04,INSTALL DOOR & HARDWARE - FAB110122A,Active,2025-07-25 08:00,2025-07-31 17:00,2025-07-25 08:00,
FAB110122A-05,PAINT & PROTECT DOORS & FRAMES - FAB110122A,Not Started,2026-02-16 08:00,2026-02-19 15:00,,
FAB110211A-03,INSTALL DOOR FRAMES - FAB110211A,Complete,2025-06-24 08:00,2025-06-24 17:00,2025-06-18 08:00,2025-06-18 16:00
FAB110211A-04,DOOR INSTALL - FAB110211A,Complete,2025-08-05 08:00,2025-08-05 17:00,2025-08-05 08:00,2025-08-05 17:00
FAB110211B-03,INSTALL DOOR FRAME BY SECAI - FAB110211B HANDED OVER 06/27,Complete,2025-07-03 08:00,2025-07-16 17:00,2025-06-28 08:00,2025-09-19 17:00
FAB110211B-04,INSTALL DOOR & HARDWARE - FAB110211B,Active,2025-09-29 08:00,2025-10-03 17:00,2025-09-29 08:00,
FAB110211B-31,PROCUREMENT - RE-ORDER FRAME - FAB110211B,Complete,2025-06-20 08:00,2025-08-07 17:00,2025-06-20 08:00,2025-06-27 17:00
FAB110211A-05,PAINT & PROTECT DOORS & FRAMES - FAB110211A,Complete,2025-10-08 08:00,2025-10-13 17:00,2025-10-08 08:00,2025-10-12 17:00
FAB110211A-06,INSTALL DOOR HARDWARE - FAB110211A,Not Started,2025-11-21 08:00,2025-11-26 15:00,,
FAB110211A-07,DOOR FRAME PAINT & 1ST COAT - FAB110211A,Complete,2025-07-25 08:00,2025-07-30 17:00,2025-07-25 08:00,2025-07-29 17:00
FAB110211A-02,SECAI ROUGH IN FRAME - FAB110211A,Complete,2025-06-23 08:00,2025-06-23 17:00,2025-06-18 08:00,2025-06-18 16:00
FAB110211B-05,PAINT & PROTECT DOORS & FRAMES - FAB110211B,Not Started,2026-02-16 08:00,2026-02-19 17:00,,
FAB110211B-25,DOOR FRAME HANDED OVER TO SECAI ON 06/27 - FAB110211B,Complete,2025-06-27 08:00,2025-06-27 17:00,2025-06-27 08:00,2025-06-27 16:00
FAB110205A-03,INSTALL DOOR FRAMES - FAB110205A,Complete,2025-09-19 08:00,2025-09-19 17:00,2025-09-19 08:00,2025-09-19 17:00
FAB110205A-04,INSTALL DOOR & HARDWARE - FAB110205A,Active,2025-09-19 08:00,2025-09-25 17:00,2025-09-19 08:00,
FAB110205A-05,PAINT & PROTECT DOORS & FRAMES - FAB110205A,Not Started,2026-02-16 08:00,2026-02-19 15:00,,
FAB110212A-03,INSTALL DOOR FRAMES - FAB110212A,Complete,2025-06-20 08:00,2025-06-20 17:00,2025-06-20 08:00,2025-06-20 16:00
FAB110212A-04,DOOR INSTALL - FAB110212A,Complete,2025-08-05 08:00,2025-08-05 17:00,2025-08-01 08:00,2025-08-01 17:00
FAB110212A-05,PAINT & PROTECT DOORS & FRAMES - FAB110212A,Complete,2025-10-08 08:00,2025-10-13 17:00,2025-10-08 08:00,2025-10-12 17:00
FAB110212A-06,INSTALL DOOR HARDWARE - FAB110212A,Not Started,2025-11-21 08:00,2025-11-26 15:00,,
FAB110212A-07,DOOR FRAME PAINT & 1ST COAT - FAB110212A,Complete,2025-07-23 08:00,2025-07-28 17:00,2025-07-23 08:00,2025-07-28 17:00
FAB110213A-03,INSTALL DOOR FRAMES - FAB110213A,Complete,2025-06-26 08:00,2025-06-26 17:00,2025-06-13 08:00,2025-06-13 16:00
FAB110213A-04,DOOR INSTALL - FAB110213A,Complete,2025-08-06 08:00,2025-08-06 17:00,2025-08-05 08:00,2025-08-05 17:00
FAB110213A-05,PAINT & PROTECT DOORS & FRAMES - FAB110213A,Complete,2025-10-14 08:00,2025-10-15 17:00,2025-10-14 08:00,2025-10-16 17:00
FAB110213A-06,INSTALL DOOR HARDWARE - FAB110213A,Not Started,2025-11-21 08:00,2025-11-26 15:00,,
FAB110213A-07,DOOR FRAME PAINT & 1ST COAT - FAB110213A,Complete,2025-07-23 08:00,2025-07-28 17:00,2025-07-23 08:00,2025-07-29 17:00
FAB110202B-01,IMPACT - INSTALL/REWORK DRYWALL FRAMING AROUND DOORS - FAB110202B,Complete,2025-08-11 08:00,2025-08-19 17:00,2025-08-11 08:00,2025-08-19 17:00
FAB110202B-03,INSTALL DOOR FRAMES - FAB110202B,Complete,2025-08-19 08:00,2025-08-19 17:00,2025-08-19 08:00,2025-08-19 17:00
FAB110202B-04,INSTALL DOOR & HARDWARE - FAB110202B,Active,2025-10-13 08:00,2025-10-17 17:00,2025-10-13 08:00,
FAB110202B-05,PAINT & PROTECT DOORS & FRAMES - FAB110202B,Not Started,2026-02-16 08:00,2026-02-17 17:00,,
FAB110203A-01,IMPACT - INSTALL/REWORK DRYWALL FRAMING AROUND DOORS - FAB110203A,Complete,2025-08-11 08:00,2025-08-19 17:00,2025-08-11 08:00,2025-08-19 17:00
FAB110203A-03,INSTALL DOOR FRAMES - FAB110203A,Complete,2025-08-19 08:00,2025-08-19 17:00,2025-08-19 08:00,2025-08-19 17:00
FAB110203A-04,INSTALL DOOR & HARDWARE - FAB110203A,Not Started,2025-11-28 08:00,2025-12-04 17:00,,
FAB110203A-05,PAINT & PROTECT DOORS & FRAMES - FAB110203A,Not Started,2026-02-16 08:00,2026-02-19 15:00,,
FAB110207A-01,IMPACT - INSTALL/REWORK DRYWALL FRAMING AROUND DOORS - FAB110207A,Complete,2025-08-29 08:00,2025-09-01 17:00,2025-08-29 08:00,2025-09-01 17:00
FAB110207A-03,INSTALL DOOR FRAMES - FAB110207A,Complete,2025-09-02 08:00,2025-09-02 17:00,2025-09-02 08:00,2025-09-02 17:00
FAB110207A-04,INSTALL DOOR & HARDWARE - FAB110207A,Active,2025-09-03 08:00,2025-09-09 17:00,2025-09-03 08:00,
FAB110207A-05,PAINT & PROTECT DOORS & FRAMES - FAB110207A,Not Started,2026-02-16 08:00,2026-02-19 15:00,,
FAB110207B-01,IMPACT - INSTALL/REWORK DRYWALL FRAMING AROUND DOORS - FAB110207B,Complete,2025-08-29 08:00,2025-09-01 17:00,2025-08-29 08:00,2025-09-01 17:00
FAB110207B-03,INSTALL DOOR FRAMES - FAB110207B,Complete,2025-09-02 08:00,2025-09-02 17:00,2025-09-02 08:00,2025-09-02 17:00
FAB110207B-04,INSTALL DOOR & HARDWARE - FAB110207B,Active,2025-09-03 08:00,2025-09-09 17:00,2025-09-03 08:00,
FAB110207B-05,PAINT & PROTECT DOORS & FRAMES - FAB110207B,Not Started,2026-02-16 08:00,2026-02-19 15:00,,
FAB110207C-03,INSTALL DOOR FRAMES - FAB110207C,Complete,2025-09-02 08:00,2025-09-02 17:00,2025-09-02 08:00,2025-09-02 17:00
FAB110207C-04,INSTALL DOOR & HARDWARE - FAB110207C,Active,2025-09-03 08:00,2025-09-09 17:00,2025-09-03 08:00,
FAB110207C-05,PAINT & PROTECT DOORS & FRAMES - FAB110207C,Not Started,2026-02-16 08:00,2026-02-19 15:00,,
FAB110204A-03,INSTALL DOOR FRAMES - FAB110204A,Complete,2025-07-11 08:00,2025-07-11 17:00,2025-07-11 08:00,2025-07-11 17:00
FAB110204A-04,INSTALL DOOR & HARDWARE - FAB110204A,Active,2025-07-11 08:00,2025-07-17 17:00,2025-07-11 08:00,
FAB110204A-05,PAINT & PROTECT DOORS & FRAMES - FAB110204A,Not Started,2026-02-16 08:00,2026-02-19 15:00,,
FAB110204B-03,INSTALL DOOR FRAMES - FAB110204B - P1,Complete,2025-07-01 08:00,2025-07-01 17:00,2025-07-01 08:00,2025-07-01 16:00
FAB110204B-04,DOOR INSTALL - FAB110204B - P1,Complete,2025-09-03 08:00,2025-09-03 17:00,2025-09-03 08:00,2025-09-03 17:00
FAB110204B-05,PAINT & PROTECT DOORS & FRAMES - FAB110204B,Complete,2025-10-15 08:00,2025-10-20 15:00,2025-10-15 08:00,2025-10-20 15:00
FAB110204B-06,INSTALL DOOR HARDWARE - FAB110204B,Not Started,2025-11-21 08:00,2025-11-26 15:00,,
FAB110204C-03,INSTALL DOOR FRAMES - FAB110204C,Complete,2025-08-08 08:00,2025-08-08 17:00,2025-08-08 08:00,2025-08-08 17:00
FAB110204C-04,INSTALL DOOR & HARDWARE - FAB110204C,Active,2025-09-02 08:00,2025-09-08 17:00,2025-09-02 08:00,
FAB110204C-05,PAINT & PROTECT DOORS & FRAMES - FAB110204C,Not Started,2026-02-16 08:00,2026-02-19 15:00,,
FAB110204B-07,PREP DOOR - FAB110204B,Complete,2025-06-18 08:00,2025-06-24 17:00,2025-06-11 08:00,2025-06-18 16:00
FAB110204C-07,DOOR PREP - FAB110204C,Complete,2025-08-11 08:00,2025-08-15 17:00,2025-08-11 08:00,2025-08-15 17:00
FAB110204B-80,IMPACT SECAI TEMP DOOR - FAB110204B,Complete,2025-06-20 08:00,2025-06-27 17:00,2025-06-20 08:00,2025-07-01 16:00
FAB110204B-20,DOOR FRAME GROUT - FAB110204B - P1 (INCLUDE MOBILIZATION AND CURE TIME),Complete,2025-07-07 08:00,2025-07-14 17:00,2025-07-14 08:00,2025-07-14 17:00
FAB110109A-03,INSTALL DOOR FRAMES - FAB110109A,Complete,2025-07-03 08:00,2025-07-03 17:00,2025-04-11 00:00,2025-04-11 16:00
FAB110109A-04,INSTALL DOOR & HARDWARE - FAB110109A,Not Started,2025-11-21 08:00,2025-11-27 17:00,,
FAB110109A-05,PAINT & PROTECT DOORS & FRAMES - FAB110109A,Not Started,2026-02-16 08:00,2026-02-19 15:00,,
FAB110109B-01,IMPACT - INSTALL/REWORK DRYWALL FRAMING AROUND DOORS - FAB110109B DOOR FRAME HANDED OVER TO SECAI,Complete,2025-07-17 13:00,2025-07-18 12:00,2025-07-17 13:00,2025-07-18 12:00
FAB110109B-13,DOOR FRAME HANDED OVER TO SECAI 07/17 - FAB110109B,Complete,2025-07-17 13:00,2025-07-18 12:00,2025-07-17 13:00,2025-07-18 12:00
FAB110109B-03,INSTALL DOOR FRAME BY SECAI - FAB110109B HANDED OVER 07/17,Complete,2025-07-17 13:00,2025-08-07 12:00,2025-07-17 13:00,2025-07-18 12:00
FAB110109B-04,DOOR INSTALL - FAB110109B,Complete,2025-08-13 08:00,2025-08-13 17:00,2025-08-13 08:00,2025-08-13 17:00
FAB110109B-05,PAINT & PROTECT DOORS & FRAMES - FAB110109B,Complete,2025-10-14 08:00,2025-10-17 15:00,2025-10-14 08:00,2025-10-17 15:00
FAB110109B-06,INSTALL DOOR HARDWARE - FAB110109B,Not Started,2025-11-21 08:00,2025-11-26 15:00,,
FAB110109B-11,IMPACT - PROCUREMENT - Reordered doors (Wall Thickness and Door Swing Design Changes),Complete,2025-06-20 08:00,2025-08-28 17:00,2025-06-20 08:00,2025-07-14 17:00
FAB110108A-03,INSTALL DOOR FRAMES - FAB110108A,Complete,2025-06-25 13:00,2025-06-26 12:00,2025-05-07 00:00,2025-05-09 10:00
FAB110108A-04,INSTALL DOOR & HARDWARE - FAB110108A,Not Started,2025-11-21 08:00,2025-11-27 17:00,,
FAB110108A-05,PAINT & PROTECT DOORS & FRAMES - FAB110108A,Not Started,2026-02-16 08:00,2026-02-19 15:00,,
FAB110111A-01,INSTALL DOOR FRAMES - FAB110111A,Complete,2025-06-20 08:00,2025-06-20 17:00,2025-06-24 08:00,2025-06-24 16:00
FAB110111A-04,INSTALL DOOR - FAB110111A,Complete,2025-09-17 08:00,2025-09-17 17:00,2025-09-17 08:00,2025-09-17 17:00
FAB110111B-03,INSTALL DOOR FRAMES - FAB110111B SECAI REMOVED DURING DRYWALL REMEDIATION WORK,Complete,2025-07-17 08:00,2025-07-25 17:00,2025-06-10 08:00,2025-06-10 16:00
FAB110111B-04,INSTALL DOOR & HARDWARE - FAB110111B,Active,2025-10-15 08:00,2025-10-21 17:00,2025-10-15 08:00,
FAB110111A-05,PAINT & PROTECT DOORS & FRAMES - FAB110111A,Complete,2025-09-22 08:00,2025-09-25 15:00,2025-09-22 08:00,2025-09-25 15:00
FAB110111A-07,DOOR FRAME PAINT & 1ST COAT - FAB110111A,Complete,2025-09-11 08:00,2025-09-15 17:00,2025-09-11 08:00,2025-09-15 17:00
FAB110111A-90,DOOR FRAME GROUT - FAB110111A (INCLUDES MOBILIZATION AND CURE TIME),Complete,2025-07-14 08:00,2025-07-14 17:00,2025-07-14 08:00,2025-07-14 17:00
FAB110111B-05,PAINT & PROTECT DOORS & FRAMES - FAB110111B,Not Started,2026-02-16 08:00,2026-02-20 17:00,,
FAB110110A-03,INSTALL DOOR FRAMES - FAB110110A,Complete,2025-06-16 08:00,2025-06-16 17:00,2025-06-16 08:00,2025-06-16 17:00
FAB110110C-03,INSTALL DOOR FRAMES - FAB110110C,Complete,2025-06-23 13:00,2025-06-24 12:00,2025-03-20 12:00,2025-03-20 12:00
FAB110110D-03,INSTALL DOOR FRAMES - FAB110110D,Complete,2025-06-23 13:00,2025-06-24 12:00,2025-04-04 00:00,2025-04-04 12:00
FAB110110E-03,INSTALL DOOR FRAMES - FAB110110E,Complete,2025-06-23 13:00,2025-06-24 12:00,2025-05-08 00:00,2025-05-08 12:00
FAB110110A-04,INSTALL DOOR & HARDWARE - FAB110110A,Active,2025-08-29 08:00,2025-09-04 17:00,2025-08-29 08:00,
FAB110110B-03,INSTALL DOOR FRAME BY SECAI - FAB110110B,Complete,2025-08-27 08:00,2025-08-27 17:00,2025-08-12 08:00,2025-08-12 17:00
FAB110110B-04,INSTALL DOOR & HARDWARE - FAB110110B,Active,2025-10-08 08:00,2025-10-14 17:00,2025-10-08 08:00,
FAB110110C-04,INSTALL DOOR & HARDWARE - FAB110110C,Active,2025-10-03 08:00,2025-10-09 17:00,2025-10-03 08:00,
FAB110110D-04,INSTALL DOOR & HARDWARE - FAB110110D,Active,2025-09-09 08:00,2025-09-15 17:00,2025-09-09 08:00,
FAB110110E-04,INSTALL DOOR & HARDWARE - FAB110110E,Active,2025-09-05 08:00,2025-09-11 17:00,2025-09-05 08:00,
FAB110110A-05,PAINT & PROTECT DOORS & FRAMES - FAB110110A,Not Started,2026-02-16 08:00,2026-02-19 17:00,,
FAB110110B-05,PAINT & PROTECT DOORS & FRAMES - FAB110110B,Not Started,2026-02-16 08:00,2026-02-19 17:00,,
FAB110110C-05,PAINT & PROTECT DOORS & FRAMES - FAB110110C,Not Started,2026-02-16 08:00,2026-02-19 17:00,,
FAB110110D-05,PAINT & PROTECT DOORS & FRAMES - FAB110110D,Not Started,2026-02-16 08:00,2026-02-19 17:00,,
FAB110110E-05,PAINT & PROTECT DOORS & FRAMES - FAB110110E,Not Started,2026-02-16 08:00,2026-02-19 17:00,,
FAB110113A-01,IMPACT - INSTALL/REWORK DRYWALL FRAMING AROUND DOORS - FAB110113A,Complete,2025-07-08 08:00,2025-07-16 17:00,2025-07-08 08:00,2025-07-08 17:00
FAB110113A-03,INSTALL DOOR FRAMES - FAB110113A,Complete,2025-07-08 08:00,2025-07-08 17:00,2025-07-08 08:00,2025-07-08 17:00
FAB110113A-04,INSTALL DOOR & HARDWARE - FAB110113A,Active,2025-07-08 08:00,2025-07-14 17:00,2025-07-08 08:00,
FAB110113A-05,PAINT & PROTECT DOORS & FRAMES - FAB110113A,Not Started,2026-02-16 08:00,2026-02-19 15:00,,
FAB110113A-11,IMPACT - PROCUREMENT - REORDERED DOORS (JAMB DEPTH ISSUE),Complete,2025-06-09 08:00,2025-08-12 17:00,2025-06-09 08:00,2025-07-07 17:00
FAB110114B-04,DOOR INSTALL - FAB110114B,Complete,2025-09-05 08:00,2025-09-05 17:00,2025-09-05 00:00,2025-09-05 00:00
FAB110114B-05,PAINT & PROTECT DOORS & FRAMES - FAB110114B,Complete,2025-10-14 08:00,2025-10-17 15:00,2025-10-14 08:00,2025-10-16 15:00
FAB110114B-06,INSTALL DOOR HARDWARE - FAB110114B,Not Started,2025-11-21 08:00,2025-11-26 15:00,,
FAB110114A-50,IMPACT - TRAPS AND TEMP DOOR TO BE REMOVED - FAB110114A,Active,2025-07-03 08:00,2025-07-29 17:00,2025-07-03 07:00,
FAB110114A-04,INSTALL DOOR & HARDWARE - FAB110114A,Not Started,2025-11-25 08:00,2025-12-01 17:00,,
FAB110116A-01,INSTALL DOOR FRAMES - FAB110116A,Complete,2025-06-16 08:00,2025-06-16 17:00,2025-06-16 08:00,2025-06-16 16:00
FAB110116A-04,INSTALL DOOR & HARDWARE - FAB110116A,Active,2025-10-10 08:00,2025-10-16 17:00,2025-10-10 08:00,
FAB110116A-05,PAINT & PROTECT DOORS & FRAMES - FAB110116A,Not Started,2026-02-16 08:00,2026-02-19 15:00,,
FAB110116A-07,DOOR FRAME PAINT & 1ST COAT - FAB110116A,Complete,2025-07-25 08:00,2025-07-29 17:00,2025-07-25 08:00,2025-07-29 17:00
FAB110116A-90,DOOR FRAME GROUT - FAB110116A (INCLUDE MOBILIZATION AND CURE TIME),Complete,2025-07-17 08:00,2025-07-17 17:00,2025-07-17 08:00,2025-07-17 17:00
FAB110119A-01,IMPACT - INSTALL/REWORK DRYWALL FRAMING AROUND DOORS - FAB110119A,Complete,2025-08-26 08:00,2025-08-27 17:00,2025-08-26 08:00,2025-08-27 17:00
FAB110119A-03,INSTALL DOOR FRAMES - FAB110119A,Complete,2025-08-28 08:00,2025-08-28 17:00,2025-08-28 08:00,2025-08-28 17:00
FAB110119A-04,DOOR INSTALL - FAB110119A,Complete,2025-09-18 08:00,2025-09-18 17:00,2025-09-18 08:00,2025-09-18 17:00
FAB110119A-05,PAINT & PROTECT DOORS & FRAMES - FAB110119A,Complete,2025-10-14 08:00,2025-10-17 15:00,2025-10-14 08:00,2025-10-17 15:00
FAB110119A-06,INSTALL DOOR HARDWARE - FAB110119A,Not Started,2025-11-21 08:00,2025-11-26 15:00,,
FAB110120A-01,IMPACT - INSTALL/REWORK DRYWALL FRAMING AROUND DOORS - FAB110120A,Complete,2025-08-12 08:00,2025-08-20 17:00,2025-08-12 08:00,2025-08-20 17:00
FAB110120A-03,INSTALL DOOR FRAMES - FAB110120A,Complete,2025-08-20 08:00,2025-08-20 17:00,2025-08-20 08:00,2025-08-20 17:00
FAB110120A-04,DOOR INSTALL - FAB110120A,Complete,2025-09-18 08:00,2025-09-18 17:00,2025-09-18 08:00,2025-09-18 17:00
FAB110120A-05,PAINT & PROTECT DOORS & FRAMES - FAB110120A,Complete,2025-10-14 08:00,2025-10-17 15:00,2025-10-14 08:00,2025-10-17 15:00
FAB110120A-06,INSTALL DOOR HARDWARE - FAB110120A,Not Started,2025-11-21 08:00,2025-11-26 15:00,,
FAB110101A-04,INSTALL DOOR & HARDWARE - FAB110101A,Active,2025-08-14 08:00,2025-08-20 17:00,2025-08-14 08:00,
FAB110101A-05,PAINT & PROTECT DOORS & FRAMES - FAB110101A,Not Started,2026-02-16 08:00,2026-02-19 15:00,,
FAB110101A-08,IMPACT - SECAI - DIRECTIVE TO HOLD FRAME INSTALLATION,Complete,2025-06-13 08:00,2025-06-23 10:00,2025-06-13 08:00,2025-07-21 17:00
FAB110101A-03,INSTALL DOOR FRAMES - FAB110101A,Complete,2025-07-25 08:00,2025-07-25 17:00,2025-07-23 08:00,2025-07-23 17:00
FAB110101A-07,DOOR FRAME PAINT & 1ST COAT - FAB110101A,Complete,2025-08-19 08:00,2025-08-21 17:00,2025-08-13 08:00,2025-08-13 17:00
FAB110118A-01,IMPACT - INSTALL/REWORK DRYWALL FRAMING AROUND DOORS - FAB110118A,Complete,2025-08-01 08:00,2025-08-11 17:00,2025-08-01 08:00,2025-08-09 17:00
FAB110118A-03,INSTALL DOOR FRAMES - FAB110118A,Complete,2025-08-08 08:00,2025-08-08 17:00,2025-08-09 08:00,2025-08-09 17:00
FAB110118A-04,INSTALL DOOR & HARDWARE - FAB110118A,Active,2025-08-19 08:00,2025-08-25 17:00,2025-08-19 08:00,
FAB110118A-05,PAINT & PROTECT DOORS & FRAMES - FAB110118A,Not Started,2026-02-16 08:00,2026-02-19 15:00,,
FAB110117A-01,IMPACT - INSTALL/REWORK DRYWALL FRAMING AROUND DOORS - FAB110117A,Complete,2025-08-08 08:00,2025-08-08 17:00,2025-08-08 08:00,2025-08-08 17:00
FAB110117A-03,INSTALL DOOR FRAMES - FAB110117A,Complete,2025-08-08 08:00,2025-08-08 17:00,2025-08-09 08:00,2025-08-09 17:00
FAB110117A-04,INSTALL DOOR & HARDWARE - FAB110117A,Active,2025-10-10 08:00,2025-10-16 17:00,2025-10-10 08:00,
FAB110117A-05,PAINT & PROTECT DOORS & FRAMES - FAB110117A,Not Started,2026-02-16 08:00,2026-02-19 15:00,,
FAB110115A-03,INSTALL DOOR FRAMES - FAB110115A,Complete,2025-10-15 08:00,2025-10-15 17:00,2025-10-15 08:00,2025-10-15 17:00
FAB110115A-04,INSTALL DOOR & HARDWARE - FAB110115A,Active,2025-10-24 08:00,2025-10-30 17:00,2025-10-24 08:00,
FAB110115A-05,PAINT & PROTECT DOORS & FRAMES - FAB110115A,Not Started,2026-02-16 08:00,2026-02-19 15:00,,
FAB110102A-03,INSTALL DOOR FRAMES - FAB110102A,Complete,2025-06-16 13:00,2025-06-17 12:00,2025-03-18 00:00,2025-03-18 08:00
FAB110102A-04,INSTALL DOOR & HARDWARE - FAB110102A,Active,2025-09-25 08:00,2025-10-01 17:00,2025-09-25 08:00,
FAB110102A-05,PAINT & PROTECT DOORS & FRAMES - FAB110102A,Not Started,2026-02-16 08:00,2026-02-19 15:00,,
FAB110103A-01,IMPACT - INSTALL/REWORK DRYWALL FRAMING AROUND DOORS - FAB110103A,Complete,2025-07-09 08:00,2025-07-17 17:00,2025-07-09 08:00,2025-07-17 17:00
FAB110103A-03,INSTALL DOOR FRAMES - FAB110103A,Complete,2025-07-17 08:00,2025-07-17 17:00,2025-07-17 08:00,2025-07-17 17:00
FAB110103A-04,INSTALL DOOR & HARDWARE - FAB110103A,Active,2025-09-19 08:00,2025-09-25 17:00,2025-09-19 08:00,
FAB110103A-05,PAINT & PROTECT DOORS & FRAMES - FAB110103A,Not Started,2026-02-16 08:00,2026-02-19 15:00,,
FAB110103A-11,IMPACT - PROCUREMENT - Reordered doors (Wall Thickness and Door Swing Design Changes),Complete,2025-06-06 08:00,2025-08-14 17:00,2025-05-26 08:00,2025-07-14 17:00
TR-FAB110109A-03,INSTALL DOOR FRAMES - TR - FAB110109A,Complete,2025-08-04 13:00,2025-08-05 12:00,2025-05-07 12:00,2025-05-07 12:00
TR-FAB110109A-04,INSTALL DOOR & HARDWARE - TR - FAB110109A,Active,2025-09-26 08:00,2025-10-02 17:00,2025-09-26 08:00,
TR-FAB110109A-05,PAINT & PROTECT DOORS & FRAMES -  TR - FAB110109A,Not Started,2026-02-16 08:00,2026-02-19 15:00,,
FAB112104A-01,DOOR ASSEMBLY - FAB112104A,Not Started,2025-12-19 08:00,2025-12-22 17:00,,
FAB112104A-02,DOOR PACKAGE INSTALL - FAB112104A,Not Started,2025-12-22 08:00,2025-12-23 17:00,,
FAB112101A-07,DOOR INSTALL - FAB112101A (OHC),Not Started,2025-11-21 08:00,2025-11-24 17:00,,
FAB110214A-01,IMPACT - INSTALL/REWORK DRYWALL FRAMING AROUND DOORS - FAB110214A,Complete,2025-10-03 08:00,2025-10-06 17:00,2025-10-03 08:00,2025-10-06 17:00
FAB110214A-03,INSTALL DOOR FRAMES - FAB110214A,Complete,2025-10-07 08:00,2025-10-07 17:00,2025-10-07 08:00,2025-10-07 17:00
FAB110214A-04,INSTALL DOOR & HARDWARE - FAB110214A,Active,2025-09-09 08:00,2025-09-15 17:00,2025-09-09 08:00,
FAB110214A-05,PAINT & PROTECT DOORS & FRAMES - FAB110214A,Not Started,2026-02-16 08:00,2026-02-19 15:00,,
FAB1-ST02A-01,IMPACT - INSTALL/REWORK DRYWALL FRAMING AROUND DOORS - FAB1-ST02A,Complete,2025-05-01 08:00,2025-05-09 17:00,2025-05-01 08:00,2025-05-06 17:00
FAB1-ST02A-03,INSTALL DOOR FRAMES - FAB1-ST02A,Complete,2025-05-06 08:00,2025-05-06 17:00,2025-05-06 08:00,2025-05-06 17:00
FAB1-ST02A-04,DOOR INSTALL - FAB1-ST02A,Complete,2025-09-16 08:00,2025-09-16 17:00,2025-09-16 08:00,2025-09-16 17:00
FAB1-ST02A-05,PAINT & PROTECT DOORS & FRAMES - FAB1-ST02A,Complete,2025-10-14 08:00,2025-10-17 17:00,2025-10-14 08:00,2025-10-17 17:00
FAB1-ST02A-06,INSTALL DOOR HARDWARE - FAB1-ST02A,Not Started,2025-11-21 08:00,2025-11-26 17:00,,
FAB1-ST03A-01,IMPACT - INSTALL/REWORK DRYWALL FRAMING AROUND DOORS - FAB1-ST03A,Complete,2025-09-26 08:00,2025-09-29 17:00,2025-09-26 08:00,2025-09-29 17:00
FAB1-ST03A-03,INSTALL DOOR FRAMES - FAB1-ST03A,Complete,2025-09-29 08:00,2025-09-29 17:00,2025-09-29 08:00,2025-09-29 17:00
FAB1-ST03A-04,INSTALL DOOR & HARDWARE - FAB1-ST03A,Active,2025-10-13 08:00,2025-10-17 17:00,2025-10-13 08:00,
FAB1-ST03A-05,PAINT & PROTECT DOORS & FRAMES - FAB1-ST03A,Not Started,2026-02-16 08:00,2026-02-19 17:00,,
FAB1-ST20A-01,IMPACT - INSTALL/REWORK DRYWALL FRAMING AROUND DOORS - FAB1-ST20A HANDED OVER TO SECAI ON 09/02,Complete,2025-09-01 08:00,2025-09-02 17:00,2025-09-02 08:00,2025-09-02 17:00
FAB1-ST20A-03,INSTALL DOOR FRAME BY SECAI - FAB1-ST20A HANDED OVER ON 09/02,Complete,2025-09-02 08:00,2025-09-02 17:00,2025-09-02 08:00,2025-10-27 17:00
FAB1-ST20A-04,INSTALL DOOR & HARDWARE - FAB1-ST20A,Active,2025-10-28 08:00,2025-11-03 17:00,2025-10-28 08:00,
FAB1-ST20A-05,PAINT & PROTECT DOORS & FRAMES - FAB1-ST20A,Not Started,2026-02-16 08:00,2026-02-19 17:00,,
FAB1-ST21A-03,INSTALL DOOR FRAMES - FAB1-ST21A,Complete,2025-11-06 08:00,2025-11-06 17:00,2025-11-06 08:00,2025-11-06 17:00
FAB1-ST21A-04,INSTALL DOOR & HARDWARE - FAB1-ST21A,Active,2025-11-07 08:00,2025-11-13 17:00,2025-11-07 08:00,
FAB1-ST21A-05,PAINT & PROTECT DOORS & FRAMES - FAB1-ST21A,Not Started,2026-02-16 08:00,2026-02-19 17:00,,
FAB1-ST04A-01,IMPACT - INSTALL/REWORK DRYWALL FRAMING AROUND DOORS - FAB1-ST04A,Complete,2025-05-23 08:00,2025-06-02 17:00,2025-05-23 08:00,2025-05-27 17:00
FAB1-ST04A-03,INSTALL DOOR FRAMES - FAB1-ST04A,Complete,2025-05-27 08:00,2025-05-27 17:00,2025-05-27 08:00,2025-05-27 17:00
FAB1-ST04A-04,INSTALL DOOR & HARDWARE - FAB1-ST04A,Active,2025-09-29 08:00,2025-10-03 17:00,2025-09-29 08:00,
FAB1-ST04A-05,PAINT & PROTECT DOORS & FRAMES - FAB1-ST04A,Not Started,2026-02-16 08:00,2026-02-19 17:00,,
FAB1-ST19A-04,INSTALL DOOR & HARDWARE - FAB1-ST19A,Active,2025-11-07 08:00,2025-11-13 17:00,2025-11-07 08:00,
FAB1-ST19A-05,PAINT & PROTECT DOORS & FRAMES - FAB1-ST19A,Not Started,2026-02-16 08:00,2026-02-19 17:00,,
FAB110204D-03,INSTALL DOOR FRAMES - FAB110204D,Complete,2025-06-20 08:00,2025-06-20 17:00,2025-06-20 08:00,2025-06-20 16:00
FAB110204D-04,DOOR INSTALL - FAB110204D,Complete,2025-08-05 08:00,2025-08-05 17:00,2025-08-05 08:00,2025-08-05 17:00
FAB110204D-02,SECAI ROUGH IN FRAME - FAB110204D,Complete,2025-06-23 08:00,2025-06-23 17:00,2025-06-20 08:00,2025-06-20 16:00
FAB110204D-07,DOOR FRAME PAINT & 1ST COAT - FAB110204D,Complete,2025-07-23 08:00,2025-07-29 17:00,2025-07-23 08:00,2025-07-29 17:00
FAB110204D-05,PAINT & PROTECT DOORS & FRAMES - FAB110204D,Complete,2025-10-08 08:00,2025-10-13 15:00,2025-10-08 08:00,2025-10-12 15:00
FAB110204D-06,INSTALL DOOR HARDWARE - FAB110204D,Complete,2025-10-23 08:00,2025-10-28 15:00,2025-10-23 08:00,2025-10-28 15:00
FAB110208A-03,INSTALL DOOR FRAMES - FAB110208A,Complete,2025-06-23 08:00,2025-06-23 17:00,2025-06-18 08:00,2025-06-18 16:00
FAB110208A-04,DOOR INSTALL - FAB110208A,Complete,2025-08-06 08:00,2025-08-06 17:00,2025-08-12 08:00,2025-08-12 17:00
FAB110208A-02,SECAI ROUGH IN FRAME - FAB110208A,Complete,2025-06-20 08:00,2025-06-20 17:00,2025-06-18 08:00,2025-06-18 16:00
FAB110208A-05,PAINT & PROTECT DOORS & FRAMES - FAB110208A,Complete,2025-10-14 08:00,2025-10-17 15:00,2025-10-14 08:00,2025-10-16 15:00
FAB110208A-06,INSTALL DOOR HARDWARE - FAB110208A,Complete,2025-10-20 08:00,2025-10-23 15:00,2025-10-20 08:00,2025-10-23 15:00
FAB110208A-07,DOOR FRAME PAINT & 1ST COAT - FAB110208A,Complete,2025-08-01 08:00,2025-08-04 17:00,2025-08-01 08:00,2025-08-08 17:00
FAB110208B-04,DOOR INSTALL - FAB110208B (OHC),Not Started,2025-12-03 08:00,2025-12-04 17:00,,
FAB110501A-03,INSTALL DOOR FRAMES - FAB110501A,Complete,2025-08-22 08:00,2025-08-22 17:00,2025-08-22 08:00,2025-08-22 17:00
FAB110501A-04,INSTALL DOOR & HARDWARE - FAB110501A,Active,2025-10-22 08:00,2025-10-28 17:00,2025-10-22 08:00,
FAB110501A--02,SECAI ROUGH IN FRAME - FAB110501A,Complete,2025-08-22 08:00,2025-08-22 17:00,2025-08-22 08:00,2025-08-22 17:00
FAB110501A-07,DOOR FRAME PAINT & 1ST COAT - FAB110501A,Complete,2025-09-02 08:00,2025-09-04 17:00,2025-09-02 08:00,2025-09-04 17:00
FAB110501A-05,PAINT & PROTECT DOORS & FRAMES - FAB110501A,Not Started,2026-02-16 08:00,2026-02-19 15:00,,
FAB110511E-02,INSTALL DOOR FRAMES - FAB110511E,Complete,2025-07-09 08:00,2025-07-09 17:00,2025-06-18 08:00,2025-06-19 16:00
FAB110511E-04,DOOR INSTALL - FAB110511E,Complete,2025-08-29 08:00,2025-08-29 17:00,2025-08-29 08:00,2025-08-29 17:00
FAB110511E-03,SECAI ROUGH IN FRAME - FAB110511E,Complete,2025-07-09 08:00,2025-07-09 17:00,2025-06-17 08:00,2025-06-18 16:00
FAB110511E-05,PAINT & PROTECT DOORS & FRAMES - FAB110511E,Complete,2025-10-15 08:00,2025-10-20 15:00,2025-10-15 08:00,2025-10-20 15:00
FAB110511E-06,INSTALL DOOR HARDWARE - FAB110511E,Not Started,2025-11-21 08:00,2025-11-26 15:00,,
FAB110511E-07,DOOR FRAME PAINT & 1ST COAT - FAB110511E,Complete,2025-08-25 08:00,2025-08-27 17:00,2025-08-25 08:00,2025-08-27 17:00
FAB116104A-03,INSTALL DOOR FRAMES - FAB116104A,Complete,2025-08-07 08:00,2025-08-07 17:00,2025-08-07 08:00,2025-08-07 17:00
FAB116104A-04,INSTALL DOOR & HARDWARE - FAB116104A,Not Started,2026-02-09 08:00,2026-02-13 17:00,,
FAB116104A-02,SECAI ROUGH IN FRAME - FAB116104A,Complete,2025-08-07 08:00,2025-08-07 17:00,2025-08-07 08:00,2025-08-07 17:00
FAB116104A-05,PAINT & PROTECT DOORS & FRAMES - FAB116104A,Not Started,2026-02-16 08:00,2026-02-19 15:00,,
FAB110403A-02,INSTALL DOOR FRAMES - FAB110403A HANDED OVER TO SECAI,Complete,2025-08-22 08:00,2025-08-22 17:00,2025-08-22 08:00,2025-08-22 17:00
FAB110403A-04,DOOR INSTALL - FAB110403A HANDED OVER TO SECAI,Complete,2025-08-22 08:00,2025-08-22 17:00,2025-08-22 08:00,2025-08-22 17:00
FAB110403B-02,INSTALL DOOR FRAMES - FAB110403B HANDED OVER TO SECAI,Complete,2025-08-22 08:00,2025-08-22 17:00,2025-08-22 08:00,2025-08-22 17:00
FAB110403B-04,DOOR INSTALL - FAB110403B HANDED OVER TO SECAI,Complete,2025-08-22 08:00,2025-08-22 17:00,2025-08-22 08:00,2025-08-22 17:00
FAB110403C-02,INSTALL DOOR FRAMES - FAB110403C,Complete,2025-06-13 08:00,2025-06-16 17:00,2025-05-20 08:00,2025-05-20 16:00
FAB110403C-04,DOOR INSTALL - FAB110403C,Complete,2025-07-28 08:00,2025-07-28 17:00,2025-07-28 08:00,2025-07-28 17:00
FAB110403D-02,INSTALL DOOR FRAMES - FAB110403D HANDED OVER TO SECAI,Complete,2025-08-22 08:00,2025-08-22 17:00,2025-08-22 08:00,2025-08-22 17:00
FAB110403D-04,DOOR INSTALL - FAB110403D HANDED OVER TO SECAI,Complete,2025-08-22 08:00,2025-08-22 17:00,2025-08-22 08:00,2025-08-22 17:00
FAB110403C-07,DOOR FRAME PAINT & 1ST COAT - FAB110403C,Complete,2025-07-25 08:00,2025-07-28 17:00,2025-07-28 08:00,2025-07-28 17:00
FAB110403C-05,PAINT & PROTECT DOORS & FRAMES - FAB110403C,Complete,2025-10-14 08:00,2025-10-17 15:00,2025-10-14 08:00,2025-10-16 15:00
FAB110403C-06,INSTALL DOOR HARDWARE - FAB110403C,Complete,2025-10-20 08:00,2025-10-23 15:00,2025-10-20 08:00,2025-10-23 15:00
FAB110404B-03,INSTALL DOOR FRAMES - FAB110404B HANDED OVER TO SECAI,Complete,2025-08-22 08:00,2025-08-22 17:00,2025-08-22 08:00,2025-08-22 17:00
FAB110404B-04,DOOR INSTALL - FAB110404B HANDED OVER TO SECAI,Complete,2025-08-22 08:00,2025-08-22 17:00,2025-08-22 08:00,2025-08-22 17:00
FAB110404C-03,INSTALL DOOR FRAMES - FAB110404C,Complete,2025-06-13 08:00,2025-06-16 17:00,2025-05-20 08:00,2025-05-20 16:00
FAB110404C-04,DOOR INSTALL - FAB110404C,Complete,2025-07-28 08:00,2025-07-28 17:00,2025-07-30 08:00,2025-07-30 17:00
FAB110404E-03,INSTALL DOOR FRAMES - FAB110404E HANDED OVER TO SECAI,Complete,2025-08-22 08:00,2025-08-22 17:00,2025-08-22 08:00,2025-08-22 17:00
FAB110404E-04,DOOR INSTALL - FAB110404E HANDED OVER TO SECAI,Complete,2025-08-22 08:00,2025-08-22 17:00,2025-08-22 08:00,2025-08-22 17:00
FAB110404C-05,PAINT & PROTECT DOORS & FRAMES - FAB110403C,Complete,2025-10-14 08:00,2025-10-17 15:00,2025-10-14 08:00,2025-10-16 15:00
FAB110404C-06,INSTALL DOOR HARDWARE - FAB110403C,Complete,2025-10-20 08:00,2025-10-23 15:00,2025-10-20 08:00,2025-10-23 15:00
FAB110404C-07,DOOR FRAME PAINT & 1ST COAT - FAB110404C,Complete,2025-07-28 08:00,2025-07-30 17:00,2025-07-24 08:00,2025-07-27 08:00
FAB110405B-02,INSTALL DOOR FRAMES - FAB110405B,Complete,2025-08-29 08:00,2025-08-29 17:00,2025-08-26 08:00,2025-08-26 17:00
FAB110405B-04,DOOR INSTALL - FAB110405B,Complete,2025-10-10 08:00,2025-10-10 17:00,2025-10-10 08:00,2025-10-10 17:00
FAB110405B-05,PAINT & PROTECT DOORS & FRAMES - FAB110405B,Complete,2025-10-14 08:00,2025-10-17 15:00,2025-10-14 08:00,2025-10-17 15:00
FAB110405B-06,INSTALL DOOR HARDWARE - FAB110405B,Not Started,2025-11-21 08:00,2025-11-26 15:00,,
FAB110409A-02,INSTALL DOOR FRAMES - FAB110409A,Complete,2025-08-07 08:00,2025-08-07 17:00,2025-08-07 08:00,2025-08-07 17:00
FAB110409A-04,DOOR INSTALL - FAB110409A,Complete,2025-09-05 08:00,2025-09-05 17:00,2025-09-05 08:00,2025-09-05 17:00
FAB110409A-03,SECAI ROUGH IN FRAME - FAB110409A,Complete,2025-08-07 08:00,2025-08-07 17:00,2025-08-07 08:00,2025-08-07 17:00
FAB110409B-02,INSTALL DOOR FRAMES - FAB110409B HANDED OVER TO SECAI,Complete,2025-08-22 08:00,2025-08-22 17:00,2025-08-22 08:00,2025-08-22 17:00
FAB110409B-03,SECAI ROUGH IN FRAME - FAB110409B HANDED OVER TO SECAI,Complete,2025-08-22 08:00,2025-08-22 17:00,2025-08-22 08:00,2025-08-22 17:00
FAB110409E-02,INSTALL DOOR FRAMES - FAB110409E HANDED OVER TO SECAI,Complete,2025-08-22 08:00,2025-08-22 17:00,2025-08-22 08:00,2025-08-22 17:00
FAB110409E-04,DOOR INSTALL - FAB110409E HANDED OVER TO SECAI,Complete,2025-08-22 08:00,2025-08-22 17:00,2025-08-22 08:00,2025-08-22 17:00
FAB110409E-03,SECAI ROUGH IN FRAME - FAB110409E HANDED OVER TO SECAI,Complete,2025-08-22 08:00,2025-08-22 17:00,2025-08-22 08:00,2025-08-22 17:00
FAB110409A-07,DOOR FRAME PAINT & 1ST COAT - FAB110409A,Complete,2025-09-01 08:00,2025-09-03 17:00,2025-09-01 08:00,2025-09-03 17:00
FAB110409A-05,PAINT & PROTECT DOORS & FRAMES - FAB110409A,Complete,2025-10-14 08:00,2025-10-17 15:00,2025-10-14 08:00,2025-10-16 15:00
FAB110409A-06,INSTALL DOOR HARDWARE - FAB110409A,Complete,2025-10-20 08:00,2025-10-23 15:00,2025-10-20 08:00,2025-10-23 15:00
FAB110409C-02,INSTALL DOOR FRAME BY SECAI - FAB110409C HANDED OVER 06/27,Complete,2025-06-27 08:00,2025-07-10 17:00,2025-06-28 08:00,2025-08-12 17:00
FAB110409C-04,INSTALL DOOR & HARDWARE - FAB110409C,Active,2025-11-05 08:00,2025-11-11 17:00,2025-11-05 08:00,
FAB110409C-05,PAINT & PROTECT DOORS & FRAMES - FAB110409C,Not Started,2026-02-16 08:00,2026-02-19 15:00,,
FAB110409D-02,INSTALL DOOR FRAME BY SECAI - FAB110409D HANDED OVER 07/18,Complete,2025-07-21 08:00,2025-08-01 17:00,2025-07-21 08:00,2025-09-16 08:00
FAB110409D-04,INSTALL DOOR & HARDWARE - FAB110409D,Active,2025-11-05 08:00,2025-11-11 17:00,2025-11-05 08:00,
FAB110409D-05,PAINT & PROTECT DOORS & FRAMES - FAB110409D,Not Started,2026-02-16 08:00,2026-02-19 15:00,,
FAB110409C-40,DOOR FRAME HANDED OVER TO SECAI ON 06/27 - FAB110409C,Complete,2025-06-27 08:00,2025-06-27 17:00,2025-06-27 08:00,2025-06-27 16:00
FAB110409A-90,DOOR FRAME GROUT (RFI1416) - FAB110409A - P1 (INCLUDE MOBILIZATION AND CURE TIME),Complete,2025-08-08 08:00,2025-08-08 17:00,2025-08-08 08:00,2025-08-08 17:00
FAB110409B-04,DOOR INSTALL - FAB110409B HANDED OVER TO SECAI,Complete,2025-08-22 08:00,2025-08-22 17:00,2025-08-22 08:00,2025-08-22 17:00
FAB110408A-02,INSTALL DOOR FRAMES - FAB110408A,Complete,2025-09-17 08:00,2025-09-17 17:00,2025-09-17 08:00,2025-09-17 17:00
FAB110408A-04,DOOR INSTALL - FAB110408A,Complete,2025-09-23 08:00,2025-09-23 17:00,2025-09-23 08:00,2025-09-23 17:00
FAB110408A-03,SECAI ROUGH IN FRAME - FAB110408A,Complete,2025-09-17 08:00,2025-09-17 17:00,2025-09-17 08:00,2025-09-17 17:00
FAB110408B-02,INSTALL DOOR FRAMES - FAB110408B HANDED OVER TO SECAI,Complete,2025-08-22 08:00,2025-08-22 17:00,2025-08-22 08:00,2025-08-22 17:00
FAB110408B-04,DOOR INSTALL - FAB110408B HANDED OVER TO SECAI,Complete,2025-08-22 08:00,2025-08-22 17:00,2025-08-22 08:00,2025-08-22 17:00
FAB110408B-03,SECAI ROUGH IN FRAME - FAB110408B HANDED OVER TO SECAI,Complete,2025-08-22 08:00,2025-08-22 17:00,2025-08-22 08:00,2025-08-22 17:00
FAB110408D-02,INSTALL DOOR FRAMES - FAB110408D HANDED OVER TO SECAI,Complete,2025-08-22 08:00,2025-08-22 17:00,2025-08-22 08:00,2025-08-22 17:00
FAB110408D-04,DOOR INSTALL - FAB110408D HANDED OVER TO SECAI,Complete,2025-08-22 08:00,2025-08-22 17:00,2025-08-22 08:00,2025-08-22 17:00
FAB110408D-03,SECAI ROUGH IN FRAME - FAB110408D HANDED OVER TO SECAI,Complete,2025-08-22 08:00,2025-08-22 17:00,2025-08-22 08:00,2025-08-22 17:00
FAB110408A-07,DOOR FRAME PAINT & 1ST COAT - FAB110408A,Complete,2025-09-19 08:00,2025-09-23 17:00,2025-09-19 08:00,2025-09-23 17:00
FAB110408A-05,PAINT & PROTECT DOORS & FRAMES - FAB110408A,Complete,2025-10-13 08:00,2025-10-16 15:00,2025-10-14 08:00,2025-10-16 15:00
FAB110408A-06,INSTALL DOOR HARDWARE - FAB110408A,Complete,2025-10-20 08:00,2025-10-23 15:00,2025-10-20 08:00,2025-10-23 15:00
FAB110408C-02,INSTALL DOOR FRAME BY SECAI - FAB110408C HANDED OVER 06/27,Complete,2025-06-27 08:00,2025-07-10 17:00,2025-06-28 08:00,2025-09-13 08:00
FAB110408C-04,INSTALL DOOR & HARDWARE - FAB110408C,Active,2025-11-14 08:00,2025-11-20 17:00,2025-11-14 08:00,
FAB110408C-05,PAINT & PROTECT DOORS & FRAMES - FAB110408C,Not Started,2026-02-16 08:00,2026-02-19 15:00,,
FAB110408C-13,DOOR FRAME HANDED OVER TO SECAI ON 07/18 - FAB110408C,Complete,2025-06-27 08:00,2025-06-27 17:00,2025-06-27 08:00,2025-06-27 17:00
FAB110511B-02,INSTALL DOOR FRAMES - FAB110511B HANDED OVER TO SECAI,Complete,2025-08-22 08:00,2025-08-22 17:00,2025-08-22 08:00,2025-08-22 17:00
FAB110511B-04,DOOR INSTALL - FAB110511B HANDED OVER TO SECAI,Complete,2025-08-22 08:00,2025-08-22 17:00,2025-08-22 08:00,2025-08-22 17:00
FAB110511B-03,SECAI ROUGH IN FRAME - FAB110511B HANDED OVER TO SECAI,Complete,2025-08-22 08:00,2025-08-22 17:00,2025-08-22 08:00,2025-08-22 17:00
FAB110511C-02,INSTALL DOOR FRAMES - FAB110511C HANDED OVER TO SECAI,Complete,2025-08-22 08:00,2025-08-22 17:00,2025-08-22 08:00,2025-08-22 17:00
FAB110511C-04,DOOR INSTALL - FAB110511C HANDED OVER TO SECAI,Complete,2025-08-22 08:00,2025-08-22 17:00,2025-08-22 08:00,2025-08-22 17:00
FAB110511C-03,SECAI ROUGH IN FRAME - FAB110511C HANDED OVER TO SECAI,Complete,2025-08-22 08:00,2025-08-22 17:00,2025-08-22 08:00,2025-08-22 17:00
FAB110511D-02,INSTALL DOOR FRAMES - FAB110511D,Complete,2025-06-13 08:00,2025-06-16 17:00,2025-05-23 08:00,2025-05-23 16:00
FAB110511D-04,DOOR INSTALL - FAB110511D,Complete,2025-08-29 08:00,2025-08-29 17:00,2025-08-29 08:00,2025-08-29 17:00
FAB110511D-03,SECAI ROUGH IN FRAME - FAB110511D,Complete,2025-06-13 08:00,2025-06-13 17:00,2025-05-23 08:00,2025-05-23 16:00
FAB110511D-07,DOOR FRAME PAINT & 1ST COAT - FAB110511D,Complete,2025-08-25 08:00,2025-08-27 17:00,2025-08-25 08:00,2025-08-27 17:00
FAB110511D-05,PAINT & PROTECT DOORS & FRAMES - FAB110511D,Complete,2025-10-15 08:00,2025-10-20 15:00,2025-10-15 08:00,2025-10-20 15:00
FAB110511D-06,INSTALL DOOR HARDWARE - FAB110511D,Not Started,2025-11-21 08:00,2025-11-26 15:00,,
FAB110511A-02,INSTALL DOOR FRAME BY SECAI - FAB110511A HANDED OVER 06/27,Complete,2025-06-27 08:00,2025-07-10 17:00,2025-06-28 08:00,2025-08-12 17:00
FAB110511A-04,INSTALL DOOR & HARDWARE - FAB110511A,Active,2025-11-04 08:00,2025-11-10 17:00,2025-11-04 08:00,
FAB110511A-05,PAINT & PROTECT DOORS & FRAMES - FAB110511A,Not Started,2026-02-16 08:00,2026-02-19 15:00,,
FAB110511A-13,DOOR FRAME HANDED OVER TO SECAI ON 06/27 - FAB110511A,Complete,2025-06-27 08:00,2025-06-27 17:00,2025-06-27 08:00,2025-06-27 16:00
FAB112103A-02,INSTALL DOOR FRAMES - FAB112103A,Complete,2025-08-08 08:00,2025-08-08 17:00,2025-08-08 08:00,2025-08-08 17:00
FAB112103A-04,INSTALL DOOR & HARDWARE - FAB112103A,Active,2025-08-19 08:00,2025-08-25 17:00,2025-08-19 08:00,
FAB112103A-03,SECAI ROUGH IN FRAME - FAB112103A,Complete,2025-08-08 08:00,2025-08-08 17:00,2025-08-08 08:00,2025-08-08 17:00
FAB112103B-02,INSTALL DOOR FRAMES - FAB112103B,Complete,2025-06-13 08:00,2025-06-16 17:00,2025-05-19 08:00,2025-05-19 16:00
FAB112103B-04,INSTALL DOOR & HARDWARE - FAB112103B,Active,2025-08-12 08:00,2025-08-18 17:00,2025-08-12 08:00,
FAB112103B-03,SECAI ROUGH IN FRAME - FAB112103B,Complete,2025-06-13 08:00,2025-06-13 17:00,2025-05-19 08:00,2025-05-19 16:00
FAB112103B-07,DOOR FRAME PAINT & 1ST COAT - FAB112103B,Complete,2025-08-07 08:00,2025-08-11 17:00,2025-08-07 08:00,2025-08-11 17:00
FAB112103B-05,PAINT & PROTECT DOORS & FRAMES - FAB112103B,Not Started,2026-02-16 08:00,2026-02-19 15:00,,
FAB112103A-05,PAINT & PROTECT DOORS & FRAMES - FAB112103A,Not Started,2026-02-16 08:00,2026-02-19 15:00,,
FAB112103A-90,DOOR FRAME GROUT - FAB112103A (INCLUDE MOBILIZATION AND CURE TIME),Complete,2025-08-19 08:00,2025-08-19 17:00,2025-08-15 08:00,2025-08-15 17:00
FAB112103C-01,DOOR ASSEMBLY - FAB112103C,Not Started,2025-12-01 08:00,2025-12-02 17:00,,
FAB112103C-02,DOOR PACKAGE INSTALL - FAB112103C,Not Started,2025-12-02 08:00,2025-12-03 17:00,,
FAB112103D-01,DOOR ASSEMBLY - FAB112103D,Complete,2025-10-15 08:00,2025-10-16 17:00,2025-10-15 08:00,2025-10-16 17:00
FAB112103D-02,DOOR PACKAGE INSTALL - FAB112103D,Complete,2025-10-15 08:00,2025-10-16 17:00,2025-10-15 08:00,2025-10-16 17:00
FAB112103B-15,IMPACT - FRAME DAMAGED BY SECAI'S TRADE - FAB112103B,Complete,2025-06-27 08:00,2025-07-10 17:00,2025-06-27 08:00,2025-08-05 17:00
FAB116410A-02,INSTALL DOOR FRAMES - FAB116410A,Complete,2025-08-01 08:00,2025-08-01 17:00,2025-08-01 08:00,2025-08-01 17:00
FAB116410A-04,INSTALL DOOR & HARDWARE - FAB116410A,Active,2025-08-26 08:00,2025-09-01 17:00,2025-08-26 08:00,
FAB116410A-03,SECAI ROUGH IN FRAME - FAB116410A,Complete,2025-08-01 08:00,2025-08-01 17:00,2025-08-01 08:00,2025-08-01 17:00
FAB116410B-02,INSTALL DOOR FRAMES - FAB116410B,Complete,2025-07-09 08:00,2025-07-09 17:00,2025-06-20 08:00,2025-06-20 16:00
FAB116410B-04,INSTALL DOOR & HARDWARE - FAB116410B,Active,2025-08-13 08:00,2025-08-19 17:00,2025-08-13 08:00,
FAB116410B-03,SECAI ROUGH IN FRAME - FAB116410B,Complete,2025-07-08 08:00,2025-07-08 17:00,2025-06-20 08:00,2025-06-20 16:00
FAB116410B-07,DOOR FRAME PAINT & 1ST COAT - FAB116410B,Complete,2025-08-08 08:00,2025-08-12 17:00,2025-08-08 08:00,2025-08-12 17:00
FAB116410B-05,PAINT & PROTECT DOORS & FRAMES -  FAB116410B,Not Started,2026-02-16 08:00,2026-02-19 15:00,,
FAB116410A-07,DOOR FRAME PAINT & 1ST COAT - FAB116410A,Complete,2025-08-21 08:00,2025-08-25 17:00,2025-08-21 08:00,2025-08-25 08:00
FAB116410A-05,PAINT & PROTECT DOORS & FRAMES -  FAB116410A,Not Started,2026-02-16 08:00,2026-02-19 15:00,,
FAB116504A-01,DOOR ASSEMBLY - FAB116504A,Complete,2025-10-29 08:00,2025-10-30 17:00,2025-10-29 08:00,2025-10-30 17:00
FAB116504A-02,DOOR PACKAGE INSTALL - FAB116504A,Complete,2025-10-29 08:00,2025-10-30 17:00,2025-10-29 08:00,2025-10-30 17:00
FAB116504B-01,DOOR ASSEMBLY - FAB116504B,Complete,2025-10-29 08:00,2025-10-30 17:00,2025-10-29 08:00,2025-10-30 17:00
FAB116504B-02,DOOR PACKAGE INSTALL - FAB116504B,Complete,2025-10-29 08:00,2025-10-30 17:00,2025-10-29 08:00,2025-10-30 17:00
FAB116504F-01,DOOR ASSEMBLY - FAB116504F,Complete,2025-10-29 08:00,2025-10-30 17:00,2025-10-29 08:00,2025-10-30 17:00
FAB116504F-02,DOOR PACKAGE INSTALL - FAB116504F,Complete,2025-10-29 08:00,2025-10-30 17:00,2025-10-29 08:00,2025-10-30 17:00
FAB116509D-02,INSTALL DOOR FRAMES - FAB116509D,Complete,2025-06-13 08:00,2025-06-16 17:00,2025-05-17 08:00,2025-05-17 16:00
FAB116509D-04,INSTALL DOOR & HARDWARE - FAB116509D,Not Started,2025-11-25 08:00,2025-12-01 17:00,,
FAB116509D-03,SECAI ROUGH IN FRAME - FAB116509D,Complete,2025-06-13 08:00,2025-06-13 17:00,2025-05-17 08:00,2025-05-17 16:00
FAB116509E-02,INSTALL DOOR FRAMES - FAB116509E,Complete,2025-08-11 08:00,2025-08-11 17:00,2025-08-13 08:00,2025-08-13 17:00
FAB116509E-04,INSTALL DOOR & HARDWARE - FAB116509E,Not Started,2025-11-21 08:00,2025-11-27 17:00,,
FAB116509D-05,PAINT & PROTECT DOORS & FRAMES -  FAB116509D,Not Started,2026-02-16 08:00,2026-02-19 15:00,,
FAB116509E-05,PAINT & PROTECT DOORS & FRAMES -  FAB116509E,Not Started,2026-02-16 08:00,2026-02-19 15:00,,
FAB116509E-09,IMPACT DOOR FRAME REMEDIATION - FAB116509E,Complete,2025-08-08 08:00,2025-08-08 17:00,2025-08-08 08:00,2025-08-08 17:00
FAB116509D-50,IMPACT - FRAME DAMAGED BY SECAI'S TRADE - FAB116509D,Not Started,2025-11-21 08:00,2025-11-24 17:00,,
FAB114107C-13,DOOR FRAME HANDED OVER TO SECAI ON 06/27 - FAB114107C - P1,Complete,2025-07-03 08:00,2025-07-03 17:00,2025-06-27 08:00,2025-06-27 16:00
FAB114107C-03,INSTALL DOOR FRAME BY SECAI - FAB114107C - P1 HANDED OVER 06/27,Complete,2025-07-03 08:00,2025-07-16 17:00,2025-06-28 08:00,2025-09-06 08:00
FAB114107C-04,INSTALL DOOR & HARDWARE - FAB114107C - P1,Active,2025-10-30 08:00,2025-11-05 17:00,2025-10-30 08:00,
FAB114107C-05,PAINT & PROTECT DOORS & FRAMES - FAB114107C,Not Started,2026-02-16 08:00,2026-02-19 15:00,,
FAB114107B-01,IMPACT - INSTALL/REWORK DRYWALL FRAMING AROUND DOORS - FAB114107B,Complete,2025-06-27 08:00,2025-06-27 17:00,2025-03-21 08:00,2025-03-21 16:00
FAB114107B-03,INSTALL DOOR FRAMES - FAB114107B,Complete,2025-03-21 08:00,2025-03-21 17:00,2025-03-21 08:00,2025-03-21 17:00
FAB114107B-04,INSTALL DOOR & HARDWARE - FAB114107B,Active,2025-08-29 08:00,2025-09-04 17:00,2025-08-29 08:00,
FAB114107B-05,PAINT & PROTECT DOORS & FRAMES - FAB114107B,Not Started,2026-02-16 08:00,2026-02-19 15:00,,
FAB112102A-01,DOOR ASSEMBLY - FAB112102A,Not Started,2025-12-11 08:00,2025-12-12 17:00,,
FAB112102A-02,DOOR PACKAGE INSTALL - FAB112102A,Not Started,2025-12-12 08:00,2025-12-15 17:00,,
FAB112105A-01,DOOR ASSEMBLY - FAB112105A,Not Started,2025-12-01 08:00,2025-12-02 17:00,,
FAB112105A-02,DOOR PACKAGE INSTALL - FAB112105A,Not Started,2025-12-02 08:00,2025-12-03 17:00,,
FAB112108A-01,DOOR ASSEMBLY - FAB112108A,Complete,2025-10-13 08:00,2025-10-14 17:00,2025-10-13 08:00,2025-10-14 17:00
FAB112108A-02,DOOR PACKAGE INSTALL - FAB112108A,Complete,2025-10-13 08:00,2025-10-14 17:00,2025-10-13 08:00,2025-10-14 17:00
FAB112109A-01,DOOR ASSEMBLY - FAB112109A,Complete,2025-10-13 08:00,2025-10-14 17:00,2025-10-13 08:00,2025-10-14 17:00
FAB112109A-02,DOOR PACKAGE INSTALL - FAB112109A,Complete,2025-10-13 08:00,2025-10-14 17:00,2025-10-13 08:00,2025-10-14 17:00
FAB112110A-01,DOOR ASSEMBLY - FAB112110A,Complete,2025-10-13 08:00,2025-10-14 17:00,2025-10-13 08:00,2025-10-14 17:00
FAB112110A-02,DOOR PACKAGE INSTALL - FAB112110A,Complete,2025-10-13 08:00,2025-10-14 17:00,2025-10-13 08:00,2025-10-14 17:00
FAB112111A-01,DOOR ASSEMBLY - FAB112111A,Complete,2025-10-10 08:00,2025-10-13 17:00,2025-10-10 08:00,2025-10-13 17:00
FAB112111A-02,DOOR PACKAGE INSTALL - FAB112111A,Complete,2025-10-10 08:00,2025-10-13 17:00,2025-10-10 08:00,2025-10-13 17:00
FAB112112A-01,DOOR ASSEMBLY - FAB112112A,Complete,2025-10-10 08:00,2025-10-13 17:00,2025-10-10 08:00,2025-10-13 17:00
FAB112112A-02,DOOR PACKAGE INSTALL - FAB112112A,Complete,2025-10-10 08:00,2025-10-13 17:00,2025-10-10 08:00,2025-10-13 17:00
FAB112113A-01,DOOR ASSEMBLY - FAB112113A,Complete,2025-10-10 08:00,2025-10-13 17:00,2025-10-10 08:00,2025-10-13 17:00
FAB112113A-02,DOOR PACKAGE INSTALL - FAB112113A,Complete,2025-10-10 08:00,2025-10-13 17:00,2025-10-10 08:00,2025-10-13 17:00
FAB112114A-01,DOOR ASSEMBLY - FAB112114A,Complete,2025-09-29 08:00,2025-09-30 17:00,2025-09-29 08:00,2025-09-30 17:00
FAB112114A-02,DOOR PACKAGE INSTALL - FAB112114A,Complete,2025-09-30 08:00,2025-10-01 17:00,2025-09-30 08:00,2025-10-01 17:00
FAB112119A-01,DOOR ASSEMBLY - FAB112119A,Complete,2025-09-29 08:00,2025-09-30 17:00,2025-09-29 08:00,2025-09-30 17:00
FAB112119A-02,DOOR PACKAGE INSTALL - FAB112119A,Complete,2025-09-30 08:00,2025-10-01 17:00,2025-09-30 08:00,2025-10-01 17:00
FAB112120A-01,DOOR ASSEMBLY - FAB112120A,Complete,2025-09-29 08:00,2025-09-30 17:00,2025-09-29 08:00,2025-09-30 17:00
FAB112120A-02,DOOR PACKAGE INSTALL - FAB112120A,Complete,2025-09-30 08:00,2025-10-01 17:00,2025-09-30 08:00,2025-10-01 17:00
FAB112121A-01,DOOR ASSEMBLY - FAB112121A,Complete,2025-09-19 08:00,2025-09-22 17:00,2025-09-19 08:00,2025-09-22 17:00
FAB112121A-02,DOOR PACKAGE INSTALL - FAB112121A,Complete,2025-09-22 08:00,2025-09-23 17:00,2025-09-22 08:00,2025-09-23 17:00
FAB112122A-01,DOOR ASSEMBLY - FAB112122A,Complete,2025-09-19 08:00,2025-09-22 17:00,2025-09-19 08:00,2025-09-22 17:00
FAB112122A-02,DOOR PACKAGE INSTALL - FAB112122A,Complete,2025-09-22 08:00,2025-09-23 17:00,2025-09-22 08:00,2025-09-23 17:00
FAB112123A-01,DOOR ASSEMBLY - FAB112123A,Complete,2025-09-19 08:00,2025-09-22 17:00,2025-09-19 08:00,2025-09-22 17:00
FAB112123A-02,DOOR PACKAGE INSTALL - FAB112123A,Complete,2025-09-22 08:00,2025-09-23 17:00,2025-09-22 08:00,2025-09-23 17:00
FAB114102A-01,DOOR ASSEMBLY - FAB114102A,Complete,2025-10-14 08:00,2025-10-15 17:00,2025-10-14 08:00,2025-10-15 17:00
FAB114102A-02,DOOR PACKAGE INSTALL - FAB114102A,Complete,2025-10-14 08:00,2025-10-15 17:00,2025-10-14 08:00,2025-10-15 17:00
FAB114103A-01,DOOR ASSEMBLY - FAB114103A,Complete,2025-10-14 08:00,2025-10-15 17:00,2025-10-14 08:00,2025-10-15 17:00
FAB114103A-02,DOOR PACKAGE INSTALL - FAB114103A,Complete,2025-10-14 08:00,2025-10-15 17:00,2025-10-14 08:00,2025-10-15 17:00
FAB114105A-01,DOOR ASSEMBLY - FAB114105A,Complete,2025-10-14 08:00,2025-10-15 17:00,2025-10-14 08:00,2025-10-15 17:00
FAB114105A-02,DOOR PACKAGE INSTALL - FAB114105A,Complete,2025-10-14 08:00,2025-10-15 17:00,2025-10-14 08:00,2025-10-15 17:00
FAB114106A-01,DOOR ASSEMBLY - FAB114106A,Complete,2025-10-14 08:00,2025-10-15 17:00,2025-10-14 08:00,2025-10-15 17:00
FAB114106A-02,DOOR PACKAGE INSTALL - FAB114106A,Complete,2025-10-14 08:00,2025-10-15 17:00,2025-10-14 08:00,2025-10-15 17:00
FAB116513H-03,INSTALL DOOR FRAMES - FAB116513H,Complete,2025-06-25 08:00,2025-06-25 17:00,2025-06-25 08:00,2025-06-25 17:00
FAB116103A-03,INSTALL DOOR FRAMES - FAB116103A,Not Started,2025-11-28 08:00,2025-11-28 17:00,,
FAB110114B-03,INSTALL DOOR FRAMES - FAB110114B,Complete,2025-08-04 08:00,2025-08-04 17:00,2025-08-04 08:00,2025-08-04 17:00
FAB110514B-03,INSTALL DOOR FRAMES - FAB110514B,Complete,2025-06-06 08:00,2025-06-06 17:00,2025-06-03 08:00,2025-06-03 15:00
FAB126106A-14,IMPACT - DOOR FRAME PROCUREMENT- FAB126106A,Complete,2025-06-09 08:00,2025-07-25 17:00,2025-06-09 08:00,2025-09-29 08:00
FAB116527A-14,IMPACT - DOOR FRAME PROCUREMENT- FAB116527A,Complete,2025-06-09 08:00,2025-07-25 17:00,2025-06-09 08:00,2025-10-03 08:00
FAB1-ST19A-03,INSTALL DOOR FRAMES - FAB1-ST19A,Complete,2025-05-05 08:00,2025-05-05 17:00,2025-05-09 08:00,2025-05-09 17:00
FAB116414B-03,INSTALL DOOR FRAMES - FAB116414B,Complete,2025-04-07 08:00,2025-04-07 17:00,2025-04-07 08:00,2025-04-07 17:00
FAB116414A-03,INSTALL DOOR FRAMES - FAB116414A,Complete,2025-04-07 08:00,2025-04-07 17:00,2025-04-07 08:00,2025-04-07 17:00
FAB130502A-03,INSTALL DOOR FRAMES - FAB130502A,Complete,2025-01-20 08:00,2025-01-20 17:00,2025-01-20 08:00,2025-01-20 17:00
FAB130502B-03,INSTALL DOOR FRAMES - FAB130502B,Not Started,2025-11-24 08:00,2025-11-24 17:00,,
FAB130111A-03,INSTALL DOOR FRAMES - FAB130111A (MOCK-UP),Complete,2025-01-08 08:00,2025-01-08 17:00,2025-01-08 08:00,2025-01-08 17:00
FAB130111A-04,DOOR INSTALL - FAB130111A (MOCK-UP),Complete,2025-01-13 08:00,2025-01-17 17:00,2025-01-13 08:00,2025-01-13 17:00
FAB130111A-05,PAINT & PROTECT DOORS & FRAMES -  FAB130111A (MOCK-UP),Complete,2025-01-14 08:00,2025-01-17 15:00,2025-01-14 08:00,2025-01-17 15:00
FAB112103A-07,DOOR FRAME PAINT & 1ST COAT - FAB112103A,Complete,2025-08-20 08:00,2025-08-22 17:00,2025-08-18 08:00,2025-08-18 17:00
FAB136311B-6,RUST REMEDIATION - DOOR FRAMES - FAB136311B,Complete,2025-09-22 08:00,2025-09-24 17:00,2025-09-22 08:00,2025-09-24 17:00
FAB130310C-40,RUST REMEDIATION - DOOR FRAMES - FAB130310C,Complete,2025-07-17 08:00,2025-07-25 17:00,2025-07-17 08:00,2025-07-25 17:00
FAB110204D-90,DOOR FRAME GROUT - FAB110204D - P1 (INCLUDE MOBILIZATION AND CURE TIME),Complete,2025-07-16 08:00,2025-07-16 17:00,2025-07-11 08:00,2025-07-11 17:00
FAB110212A-90,DOOR FRAME GROUT - FAB110212A - P1 (INCLUDE MOBILIZATION AND CURE TIME),Complete,2025-07-07 08:00,2025-07-07 17:00,2025-07-11 08:00,2025-07-11 08:00
FAB112103B-90,DOOR FRAME GROUT - FAB112103B (INCLUDE MOBILIZATION AND CURE TIME),Complete,2025-08-06 08:00,2025-08-06 17:00,2025-08-06 08:00,2025-08-06 17:00
FAB110213A-90,DOOR FRAME GROUT - FAB110213A - P1 (INCLUDE MOBILIZATION AND CURE TIME),Complete,2025-07-15 08:00,2025-07-15 17:00,2025-07-15 08:00,2025-07-15 17:00
FAB110211A-90,DOOR FRAME GROUT - FAB110211A - P1 (INCLUDE MOBILIZATION AND CURE TIME),Complete,2025-07-16 08:00,2025-07-16 17:00,2025-07-15 08:00,2025-07-15 17:00
FAB110208A-90,DOOR FRAME GROUT - FAB110208A - P1 (INCLUDE MOBILIZATION AND CURE TIME),Complete,2025-07-21 08:00,2025-07-21 17:00,2025-07-21 08:00,2025-07-21 17:00
FAB110403C-90,DOOR FRAME GROUT - FAB110403C - P1 (INCLUDE MOBILIZATION AND CURE TIME),Complete,2025-07-25 08:00,2025-07-25 17:00,2025-07-24 00:00,2025-07-24 00:00
FAB110404C-90,DOOR FRAME GROUT - FAB110404C - P1 (INCLUDE MOBILIZATION AND CURE TIME),Complete,2025-07-25 08:00,2025-07-25 17:00,2025-07-21 08:00,2025-07-21 17:00
FAB110405B-07,DOOR FRAME PAINT & 1ST COAT - FAB110405B,Complete,2025-09-22 08:00,2025-09-24 17:00,2025-09-22 08:00,2025-09-24 17:00
FAB110405B-90,DOOR FRAME GROUT - FAB110405B - P1 (INCLUDE MOBILIZATION AND CURE TIME),Complete,2025-09-12 08:00,2025-09-12 17:00,2025-09-12 08:00,2025-09-12 17:00
FAB110408A-90,DOOR FRAME GROUT (RFI1416) - FAB110408A - P1 (INCLUDE MOBILIZATION AND CURE TIME),Complete,2025-09-18 08:00,2025-09-18 17:00,2025-09-18 08:00,2025-09-18 17:00
FAB110501A-90,DOOR FRAME GROUT (RFI1416) - FAB110501A - P1 (INCLUDE MOBILIZATION AND CURE TIME),Complete,2025-08-25 08:00,2025-08-25 17:00,2025-08-25 08:00,2025-08-25 17:00
FAB110511D-90,DOOR FRAME GROUT (RFI1416) - FAB110511D - P1 (INCLUDE MOBILIZATION AND CURE TIME),Complete,2025-07-17 08:00,2025-07-17 17:00,2025-07-17 08:00,2025-07-17 17:00
FAB110511E-90,DOOR FRAME GROUT (RFI1416) - FAB110511E - P1 (INCLUDE MOBILIZATION AND CURE TIME),Complete,2025-08-04 08:00,2025-08-04 17:00,2025-08-04 08:00,2025-08-04 17:00
FAB116509D-90,DOOR FRAME GROUT (RFI1416) - FAB116509D - P1 (INCLUDE MOBILIZATION AND CURE TIME),Complete,2025-08-05 08:00,2025-08-05 17:00,2025-08-05 08:00,2025-08-05 17:00
FAB116509E-90,DOOR FRAME GROUT (RFI1416) - FAB116509E - P1 (INCLUDE MOBILIZATION AND CURE TIME),Complete,2025-08-15 08:00,2025-08-15 17:00,2025-08-15 08:00,2025-08-15 17:00
FAB116511A-90,DOOR FRAME GROUT (RFI1416) - FAB116511A - P1 (INCLUDE MOBILIZATION AND CURE TIME),Complete,2025-08-04 08:00,2025-08-04 17:00,2025-08-04 08:00,2025-08-04 17:00
FAB116511G-90,DOOR FRAME GROUT (RFI1416) - FAB116511G - P1 (INCLUDE MOBILIZATION AND CURE TIME),Complete,2025-08-05 08:00,2025-08-05 17:00,2025-08-05 08:00,2025-08-05 17:00
FAB116308C-90,DOOR FRAME GROUT (RFI1416) - FAB116308C - P1 (INCLUDE MOBILIZATION AND CURE TIME),Not Started,2025-11-21 08:00,2025-11-21 17:00,,
FAB116308E-90,DOOR FRAME GROUT (RFI1416) - FAB116308E - P1 (INCLUDE MOBILIZATION AND CURE TIME),Not Started,2025-11-21 08:00,2025-11-21 17:00,,
FAB116308D-90,DOOR FRAME GROUT (RFI1416) - FAB116308D - P1 (INCLUDE MOBILIZATION AND CURE TIME),Complete,2025-08-25 08:00,2025-08-26 17:00,2025-08-25 08:00,2025-08-25 17:00
FAB116308G-90,DOOR FRAME GROUT (RFI1416) - FAB116308G - P1 (INCLUDE MOBILIZATION AND CURE TIME),Complete,2025-07-25 08:00,2025-07-25 17:00,2025-07-23 08:00,2025-07-23 17:00
FAB116106B-90,DOOR FRAME GROUT (RFI1416) - FAB116106B - P1 (INCLUDE MOBILIZATION AND CURE TIME),Complete,2025-06-16 08:00,2025-06-16 17:00,2025-06-16 08:00,2025-06-16 17:00
FAB116101B-90,DOOR FRAME GROUT (RFI1416) - FAB116101B - P1 (INCLUDE MOBILIZATION AND CURE TIME),Not Started,2025-12-01 08:00,2025-12-01 17:00,,
FAB116201A-90,DOOR FRAME GROUT (RFI1416) - FAB116201A - P1 (INCLUDE MOBILIZATION AND CURE TIME),Complete,2025-08-12 08:00,2025-08-12 17:00,2025-08-12 08:00,2025-08-12 17:00
FAB116201D-07,DOOR FRAME PAINT & 1ST COAT - FAB116201D,Complete,2025-08-25 08:00,2025-08-27 17:00,2025-08-25 08:00,2025-08-27 17:00
FAB116201D-90,DOOR FRAME GROUT (RFI1416) - FAB116201D - P1 (INCLUDE MOBILIZATION AND CURE TIME),Complete,2025-07-22 08:00,2025-07-22 17:00,2025-07-22 08:00,2025-07-22 17:00
FAB116202B-90,DOOR FRAME GROUT (RFI1416) - FAB116202B - P1 (INCLUDE MOBILIZATION AND CURE TIME),Complete,2025-08-25 08:00,2025-08-25 17:00,2025-08-25 08:00,2025-08-25 17:00
FAB116304A-90,DOOR FRAME GROUT (RFI1416) - FAB116304A - P1 (INCLUDE MOBILIZATION AND CURE TIME),Complete,2025-08-15 08:00,2025-08-15 17:00,2025-08-15 08:00,2025-08-15 17:00
FAB116304B-90,DOOR FRAME GROUT (RFI1416) - FAB116304B - P1 (INCLUDE MOBILIZATION AND CURE TIME),Complete,2025-07-25 08:00,2025-07-25 17:00,2025-07-23 08:00,2025-07-23 17:00
FAB116403A-90,DOOR FRAME GROUT (RFI1416) - FAB116403A - P1 (INCLUDE MOBILIZATION AND CURE TIME),Complete,2025-06-12 08:00,2025-06-12 17:00,2025-06-12 08:00,2025-06-12 17:00
FAB116509B-90,DOOR FRAME GROUT (RFI1416) - FAB116509B - P1 (INCLUDE MOBILIZATION AND CURE TIME),Complete,2025-03-20 08:00,2025-03-20 17:00,2025-03-20 08:00,2025-03-20 17:00
FAB116509A-90,DOOR FRAME GROUT (RFI1416) - FAB116509A - P1 (INCLUDE MOBILIZATION AND CURE TIME),Complete,2025-08-15 08:00,2025-08-15 17:00,2025-08-15 08:00,2025-08-15 17:00
FAB110509A-90,DOOR FRAME GROUT (RFI1416) - FAB110509A - P1 (INCLUDE MOBILIZATION AND CURE TIME),Complete,2025-08-04 08:00,2025-08-04 17:00,2025-08-04 08:00,2025-08-04 17:00
FAB110510A-90,DOOR FRAME GROUT (RFI1416) - FAB110510A - P1 (INCLUDE MOBILIZATION AND CURE TIME),Complete,2025-08-06 08:00,2025-08-06 17:00,2025-08-06 08:00,2025-08-06 17:00
FAB110402A-90,DOOR FRAME GROUT (RFI1416) - FAB110402A - P1 (INCLUDE MOBILIZATION AND CURE TIME),Complete,2025-07-17 08:00,2025-07-17 17:00,2025-07-17 08:00,2025-07-17 17:00
FAB110401A-90,DOOR FRAME GROUT (RFI1416) - FAB110401A - P1 (INCLUDE MOBILIZATION AND CURE TIME),Complete,2025-07-17 08:00,2025-07-17 17:00,2025-07-17 08:00,2025-07-17 17:00
FAB110401B-90,DOOR FRAME GROUT (RFI1416) - FAB110401B - P1 (INCLUDE MOBILIZATION AND CURE TIME),Complete,2025-07-17 08:00,2025-07-17 17:00,2025-07-18 08:00,2025-07-18 17:00
FAB110307A-90,DOOR FRAME GROUT (RFI1416) - FAB110307A - P1 (INCLUDE MOBILIZATION AND CURE TIME),Complete,2025-08-06 08:00,2025-08-06 17:00,2025-08-06 08:00,2025-08-06 17:00
FAB110308A-90,DOOR FRAME GROUT (RFI1416) - FAB110308A - P1 (INCLUDE MOBILIZATION AND CURE TIME),Complete,2025-08-21 08:00,2025-08-21 17:00,2025-08-15 08:00,2025-08-15 17:00
FAB110305B-90,DOOR FRAME GROUT (RFI1416) - FAB110305B - P1 (INCLUDE MOBILIZATION AND CURE TIME),Complete,2025-07-17 08:00,2025-07-17 17:00,2025-07-17 08:00,2025-07-17 17:00
FAB110101A-90,DOOR FRAME GROUT (RFI1416) - FAB110101A - P1 (INCLUDE MOBILIZATION AND CURE TIME),Complete,2025-08-06 08:00,2025-08-06 17:00,2025-08-06 08:00,2025-08-06 17:00
FAB116104A-90,DOOR FRAME GROUT (RFI1416) - FAB116104A - P1 (INCLUDE MOBILIZATION AND CURE TIME),Complete,2025-08-18 08:00,2025-08-18 17:00,2025-08-18 08:00,2025-08-18 17:00
FAB116410A-90,DOOR FRAME GROUT (RFI1416) - FAB116410A - P1 (INCLUDE MOBILIZATION AND CURE TIME),Complete,2025-08-05 08:00,2025-08-05 17:00,2025-08-05 08:00,2025-08-05 17:00
FAB116410B-90,DOOR FRAME GROUT (RFI1416) - FAB116410B - P1 (INCLUDE MOBILIZATION AND CURE TIME),Complete,2025-08-05 08:00,2025-08-05 17:00,2025-08-05 08:00,2025-08-05 17:00
FAB116107A-90,DOOR FRAME GROUT (RFI1416) - FAB116107A - P1 (INCLUDE MOBILIZATION AND CURE TIME),Complete,2025-08-05 08:00,2025-08-05 17:00,2025-08-05 08:00,2025-08-05 17:00
FAB116203B-90,DOOR FRAME GROUT (RFI1416) - FAB116203B - P1 (INCLUDE MOBILIZATION AND CURE TIME),Complete,2025-07-22 08:00,2025-07-22 17:00,2025-07-22 08:00,2025-07-22 17:00
FAB116203C-90,DOOR FRAME GROUT (RFI1416) - FAB116203C - P1 (INCLUDE MOBILIZATION AND CURE TIME),Complete,2025-08-11 08:00,2025-08-11 17:00,2025-08-11 08:00,2025-08-11 17:00
FAB110506B-90,DOOR FRAME GROUT (RFI1416) - FAB110506B - P1 (INCLUDE MOBILIZATION AND CURE TIME),Complete,2025-08-04 08:00,2025-08-04 17:00,2025-08-04 08:00,2025-08-04 17:00
FAB116307B-90,DOOR FRAME GROUT (RFI1416) - FAB116307B - P1 (INCLUDE MOBILIZATION AND CURE TIME),Complete,2025-07-25 08:00,2025-07-25 17:00,2025-07-23 08:00,2025-07-23 17:00
FAB116309A-90,DOOR FRAME GROUT (RFI1416) - FAB116309A - P1 (INCLUDE MOBILIZATION AND CURE TIME),Complete,2025-08-04 08:00,2025-08-04 17:00,2025-08-04 08:00,2025-08-04 17:00
FAB116507A-90,DOOR FRAME GROUT (RFI1416) - FAB116507A - P1 (INCLUDE MOBILIZATION AND CURE TIME),Complete,2025-08-05 08:00,2025-08-05 17:00,2025-08-05 08:00,2025-08-05 17:00
FAB146105A-90,DOOR FRAME GROUT (RFI1416) - FAB146105A - P1 (INCLUDE MOBILIZATION AND CURE TIME),Not Started,2025-12-11 08:00,2025-12-11 17:00,,
FAB146109B-90,DOOR FRAME GROUT (RFI1416) - FAB146109B - P1 (INCLUDE MOBILIZATION AND CURE TIME),Not Started,2025-12-11 08:00,2025-12-11 17:00,,
FAB146109C-90,DOOR FRAME GROUT (RFI1416) - FAB146109C - P1 (INCLUDE MOBILIZATION AND CURE TIME),Not Started,2025-12-11 08:00,2025-12-11 17:00,,
FAB146110B-90,DOOR FRAME GROUT (RFI1416) - FAB146110B - P1 (INCLUDE MOBILIZATION AND CURE TIME),Not Started,2025-12-11 08:00,2025-12-11 17:00,,
FAB146303A-90,DOOR FRAME GROUT (RFI1416) - FAB146303A - P1 (INCLUDE MOBILIZATION AND CURE TIME),Not Started,2025-12-12 08:00,2025-12-12 17:00,,
FAB146507A-90,DOOR FRAME GROUT (RFI1416) - FAB146507A - P1 (INCLUDE MOBILIZATION AND CURE TIME),Complete,2025-07-25 08:00,2025-07-25 17:00,2025-07-25 08:00,2025-07-25 17:00
FAB146507B-90,DOOR FRAME GROUT (RFI1416) - FAB146507B - P1 (INCLUDE MOBILIZATION AND CURE TIME),Not Started,2025-12-02 08:00,2025-12-02 17:00,,
FAB146503A-90,DOOR FRAME GROUT (RFI1416) - FAB146503A - P1 (INCLUDE MOBILIZATION AND CURE TIME),Not Started,2025-12-11 08:00,2025-12-11 17:00,,
FAB140508A-90,DOOR FRAME GROUT (RFI1416) - FAB140508A - P1 (INCLUDE MOBILIZATION AND CURE TIME),Not Started,2025-12-02 08:00,2025-12-02 17:00,,
FAB140508B-90,DOOR FRAME GROUT (RFI1416) - FAB140508B - P1 (INCLUDE MOBILIZATION AND CURE TIME),Complete,2025-07-14 08:00,2025-07-14 17:00,2025-07-14 08:00,2025-07-14 17:00
FAB140509B-90,DOOR FRAME GROUT (RFI1416) - FAB140509B - P1 (INCLUDE MOBILIZATION AND CURE TIME),Not Started,2025-12-11 08:00,2025-12-11 17:00,,
FAB140303A-90,DOOR FRAME GROUT (RFI1416) - FAB140303A - P1 (INCLUDE MOBILIZATION AND CURE TIME),Not Started,2025-12-11 08:00,2025-12-11 17:00,,
FAB140301A-90,DOOR FRAME GROUT (RFI1416) - FAB140301A - P1 (INCLUDE MOBILIZATION AND CURE TIME),Not Started,2025-12-11 08:00,2025-12-11 17:00,,
FAB140101A-90,DOOR FRAME GROUT (RFI1416) - FAB140101A - P1 (INCLUDE MOBILIZATION AND CURE TIME),Not Started,2025-12-11 08:00,2025-12-11 17:00,,
FAB140101B-90,DOOR FRAME GROUT (RFI1416) - FAB140101B - P1 (INCLUDE MOBILIZATION AND CURE TIME),Not Started,2025-12-11 08:00,2025-12-11 17:00,,
FAB140601C-90,DOOR FRAME GROUT (RFI1416) - FAB140601C - P1 (INCLUDE MOBILIZATION AND CURE TIME),Not Started,2025-12-11 08:00,2025-12-11 17:00,,
FAB140601B-90,DOOR FRAME GROUT (RFI1416) - FAB140601B - P1 (INCLUDE MOBILIZATION AND CURE TIME),Not Started,2025-12-11 08:00,2025-12-11 17:00,,
FAB140106B-90,DOOR FRAME GROUT (RFI1416) - FAB140106B - P1 (INCLUDE MOBILIZATION AND CURE TIME),Not Started,2025-12-11 08:00,2025-12-11 17:00,,
FAB145101C-90,DOOR FRAME GROUT (RFI1416) - FAB145101C - P1 (INCLUDE MOBILIZATION AND CURE TIME),Complete,2025-07-01 08:00,2025-07-01 17:00,2025-07-01 08:00,2025-07-01 17:00
FAB166101A-90,DOOR FRAME GROUT (RFI1416) - FAB166101A - P1 (INCLUDE MOBILIZATION AND CURE TIME),Not Started,2025-12-11 08:00,2025-12-11 17:00,,
FAB120506A-90,DOOR FRAME GROUT (RFI1416) - FAB120506A - P1 (INCLUDE MOBILIZATION AND CURE TIME),Complete,2025-10-10 08:00,2025-10-10 17:00,2025-10-10 08:00,2025-10-10 17:00
FAB120506B-90,DOOR FRAME GROUT (RFI1416) - FAB120506B - P1 (INCLUDE MOBILIZATION AND CURE TIME),Complete,2025-10-10 08:00,2025-10-10 17:00,2025-10-10 08:00,2025-10-10 17:00
FAB120506C-90,DOOR FRAME GROUT (RFI1416) - FAB120506C - P1 (INCLUDE MOBILIZATION AND CURE TIME),Complete,2025-10-10 08:00,2025-10-10 17:00,2025-10-10 08:00,2025-10-10 17:00
FAB120507A-90,DOOR FRAME GROUT (RFI1416) - FAB120507A - P1 (INCLUDE MOBILIZATION AND CURE TIME),Complete,2025-11-12 08:00,2025-11-12 17:00,2025-11-12 08:00,2025-11-12 17:00
FAB120507B-90,DOOR FRAME GROUT (RFI1416) - FAB120507B - P1 (INCLUDE MOBILIZATION AND CURE TIME),Not Started,2025-12-02 08:00,2025-12-02 17:00,,
FAB126507A-01,IMPACT - INSTALL/REWORK DRYWALL FRAMING AROUND DOORS - FAB126507A,Complete,2025-02-13 08:00,2025-02-21 17:00,2025-02-26 08:00,2025-03-06 17:00
FAB126507A-03,INSTALL DOOR FRAMES - FAB126507A,Complete,2025-08-18 13:00,2025-08-19 12:00,2025-03-06 00:00,2025-03-06 16:00
FAB126507A-04,INSTALL DOOR & HARDWARE - FAB126507A,Active,2025-05-08 08:00,2025-05-14 17:00,2025-05-08 08:00,
FAB126507A-05,PAINT & PROTECT DOORS & FRAMES -  FAB120507C,Not Started,2026-02-16 08:00,2026-02-19 15:00,,
FAB122104A-01,IMPACT - INSTALL/REWORK DRYWALL FRAMING AROUND DOORS - FAB122104A,Complete,2025-05-01 08:00,2025-05-09 17:00,2025-03-04 08:00,2025-03-13 08:00
FAB122104A-03,INSTALL DOOR FRAMES - FAB122104A,Complete,2025-08-26 08:00,2025-08-26 17:00,2025-03-13 00:00,2025-03-13 16:00
FAB122104A-04,INSTALL DOOR & HARDWARE - FAB122104A,Not Started,2025-11-21 08:00,2025-11-27 17:00,,
FAB122104A-05,PAINT & PROTECT DOORS & FRAMES -  FAB122104A,Not Started,2026-02-16 08:00,2026-02-19 15:00,,
FAB110515A-01,IMPACT - INSTALL/REWORK DRYWALL FRAMING AROUND DOORS - FAB110515A,Complete,2025-03-10 08:00,2025-03-18 17:00,2025-03-10 08:00,2025-03-18 17:00
FAB110515A-03,INSTALL DOOR FRAMES - FAB110515A,Complete,2025-05-06 08:00,2025-05-06 17:00,2025-03-18 08:00,2025-03-18 17:00
FAB110515A-04,DOOR INSTALL - FAB110515A,Complete,2025-08-20 08:00,2025-08-20 17:00,2025-08-20 08:00,2025-08-20 17:00
FAB110515A-05,PAINT & PROTECT DOORS & FRAMES - FAB110515A,Complete,2025-10-14 08:00,2025-10-17 17:00,2025-10-14 08:00,2025-10-17 17:00
FAB110515A-06,INSTALL DOOR HARDWARE - FAB110515A,Not Started,2025-11-21 08:00,2025-11-26 17:00,,
FAB110112A-03,INSTALL DOOR FRAMES - FAB110112A,Complete,2025-06-05 13:00,2025-06-06 12:00,2025-04-10 00:00,2025-04-10 16:00
FAB110112A-04,INSTALL DOOR & HARDWARE - FAB110112A,Active,2025-07-08 08:00,2025-07-14 17:00,2025-07-08 08:00,
FAB110112A-05,PAINT & PROTECT DOORS & FRAMES - FAB110112A,Not Started,2026-02-16 08:00,2026-02-19 15:00,,
FAB126510A-01,IMPACT - INSTALL/REWORK DRYWALL FRAMING AROUND DOORS - FAB126510A,Complete,2025-02-13 08:00,2025-02-21 17:00,2025-04-28 08:00,2025-05-06 17:00
FAB126510A-03,INSTALL DOOR FRAMES - FAB126510A,Complete,2025-08-18 13:00,2025-08-19 12:00,2025-05-06 00:00,2025-05-06 16:00
FAB126510A-04,INSTALL DOOR & HARDWARE - FAB126510A,Not Started,2025-11-21 08:00,2025-11-27 17:00,,
FAB126510A-05,PAINT & PROTECT DOORS & FRAMES -  FAB126510A,Not Started,2026-02-16 08:00,2026-02-19 15:00,,
FAB110310A-01,IMPACT - INSTALL/REWORK DRYWALL FRAMING AROUND DOORS - FAB110310A,Complete,2025-05-23 08:00,2025-06-02 17:00,2025-05-26 08:00,2025-06-03 17:00
FAB110310A-03,INSTALL DOOR FRAMES - FAB110310A,Complete,2025-05-27 08:00,2025-05-27 17:00,2025-06-03 08:00,2025-06-03 17:00
FAB110310A-04,INSTALL DOOR & HARDWARE - FAB110310A,Active,2025-09-08 08:00,2025-09-12 17:00,2025-09-08 08:00,
FAB110310A-05,PAINT & PROTECT DOORS & FRAMES - FAB110310A,Not Started,2026-02-16 08:00,2026-02-19 17:00,,
FAB132101C-01,IMPACT - INSTALL/REWORK DRYWALL FRAMING AROUND DOORS - FAB132101C,Complete,2025-05-29 08:00,2025-06-06 17:00,2025-05-29 08:00,2025-06-06 17:00
FAB132101C-03,INSTALL DOOR FRAMES - FAB132101C,Complete,2025-06-06 08:00,2025-06-06 17:00,2025-06-06 08:00,2025-06-06 17:00
FAB132101C-04,INSTALL DOOR & HARDWARE - FAB132101C,Active,2025-11-18 08:00,2025-11-24 17:00,2025-11-18 08:00,
FAB132101C-05,PAINT & PROTECT DOORS & FRAMES - FAB132101C,Not Started,2026-02-16 08:00,2026-02-19 17:00,,
FAB146109A-01,IMPACT - INSTALL/REWORK DRYWALL FRAMING AROUND DOORS - FAB146109A,Complete,2025-07-01 08:00,2025-07-09 17:00,2025-07-01 08:00,2025-07-09 17:00
FAB146109A-03,INSTALL DOOR FRAMES - FAB146109A,Complete,2025-07-09 08:00,2025-07-09 17:00,2025-07-09 08:00,2025-07-09 17:00
FAB146109A-04,INSTALL DOOR & HARDWARE - FAB146109A,Active,2025-11-10 08:00,2025-11-14 17:00,2025-11-10 08:00,
FAB146109A-05,PAINT & PROTECT DOORS & FRAMES - FAB146109A,Not Started,2026-02-16 08:00,2026-02-19 15:00,,
FAB120108A-03,INSTALL DOOR FRAME BY SECAI - FAB120108A HANDED OVER ON 06/27,Active,2025-06-27 08:00,2025-07-31 17:00,2025-06-27 08:00,
FAB120108E-03,INSTALL DOOR FRAME BY SECAI - FAB120108E HANDED OVER ON 08/29,Active,2025-08-29 08:00,2025-08-29 17:00,2025-08-29 08:00,
FAB120303C-03,INSTALL DOOR FRAMES - FAB120303C,Complete,2025-08-22 08:00,2025-08-22 17:00,2025-07-21 08:00,2025-07-21 17:00
FAB120503B-03,INSTALL DOOR FRAME BY SECAI - FAB120503B HANDED OVER ON 08/29,Active,2025-08-29 08:00,2025-08-29 17:00,2025-08-29 08:00,
FAB120503E-03,INSTALL DOOR FRAMES - FAB120503E,Complete,2025-08-01 08:00,2025-08-01 17:00,2025-08-01 08:00,2025-08-01 17:00
FAB136505B-03,INSTALL DOOR FRAMES - FAB136505B,Complete,2025-05-27 08:00,2025-06-04 17:00,2025-01-16 08:00,2025-01-16 16:00
FAB116308A-03,INSTALL DOOR FRAMES - FAB116308A,Complete,2025-08-21 08:00,2025-08-21 17:00,2025-08-21 08:00,2025-08-21 17:00
FAB110304A-60,FRAME HANDED OVER TO SECAI 07/18 - FAB110304A,Complete,2025-07-18 08:00,2025-07-18 17:00,2025-07-18 08:00,2025-07-18 17:00
FAB110409D-40,DOOR FRAME HANDED OVER TO SEC AI 07/18- FAB110409D,Complete,2025-07-18 08:00,2025-07-18 17:00,2025-07-18 08:00,2025-07-18 17:00
FAB116301B-25,DOOR FRAME HANDED OVER TO SECAI 07/18 - FAB116301B,Complete,2025-07-18 08:00,2025-07-18 17:00,2025-07-18 08:00,2025-07-18 17:00
FAB116301B-03,INSTALL DOOR FRAME BY SECAI - FAB116301B HANDED OVER 07/18,Complete,2025-07-18 08:00,2025-07-18 17:00,2025-07-18 08:00,2025-09-22 17:00
MS.OOS.5440,SECAI - DRYWALL & DOORS - IMPACTS - START - ReMob Out of Seq Remaining completion list,Complete,2024-12-02 07:00,2024-12-02 07:00,2024-12-02 07:00,2024-12-02 07:00
FAB110514A--03,INSTALL DOOR FRAMES - FAB110514A,Complete,2025-06-04 08:00,2025-06-04 17:00,2025-06-04 08:00,2025-06-04 17:00
FAB110122A-21,DOOR PREP - FAB110122A,Complete,2025-08-07 08:00,2025-08-13 17:00,2025-07-24 08:00,2025-07-25 17:00
FAB110206A-21,DOOR PREP - FAB110206A,Complete,2025-07-25 08:00,2025-07-30 15:00,2025-07-24 08:00,2025-07-29 17:00
FAB110306A-21,DOOR PREP - FAB110306A,Complete,2025-07-25 08:00,2025-07-30 17:00,2025-07-24 08:00,2025-07-24 17:00
A2020,IMPACT - SECAI MEP TRADE DAMAGE - DOOR FRAME RE-ALIGNMENT - notice sent,Complete,2025-06-20 08:00,2025-07-21 17:00,2025-06-20 08:00,2025-09-01 17:00
FAB110206A-03,INSTALL DOOR FRAMES - FAB110206A,Complete,2025-07-23 08:00,2025-07-23 17:00,2025-07-23 08:00,2025-07-23 17:00
FAB110206B-03,INSTALL DOOR FRAMES - FAB110206B,Complete,2025-07-29 08:00,2025-07-29 17:00,2025-07-29 08:00,2025-07-29 17:00
FAB110206B-21,DOOR PREP - FAB110206B,Complete,2025-07-30 08:00,2025-08-12 17:00,2025-07-30 08:00,2025-08-18 08:00
FAB130104A-01,IMPACT - INSTALL/REWORK DRYWALL FRAMING AROUND DOORS - FAB130104A,Complete,2025-09-22 10:00,2025-10-01 10:00,2025-01-09 10:00,2025-01-20 10:00
FAB130104A-03,INSTALL DOOR FRAMES - FAB130104A,Complete,2025-07-23 13:00,2025-07-24 12:00,2025-01-20 00:00,2025-01-20 12:00
FAB130104A-04,INSTALL DOOR & HARDWARE - FAB130104A,Not Started,2025-11-21 08:00,2025-11-27 17:00,,
FAB130104A-05,PAINT & PROTECT DOORS & FRAMES - FAB130104A,Not Started,2026-02-16 08:00,2026-02-19 15:00,,
FAB132102C-01,IMPACT - INSTALL/REWORK DRYWALL FRAMING AROUND DOORS - FAB132102C,Complete,2025-05-29 08:00,2025-06-06 17:00,2025-01-10 08:00,2025-01-20 17:00
FAB132102C-03,INSTALL DOOR FRAMES - FAB132102C,Complete,2025-06-06 08:00,2025-06-06 17:00,2025-01-20 08:00,2025-01-20 17:00
FAB132102C-04,INSTALL DOOR & HARDWARE - FAB132102C,Not Started,2025-11-21 08:00,2025-11-27 17:00,,
FAB132102A-03,INSTALL DOOR FRAMES - FAB132102A,Not Started,2025-11-28 08:00,2025-11-28 17:00,,
FAB132102A-04,INSTALL DOOR & HARDWARE - FAB132102A,Not Started,2025-12-01 08:00,2025-12-05 17:00,,
FAB132102A-05,PAINT & PROTECT DOORS & FRAMES -  FAB132102A,Not Started,2026-02-16 08:00,2026-02-19 17:00,,
FAB132101D-01,IMPACT - INSTALL/REWORK DRYWALL FRAMING AROUND DOORS - FAB132101D,Complete,2025-05-29 08:00,2025-06-06 17:00,2025-06-09 08:00,2025-06-17 17:00
FAB132101D-03,INSTALL DOOR FRAMES - FAB132101D,Complete,2025-06-17 08:00,2025-06-17 17:00,2025-06-17 08:00,2025-06-17 17:00
FAB132101D-04,INSTALL DOOR & HARDWARE - FAB132101D,Not Started,2025-11-21 08:00,2025-11-27 17:00,,
FAB132101D-05,PAINT & PROTECT DOORS & FRAMES -  FAB132101D,Not Started,2026-02-16 08:00,2026-02-19 17:00,,
FAB132103A-01,IMPACT - INSTALL/REWORK DRYWALL FRAMING AROUND DOORS - FAB132103A,Complete,2025-09-03 08:00,2025-09-04 17:00,2025-09-03 08:00,2025-09-04 17:00
FAB132103A-03,INSTALL DOOR FRAMES - FAB132103A,Complete,2025-09-05 08:00,2025-09-05 17:00,2025-09-05 08:00,2025-09-05 17:00
FAB132103A-04,INSTALL DOOR & HARDWARE - FAB132103A,Not Started,2025-11-21 08:00,2025-11-27 17:00,,
FAB132103A-05,PAINT & PROTECT DOORS & FRAMES - FAB132103A,Not Started,2026-02-16 08:00,2026-02-19 17:00,,
FAB1-ST50A-04,INSTALL DOOR & HARDWARE - FAB1-ST50A,Active,2025-10-17 08:00,2025-10-23 17:00,2025-10-17 08:00,
FAB1-ST50A-05,PAINT & PROTECT DOORS & FRAMES - FAB1-ST50A,Not Started,2026-02-16 08:00,2026-02-19 17:00,,
FAB1-ST50A-03,INSTALL DOOR FRAMES - FAB1-ST50A,Complete,2025-09-25 08:00,2025-09-25 17:00,2025-09-25 08:00,2025-09-25 17:00
FAB1-ST50B-03,INSTALL DOOR FRAMES - FAB1-ST50B,Complete,2025-10-03 08:00,2025-10-03 17:00,2025-10-03 08:00,2025-10-03 17:00
FAB1-ST50B-05,PAINT & PROTECT DOORS & FRAMES - FAB1-ST50B,Not Started,2026-02-16 08:00,2026-02-19 17:00,,
FAB1-ST50F-04,INSTALL DOOR & HARDWARE - FAB1-ST50F,Not Started,2025-11-21 08:00,2025-11-27 17:00,,
FAB1-ST50F-05,PAINT & PROTECT DOORS & FRAMES - FAB1-ST50F,Not Started,2026-02-16 08:00,2026-02-19 17:00,,
FAB1-ST19B-03,INSTALL DOOR FRAME BY SECAI- FAB1-ST19B HANDED OVER ON 08/29,Complete,2025-08-29 08:00,2025-08-29 17:00,2025-08-29 08:00,2025-09-16 17:00
FAB1-ST50B-04,INSTALL DOOR & HARDWARE - FAB1-ST50B,Active,2025-10-16 08:00,2025-10-22 17:00,2025-10-16 08:00,
FAB1-ST50C-03,INSTALL DOOR FRAMES - FAB1-ST50C,Complete,2025-03-28 08:00,2025-03-28 17:00,2025-03-28 08:00,2025-03-28 17:00
FAB1-ST50C-05,PAINT & PROTECT DOORS & FRAMES - FAB1-ST50C,Not Started,2026-02-16 08:00,2026-02-19 17:00,,
FAB1-ST50C-04,INSTALL DOOR & HARDWARE - FAB1-ST50C,Active,2025-11-14 08:00,2025-11-20 17:00,2025-11-14 08:00,
FAB110115A-00,IMPACT - DOOR FRAME PROCUREMENT- RE-ORDERED - FAB110115A,Complete,2025-08-18 08:00,2025-09-25 17:00,2025-08-18 08:00,2025-10-10 17:00
FAB116513E-25,DOOR FRAME HANDED OVER TO SECAI ON 07/17- FAB116513E,Complete,2025-07-17 08:00,2025-07-17 17:00,2025-07-17 08:00,2025-07-17 17:00
FAB116513G-25,DOOR FRAME HANDED OVER TO SECAI ON 07/17 - FAB116513G,Complete,2025-07-17 08:00,2025-07-17 17:00,2025-07-17 08:00,2025-07-17 17:00
FAB1-ST50F-03,INSTALL DOOR FRAMES - FAB1-ST50F,Complete,2025-10-28 08:00,2025-10-28 17:00,2025-10-28 08:00,2025-10-28 17:00
FAB122104B-03,INSTALL DOOR FRAMES - FAB122104B,Complete,2025-11-13 08:00,2025-11-13 17:00,2025-11-13 08:00,2025-11-13 17:00
FAB122104B-04,INSTALL DOOR & HARDWARE - FAB122104B,Not Started,2025-11-21 08:00,2025-11-27 17:00,,
FAB122104B-05,PAINT & PROTECT DOORS & FRAMES -  FAB122104B,Not Started,2026-02-16 08:00,2026-02-19 15:00,,
FAB122103B-03,INSTALL DOOR FRAMES - FAB122103B,Not Started,2025-11-21 08:00,2025-11-21 17:00,,
FAB122103B-04,INSTALL DOOR & HARDWARE - FAB122103B,Not Started,2025-11-24 08:00,2025-11-28 17:00,,
FAB122103B-05,PAINT & PROTECT DOORS & FRAMES -  FAB122103B,Not Started,2026-02-16 08:00,2026-02-19 15:00,,
FAB116412B-01,IMPACT - INSTALL/REWORK DRYWALL FRAMING AROUND DOORS - FAB116412B,Complete,2025-03-10 08:00,2025-03-18 17:00,2025-03-10 08:00,2025-03-18 17:00
FAB116412B-03,INSTALL DOOR FRAMES - FAB116412B,Complete,2025-03-18 08:00,2025-03-18 17:00,2025-03-18 08:00,2025-03-18 17:00
FAB116412B-04,INSTALL DOOR & HARDWARE - FAB116412B,Active,2025-10-06 08:00,2025-10-10 17:00,2025-10-06 08:00,
FAB116412B-05,PAINT & PROTECT DOORS & FRAMES - FAB116412B,Not Started,2026-02-16 08:00,2026-02-19 15:00,,
FAB112158B-03,INSTALL DOOR FRAMES - FAB112158B,Complete,2025-03-19 08:00,2025-03-19 17:00,2025-03-19 08:00,2025-03-19 17:00
FAB112158B-04,INSTALL DOOR & HARDWARE - FAB112158B,Active,2025-11-03 08:00,2025-11-07 17:00,2025-11-03 08:00,
FAB112158B-05,PAINT & PROTECT DOORS & FRAMES - FAB112158B,Not Started,2026-02-16 08:00,2026-02-19 15:00,,
FAB1-ST50E-04,INSTALL DOOR & HARDWARE - FAB1-ST50E,Not Started,2025-11-21 08:00,2025-11-27 17:00,,
FAB1-ST50E-05,PAINT & PROTECT DOORS & FRAMES - FAB1-ST50E,Not Started,2026-02-16 08:00,2026-02-19 17:00,,
FAB1-ST50E-03,INSTALL DOOR FRAMES - FAB1-ST50E,Complete,2025-02-13 08:00,2025-02-13 17:00,2025-02-13 08:00,2025-02-13 17:00
FAB122156B-03,INSTALL DOOR FRAMES - FAB122156B,Complete,2025-04-11 08:00,2025-04-11 17:00,2025-04-11 08:00,2025-04-11 17:00
FAB122156B-04,INSTALL DOOR & HARDWARE - FAB122156B,Active,2025-11-11 08:00,2025-11-17 17:00,2025-11-11 08:00,
FAB122156B-05,PAINT & PROTECT DOORS & FRAMES -  FAB122156B,Not Started,2026-02-16 08:00,2026-02-19 15:00,,
FAB1-ST01B-01,IMPACT - INSTALL/REWORK DRYWALL FRAMING AROUND DOORS - FAB1-ST01B,Complete,2025-05-08 08:00,2025-05-16 17:00,2025-05-08 08:00,2025-05-16 17:00
FAB1-ST01B-03,INSTALL DOOR FRAMES - FAB1-ST01B,Complete,2025-05-16 13:00,2025-05-19 12:00,2025-05-16 13:00,2025-05-19 12:00
FAB1-ST01B-04,INSTALL DOOR & HARDWARE - FAB1-ST01B,Active,2025-11-05 08:00,2025-11-11 17:00,2025-11-05 08:00,
FAB1-ST01B-05,PAINT & PROTECT DOORS & FRAMES - FAB1-ST01B,Not Started,2026-02-16 08:00,2026-02-19 15:00,,
FAB1-ST01A-03,INSTALL DOOR FRAMES - FAB1-ST01A,Complete,2025-05-05 08:00,2025-05-05 17:00,2025-05-05 08:00,2025-05-05 17:00
FAB1-ST01A-04,INSTALL DOOR & HARDWARE - FAB1-ST01A,Active,2025-09-18 08:00,2025-09-24 17:00,2025-09-18 08:00,
FAB1-ST01A-05,PAINT & PROTECT DOORS & FRAMES - FAB1-ST01A,Not Started,2026-02-16 08:00,2026-02-20 17:00,,
FAB1-ST01D-04,INSTALL DOOR & HARDWARE - FAB1-ST01D,Not Started,2025-11-21 08:00,2025-11-27 17:00,,
FAB1-ST01D-03,INSTALL DOOR FRAMES - FAB1-ST01D,Complete,2025-10-21 08:00,2025-10-21 17:00,2025-10-21 08:00,2025-10-21 17:00
FAB1-ST01D-05,PAINT & PROTECT DOORS & FRAMES - FAB1-ST01D,Not Started,2026-02-16 08:00,2026-02-19 15:00,,
FAB130117Q-03,INSTALL DOOR FRAMES - FAB130117Q,Complete,2025-07-07 08:00,2025-07-07 17:00,2025-07-07 08:00,2025-07-07 17:00
FAB130117Q-04,INSTALL DOOR & HARDWARE - FAB130117Q,Not Started,2025-11-21 08:00,2025-11-27 17:00,,
FAB130117Q-05,PAINT & PROTECT DOORS & FRAMES - FAB130117Q,Not Started,2026-02-16 08:00,2026-02-19 17:00,,
FAB134105D-60,DOOR FRAME HANDED OVER TO SECAI 07/18 - FAB134105D,Complete,2025-07-17 13:00,2025-07-18 12:00,2025-07-17 13:00,2025-07-18 12:00
FAB134105D-03,INSTALL DOOR FRAME BY SECAI - FAB134105D HANDED OVER 07/18,Complete,2025-07-17 13:00,2025-08-07 12:00,2025-07-18 13:00,2025-08-12 08:00
FAB134105D-04,INSTALL DOOR & HARDWARE - FAB134105D,Active,2025-08-12 08:00,2025-08-18 17:00,2025-08-12 08:00,
FAB134105D-05,PAINT & PROTECT DOORS & FRAMES - FAB134105D,Not Started,2026-02-16 08:00,2026-02-19 15:00,,
FAB110404A-03,INSTALL DOOR FRAME BY SECAI HANDED OVER 07/18 - FAB110404A,Complete,2025-07-18 13:00,2025-08-22 12:00,2025-07-18 13:00,2025-09-11 17:00
FAB110404A-04,INSTALL DOOR & HARDWARE - FAB110404A,Active,2025-11-06 08:00,2025-11-12 17:00,2025-11-06 08:00,
FAB110404A-05,PAINT & PROTECT DOORS & FRAMES - FAB110404A,Not Started,2026-02-16 08:00,2026-02-19 15:00,,
FAB110404A-60,DOOR FRAME HANDED OVER TO SECAI ON 07/18 - FAB110404A,Complete,2025-07-17 13:00,2025-07-18 12:00,2025-07-17 13:00,2025-07-18 12:00
FAB110404D-03,INSTALL DOOR FRAME BY SECAI HANDED OVER 07/18 - FAB110404D,Complete,2025-07-18 13:00,2025-08-22 12:00,2025-07-18 13:00,2025-09-11 17:00
FAB110404D-04,INSTALL DOOR & HARDWARE - FAB110404D,Not Started,2025-11-28 08:00,2025-12-04 17:00,,
FAB110404D-05,PAINT & PROTECT DOORS & FRAMES - FAB110404D,Not Started,2026-02-16 08:00,2026-02-19 15:00,,
FAB110404D-60,DOOR FRAME HANDED OVER TO SECAI ON 07/18 - FAB110404D,Complete,2025-07-17 13:00,2025-07-18 12:00,2025-07-17 13:00,2025-07-18 12:00
FAB116104A-100,IMPACT SECAI TEMP POWER PREVENTING FRAME INSTALL- FAB116104A,Complete,2025-06-02 08:00,2025-07-11 17:00,2025-06-02 08:00,2025-08-06 17:00
FAB120507A-100,IMPACT - SECAI RFI 11447 MISSING VERTICAL CLADING STEEL FOR DOOR JAMB - FAB120507A,Complete,2025-07-01 08:00,2025-08-04 17:00,2025-07-01 08:00,2025-11-10 17:00
FAB112158A-03,INSTALL DOOR FRAME BY SECAI - FAB112158A HANDED OVER ON 08/13,Complete,2025-08-26 08:00,2025-09-15 17:00,2025-08-14 08:00,2025-08-22 17:00
FAB112158A-04,INSTALL DOOR & HARDWARE - FAB112158A,Active,2025-09-10 08:00,2025-09-16 17:00,2025-09-10 08:00,
FAB112158A-05,PAINT & PROTECT DOORS & FRAMES - FAB112158A,Not Started,2026-02-16 08:00,2026-02-19 15:00,,
FAB112158A-35,DOOR FRAME HANDED OVER TO SECAI 08/13 - FAB112158A,Complete,2025-08-13 08:00,2025-08-13 17:00,2025-08-13 08:00,2025-08-13 17:00
FAB112158C-03,INSTALL DOOR FRAME BY SECAI - FAB112158C HANDED OVER ON 08/13,Complete,2025-08-26 08:00,2025-09-15 17:00,2025-08-14 08:00,2025-08-20 17:00
FAB112158C-04,INSTALL DOOR & HARDWARE - FAB112158C,Active,2025-10-29 08:00,2025-11-04 17:00,2025-10-29 08:00,
FAB112158C-05,PAINT & PROTECT DOORS & FRAMES - FAB112158C,Not Started,2026-02-16 08:00,2026-02-19 15:00,,
FAB112158C-35,DOOR FRAME HANDED OVER TO SECAI 08/13 - FAB112158C,Complete,2025-08-13 08:00,2025-08-13 17:00,2025-08-13 08:00,2025-08-13 17:00
FAB1-ST19D-04,INSTALL DOOR & HARDWARE - FAB1-ST19D,Not Started,2025-12-12 08:00,2025-12-18 17:00,,
FAB1-ST19D-05,PAINT & PROTECT DOORS & FRAMES - FAB1-ST19D,Not Started,2026-02-16 08:00,2026-02-19 17:00,,
FAB1-ST19D-03,INSTALL DOOR FRAME BY SECAI - FAB1-ST19D,Not Started,2025-11-28 08:00,2025-12-11 17:00,,
FAB1-ST19C-03,INSTALL DOOR FRAMES - FAB1-ST19C,Complete,2025-10-31 08:00,2025-10-31 17:00,2025-10-31 08:00,2025-10-31 17:00
FAB1-ST19D-25,DOOR FRAME HANDED OVER TO SECAI 08/13 - FAB1-ST19D,Complete,2025-08-13 08:00,2025-08-13 17:00,2025-08-13 08:00,2025-08-13 17:00
CN.SWB3.6311,IMPACT - RFI 1789 DOOR OPENING SIZE IN DWGS NOT MATCHING APPROVED SUBMITTAL - N25 - N29 - WASTE DISCHARGE CABINET,Complete,2025-06-23 07:00,2025-07-10 17:00,2025-06-17 07:00,2025-06-25 17:00
CN.SWB3.6321,IMPACT - PATRIOT WORKING OFF OF DRB11 - C&B REFABRICATION OF DOORS - LEAD TIME 8WEEKS - N25 - N29,Complete,2025-06-23 07:00,2025-07-10 17:00,2025-06-27 07:00,2025-07-23 17:00
CN.SWB3.6331,IMPACT - IOCC 1541 SUBMITTED AND APPROVAL FOR REPLACING CABINET DOORS - LEAD TIME 8 WEEKS - N25 - N29,Complete,2025-06-23 07:00,2025-07-10 17:00,2025-07-24 07:00,2025-08-07 11:21
CN.SWB3.6341,IMPACT - IOCC 1541 SECAI REJECTED - HANDOVER DOOR FRAMES TO SECAI - N25 - N29,Complete,2025-06-23 07:00,2025-07-10 17:00,2025-08-07 07:21,2025-08-18 17:00
INT.P1.DH&HW.1330,EXTERIOR OHC DOOR - RFI 10731 - BENT PLATE OVERHANG ON INTERIOR CLADDING - HSS ADDED STEEL,Complete,2023-11-27 07:00,2023-12-16 15:00,2025-05-30 07:00,2025-06-11 11:00
INT.P1.DH&HW.1340,EXTERIOR OHC DOOR - PRICING AND WAITING ON SECAI DIRECTION - HSS ADDED STEEL,Complete,2023-11-27 07:00,2023-12-16 15:00,2025-06-12 07:00,2025-07-14 11:00
INT.P1.DH&HW.1350,EXTERIOR OHC DOOR - SECAI / VELTRI TOOKOVER SCOPE - HSS ADDED STEEL,Active,2023-11-27 07:00,2023-12-16 15:00,2025-07-15 07:00,
INT.DH.2600,IMPACT - SECAI directive to hold up doors until 5/25 - LVL 3- FAB136401A Handed over to SECAI,Complete,2025-01-13 07:00,2025-04-25 17:00,2025-04-15 07:00,2025-05-30 07:00
FAB110301B-03,INSTALL DOOR FRAMES - FAB110301B,Not Started,2025-12-08 08:00,2025-12-09 17:00,,
FAB110301B-05,PAINT & PROTECT DOORS & FRAMES - FAB110301B,Not Started,2026-02-16 08:00,2026-02-17 17:00,,
FAB110508C-03,INSTALL DOOR FRAMES - FAB110508C,Not Started,2025-12-12 08:00,2025-12-15 17:00,,
FAB110508C-05,PAINT & PROTECT DOORS & FRAMES - FAB110508C,Not Started,2026-02-16 08:00,2026-02-17 17:00,,
FAB110114A-03,INSTALL DOOR FRAMES - FAB110114A,Not Started,2025-11-21 08:00,2025-11-24 17:00,,
FAB110114A-05,PAINT & PROTECT DOORS & FRAMES - FAB110114A,Not Started,2026-02-16 08:00,2026-02-17 17:00,,
CN.SWA4.7520,IMPACT - MKM FRAMING & SHEATHING COLD FRAME & INSULATION - GL 19-20 - A LINE - TRESTLE INFILL,Complete,2025-10-27 07:00,2025-11-07 17:00,2025-10-27 07:00,2025-11-05 17:00
CN.AB.AR.8760,IMPACT - SECAI PLACED TOUCHUP ON HOLD (trade damage worry) - SHAFT & DOOR FRONTS - ELEVATOR 01B,Complete,2025-08-25 07:00,2025-09-04 17:00,2025-08-02 07:00,2025-08-12 13:00
FAB112103E-03,INSTALL DOOR FRAMES - FAB112103E,Complete,2025-08-07 08:00,2025-08-07 17:00,2025-08-20 00:00,2025-08-20 17:00
FAB130117A-03,INSTALL DOOR FRAMES - FAB130117A,Complete,2025-08-21 08:00,2025-08-21 17:00,2025-08-21 08:00,2025-08-21 17:00
FAB112156A-04,INSTALL DOOR & HARDWARE - FAB112156A,Active,2025-11-06 08:00,2025-11-12 17:00,2025-11-06 08:00,
FAB130206D-03,INSTALL DOOR FRAMES - FAB130206D,Complete,2025-05-30 08:00,2025-05-30 17:00,2025-05-30 08:00,2025-05-30 17:00
FAB130206D-04,INSTALL DOOR & HARDWARE - FAB130206D,Active,2025-09-25 08:00,2025-10-01 17:00,2025-09-25 08:00,
FAB130206D-05,PAINT & PROTECT DOORS & FRAMES -  FAB130206D,Not Started,2026-02-16 08:00,2026-02-19 15:00,,
FAB134105B-03,INSTALL DOOR FRAMES - FAB134105B,Complete,2025-08-11 13:00,2025-08-12 12:00,2025-08-01 13:00,2025-08-12 12:00
FAB134105B-04,INSTALL DOOR & HARDWARE - FAB134105B,Active,2025-08-15 08:00,2025-08-21 17:00,2025-08-15 08:00,
FAB134105B-05,PAINT & PROTECT DOORS & FRAMES - FAB134105B,Not Started,2026-02-16 08:00,2026-02-19 15:00,,
FAB1-ST05A-01,IMPACT - INSTALL/REWORK DRYWALL FRAMING AROUND DOORS - FAB1-ST05A,Complete,2025-08-07 08:00,2025-08-08 17:00,2025-08-07 08:00,2025-08-08 17:00
FAB1-ST05A-03,INSTALL DOOR FRAMES - FAB1-ST05A,Complete,2025-08-11 08:00,2025-08-11 17:00,2025-08-11 08:00,2025-08-11 17:00
FAB1-ST05A-04,INSTALL DOOR & HARDWARE - FAB1-ST05A,Active,2025-10-17 08:00,2025-10-23 17:00,2025-10-17 08:00,
FAB1-ST05A-05,PAINT & PROTECT DOORS & FRAMES - FAB1-ST05A,Not Started,2026-02-16 08:00,2026-02-19 15:00,,
FAB1-ST18B-01,IMPACT - INSTALL/REWORK DRYWALL FRAMING AROUND DOORS - FAB1-ST18B,Complete,2025-08-01 08:00,2025-08-04 17:00,2025-08-01 08:00,2025-08-04 17:00
FAB1-ST18B-03,INSTALL DOOR FRAMES - FAB1-ST18B,Complete,2025-08-04 08:00,2025-08-04 17:00,2025-08-04 08:00,2025-08-04 17:00
FAB1-ST18B-04,INSTALL DOOR & HARDWARE - FAB1-ST18B,Active,2025-11-07 08:00,2025-11-13 17:00,2025-11-07 08:00,
FAB1-ST18B-05,PAINT & PROTECT DOORS & FRAMES - FAB1-ST18B,Not Started,2026-02-16 08:00,2026-02-19 15:00,,
FAB110111B-40,IMPACT - DOOR FRAME PROCUREMENT- RE-ORDERED - FAB110111B,Complete,2025-08-18 08:00,2025-09-25 17:00,2025-08-18 08:00,2025-10-10 17:00
FAB110111B-02A,NEW INSTALL DOOR FRAMES - FAB110111B,Complete,2025-10-14 08:00,2025-10-14 17:00,2025-10-14 08:00,2025-10-14 17:00
FAB110206A-31,IMPACT - SECAI MEP CORDS IMPEDING DOOR INSTALLATION - FAB110206A,Complete,2025-07-25 08:00,2025-07-30 15:00,2025-07-24 08:00,2025-10-02 17:00
FAB110308A-100,IMPACT - FRAME CANNOT BE COATED DUE SECAI TEMPORARY AC DUCTS AND ELEC CORDS RUNNING TROUGH OPENING - FAB110308A,Complete,2025-08-15 08:00,2025-08-19 17:00,2025-08-15 08:00,2025-10-03 17:00
FAB110314B-65,IMPACT - SECAI PANEL CEILING ANGLE PREVENTING WALL OPENING FOR DOOR FRAME INSTALLATION - FAB110314B,Complete,2025-08-29 08:00,2025-09-18 17:00,2025-08-29 08:00,2025-09-15 17:00
FAB110304E-65,IMPACT - SECAI SCAFFOLD IMPEDING DOOR INSTALLATION - FAB110304E,Active,2025-08-25 08:00,2025-09-12 17:00,2025-08-25 08:00,
FAB110403A/B/D-80,"DOOR FAMES, HARDWARE AND DOORS HANDED OVER TO SECAI - FAB110403A/B/D",Complete,2025-08-22 08:00,2025-08-22 17:00,2025-08-22 08:00,2025-08-22 17:00
FAB110304B-65,IMPACT - DOOR FRAME PROCUREMENT- RE-ORDERED - FAB110304B,Complete,2025-08-18 08:00,2025-09-25 17:00,2025-08-18 08:00,2025-10-10 17:00
FAB110401C-55,IMPACT - SECAI FRAME INSTALLED BACKWARDS-NEEDS TO BE FIXED - FAB110401C,Complete,2025-08-01 08:00,2025-08-14 17:00,2025-08-18 08:00,2025-09-19 17:00
FAB110404B/E-80,"DOOR FAMES, HARDWARE AND DOORS HANDED OVER TO SECAI - FAB110404B/E",Complete,2025-08-22 08:00,2025-08-22 17:00,2025-08-22 08:00,2025-08-22 17:00
FAB110409B/E-80,"DOOR FAMES, HARDWARE AND DOORS HANDED OVER TO SECAI - FAB110409B/E",Complete,2025-08-22 08:00,2025-08-22 17:00,2025-08-22 08:00,2025-08-22 17:00
FAB110408B/D-80,"DOOR FAMES, HARDWARE AND DOORS HANDED OVER TO SECAI - FAB110408B/D",Complete,2025-08-22 08:00,2025-08-22 17:00,2025-08-22 08:00,2025-08-22 17:00
FAB110409C-50,RE-ALIGN DOOR FRAME BY SECAI - FAB110409C (INSTALLED WRONGLY),Complete,2025-08-12 08:00,2025-08-25 17:00,2025-08-12 08:00,2025-11-04 17:00
FAB110511B/C-90,"DOOR FAMES, HARDWARE AND DOORS HANDED OVER TO SECAI - FAB110511B/C",Complete,2025-08-22 08:00,2025-08-22 17:00,2025-08-22 08:00,2025-08-22 17:00
FAB110511A-23,IMPACT - SECAI NEEDS TO RE-ALING DOOR FRAMES - FAB110511A,Complete,2025-08-12 08:00,2025-08-25 17:00,2025-08-12 08:00,2025-11-03 17:00
FAB110511A-33,IMPACT - SECAI BARRICADE AND SCAFFOLD INTERFERING WITH DOOR INSTALLATION - FAB110511A,Complete,2025-08-18 08:00,2025-08-29 17:00,2025-08-18 08:00,2025-11-03 17:00
FAB110502B-60,IMPACT - SECAI (AXIOS) SCAFFOLD AND ELECTRICAL CORDS BLOCKING DOOR INSTALLATION - FAB110502B,Complete,2025-08-18 08:00,2025-08-29 17:00,2025-08-18 08:00,2025-10-10 17:00
FAB110502A-60,IMPACT - DOOR FRAME HIT BY A SCISSOR LIFT-REPAIR IS REQUIRED - FAB110502A,Active,2025-08-18 08:00,2025-08-29 17:00,2025-08-18 08:00,
FAB112155A-45,IMPACT - SECAI SCAFFOLD BLOKING DOOR INSTALLATION - FAB112155A,Complete,2025-08-18 08:00,2025-08-29 17:00,2025-08-18 08:00,2025-09-23 08:00
FAB112203A-60,IMPACT - SECAI PIPE HANGING IN DOOR SWING PATH PREVENTING DOOR INSTALLATION - FAB112203A,Complete,2025-08-18 08:00,2025-08-29 17:00,2025-08-18 08:00,2025-10-02 17:00
CN.BB51.ST.3622,GDA - RE-INSTALL EXPANSION JOINT- LEVEL 4 - DUE TO SECAI  ADJUSTMENT OF FRAME AND SHEATHING - GL 33 - STAIR 18 - C-D,Complete,2025-08-20 07:00,2025-08-22 17:00,2025-08-22 07:00,2025-10-07 17:00
FAB114107D-01,IMPACT - INSTALL/REWORK DRYWALL FRAMING AROUND DOORS - FAB114107D,Complete,2025-10-10 08:00,2025-10-13 17:00,2025-10-10 08:00,2025-10-13 17:00
FAB114107D-03,INSTALL DOOR FRAMES - FAB114107D,Complete,2025-10-14 08:00,2025-10-14 17:00,2025-10-14 08:00,2025-10-14 17:00
FAB114107D-04,INSTALL DOOR & HARDWARE - FAB114107D,Not Started,2025-11-21 08:00,2025-11-27 17:00,,
FAB114107D-05,PAINT & PROTECT DOORS & FRAMES - FAB114107D,Not Started,2026-02-16 08:00,2026-02-19 15:00,,
FAB114107D-60,IMPACT - Clean Room Panel needs to be removed to install DOOR FRAMES - FAB114107D,Complete,2025-08-25 08:00,2025-08-29 17:00,2025-08-25 08:00,2025-10-10 08:00
FAB114154B-60,IMPACT - SECAI SCAFFOLD IMPEDING DOOR INSTALLATION - FAB114154B,Complete,2025-08-25 08:00,2025-08-29 17:00,2025-08-25 08:00,2025-10-20 17:00
FAB114155A-60,IMPACT - SECAI SCAFFOLD IMPEDING DOOR INSTALLATION - FAB114155A,Complete,2025-08-25 08:00,2025-08-29 17:00,2025-08-25 08:00,2025-09-11 17:00
FAB114155B-60,IMPACT - SECAI SCAFFOLD IMPEDING DOOR INSTALLATION - FAB114155B,Complete,2025-08-25 08:00,2025-08-29 17:00,2025-08-25 08:00,2025-10-10 17:00
FAB114402A-60,IMPACT - SECAI SCAFFOLD IMPEDING DOOR INSTALLATION - FAB114402A,Complete,2025-08-22 08:00,2025-08-28 17:00,2025-08-22 08:00,2025-10-28 08:00
FAB114402B-60,IMPACT - SECAI SCAFFOLD IMPEDING DOOR INSTALLATION - FAB1144026,Complete,2025-08-22 08:00,2025-08-28 17:00,2025-08-22 08:00,2025-09-24 08:00
FAB114403A-60,IMPACT - SECAI MEP CONDUIT AND MODULE BEAM INDOOR SWING PATH IMPEDING DOOR INSTALLATION - FAB114402A,Complete,2025-08-22 08:00,2025-08-28 17:00,2025-08-22 08:00,2025-11-05 08:00
FAB114403B-60,IMPACT - SECAI SCAFFOLD IMPEDING DOOR INSTALLATION - FAB114403B,Complete,2025-08-22 08:00,2025-08-28 17:00,2025-08-22 08:00,2025-09-24 08:00
FAB116520A-60,IMPACT - SECAI SCAFFOLD IMPEDING FRAME AND DOOR INSTALLATION - FAB116520A,Complete,2025-08-25 08:00,2025-08-29 17:00,2025-08-25 08:00,2025-10-10 08:00
FAB116112A-60,IMPACT - SECAI SCAFFOLD AND MEP CORDS IMPEDING DOOR INSTALLATION - FAB116112A,Complete,2025-08-22 08:00,2025-08-28 17:00,2025-08-22 08:00,2025-09-26 08:00
FAB116109A-60,IMPACT - SECAI MEP CORDS IMPEDING DOOR INSTALLATION - FAB116109A,Complete,2025-08-22 08:00,2025-08-28 17:00,2025-08-22 08:00,2025-10-13 08:00
FAB116202D-60,IMPACT - SECAI SCAFFOLD IMPEDING DOOR INSTALLATION - FAB116202D,Complete,2025-08-25 08:00,2025-08-29 17:00,2025-08-25 08:00,2025-10-03 08:00
FAB116414B-60,IMPACT - SECAI (AXIOS) SCAFFOLD IMPEDING DOOR INSTALLATION - FAB116414B,Complete,2025-08-25 08:00,2025-08-29 17:00,2025-08-25 08:00,2025-11-11 08:00
FAB116414C-60,IMPACT - SECAI SCAFFOLD IMPEDING DOOR INSTALLATION - FAB116414C,Complete,2025-08-25 08:00,2025-08-29 17:00,2025-08-25 08:00,2025-09-24 08:00
FAB116412B-60,IMPACT - SECAI SCAFFOLD IMPEDING DOOR INSTALLATION - FAB116412B,Complete,2025-08-25 08:00,2025-08-29 17:00,2025-08-25 08:00,2025-10-03 08:00
FAB116406A-60,IMPACT - SECAI SCAFFOLD IMPEDING DOOR INSTALLATION - FAB116406A,Active,2025-08-25 08:00,2025-08-29 17:00,2025-08-25 08:00,
FAB110502A-70,IMPACT - SECAI (AXIOS) SCAFFOLD AND ELECTRICAL CORDS BLOCKING DOOR INSTALLATION - FAB110502A,Active,2025-08-18 08:00,2025-08-29 17:00,2025-08-18 08:00,
FAB110305A-60,IMPACT - DOOR FRAME REMOVED DURING WALL REMEDIATION (RE-ORDERED) - FAB110305A,Complete,2025-08-20 08:00,2025-09-30 17:00,2025-08-20 08:00,2025-10-10 08:00
FAB116301C-70,IMPACT - DOOR FRAME REMOVED DURING WALL REMEDIATION (RE-ORDERED) - FAB116301C,Complete,2025-08-20 08:00,2025-09-30 17:00,2025-08-20 08:00,2025-10-14 17:00
FAB116301C-03,INSTALL DOOR FRAMES - FAB116301C,Complete,2025-10-15 08:00,2025-10-15 17:00,2025-10-15 08:00,2025-10-15 17:00
FAB116307A-60,IMPACT - DOOR FRAME REMOVED DURING WALL REMEDIATION (RE-ORDERED) - FAB116307A,Complete,2025-08-20 08:00,2025-09-30 17:00,2025-08-20 08:00,2025-10-10 17:00
FAB116520A-70,IMPACT - DOOR FRAME REMOVED DURING WALL REMEDIATION (RE-ORDERED) - FAB116520A,Complete,2025-08-20 08:00,2025-09-30 17:00,2025-08-20 08:00,2025-10-10 17:00
FAB124102A-60,IMPACT - DOOR FRAME REMOVED DURING WALL REMEDIATION (RE-ORDERED) - FAB124102A,Complete,2025-08-20 08:00,2025-09-30 17:00,2025-08-20 08:00,2025-10-10 17:00
FAB116308E-60,IMPACT - SECAI ELECTRIC CORD RUNNING TROUGH OPENING IMPEDING DOOR INSTALLATION - FAB116308E,Active,2025-08-25 08:00,2025-08-29 17:00,2025-08-25 08:00,
FAB116407B-60,IMPACT - SECAI MEP CORD IMPEDING DOOR INSTALLATION - FAB116407B,Complete,2025-08-25 08:00,2025-08-29 17:00,2025-08-25 08:00,2025-10-10 08:00
FAB116407A-60,IMPACT - SECAI MEP CORD IMPEDING DOOR INSTALLATION - FAB116407A,Complete,2025-08-25 08:00,2025-08-29 17:00,2025-08-25 08:00,2025-09-23 08:00
FAB116519A-60,IMPACT - SECAI MEP CORDS IMPEDING DOOR INSTALLATION - FAB116519A,Complete,2025-08-25 08:00,2025-08-29 17:00,2025-08-25 08:00,2025-11-03 17:00
FAB116518A-60,IMPACT - SECAI SCAFFOLD IMPEDING DOOR INSTALLATION - FAB116518A,Complete,2025-08-25 08:00,2025-08-29 17:00,2025-08-25 08:00,2025-09-23 08:00
FAB116513H-60,IMPACT - SECAI SCAFFOLD AND AC DUCTS IMPEDING DOOR INSTALLATION - FAB116513H,Active,2025-08-25 08:00,2025-08-29 17:00,2025-08-25 08:00,
FAB116514A-60,IMPACT - SECAI LIGHT SWITCH LOCATED WITHIN OPENING IMPEDING DOOR FRAME INSTALLATION - FAB116514A,Active,2025-08-25 08:00,2025-08-29 17:00,2025-08-25 08:00,
FAB120103A-60,IMPACT - SECAI A/C TEMP DUCTS AND ELECTRICAL CORDS IMPEDING DOOR FRAME INSTALLATION - FAB120103A,Complete,2025-08-25 08:00,2025-08-29 17:00,2025-08-25 08:00,2025-09-24 17:00
FAB120108B-60,IMPACT - SECAI SCAFFOLD IMPEDING DOOR INSTALLATION - FAB120108B,Complete,2025-08-25 08:00,2025-08-29 17:00,2025-08-25 08:00,2025-10-24 08:00
FAB120401F-60,IMPACT - SECAI SCAFFOLD BLOCKING TRANSPORTATION OF DOOR FRAMES - FAB120401F - DOOR FRAME HANDED OVER TO SECAI ON 10/14,Complete,2025-08-25 08:00,2025-08-29 17:00,2025-08-25 08:00,2025-10-14 17:00
FAB120113A-60,IMPACT - SECAI SCAFFOLD BLOCKING TRANSPORTATION OF DOOR FRAMES - FAB120113A,Active,2025-08-25 08:00,2025-08-29 17:00,2025-08-25 08:00,
FAB120108D-60,IMPACT - SECAI SCAFFOLD BLOCKING TRANSPORTATION OF DOOR FRAMES - FAB120108D - DOOR FRAME HANDED OVER TO SECAI ON 10/03,Complete,2025-08-25 08:00,2025-08-29 17:00,2025-08-25 08:00,2025-10-01 08:00
FAB120315A-60,IMPACT - SECAI TEMP VENT RUNNING TROUGH OPENING IMPEDING DOOR INSTALLATION - FAB120315A,Active,2025-08-25 08:00,2025-08-29 17:00,2025-08-25 08:00,
FAB120314B-60,IMPACT - SECAI TEMP VENT RUNNING THROUGH OPENING IMPEDING DOOR INSTALLATION - FAB120314B,Active,2025-08-25 08:00,2025-08-29 17:00,2025-08-25 08:00,
FAB120314A-60,IMPACT - SECAI TEMP VENT RUNNING THROUGH OPENING IMPEDING DOOR INSTALLATION - FAB120314A,Active,2025-08-25 08:00,2025-08-29 17:00,2025-08-25 08:00,
FAB120507A-60,IMPACT - SECAI SCAFFOLD IMPEDING DOOR FRAME INSTALLATION- FAB120507A,Complete,2025-08-25 08:00,2025-08-25 08:00,2025-08-25 08:00,2025-10-27 17:00
FAB120303F-60,IMPACT - SECAI SCAFFOLD IMPEDING DOOR FRAME INSTALLATION - FAB120303F,Complete,2025-08-25 08:00,2025-08-29 17:00,2025-08-25 08:00,2025-11-05 08:00
FAB120501A-60,IMPACT - SECAI TEMP AC DUCTS AND ELEC CONDUITS IMPEDING DOOR INSTALLATION- FAB120501A,Active,2025-08-25 08:00,2025-08-29 17:00,2025-08-25 08:00,
FAB120503D-60,IMPACT - SECAI SCAFFOLD BLOCKING OPENING IMPEDING FRAME INSTALLATION - FAB120503D,Active,2025-08-25 08:00,2025-08-29 17:00,2025-08-25 08:00,
FAB120503B-60,IMPACT - SECAI SCAFFOLD BLOCKING DOOR FRAME TRANSPORTATION - FAB120503,Active,2025-08-25 08:00,2025-08-29 17:00,2025-08-25 08:00,
FAB120505A-60,IMPACT - SECAI SCAFFOLD BLOCKING DOOR FRAME TRANSPORTATION - FAB120505A,Active,2025-08-25 08:00,2025-08-29 17:00,2025-08-25 08:00,
FAB126402A-60,IMPACT - SECAI SCAFFOLDS IMPEDING DOOR INSTALLATION - FAB126402A,Complete,2025-08-25 08:00,2025-08-29 17:00,2025-08-25 08:00,2025-11-12 08:00
FAB126401A-60,IMPACT - SECAI SCAFFOLDS IMPEDING DOOR INSTALLATION - FAB126401A,Complete,2025-08-25 08:00,2025-08-29 17:00,2025-08-25 08:00,2025-11-12 08:00
FAB126110A-60,IMPACT - SECAI SCAFFOLDS IMPEDING DOOR INSTALLATION - FAB126110A,Complete,2025-08-25 08:00,2025-08-29 17:00,2025-08-25 08:00,2025-11-12 08:00
FAB1-ST19B-60,IMPACT - SECAI SCAFFOLDS IMPEDING DOOR FRAME INSTALLATION - FAB1-ST19B,Complete,2025-08-25 08:00,2025-08-29 17:00,2025-08-25 08:00,2025-08-29 08:00
FAB126509A-60,IMPACT - SECAI SCAFFOLDS IMPEDING DOOR INSTALLATION - FAB126509A,Complete,2025-08-25 08:00,2025-08-29 17:00,2025-08-25 08:00,2025-09-26 08:00
FAB126507B-60,IMPACT - SECAI TEMP VENT IMPEDING FRAME AND DOOR INSTALLATION - FAB126507B,Complete,2025-08-25 08:00,2025-08-29 17:00,2025-08-25 08:00,2025-11-17 08:00
FAB130402B-60,IMPACT - SECAI SCAFFOLD AND TEMP VENT IMPEDING DOOR INSTALLATION- FAB130402B,Active,2025-08-25 08:00,2025-08-29 17:00,2025-08-25 08:00,
FAB136302E-60,IMPACT - SECAI SCAFFOLD IMPEDING DOOR INSTALLATION - FAB136302E,Complete,2025-08-25 08:00,2025-08-29 17:00,2025-08-25 08:00,2025-11-17 17:00
FAB136311A-60,IMPACT - SECAI TEMP VENT IMPEDING DOOR FRAME INSTALLATION - FAB136311A,Complete,2025-08-25 08:00,2025-08-29 17:00,2025-08-25 08:00,2025-10-17 08:00
FAB136311BB-60,IMPACT - SECAI TEMP VENT IMPEDING DOOR FRAME INSTALLATION - FAB136311B,Complete,2025-08-25 08:00,2025-08-29 17:00,2025-08-25 08:00,2025-09-26 08:00
FAB13K6401A-04,INSTALL DOOR & HARDWARE - FAB13K6401A,Not Started,2025-12-01 08:00,2025-12-05 17:00,,
FAB13K6401A-05,PAINT & PROTECT DOORS & FRAMES - FAB13K6401A,Not Started,2026-02-16 08:00,2026-02-19 15:00,,
FAB13K6401A-03,INSTALL DOOR FRAMES - FAB13K6401A,Not Started,2025-11-28 08:00,2025-11-28 17:00,,
FAB13K6402A-04,INSTALL DOOR & HARDWARE - FAB13K6402A,Not Started,2025-12-01 08:00,2025-12-05 17:00,,
FAB13K6402A-05,PAINT & PROTECT DOORS & FRAMES - FAB13K6402A,Not Started,2026-02-16 08:00,2026-02-19 15:00,,
FAB13K6402A-03,INSTALL DOOR FRAMES - FAB13K6402A,Not Started,2025-11-28 08:00,2025-11-28 17:00,,
FAB13K6401A-60,IMPACT - SECAI SCAFFOLD IMPEDING FRAME AND DOOR INSTALLATION - FAB13K6401A,Active,2025-05-23 08:00,2025-05-29 17:00,2025-05-23 08:00,
FAB13K6401B-04,INSTALL DOOR & HARDWARE - FAB13K6401B,Not Started,2025-12-01 08:00,2025-12-05 17:00,,
FAB13K6401B-05,PAINT & PROTECT DOORS & FRAMES - FAB13K6401B,Not Started,2026-02-16 08:00,2026-02-19 15:00,,
FAB13K6401B-03,INSTALL DOOR FRAMES - FAB13K6401B,Not Started,2025-11-28 08:00,2025-11-28 17:00,,
FAB13K6401B-60,IMPACT - SECAI SCAFFOLD IMPEDING FRAME AND DOOR INSTALLATION - FAB13K6401B,Active,2025-05-23 08:00,2025-05-29 17:00,2025-05-23 08:00,
FAB13K6402A-60,IMPACT - SECAI SCAFFOLD IMPEDING FRAME AND DOOR INSTALLATION - FAB13K6402A,Active,2025-05-23 08:00,2025-05-29 17:00,2025-05-23 08:00,
FAB1-ST19D-60,IMPACT - SECAI SCAFFOLD IMPEDING FRAME AND DOOR INSTALLATION - FAB1-ST19D,Active,2025-05-23 08:00,2025-05-29 17:00,2025-05-23 08:00,
FAB110110B-25,DOOR FRAME HANDED OVER TO SECAI ON 07/18 - FAB110110B,Complete,2025-07-18 08:00,2025-07-18 17:00,2025-07-18 08:00,2025-07-18 17:00
FAB112156A-03,INSTALL DOOR FRAME BY SECAI - FAB112156A,Complete,2025-08-14 08:00,2025-08-14 17:00,2025-08-14 08:00,2025-08-20 17:00
FAB112156A-25,DOOR FRAME HANDED OVER TO SECAI 08/14 - FAB112156A,Complete,2025-08-05 08:00,2025-08-13 17:00,2025-08-14 08:00,2025-08-14 16:00
FAB116111A-25,DOOR FRAME HANDED OVER TO SECAI ON 08/29 - FAB116111A,Complete,2025-08-29 08:00,2025-08-29 17:00,2025-08-29 08:00,2025-08-29 08:00
FAB116116A-25,DOOR FRAME HANDED OVER TO SECAI ON 08/20 - FAB116116A,Complete,2025-08-20 08:00,2025-08-20 17:00,2025-08-20 08:00,2025-08-20 17:00
FAB116302A-25,DOOR FRAME HANDED OVER TO SECAI ON 08/20 - FAB116302A,Complete,2025-10-15 08:00,2025-10-15 17:00,2025-08-20 08:00,2025-08-20 17:00
FAB116305C-03,INSTALL DOOR FRAME BY SECAI - FAB116305C HANDED OVER ON 08/20,Complete,2025-08-20 08:00,2025-08-20 17:00,2025-08-20 08:00,2025-08-25 17:00
FAB116305C-25,DOOR FRAME HANDED OVER TO SECAI - FAB116305C,Complete,2025-08-20 08:00,2025-08-20 17:00,2025-08-20 08:00,2025-08-20 17:00
FAB116512C-25,DOOR FRAME HANDED OVER TO SECAI ON 08/20 - FAB116512C,Complete,2025-08-20 08:00,2025-08-20 17:00,2025-08-20 08:00,2025-08-20 17:00
FAB116513D-25,DOOR FRAME HANDED OVER TO SECAI ON 08/20 - FAB116513D,Complete,2025-08-20 08:00,2025-08-20 17:00,2025-08-20 08:00,2025-08-20 17:00
FAB116513F-25,DOOR FRAME HANDED OVER TO SECAI ON 08/20 - FAB116513F,Complete,2025-08-20 08:00,2025-08-20 17:00,2025-08-20 08:00,2025-08-20 17:00
FAB116522A-04,INSTALL DOOR & HARDWARE - FAB116522A,Active,2025-10-03 08:00,2025-10-09 17:00,2025-10-03 08:00,
FAB116522A-05,PAINT & PROTECT DOORS & FRAMES - FAB116522A,Not Started,2026-02-16 08:00,2026-02-19 17:00,,
FAB116522A-03,INSTALL DOOR FRAME BY SECAI - FAB116522A HANDED OVER TO SECAI ON 08/20,Complete,2025-08-20 08:00,2025-08-20 17:00,2025-08-20 08:00,2025-09-05 17:00
FAB116522A-25,DOOR FRAME HANDED OVER TO SECAI ON 08/20- FAB116522A,Complete,2025-08-20 08:00,2025-08-20 17:00,2025-08-20 08:00,2025-08-20 17:00
FAB120113A-25,DOOR FRAME HANDED OVER TO SECAI ON 09/05 - FAB120113A,Complete,2025-09-05 08:00,2025-09-05 17:00,2025-09-05 08:00,2025-09-05 17:00
FAB120303F-25,DOOR FRAME HANDED OVER TO SECAI ON 08/29 - FAB120303F,Complete,2025-08-29 08:00,2025-08-29 17:00,2025-08-29 08:00,2025-08-29 17:00
FAB120401B-03,INSTALL DOOR FRAME BY SECAI - FAB120401B HANDED OVER ON 08/29,Active,2025-08-29 10:00,2025-09-01 10:00,2025-08-29 10:00,
FAB120401B-25,DOOR FRAME HANDED OVER TO SECAI ON 08/29 - FAB120401B,Complete,2025-08-29 10:00,2025-09-01 10:00,2025-08-29 10:00,2025-08-29 10:00
FAB120503B-70,DOOR FRAME HANDED OVER TO SECAI ON 08/29 - FAB120503B,Complete,2025-08-29 08:00,2025-08-29 17:00,2025-08-29 08:00,2025-08-29 17:00
FAB120503D-70,DOOR FRAME HANDED OVER TO SECAI ON 08/29 - FAB120503D,Complete,2025-08-29 08:00,2025-08-29 17:00,2025-08-29 08:00,2025-08-29 17:00
FAB122153A-03,INSTALL DOOR FRAMES - FAB122153A HANDED OVER ON 08/29,Complete,2025-08-29 08:00,2025-08-29 17:00,2025-08-29 08:00,2025-11-13 17:00
FAB122153A-04,INSTALL DOOR & HARDWARE - FAB122153A,Active,2025-11-14 08:00,2025-11-20 17:00,2025-11-14 08:00,
FAB122153A-05,PAINT & PROTECT DOORS & FRAMES - FAB122153A,Not Started,2026-02-16 08:00,2026-02-19 15:00,,
FAB122153A-25,DOOR FRAME HANDED OVER TO SECAI ON 08/29 - FAB122153A,Complete,2025-08-29 08:00,2025-08-29 17:00,2025-08-29 08:00,2025-08-29 17:00
FAB122155A-03,INSTALL DOOR FRAMES - FAB122155A HANDED OVER ON 08/08,Complete,2025-08-08 08:00,2025-08-08 17:00,2025-08-08 08:00,2025-10-27 08:00
FAB122155A-04,INSTALL DOOR & HARDWARE - FAB122155A,Not Started,2025-11-21 08:00,2025-11-27 17:00,,
FAB122155A-05,PAINT & PROTECT DOORS & FRAMES - FAB122155A,Not Started,2026-02-16 08:00,2026-02-19 15:00,,
FAB122155A-25,DOOR FRAME HANDED OVER TO SECAI ON 08/08 - FAB122155A,Complete,2025-08-08 08:00,2025-08-08 17:00,2025-08-08 08:00,2025-08-08 17:00
FAB122156A-03,INSTALL DOOR FRAMES - FAB122156A HANDED OVER ON 08/08,Complete,2025-08-08 08:00,2025-08-08 17:00,2025-08-08 08:00,2025-08-29 17:00
FAB122156A-04,INSTALL DOOR & HARDWARE - FAB122156A,Not Started,2025-11-21 08:00,2025-11-27 17:00,,
FAB122156A-05,PAINT & PROTECT DOORS & FRAMES - FAB122156A,Not Started,2026-02-16 08:00,2026-02-19 15:00,,
FAB122156A-25,DOOR FRAME HANDED OVER TO SECAI ON 08/08 - FAB122156A,Complete,2025-08-08 08:00,2025-08-08 17:00,2025-08-08 08:00,2025-08-08 17:00
FAB122157B-03,INSTALL DOOR FRAMES - FAB122157B HANDED OVER ON 06/27,Complete,2025-08-29 08:00,2025-08-29 17:00,2025-06-27 08:00,2025-11-13 17:00
FAB122157B-04,INSTALL DOOR & HARDWARE - FAB122157B,Active,2025-11-14 08:00,2025-11-20 17:00,2025-11-14 08:00,
FAB122157B-05,PAINT & PROTECT DOORS & FRAMES - FAB122157B,Not Started,2026-02-16 08:00,2026-02-19 15:00,,
FAB122157B-25,DOOR FRAME HANDED OVER TO SECAI ON 06/27 - FAB122157B,Complete,2025-06-27 08:00,2025-06-27 17:00,2025-06-27 08:00,2025-06-27 17:00
FAB126107A-25,DOOR FRAME HANDED OVER TO SECAI ON 08/29 - FAB126107A,Complete,2025-08-29 08:00,2025-08-29 17:00,2025-08-29 08:00,2025-08-29 17:00
FAB126506E-25,DOOR FRAME HANDED OVER TO SECAI ON 08/29 - FAB126506E,Complete,2025-08-29 08:00,2025-08-29 17:00,2025-08-29 08:00,2025-08-29 17:00
FAB134105B-6,DOOR FRAME HANDED OVER TO SECAI ON 08/01 - FAB134105B,Complete,2025-08-01 13:00,2025-08-04 12:00,2025-07-31 13:00,2025-08-01 12:00
FAB1-ST01C-03,INSTALL DOOR FRAMES - FAB1-ST01C,Complete,2025-05-29 08:00,2025-05-29 17:00,2025-05-29 08:00,2025-05-29 17:00
FAB1-ST01C-04,INSTALL DOOR & HARDWARE - FAB1-ST01C,Active,2025-11-11 08:00,2025-11-17 17:00,2025-11-11 08:00,
FAB1-ST01C-05,PAINT & PROTECT DOORS & FRAMES - FAB1-ST01C,Not Started,2026-02-16 08:00,2026-02-20 17:00,,
FAB1-ST18A-03,INSTALL DOOR FRAMES - FAB1-ST18A,Complete,2025-09-09 08:00,2025-09-09 17:00,2025-09-09 08:00,2025-09-09 17:00
FAB1-ST18A-04,INSTALL DOOR & HARDWARE - FAB1-ST18A,Active,2025-10-28 08:00,2025-11-03 17:00,2025-10-28 08:00,
FAB1-ST18A-05,PAINT & PROTECT DOORS & FRAMES - FAB1-ST18A,Not Started,2026-02-16 08:00,2026-02-20 17:00,,
FAB1-ST18C-03,INSTALL DOOR FRAMES - FAB1-ST18C,Not Started,2025-11-21 08:00,2025-11-21 17:00,,
FAB1-ST18C-04,INSTALL DOOR & HARDWARE - FAB1-ST18C,Not Started,2025-11-24 08:00,2025-11-28 17:00,,
FAB1-ST18C-05,PAINT & PROTECT DOORS & FRAMES - FAB1-ST18C,Not Started,2026-02-16 08:00,2026-02-20 17:00,,
FAB1-ST19B-25,DOOR FRAME HANDED OVER TO SECAI ON 08/29 - FAB1-ST19B,Complete,2025-08-29 08:00,2025-08-29 17:00,2025-08-29 08:00,2025-08-29 17:00
FAB1-ST20A-25,DOOR FRAME HANDED OVER TO SECAI ON 09/02 - FAB1-ST20A,Complete,2025-09-02 08:00,2025-09-02 17:00,2025-09-02 08:00,2025-09-02 17:00
FAB1-ST22A-03,INSTALL DOOR FRAME BY SECAI - FAB1-ST22A HANDED OVER TO SECAI ON 08/20,Complete,2025-08-20 08:00,2025-08-20 17:00,2025-08-20 08:00,2025-11-06 08:00
FAB1-ST22A-04,INSTALL DOOR & HARDWARE - FAB1-ST22A,Active,2025-11-07 08:00,2025-11-13 17:00,2025-11-07 08:00,
FAB1-ST22A-05,PAINT & PROTECT DOORS & FRAMES - FAB1-ST22A,Not Started,2026-02-16 08:00,2026-02-19 17:00,,
FAB1-ST22A-25,DOOR FRAME HANDED OVER TO SECAI ON 08/20 - FAB1-ST22A,Complete,2025-08-20 08:00,2025-08-20 17:00,2025-08-20 08:00,2025-08-20 17:00
FAB136302C-21,DOOR FRAME HANDED OVER TO SECAI ON 08/29 - FAB136302C,Complete,2025-08-29 08:00,2025-08-29 17:00,2025-08-29 08:00,2025-08-29 17:00
FAB126506B-6,DOOR FRAME HANDED OVER TO SECAI ON 08/29 - FAB126506B,Complete,2025-08-29 08:00,2025-08-29 17:00,2025-08-29 08:00,2025-08-29 17:00
FAB126502C-40,DOOR FRAME HANDED OVER TO SECAI ON 08/29 - FAB126502C,Complete,2025-08-29 08:00,2025-08-29 17:00,2025-08-29 08:00,2025-08-29 17:00
FAB136302A-40,DOOR FRAME HANDED OVER TO SECAI ON 08/29 - FAB136302A,Complete,2025-08-29 08:00,2025-08-29 17:00,2025-08-29 08:00,2025-08-29 17:00
FAB136302G-40,DOOR FRAME HANDED OVER TO SECAI ON 08/29 - FAB136302G,Complete,2025-08-29 08:00,2025-08-29 17:00,2025-08-29 08:00,2025-08-29 17:00
FAB1-ST05B-01,IMPACT - INSTALL/REWORK DRYWALL FRAMING AROUND DOORS - FAB1-ST05B,Complete,2025-09-11 08:00,2025-09-12 17:00,2025-09-11 08:00,2025-09-12 17:00
FAB1-ST05B-03,INSTALL DOOR FRAMES - FAB1-ST05B,Complete,2025-09-12 08:00,2025-09-12 17:00,2025-09-12 08:00,2025-09-12 17:00
FAB1-ST05B-04,INSTALL DOOR & HARDWARE - FAB1-ST05B,Active,2025-11-05 08:00,2025-11-11 17:00,2025-11-05 08:00,
FAB1-ST05B-05,PAINT & PROTECT DOORS & FRAMES - FAB1-ST05B,Not Started,2026-02-16 08:00,2026-02-19 15:00,,
FAB1-ST05C-01,IMPACT - INSTALL/REWORK DRYWALL FRAMING AROUND DOORS - FAB1-ST05C,Complete,2025-09-09 08:00,2025-09-10 17:00,2025-09-09 08:00,2025-09-10 17:00
FAB1-ST05C-03,INSTALL DOOR FRAMES - FAB1-ST05C,Complete,2025-09-10 08:00,2025-09-10 17:00,2025-09-10 08:00,2025-09-10 17:00
FAB1-ST05C-04,INSTALL DOOR & HARDWARE - FAB1-ST05C,Not Started,2025-11-21 08:00,2025-11-27 17:00,,
FAB1-ST05C-05,PAINT & PROTECT DOORS & FRAMES - FAB1-ST05C,Not Started,2026-02-16 08:00,2026-02-19 15:00,,
FAB1-ST05D-01,IMPACT - INSTALL/REWORK DRYWALL FRAMING AROUND DOORS - FAB1-ST05D,Complete,2025-09-15 08:00,2025-09-16 17:00,2025-09-15 08:00,2025-09-16 17:00
FAB1-ST05D-03,INSTALL DOOR FRAMES - FAB1-ST05DD,Complete,2025-09-16 08:00,2025-09-16 17:00,2025-09-16 08:00,2025-09-16 17:00
FAB1-ST05D-04,INSTALL DOOR & HARDWARE - FAB1-ST05D,Not Started,2025-11-21 08:00,2025-11-27 17:00,,
FAB1-ST05D-05,PAINT & PROTECT DOORS & FRAMES - FAB1-ST05D,Not Started,2026-02-16 08:00,2026-02-19 15:00,,
TR-FAB116112A-21,DOOR FRAME HANDED OVER TO SECAI ON 09/05 - TR - FAB116112A,Complete,2025-09-05 08:00,2025-09-05 17:00,2025-09-05 08:00,2025-09-05 17:00
FAB122155B-03,INSTALL DOOR FRAMES - FAB122155B HANDED OVER ON 08/08,Complete,2025-08-08 08:00,2025-08-08 17:00,2025-08-08 08:00,2025-08-29 17:00
FAB122155B-04,INSTALL DOOR & HARDWARE - FAB122155B,Not Started,2025-11-21 08:00,2025-11-27 17:00,,
FAB122155B-05,PAINT & PROTECT DOORS & FRAMES - FAB122155B,Not Started,2026-02-16 08:00,2026-02-19 15:00,,
FAB122155B-25,DOOR FRAME HANDED OVER TO SECAI ON 08/08 - FAB122155B,Complete,2025-08-08 08:00,2025-08-08 17:00,2025-08-08 08:00,2025-08-08 17:00
FAB122157A-03,INSTALL DOOR FRAMES - FAB122157A HANDED OVER ON 08/08,Active,2025-08-08 08:00,2025-08-08 17:00,2025-08-08 08:00,
FAB122157A-04,INSTALL DOOR & HARDWARE - FAB122157A,Not Started,2025-12-01 08:00,2025-12-05 17:00,,
FAB122157A-05,PAINT & PROTECT DOORS & FRAMES - FAB122157A,Not Started,2026-02-16 08:00,2026-02-19 15:00,,
FAB122157A-25,DOOR FRAME HANDED OVER TO SECAI ON 08/08 - FAB122157A,Complete,2025-08-08 08:00,2025-08-08 17:00,2025-08-08 08:00,2025-08-08 17:00
FAB1U1301A-03,INSTALL DOOR FRAME BY SECAI - FAB1U1301A HANDED OVER 09/05,Complete,2025-09-05 08:00,2025-09-18 17:00,2025-09-05 08:00,2025-09-19 17:00
FAB1U1301A-04,INSTALL DOOR & HARDWARE - FAB1U1301A,Active,2025-10-17 08:00,2025-10-23 17:00,2025-10-17 08:00,
FAB1U1301A-05,PAINT & PROTECT DOORS & FRAMES -  FAB1U1301A,Not Started,2026-02-16 08:00,2026-02-19 17:00,,
FAB1U1301A-25,DOOR FRAME HANDED OVER TO SECAI ON 09/05 - FAB1U1301A,Complete,2025-09-05 08:00,2025-09-05 17:00,2025-09-05 08:00,2025-09-05 17:00
FAB1U1404A-03,INSTALL DOOR FRAME BY SECAI - FAB1U1404A HANDED OVER 07/08,Complete,2025-07-08 08:00,2025-07-21 17:00,2025-07-08 08:00,2025-09-17 17:00
FAB1U1404A-04,INSTALL DOOR & HARDWARE - FAB1U1404A,Not Started,2025-11-21 08:00,2025-11-27 17:00,,
FAB1U1404A-05,PAINT & PROTECT DOORS & FRAMES -  FAB1U1404A,Not Started,2026-02-16 08:00,2026-02-19 17:00,,
FAB1U1404A-25,DOOR FRAME HANDED OVER TO SECAI ON 07/08 - FAB1U1404A,Complete,2025-07-08 08:00,2025-07-08 17:00,2025-07-08 08:00,2025-07-08 17:00
FAB1U1406A-03,INSTALL DOOR FRAME BY SECAI - FAB1U1406A HANDED OVER 08/08,Complete,2025-08-08 08:00,2025-08-21 17:00,2025-08-08 08:00,2025-08-27 17:00
FAB1U1406A-04,INSTALL DOOR & HARDWARE - FAB1U1406A,Active,2025-10-31 08:00,2025-11-06 17:00,2025-10-31 08:00,
FAB1U1406A-05,PAINT & PROTECT DOORS & FRAMES -  FAB1U1406A,Not Started,2026-02-16 08:00,2026-02-19 17:00,,
FAB1U1406A-25,DOOR FRAME HANDED OVER TO SECAI ON 08/08 - FAB1U1406A,Complete,2025-08-08 08:00,2025-08-08 17:00,2025-08-08 08:00,2025-08-08 17:00
FAB1U1407A-03,INSTALL DOOR FRAME BY SECAI - FAB1U1407A HANDED OVER 07/08,Complete,2025-07-08 08:00,2025-07-21 17:00,2025-07-08 08:00,2025-11-12 17:00
FAB1U1407A-04,INSTALL DOOR & HARDWARE - FAB1U1407A,Active,2025-11-13 08:00,2025-11-19 17:00,2025-11-13 08:00,
FAB1U1407A-05,PAINT & PROTECT DOORS & FRAMES -  FAB1U1407A,Not Started,2026-02-16 08:00,2026-02-19 17:00,,
FAB1U1407A-25,DOOR FRAME HANDED OVER TO SECAI ON 07/08 - FAB1U1407A,Complete,2025-07-08 08:00,2025-07-08 17:00,2025-07-08 08:00,2025-07-08 17:00
FAB1U1502A-03,INSTALL DOOR FRAME BY SECAI - FAB1U1502A HANDED OVER 07/18,Complete,2025-07-18 08:00,2025-07-31 17:00,2025-07-18 08:00,2025-10-03 17:00
FAB1U1502A-04,INSTALL DOOR & HARDWARE - FAB1U1502A,Active,2025-11-14 08:00,2025-11-20 17:00,2025-11-14 08:00,
FAB1U1502A-05,PAINT & PROTECT DOORS & FRAMES -  FAB1U1502A,Not Started,2026-02-16 08:00,2026-02-19 17:00,,
FAB1U1502A-25,DOOR FRAME HANDED OVER TO SECAI ON 07/18 - FAB1U1502A,Complete,2025-07-18 08:00,2025-07-18 17:00,2025-07-18 08:00,2025-07-18 17:00
FAB1U1503A-03,INSTALL DOOR FRAME BY SECAI - FAB1U1503A HANDED OVER 07/08,Complete,2025-07-08 08:00,2025-07-21 17:00,2025-07-08 08:00,2025-10-27 17:00
FAB1U1503A-04,INSTALL DOOR & HARDWARE - FAB1U1503A,Active,2025-10-28 08:00,2025-11-03 17:00,2025-10-28 08:00,
FAB1U1503A-05,PAINT & PROTECT DOORS & FRAMES -  FAB1U1503A,Not Started,2026-02-16 08:00,2026-02-19 17:00,,
FAB1U1503A-25,DOOR FRAME HANDED OVER TO SECAI ON 07/08 - FAB1U1503A,Complete,2025-07-08 08:00,2025-07-08 17:00,2025-07-08 08:00,2025-07-08 17:00
FAB116104A-08,IMPACT - TEMP UTILITY LINE RUNNING TROUGH THE DOOR OPENING - FAB116104A,Active,2025-06-13 08:00,2025-07-03 17:00,2025-06-13 08:00,
FAB110507A-70,IMPACT - SECAI REMOVED FRAME AND DOOR - FAB110507A REINSTALLATION BY SECAI,Complete,2025-09-01 08:00,2025-09-19 17:00,2025-09-01 08:00,2025-10-27 17:00
FAB116401B-60,DOOR FRAME HANDED OVER TO SECAI ON 08/15 - FAB116401B,Complete,2025-08-15 08:00,2025-08-15 17:00,2025-08-15 08:00,2025-08-15 17:00
FAB110102A-60,IMPACT - SECAI SCAFFOLD BLOCKING DOOR INSTALL - FAB110102A,Complete,2025-09-25 08:00,2025-10-01 17:00,2025-08-22 08:00,2025-09-24 17:00
FAB110103A-21,IMPACT SECAI SCAFFOLD BLOCKING DOOR INSTALL - FAB110103A,Complete,2025-09-19 08:00,2025-09-25 17:00,2025-08-22 08:00,2025-09-12 17:00
FAB110110B-35,IMPACT - SECAI SCAFFOLD BLOCKING DOOR INSTALL- FAB110110B,Complete,2025-10-02 08:00,2025-10-08 17:00,2025-09-15 08:00,2025-09-30 17:00
FAB110110C-35,IMPACT - SECAI SCAFFOLD BLOCKING DOOR INSTALL- FAB110110C,Complete,2025-10-02 08:00,2025-10-08 17:00,2025-09-15 08:00,2025-09-30 17:00
FAB110202B-35,IMPACT - SECAI EXTERIOR TRENCH BLOCKING DOOR INSTALL - FAB110202B,Complete,2025-09-16 08:00,2025-09-22 17:00,2025-09-16 08:00,2025-10-03 08:00
FAB110203A-35,IMPACT - SECAI EXTERIOR TRENCH BLOCKING DOOR INSTALL - FAB110203A,Active,2025-09-16 08:00,2025-09-22 17:00,2025-09-16 08:00,
FAB110214A-35,IMPACT - SECAI EXTERIOR TRENCH BLOCKING DOOR INSTALL - FAB110214A,Complete,2025-09-16 08:00,2025-09-22 17:00,2025-09-16 08:00,2025-10-02 17:00
FAB110506B-35,IMPACT - SECAI EXTERIOR TRENCH BLOCKING DOOR INSTALL - FAB110506B,Complete,2025-09-16 08:00,2025-09-22 17:00,2025-09-16 08:00,2025-09-30 17:00
FAB120304A-35,IMPACT - SECAI TEMP ROUGH IN IMPEDING DOOR INSTALLATION - FAB120304A,Complete,2025-02-20 08:00,2025-02-26 17:00,2025-02-20 08:00,2025-09-22 17:00
FAB110402C-02,INSTALL DOOR FRAMES - FAB110402C,Complete,2025-09-30 08:00,2025-09-30 17:00,2025-09-30 08:00,2025-09-30 17:00
FAB1-ST04D-01,IMPACT - INSTALL/REWORK DRYWALL FRAMING AROUND DOORS - FAB1-ST04D,Complete,2025-09-26 08:00,2025-09-29 17:00,2025-09-26 08:00,2025-09-29 17:00
FAB1-ST04D-03,INSTALL DOOR FRAMES - FAB1-ST04D,Complete,2025-09-29 08:00,2025-09-29 17:00,2025-09-29 08:00,2025-09-29 17:00
FAB1-ST04D-04,INSTALL DOOR & HARDWARE - FAB1-ST04D,Not Started,2025-11-21 08:00,2025-11-27 17:00,,
FAB1-ST04D-05,PAINT & PROTECT DOORS & FRAMES - FAB1-ST04D,Not Started,2026-02-16 08:00,2026-02-19 17:00,,
FAB110401C-43,IMPACT - SECAI BARRICADE AND SCAFFOLD INTERFERING WITH DOOR INSTALLATION - FAB110401C,Active,2025-08-18 08:00,2025-08-29 17:00,2025-08-18 08:00,
CN.SWA4.7600,IMPACT - MKM FRAMING & SHEATHING COLD FRAME & INSULATION - N30-31 TRESTLE B INFILL - INTERIOR,Complete,2025-10-21 07:00,2025-10-24 17:00,2025-10-10 07:00,2025-10-17 10:00
FAB112103E-02,SECAI ROUGH IN FRAME - FAB112103E,Complete,2025-08-07 08:00,2025-08-07 17:00,2025-08-20 00:00,2025-08-20 17:00
FAB112103E-05,PAINT & PROTECT DOORS & FRAMES - FAB112103E,Not Started,2026-02-16 08:00,2026-02-19 17:00,,
FAB112103E-04,INSTALL DOOR & HARDWARE - FAB112103E,Active,2025-10-03 08:00,2025-10-09 17:00,2025-10-03 08:00,
IMPACT3 - constraint,IMPACT - PRICING FOR IOCC - RFI 1779/1781/1835 DOOR THRESHOLD AND WP - SHOP DWG - ALL LEVEL 4 EXTERIOR DOORS,Active,2025-09-23 08:00,2025-10-06 17:00,2025-09-23 08:00,
IMPACT4 - constraint,IMPACT - IOCC APPROVAL - RFI 1779/1781/1835 DOOR THRESHOLD AND WP - SHOP DWG - ALL LEVEL 4 EXTERIOR DOORS,Not Started,2025-11-26 08:00,2025-12-09 17:00,,
IMPACT5 - constraint,IMPACT - RFI SECAI-FAB-A-10843 - Hollow Metal Doors - Clean Room Paint System Confirmation,Active,2025-05-14 08:00,2025-06-03 17:00,2025-05-14 08:00,
FAB120504D-03,INSTALL DOOR FRAMES - FAB120504D,Complete,2025-10-13 08:00,2025-10-13 17:00,2025-10-13 08:00,2025-10-13 17:00
FAB120401F-70,DOOR FRAME HANDED OVER TO SECAI ON 10/14 - FAB120401F,Complete,2025-10-14 08:00,2025-10-14 17:00,2025-10-14 08:00,2025-10-14 17:00
FAB136502B-70,DOOR FRAME HANDED OVER TO SECAI ON 10/01 - FAB136502B,Complete,2025-10-01 08:00,2025-10-01 17:00,2025-10-01 08:00,2025-10-01 17:00
FAB110304B-75,IMPACT - SECAI SCAFFOLD IMPEDING DOOR INSTALLATION - FAB110304B,Complete,2025-10-15 08:00,2025-10-28 17:00,2025-10-16 08:00,2025-10-29 17:00
FAB110404D-70,IMPACT - SECAI SCAFFOLD IMPEDING DOOR INSTALLATION AND SECAI MISSING DRYWALL COMPLETION - FAB110404D,Active,2025-09-16 08:00,2025-09-29 17:00,2025-09-16 08:00,
FAB110408C-23,IMPACT - SECAI TO REALING FRAME AND DRYWALL COMPLETION - FAB110408C,Complete,2025-09-16 08:00,2025-09-29 17:00,2025-09-16 08:00,2025-11-13 17:00
FAB116413A-21,IMPACT - SECAI DUCTWORK IN DOOR SWING PATH - FAB116413A,Active,2025-09-25 08:00,2025-10-08 17:00,2025-09-29 08:00,
FAB116301B-35,IMPACT - SECAI DUCT CLASH WITH DOOR SWING- FAB116301B,Active,2025-09-26 08:00,2025-10-09 17:00,2025-09-26 08:00,
FAB126505A-60,IMPACT- SECAI REMOVED FRAME AWAITING REINSTALLATION BY SECAI - FAB126505A,Active,2025-08-12 08:00,2025-08-25 17:00,2025-08-12 08:00,
FAB112156A-05,PAINT & PROTECT DOORS & FRAMES - FAB112156A,Not Started,2026-02-16 08:00,2026-02-16 17:00,,
FAB130117A-04,INSTALL DOOR & HARDWARE - FAB130117A,Not Started,2025-11-21 08:00,2025-11-27 17:00,,
FAB130117A-4,PAINT & PROTEC DOORS & FRAMES - FAB130117A,Not Started,2026-02-16 08:00,2026-02-19 17:00,,
FAB132102C-05,PAINT & PROTECT DOORS & FRAMES- FAB132102C,Not Started,2026-02-16 08:00,2026-02-19 17:00,,
FAB110111A-100,INSTALL DOOR HARDWARE - FAB110111A,Not Started,2025-11-21 08:00,2025-11-26 17:00,,
FAB110507A-04,DOOR INSTALL - FAB110507A,Complete,2025-08-19 08:00,2025-08-19 17:00,2025-08-19 08:00,2025-08-19 17:00
FAB110507A-04A,INSTALL DOOR & HARDWARE - FAB110507A,Active,2025-11-05 08:00,2025-11-11 17:00,2025-11-05 08:00,
FAB1-ST22D-03,INSTALL DOOR FRAME - FAB1-ST22D,Complete,2025-10-22 08:00,2025-10-22 17:00,2025-10-22 08:00,2025-10-22 17:00
FAB1-ST22D-04,INSTALL DOOR & HARDWARE - FAB1-ST22D,Not Started,2025-11-21 08:00,2025-11-27 17:00,,
FAB1-ST22D-05,PAINT & PROTECT DOORS & FRAMES -  FAB1-ST22D,Not Started,2026-02-16 08:00,2026-02-19 15:00,,
FAB120303D-21,FRAME HANDED OVER TO SECAI ON 08/15 - FAB120303D,Complete,2025-08-15 08:00,2025-08-15 17:00,2025-08-15 08:00,2025-08-15 17:00
FAB1-MS.PAINT,DOOR PAINT PENDING BUILDING CONDITION AND SECAI DIRECTION,Active,2025-10-27 08:00,2026-01-30 17:00,2025-10-27 08:00,
FAB130111A-06,INSTALL DOOR HARDWARE - FAB130111A,Not Started,2025-11-21 08:00,2025-11-26 17:00,,
FAB130111C-70,IMPACT - SECAI FRAME REINSTALL - FAB130111C,Active,2025-07-25 08:00,2025-08-07 17:00,2025-07-25 08:00,
FAB130402E-70,IMPACT - SECAI TEMP DOOR & DRYWALL REMOVAL - HEADER/GOAL POST INSTALL - PATRIOT - FAB130402E - M/19,Active,2025-10-29 08:00,2025-11-04 17:00,2025-10-29 08:00,
FAB130501A-60,IMPACT - SECAI TEMP DOOR & DRYWALL REMOVAL - FAB130501A - M/27,Complete,2025-10-27 08:00,2025-10-31 17:00,2025-10-27 08:00,2025-11-14 08:00
EJ-0039,Complete Frame EJ gap (scaffold needed) - Duct Shaft - 2F-SUW-FAB120112,Active,2025-10-31 08:00,2025-11-18 17:00,2025-10-31 08:00,
EJ-0122,IMPACT - SECAI FINISH DRYWALL (NO WALL FRAMED)- VEJ D/25 - Clean Vestibule #19 - 3F-FAB136406,Active,2025-09-29 08:00,2025-10-03 17:00,2025-09-29 08:00,
FAB126506C-50,DOOR FRAME HANDED OVER TO SECAI ON 10/27 - FAB126506C,Complete,2025-10-27 08:00,2025-10-27 17:00,2025-10-27 08:00,2025-10-27 17:00
FAB126311B-50,IMPACT - SECAI SCAFFOLD BLOCKING DOOR SWING - FAB126311B,Complete,2025-09-18 08:00,2025-10-08 17:00,2025-09-18 08:00,2025-11-13 17:00
FAB116106B-50,IMPACT - SECAI TRADES WORKING AT OPENING IMPEDING DOOR INSTALL - FAB116106B,Active,2025-10-23 08:00,2025-11-12 17:00,2025-10-23 08:00,
FAB1-ST20C-50,IMPACT - SECAI SCAFFOLD IMPEDING DOOR INSTALL - FAB1-ST20C,Complete,2025-10-29 08:00,2025-11-18 17:00,2025-10-29 08:00,2025-11-17 17:00
FAB116111A-50,IMPACT - SECAI SCAFFOLD IMPEDING DOOR INSTALL - FAB116111A,Active,2025-10-29 08:00,2025-11-18 17:00,2025-10-29 08:00,
FAB114404A-50,IMPACT - SECAI SCAFFOLD IMPEDING DOOR INSTALL - FAB114404A,Active,2025-10-29 08:00,2025-11-18 17:00,2025-10-29 08:00,
FAB126107B-50,IMPACT - SECAI SCAFFOLD IMPEDING DOOR INSTALL - FAB126107B,Complete,2025-10-29 08:00,2025-11-18 17:00,2025-10-29 08:00,2025-10-30 17:00
FAB126506B-50,IMPACT - SECAI SCAFFOLD IMPEDING DOOR INSTALL - FAB126506B,Active,2025-10-29 08:00,2025-11-18 17:00,2025-10-29 08:00,
FAB130311A-50,IMPACT - SECAI MATERIAL AND SCAFFOLD IMPEDING DOOR INSTALL - FAB130311A,Active,2025-10-29 08:00,2025-11-18 17:00,2025-10-29 08:00,
FAB1U1407A-50,IMPACT - SECAI CORDS IMPEDING DOOR INSTALL - FAB1U1407A,Complete,2025-11-03 08:00,2025-11-21 17:00,2025-11-03 08:00,2025-11-12 17:00
FAB116305B-50,IMPACT - FRAME CONSTANTLY HIT DUE HEAY TRAFFIC - FAB116305B,Active,2025-11-12 08:00,2025-11-18 17:00,2025-11-12 08:00,
FAB1-ST03B-50,IMPACT - SECAI SCAFFOLD IMPEDING DOOR INSTALL - FAB1-ST03B,Active,2025-11-06 08:00,2025-11-19 17:00,2025-11-06 08:00,
FAB1-ST03C-50,IMPACT - SECAI SCAFFOLD IMPEDING DOOR INSTALL - FAB1-ST03C,Active,2025-11-06 08:00,2025-11-19 17:00,2025-11-06 08:00,
FAB116204B-06,INSTALL DOOR HARDWARE - FAB116204B,Not Started,2026-02-19 15:00,2026-02-25 15:00,,
CN.SWA5..6320,INSTALL DOOR FRAMES - STAIR #19 - 26/D - ALL LEVELS,Active,2025-05-29 07:00,2025-06-03 17:00,2025-05-29 07:00,
CN.SWA5..6330,INSTALL - DOOR/HARDWARE/PAINT - STAIR #19 - 26/D - ALL LEVELS,Active,2025-11-07 07:00,2025-11-10 17:00,2025-11-07 07:00,
CN.SWA5..6340,INSTALL DOOR FRAMES - STAIR #1 - 5/L - ALL LEVELS,Complete,2025-05-29 07:00,2025-06-03 17:00,2025-05-29 07:00,2025-10-21 17:00
CN.SWA5..6350,INSTALL - DOOR/HARDWARE/PAINT - STAIR #1 - 5/L - ALL LEVELS,Active,2025-11-07 07:00,2025-11-10 17:00,2025-09-18 07:00,
CN.SWA5..6360,INSTALL DOOR FRAMES - STAIR #22 - 6/D - ALL LEVELS,Active,2025-05-29 07:00,2025-06-03 17:00,2025-10-22 07:00,
CN.SWA5..6370,INSTALL - DOOR/HARDWARE/PAINT - STAIR #22 - 6/D - ALL LEVELS,Active,2025-11-07 07:00,2025-11-10 17:00,2025-11-07 07:00,
CN.SWA5..6380,INSTALL DOOR FRAMES - STAIR #50 - 29/L - ALL LEVELS,Complete,2025-05-29 07:00,2025-06-03 17:00,2025-02-13 07:00,2025-10-28 17:00
CN.SWA5..6390,INSTALL - DOOR/HARDWARE/PAINT - STAIR #50 - 29/L - ALL LEVELS,Active,2025-11-07 07:00,2025-11-10 17:00,2025-10-02 07:00,
FAB1-DI-001,INSTALL DOOR & HARDWARE (419 OF 622),Active,2025-11-17 08:00,2025-11-21 17:00,2025-11-17 08:00,
FAB1-DI-002,INSTALL DOOR & HARDWARE (448 OF 622),Not Started,2025-11-24 08:00,2025-11-28 17:00,,
FAB1-DI-003,INSTALL DOOR & HARDWARE (477 OF 622),Not Started,2025-12-01 08:00,2025-12-05 17:00,,
FAB1-DI-004,INSTALL DOOR & HARDWARE (506 OF 622),Not Started,2025-12-08 08:00,2025-12-12 17:00,,
FAB1-DI-005,INSTALL DOOR & HARDWARE (535 OF 622),Not Started,2025-12-15 08:00,2025-12-19 17:00,,
FAB1-DI-006,INSTALL DOOR & HARDWARE (564 OF 622),Not Started,2025-12-22 08:00,2025-12-26 17:00,,
FAB1-DI-007,INSTALL DOOR & HARDWARE (593 OF 622),Not Started,2025-12-29 08:00,2026-01-02 17:00,,
FAB1-DI-008,INSTALL DOOR & HARDWARE (622 OF 622),Not Started,2026-01-05 08:00,2026-01-09 17:00,,
FAB1-DP-001,PAINT & PROTECT DOORS & FRAMES (50 OF 622),Not Started,2026-02-16 08:00,2026-02-20 17:00,,
FAB1-DP-002,PAINT & PROTECT DOORS & FRAMES (100 OF 622),Not Started,2026-02-23 08:00,2026-02-27 17:00,,
FAB1-DP-003,PAINT & PROTECT DOORS & FRAMES (150 OF 622),Not Started,2026-03-02 08:00,2026-03-06 17:00,,
FAB1-DP-004,PAINT & PROTECT DOORS & FRAMES (200 OF 622),Not Started,2026-03-09 08:00,2026-03-13 17:00,,
FAB1-DP-005,PAINT & PROTECT DOORS & FRAMES (250 OF 622),Not Started,2026-03-16 08:00,2026-03-20 17:00,,
FAB1-DP-006,PAINT & PROTECT DOORS & FRAMES (300 OF 622),Not Started,2026-03-23 08:00,2026-03-27 17:00,,
FAB1-DP-007,PAINT & PROTECT DOORS & FRAMES (350 OF 622),Not Started,2026-03-30 08:00,2026-04-03 17:00,,
FAB1-DP-008,PAINT & PROTECT DOORS & FRAMES (400 OF 622),Not Started,2026-04-06 08:00,2026-04-10 17:00,,
FAB1-DP-009,PAINT & PROTECT DOORS & FRAMES (450 OF 622),Not Started,2026-04-13 08:00,2026-04-17 17:00,,
FAB1-DP-010,PAINT & PROTECT DOORS & FRAMES (500 OF 622),Not Started,2026-04-20 08:00,2026-04-24 17:00,,
FAB1-DP-011,PAINT & PROTECT DOORS & FRAMES (550 OF 622),Not Started,2026-04-27 08:00,2026-05-01 17:00,,
FAB1-DP-012,PAINT & PROTECT DOORS & FRAMES (600 OF 622),Not Started,2026-05-04 08:00,2026-05-08 17:00,,
FAB1-DP-013,PAINT & PROTECT DOORS & FRAMES (622 OF 622),Not Started,2026-05-11 08:00,2026-05-15 17:00,,
FAB1-ST18D-03,INSTALL DOOR FRAMES - FAB1-ST18D,Complete,2025-09-23 08:00,2025-09-23 17:00,2025-09-23 08:00,2025-09-23 17:00
FAB1-ST18D-04,INSTALL DOOR & HARDWARE - FAB1-ST18D,Active,2025-11-18 08:00,2025-11-24 17:00,2025-11-18 08:00,
FAB1-ST18D-05,PAINT & PROTECT DOORS & FRAMES - FAB1-ST18D,Not Started,2026-02-16 08:00,2026-02-20 17:00,,
