Task Code,Task Description,Status,WBS,Building,Area,Level,Room,Subcontractor,Trade,Responsible Person,Planned Start,Planned Finish,Actual Start,Actual Finish
CN.SEB55050,Drywall Clips & AMTS Installs Support Beams - SEB2- GL 22-25 - L4 - D LINE,Complete,CONSTRUCTION,,SUEN-2 - 22-25,L4 - SUP Roof - FAB Roof,DS/AD INTERIORS,,TBD Architectural Finishes,,2024-03-23 08:00,2024-03-30 10:00,2024-03-11 00:00,2024-03-21 00:00
MS.ALL.MS.1090,GC - STRUCTURAL STEEL ERECTION COMPLETE - Incl Elevator Door fronts,Not Started,CONTRACTOR MILESTONES,,Key Milestones,Milestones,,,,,2025-11-20 17:00,2025-11-20 17:00,,
CN.SWB5.7140,FINISH DRYWALL & WATERPROOFING & CMP - GL 33 - L1-L2 - LEAVEOUT AREA - E-E.2,Complete,CONSTRUCTION,,GRIDLINE 33,GL 33- LEAVEOUTS,GL33 EXTERIOR AREA (FAB EAST) - D-G,BERG,,,2025-06-24 07:00,2025-07-29 17:00,2025-06-16 07:00,2025-07-15 17:00
CN.SWB5.7330,BERG - FINISH DRYWALL & WATERPROOFING & CMP - GL 33 - L1-L2 - LOADING DECK LEAVEOUT AREA - G-G.2,Complete,CONSTRUCTION,,GRIDLINE 33,GL 33- LEAVEOUTS,GL33 EXTERIOR AREA (FAB WEST) - G-K,BERG,,,2024-12-09 07:00,2024-12-23 17:00,2024-11-13 07:00,2025-07-28 17:00
CN.SWB5.7610,FINISH DRYWALL & WATERPROOFING &CMP - GL 33 - L1-L2 - LOADING DECK LEAVEOUT AREA - H.5-J,Complete,CONSTRUCTION,,GRIDLINE 33,GL 33- LEAVEOUTS,GL33 EXTERIOR AREA (FAB WEST) - G-K,BERG,,,2024-12-12 07:00,2025-01-14 17:00,2024-12-12 07:00,2025-07-22 17:00
CN.BB51.ST.2010,HANG EXTERIOR FRAMING & DRYWALL (1-LAYERS) - GL 33 - STAIR 5 - K-L(2 SHIFTS),Complete,CONSTRUCTION,,GRIDLINE 33,GL 33 STAIR 5 (WEST),STAIR 5 (WEST) - K-L,BERG,,,2024-11-21 07:00,2024-11-27 17:00,2024-11-21 07:00,2025-01-31 17:00
CN.BB51.ST.2080,INSTALL & INSPECT  INTERIOR DRYWALL VESTIBULE 5 3RD LAYER - GL 33 UPTO LVL 2 - STAIR 5 - K-L,Complete,CONSTRUCTION,,GRIDLINE 33,GL 33 STAIR 5 (WEST),STAIR 5 (WEST) - K-L,BERG,,,2025-08-19 07:00,2025-09-09 17:00,2025-08-14 07:00,2025-08-25 17:00
CN.BB51.ST.2070,CHERRY - PRIME & FINISH PAINT INTERIOR DRYWALL - Vestibules 5 - Level 1 & 2 - GL 33 - STAIR 5 - K-L(),Not Started,CONSTRUCTION,,GRIDLINE 33,GL 33 STAIR 5 (WEST),STAIR 5 (WEST) - K-L,CHERRY COATING,,,2025-11-24 07:00,2025-12-02 17:00,,
CN.BB51.ST.2050,BERG - INSTALL DOOR FRAMES - GL 33 - STAIR 5 - K-L - demo drywall and Install PART OF FRAMING,Complete,CONSTRUCTION,,GRIDLINE 33,GL 33 STAIR 5 (WEST),STAIR 5 (WEST) - K-L,BERG,,,2025-09-04 07:00,2025-09-11 17:00,2025-08-11 07:00,2025-09-16 17:00
CN.BB51.ST.2110,INSTALL - DOOR/HARDWARE/PAINT - GL 33 - STAIR 5 - K-L(),Active,CONSTRUCTION,,GRIDLINE 33,GL 33 STAIR 5 (WEST),STAIR 5 (WEST) - K-L,ALK,,,2025-10-17 07:00,2025-10-23 17:00,2025-10-17 07:00,
CN.BB51.ST.2370,HANG EXTERIOR DRYWALL (1-LAYERS) - GL 33 - STAIR 18 - C-D (),Complete,CONSTRUCTION,,GRIDLINE 33,GL 33 STAIR 18 (EAST),STAIR 18 (EAST) - C-D,BERG,,,2025-02-10 07:00,2025-02-14 17:00,2025-02-10 07:00,2025-07-18 17:00
CN.BB51.ST.2420,INSTALL & INSPECT DRYWALL STAIR 18 INTERIOR SHAFT (2HR)(3HR) - GL 33 - STAIR 18 - C-D (),Complete,CONSTRUCTION,,GRIDLINE 33,GL 33 STAIR 18 (EAST),STAIR 18 (EAST) - C-D,BERG,,,2025-08-19 07:00,2025-09-16 17:00,2025-08-14 07:00,2025-10-02 17:00
CN.BB51.ST.2450,TAPE & FLOAT SANDING INTERIOR SHAFT DRYWALL & SANDING - - GL 33 - STAIR 18 - C-D (),Complete,CONSTRUCTION,,GRIDLINE 33,GL 33 STAIR 18 (EAST),STAIR 18 (EAST) - C-D,CHERRY COATING,,,2025-10-06 07:00,2025-10-10 17:00,2025-10-03 07:00,2025-10-23 17:00
CN.BB51.ST.2480,CHERRY - PRIME & FINISH PAINT INTERIOR DRYWALL - Vestibule and remaining - GL 33 - STAIR 18 - C-D (),Not Started,CONSTRUCTION,,GRIDLINE 33,GL 33 STAIR 18 (EAST),STAIR 18 (EAST) - C-D,CHERRY COATING,,,2025-12-11 07:00,2025-12-19 17:00,,
CN.BB51.ST.2460,BERG - INSTALL DOOR FRAMES - GL 33 - STAIR 18 - C-D (Procurement),Active,CONSTRUCTION,,GRIDLINE 33,GL 33 STAIR 18 (EAST),STAIR 18 (EAST) - C-D,BERG,,,2025-09-04 07:00,2025-09-15 17:00,2025-08-04 07:00,
CN.BB51.ST.2490,INSTALL - DOOR/HARDWARE/PAINT - GL 33 - STAIR 18 - C-D (),Not Started,CONSTRUCTION,,GRIDLINE 33,GL 33 STAIR 18 (EAST),STAIR 18 (EAST) - C-D,ALK,,,2025-12-22 07:00,2025-12-26 17:00,,
CN.BB51.ST.2520,INSTALL & INSPECT  INTERIOR DRYWALL & FIRECAULK - VESTIBULE 18 - 3RD LAYER - GL 33 LVL 3 - 4  - STAIR 18 - C-D,Complete,CONSTRUCTION,,GRIDLINE 33,GL 33 STAIR 18 (EAST),STAIR 18 (EAST) - C-D,,,,2025-09-02 07:00,2025-09-10 17:00,2025-09-02 07:00,2025-11-06 17:00
CN.BB51.ST.1670,IMPACT - SECAI DIRECTS FRAMING AND DRYWALL TO STOP FOR ACCESS - GL 33 - L2 - B-C,Complete,CONSTRUCTION,,GRIDLINE 33,L2 - SubFab Level,GL33 EXTERIOR AREA (SUE) - A-C,SECAI,,,2024-04-15 07:00,2024-06-20 17:00,2024-02-12 07:00,2024-07-31 17:00
CN.SEA4.1181,REMEDY - DEMO DRYWALL (INT) - SEA4 - GL 9-6 - D LINE - L2,Complete,CONSTRUCTION,,SUES-4 - 9-6,L2 - SubFab Level,DS/AD INTERIORS,SECAI,,,2024-07-01 07:00,2024-07-08 17:00,2024-07-01 07:00,2024-07-12 17:00
FIZ.WEST.2481,IMPACT [S12] - DEMO DRYWALL & FIREPROOFING FOR STRUCTURAL STEEL - GL 1-3 - J-L - L2-L4,Complete,CONSTRUCTION,,FIZ 2 / SUWS 5  (GL6-1) - GL J - N - DATA CENTER 1,L4 - SUP Roof - FAB Roof,,BERG,,,2024-05-31 07:00,2024-06-07 17:00,2024-05-16 07:00,2024-06-24 17:00
FIZ.WEST.2491,IMPACT [S12] - REINSTALL DRYWALL & FIREPROOFING - GL 1-3 - J-L - L2-L4,Complete,CONSTRUCTION,,FIZ 2 / SUWS 5  (GL6-1) - GL J - N - DATA CENTER 1,L4 - SUP Roof - FAB Roof,,BERG,,,2024-07-17 07:00,2024-07-23 17:00,2024-07-03 07:00,2024-07-12 17:00
FIZ.WEST.2521,IMPACT [S12] - DEMO DRYWALL & FIREPROOFING FOR STRUCTURAL STEEL - GL 1-3 - C-E - L2-L4,Complete,CONSTRUCTION,,SUES-5 - 6-1 - FIZ - GL A -E,L4 - SUP Roof - FAB Roof,,BERG,,,2024-05-31 07:00,2024-06-07 17:00,2024-05-16 07:00,2024-06-20 17:00
FIZ.WEST.2531,IMPACT [S12] - REINSTALL DRYWALL & FIREPROOFING - GL 1-3 - C-E - L2-L4,Complete,CONSTRUCTION,,SUES-5 - 6-1 - FIZ - GL A -E,L4 - SUP Roof - FAB Roof,,BERG,,,2024-07-01 07:00,2024-07-09 17:00,2024-06-24 07:00,2024-07-07 17:00
ELEVHSS290,IMPACT - SWO ISSUED FOR ALL REMAINING HSS STEEL DOOR OPENINGS / AWAIT SECAI DIRECTION TO PROCEED,Complete,CONSTRUCTION,,ELEVATORS,L1 - Fndn Slab,,SECAI,,,2024-05-03 07:00,2024-08-13 17:00,2024-04-25 07:00,2025-01-06 17:00
CN.SEA2.1181,IMPACT - DRYWALL DEMO PER SECAI DIRECTION SEA2 GL 16-13 - L3 - D LINE,Complete,CONSTRUCTION,,SUES-2 - 16-13,L3 / Waffle Slab Level,,,,,2024-04-22 07:00,2024-04-25 17:00,2024-04-22 07:00,2024-05-01 17:00
CN.SWB5.2400,CCD 248 - ISSUE & APPROVAL OF CCD FOR TEMP DRYWALL ENCLOSURE - SE PENTHOUSE,Complete,CONSTRUCTION,,SOUTH EAST PENTHOUSE,L4 - SUP Roof - FAB Roof,,,,,2024-05-17 07:00,2024-05-23 17:00,2024-05-08 07:00,2024-05-17 17:00
CN.SWB5.2410,CCD 248 - FRAME & HANG TEMP DRYWALL ENCLOSURE - GL5 & A-LINE - SE PENTHOUSE,Complete,CONSTRUCTION,,SOUTH EAST PENTHOUSE,L4 - SUP Roof - FAB Roof,,,,,2024-05-24 07:00,2024-06-10 17:00,2024-05-22 07:00,2024-05-30 17:00
INT.DH.1000,IMPACT - Y_RFI 1209 - PREP & SUBMIT RFI FOR INTERIOR DOOR DESIGN,Complete,CONSTRUCTION,,Doors & Hardware - INTERIOR,DOORS & HARDWARE INTERIOR,,,,,2024-05-31 07:00,2024-06-21 17:00,2024-02-05 07:00,2024-02-20 17:00
INT.DH.1030,IMPACT - DRB-007 / DRB-008 - SECAI ISSUES INTERIOR DOOR REDESIGN TO YATES,Complete,CONSTRUCTION,,Doors & Hardware - INTERIOR,DOORS & HARDWARE INTERIOR,,,,,2024-06-17 07:00,2024-07-19 17:00,2024-03-07 07:00,2024-04-04 17:00
INT.DH.1040,"IMPACT - CCD 302 - YATES PREP & SUBMIT CCD: C&B DOOR SCHEDULE CHANGES AS PER RFI 1209, DRB-007, DRB-008",Complete,CONSTRUCTION,,Doors & Hardware - INTERIOR,DOORS & HARDWARE INTERIOR,,,,,2024-06-24 07:00,2024-07-25 17:00,2024-04-05 07:00,2024-05-07 17:00
INT.DH.1050,"IMPACT - CCD 302 - SECAI REVIEW & APPROVE CCD: C&B DOOR SCHEDULE CHANGES AS PER RFI 1209, DRB-007, DRB-008",Complete,CONSTRUCTION,,Doors & Hardware - INTERIOR,DOORS & HARDWARE INTERIOR,,,,,2024-06-28 07:00,2024-07-22 17:00,2024-05-08 07:00,2024-05-20 17:00
INT.DH.1060,IMPACT - CCD 302 - YATES/C&B PREPARE SUBMITTAL FOR INTERIOR DOOR REDESIGN,Complete,CONSTRUCTION,,Doors & Hardware - INTERIOR,DOORS & HARDWARE INTERIOR,,,,,2024-07-05 07:00,2024-07-16 17:00,2024-05-21 07:00,2024-05-30 17:00
INT.DH.1070,IMPACT - CCD 302 - SECAI/JACOBS REVIEW & APPROVE SUBMITTAL FOR INTERIOR DOOR REDESIGN (DRB-008) - REVISE & RESUBMIT,Complete,CONSTRUCTION,,Doors & Hardware - INTERIOR,DOORS & HARDWARE INTERIOR,,SECAI,,,2024-06-10 07:00,2024-06-28 17:00,2024-05-31 07:00,2024-07-08 17:00
INT.DH.2000,IMPACT - Y_SBMT 524 - PREPARE & SUBMIT AUTO ALUMINUM DOOR SUBMITTAL - CLEAN ROOMS,Complete,CONSTRUCTION,,Doors & Hardware - INTERIOR,DOORS & HARDWARE INTERIOR,,,,,2024-05-31 07:00,2024-06-06 17:00,2023-12-01 07:00,2023-12-14 17:00
INT.DH.2010,IMPACT - SECAI REVIEW & APPROVE AUTO ALUMINUM DOOR SUBMITTAL - CLEAN ROOMS - REVISE & RESUBMIT,Complete,CONSTRUCTION,,Doors & Hardware - INTERIOR,DOORS & HARDWARE INTERIOR,,,,,2024-05-31 07:00,2024-06-06 17:00,2023-12-15 07:00,2023-12-21 17:00
INT.DH.2020,IMPACT - PREPARE & SUBMIT AUTO ALUMINUM DOOR SUBMITTAL - CLEAN ROOMS - R1,Complete,CONSTRUCTION,,Doors & Hardware - INTERIOR,DOORS & HARDWARE INTERIOR,,,,,2024-05-31 07:00,2024-06-06 17:00,2023-12-22 07:00,2024-02-06 17:00
INT.DH.2030,IMPACT - SECAI REVIEW & APPROVE TO AUTO ALUMINUM DOOR SUBMITTAL - CLEAN ROOMS - R1 - REVISE & RESUBMIT,Complete,CONSTRUCTION,,Doors & Hardware - INTERIOR,DOORS & HARDWARE INTERIOR,,,,,2024-05-31 07:00,2024-06-06 17:00,2024-02-07 07:00,2024-02-20 17:00
INT.DH.2040,IMPACT - PREPARE & SUBMIT AUTO ALUMINUM DOOR SUBMITTAL - CLEAN ROOMS - R2,Complete,CONSTRUCTION,,Doors & Hardware - INTERIOR,DOORS & HARDWARE INTERIOR,,,,,2024-05-31 07:00,2024-06-06 17:00,2024-02-21 07:00,2024-04-08 17:00
INT.DH.2050,IMPACT - SECAI REVIEW & APPROVE TO AUTO ALUMINUM DOOR SUBMITTAL - CLEAN ROOMS - R2 - REVISE & RESUBMIT,Complete,CONSTRUCTION,,Doors & Hardware - INTERIOR,DOORS & HARDWARE INTERIOR,,,,,2024-05-31 07:00,2024-06-06 17:00,2024-04-09 07:00,2024-04-18 17:00
INT.DH.2060,IMPACT - PREPARE & SUBMIT AUTO ALUMINUM DOOR SUBMITTAL - CLEAN ROOMS - R3,Complete,CONSTRUCTION,,Doors & Hardware - INTERIOR,DOORS & HARDWARE INTERIOR,,,,,2024-05-31 07:00,2024-06-06 17:00,2024-04-19 07:00,2024-05-08 17:00
INT.DH.2070,IMPACT - SECAI REVIEW & APPROVE TO AUTO ALUMINUM DOOR SUBMITTAL - CLEAN ROOMS - R3 - REVISE & RESUBMIT,Complete,CONSTRUCTION,,Doors & Hardware - INTERIOR,DOORS & HARDWARE INTERIOR,,,,,2024-05-31 07:00,2024-06-06 17:00,2024-05-08 07:00,2024-05-21 17:00
CN.SWB5.2560,IMPACT - BERG INSTALL STUD FRAMED MEP OPENINGS - NW PENTHOUSE - SOUTH WALL,Complete,CONSTRUCTION,,NORTH WEST PENTHOUSE,EXTERIOR SKIN,,BERG,,,2024-08-23 07:00,2024-08-29 17:00,2024-08-12 07:00,2024-08-16 17:00
CN.SWB5.9150,IMPACT - BERG INSTALL STUD FRAMED MEP OPENINGS - SW PENTHOUSE - NORTH & SOUTH WALLS,Complete,CONSTRUCTION,,SOUTH WEST PENTHOUSE,EXTERIOR SKIN,,BERG,,,2024-07-17 07:00,2024-07-30 17:00,2024-07-02 07:00,2024-07-16 17:00
CN.SWB5.9180,IMPACT - BERG INSTALL STUD FRAMED MEP OPENINGS - NE PENTHOUSE - SOUTH WALL,Complete,CONSTRUCTION,,NORTH EAST PENTHOUSE,EXTERIOR SKIN,,BERG,,,2024-08-09 07:00,2024-08-19 17:00,2024-07-24 07:00,2024-08-02 17:00
CN.SWA5.DS.3020,REMEDY - FRAME & DRYWALL (INT) - SWA5 - GL 6-3 - K LINE - L2,Complete,CONSTRUCTION,,FIZ 2 / SUWS 5  (GL6-1) - GL J - N - DATA CENTER 1,L2 - SubFab Level,DS/AD INTERIORS,SECAI,,,2024-07-17 07:00,2024-08-06 17:00,2024-07-17 07:00,2024-08-07 17:00
INT.DH.1090,PREP & SUBMIT EXTERIOR DOOR AND FRAMES SHOP DRAWINGS (Y_SBMT#686),Complete,CONSTRUCTION,,Doors & Hardware - INTERIOR,DOORS & HARDWARE INTERIOR,,,,,2024-05-31 07:00,2024-06-17 17:00,2023-07-10 07:00,2023-07-25 17:00
INT.DH.1100,SECAI REVIEW EXTERIOR DOOR & FRAMES SHOP DRAWINGS (Y_SBMT#686),Complete,CONSTRUCTION,,Doors & Hardware - INTERIOR,DOORS & HARDWARE INTERIOR,,,,,2024-05-31 07:00,2024-06-17 17:00,2023-07-26 07:00,2023-08-28 17:00
INT.DH.1110,IMPACT - SECAI ISSUE DESIGN REVISION TO YATES - EXTERIOR DOOR & FRAMES,Complete,CONSTRUCTION,,Doors & Hardware - INTERIOR,DOORS & HARDWARE INTERIOR,,,,,2024-05-31 07:00,2024-06-13 17:00,2023-08-29 07:00,2023-09-08 17:00
INT.DH.1120,IMPACT - PREP & SUBMIT EXTERIOR DOOR & FRAMES SHOP DRAWINGS - REVISED DESIGN,Complete,CONSTRUCTION,,Doors & Hardware - INTERIOR,DOORS & HARDWARE INTERIOR,,,,,2024-05-31 07:00,2024-06-17 17:00,2023-09-11 07:00,2023-10-02 17:00
INT.DH.1130,IMPACT - SECAI REVIEW & APPROVE EXTERIOR DOOR & FRAMES SHOP DRAWINGS - REVISED DESIGN,Complete,CONSTRUCTION,,Doors & Hardware - INTERIOR,DOORS & HARDWARE INTERIOR,,,,,2024-05-31 07:00,2024-06-17 17:00,2023-10-03 07:00,2023-10-24 17:00
INT.DH.1140,IMPACT - Y_RFI 1058 - PREP & SUBMIT RFI TO CLARIFY R-VALUE - EXTERIOR DOOR & FRAMES,Complete,CONSTRUCTION,,Doors & Hardware - INTERIOR,DOORS & HARDWARE INTERIOR,,,,,2024-05-31 07:00,2024-06-07 17:00,2023-10-25 07:00,2023-11-07 17:00
INT.DH.1150,IMPACT - Y_RFI 1058 - SECAI REVIEW & REPSOND CLARIFYING R-VALUE - EXTERIOR DOOR & FRAMES,Complete,CONSTRUCTION,,Doors & Hardware - INTERIOR,DOORS & HARDWARE INTERIOR,,,,,2024-05-31 07:00,2024-05-31 17:00,2023-11-08 07:00,2023-11-08 17:00
INT.DH.1160,IMPACT - Y_RFI 1072 - PREP & SUBMIT RFI TO CLARIFY THERMAL RATING - EXTERIOR DOOR & FRAMES,Complete,CONSTRUCTION,,Doors & Hardware - INTERIOR,DOORS & HARDWARE INTERIOR,,,,,2024-05-31 07:00,2024-06-07 17:00,2023-11-09 07:00,2023-11-16 17:00
INT.DH.1170,IMPACT - Y_RFI 1072 - SECAI REVIEW & RESPOND CLARIFYING THERMAL RATING - EXTERIOR DOOR & FRAMES,Complete,CONSTRUCTION,,Doors & Hardware - INTERIOR,DOORS & HARDWARE INTERIOR,,,,,2024-05-31 07:00,2024-06-17 17:00,2023-11-17 07:00,2023-11-29 17:00
INT.DH.1180,IMPACT - Y_RFI 1072 - YATES REOPENS RFI AFTER CONFERENCE CALL WITH JACOBS - EXTERIOR DOOR & FRAMES,Complete,CONSTRUCTION,,Doors & Hardware - INTERIOR,DOORS & HARDWARE INTERIOR,,,,,2024-05-31 07:00,2024-05-31 17:00,2023-11-30 07:00,2023-11-30 17:00
INT.DH.1190,IMPACT - Y_RFI 1072 - SECAI/JACOBS/SAMOO/YATES COORDINATE THERMAL RATING REQS - EXTERIOR DOOR & FRAMES,Complete,CONSTRUCTION,,Doors & Hardware - INTERIOR,DOORS & HARDWARE INTERIOR,,,,,2024-05-31 07:00,2024-06-25 17:00,2023-12-01 07:00,2024-04-08 17:00
INT.DH.1200,IMPACT - Y_RFI 1072 - SECAI REQUESTS YATES SUBMIT FORMAL SUBMITTAL TO CLOSE RFI - EXTERIOR DOOR & FRAMES,Complete,CONSTRUCTION,,Doors & Hardware - INTERIOR,DOORS & HARDWARE INTERIOR,,,,,2024-05-31 07:00,2024-05-31 17:00,2024-04-09 07:00,2024-04-09 17:00
INT.DH.1210,IMPACT - Y_SBMT 0600 - PREP & SUBMIT CECO FRAME & MEDALLION DOOR SUBMITTAL - EXTERIOR DOOR & FRAMES,Complete,CONSTRUCTION,,Doors & Hardware - INTERIOR,DOORS & HARDWARE INTERIOR,,,,,2024-05-31 07:00,2024-06-07 17:00,2024-04-10 07:00,2024-04-18 17:00
INT.DH.1220,IMPACT - Y_SBMT 0600 - SECAI REVIEW & APPROVE CECO FRAME & MEDALLION DOOR SUBMITTAL - EXTERIOR DOOR & FRAMES,Complete,CONSTRUCTION,,Doors & Hardware - INTERIOR,DOORS & HARDWARE INTERIOR,,,,,2024-05-31 07:00,2024-06-17 17:00,2024-04-19 07:00,2024-04-24 17:00
INT.DH.1230,IMPACT - Y_RFI 1072 - SECAI CLOSES RFI AFTER APPROVAL OF Y_SBMT 1072 - EXTERIOR DOOR & FRAMES,Complete,CONSTRUCTION,,Doors & Hardware - INTERIOR,DOORS & HARDWARE INTERIOR,,,,,2024-05-31 07:00,2024-06-07 17:00,2024-04-25 07:00,2024-05-01 17:00
INT.DH.1240,IMPACT - Y_RFI 1326 - PREP & SUBMIT RFI TO CLARIFY OVERSIZED FRAME SPEC - EXTERIOR DOOR & FRAMES,Complete,CONSTRUCTION,,Doors & Hardware - INTERIOR,DOORS & HARDWARE INTERIOR,,,,,2024-05-31 07:00,2024-06-07 17:00,2024-05-02 07:00,2024-05-07 17:00
INT.DH.1250,IMPACT - Y_RFI 1326 - SECAI REVIEW & PROVIDE CLARIFICATION ON OVERSIZED FRAMES - EXTERIOR DOOR & FRAMES,Complete,CONSTRUCTION,,Doors & Hardware - INTERIOR,DOORS & HARDWARE INTERIOR,,,,,2024-05-31 07:00,2024-06-17 17:00,2024-05-08 07:00,2024-05-15 17:00
INT.DH.1290,IMPACT - YATES SUBMIT REQUEST TO SECAI FOR DOOR INSTALLATION PRIORITY LIST - NEEDED TO DEVISE INSTALL SEQUENCE,Complete,CONSTRUCTION,,Doors & Hardware - INTERIOR,DOORS & HARDWARE INTERIOR,,SECAI,,,2024-05-31 07:00,2024-06-17 17:00,2024-04-17 07:00,2024-11-02 17:00
INT.DH.0000,PREP & SUBMIT INTERIOR DOORS & FRAMES PRODUCT DATA (Y_SBMT#681),Complete,CONSTRUCTION,,Doors & Hardware - INTERIOR,DOORS & HARDWARE INTERIOR,,,,,2024-05-31 07:00,2024-06-17 17:00,2023-09-14 07:00,2023-10-04 17:00
INT.DH.0010,SECAI REVIEW & REJECT INTERIOR DOORS & FRAMES PRODUCT DATA (Y_SBMT#681),Complete,CONSTRUCTION,,Doors & Hardware - INTERIOR,DOORS & HARDWARE INTERIOR,,,,,2024-05-31 07:00,2024-06-17 17:00,2023-10-05 07:00,2023-10-25 17:00
INT.DH.0020,IMPACT - PREP & SUBMIT INTERIOR DOORS & FRAMES PRODUCT DATA - R1 (Y_SBMT#681),Complete,CONSTRUCTION,,Doors & Hardware - INTERIOR,DOORS & HARDWARE INTERIOR,,,,,2024-05-31 07:00,2024-06-17 17:00,2023-10-26 07:00,2023-11-27 17:00
INT.DH.0030,IMPACT - SECAI REVIEW & REJECT INTERIOR DOORS & FRAMES PRODUCT DATA - R1 (Y_SBMT#681),Complete,CONSTRUCTION,,Doors & Hardware - INTERIOR,DOORS & HARDWARE INTERIOR,,,,,2024-05-31 07:00,2024-06-17 17:00,2023-11-28 07:00,2023-12-12 17:00
INT.DH.0040,IMPACT - Y_RFI 1008 - PREP & SUBMIT RFI TO RESOLVE FIRE RATING ISSUE WITH OVERSIZED INTERIOR DOORS,Complete,CONSTRUCTION,,Doors & Hardware - INTERIOR,DOORS & HARDWARE INTERIOR,,,,,2024-05-31 07:00,2024-05-31 17:00,2023-10-26 07:00,2023-10-26 17:00
INT.DH.0050,IMPACT - Y_RFI 1008 - SECAI REVIEW & PROVIDES RESPONSE TO FIRE RATING RFI FOR OVERSIZED INTERIOR DOORS,Complete,CONSTRUCTION,,Doors & Hardware - INTERIOR,DOORS & HARDWARE INTERIOR,,,,,2024-05-31 07:00,2024-06-17 17:00,2023-10-27 07:00,2024-01-09 17:00
INT.DH.0060,IMPACT - Y_RFI 1298 - PREP & SUBMIT RFI TO CLARIFY FIRE RATINGS FOR REVISED INTERIOR DOOR OPENINGS,Complete,CONSTRUCTION,,Doors & Hardware - INTERIOR,DOORS & HARDWARE INTERIOR,,,,,2024-05-31 07:00,2024-06-17 17:00,2024-04-05 07:00,2024-04-18 17:00
INT.DH.0070,IMPACT - Y_RFI 1298 - SAMOO PROVIDES RESPONSE FOR FIRE RATINGS FOR REVISED INTERIOR DOOR OPENINGS,Complete,CONSTRUCTION,,Doors & Hardware - INTERIOR,DOORS & HARDWARE INTERIOR,,,,,2024-05-31 07:00,2024-06-17 17:00,2024-04-19 07:00,2024-04-30 17:00
INT.DH.0080,IMPACT - Y_RFI 1298 - JACOBS REVIEW & RESPONSE FOR FIRE RATINGS FOR REVISED INTERIOR DOOR OPENINGS,Complete,CONSTRUCTION,,Doors & Hardware - INTERIOR,DOORS & HARDWARE INTERIOR,,,,,2024-05-31 07:00,2024-06-07 17:00,2024-05-01 07:00,2024-05-07 17:00
INT.DH.1300,IMPACT - CCD 346 - PREP & SUBMIT CCD - EXTERIOR DOOR FRAME CHANGE TO KEY FRAME & GASKETING FOR OVERSIZED FRAME,Complete,CONSTRUCTION,,Doors & Hardware - INTERIOR,DOORS & HARDWARE INTERIOR,,,,,2024-06-07 07:00,2024-06-13 17:00,2024-05-16 07:00,2024-06-04 17:00
INT.DH.1310,IMPACT - CCD 346 - SECAI REVIEW & REJECT CCD - SEEKING ALTERNATIVE TO MODIFIED STANDARD DOOR FRAMES,Complete,CONSTRUCTION,,Doors & Hardware - INTERIOR,DOORS & HARDWARE INTERIOR,,,,,2024-06-07 07:00,2024-06-24 17:00,2024-06-05 07:00,2024-06-06 17:00
INT.DH.1320,IMPACT - CCD 346 - Y_RFI 1377 - YATES PREP & SUBMIT RFI FOR EXTERIOR DOOR FRAME SPEC CLARIFICATION,Complete,CONSTRUCTION,,Doors & Hardware - INTERIOR,DOORS & HARDWARE INTERIOR,,,,,2024-06-20 07:00,2024-06-25 17:00,2024-06-07 07:00,2024-06-13 17:00
INT.DH.1330,IMPACT - CCD 346 - Y_RFI 1377 - SECAI REVIEW & RESPOND/SIGN RFI FOR EXTERIOR DOOR FRAME SPEC CLARIFICATION,Complete,CONSTRUCTION,,Doors & Hardware - INTERIOR,DOORS & HARDWARE INTERIOR,,SECAI,,,2024-06-28 07:00,2024-07-16 17:00,2024-06-14 07:00,2024-06-27 17:00
CN.SEB1.7550,HANG DRYWALL (1 SIDE) - BATHROOM - GL 19-22 - C-A - L1,Complete,CONSTRUCTION,,SUEN-1 - 19-22,L1 - Fndn Slab,BATHROOM,,,,2025-06-10 07:00,2025-06-10 17:00,2025-06-10 07:00,2025-08-25 17:00
CN.SEB1.7570,HANG DRYWALL (2ND SIDE) - BATHROOM - GL 19-22 - C-A - L1,Complete,CONSTRUCTION,,SUEN-1 - 19-22,L1 - Fndn Slab,BATHROOM,,,,2025-08-25 07:00,2025-08-28 17:00,2025-08-25 07:00,2025-09-04 17:00
CN.SWA5.1990,REMAINING HANG DRYWALL (1 SIDE) - BATHROOM - GL 3 - M-N - L1,Complete,CONSTRUCTION,,FIZ 2 / SUWS 5  (GL6-1) - GL J - N - DATA CENTER 1,L1 - Fndn Slab,BATHROOM,,,,2025-08-14 07:00,2025-08-19 17:00,2025-05-29 07:00,2025-06-06 17:00
CN.SWA5.9320,HANG DRYWALL (2ND SIDE) - BATHROOM - GL 3 - M-N - L1,Complete,CONSTRUCTION,,FIZ 2 / SUWS 5  (GL6-1) - GL J - N - DATA CENTER 1,L1 - Fndn Slab,BATHROOM,,,,2025-05-07 07:00,2025-05-12 17:00,2025-05-07 07:00,2025-07-18 17:00
CN.SWA5.9330,TAPE & FINISH DRYWALL - BATHROOM - GL 3 - M-N - L1,Complete,CONSTRUCTION,,FIZ 2 / SUWS 5  (GL6-1) - GL J - N - DATA CENTER 1,L1 - Fndn Slab,BATHROOM,,,,2025-07-21 07:00,2025-07-23 17:00,2025-07-21 07:00,2025-07-23 17:00
CN.SEB1.9420,TAPE & FINISH DRYWALL - BATHROOM - GL 19-22 - C-A - L1,Complete,CONSTRUCTION,,SUEN-1 - 19-22,L1 - Fndn Slab,BATHROOM,,,,2025-09-04 07:00,2025-09-08 17:00,2025-09-04 07:00,2025-09-08 17:00
CN.SWA3.9270,HANG DRYWALL (1 SIDE) - BATHROOM - GL 11-12 - L-N - L1,Complete,CONSTRUCTION,,SUWS-3 - 12-9,L1 - Fndn Slab,BATHROOM,,,,2024-11-11 07:00,2024-11-15 17:00,2024-08-01 07:00,2024-08-09 07:00
CN.SWA3.9290,HANG DRYWALL (2ND SIDE) - BATHROOM - GL 11-12 - L-N - L1,Complete,CONSTRUCTION,,SUWS-3 - 12-9,L1 - Fndn Slab,BATHROOM,,,,2024-11-15 07:00,2024-11-21 17:00,2024-08-12 07:00,2024-08-15 07:00
CN.SWA3.9300,"REMAINING DRYWALL , TAPE & FINISH DRYWALL - BATHROOM - GL 11-12 - L-N - L1",Complete,CONSTRUCTION,,SUWS-3 - 12-9,L1 - Fndn Slab,BATHROOM,,,,2025-07-21 07:00,2025-07-22 17:00,2025-07-21 07:00,2025-08-05 17:00
CN.SWA1.1492,HANG DRYWALL (1 SIDE) - BATHROOM - GL 15-18 - K-N - L3,Complete,CONSTRUCTION,,SUWS-1 - 18-15,L3 / Waffle Slab Level,BATHROOM,,,,2025-05-05 07:00,2025-05-16 17:00,2025-05-05 07:00,2025-05-16 17:00
CN.SWA1.1512,HANG DRYWALL (2ND SIDE) - BATHROOM - GL 15-18 - K-N - L3,Complete,CONSTRUCTION,,SUWS-1 - 18-15,L3 / Waffle Slab Level,BATHROOM,,,,2025-07-23 07:00,2025-07-28 17:00,2025-05-05 07:00,2025-06-07 17:00
CN.SWA1.9450,TAPE & FINISH DRYWALL - BATHROOM - GL 15-18 - K-N - L3,Complete,CONSTRUCTION,,SUWS-1 - 18-15,L3 / Waffle Slab Level,BATHROOM,,,,2025-06-13 07:00,2025-06-13 17:00,2025-06-13 07:00,2025-06-13 17:00
INT.DH.2080,IMPACT - CCD 345 - PREP & SUBMIT CCD FOR INTERIOR DOORS (DRB-009 PACKAGE),Complete,CONSTRUCTION,,Doors & Hardware - INTERIOR,DOORS & HARDWARE INTERIOR,,SECAI,,,2024-07-08 07:00,2024-07-22 17:00,2024-05-02 07:00,2024-06-05 17:00
INT.DH.2090,IMPACT - CCD 367 - PREP & SUBMIT CCD FOR INTERIOR DOORS (DRB-010 PACKAGE),Complete,CONSTRUCTION,,Doors & Hardware - INTERIOR,DOORS & HARDWARE INTERIOR,,SECAI,,,2024-06-28 07:00,2024-07-16 17:00,2024-05-31 07:00,2024-06-13 17:00
INT.DH.2100,IMPACT - CCD 345 - SECAI REVIEW & APPROVE CCD FOR INTERIOR DOORS (DRB-009 PACKAGE),Complete,CONSTRUCTION,,Doors & Hardware - INTERIOR,DOORS & HARDWARE INTERIOR,,SECAI,,,2024-07-08 07:00,2024-07-22 17:00,2024-06-06 07:00,2024-06-10 17:00
INT.DH.2140,IMPACT - CCD 367 - SECAI REVIEW & APPROVE CCD FOR INTERIOR DOORS (DRB-010 PACKAGE),Complete,CONSTRUCTION,,Doors & Hardware - INTERIOR,DOORS & HARDWARE INTERIOR,,SECAI,,,2024-06-28 07:00,2024-07-16 17:00,2024-06-14 07:00,2024-06-20 17:00
CN.SWB5.6980,IMPACT - REPAIR CONCRETE CURB TO FINISH DRYWALL - GL 33 - L1 - A-C,Complete,CONSTRUCTION,,GRIDLINE 33,L1 - Fndn Slab,GL33 EXTERIOR AREA (SUE) - A-C,,,,2024-09-20 07:00,2024-09-26 17:00,2024-08-12 07:00,2024-08-14 17:00
CN.SWB5.6340,IMPACT - REPAIR CONCRETE CURB TO FINISH DRYWALL - GL 33 - L1 - G-K,Complete,CONSTRUCTION,,GRIDLINE 33,L1 - Fndn Slab,GL33 EXTERIOR AREA (FAB WEST) - G-K,,,,2024-11-15 07:00,2024-11-21 17:00,2024-08-28 07:00,2024-08-29 17:00
CN.SWB34600,IMPACT - TARPS BLOCKING THE DRYWALL INSTALL - SWB-3- ELECTRICAL ROOM - GL 29-30 L,Complete,CONSTRUCTION,,SUWN-3 - 24-27,L3 / Waffle Slab Level,ELECTRIC RM 1,,,,2024-07-11 07:00,2024-07-16 17:00,2024-07-11 07:00,2024-08-01 17:00
STAIR.1780,INSTALL & INSPECT STAIR/RAMP # 5-C - SUE - 5-B - LEVEL 04 - Pending door sill angle,Complete,CONSTRUCTION,,INTERIOR STAIRS,L4 - SUP Roof - FAB Roof,SUE - SUPPORT EAST,,,,2024-10-17 07:00,2024-10-28 17:00,2024-10-24 07:00,2025-09-25 17:00
CN.SWB5.9520,IMPACT -TEMP DUCT IN THE WAY IN THE ROOM TO FINISH DRYWALL - SWB-5 - L2 - FIRE ALARM 22 GL 5-6 A-B,Complete,CONSTRUCTION,,SUES-5 - 6-1 - FIZ - GL A -E,L2 - SubFab Level,FIRE ALARM ,,,,2024-07-18 07:00,2024-07-23 17:00,2024-07-18 07:00,2025-10-03 17:00
CN.SWB5.9560,IMPACT - EAST WALL REDESIGN TO SHAFT WALL / PROVIDE SCAFFOLDING - DRYWALL - SWB-5 - L2 - FIRE ALARM 20 GL 5-6 A-B,Complete,CONSTRUCTION,,SUES-1 - 19-16,L2 - SubFab Level,FIRE ALARM ,,,,2024-08-01 07:00,2024-08-06 17:00,2024-08-01 07:00,2024-08-10 17:00
CN.AB.AR.7110,FRAMING & DRYWALL - CV ROOM EXIT PASS WAY 20 - SEA1 - GL 18-19 - C-A - L1 - SECAI TOOK OVER FOR ACCELERATION,Complete,CONSTRUCTION,,SUES-1 - 19-16,L1 - Fndn Slab,CV ROOM,,,,2025-10-13 07:00,2025-10-22 17:00,2025-06-27 07:00,2025-06-27 17:00
CN.AB.AR.7120,REMAINING FRAMING & DRYWALL - IT/SECURITY 20 - SEA1 - GL 18-19 - C-A - L1,Complete,CONSTRUCTION,,SUES-1 - 19-16,L1 - Fndn Slab,IT/SECURITY,,,,2024-07-26 07:00,2024-08-01 17:00,2024-07-24 07:00,2024-08-01 17:00
CN.AB.AR.7130,FRAMING & DRYWALL - SWB-1- MCC RM - GL 18-21 K-N,Complete,CONSTRUCTION,,SUWN-1 - 18-21,L1 - Fndn Slab,MCC RM 1,,,,2024-08-12 07:00,2024-08-16 17:00,2024-08-10 07:00,2024-10-11 10:00
CN.AB.AR.7150,REMAINING DRYWALL & FINISHES - SWB-1- FIRE ALARM 3 - GL 19-20 K-N - L1,Complete,CONSTRUCTION,,SUWN-1 - 18-21,L1 - Fndn Slab,FIRE ALARM ,,,,2024-08-09 07:00,2024-08-22 17:00,2024-07-24 07:00,2024-08-02 17:00
CN.AB.AR.4930,REMAINING DRYWALL & FINISHES  - FIRE ALARM 20  - SEA1 - GL 19-16 - C-A - L3,Complete,CONSTRUCTION,,SUES-1 - 19-16,L3 / Waffle Slab Level,FIRE ALARM ,,,,2024-07-25 07:00,2024-07-30 17:00,2024-07-25 07:00,2024-08-01 17:00
CN.AB.AR.7160,REMAINING DRYWALL & FINISHES  - IT/SECURITY  20  - SEA1 - GL 19-16 - C-A - L3,Complete,CONSTRUCTION,,SUES-1 - 19-16,L3 / Waffle Slab Level,IT/SECURITY,,,,2024-08-09 07:00,2024-08-15 17:00,2024-07-25 07:00,2024-08-05 17:00
CN.SEA5.9850,REMAINING FRAME & DRYWALL - IT/SECURITY 22 - SEA5 FIZ - GL 6-1 - L1(PENDING DRYWALL REMEDY),Complete,CONSTRUCTION,,SUES-5 - 6-1 - FIZ - GL A -E,L1 - Fndn Slab,IT/SECURITY,,,,2024-08-27 07:00,2024-09-04 17:00,2024-08-08 07:00,2024-08-13 17:00
CN.SEA5.10305,REMAINING FRAME & DRYWALL - IT/ SECURITY 1 - GL 3-6 - L1 - K LINE,Complete,CONSTRUCTION,,FIZ 2 / SUWS 5  (GL6-1) - GL J - N - DATA CENTER 1,L1 - Fndn Slab,IT/SECURITY,,,,2024-08-05 07:00,2024-08-12 17:00,2024-08-05 07:00,2024-08-10 17:00
CN.SEA5.1352,REMAINING DRYWALL & FINISHES - IT/SECURITY 22 -SEA5 FIZ - GL 4-5 - L2,Complete,CONSTRUCTION,,SUES-5 - 6-1 - FIZ - GL A -E,L2 - SubFab Level,IT/SECURITY,,,,2024-07-29 07:00,2024-08-02 17:00,2024-07-25 07:00,2024-08-05 17:00
CN.SWA5.L3.220,REMAINING DRYWALL & FINISHES - IT/SECURITY 1 -SWA5 - GL 3-4 - L3,Complete,CONSTRUCTION,,FIZ 2 / SUWS 5  (GL6-1) - GL J - N - DATA CENTER 1,L3 / Waffle Slab Level,IT/SECURITY,,,,2025-04-14 07:00,2025-04-17 17:00,2025-04-14 07:00,2025-04-17 17:00
CN.SWB5.9700,FINISH DRYWALL - GL 33 - L1-L3 - A-B- (PLATFORM AREA),Complete,CONSTRUCTION,,GRIDLINE 33,,GL33 EXTERIOR AREA (SUE) - A-C,SECAI,,,2025-01-06 07:00,2025-02-07 17:00,2025-01-04 07:00,2025-01-20 17:00
CN.SWB5.9730,BERG - FINISH DRYWALL & WATERPROOFING- LEAVEOUT FOR HOIST - GL 33 - L1-L3 - L-M LINE,Complete,CONSTRUCTION,,GRIDLINE 33,GL 33- LEAVEOUTS,GL33 EXTERIOR AREA (SUW) - L-N,BERG,,,2025-01-13 07:00,2025-02-14 17:00,2025-01-13 07:00,2025-07-22 12:00
CN.SWB5.9750,BERG - FINISH DRYWALL & WATERPROOFING - LEAVEOUT FOR SUPER DECK - GL 33 - L1-L3 - L-M LINE,Complete,CONSTRUCTION,,GRIDLINE 33,GL 33- LEAVEOUTS,GL33 EXTERIOR AREA (SUW) - L-N,BERG,,,2025-01-06 07:00,2025-01-30 17:00,2025-01-13 07:00,2025-07-23 12:00
CN.SWB5.8940,REMAINING DRYWALL & FINISHES - FIREALARM 22 - SE PENTHOUSE - GL 3-5 C-D,Complete,CONSTRUCTION,,SOUTH EAST PENTHOUSE,L4 - SUP Roof - FAB Roof,FIRE ALARM ,,,,2024-07-24 07:00,2024-07-29 17:00,2024-07-24 07:00,2024-08-02 17:00
CN.SWB5.2650,REMAINING DRYWALL & FINISHES - FIREALARM 1-SW PENTHOUSE,Complete,CONSTRUCTION,,SOUTH WEST PENTHOUSE,L4 - SUP Roof - FAB Roof,FIRE ALARM ,,,,2024-09-06 07:00,2024-09-12 17:00,2024-08-05 07:00,2024-08-12 17:00
CN.SWA5..2820,REMAINING FRAMING AND 1ST LAYER DRYWALL EXTERIOR - STAIR #20 - 19/D - ALL LEVELS,Complete,CONSTRUCTION,,SUES-1 - 19-16,INTERIOR STAIR TOWER - STAIR #20,,,,,2024-11-05 07:00,2024-11-08 17:00,2024-11-05 07:00,2025-10-09 17:00
CN.SEB3R.3900,REMAINING DRYWALL & FINISHES  - WAFER I/O - SEB3 - GL 25-28 - C-A - L1,Complete,CONSTRUCTION,,SUEN-3 - 25-28,L1 - Fndn Slab,WAFER I/O RM,,,,2024-10-25 07:00,2024-10-29 17:00,2024-08-24 07:00,2024-08-30 17:00
CN.SEB4.3900,"REMAINING FRAMING & DRYWALL, TAPE & FINISH - SEB4 - GL 28-31 - L1 C-A PR RM(PATCH UPTO 12' REQ BY SECAI )",Complete,CONSTRUCTION,,SUEN-4 - 28-31,L1 - Fndn Slab,PR RM,,,,2024-11-01 07:00,2024-11-07 17:00,2024-11-01 07:00,2025-10-03 17:00
CN.AB.AR.3230,"REMAINING FRAMNING, DRYWALL & FINISHES - H2 PURIFER ROOM GL 18-21 K-N",Complete,CONSTRUCTION,,SUWN-1 - 18-21,L1 - Fndn Slab,H2 PURIFIER RM,,,,2024-11-07 07:00,2024-11-12 17:00,2024-11-07 07:00,2024-11-11 17:00
CN.SWA5..3180,REMAINING EXTERIOR FRAMING AND 1ST LAYER DRYWALL - STAIR #21 - 13/D - ALL LEVELS(2 SHIFTS /DAY),Complete,CONSTRUCTION,,SUES-3 - 13-9,INTERIOR STAIR TOWER - STAIR #21 (CLEAN ROOM),,,,,2024-11-16 07:00,2024-11-19 17:00,2024-11-13 07:00,2025-03-03 17:00
CN.SWA5..3280,SECAI - INSTALL INTERIOR DRYWALL - STAIR #22 - 6/D - ALL LEVELS[/DAY],Complete,CONSTRUCTION,,SUES-5 - 6-1 - FIZ - GL A -E,INTERIOR STAIR TOWER - STAIR #22 - DE-SCOPED,,,,,2025-08-16 07:00,2025-08-16 17:00,2025-08-16 07:00,2025-08-16 17:00
CN.SWA5..3350,FRAMING AND 1ST LAYER EXTERIOR DRYWALL & inspect - STAIR #2 - 11/L - ALL LEVELS,Complete,CONSTRUCTION,,SUWS-3 - 12-9,INTERIOR STAIR TOWER - STAIR #2 (CLEAN ROOM),,,,,2024-11-02 07:00,2024-11-07 17:00,2024-10-28 07:00,2024-11-19 07:00
CN.SWA5..3400,REMAINING FRAMING AND 1ST LAYER DRYWALL EXTERIOR & INSPECT - STAIR #3 - 18/L - ALL LEVELS,Complete,CONSTRUCTION,,SUWN-1 - 18-21,INTERIOR STAIR TOWER - STAIR #3,,,,,2024-11-08 07:00,2024-11-12 17:00,2024-11-08 07:00,2025-10-03 17:00
CN.SWA5..3450,REMAINING FRAMING AND 1st DRYWALL EXTERIOR install & INSPECT - STAIR #4 - 23/L - ALL LEVELS [/DAY],Complete,CONSTRUCTION,,SUWN-2 - 21-24,INTERIOR STAIR TOWER - STAIR #4 (CLEAN ROOM),,,,,2025-06-26 07:00,2025-07-01 17:00,2025-04-29 07:00,2025-05-05 17:00
CN.SEA5.10520,IMPACT - COMPLETE REMAINING DRYWALL LEAVEOUTS FOR FIREPROOFING - ELEVATOR 22,Complete,CONSTRUCTION,,SUES-5 - 6-1 - FIZ - GL A -E,,ELEVATOR,,,,2024-09-16 07:00,2024-09-24 17:00,2024-08-22 07:00,2024-08-27 17:00
CN.SEA5.10530,IMPACT - APACHE DEMO DRYWALL & SCRAPE FIREPROOFING SFRM-1 - ELEVATOR 22 - ALL LEVELS,Complete,CONSTRUCTION,,SUES-5 - 6-1 - FIZ - GL A -E,,ELEVATOR,,,,2024-08-26 07:00,2024-09-05 17:00,2024-08-12 07:00,2024-08-15 17:00
CN.SEA5.10560,COMPLETE MECHANICAL ROOM DRYWALL / TAPE & FLOAT - ELEVATOR 22,Complete,CONSTRUCTION,,SUES-5 - 6-1 - FIZ - GL A -E,,ELEVATOR,,,,2024-08-26 07:00,2024-09-05 17:00,2024-08-12 07:00,2024-08-27 17:00
CN.SEA5.10570,IMPACT - DEMO DOOR FRAME & MOBILIZE EQUIPMENT FOR FIREPROOFING - MECHANICAL ROOM - ELEVATOR 22,Complete,CONSTRUCTION,,SUES-5 - 6-1 - FIZ - GL A -E,,ELEVATOR,,,,2024-08-09 07:00,2024-08-15 17:00,2024-08-05 07:00,2024-08-06 17:00
CN.SEA5.10590,IMPACT - REINSTALL TEMP DOOR FRAMES - MECHANICAL ROOM - ELEVATOR 22,Complete,CONSTRUCTION,,SUES-5 - 6-1 - FIZ - GL A -E,,ELEVATOR,,,,2024-08-26 07:00,2024-09-05 17:00,2024-08-12 07:00,2024-08-27 17:00
CN.SEB5.9190,IMPACT - COMPLETE DRYWALL AT FIREPROOFING LEAVEOUTS - ELEVATOR 18,Complete,CONSTRUCTION,,SUEN-5 - 31-33,,ELEVATOR,BAKER,,,2024-09-24 07:00,2024-10-03 17:00,2024-09-19 07:00,2024-09-25 17:00
CN.SWA5..3650,DEMO DRYWALL FOR SANDBLASTING - STAIR #20 - 19/D - ALL LEVELS,Complete,CONSTRUCTION,,SUES-1 - 19-16,INTERIOR STAIR TOWER - STAIR #20,,,,,2024-09-06 07:00,2024-09-06 17:00,2024-08-31 07:00,2024-09-02 17:00
CN.SWA5..3660,DEMO DRYWALL FOR SANDBLASTING - STAIR #21 - 13/D - ALL LEVELS,Complete,CONSTRUCTION,,SUES-3 - 13-9,INTERIOR STAIR TOWER - STAIR #21 (CLEAN ROOM),,,,,2024-09-06 07:00,2024-09-06 17:00,2024-09-03 07:00,2024-09-03 17:00
CN.SWA5.9570,IMPACT - COORDINATE & COMPLETE DRYWALL DEMO FOR STUB COLUMN REPAIR - GL 3 - L-N - L2,Complete,CONSTRUCTION,,FIZ 2 / SUWS 5  (GL6-1) - GL J - N - DATA CENTER 1,L2 - SubFab Level,,BAKER,,,2024-08-29 07:00,2024-09-04 17:00,2024-08-08 07:00,2024-08-20 17:00
CN.SEB5.9210,INSTALL FRAMING/DRYWALL/TAPE+FLOAT - MECHANICAL ROOM - ELEVATOR 18 (MK MARLOW),Complete,CONSTRUCTION,,SUEN-5 - 31-33,,ELEVATOR,BAKER,,,2024-09-13 07:00,2024-10-03 17:00,2024-08-12 07:00,2024-08-23 17:00
CN.SEB5.9230,IMPACT - REMDIATE DRYWALL & CEILING DAMAGED DUE TO WATER INTRUCTION - MECHANICAL ROOM - ELEVATOR 18,Complete,CONSTRUCTION,,SUEN-5 - 31-33,,ELEVATOR,BAKER,,,2024-09-23 07:00,2024-10-15 17:00,2024-09-18 07:00,2024-10-03 17:00
CN.SEA5.10640,"FRAMING, DRYWALL, FIRE CAULKING - SHAFT LINER AND FRONTS- ELEVATOR 22 - 7 per front",Complete,CONSTRUCTION,,SUES-5 - 6-1 - FIZ - GL A -E,,ELEVATOR,,,,2025-07-23 07:00,2025-09-17 17:00,2025-07-11 07:00,2025-08-18 08:00
CN.SEA5.10660,"FINAL TURNOVER - SHAFT, DOOR FRONTS, MECHANICAL ROOM - ELEVATOR 22",Not Started,CONSTRUCTION,,SUES-5 - 6-1 - FIZ - GL A -E,,ELEVATOR,,,,2026-01-26 17:00,2026-01-26 17:00,,
CN.SWB5.10040,SECAI - AWAIT ELEVATOR COMPLETION & TURNOVER FOR HSS DOOR OPENINGS - 8/13,Complete,CONSTRUCTION,,SUWN-5 - 30-33,,ELEVATOR,BAKER,,,2024-11-21 07:00,2025-01-13 17:00,2024-11-21 07:00,2025-07-16 17:00
CN.SWB5.10070,FRAMING AND DRYWALL AT FIREPROOFING LEAVEOUT - LVL 4 - ELEVATOR 5,Complete,CONSTRUCTION,,SUWN-5 - 30-33,,ELEVATOR,BAKER,,,2024-10-21 07:00,2024-10-29 17:00,2024-10-21 07:00,2024-10-24 17:00
CN.SWB5.10100,"FINAL TURNOVER - DOOR FRONTS, MECHANICAL ROOM (WITH PERM DOOR) - ELEVATOR 5",Not Started,CONSTRUCTION,,SUWN-5 - 30-33,,ELEVATOR,BAKER,,,2025-11-24 17:00,2025-11-24 17:00,,
CN.SWB5.10120,PREP & INSTALL PERMANENT DOOR & FRAME - MECHANICAL ROOM - FAB110504A - ELEVATOR 5,Active,CONSTRUCTION,,SUWN-5 - 30-33,,ELEVATOR,BAKER,,,2024-09-27 07:00,2024-11-08 17:00,2024-10-01 07:00,
CN.SWB5.10130,"COMPLETE REMAINING FRAMING, DRYWALL, FIRE CAULKING - DOOR FRONTS - ELEVATOR 5 - LVL1 SECAI TOOK OVER",Complete,CONSTRUCTION,,SUWN-5 - 30-33,,ELEVATOR,BAKER,,,2025-09-04 07:00,2025-09-24 17:00,2025-08-26 07:00,2025-09-29 07:00
CN.SWB5.10140,TAPE & FLOAT -SHAFT & DOOR FRONTS - ELEVATOR 5,Not Started,CONSTRUCTION,,SUWN-5 - 30-33,,ELEVATOR,BAKER,,,2025-12-15 07:00,2025-12-19 17:00,,
CN.SEB55330,"FINAL TURNOVER - DOOR FRONTS, MECHANICAL ROOM (WITH PERM DOOR) - ELEVATOR 19",Not Started,CONSTRUCTION,,SUEN-4 - 28-31,,ELEVATOR,BAKER,,,2025-12-10 17:00,2025-12-10 17:00,,
CN.AB.AR.7620,INSTALL FRAMING/DRYWALL/TAPE+FLOAT - MECHANICAL ROOM - ELEVATOR 01,Complete,CONSTRUCTION,,FIZ 2 / SUWS 5  (GL6-1) - GL J - N - DATA CENTER 1,,ELEVATOR,BAKER,,,2025-06-30 07:00,2025-06-30 17:00,2025-06-30 07:00,2025-06-30 17:00
CN.AB.AR.7730,INSTALL FRAMING/DRYWALL/TAPE+FLOAT - MECHANICAL ROOM - ELEVATOR 01A,Complete,CONSTRUCTION,,FIZ 2 / SUWS 5  (GL6-1) - GL J - N - DATA CENTER 1,,ELEVATOR,BAKER,,,2025-01-06 07:00,2025-01-24 17:00,2025-01-06 07:00,2025-02-15 17:00
CN.SWA5..3880,REMOVE CONTAINMENT & SCAFFOLDING MODIFICATION FOR DRYWALL - STAIR #4 - 23/L - ALL LEVELS,Complete,CONSTRUCTION,,SUWN-2 - 21-24,INTERIOR STAIR TOWER - STAIR #4 (CLEAN ROOM),,,,,2025-06-21 07:00,2025-06-25 17:00,2025-04-19 07:00,2025-04-28 17:00
STAIR.1370,"IMPACT - NEED RAISED ACCESS FLOOR TO BE COMPLETE - FIZ - LEVEL 02 #46, #56, #57-57/56 Completed. Pending drywall for 46",Complete,CONSTRUCTION,,INTERIOR STAIRS,L2 - SubFab Level,FIZ,,,,2024-09-20 07:00,2024-09-26 17:00,2024-06-11 07:00,2025-08-08 17:00
CN.SEB1.10170,"IMPACT - CCD FOR DOOR MODIFICATION - VOC ROOM SUPPORT STEEL, BENT PLATE & DECKING - GL 17-18 - L LINE (DS AREA)",Complete,CONSTRUCTION,,SUWS-1 - 18-15,EXTERIOR SKIN,,PATRIOT,INSULATED METAL PANELS,,2024-09-13 07:00,2024-09-26 17:00,2024-09-03 07:00,2024-10-12 17:00
CN.SWB5.10230,FRAMING AND DRYWALL AT FIREPROOFING LEAVEOUT - LVL 4 - ELEVATOR 18,Complete,CONSTRUCTION,,SUWN-5 - 30-33,,ELEVATOR,BAKER,,,2024-10-25 07:00,2024-11-04 17:00,2024-10-25 07:00,2024-11-01 17:00
CN.SWA5..4120,INSTALL- 2ND LAYER EXTERIOR DRYWALL & inspect - STAIR #2 - 11/L - ALL LEVELS,Complete,CONSTRUCTION,,SUWS-3 - 12-9,INTERIOR STAIR TOWER - STAIR #2 (CLEAN ROOM),,,,,2024-11-12 07:00,2024-11-22 17:00,2024-11-20 07:00,2024-12-02 16:00
CN.SWA5..4240,INSPECT - EXTERIOR 1ST LAYER DRYWALL - STAIR #21 - 13/D - ALL LEVELS,Complete,CONSTRUCTION,,SUES-3 - 13-9,INTERIOR STAIR TOWER - STAIR #21 (CLEAN ROOM),,,,,2024-11-18 07:00,2024-11-18 17:00,2024-11-18 07:00,2025-04-07 17:00
CN.SWA5..4250,INSTALL -  EXTERIOR 2ND  LAYER DRYWALL & INSPECT - STAIR #21 - 13/D - ALL LEVELS,Complete,CONSTRUCTION,,SUES-3 - 13-9,INTERIOR STAIR TOWER - STAIR #21 (CLEAN ROOM),,,,,2024-12-02 07:00,2024-12-04 17:00,2024-12-02 00:00,2025-05-05 17:00
CN.SWA5..4350,INSPECT - 1ST LAYER DRYWALL EXTERIOR & inspect  - STAIR #20 - 19/D - ALL LEVELS,Complete,CONSTRUCTION,,SUES-1 - 19-16,INTERIOR STAIR TOWER - STAIR #20,,,,,2024-12-05 07:00,2024-12-05 17:00,2024-11-11 07:00,2025-09-30 17:00
CN.SWA5..4360,INSTALL - 2ND  LAYER DRYWALL EXTERIOR & inspect - STAIR #20 - 19/D - ALL LEVELS,Complete,CONSTRUCTION,,SUES-1 - 19-16,INTERIOR STAIR TOWER - STAIR #20,,,,,2024-11-20 07:00,2024-11-23 17:00,2024-11-20 07:00,2025-10-07 17:00
CN.SWA5..4460,INSTALL - 2ND  LAYER DRYWALL EXTERIOR & INSPECT - STAIR #3 - 18/L - ALL LEVELS,Complete,CONSTRUCTION,,SUWN-1 - 18-21,INTERIOR STAIR TOWER - STAIR #3,,,,,2024-11-21 07:00,2024-11-27 17:00,2024-11-25 07:00,2025-10-10 17:00
CN.SWA5..4670,INSTALL - 2ND LAYER DRYWALL EXTERIOR & inspect  - STAIR #4 - 23/L - ALL LEVELS [/DAY],Complete,CONSTRUCTION,,SUWN-2 - 21-24,INTERIOR STAIR TOWER - STAIR #4 (CLEAN ROOM),,,,,2025-07-02 07:00,2025-07-08 17:00,2025-05-20 07:00,2025-05-30 17:00
CN.SWA5..4840,INSTALL - 2ND LAYER DRYWALL EXTERIOR & inspect  - STAIR #19 - 23/L - ALL LEVELS(),Complete,CONSTRUCTION,,SUEN-3 - 25-28,INTERIOR STAIR TOWER - STAIR #19 (CLEAN ROOM) - DE-SCOPED,,,,,2025-09-03 07:00,2025-09-08 17:00,2025-06-27 07:00,2025-06-27 17:00
CN.SWA5..5210,SECAI - INSTALL INTERIOR DRYWALL - STAIR #1 - 5/L - ALL LEVELS - SECAI TOOK OVER FOR ACCELRATION,Complete,CONSTRUCTION,,FIZ 2 / SUWS 5  (GL6-1) - GL J - N - DATA CENTER 1,INTERIOR STAIR TOWER - STAIR #1 - DE-SCOPED,,,,,2025-06-27 07:00,2025-06-27 17:00,2025-06-27 07:00,2025-06-27 17:00
CN.SWA5..5220,INSTALL- REMAINING DRYWALL EXTERIOR - STAIR #1 - LVL 4 - SECAI TOOK OVER FOR ACCELRATION,Complete,CONSTRUCTION,,FIZ 2 / SUWS 5  (GL6-1) - GL J - N - DATA CENTER 1,INTERIOR STAIR TOWER - STAIR #1 - DE-SCOPED,,,,,2025-06-24 07:00,2025-06-27 17:00,2025-06-27 07:00,2025-06-27 17:00
CN.SWA5..5230,INSPECT - REMAINING DRYWALL EXTERIOR - STAIR #1 - LVL 4 - SECAI TOOK OVER FOR ACCELRATION,Complete,CONSTRUCTION,,FIZ 2 / SUWS 5  (GL6-1) - GL J - N - DATA CENTER 1,INTERIOR STAIR TOWER - STAIR #1 - DE-SCOPED,,,,,2025-06-27 07:00,2025-06-27 17:00,2025-06-27 07:00,2025-06-27 17:00
CN.SWA5..5370,INSTALL - REMAINING DRYWALL EXTERIOR - STAIR #22 -  LVL 4,Complete,CONSTRUCTION,,SUES-5 - 6-1 - FIZ - GL A -E,INTERIOR STAIR TOWER - STAIR #22 - DE-SCOPED,,,,,2025-08-18 07:00,2025-08-18 17:00,2025-08-18 07:00,2025-08-18 17:00
CN.SWA5..5380,INSPECT - REMAINING DRYWALL EXTERIOR  - STAIR #22 - LVL 4,Complete,CONSTRUCTION,,SUES-5 - 6-1 - FIZ - GL A -E,INTERIOR STAIR TOWER - STAIR #22 - DE-SCOPED,,,,,2025-08-13 07:00,2025-08-13 17:00,2025-08-13 07:00,2025-08-13 17:00
CN.BB51.ST.2892,INSPECT -  EXTERIOR FRAMING &  DRYWALL (1-LAYERS) - GL 33 - STAIR 5 - K-L,Complete,CONSTRUCTION,,GRIDLINE 33,GL 33 STAIR 5 (WEST),STAIR 5 (WEST) - K-L,BERG,,,2025-02-03 07:00,2025-02-03 17:00,2025-02-01 07:00,2025-02-01 17:00
CN.BB51.ST.2942,SCAFFOLDING MODIFICATION FOR DRYWALL & HANDRAIL INSTALL - GL 33 - STAIR 5 - K-L(2 SHIFTS),Complete,CONSTRUCTION,,GRIDLINE 33,GL 33 STAIR 5 (WEST),STAIR 5 (WEST) - K-L,BERG,,,2024-10-31 07:00,2024-11-08 17:00,2024-10-30 07:00,2024-11-05 17:00
CN.BB51.ST.2992,INSTALL & INSPECT -  DRYWALL - STAIR 5 INTERIOR SHAFT 2nd-3rd layer - GL 33 - STAIR 5 - K-L(),Complete,CONSTRUCTION,,GRIDLINE 33,GL 33 STAIR 5 (WEST),STAIR 5 (WEST) - K-L,BERG,,,2025-08-14 07:00,2025-09-04 17:00,2025-08-14 07:00,2025-09-04 17:00
CN.BB51.ST.3052,BERG - EXTERIOR DRYWALL & INSPECT - GL 33 - STAIR 18 - C-C.5,Complete,CONSTRUCTION,,GRIDLINE 33,GL 33 STAIR 18 (EAST),STAIR 18 (EAST) - C-D,BERG,,,2025-08-01 07:00,2025-08-05 17:00,2025-07-16 07:00,2025-08-14 07:00
CN.SWB5.10500,IMPACT - FRAMING AND DRYWALL DAMAGE BY SECAI - LVL 2 - ELEVATOR 18,Complete,CONSTRUCTION,,SUWN-5 - 30-33,,ELEVATOR,BAKER,,,2024-10-01 07:00,2024-10-01 17:00,2024-10-01 07:00,2025-01-03 17:00
CN.SWB5.10510,IMPACT - DOOR OPENING FIX FOR SECAI ELEVATOR EQUIPMENT - MECHANICAL ROOM - FAB110504A - ELEVATOR 5,Active,CONSTRUCTION,,SUWN-5 - 30-33,,ELEVATOR,BAKER,,,2024-09-27 07:00,2024-11-08 17:00,2024-10-01 07:00,
INT.DH.2210,IMPACT - SECAI returned the submittal for the doors saying to revise to the new DRB.,Complete,CONSTRUCTION,,Doors & Hardware - INTERIOR,DOORS & HARDWARE INTERIOR,"Int. Doors Filter 1, 2, 3",DOORS AND HARDWARE,,,2025-01-13 07:00,2025-01-13 17:00,2024-07-08 07:00,2024-07-08 17:00
INT.DH.2220,IMPACT - Meeting: SECAI stated they wanted to have 2 weeks for design develop. & new door schedule would be issued,Complete,CONSTRUCTION,,Doors & Hardware - INTERIOR,DOORS & HARDWARE INTERIOR,"Int. Doors Filter 1, 2, 3",DOORS AND HARDWARE,,,2025-01-13 07:00,2025-01-14 17:00,2024-07-09 07:00,2024-07-10 17:00
INT.DH.2230,IMPACT - Notice of Delay of Door Procurement was sent to SECAI,Complete,CONSTRUCTION,,Doors & Hardware - INTERIOR,DOORS & HARDWARE INTERIOR,"Int. Doors Filter 1, 2, 3",DOORS AND HARDWARE,,,2025-01-13 07:00,2025-01-14 17:00,2024-07-11 07:00,2024-07-12 17:00
INT.DH.2240,IMPACT - Yates was provided a Door sch. that we were to complete the submitt. based on and for C&B to review.,Complete,CONSTRUCTION,,Doors & Hardware - INTERIOR,DOORS & HARDWARE INTERIOR,"Int. Doors Filter 1, 2, 3",DOORS AND HARDWARE,,,2025-01-13 07:00,2025-01-27 17:00,2024-07-15 07:00,2024-07-26 17:00
INT.DH.2250,IMPACT - The review of all doors was completed by both C&B and Jacobs/SAMOO,Complete,CONSTRUCTION,,Doors & Hardware - INTERIOR,DOORS & HARDWARE INTERIOR,"Int. Doors Filter 1, 2, 3",DOORS AND HARDWARE,,,2025-01-13 07:00,2025-02-14 17:00,2024-07-29 07:00,2024-08-28 17:00
INT.DH.2260,"IMPACT - Interior Door, Frame and Hardware Product Data - PACKAGE 1 (REV 0) Submitted - FILTER 1",Complete,CONSTRUCTION,,Doors & Hardware - INTERIOR,DOORS & HARDWARE INTERIOR,"Int. Doors Filter 1, 2, 3",DOORS AND HARDWARE,,,2025-01-13 07:00,2025-01-14 17:00,2024-08-29 07:00,2024-08-30 17:00
INT.DH.2270,"IMPACT - Int. Door, Frame & Hardware Product Data - Resubm. on meetings with Jacobs/SAMOO PACK 1 (REV 1) - FILTER 1",Complete,CONSTRUCTION,,Doors & Hardware - INTERIOR,DOORS & HARDWARE INTERIOR,"Int. Doors Filter 1, 2, 3",DOORS AND HARDWARE,,,2025-01-13 07:00,2025-01-13 17:00,2024-09-02 07:00,2024-09-05 17:00
INT.DH.2280,"IMPACT - Int. Door, Frame & Hardware Product Data - Resubm. Revise  Jacobs Review PACK 1 (REV 1) - FILTER 1",Complete,CONSTRUCTION,,Doors & Hardware - INTERIOR,DOORS & HARDWARE INTERIOR,"Int. Doors Filter 1, 2, 3",DOORS AND HARDWARE,,,2025-01-13 07:00,2025-01-13 17:00,2024-09-09 07:00,2024-09-09 17:00
INT.DH.2290,"IMPACT - Interior Door, Frame and Hardware Product Data  Submitted - Filter 3",Complete,CONSTRUCTION,,Doors & Hardware - INTERIOR,DOORS & HARDWARE INTERIOR,"Int. Doors Filter 1, 2, 3",DOORS AND HARDWARE,,,2025-01-13 07:00,2025-01-16 17:00,2024-09-06 07:00,2024-09-11 17:00
INT.DH.2300,"IMPACT - Interior Door, Frame and Hardware Product Data  Submitted - Filter 2",Complete,CONSTRUCTION,,Doors & Hardware - INTERIOR,DOORS & HARDWARE INTERIOR,"Int. Doors Filter 1, 2, 3",DOORS AND HARDWARE,,,2025-01-13 07:00,2025-01-16 17:00,2024-09-06 07:00,2024-09-11 17:00
INT.DH.2310,"IMPACT - Int. Door, Frame and Hardware Product Data)  Resubmit. - PACKAGE 1 (REV 3 - FILTER 1",Complete,CONSTRUCTION,,Doors & Hardware - INTERIOR,DOORS & HARDWARE INTERIOR,"Int. Doors Filter 1, 2, 3",DOORS AND HARDWARE,,,2025-01-13 07:00,2025-01-15 17:00,2024-09-10 07:00,2024-09-13 17:00
INT.DH.2320,"IMPACT - Interior Door, Frame and Hardware Product Data - Remaining Doors REV 0 - Submitted",Complete,CONSTRUCTION,,Doors & Hardware - INTERIOR,DOORS & HARDWARE INTERIOR,"Int. Doors Filter 1, 2, 3",DOORS AND HARDWARE,,,2025-01-13 07:00,2025-01-17 17:00,2024-09-12 07:00,2024-09-17 17:00
INT.DH.2330,"IMPACT - CCD #473 - Cook and Boardman - HM Doors, Frames, and Hardware for Filters 1-3 was submitted to SECAI",Complete,CONSTRUCTION,,Doors & Hardware - INTERIOR,DOORS & HARDWARE INTERIOR,"Int. Doors Filter 1, 2, 3",DOORS AND HARDWARE,,,2025-01-13 07:00,2025-01-15 17:00,2024-09-16 07:00,2024-09-19 17:00
INT.DH.2340,"IMPACT - Int. Door, Frame & Hardware Product Data - Remaining Doors REV 0  Returned Revise and Resubmit",Complete,CONSTRUCTION,,Doors & Hardware - INTERIOR,DOORS & HARDWARE INTERIOR,"Int. Doors Filter 1, 2, 3",DOORS AND HARDWARE,,,2025-01-13 07:00,2025-01-20 17:00,2024-09-18 07:00,2024-09-26 17:00
INT.DH.2350,"IMPACT - Int. Door, Frame and Hardware Product Data  Returned Approved as Noted - PACKAGE 1 (REV 3) - FILTER 1",Complete,CONSTRUCTION,,Doors & Hardware - INTERIOR,DOORS & HARDWARE INTERIOR,"Int. Doors Filter 1, 2, 3",DOORS AND HARDWARE,,,2025-01-13 07:00,2025-01-29 17:00,2024-09-16 07:00,2024-10-03 17:00
INT.DH.2360,"IMPACT - Int. Door, Frame and Hardware Product Data - Remaining Doors REV 1  Submitted",Complete,CONSTRUCTION,,Doors & Hardware - INTERIOR,DOORS & HARDWARE INTERIOR,"Int. Doors Filter 1, 2, 3",DOORS AND HARDWARE,,,2025-01-13 07:00,2025-01-16 17:00,2024-09-27 07:00,2024-10-01 17:00
INT.DH.2370,"IMPACT - Int. Door, Frame and Hardware Product Data  Returned Approved as Noted - Filter 3",Complete,CONSTRUCTION,,Doors & Hardware - INTERIOR,DOORS & HARDWARE INTERIOR,"Int. Doors Filter 1, 2, 3",DOORS AND HARDWARE,,,2025-01-13 07:00,2025-02-04 17:00,2024-09-12 07:00,2024-10-04 17:00
INT.DH.2380,"IMPACT - Int. Door, Frame and Hardware Product Data  Returned Approved as Noted - Filter 2",Complete,CONSTRUCTION,,Doors & Hardware - INTERIOR,DOORS & HARDWARE INTERIOR,"Int. Doors Filter 1, 2, 3",DOORS AND HARDWARE,,,2025-01-13 07:00,2025-02-04 17:00,2024-09-12 07:00,2024-10-04 17:00
INT.DH.2390,"IMPACT - Door, Frame and Hardware Product Data - Remaining Doors REV 1  Returned Approved as Noted",Complete,CONSTRUCTION,,Doors & Hardware - INTERIOR,DOORS & HARDWARE INTERIOR,"Int. Doors Filter 1, 2, 3",DOORS AND HARDWARE,,,2025-01-13 07:00,2025-01-23 17:00,2024-10-02 07:00,2024-10-14 17:00
INT.DH.2400,IMPACT - Submit. clarif. sent to SECAI. Prev. appr. items were now unapp. in the latest returned submit (Int. frames),Complete,CONSTRUCTION,,Doors & Hardware - INTERIOR,DOORS & HARDWARE INTERIOR,"Int. Doors Filter 1, 2, 3",DOORS AND HARDWARE,,,2025-01-13 07:00,2025-01-13 17:00,2024-10-18 07:00,2024-10-30 17:00
INT.DH.2420,"IMPACT - CCD #473 - Cook and Boardman - HM Doors, Frames, and Hardware for Filters 1-3 was executed",Complete,CONSTRUCTION,,Doors & Hardware - INTERIOR,DOORS & HARDWARE INTERIOR,"Int. Doors Filter 1, 2, 3",DOORS AND HARDWARE,,,2025-01-13 07:00,2025-02-26 17:00,2024-09-20 07:00,2024-11-04 17:00
INT.DH.2430,IMPACT - Yates meeting with SECAI & SAS to review door mockup & inst.; Yates received app. to begin frame inst,Complete,CONSTRUCTION,,Doors & Hardware - INTERIOR,DOORS & HARDWARE INTERIOR,"Int. Doors Filter 1, 2, 3",DOORS AND HARDWARE,,,2025-01-13 07:00,2025-01-13 17:00,2024-11-14 07:00,2024-11-14 17:00
INT.DH.2440,"IMPACT - CCD #538 - Cook & Boardman - HM Doors, Frames, & HW for remaining doors submitted to SECAI",Complete,CONSTRUCTION,,Doors & Hardware - INTERIOR,DOORS & HARDWARE INTERIOR,"Int. Doors Filter 1, 2, 3",DOORS AND HARDWARE,,,2025-01-13 07:00,2025-01-30 17:00,2024-11-01 07:00,2024-11-19 17:00
INT.DH.2450,"IMPACT - CCD #538 - Cook and Boardman - HM Doors, Frames, and Hardware for remaining doors was executed",Complete,CONSTRUCTION,,Doors & Hardware - INTERIOR,DOORS & HARDWARE INTERIOR,"Int. Doors Filter 1, 2, 3",DOORS AND HARDWARE,,,2025-01-13 07:00,2025-03-21 17:00,2024-11-26 07:00,2024-11-26 17:00
INT.DH.2460,IMPACT - Procurement - Damaged Doors,Complete,CONSTRUCTION,,Doors & Hardware - INTERIOR,DOORS & HARDWARE INTERIOR,"Int. Doors Filter 1, 2, 3",DOORS AND HARDWARE,,,2025-01-13 07:00,2025-04-25 17:00,2024-10-25 07:00,2025-05-05 07:00
INT.DH.2470,IMPACT - Procurement - Replacement Doors in Filters 1-3 - ALL DOOR FRAMES TO BE ONSITE 2/20,Complete,CONSTRUCTION,,Doors & Hardware - INTERIOR,DOORS & HARDWARE INTERIOR,"Int. Doors Filter 1, 2, 3",DOORS AND HARDWARE,,,2025-01-13 07:00,2025-04-25 17:00,2024-11-11 07:00,2025-02-05 07:00
INT.DH.2480,IMPACT - Procurement - Replacement Doors (Remaining Doors) - ALL DOORS TO BE ONSITE 3/26,Complete,CONSTRUCTION,,Doors & Hardware - INTERIOR,L1 - Fndn Slab,"Int. Doors Filter 1, 2, 3",DOORS AND HARDWARE,,,2025-01-13 07:00,2025-04-25 17:00,2024-12-06 07:00,2025-03-26 07:00
INT.DH.2490,IMPACT - DOOR COATING MOCK UP APPROVAL,Complete,CONSTRUCTION,,Doors & Hardware - INTERIOR,DOORS & HARDWARE INTERIOR,"Int. Doors Filter 1, 2, 3",DOORS AND HARDWARE,,,2025-01-13 07:00,2025-04-25 17:00,2024-10-25 07:00,2025-01-17 07:00
CN.SWB5.10620,REMAINING DRYWALL & FINISHES - DUCTSHAFTS/SE PENTHOUSE,Complete,CONSTRUCTION,,SOUTH EAST PENTHOUSE,L4 - SUP Roof - FAB Roof,,,,,2024-11-22 07:00,2024-11-27 17:00,2024-11-22 07:00,2025-01-06 17:00
CN.AB.AR.7880,FINISH DRYWALL AND FINISHES GL 12 - GL 12-15 - L-N - L1(need scaffold) - SECAI TOOK OVER ACCELERATION,Complete,CONSTRUCTION,,SUWS-2 - 15-12,L1 - Fndn Slab,WASTE WATER TANK RM,,,,2025-06-10 07:00,2025-06-10 07:00,2025-06-10 07:00,2025-06-10 07:00
CN.SWB4.6820,REMAINING FRAMING & DRYWALL - GL M-N/30,Complete,CONSTRUCTION,,SUWN-4 - 27-30,L2 - SubFab Level,BATT RM 3,,,,2025-09-02 07:00,2025-09-05 17:00,2025-09-02 07:00,2025-09-05 17:00
CN.SWA5.R.1180,INSTALL - ALL REMAINING FRAMING &  DRYWALLS - SUW - LEVEL 1,Active,CONSTRUCTION,,Support Building - West,L1 - Fndn Slab,,,,,2025-08-25 07:00,2025-10-06 17:00,2025-05-05 07:00,
CN.SWA5.9610,INSTALL- ALL REMAINING FRAMING & DRYWALL - SUW - LEVEL 2,Active,CONSTRUCTION,,Support Building - West,L2 - SubFab Level,,,,,2025-07-14 07:00,2025-08-22 17:00,2025-05-05 07:00,
CN.AB.AR.7960,INSTALL -  ALL REMAINING FRAMING &  DRYWALL - SUE - LEVEL3,Active,CONSTRUCTION,,Support Building - East,L3 / Waffle Slab Level,,,,,2024-12-16 07:00,2024-12-20 17:00,2024-12-09 17:00,
CN.SWA5.L3.290,INSTALL- ALL REMAINING FRAMING & DRYWALL - SUW- LEVEL 3,Complete,CONSTRUCTION,,Support Building - West,L3 / Waffle Slab Level,,,,,2024-12-16 07:00,2025-02-06 17:00,2024-12-09 07:00,2025-06-06 17:00
CN.AB.AR.7260,INSTALL - ALL REMAINING FRAMING & DRYWALL - SUE - LEVEL 1,Active,CONSTRUCTION,,Support Building - East,L1 - Fndn Slab,,,,,2025-08-01 07:00,2025-09-12 17:00,2025-05-05 07:00,
CN.SWB5.9530,INSTALL - ALL REMAINING FRAMING & DRYWALL - SUE - LEVEL 2,Active,CONSTRUCTION,,Support Building - East,L2 - SubFab Level,,,,,2025-07-03 07:00,2025-07-31 17:00,2025-04-07 07:00,
CN.SWB5.6990,INSTALL STUDD FRAMING FOR DRYWALL - STAIR #50 - (DESCOPE),Complete,CONSTRUCTION,,SUWN-4 - 27-30,INTERIOR STAIR TOWER - STAIR #50 - DE-SCOPED,,,,,2024-11-04 07:00,2024-11-19 17:00,2024-11-04 07:00,2025-06-27 17:00
INT.DH.2500,IMPACT - Frame installation on HOLD until SECAI/SAS provides with an approved inspection plan forward for remidiation,Complete,CONSTRUCTION,,Doors & Hardware - INTERIOR,DOORS & HARDWARE INTERIOR,"Int. Doors Filter 1, 2, 3",DOORS AND HARDWARE,,,2025-01-13 07:00,2025-04-25 17:00,2024-12-05 07:00,2024-12-12 17:00
CN.SEB1.10500,CEILING FRAMING & DRYWALL - BATHROOM - GL 19-22 - C-A - L1,Complete,CONSTRUCTION,,SUEN-1 - 19-22,L1 - Fndn Slab,BATHROOM,,,,2025-06-10 07:00,2025-06-16 17:00,2025-06-10 07:00,2025-09-04 17:00
CN.SWA5.9630,CEILING FRAMING & DRYWALL - BATHROOM - GL 3 - M-N - L1,Complete,CONSTRUCTION,,FIZ 2 / SUWS 5  (GL6-1) - GL J - N - DATA CENTER 1,L1 - Fndn Slab,BATHROOM,,,,2025-06-18 07:00,2025-06-24 17:00,2025-06-18 07:00,2025-07-18 17:00
STAIR.2620,IMPACT - IOCC FOR DRYWALL DEMO & DEMO DRYWALL STAIR #64 - SUW - 18-K - LEVEL 04,Complete,CONSTRUCTION,,INTERIOR STAIRS,L4 - SUP Roof - FAB Roof,SUW - SUPPORT WEST,,,,2025-01-29 07:00,2025-02-05 17:00,2025-01-29 07:00,2025-02-14 17:00
INT.DH.2510,IMPACT - Procurement - Sansblast/Prime/Paint Ext.Door Frames - Delivery,Complete,CONSTRUCTION,,Doors & Hardware - INTERIOR,DOORS & HARDWARE INTERIOR,"Int. Doors Filter 1, 2, 3",DOORS AND HARDWARE,,,2025-01-13 07:00,2025-04-25 17:00,2024-12-06 07:00,2025-03-20 07:00
CN.SWB1..4620,FRAMING & DRYWALL - H2SO4 & NAOH TRANSFER - GL 18-21 K-N - L3,Complete,CONSTRUCTION,,SUWN-1 - 18-21,L3 / Waffle Slab Level,H2O4 & NAOH ,,,,2025-08-25 07:00,2025-08-26 17:00,2025-08-25 07:00,2025-08-26 17:00
INT.DH.2520,IMPACT - IOCC 1428 - 4 HM Frames Fire rated - Fabrication 10 weeks,Complete,CONSTRUCTION,,Doors & Hardware - INTERIOR,DOORS & HARDWARE INTERIOR,"Int. Doors Filter 1, 2, 3",DOORS AND HARDWARE,,,2025-04-04 07:00,2025-06-27 17:00,2025-03-18 07:00,2025-04-10 07:00
CN.SWA5..5860,IMPACT - NCR#0268 - DRYWALL REWORK NEEDED - STAIR #2 & STAIR #3 - 18/L - ALL LEVELS,Complete,CONSTRUCTION,,SUWN-1 - 18-21,INTERIOR STAIR TOWER - STAIR #3,,,,,2025-03-24 07:00,2025-03-27 17:00,2025-04-07 07:00,2025-06-18 17:00
CN.SWA5..5870,IMPACT - NCR#0267 Drywall rework Needed - Interior STAIR 21 & STAIR #20 - 19/D - ALL LEVELS,Complete,CONSTRUCTION,,SUES-1 - 19-16,INTERIOR STAIR TOWER - STAIR #20,,,,,2024-11-20 07:00,2024-11-23 17:00,2025-04-02 07:00,2025-06-18 17:00
CN.SWA4.7360,IMPACT - MKM FRAMING & SHEATHING COLD FRAME & INSULATION - N30-31 TRESTLE B INFILL - EXTERIOR,Complete,CONSTRUCTION,,SUWN-5 - 30-33,EXTERIOR SKIN,,KOVACH,INSULATED METAL PANELS,,2025-10-01 07:00,2025-10-28 17:00,2025-09-18 07:00,2025-10-10 13:00
INT.DH.2530,"IMPACT - SECAI directive to hold up doors until 5/15 - LVL 2- FAB120112A, FAB120201A, FAB126109A, FAB126401B",Complete,CONSTRUCTION,,Doors & Hardware - INTERIOR,DOORS & HARDWARE INTERIOR,"Int. Doors Filter 1, 2, 3",DOORS AND HARDWARE,,,2025-01-13 07:00,2025-04-25 17:00,2025-04-21 07:00,2025-05-16 17:00
INT.DH.2540,IMPACT - SECAI directive to hold up doors until 5/25 - LVL 3- FAB130502B -,Complete,CONSTRUCTION,,Doors & Hardware - INTERIOR,DOORS & HARDWARE INTERIOR,"Int. Doors Filter 1, 2, 3",DOORS AND HARDWARE,,,2025-01-13 07:00,2025-04-25 17:00,2025-04-15 07:00,2025-05-30 07:00
INT.DH.2550,"IMPACT - SECAI directive to hold up doors until 6/20 - LVL 1- FAB110101A, FAB110402C, FAB110514A,FAB110514B, FAB116202D,",Complete,CONSTRUCTION,,Doors & Hardware - INTERIOR,DOORS & HARDWARE INTERIOR,"Int. Doors Filter 1, 2, 3",DOORS AND HARDWARE,,,2025-01-13 07:00,2025-04-25 17:00,2025-04-21 07:00,2025-06-20 17:00
INT.DH.2560,IMPACT - RFI 10662 - RAISED ACCESS FLOOR DESIGN CONFLICT - LVL 1 - DOOR FRAMES,Complete,CONSTRUCTION,,Doors & Hardware - INTERIOR,DOORS & HARDWARE INTERIOR,"Int. Doors Filter 1, 2, 3",DOORS AND HARDWARE,,,2025-01-13 07:00,2025-04-25 17:00,2025-04-23 07:00,2025-06-02 07:00
INT.DH.2570,IMPACT - DESIGN CHANGE RFI 9750 - OHC TO HM FRAME - LVL 3,Complete,CONSTRUCTION,,Doors & Hardware - INTERIOR,DOORS & HARDWARE INTERIOR,"Int. Doors Filter 1, 2, 3",DOORS AND HARDWARE,,,2025-01-13 07:00,2025-04-25 17:00,2025-01-06 00:00,2025-01-13 17:00
CN.BB51.ST.3342,INSTALL & INSPECT FRAMING/DRYWALL 1 LAYER EXTERIOR WALLS/EXPANSION JOINT - GL 33/34 - STAIR 5 - K-L,Complete,CONSTRUCTION,,GRIDLINE 33,GL 33 STAIR 5 (WEST),STAIR 5 (WEST) - K-L,BERG,,,2025-06-23 07:00,2025-07-08 17:00,2025-06-12 07:00,2025-06-25 17:00
CN.BB51.ST.3362,INSTALL & INSPECT INTERIOR DRYWALL CEILING 1ST-2ND LAYER  - GL 33 - STAIR 5 - K-L,Complete,CONSTRUCTION,,GRIDLINE 33,GL 33 STAIR 5 (WEST),STAIR 5 (WEST) - K-L,BERG,,,2025-09-09 07:00,2025-09-12 17:00,2025-09-04 07:00,2025-09-05 17:00
CN.BB51.ST.3392,INSTALL & INSPECT INTERIOR DRYWALL CEILING 1ST-2ND LAYER - GL 33 - STAIR 18 - C-D (),Complete,CONSTRUCTION,,GRIDLINE 33,GL 33 STAIR 18 (EAST),STAIR 18 (EAST) - C-D,BERG,,,2025-10-10 07:00,2025-10-22 17:00,2025-10-10 07:00,2025-10-13 17:00
INT.DH.2590,IMPACT - RFI 10662 - PATRIOT STAIR REMOVAL & INSTALL THRESHOLD - LVL 1 - DOOR FRAMES,Active,CONSTRUCTION,,Doors & Hardware - INTERIOR,DOORS & HARDWARE INTERIOR,"Int. Doors Filter 1, 2, 3",DOORS AND HARDWARE,,,2025-10-06 07:00,2025-10-17 17:00,2025-09-17 07:00,
FIZ.WEST.1101,PARAPET WALL FRP & FRAME DRYWALL - ROOF - SWA - L3 - J-G GL 1-3,Complete,Area FIZ1 (West Inner),Data Center (Gridlines 1-3),FIZ1 (West Inner) GL J-G - DATA CENTER 2,L4 - SUP Roof - FAB Roof,,,DRYWALL,FIZ DATA CENTER,2023-12-01 07:00,2023-12-04 17:00,2023-12-01 07:00,2023-12-05 11:00
CN.FIZ1.1050,INSIDE TAPE & FINISH DRYWALL FIZ1 - L2 (Moisture Resistant Paperless) - DATA CTR 2 .,Complete,Area FIZ1 (West Inner),West Support Building,FIZ1 (West Inner) GL J-G - DATA CENTER 2,L2 - SubFab Level,DATA CENTER 2,,DRYWALL,FIZ DATA CENTER,2023-08-03 15:00,2023-08-08 13:00,2023-07-26 15:00,2023-07-29 15:00
CN.FIZ1.1040,DRYWALL 2 SIDE FIZ1 - L2 - DATA CTR 2 .,Complete,Area FIZ1 (West Inner),West Support Building,FIZ1 (West Inner) GL J-G - DATA CENTER 2,L2 - SubFab Level,DATA CENTER 2,,DRYWALL,FIZ DATA CENTER,2023-08-02 09:00,2023-08-06 09:00,2023-07-25 09:00,2023-07-28 11:00
CN.FIZ1.1030,DRYWALL & INSULATION (1 side) (INT) FIZ1 - L2 - DATA CTR 2 .,Complete,Area FIZ1 (West Inner),West Support Building,FIZ1 (West Inner) GL J-G - DATA CENTER 2,L2 - SubFab Level,DATA CENTER 2,,DRYWALL,FIZ DATA CENTER,2023-07-28 15:00,2023-08-02 13:00,2023-07-24 15:00,2023-07-28 15:00
CN.FIZ1.1850,TAPE & FINISH DRYWALL - FA LAB1 - SWA  - FIZ1 - L1 - GL 1-3 J-G,Complete,Area FIZ1 (West Inner),West Support Building,FIZ1 (West Inner) GL J-G - DATA CENTER 2,L1 - Fndn Slab,FA/TEM LAB,,DRYWALL,FIZ DATA CENTER,2023-11-17 07:00,2023-11-20 17:00,2023-11-17 07:00,2023-11-18 11:00
CN.FIZ1.1840,DRYWALL 2 SIDE - FA LAB1 - SWA - FIZ1 - L1 - GL 1-3 J-G,Complete,Area FIZ1 (West Inner),West Support Building,FIZ1 (West Inner) GL J-G - DATA CENTER 2,L1 - Fndn Slab,FA/TEM LAB,,DRYWALL,FIZ DATA CENTER,2023-11-14 13:00,2023-11-19 13:00,2023-11-14 13:00,2023-11-16 17:00
CN.FIZ1.1830,DRYWALL & INSULATION (1 side) (INT) - - L1,Complete,Area FIZ1 (West Inner),West Support Building,FIZ1 (West Inner) GL J-G - DATA CENTER 2,L1 - Fndn Slab,FA/TEM LAB,,DRYWALL,FIZ DATA CENTER,2023-10-05 07:00,2023-10-09 15:00,2023-10-05 07:00,2023-10-12 11:00
CN.FIZ1.1950,TAPE & FINISH DRYWALL FIZ1 - SWA  - L3 GL 1-3 J-G - FIZ,Complete,Area FIZ1 (West Inner),West Support Building,FIZ1 (West Inner) GL J-G - DATA CENTER 2,L3 / Waffle Slab Level,FIZ,,DRYWALL,FIZ DATA CENTER,2024-01-22 07:00,2024-01-24 11:00,2024-01-02 07:00,2024-01-10 16:00
CN.FIZ1.1940,DRYWALL 2 SIDE FIZ1 - L3 GL 1-3 - FIZ,Complete,Area FIZ1 (West Inner),West Support Building,FIZ1 (West Inner) GL J-G - DATA CENTER 2,L3 / Waffle Slab Level,FIZ,,DRYWALL,FIZ DATA CENTER,2023-10-16 15:00,2023-10-19 09:00,2023-10-13 15:00,2023-10-16 17:00
CN.FIZ1.1930,DRYWALL & INSULATION (1 side) (INT) - FIZ1 - L3 GL 1-3 - FIZ,Complete,Area FIZ1 (West Inner),West Support Building,FIZ1 (West Inner) GL J-G - DATA CENTER 2,L3 / Waffle Slab Level,FIZ,,DRYWALL,FIZ DATA CENTER,2023-10-16 07:00,2023-10-18 12:00,2023-10-12 07:00,2023-10-14 16:00
CN.FIZ1.2020,DRYWALL OUTSIDE TAPE & FINISH DRYWALL FIZ1 - L2 GL 1-3(Moisture Resistant Paperless) - DATA CTR 2 .,Complete,Area FIZ1 (West Inner),West Support Building,FIZ1 (West Inner) GL J-G - DATA CENTER 2,L2 - SubFab Level,DATA CENTER 2,,DRYWALL,FIZ DATA CENTER,2023-08-08 11:00,2023-08-14 09:00,2023-08-08 11:00,2023-08-19 16:00
CN.FIZ1.2310,IMPACT Pending Man Power Issue due to NO Payment DOOR FRAMES -,Complete,Area FIZ1 (West Inner),West Support Building,SUES-5 - 6-1 - FIZ - GL A -E,L3 / Waffle Slab Level,ELECTRIC RM 2,FINISH PAINT,TBD Architectural Finishes,FIZ DATA CENTER,2024-12-31 07:00,2025-01-03 17:00,2024-12-17 07:00,2025-01-08 17:00
CN.FIZ1.2320,INSTALL FRAMES & DOORS - SUE - 62 - GL 8-15 & A-E - L3,Active,Area FIZ1 (West Inner),West Support Building,SUE - 62 - GL 8-15 & A -E,L3 / Waffle Slab Level,FIZ,FINISH PAINT,TBD Architectural Finishes,FIZ DATA CENTER,2025-02-14 07:00,2025-02-18 17:00,2025-01-15 07:00,
CN.FIZ1.2350,INSTALL FRAMES & DOORS - SUE - 61 - GL 1-8 & A-E - L3,Active,Area FIZ1 (West Inner),West Support Building,SUE - 61 - GL 1-8 & A -E,L3 / Waffle Slab Level,FIZ,FINISH PAINT,TBD Architectural Finishes,FIZ DATA CENTER,2025-02-17 07:00,2025-02-19 17:00,2025-01-16 00:00,
CN.FIZ1.2380,INSTALL FRAMES & DOORS - SUE - 63 - GL 15-21 & A-E - L3,Active,Area FIZ1 (West Inner),West Support Building,SUE - 63 - GL 15-21 & A -E,L3 / Waffle Slab Level,FIZ,FINISH PAINT,TBD Architectural Finishes,FIZ DATA CENTER,2025-02-12 07:00,2025-02-14 17:00,2025-01-29 07:00,
CN.FIZ1.2410,INSTALL FRAMES & DOORS - SUE - 64 - GL 21-27 & A-E - L3,Active,Area FIZ1 (West Inner),West Support Building,SUE - 64 - GL 22-27 & A -E,L3 / Waffle Slab Level,FIZ,FINISH PAINT,TBD Architectural Finishes,FIZ DATA CENTER,2025-02-10 07:00,2025-02-12 17:00,2025-01-29 07:00,
CN.FIZ1.2440,INSTALL FRAMES & DOORS - SUE - 65 - GL 27-33 & A-E - L3,Active,Area FIZ1 (West Inner),West Support Building,SUE - 65 - GL 27-31 & A -E,L3 / Waffle Slab Level,FIZ,FINISH PAINT,TBD Architectural Finishes,FIZ DATA CENTER,2025-02-04 07:00,2025-02-06 17:00,2025-01-16 07:00,
CN.FIZ1.2900,INSTALL FRAMES & DOORS - SUE - 62 - GL 8-15 & A-E - L2,Active,Area FIZ1 (West Inner),West Support Building,SUE - 62 - GL 8-15 & A -E,L2 - SubFab Level,,FINISH PAINT,TBD Architectural Finishes,FIZ DATA CENTER,2025-08-25 07:00,2025-08-27 17:00,2025-04-28 07:00,
CN.FIZ1.2940,INSTALL FRAMES & DOORS - SUE - 61 - GL 1-8 & A-E - L2,Active,Area FIZ1 (West Inner),West Support Building,SUE - 61 - GL 1-8 & A -E,L2 - SubFab Level,,FINISH PAINT,TBD Architectural Finishes,FIZ DATA CENTER,2025-08-27 07:00,2025-08-29 17:00,2025-02-25 07:00,
CN.FIZ1.2870,INSTALL FRAMES & DOORS - SUE - 63 - GL 15-21 & A-E - L2,Active,Area FIZ1 (West Inner),West Support Building,SUE - 63 - GL 15-21 & A -E,L2 - SubFab Level,,FINISH PAINT,TBD Architectural Finishes,FIZ DATA CENTER,2025-08-21 07:00,2025-08-25 17:00,2025-03-28 07:00,
CN.FIZ1.2830,INSTALL FRAMES & DOORS - SUE - 64 - GL 21-27 & A-E - L2,Active,Area FIZ1 (West Inner),West Support Building,SUE - 64 - GL 22-27 & A -E,L2 - SubFab Level,,FINISH PAINT,TBD Architectural Finishes,FIZ DATA CENTER,2025-08-19 07:00,2025-08-21 17:00,2025-03-28 07:00,
CN.FIZ1.2790,INSTALL FRAMES & DOORS - SUE - 65 - GL 27-33 & A-E - L2,Active,Area FIZ1 (West Inner),West Support Building,SUE - 65 - GL 27-31 & A -E,L2 - SubFab Level,,FINISH PAINT,TBD Architectural Finishes,FIZ DATA CENTER,2025-08-18 07:00,2025-08-20 17:00,2025-02-26 07:00,
CN.FIZ1.3140,INSTALL FRAMES & DOORS - SUE - 62 - GL 8-15 & A-E - L1,Active,Area FIZ1 (West Inner),West Support Building,SUE - 62 - GL 8-15 & A -E,L1 - Fndn Slab,,FINISH PAINT,TBD Architectural Finishes,FIZ DATA CENTER,2025-08-19 07:00,2025-08-21 17:00,2025-03-26 07:00,
CN.FIZ1.3180,INSTALL FRAMES & DOORS - SUE - 61 - GL 1-8 & A-E - L1,Active,Area FIZ1 (West Inner),West Support Building,SUE - 61 - GL 1-8 & A -E,L1 - Fndn Slab,,FINISH PAINT,TBD Architectural Finishes,FIZ DATA CENTER,2025-08-19 07:00,2025-08-21 17:00,2025-03-17 07:00,
CN.FIZ1.3110,INSTALL FRAMES & DOORS - SUE - 63 - GL 15-21 & A-E - L1,Active,Area FIZ1 (West Inner),West Support Building,SUE - 63 - GL 15-21 & A -E,L1 - Fndn Slab,,FINISH PAINT,TBD Architectural Finishes,FIZ DATA CENTER,2025-08-19 07:00,2025-08-21 17:00,2025-03-21 07:00,
CN.FIZ1.3070,INSTALL FRAMES & DOORS - SUE - 64 - GL 21-27 & A-E - L1,Active,Area FIZ1 (West Inner),West Support Building,SUE - 64 - GL 22-27 & A -E,L1 - Fndn Slab,,FINISH PAINT,TBD Architectural Finishes,FIZ DATA CENTER,2025-08-18 07:00,2025-08-20 17:00,2025-04-18 07:00,
CN.FIZ1.3030,INSTALL FRAMES & DOORS - SUE - 65 - GL 27-33 & A-E - L1,Active,Area FIZ1 (West Inner),West Support Building,SUE - 65 - GL 27-31 & A -E,L1 - Fndn Slab,,FINISH PAINT,TBD Architectural Finishes,FIZ DATA CENTER,2025-08-21 07:00,2025-08-25 17:00,2025-03-14 07:00,
CN.FIZ1.3230,INSTALL FRAMES & DOORS - SUW - 01 - GL 1-8 & J-N - L3,Active,Area FIZ1 (West Inner),West Support Building,SUW - 01 - GL 1-5 & J-N,L3 / Waffle Slab Level,FIZ,FINISH PAINT,TBD Architectural Finishes,FIZ DATA CENTER,2025-02-19 07:00,2025-02-21 17:00,2025-01-08 07:00,
CN.FIZ1.3270,INSTALL FRAMES & DOORS - SUW - 02 - GL 8-15 & J-N - L3,Active,Area FIZ1 (West Inner),West Support Building,SUW - 02 - GL 5-11 & J-N,L3 / Waffle Slab Level,,FINISH PAINT,TBD Architectural Finishes,FIZ DATA CENTER,2025-02-21 07:00,2025-02-25 17:00,2025-01-17 07:00,
CN.FIZ1.3310,INSTALL FRAMES - SUW - 03 - GL 15-21 & J-N - L3,Active,Area FIZ1 (West Inner),West Support Building,SUW - 03 - GL 11-20 & J-N,L3 / Waffle Slab Level,,FINISH PAINT,TBD Architectural Finishes,FIZ DATA CENTER,2025-02-24 07:00,2025-02-26 17:00,2025-01-21 07:00,
CN.FIZ1.3350,INSTALL FRAMES & DOORS - SUW - 04 - GL 21-27 & J-N - L3,Active,Area FIZ1 (West Inner),West Support Building,SUW - 04 - GL 21-23 & J-N,L3 / Waffle Slab Level,,FINISH PAINT,TBD Architectural Finishes,FIZ DATA CENTER,2025-02-26 07:00,2025-02-28 17:00,2025-01-22 07:00,
CN.FIZ1.3390,INSTALL FRAMES & DOORSS - SUW - 05 - GL 27-33 & J-N - L3,Active,Area FIZ1 (West Inner),West Support Building,SUW - 05 - GL 23-30 & J-N,L3 / Waffle Slab Level,,FINISH PAINT,TBD Architectural Finishes,FIZ DATA CENTER,2025-02-28 07:00,2025-03-04 17:00,2025-01-20 07:00,
CN.FIZ1.3510,INSTALL FRAMES & DOORS - SUW - 01 - GL 1-8 & J-N - L2,Active,Area FIZ1 (West Inner),West Support Building,SUW - 01 - GL 1-5 & J-N,L2 - SubFab Level,FIZ,FINISH PAINT,TBD Architectural Finishes,FIZ DATA CENTER,2025-01-16 07:00,2025-01-20 17:00,2025-02-03 07:00,
CN.FIZ1.3470,INSTALL FRAMES & DOORS - SUW - 02 - GL 8-15 & J-N - L2,Active,Area FIZ1 (West Inner),West Support Building,SUW - 02 - GL 5-11 & J-N,L2 - SubFab Level,,FINISH PAINT,TBD Architectural Finishes,FIZ DATA CENTER,2025-02-18 07:00,2025-02-20 17:00,2025-02-18 07:00,
CN.FIZ1.3540,INSTALL FRAMES & DOORS - SUW - 03 - GL 15-21 & J-N - L2,Active,Area FIZ1 (West Inner),West Support Building,SUW - 03 - GL 11-20 & J-N,L2 - SubFab Level,,FINISH PAINT,TBD Architectural Finishes,FIZ DATA CENTER,2025-02-19 07:00,2025-02-21 17:00,2025-02-19 07:00,
CN.FIZ1.3580,INSTALL FRAMES & DOORS - SUW - 04 - GL 21-27 & J-N - L2,Active,Area FIZ1 (West Inner),West Support Building,SUW - 04 - GL 21-23 & J-N,L2 - SubFab Level,,FINISH PAINT,TBD Architectural Finishes,FIZ DATA CENTER,2025-04-01 07:00,2025-04-03 17:00,2025-04-01 07:00,
CN.FIZ1.3620,INSTALL FRAMES & DOORS - SUW - 05 - GL 27-33 & J-N - L2,Active,Area FIZ1 (West Inner),West Support Building,SUW - 05 - GL 23-30 & J-N,L2 - SubFab Level,,FINISH PAINT,TBD Architectural Finishes,FIZ DATA CENTER,2025-02-18 07:00,2025-02-20 17:00,2025-02-18 07:00,
CN.FIZ1.3760,INSTALL FRAMES & DOORS - SUW - 01 - GL 1-8 & J-N - L1,Active,Area FIZ1 (West Inner),West Support Building,SUW - 01 - GL 1-5 & J-N,L1 - Fndn Slab,FIZ,FINISH PAINT,TBD Architectural Finishes,FIZ DATA CENTER,2025-03-10 07:00,2025-03-12 17:00,2025-03-10 07:00,
CN.FIZ1.3720,INSTALL FRAMES & DOORS - SUW - 02 - GL 8-15 & J-N - L1,Active,Area FIZ1 (West Inner),West Support Building,SUW - 02 - GL 5-11 & J-N,L1 - Fndn Slab,,FINISH PAINT,TBD Architectural Finishes,FIZ DATA CENTER,2025-07-02 07:00,2025-07-07 17:00,2025-07-10 07:00,
CN.FIZ1.3790,INSTALL FRAMES & DOORS - SUW - 03 - GL 15-21 & J-N - L1,Active,Area FIZ1 (West Inner),West Support Building,SUW - 03 - GL 11-20 & J-N,L1 - Fndn Slab,,FINISH PAINT,TBD Architectural Finishes,FIZ DATA CENTER,2025-04-03 07:00,2025-04-07 17:00,2025-04-03 07:00,
CN.FIZ1.3830,INSTALL FRAMES & DOORS - SUW - 04 - GL 21-27 & J-N - L1,Not Started,Area FIZ1 (West Inner),West Support Building,SUW - 04 - GL 21-23 & J-N,L1 - Fndn Slab,,FINISH PAINT,TBD Architectural Finishes,FIZ DATA CENTER,2025-11-21 07:00,2025-11-21 17:00,,
CN.FIZ1.3870,INSTALL FRAMES & DOORS - SUW - 05 - GL 27-31 & J-N - L1,Active,Area FIZ1 (West Inner),West Support Building,SUW - 05 - GL 23-30 & J-N,L1 - Fndn Slab,,FINISH PAINT,TBD Architectural Finishes,FIZ DATA CENTER,2025-03-17 07:00,2025-03-19 17:00,2025-03-17 07:00,
CN.FIZ1.4360,IMPACT - INSTALL/REWORK DRYWALL FRAMING AROUND DOORS - SUE - 62 - GL 8-15 & A-E - L3,Complete,Area FIZ1 (West Inner),West Support Building,SUE - 62 - GL 8-15 & A -E,L3 / Waffle Slab Level,FIZ,FINISH PAINT,TBD Architectural Finishes,FIZ DATA CENTER,2025-02-04 07:00,2025-02-10 17:00,2025-01-13 07:00,2025-06-16 10:00
CN.FIZ1.4370,IMPACT - INSTALL/REWORK DRYWALL FRAMING AROUND DOORS - SUE - 61 - GL 1-8 & A-E - L3,Complete,Area FIZ1 (West Inner),West Support Building,SUE - 61 - GL 1-8 & A -E,L3 / Waffle Slab Level,FIZ,FINISH PAINT,TBD Architectural Finishes,FIZ DATA CENTER,2025-02-06 07:00,2025-02-12 17:00,2025-01-14 07:00,2025-06-02 17:00
CN.FIZ1.4350,IMPACT - INSTALL/REWORK DRYWALL FRAMING AROUND DOORS - SUE - 63 - GL 15-21 & A-E - L3,Complete,Area FIZ1 (West Inner),West Support Building,SUE - 63 - GL 15-21 & A -E,L3 / Waffle Slab Level,FIZ,FINISH PAINT,TBD Architectural Finishes,FIZ DATA CENTER,2025-02-03 07:00,2025-02-07 17:00,2025-01-10 07:00,2025-06-25 17:00
CN.FIZ1.4340,IMPACT - INSTALL/REWORK DRYWALL FRAMING AROUND DOORS - SUE - 64 - GL 21-27 & A-E - L3,Complete,Area FIZ1 (West Inner),West Support Building,SUE - 64 - GL 22-27 & A -E,L3 / Waffle Slab Level,FIZ,FINISH PAINT,TBD Architectural Finishes,FIZ DATA CENTER,2025-01-30 07:00,2025-02-05 17:00,2025-01-09 07:00,2025-06-12 17:00
CN.FIZ1.4320,IMPACT - INSTALL/REWORK DRYWALL FRAMING AROUND DOORS - SUE - 66 - GL 33-40 & A-E - L3,Complete,Area FIZ1 (West Inner),West Support Building,SUE - 65 - GL 31-33 & A -E,L3 / Waffle Slab Level,FIZ,FINISH PAINT,TBD Architectural Finishes,FIZ DATA CENTER,2025-01-27 07:00,2025-01-31 17:00,2025-01-06 07:00,2025-06-02 17:00
CN.FIZ1.4380,IMPACT - INSTALL/REWORK DRYWALL FRAMING AROUND DOORS - SUW - 01 - GL 1-8 & J-N - L3,Complete,Area FIZ1 (West Inner),West Support Building,SUW - 01 - GL 1-5 & J-N,L3 / Waffle Slab Level,FIZ,FINISH PAINT,TBD Architectural Finishes,FIZ DATA CENTER,2025-02-10 07:00,2025-02-14 17:00,2025-01-15 07:00,2025-06-19 17:00
CN.FIZ1.4390,IMPACT - INSTALL/REWORK DRYWALL FRAMING AROUND DOORS - SUW - 02 - GL 8-15 & J-N - L3,Complete,Area FIZ1 (West Inner),West Support Building,SUW - 02 - GL 5-11 & J-N,L3 / Waffle Slab Level,,FINISH PAINT,TBD Architectural Finishes,FIZ DATA CENTER,2025-02-11 07:00,2025-02-17 17:00,2025-01-16 07:00,2025-06-17 17:00
CN.FIZ1.4400,IMPACT - INSTALL/REWORK DRYWALL FRAMING AROUND DOORS - SUW - 03 - GL 15-21 & J-N - L3,Complete,Area FIZ1 (West Inner),West Support Building,SUW - 03 - GL 11-20 & J-N,L3 / Waffle Slab Level,,FINISH PAINT,TBD Architectural Finishes,FIZ DATA CENTER,2025-02-13 07:00,2025-02-19 17:00,2025-01-17 07:00,2025-05-30 17:00
CN.FIZ1.4410,IMPACT - INSTALL/REWORK DRYWALL FRAMING AROUND DOORS - SUW - 04 - GL 21-27 & J-N - L3,Complete,Area FIZ1 (West Inner),West Support Building,SUW - 04 - GL 21-23 & J-N,L3 / Waffle Slab Level,,FINISH PAINT,TBD Architectural Finishes,FIZ DATA CENTER,2025-02-17 07:00,2025-02-21 17:00,2025-01-20 07:00,2025-06-06 17:00
CN.FIZ1.4420,IMPACT - INSTALL/REWORK DRYWALL FRAMING AROUND DOORS - SUW - 05 - GL 27-33 & J-N - L3,Complete,Area FIZ1 (West Inner),West Support Building,SUW - 05 - GL 23-30 & J-N,L3 / Waffle Slab Level,,FINISH PAINT,TBD Architectural Finishes,FIZ DATA CENTER,2025-02-18 07:00,2025-02-24 17:00,2025-01-22 07:00,2025-05-28 17:00
CN.FIZ1.5040,INSTALL DOOR HARDWARE - SUE - 62 - GL 8-15 - A - L1 - Ext.,Not Started,Area FIZ1 (West Inner),West Support Building,SUE - 62 - GL 8-15 & A -E,L1 - Exterior,,ALK,TBD Architectural Finishes,FIZ DATA CENTER,2025-12-08 07:00,2025-12-10 17:00,,
CN.FIZ1.4930,INSTALL FRAMES & DOORS- SUE - 62 - GL 8-15 - A - L1 - Ext.,Active,Area FIZ1 (West Inner),West Support Building,SUE - 62 - GL 8-15 & A -E,L1 - Exterior,,FINISH PAINT,TBD Architectural Finishes,FIZ DATA CENTER,2025-08-28 07:00,2025-09-02 17:00,2025-06-23 07:00,
CN.FIZ1.5100,INSTALL DOOR HARDWARE - SUE - 61 - GL 1-8 & - A - L1 - Ext.,Not Started,Area FIZ1 (West Inner),West Support Building,SUE - 61 - GL 1-8 & A -E,L1 - Exterior,,ALK,TBD Architectural Finishes,FIZ DATA CENTER,2025-12-08 07:00,2025-12-10 17:00,,
CN.FIZ1.4990,INSTALL FRAMES & DOORS - SUE - 61 - GL 1-8 - A - L1 - Ext.,Active,Area FIZ1 (West Inner),West Support Building,SUE - 61 - GL 1-8 & A -E,L1 - Exterior,,FINISH PAINT,TBD Architectural Finishes,FIZ DATA CENTER,2025-09-03 07:00,2025-09-05 17:00,2025-07-30 07:00,
CN.FIZ1.4980,INSTALL DOOR HARDWARE - SUE - 63 - GL 15-21 - A - L1 - Ext.,Not Started,Area FIZ1 (West Inner),West Support Building,SUE - 63 - GL 15-21 & A -E,L1 - Exterior,,ALK,TBD Architectural Finishes,FIZ DATA CENTER,2025-12-08 07:00,2025-12-10 17:00,,
CN.FIZ1.4880,INSTALL FRAMES & DOORS - SUE - 63 - GL 15-21 - A - L1 - Ext.,Not Started,Area FIZ1 (West Inner),West Support Building,SUE - 63 - GL 15-21 & A -E,L1 - Exterior,,FINISH PAINT,TBD Architectural Finishes,FIZ DATA CENTER,2025-11-26 07:00,2025-12-02 17:00,,
CN.FIZ1.4920,INSTALL DOOR HARDWARE - SUE - 64 - GL 21-27 - A - L1 - Ext.,Not Started,Area FIZ1 (West Inner),West Support Building,SUE - 64 - GL 22-27 & A -E,L1 - Exterior,,ALK,TBD Architectural Finishes,FIZ DATA CENTER,2025-12-03 07:00,2025-12-05 17:00,,
CN.FIZ1.4820,INSTALL FRAMES & DOORS - SUE - 64 - GL 21-27 - A - L1 - Ext.,Active,Area FIZ1 (West Inner),West Support Building,SUE - 64 - GL 22-27 & A -E,L1 - Exterior,,FINISH PAINT,TBD Architectural Finishes,FIZ DATA CENTER,2025-08-20 07:00,2025-08-22 17:00,2025-06-09 07:00,
CN.FIZ1.4860,INSTALL DOOR HARDWARE - SUE - 65 - GL 27-33 - A - L1 - Ext.,Not Started,Area FIZ1 (West Inner),West Support Building,SUE - 65 - GL 27-31 & A -E,L1 - Exterior,,ALK,TBD Architectural Finishes,FIZ DATA CENTER,2025-12-03 07:00,2025-12-05 17:00,,
CN.FIZ1.4760,INSTALL FRAMES & DOORS - SUE - 65 - GL 27-33 - A - L1 - Ext.,Active,Area FIZ1 (West Inner),West Support Building,SUE - 65 - GL 27-31 & A -E,L1 - Exterior,,FINISH PAINT,TBD Architectural Finishes,FIZ DATA CENTER,2025-08-15 07:00,2025-08-19 17:00,2025-04-21 07:00,
CN.FIZ1.4720,IMPACT - SECAI HOLD UP INSTALL DOOR FRAMES - LVL 1 - A & N LINE EXTERIOR - SUE - 66 - GL 33-40 - A - L1 - Ext.,Complete,Area FIZ1 (West Inner),West Support Building,SUE - 65 - GL 31-33 & A -E,L1 - Exterior,,FINISH PAINT,TBD Architectural Finishes,FIZ DATA CENTER,2025-03-21 07:00,2025-03-25 17:00,2025-03-27 07:00,2025-06-18 17:00
CN.FIZ1.4840,PAINT & PROTECT DOORS & FRAMES - SUE - 65 - GL 27-33 - A - L1 - Ext.,Not Started,Area FIZ1 (West Inner),West Support Building,SUE - 65 - GL 27-31 & A -E,L1 - Exterior,,FINISH PAINT,TBD Architectural Finishes,FIZ DATA CENTER,2025-11-26 07:00,2025-12-02 17:00,,
CN.FIZ1.4900,PAINT & PROTECT DOORS & FRAMES - SUE - 64 - GL 21-27 - A - L1 - Ext.,Not Started,Area FIZ1 (West Inner),West Support Building,SUE - 64 - GL 22-27 & A -E,L1 - Exterior,,FINISH PAINT,TBD Architectural Finishes,FIZ DATA CENTER,2025-11-26 07:00,2025-12-02 17:00,,
CN.FIZ1.4960,PAINT & PROTECT DOORS & FRAMES - SUE - 63 - GL 15-21 - A - L1 - Ext.,Not Started,Area FIZ1 (West Inner),West Support Building,SUE - 63 - GL 15-21 & A -E,L1 - Exterior,,FINISH PAINT,TBD Architectural Finishes,FIZ DATA CENTER,2025-12-03 07:00,2025-12-05 17:00,,
CN.FIZ1.5020,PAINT & PROTECT DOORS & FRAMES - SUE - 62 - GL 8-15 - A - L1 - Ext.,Not Started,Area FIZ1 (West Inner),West Support Building,SUE - 62 - GL 8-15 & A -E,L1 - Exterior,,FINISH PAINT,TBD Architectural Finishes,FIZ DATA CENTER,2025-12-03 07:00,2025-12-05 17:00,,
CN.FIZ1.5080,PAINT & PROTECT DOORS & FRAMES - SUE - 61 - GL 1-8 - A - L1 - Ext.,Not Started,Area FIZ1 (West Inner),West Support Building,SUE - 61 - GL 1-8 & A -E,L1 - Exterior,,FINISH PAINT,TBD Architectural Finishes,FIZ DATA CENTER,2025-12-03 07:00,2025-12-05 17:00,,
CN.FIZ1.5160,INSTALL DOOR HARDWARE - SUW - 01 - GL 1-8 N - L1 - Ext.,Not Started,Area FIZ1 (West Inner),West Support Building,SUW - 01 - GL 1-5 & J-N,L1 - Exterior,FIZ,ALK,TBD Architectural Finishes,FIZ DATA CENTER,2025-12-11 07:00,2025-12-15 17:00,,
CN.FIZ1.5050,INSTALL FRAMES & DOORS - SUW - 01 - GL 1-8 N - L1 - Ext.,Not Started,Area FIZ1 (West Inner),West Support Building,SUW - 01 - GL 1-5 & J-N,L1 - Exterior,FIZ,FINISH PAINT,TBD Architectural Finishes,FIZ DATA CENTER,2025-12-03 07:00,2025-12-05 17:00,,
CN.FIZ1.5140,PAINT & PROTECT DOORS & FRAMES - SUW - 01 - GL 1-8 N - L1 - Ext.,Not Started,Area FIZ1 (West Inner),West Support Building,SUW - 01 - GL 1-5 & J-N,L1 - Exterior,FIZ,FINISH PAINT,TBD Architectural Finishes,FIZ DATA CENTER,2025-12-08 07:00,2025-12-10 17:00,,
CN.FIZ1.5220,INSTALL DOOR HARDWARE - SUW - 02 - GL 8-15 - N - L1 - Ext.,Not Started,Area FIZ1 (West Inner),West Support Building,SUW - 02 - GL 5-11 & J-N,L1 - Exterior,,ALK,TBD Architectural Finishes,FIZ DATA CENTER,2025-12-11 07:00,2025-12-15 17:00,,
CN.FIZ1.5110,INSTALL FRAMES & DOORS - SUW - 02 - GL 8-15 - N - L1 - Ext.,Active,Area FIZ1 (West Inner),West Support Building,SUW - 02 - GL 5-11 & J-N,L1 - Exterior,,FINISH PAINT,TBD Architectural Finishes,FIZ DATA CENTER,2025-06-13 07:00,2025-06-17 17:00,2025-06-13 07:00,
CN.FIZ1.5200,PAINT & PROTECT DOORS & FRAMES - SUW - 02 - GL 8-15 - N - L1 - Ext.,Not Started,Area FIZ1 (West Inner),West Support Building,SUW - 02 - GL 5-11 & J-N,L1 - Exterior,,FINISH PAINT,TBD Architectural Finishes,FIZ DATA CENTER,2025-12-08 07:00,2025-12-10 17:00,,
CN.FIZ1.5280,INSTALL DOOR HARDWARE - SUW - 03 - GL 15-21 - N - L1 - Ext.,Not Started,Area FIZ1 (West Inner),West Support Building,SUW - 03 - GL 11-20 & J-N,L1 - Exterior,,ALK,TBD Architectural Finishes,FIZ DATA CENTER,2025-12-11 07:00,2025-12-15 17:00,,
CN.FIZ1.5170,INSTALL FRAMES & DOORS - SUW - 03 - GL 15-21 - N - L1 - Ext.,Active,Area FIZ1 (West Inner),West Support Building,SUW - 03 - GL 11-20 & J-N,L1 - Exterior,,FINISH PAINT,TBD Architectural Finishes,FIZ DATA CENTER,2025-07-02 07:00,2025-07-07 17:00,2025-07-02 07:00,
CN.FIZ1.5260,PAINT & PROTECT DOORS & FRAMES - SUW - 03 - GL 15-21 - N - L1 - Ext.,Not Started,Area FIZ1 (West Inner),West Support Building,SUW - 03 - GL 11-20 & J-N,L1 - Exterior,,FINISH PAINT,TBD Architectural Finishes,FIZ DATA CENTER,2025-12-08 07:00,2025-12-10 17:00,,
CN.FIZ1.5330,INSTALL DOOR HARDWARE - SUW - 04 - GL 21-27 - N - L1 - Ext.,Not Started,Area FIZ1 (West Inner),West Support Building,SUW - 04 - GL 21-23 & J-N,L1 - Exterior,,ALK,TBD Architectural Finishes,FIZ DATA CENTER,2025-12-11 07:00,2025-12-15 17:00,,
CN.FIZ1.5230,INSTALL FRAMES & DOORS - SUW - 04 - GL 21-27 - N - L1 - Ext.,Active,Area FIZ1 (West Inner),West Support Building,SUW - 04 - GL 21-23 & J-N,L1 - Exterior,,FINISH PAINT,TBD Architectural Finishes,FIZ DATA CENTER,2025-05-20 07:00,2025-05-22 17:00,2025-05-20 07:00,
CN.FIZ1.5310,PAINT & PROTECT DOORS & FRAMES - SUW - 04 - GL 21-27 - N - L1 - Ext.,Not Started,Area FIZ1 (West Inner),West Support Building,SUW - 04 - GL 21-23 & J-N,L1 - Exterior,,FINISH PAINT,TBD Architectural Finishes,FIZ DATA CENTER,2025-12-08 07:00,2025-12-10 17:00,,
CN.FIZ1.5370,INSTALL DOOR HARDWARE - SUW - 05 - GL 27-31 - N - L1 - Ext.,Not Started,Area FIZ1 (West Inner),West Support Building,SUW - 05 - GL 23-30 & J-N,L1 - Exterior,,ALK,TBD Architectural Finishes,FIZ DATA CENTER,2025-12-11 07:00,2025-12-15 17:00,,
CN.FIZ1.5290,INSTALL FRAMES & DOORS - SUW - 05 - GL 27-31 - N - L1 - Ext.,Active,Area FIZ1 (West Inner),West Support Building,SUW - 05 - GL 23-30 & J-N,L1 - Exterior,,FINISH PAINT,TBD Architectural Finishes,FIZ DATA CENTER,2025-05-23 07:00,2025-05-28 17:00,2025-05-23 07:00,
CN.FIZ1.5350,PAINT & PROTECT DOORS & FRAMES - SUW - 05 - GL 27-31 - N - L1 - Ext.,Not Started,Area FIZ1 (West Inner),West Support Building,SUW - 05 - GL 23-30 & J-N,L1 - Exterior,,FINISH PAINT,TBD Architectural Finishes,FIZ DATA CENTER,2025-12-08 07:00,2025-12-10 17:00,,
CN.FIZ1.5410,"IMPACT - By SECAI Request, remove 6 and suspen 7 doors inst. (Total 13) - SUE - L3",Complete,Area FIZ1 (West Inner),West Support Building,General,L3 / Waffle Slab Level,FIZ,FINISH PAINT,TBD Architectural Finishes,FIZ DATA CENTER,2025-01-27 07:00,2025-02-07 17:00,2025-02-17 07:00,2025-04-02 17:00
CN.FIZ1.5430,"IMPACT - B/32.5, Battery Rm., FAB126503A , Secai has closed this door opening - SUE - 65 - GL 27-33 & A-E - L2",Complete,Area FIZ1 (West Inner),West Support Building,SUE - 65 - GL 27-31 & A -E,L2 - SubFab Level,,FINISH PAINT,TBD Architectural Finishes,FIZ DATA CENTER,2025-02-26 07:00,2025-03-04 17:00,2025-02-17 07:00,2025-06-16 15:00
CN.FIZ1.5560,IMPACT - SECAI HOLD UP DOOR FRAME INSTALLATION - SUW - 05 - GL 27-33 & J-N - L3,Active,Area FIZ1 (West Inner),West Support Building,SUW - 05 - GL 23-30 & J-N,L3 / Waffle Slab Level,,FINISH PAINT,TBD Architectural Finishes,FIZ DATA CENTER,2025-02-24 07:00,2025-02-28 17:00,2025-01-23 07:00,
CN.FIZ1.5570,IMPACT - SECAI HOLD UP DOOR FRAME REMOVAL REQUEST - SUE - 61 - GL 1-8 & A-E - L3,Complete,Area FIZ1 (West Inner),West Support Building,SUE - 61 - GL 1-8 & A -E,L3 / Waffle Slab Level,FIZ,FINISH PAINT,TBD Architectural Finishes,FIZ DATA CENTER,2025-02-06 07:00,2025-02-12 17:00,2025-01-14 07:00,2025-07-25 17:00
CN.FIZ1.5580,IMPACT - SECAI HOLD UP DOOR FRAME REMOVAL REQUEST - SUE - 62 - GL 8-15 & A-E - L3,Complete,Area FIZ1 (West Inner),West Support Building,SUE - 62 - GL 8-15 & A -E,L3 / Waffle Slab Level,FIZ,FINISH PAINT,TBD Architectural Finishes,FIZ DATA CENTER,2025-02-04 07:00,2025-02-10 17:00,2025-05-13 07:00,2025-06-02 07:00
FIZ.EAST.1101,PARAPET WALL FRP & FRAME DRYWALL - ROOF - FIZ3 - SEA - L4 GL 1-3 - E-G,Complete,Area FIZ3 (East Inner),,FIZ3 (East Inner) GL G-E,L4 - SUP Roof - FAB Roof,,,TBD Architectural Finishes,,2024-01-24 16:00,2024-01-28 16:00,2024-01-10 16:00,2024-01-18 11:00
CN.FIZ3.1050,TAPE & FINISH DRYWALL -  FA LAB-2 - FIZ3 - SEA - L1 - GL 1-3 - E-G,Complete,Area FIZ3 (East Inner),West Support Building,FIZ3 (East Inner) GL G-E,L1 - Fndn Slab,FA/TEM LAB,,DRYWALL,FIZ DATA CENTER,2023-12-16 08:00,2023-12-20 08:00,2023-12-11 08:00,2023-12-13 11:00
CN.FIZ3.1040,DRYWALL 2 SIDE - FA LAB-2 - FIZ3 - SEA - L1 - GL 1-3 - E-G,Complete,Area FIZ3 (East Inner),West Support Building,FIZ3 (East Inner) GL G-E,L1 - Fndn Slab,FA/TEM LAB,,DRYWALL,FIZ DATA CENTER,2023-11-14 08:00,2023-11-19 08:00,2023-11-14 08:00,2023-11-17 11:00
CN.FIZ3.1030,DRYWALL & INSULATION (1 side) (INT) - FA LAB-2 - FIZ3 - L1,Complete,Area FIZ3 (East Inner),West Support Building,FIZ3 (East Inner) GL G-E,L1 - Fndn Slab,FA/TEM LAB,,DRYWALL,FIZ DATA CENTER,2023-10-16 07:00,2023-10-20 15:00,2023-10-16 07:00,2023-10-20 16:00
CN.AB.AR.5900,TAPE & FINISH DRYWALL - FIZ3 - SEA - L2 GL 1-3 - E-G - DATA CENTER 2 & ELECTRICAL ROOM 1,Complete,Area FIZ3 (East Inner),West Support Building,FIZ3 (East Inner) GL G-E,L2 - SubFab Level,BATT. RM 1,,DRYWALL,FIZ DATA CENTER,2023-10-16 07:00,2023-10-19 17:00,2023-10-16 07:00,2023-10-20 17:00
CN.AB.AR.5890,DRYWALL 2 SIDE - FIZ3 - SEA - L2 GL 1-3 - E-G - DATA CENTER 2 & ELECTRICAL ROOM 1,Complete,Area FIZ3 (East Inner),West Support Building,FIZ3 (East Inner) GL G-E,L2 - SubFab Level,BATT. RM 1,,DRYWALL,FIZ DATA CENTER,2023-10-09 07:00,2023-10-12 17:00,2023-09-30 08:00,2023-10-06 09:00
CN.AB.AR.5880,DRYWALL & INSULATION (1 side) (INT) - FIZ3 - SEA - L2 GL 1-3 - E-G - DATA CENTER 2 & ELECTRICAL ROOM 1,Complete,Area FIZ3 (East Inner),West Support Building,FIZ3 (East Inner) GL G-E,L2 - SubFab Level,BATT. RM 1,,DRYWALL,FIZ DATA CENTER,2023-09-22 09:00,2023-09-26 17:00,2023-09-20 09:00,2023-09-23 09:00
CN.FIZ1.2060,TAPE & FINISH DRYWALL - FIZ3 - GL 1-3 - E-G - L3,Complete,Area FIZ3 (East Inner),West Support Building,FIZ3 (East Inner) GL G-E,L3 / Waffle Slab Level,FIZ,CHERRY COATING,DRYWALL,FIZ DATA CENTER,2024-09-23 07:00,2024-09-26 17:00,2024-09-02 07:00,2024-10-03 17:00
CN.FIZ1.2050,DRYWALL 1 SIDE FIZ3 - SEA - L3 GL 1-3 - E-G,Complete,Area FIZ3 (East Inner),West Support Building,FIZ3 (East Inner) GL G-E,L3 / Waffle Slab Level,FIZ,,DRYWALL,FIZ DATA CENTER,2024-01-22 07:00,2024-01-24 11:00,2024-01-08 07:00,2024-01-31 17:00
CN.FIZ1.2040,DRYWALL & INSULATION (1 side) (INT) - FIZ3 - SEA - L3 GL 1-3 - E-G,Complete,Area FIZ3 (East Inner),West Support Building,FIZ3 (East Inner) GL G-E,L3 / Waffle Slab Level,FIZ,,DRYWALL,FIZ DATA CENTER,2023-12-11 07:00,2023-12-14 11:00,2023-12-11 07:00,2023-12-14 11:00
FIZ.EAST.2291,IMPACT - RFI XXXX - PARAPET WALL FRP & FRAME DRYWALL - ROOF - FIZ3 - SEA - L4 GL 1-3 - E-G,Complete,Area FIZ3 (East Inner),,FIZ3 (East Inner) GL G-E,L4 - SUP Roof - FAB Roof,,,TBD Architectural Finishes,,2024-01-24 16:00,2024-01-28 16:00,2024-01-18 16:00,2024-03-12 11:00
FIZ.EAST.2301,REMAINING PARAPET WALL FRP & FRAME DRYWALL - ROOF - FIZ3 - SEA - L4 GL 1-3 - E-G,Complete,Area FIZ3 (East Inner),,FIZ3 (East Inner) GL G-E,L4 - SUP Roof - FAB Roof,,,TBD Architectural Finishes,,2024-03-12 07:00,2024-03-19 17:00,2024-03-12 07:00,2024-03-15 11:00
CN.FIZ1.2130,IMPACT - CCD 271 - REMEDIATION DRYWALL - SUPERSEDED BY 324 MK MARLOW CCD,Complete,Area FIZ3 (East Inner),West Support Building,Gypsum,FRAMING/ DRYWALL GYPSUM,FIZ,BERG,DRYWALL,FIZ DATA CENTER,2024-04-08 07:00,2024-04-15 17:00,2024-04-08 07:00,2024-05-20 17:00
CN.FIZ1.2150,DEMO DRYWALL - INSTALL GOAL POSTS - VIP TOUR/ TQR LAB - GL 2 - H-G - L3,Complete,Area FIZ3 (East Inner),West Support Building,FIZ3 (East Inner) GL G-E,L3 / Waffle Slab Level,FIZ,CHERRY COATING,DRYWALL,FIZ DATA CENTER,2024-08-19 07:00,2024-08-28 17:00,2024-07-10 07:00,2024-07-20 17:00
CN.AB1.4990,METAL STUD FRAMING DRYWALL (2hr) - BUNKER RM 1 & 2 (With 12' Opening for Trussels and Modules),Complete,Area A-1,East Support Building,A1 - Area 6 (Gridlines 18-15),L1 - Fndn Slab,BUNKER ROOM,BERG,DRYWALL,AMBER CARO,2023-08-03 09:00,2023-08-07 17:00,2023-08-03 09:00,2023-08-28 16:00
CN.AB1.5210,METAL STUD FRAMING DRYWALL AND FINISHES - CLOSING THE OPENING,Complete,Area A-1,,A1 - Area 6 (Gridlines 18-15),L1 - Fndn Slab,BUNKER ROOM,BERG,DRYWALL,,2024-05-06 07:00,2024-05-13 17:00,2024-05-06 07:00,2024-05-09 17:00
CN.AB1.ST.1830,COLUMN WRAP FRAMING AND DRYWALL - UPTO 8 FEET,Complete,Area A-1,,A1 - Area 6 (Gridlines 18-15),L3 / Waffle Slab Level,,,DRYWALL,,2024-03-12 12:00,2024-03-20 12:00,2024-01-17 12:00,2024-01-21 15:00
CN.AB1.ST.1880,COLUMN WRAP FRAMING AND DRYWALL - G LINE - ABOVE 8 FEET,Complete,Area A-1,,A1 - Area 6 (Gridlines 18-15),L3 / Waffle Slab Level,,BERG,DRYWALL,,2025-10-24 07:00,2025-10-30 17:00,2024-01-22 07:00,2025-03-07 17:00
CN.AB11000,METAL STUD FRAMING DRYWALL (2hr) - IO RM 2 GL 15-12 (With 12' Opening for Trussels and Modules),Complete,Area A-2,East Support Building,A2 - Area 5 (Gridlines 15-12),L1 - Fndn Slab,BUNKER ROOM,BERG,DRYWALL,AMBER CARO,2023-08-28 07:00,2023-09-02 15:00,2023-08-25 11:00,2023-08-29 17:00
CN.AB11030,METAL STUD FRAMING DRYWALL AND FINISHES - CLOSING THE OPENING - A2 - GL 15-12 - L1,Complete,Area A-2,,A2 - Area 5 (Gridlines 15-12),L1 - Fndn Slab,BUNKER ROOM,BERG,DRYWALL,,2024-05-06 07:00,2024-05-13 17:00,2024-05-06 07:00,2024-05-09 17:00
CN.AB2.ST.1171,COLUMN WRAP FRAMING AND DRYWALL - UPTO 8 FEET - A2 - GL 15-12 - L3,Complete,Area A-2,,A2 - Area 5 (Gridlines 15-12),L3 / Waffle Slab Level,,,DRYWALL,,2024-01-22 07:00,2024-01-25 17:00,2024-01-16 07:00,2024-01-20 17:00
CN.AB2.ST.1173,CLOUMN WRAP FRAMING AND DRYWALL - ABOVE 8 FEET - A2 - GL 15-12 - L3,Complete,Area A-2,,A2 - Area 5 (Gridlines 15-12),L3 / Waffle Slab Level,,BERG,DRYWALL,,2024-04-01 07:00,2024-04-05 17:00,2024-04-01 07:00,2024-04-05 17:00
CN.AB1.5050,METAL STUD FRAMING DRYWALL (2hr) - BUNKER RM 7-11 GL 12-9(With 12' Opening for Trussels and Modules),Complete,Area A-3,East Support Building,A3 - Area 4 (Gridlines 12-9),L1 - Fndn Slab,BUNKER ROOM,BERG,DRYWALL,AMBER CARO,2023-09-30 09:00,2023-10-12 09:00,2023-09-30 09:00,2023-10-06 14:00
CN.AB1.A1410,METAL STUD FRAMING DRYWALL AND FINISHES - CLOSING THE OPENING- BUNKER RM 7-11 GL 12-9,Complete,Area A-3,,A3 - Area 4 (Gridlines 12-9),L1 - Fndn Slab,BUNKER ROOM,BERG,DRYWALL,,2024-05-06 07:00,2024-05-13 17:00,2024-05-06 07:00,2024-05-09 17:00
CN.AB1.ST.1890,COLUMN WRAP FRAMING AND DRYWALL - G LINE - UPTO 8 FEET,Complete,Area A-3,,A3 - Area 4 (Gridlines 12-9),L3 / Waffle Slab Level,,,DRYWALL,,2025-10-24 07:00,2025-10-27 17:00,2024-01-22 07:00,2025-03-07 17:00
CN.AB3.ST.1310,COLUMN WRAP FRAMING AND DRYWALL - G LINE - ABOVE 8 FEET - A4 - GL 12-9 - L3,Complete,Area A-3,,A3 - Area 4 (Gridlines 12-9),L3 / Waffle Slab Level,,BERG,DRYWALL,,2025-10-31 07:00,2025-11-06 17:00,2024-01-22 07:00,2025-03-07 17:00
CN.AB1.5080,METAL STUD FRAMING DRYWALL (2hr) - IO RM 1 GL 9-6,Complete,Area A-4,East Support Building,A4 - Area 3 (Gridlines 9-6),L1 - Fndn Slab,BUNKER ROOM,BERG,DRYWALL,AMBER CARO,2023-08-03 09:00,2023-08-07 17:00,2023-08-03 09:00,2023-08-26 16:00
A1430,METAL STUD FRAMING DRYWALL AND FINISHES - CLOSING THE OPENING,Complete,Area A-4,,A4 - Area 3 (Gridlines 9-6),L1 - Fndn Slab,BUNKER ROOM,BERG,DRYWALL,,2024-05-06 07:00,2024-05-13 17:00,2024-05-06 07:00,2024-05-10 17:00
CN.AB1.ST.1900,COLUMN WRAP FRAMING AND DRYWALL - G LINE- UPTO 8 FEET - A4 - GL 9-6 - L3,Complete,Area A-4,,A4 - Area 3 (Gridlines 9-6),L3 / Waffle Slab Level,,BERG,DRYWALL,,2025-10-24 07:00,2025-10-30 17:00,2024-01-22 07:00,2025-03-07 17:00
CN.AB3.ST.1860,COLUMN WRAP FRAMING AND DRYWALL - G LINE - ABOVE 8 FEET - A4 - GL 9-6 - L3,Complete,Area A-4,,A4 - Area 3 (Gridlines 9-6),L3 / Waffle Slab Level,,BERG,DRYWALL,,2025-10-24 07:00,2025-10-30 17:00,2024-01-22 07:00,2025-03-07 17:00
CN.AB3.ST.1880,COLUMN WRAP FRAMING AND DRYWALL -G LINE- ABOVE 8 FEET - A5 - GL 6-3 - L3,Complete,Area A-5,,A5 - Area 2 (Gridlines 6-3),L3 / Waffle Slab Level,,BERG,DRYWALL,,2025-10-24 07:00,2025-10-30 17:00,2024-01-22 07:00,2025-03-07 17:00
CN.AB1.5110,METAL STUD FRAMING DRYWALL (2hr) - BUNKER RM 3-6 GL 18-21(12' Header Left out for SECAI MEP ),Complete,Area B-1,East Support Building,B1 - Area 8 (Gridlines 18-21),L1 - Fndn Slab,BUNKER ROOM,BERG,DRYWALL,AMBER CARO,2023-08-03 09:00,2023-08-15 11:00,2023-08-03 09:00,2023-08-22 13:00
A1450,METAL STUD FRAMING DRYWALL AND FINISHES - CLOSING THE OPENING,Complete,Area B-1,,B1 - Area 8 (Gridlines 18-21),L1 - Fndn Slab,BUNKER ROOM,BERG,DRYWALL,,2024-05-06 07:00,2024-05-13 17:00,2024-05-06 07:00,2024-05-09 17:00
CN.AB1.ST.1920,COLUMN WRAP FRAMING AND DRYWALL -G LINE - UPTO 8 FEET - B1 - GL 18-21 - L3,Complete,Area B-1,,B1 - Area 8 (Gridlines 18-21),L3 / Waffle Slab Level,,BERG,DRYWALL,,2025-10-24 07:00,2025-10-30 17:00,2024-01-22 07:00,2025-03-07 17:00
CN.AB3.ST.1900,COLUMN WRAP FRAMING AND DRYWALL - G LINE - ABOVE 8 FEET - B1 - GL 18-21 - L3,Complete,Area B-1,,B1 - Area 8 (Gridlines 18-21),L3 / Waffle Slab Level,,BERG,DRYWALL,,2025-10-24 07:00,2025-10-30 17:00,2024-01-22 07:00,2025-03-07 17:00
CN.AB1.5140,METAL STUD FRAMING DRYWALL (2hr) - BUNKER RM 12-14,Complete,Area B-2,East Support Building,B2 - Area 9 (Gridlines 21-24),L1 - Fndn Slab,BUNKER ROOM,BERG,DRYWALL,AMBER CARO,2023-08-17 07:00,2023-08-24 11:00,2023-08-17 07:00,2023-08-25 13:00
A1470,METAL STUD FRAMING DRYWALL AND FINISHES - CLOSING THE OPENING,Complete,Area B-2,,B2 - Area 9 (Gridlines 21-24),L1 - Fndn Slab,BUNKER ROOM,BERG,DRYWALL,,2024-05-06 07:00,2024-05-13 17:00,2024-05-06 07:00,2024-05-10 17:00
CN.AB1.ST.1930,COLUMN WRAP FRAMING AND DRYWALL - G LINE - UPTO 8 FEET - B2 - GL 21-24 - L3,Complete,Area B-2,,B2 - Area 9 (Gridlines 21-24),L3 / Waffle Slab Level,,BERG,DRYWALL,,2025-10-31 07:00,2025-11-06 17:00,2024-01-22 07:00,2025-03-07 17:00
CN.AB3.ST.1920,COLUMN WRAP FRAMING AND DRYWALL - G LINE - ABOVE 8 FEET - B2 - GL 21-24 - L3,Complete,Area B-2,,B2 - Area 9 (Gridlines 21-24),L3 / Waffle Slab Level,,BERG,DRYWALL,,2025-10-24 07:00,2025-10-30 17:00,2024-01-22 07:00,2025-03-07 17:00
CN.AB1.5170,METAL STUD FRAMING DRYWALL (2hr) - IO RM 3 & 4 GL 24-27(12' Header left out for SECAI MEP),Complete,Area B-3,East Support Building,B3 - Area 10 (Gridlines 24-27),L1 - Fndn Slab,BUNKER ROOM,BERG,DRYWALL,AMBER CARO,2023-08-17 07:00,2023-08-21 15:00,2023-08-17 07:00,2023-08-28 11:00
CN.AB1.5190,REMAINING 2ND LAYER DRYWALL - IO RM 3&4 - B3 - GL 24-27 - L1,Complete,Area B-3,East Support Building,B3 - Area 10 (Gridlines 24-27),L1 - Fndn Slab,BUNKER ROOM,FINISH PAINT,DRYWALL,AMBER CARO,2024-11-21 07:00,2024-11-22 17:00,2024-11-21 07:00,2024-11-25 17:00
A1490,METAL STUD FRAMING DRYWALL AND FINISHES - CLOSING THE OPENING,Complete,Area B-3,,B3 - Area 10 (Gridlines 24-27),L1 - Fndn Slab,BUNKER ROOM,BERG,DRYWALL,,2024-05-06 07:00,2024-05-13 17:00,2024-05-06 07:00,2024-05-10 17:00
CN.AB1.ST.1940,COLUMN WRAP FRAMING AND DRYWALL - F LINE - UPTO 8 FEET,Complete,Area B-3,,B3 - Area 10 (Gridlines 24-27),L3 / Waffle Slab Level,,,DRYWALL,,2024-01-22 07:00,2024-01-25 17:00,2024-01-15 07:00,2024-01-19 17:00
CN.AB3.ST.1940,COLUMN WRAP FRAMING AND DRYWALL - G LINE - UPTO 8 FEET - B3 - GL 23-27 - L3,Complete,Area B-3,,B3 - Area 10 (Gridlines 24-27),L3 / Waffle Slab Level,,BERG,DRYWALL,,2025-10-24 07:00,2025-10-30 17:00,2024-01-22 07:00,2025-03-07 17:00
CN.AB1.ST.2070,COLUMN WRAP FRAMING AND DRYWALL - F LINE - ABOVE 8 FEET - B3 - GL 23-27 - L3,Complete,Area B-3,,B3 - Area 10 (Gridlines 24-27),L3 / Waffle Slab Level,,BERG,DRYWALL,,2025-11-07 07:00,2025-11-12 17:00,2024-01-22 07:00,2025-03-07 17:00
CN.AB3.ST.2280,COLUMN WRAP FRAMING AND DRYWALL - G LINE - ABOVE 8 FEET - B3 - GL 23-27 - L3,Complete,Area B-3,,B3 - Area 10 (Gridlines 24-27),L3 / Waffle Slab Level,,BERG,DRYWALL,,2025-10-24 07:00,2025-10-30 17:00,2024-01-22 07:00,2025-03-07 17:00
CN.AB1.ST.1950,COLUMN WRAP FRAMING AND DRYWALL - G LINE - UPTO 8 FEET - B4 - GL 27-30 - L3,Complete,Area B-4,,B4 - Area 11 (Gridlines 27-30),L3 / Waffle Slab Level,,BERG,DRYWALL,,2025-10-24 07:00,2025-10-30 17:00,2024-01-22 07:00,2025-03-07 17:00
CN.AB3.ST.1960,COLUMN WRAP FRAMING AND DRYWALL - G LINE - ABOVE 8 FEET - B4 - GL 27-30 - L3,Complete,Area B-4,,B4 - Area 11 (Gridlines 27-30),L3 / Waffle Slab Level,,BERG,DRYWALL,,2025-10-24 07:00,2025-10-30 17:00,2024-01-22 07:00,2025-03-07 17:00
CN.AB1.ST.2080,COLUMN WRAP FRAMING AND DRYWALL - F LINE UP TO 8 FEET - B4 - GL 27-30 - L3,Complete,Area B-4,,B4 - Area 11 (Gridlines 27-30),L3 / Waffle Slab Level,,BERG,DRYWALL,,2025-10-24 07:00,2025-10-30 17:00,2024-01-22 07:00,2025-03-07 17:00
CN.AB3.ST.2290,COLUMN WRAP FRAMING AND DRYWALL - F LINE - ABOVE 8 FEET - B4 - GL 27-30 - L3,Complete,Area B-4,,B4 - Area 11 (Gridlines 27-30),L3 / Waffle Slab Level,,BERG,DRYWALL,,2025-10-24 07:00,2025-10-30 17:00,2024-01-22 07:00,2025-03-07 17:00
CN.AB1.ST.1960,COLUMN WRAP FRAMING AND DRYWALL - G LINE - UPTO 8 FEET,Complete,Area B-5,,B5 - Area 12 (Gridlines 30-33),L3 / Waffle Slab Level,,,DRYWALL,,2024-01-22 07:00,2024-01-25 17:00,2024-01-13 07:00,2024-01-18 17:00
CN.AB3.ST.1980,COLUMN WRAP FRAMING AND DRYWALL - G LINE - ABOVE 8 FEET - B5 - GL 30-33 - L3,Complete,Area B-5,,B5 - Area 12 (Gridlines 30-33),L3 / Waffle Slab Level,,BERG,TBD Architectural Finishes,,2025-10-24 07:00,2025-10-30 17:00,2024-01-22 07:00,2025-03-07 17:00
CN.SWB5.6230,HANG INTEROR DRYWALL (3-LAYERS) - GL 33 - L1 - D-G,Complete,Area B-5,West Support Building,GRIDLINE 33,L1 - Fndn Slab,GL33 EXTERIOR AREA (FAB EAST) - D-G,,DRYWALL,JAMES LIVELY,2024-02-12 07:00,2024-02-23 13:00,2024-01-04 14:00,2024-01-12 17:00
CN.SWB5.6250,HANG EXTERIOR DRYWALL (3-LAYERS) - GL 33 - L1 - E-G,Complete,Area B-5,West Support Building,GRIDLINE 33,L1 - Fndn Slab,GL33 EXTERIOR AREA (FAB EAST) - D-G,BERG,DRYWALL,JAMES LIVELY,2024-05-13 07:00,2024-05-28 17:00,2024-05-01 07:00,2024-06-14 17:00
CN.SWB5.6270,HANG INTEROR DRYWALL (3-LAYERS) - GL 33 - L1 - G-K,Complete,Area B-5,West Support Building,GRIDLINE 33,L1 - Fndn Slab,GL33 EXTERIOR AREA (FAB WEST) - G-K,,DRYWALL,JAMES LIVELY,2024-02-22 07:00,2024-03-04 17:00,2024-01-04 14:00,2024-01-12 17:00
CN.SWB5.6280,HANG EXTERIOR DRYWALL (3-LAYERS) - GL 33 - L1 - G-K,Complete,Area B-5,West Support Building,GRIDLINE 33,L1 - Fndn Slab,GL33 EXTERIOR AREA (FAB WEST) - G-K,BERG,DRYWALL,JAMES LIVELY,2024-09-20 07:00,2024-09-27 17:00,2024-09-16 07:00,2024-10-05 17:00
CN.BB51.ST.1170,HANG INTEROR DRYWALL (3-LAYERS) - GL 33 - L2 - D-G,Complete,Area B-5,North Areas (Team B -Gridlines 17-33),GRIDLINE 33,L2 - SubFab Level,GL33 EXTERIOR AREA (FAB EAST) - D-G,,DRYWALL,AMBER CARO,2023-11-20 07:00,2023-12-01 11:00,2023-11-08 07:00,2023-11-14 15:00
CN.BB51.ST.1180,HANG INTEROR DRYWALL (3-LAYERS) - GL 33 - L2 - G-K,Complete,Area B-5,North Areas (Team B -Gridlines 17-33),GRIDLINE 33,L2 - SubFab Level,GL33 EXTERIOR AREA (FAB WEST) - G-K,,DRYWALL,AMBER CARO,2024-01-29 07:00,2024-02-07 09:00,2024-01-12 14:00,2024-01-19 13:00
CN.BB51.ST.1210,HANG EXTERIOR DRYWALL (3-LAYERS) - GL 33 - L2 - D-G,Complete,Area B-5,North Areas (Team B -Gridlines 17-33),GRIDLINE 33,L2 - SubFab Level,GL33 EXTERIOR AREA (FAB EAST) - D-G,,DRYWALL,AMBER CARO,2024-01-26 15:00,2024-02-02 13:00,2024-01-06 15:00,2024-01-13 17:00
CN.BB51.ST.1220,HANG EXTERIOR DRYWALL (3-LAYERS) - GL 33 - L2 - G-H,Complete,Area B-5,North Areas (Team B -Gridlines 17-33),GRIDLINE 33,L2 - SubFab Level,GL33 EXTERIOR AREA (FAB WEST) - G-K,,DRYWALL,AMBER CARO,2024-02-12 07:00,2024-02-20 11:00,2024-02-08 14:00,2024-02-15 12:00
CN.AB3.ST.2040,HANG INTEROR DRYWALL (3-LAYERS) - GL 33 - L3 - D-G,Complete,Area B-5,,GRIDLINE 33,L3 / Waffle Slab Level,GL33 EXTERIOR AREA (FAB EAST) - D-G,,DRYWALL,,2024-03-11 07:00,2024-03-28 13:00,2024-01-29 00:00,2024-02-09 00:00
CN.AB3.ST.2060,HANG EXTERIOR DRYWALL (3-LAYERS) - GL 33 - L3 - D-G,Complete,Area B-5,,GRIDLINE 33,L3 / Waffle Slab Level,GL33 EXTERIOR AREA (FAB EAST) - D-G,,DRYWALL,,2024-04-04 11:00,2024-04-19 17:00,2024-02-22 07:00,2024-04-13 17:00
CN.AB3.ST.2080,HANG INTEROR DRYWALL (3-LAYERS) - GL 33 - L3 - G-H,Complete,Area B-5,,GRIDLINE 33,L3 / Waffle Slab Level,GL33 EXTERIOR AREA (FAB WEST) - G-K,,DRYWALL,,2024-03-11 07:00,2024-03-28 13:00,2024-02-26 00:00,2024-03-08 00:00
CN.AB3.ST.2100,HANG EXTERIOR DRYWALL (3-LAYERS) - GL 33 - L3 - G-K,Complete,Area B-5,,GRIDLINE 33,L3 / Waffle Slab Level,GL33 EXTERIOR AREA (FAB WEST) - G-K,BERG,DRYWALL,,2024-09-09 07:00,2024-09-27 17:00,2024-04-22 07:00,2024-05-04 17:00
CN.BB5.ST.1260,HANG EXTERIOR DRYWALL (3-LAYERS) - GL 33 - L4 - D-G,Complete,Area B-5,North Areas (Team B -Gridlines 17-33),GRIDLINE 33,L4 - SUP Roof - FAB Roof,GL33 EXTERIOR AREA (FAB EAST) - D-G,BERG,DRYWALL,JAMES LEE,2024-05-03 07:00,2024-05-21 17:00,2024-04-12 07:00,2024-05-24 17:00
CN.BB5.ST.1280,HANG INTERIOR DRYWALL (3-LAYERS) - GL 33 - L4 - D-G,Complete,Area B-5,North Areas (Team B -Gridlines 17-33),GRIDLINE 33,L4 - SUP Roof - FAB Roof,GL33 EXTERIOR AREA (FAB EAST) - D-G,BERG,DRYWALL,JAMES LEE,2024-07-29 07:00,2024-08-13 17:00,2024-07-29 07:00,2024-08-08 17:00
CN.BB5.ST.1300,HANG INTEROR DRYWALL (3-LAYERS) - GL 33 - L4 - G-K,Complete,Area B-5,North Areas (Team B -Gridlines 17-33),GRIDLINE 33,L4 - SUP Roof - FAB Roof,GL33 EXTERIOR AREA (FAB WEST) - G-K,BERG,DRYWALL,JAMES LEE,2024-05-13 07:00,2024-05-31 17:00,2024-04-30 07:00,2024-06-20 17:00
CN.BB5.ST.1320,HANG EXTERIOR DRYWALL (3-LAYERS) - GL 33 - L4 - G-K,Complete,Area B-5,North Areas (Team B -Gridlines 17-33),GRIDLINE 33,L4 - SUP Roof - FAB Roof,GL33 EXTERIOR AREA (FAB WEST) - G-K,BERG,DRYWALL,JAMES LEE,2024-09-20 07:00,2024-10-08 17:00,2024-08-28 07:00,2024-09-10 17:00
CN.AB1.ST.2090,COLUMN WRAP FRAMING AND DRYWALL - F LINE - UP TO 8 FEET - B5 - GL 30-33 - L3,Complete,Area B-5,,B5 - Area 12 (Gridlines 30-33),L3 / Waffle Slab Level,,BERG,DRYWALL,,2025-10-24 07:00,2025-10-30 17:00,2024-01-22 07:00,2025-03-07 17:00
CN.AB3.ST.2300,COLUMN WRAP FRAMING AND DRYWALL - F LINE - ABOVE 8 FEET - B5 - GL 30-33 - L3,Complete,Area B-5,,B5 - Area 12 (Gridlines 30-33),L3 / Waffle Slab Level,,BERG,TBD Architectural Finishes,,2025-10-24 07:00,2025-10-30 17:00,2024-01-22 07:00,2025-03-07 17:00
CN.SWB5.6680,HANG INTEROR DRYWALL (3-LAYERS) - GL 33 - L1 - A-B,Complete,Area B-5,West Support Building,GRIDLINE 33,L1 - Fndn Slab,GL33 EXTERIOR AREA (SUE) - A-C,BERG,DRYWALL,JAMES LIVELY,2024-03-18 07:00,2024-03-28 17:00,2024-03-18 00:00,2024-03-29 14:00
CN.SWB5.6690,HANG INTEROR DRYWALL (3-LAYERS) - GL 33 - L1 - L-M,Complete,Area B-5,West Support Building,GRIDLINE 33,L1 - Fndn Slab,GL33 EXTERIOR AREA (SUW) - L-N,,DRYWALL,JAMES LIVELY,2024-03-22 07:00,2024-03-27 17:00,2024-03-19 00:00,2024-03-30 00:00
CN.SWB5.6720,BERG - HANG EXTERIOR DRYWALL (3-LAYERS) - GL 33 - L1 - B-C,Complete,Area B-5,West Support Building,GRIDLINE 33,L1 - Fndn Slab,GL33 EXTERIOR AREA (SUE) - A-C,BERG,DRYWALL,JAMES LIVELY,2025-06-24 11:00,2025-07-02 11:00,2025-06-20 11:00,2025-08-15 17:00
CN.BB51.ST.1440,HANG EXTERIOR DRYWALL (3-LAYERS) - GL 33 - L2 - A-B,Complete,Area B-5,North Areas (Team B -Gridlines 17-33),GRIDLINE 33,L2 - SubFab Level,GL33 EXTERIOR AREA (SUE) - A-C,BERG,DRYWALL,AMBER CARO,2025-06-24 11:00,2025-07-02 11:00,2025-05-28 08:24,2025-06-03 13:00
CN.BB51.ST.1450,HANG EXTERIOR DRYWALL (3-LAYERS) - GL 33 - K-L.5 LVL 4-6,Complete,Area B-5,North Areas (Team B -Gridlines 17-33),GRIDLINE 33,L2 - SubFab Level,GL33 EXTERIOR AREA (SUW) - L-N,BERG,DRYWALL,AMBER CARO,2024-09-06 07:00,2024-09-17 17:00,2024-07-29 14:07,2025-06-09 13:00
CN.BB51.ST.1500,HANG INTEROR DRYWALL (3-LAYERS) - GL 33 - L2 - A-B,Complete,Area B-5,North Areas (Team B -Gridlines 17-33),GRIDLINE 33,L2 - SubFab Level,GL33 EXTERIOR AREA (SUE) - A-C,,DRYWALL,AMBER CARO,2024-02-26 07:00,2024-03-05 11:00,2024-02-26 07:00,2024-03-08 00:00
CN.BB51.ST.1510,HANG INTEROR DRYWALL (3-LAYERS) - GL 33 - L2 - L-N,Complete,Area B-5,North Areas (Team B -Gridlines 17-33),GRIDLINE 33,L2 - SubFab Level,GL33 EXTERIOR AREA (SUW) - L-N,,DRYWALL,AMBER CARO,2024-03-11 07:00,2024-03-25 11:00,2024-03-04 08:00,2024-03-22 00:00
CN.AB3.ST.2360,HANG EXTERIOR DRYWALL (3-LAYERS) - GL 33 - L3 - K-N,Complete,Area B-5,,GRIDLINE 33,L3 / Waffle Slab Level,GL33 EXTERIOR AREA (SUW) - L-N,BERG,DRYWALL,,2025-08-06 07:00,2025-08-13 17:00,2025-07-24 12:29,2025-08-04 17:00
CN.AB3.ST.2410,HANG INTEROR DRYWALL (3-LAYERS) - GL 33 - L3 - A-B,Complete,Area B-5,,GRIDLINE 33,L3 / Waffle Slab Level,GL33 EXTERIOR AREA (SUE) - A-C,,DRYWALL,,2024-03-26 13:00,2024-04-11 09:00,2024-02-26 00:00,2024-03-07 00:00
CN.AB3.ST.2420,HANG INTEROR DRYWALL (3-LAYERS) - GL 33 - L3 - L-M,Complete,Area B-5,,GRIDLINE 33,L3 / Waffle Slab Level,GL33 EXTERIOR AREA (SUW) - L-N,BERG,DRYWALL,,2024-04-22 07:00,2024-04-29 17:00,2024-04-13 07:00,2024-04-18 17:00
CN.SWB5.6930,HANG INTEROR DRYWALL (3-LAYERS) - GL 33 - L1 - B-C,Complete,Area B-5,West Support Building,GRIDLINE 33,L1 - Fndn Slab,GL33 EXTERIOR AREA (SUE) - A-C,BERG,DRYWALL,JAMES LIVELY,2024-04-15 07:00,2024-04-22 17:00,2024-04-08 07:00,2024-04-13 17:00
CN.SWB5.6940,HANG INTEROR DRYWALL (3-LAYERS) - GL 33 - L1 - M-N,Complete,Area B-5,West Support Building,GRIDLINE 33,L1 - Fndn Slab,GL33 EXTERIOR AREA (SUW) - L-N,,DRYWALL,JAMES LIVELY,2024-03-22 07:00,2024-03-27 09:00,2024-03-19 00:00,2024-03-30 00:00
CN.BB51.ST.1630,HANG INTEROR DRYWALL (3-LAYERS) - GL 33 - L2 - B-C,Complete,Area B-5,North Areas (Team B -Gridlines 17-33),GRIDLINE 33,L2 - SubFab Level,GL33 EXTERIOR AREA (SUE) - A-C,BERG,DRYWALL,AMBER CARO,2024-03-01 07:00,2024-03-07 17:00,2024-03-01 07:00,2024-03-06 17:00
CN.BB51.ST.1650,HANG EXTERIOR DRYWALL (3-LAYERS) - GL 33 - L2 - H-K,Complete,Area B-5,North Areas (Team B -Gridlines 17-33),GRIDLINE 33,L2 - SubFab Level,GL33 EXTERIOR AREA (FAB WEST) - G-K,BERG,DRYWALL,AMBER CARO,2024-02-05 07:00,2024-02-14 17:00,2024-02-01 07:00,2024-03-04 17:00
CN.AB3.ST.2500,HANG INTEROR DRYWALL (3-LAYERS) - GL 33 - L3 - B-C,Complete,Area B-5,,GRIDLINE 33,L3 / Waffle Slab Level,GL33 EXTERIOR AREA (SUE) - A-C,BERG,DRYWALL,,2024-04-25 07:00,2024-05-14 17:00,2024-04-13 07:00,2024-04-25 17:00
CN.AB3.ST.2520,REMAINING HANG INTEROR DRYWALL (3-LAYERS) - GL 33 - L3 - H-K,Complete,Area B-5,,GRIDLINE 33,L3 / Waffle Slab Level,GL33 EXTERIOR AREA (FAB WEST) - G-K,BERG,DRYWALL,,2024-05-07 07:00,2024-05-16 17:00,2024-04-06 07:00,2024-04-10 17:00
CN.AB3.ST.2540,HANG INTEROR DRYWALL (3-LAYERS) - GL 33 - L3 - N-M,Complete,Area B-5,,GRIDLINE 33,L3 / Waffle Slab Level,GL33 EXTERIOR AREA (SUW) - L-N,,DRYWALL,,2024-04-15 07:00,2024-04-19 15:00,2024-03-15 00:00,2024-03-18 00:00
CN.SWB5.9350,IMPACT - REPAIR CONCRETE CURB TO FINISH DRYWALL - GL 33 - L1 - L-N,Complete,Area B-5,West Support Building,GRIDLINE 33,L1 - Fndn Slab,GL33 EXTERIOR AREA (SUW) - L-N,BERG,DRYWALL,JAMES LIVELY,2024-08-01 07:00,2024-08-06 17:00,2024-08-01 07:00,2024-08-05 17:00
CN.SWB5.11000,IMPACT - RFI #1769 for GL 33 - L-N level 1 is holding drywall and CMP completion,Complete,Area B-5,West Support Building,GRIDLINE 33,L1 - Fndn Slab,GL33 EXTERIOR AREA (SUW) - L-N,BERG,DRYWALL,JAMES LIVELY,2025-06-23 07:00,2025-07-03 17:00,2025-06-23 07:00,2025-06-30 17:00
CN.SWA1.1180,PH1- AD STEEL FRAME INSTALL - SWA-1 fab side(14-17),Complete,SWA - 1,West Support Building,NORTH WEST PENTHOUSE,DS/AD,,,Steel Erection,SEAN MONK,2023-11-07 15:00,2023-11-10 09:00,2023-10-29 15:00,2023-11-10 09:00
CN.AB.AR.1110,TAPE & FINISH DRYWALL - SWA--L1-MCC/IO- GL 18-15 K-N  - SECAI TOOK OVER FOR ACCELERATION,Complete,SWA - 1,West Support Building,SUWS-1 - 18-15,L1 - Fndn Slab,MCC/IO,CHERRY COATING,DRYWALL,AMBER CARO,2025-06-04 07:00,2025-06-10 17:00,2025-06-10 07:00,2025-06-10 17:00
CN.AB.AR.4440,DRYWALL 2 SIDE - SWA-1 - L1-WASTE WATER TANK RM NORTH - GL 18-15 K-N - SECAI TOOK OVER FOR ACCELERATION,Complete,SWA - 1,West Support Building,SUWS-1 - 18-15,L1 - Fndn Slab,MCC/IO,BERG,DRYWALL,AMBER CARO,2024-03-22 07:00,2024-03-27 17:00,2024-03-11 07:00,2025-06-10 17:00
CN.AB.AR.4450,DRYWALL & INSULATION (1 side) (INT) - SWA-1 - L1 WASTE WATER TANK RM NORTH- GL 17 K-N - SECAI TOOK OVER FORACCELERATION,Complete,SWA - 1,West Support Building,SUWS-1 - 18-15,L1 - Fndn Slab,MCC/IO,BERG,DRYWALL,AMBER CARO,2024-03-11 07:00,2024-03-19 17:00,2024-03-01 07:00,2025-06-10 17:00
CN.SWA1.1570,PH1- DS STEEL FRAME INSTALL - SWA-1 Comeback Sup Side(14-17),Complete,SWA - 1,West Support Building,SUWS-1 - 18-15,DS/AD,,,Steel Erection,SEAN MONK,2023-11-05 08:00,2023-11-08 14:00,2023-11-05 08:00,2023-11-10 15:00
CN.SWA1.1600,PH1- INSTALL H FRAME - ROLL UP DOOR - SWA-1 - L1-WASTE WATER TANK RM NORTH- GL 18-15 K-N,Not Started,SWA - 1,West Support Building,SUWS-1 - 18-15,L1 - Fndn Slab,MCC/IO,PATRIOT,TBD Architectural Finishes,JAMES LIVELY,2025-11-21 07:00,2025-11-24 17:00,,
CN.AB.AR.4700,INSTALL ROLL UP DOORS - SWA-1 - L1 - (N17.5 - 301B) WASTE WATER RM NORTH - (MEP ROUGH IN NOT INCLUDED),Not Started,SWA - 1,West Support Building,SUWS-1 - 18-15,EXTERIOR SKIN,,PATRIOT,INSULATED METAL PANELS,AMBER CARO,2025-11-26 07:00,2025-12-01 17:00,,
CN.AB.AR.5610,TAPE & FINISH DRYWALL - SWA-1 - L2- BATTERY ROOM 1- GL 18-15 K-N,Complete,SWA - 1,West Support Building,SUWS-1 - 18-15,L2 - SubFab Level,BATT. RM 1,,DRYWALL,AMBER CARO,2024-01-02 09:00,2024-01-07 08:00,2024-01-02 07:00,2024-01-07 10:00
CN.AB.AR.5600,DRYWALL 2 SIDE - SWA-1 - L2- BATTERY ROOM 1- GL 18-15 K-N,Complete,SWA - 1,West Support Building,SUWS-1 - 18-15,L2 - SubFab Level,BATT. RM 1,,DRYWALL,AMBER CARO,2023-12-12 10:00,2023-12-17 10:00,2023-12-12 10:00,2023-12-17 13:00
CN.AB.AR.5590,DRYWALL & INSULATION (1 side) (INT) - SWA-1 - L2- BATTERY ROOM 1- GL 18-15 K-N,Complete,SWA - 1,West Support Building,SUWS-1 - 18-15,L2 - SubFab Level,BATT. RM 1,,DRYWALL,AMBER CARO,2023-11-10 12:00,2023-11-14 12:00,2023-11-09 12:00,2023-11-14 10:00
CN.AB.AR.5710,TAPE & FINISH DRYWALL - SWA-1 - L3 - SUB CLEAN ROOM NORTH- GL 18-15 K-N,Complete,SWA - 1,West Support Building,SUWS-1 - 18-15,L3 / Waffle Slab Level,SUB CLEAN RM,CHERRY COATING,DRYWALL,AMBER CARO,2025-06-09 07:00,2025-06-13 17:00,2025-06-09 07:00,2025-06-13 17:00
CN.AB.AR.5700,DRYWALL 2 SIDE - SWA-1 - L3 - SUB CLEAN ROOM NORTH- GL 18-15 K-N,Complete,SWA - 1,West Support Building,SUWS-1 - 18-15,L3 / Waffle Slab Level,SUB CLEAN RM,BERG,DRYWALL,AMBER CARO,2025-06-02 07:00,2025-06-06 17:00,2025-06-02 07:00,2025-06-06 17:00
CN.AB.AR.5690,DRYWALL & INSULATION (1 side) (INT) - SWA-1 - L3 - SUB CLEAN ROOM NORTH- GL 18-15 K-N,Complete,SWA - 1,West Support Building,SUWS-1 - 18-15,L3 / Waffle Slab Level,SUB CLEAN RM,BERG,DRYWALL,AMBER CARO,2024-05-09 07:00,2024-05-16 17:00,2024-05-09 07:00,2024-05-14 17:00
CN.AB.AR.5810,TAPE & FINISH DRYWALL - SWA-1 - L2- BATTERY ROOM 2- GL 18-15 K-N,Complete,SWA - 1,West Support Building,SUWS-1 - 18-15,L2 - SubFab Level,BATT. RM 2,,DRYWALL,AMBER CARO,2024-01-02 09:00,2024-01-07 08:00,2024-01-02 07:00,2024-01-07 10:00
CN.AB.AR.5800,DRYWALL 2 SIDE - SWA-1 - L2- BATTERY ROOM 2- GL 18-15 K-N,Complete,SWA - 1,West Support Building,SUWS-1 - 18-15,L2 - SubFab Level,BATT. RM 2,,DRYWALL,AMBER CARO,2023-12-11 07:00,2023-12-15 17:00,2023-12-11 07:00,2023-12-15 17:00
CN.AB.AR.5790,DRYWALL & INSULATION (1 side) (INT) - SWA-1 - L2- BATTERY ROOM 2- GL 18-15 J-N,Complete,SWA - 1,West Support Building,SUWS-1 - 18-15,L2 - SubFab Level,BATT. RM 2,,DRYWALL,AMBER CARO,2023-11-16 07:00,2023-11-19 17:00,2023-11-14 07:00,2023-11-18 11:00
CN.SWA1.1352,TAPE & FINISH DRYWALL- SWA1- GL 18-15  - K LINE  -  L1,Complete,SWA - 1,West Support Building,SUWS-1 - 18-15,L1 - Fndn Slab,DS/AD INTERIORS,,DRYWALL,FIZ DATA CENTER,2024-03-20 11:00,2024-03-26 11:00,2024-03-11 00:00,2024-03-18 00:00
CN.SWA1.1382,PRIMER & PAINT DRYWALL - GL 18-15 - K LINE - L1,Complete,SWA - 1,West Support Building,SUWS-1 - 18-15,L1 - Fndn Slab,DS/AD INTERIORS,FINISH PAINT,TBD Architectural Finishes,FIZ DATA CENTER,2024-10-21 07:00,2024-10-24 17:00,2024-10-19 07:00,2024-10-22 17:00
CN.SWA1.1322,DRYWALL 2 SIDE - SWA1- GL 18-15 - K LINE - L1,Complete,SWA - 1,West Support Building,SUWS-1 - 18-15,L1 - Fndn Slab,DS/AD INTERIORS,,DRYWALL,FIZ DATA CENTER,2024-03-09 08:00,2024-03-17 08:00,2024-03-03 00:00,2024-03-08 00:00
CN.SWA1.1292,DRYWALL & INSULATION (1 side) (INT)- SWA1- GL 18-15 - K LINE - L1,Complete,SWA - 1,West Support Building,SUWS-1 - 18-15,L1 - Fndn Slab,DS/AD INTERIORS,,DRYWALL,FIZ DATA CENTER,2023-12-11 07:00,2023-12-16 15:00,2023-12-11 07:00,2023-12-19 09:00
CN.SWA1.1362,REMEDY - TAPE & FINISH DRYWALL- SWA1- GL 18-15 K LINE L2,Complete,SWA - 1,West Support Building,SUWS-1 - 18-15,L2 - SubFab Level,DS/AD INTERIORS,CHERRY COATING,DRYWALL,FIZ DATA CENTER,2024-08-12 07:00,2024-08-15 17:00,2024-08-10 07:00,2024-08-13 17:00
CN.SWA1.1332,REMEDY - FRAME & DRYWALL - SWA1- GL 18-15 K LINE L2,Complete,SWA - 1,West Support Building,SUWS-1 - 18-15,L2 - SubFab Level,DS/AD INTERIORS,BERG,DRYWALL,FIZ DATA CENTER,2024-07-18 07:00,2024-08-08 17:00,2024-07-17 07:00,2024-08-03 17:00
CN.SWA1.1302,DRYWALL & INSULATION (1 side) (INT) - SWA1- GL 18-15 K LINE - L2,Complete,SWA - 1,West Support Building,SUWS-1 - 18-15,L2 - SubFab Level,DS/AD INTERIORS,,DRYWALL,FIZ DATA CENTER,2024-01-08 09:00,2024-01-14 17:00,2024-01-08 07:00,2024-01-12 15:00
CN.SWA1.1212,TEMP WALLS Framing and Drywall- SWA1- GL 18-15 - L2- GL 18-15 K-N,Complete,SWA - 1,,SUWS-1 - 18-15,L2 - SubFab Level,BATT. RM 1,,DRYWALL,,2024-02-19 07:00,2024-02-23 17:00,2024-02-19 07:00,2024-02-23 17:00
CN.SWA1.1222,TEMP WALLS Framing and Drywall- SWA1- GL 18-15 -  L2- GL 18-15 K-N,Complete,SWA - 1,,SUWS-1 - 18-15,L2 - SubFab Level,BATT. RM 2,,DRYWALL,,2024-01-02 09:00,2024-01-07 08:00,2024-01-16 07:00,2024-01-23 10:00
CN.SWA1.1402,TAPE & FINISH DRYWALL - SWA1- GL 18-15 K LINE  -  L3,Complete,SWA - 1,West Support Building,SUWS-1 - 18-15,L3 / Waffle Slab Level,DS/AD INTERIORS,CHERRY COATING,DRYWALL,FIZ DATA CENTER,2024-08-02 07:00,2024-08-08 17:00,2024-07-15 07:00,2024-07-20 17:00
CN.SWA1.1372,DRYWALL 2 SIDE- SWA1- GL 18-15 K LINE - L3,Complete,SWA - 1,West Support Building,SUWS-1 - 18-15,L3 / Waffle Slab Level,DS/AD INTERIORS,BERG,DRYWALL,FIZ DATA CENTER,2024-05-23 07:00,2024-05-30 17:00,2024-05-23 07:00,2024-06-20 17:00
CN.SWA1.1342,DRYWALL & INSULATION (1 side) (INT)- SWA1- GL 18-15 K LINE - L3,Complete,SWA - 1,West Support Building,SUWS-1 - 18-15,L3 / Waffle Slab Level,DS/AD INTERIORS,BERG,DRYWALL,FIZ DATA CENTER,2024-04-15 09:00,2024-04-19 09:00,2024-04-10 09:00,2024-04-19 17:00
CN.SWA1.1232,FRAMING & DRYWALL - ELEVATOR 03 - SWB-1 - ALL LEVELS GL 19-16 (3 sides only),Complete,SWA - 1,West Support Building,SUWS-1 - 18-15,,ELEVATOR,BERG,DRYWALL,JAMES LIVELY,2024-07-17 07:00,2024-08-16 17:00,2024-07-17 07:00,2024-08-14 17:00
CN.AB.AR.4810,OVERHEAD DOOR DIMENSIONS FIELD MEASURE- SUW1 - GL 18-15 - L1 - C-E,Complete,SWA - 1,,SUWS-1 - 18-15,EXTERIOR SKIN,,,INSULATED METAL PANELS,,2023-11-27 08:00,2023-11-28 14:00,2023-11-16 08:00,2023-11-17 16:00
CN.SWA1.6480,Drywall Clips & AMTS Installs Support Beams - SWA-1 L4 GL 18-15 - K LINE,Complete,SWA - 1,West Support Building,SUWS-1 - 18-15,L4 - SUP Roof - FAB Roof,DS/AD INTERIORS,SECAI,Fireproofing,HOON WOO,2024-03-25 07:00,2024-04-01 10:00,2024-03-20 07:00,2024-04-05 17:00
CN.SWA1.6610,REMAINING DRYWALL & INSULATION (1 side) (INT)- SWA1- GL 18-15 - K LINE - L1,Complete,SWA - 1,West Support Building,SUWS-1 - 18-15,L1 - Fndn Slab,DS/AD INTERIORS,,DRYWALL,FIZ DATA CENTER,2023-12-11 07:00,2023-12-16 15:00,2023-12-11 07:00,2023-12-19 09:00
CN.SWA1.6650,INSTALL ELEVATOR HSS STEEL DOOR OPENINGS - ELEVATOR 03 - SWB-1 - ALL LEVELS GL 19-16 [INCOMPLETE SWO],Complete,SWA - 1,West Support Building,SUWS-1 - 18-15,,ELEVATOR,W&W,DRYWALL,JAMES LIVELY,2024-04-15 07:00,2024-04-30 17:00,2024-03-18 07:00,2024-04-24 17:00
CN.SWA1.9580,IMPACT - APACHE DEMO DRYWALL & SCRAPE FIREPROOFING SFRM-1 - ELEVATOR 03 - ALL LEVELS,Complete,SWA - 1,West Support Building,SUWS-1 - 18-15,,ELEVATOR,W&W,Steel Erection,JAMES LIVELY,2024-09-03 07:00,2024-09-13 17:00,2024-08-09 07:00,2024-08-13 17:00
CN.SWA1.9630,IMPACT - COMPLETE REMAINING DRYWALL LEAVEOUTS FOR FIREPROOFING - ELEVATOR 03,Complete,SWA - 1,West Support Building,SUWS-1 - 18-15,,ELEVATOR,W&W,Steel Erection,JAMES LIVELY,2024-09-23 07:00,2024-10-01 17:00,2024-08-21 07:00,2024-08-27 17:00
CN.SWA1.9650,COMPLETE MECHANICAL ROOM FRAMING / DRYWALL / TAPE & FLOAT + CEILING - ELEVATOR 03,Complete,SWA - 1,West Support Building,SUWS-1 - 18-15,,ELEVATOR,W&W,Steel Erection,JAMES LIVELY,2024-08-02 07:00,2024-09-04 17:00,2024-08-01 07:00,2024-08-23 17:00
CN.SWA1.9660,COMPLETE REMAINING HSS STEEL DOOR OPENINGS - ELEVATOR 03,Complete,SWA - 1,West Support Building,SUWS-1 - 18-15,,ELEVATOR,W&W,DRYWALL,JAMES LIVELY,2025-01-08 07:00,2025-01-31 17:00,2025-01-08 07:00,2025-01-16 17:00
CN.SWA1.9690,"COMPLETE REMAINING FRAMING, DRYWALL, FIRE CAULKING - INTERIOR SHAFT & DOOR FRONTS - ELEVATOR 03",Complete,SWA - 1,West Support Building,SUWS-1 - 18-15,,ELEVATOR,W&W,Steel Erection,JAMES LIVELY,2025-02-26 07:00,2025-03-21 17:00,2025-02-26 07:00,2025-03-24 17:00
CN.SWA1.9710,INSTALL PERMANENT DOOR & FRAME - MECHANICAL ROOM - FAB110303A - ELEVATOR 03,Complete,SWA - 1,West Support Building,SUWS-1 - 18-15,,ELEVATOR,W&W,Steel Erection,JAMES LIVELY,2025-04-21 07:00,2025-04-28 17:00,2025-03-26 07:00,2025-04-01 13:00
CN.SWA1.9720,"FINAL TURNOVER - SHAFT, DOOR FRONT, MECHANICAL ROOM - ELEVATOR 03 - Complete turned over on",Complete,SWA - 1,West Support Building,SUWS-1 - 18-15,,ELEVATOR,W&W,Steel Erection,JAMES LIVELY,2025-05-21 17:00,2025-05-21 17:00,2025-04-25 17:00,2025-04-25 17:00
CN.SWA1.9730,"COMPLETE FRAMING, DRYWALL, FIRE CAULKING - DOOR FRONTS - ELEVATOR 03",Complete,SWA - 1,West Support Building,SUWS-1 - 18-15,,ELEVATOR,W&W,Steel Erection,JAMES LIVELY,2025-04-21 07:00,2025-05-09 17:00,2025-03-18 12:00,2025-03-25 17:00
CN.SWA1.9740,TAPE & FLOAT - DOOR FRONTS - ELEVATOR 03,Complete,SWA - 1,West Support Building,SUWS-1 - 18-15,,ELEVATOR,W&W,Steel Erection,JAMES LIVELY,2025-05-12 07:00,2025-05-21 17:00,2025-04-16 07:00,2025-04-22 17:00
CN.SWA1.9750,SECAI - INSTALL ELEVATOR DOOR FRONTS - ELEVATOR 03,Complete,SWA - 1,West Support Building,SUWS-1 - 18-15,,ELEVATOR,W&W,DRYWALL,JAMES LIVELY,2025-04-25 07:00,2025-05-01 17:00,2025-04-14 07:00,2025-04-15 17:00
CN.SWA1.9780,SECAI - ELEVATOR C-CHANNEL DOOR JAMBS DESIGN / QUOTE CLARIFICATION RFI 1570 - ELEVATOR 03(NOT REQUIRED),Complete,SWA - 1,West Support Building,SUWS-1 - 18-15,,ELEVATOR,W&W,DRYWALL,JAMES LIVELY,2024-12-23 07:00,2024-12-31 17:00,2024-09-19 07:00,2024-11-01 17:00
CN.SWA1.9810,SECAI - ELEVATOR C-CHANNEL DOOR JAMBS DESIGN / QUOTE CLARIFICATION RFI 1570  - ELEVATOR 20(NOT REQUIRED),Complete,SWA - 1,West Support Building,SUWS-1 - 18-15,,ELEVATOR,W&W,DRYWALL,JAMES LIVELY,2024-12-23 07:00,2024-12-31 17:00,2024-09-19 07:00,2024-11-01 17:00
CN.SWA1.9830,SECAI - ELEVATOR C-CHANNEL DOOR JAMBS DESIGN / QUOTE CLARIFICATION  RF1 1570- ELEVATOR 22(NOT REQUIRED),Complete,SWA - 1,West Support Building,SUWS-1 - 18-15,,ELEVATOR,W&W,DRYWALL,JAMES LIVELY,2024-12-23 07:00,2024-12-31 17:00,2024-09-19 07:00,2024-11-01 17:00
CN.SWA1.9860,SECAI - ELEVATOR C-CHANNEL DOOR JAMBS DESIGN / QUOTE CLARIFICATION  - ELEVATOR 5,Complete,SWA - 1,West Support Building,SUWS-1 - 18-15,,ELEVATOR,W&W,DRYWALL,JAMES LIVELY,2024-12-23 07:00,2024-12-31 17:00,2024-09-19 07:00,2024-10-29 17:00
CN.SWA1.9870,ELEVATOR C-CHANNEL DOOR FAB & INSTALL - ELEVATOR 5- no longer needed C Channel,Complete,SWA - 1,West Support Building,SUWS-1 - 18-15,,ELEVATOR,W&W,DRYWALL,JAMES LIVELY,2024-11-21 07:00,2025-02-17 17:00,2024-10-22 12:00,2024-10-29 17:00
CN.SWA1.9890,SECAI - ELEVATOR C-CHANNEL DOOR JAMBS DESIGN / QUOTE CLARIFICATION RFI- 1570  - ELEVATOR 1B(NOT REQUIRED),Complete,SWA - 1,West Support Building,SUWS-1 - 18-15,,ELEVATOR,W&W,DRYWALL,JAMES LIVELY,2024-12-23 07:00,2024-12-31 17:00,2024-09-19 07:00,2024-11-01 17:00
CN.SWA1.9920,SECAI - ELEVATOR C-CHANNEL DOOR JAMBS DESIGN / QUOTE CLARIFICATION- RFI 1570  - ELEVATOR 01(NOT REQUIRED),Complete,SWA - 1,West Support Building,SUWS-1 - 18-15,,ELEVATOR,W&W,DRYWALL,JAMES LIVELY,2024-12-23 07:00,2024-12-31 17:00,2024-09-19 07:00,2024-11-01 17:00
CN.SWA1.10030,IMPACT - PATRIOT BENT PLATE FIX - FINISH DRYWALL AND PARAPET - GL 17-18 - L LINE (DS AREA) [VOC ROOM],Complete,SWA - 1,West Support Building,SUWS-1 - 18-15,EXTERIOR SKIN,,KOVACH,INSULATED METAL PANELS,JAMES LIVELY,2025-01-14 07:00,2025-01-20 17:00,2025-01-14 07:00,2025-01-22 17:00
CN.AB.AR.8370,FINISH DRYWALL & FINISHES - AIRLOCK 3 - GL 17-19 - L-M - L3,Complete,SWA - 1,West Support Building,SUWS-1 - 18-15,L3 / Waffle Slab Level,AIRLOCKS & VESTABLES,BERNCO,TBD Architectural Finishes,JAMES LEE,2025-01-23 07:00,2025-01-27 17:00,2025-01-23 07:00,2025-02-01 17:00
CN.AB.AR.8380,FINISH DRYWALL & FINISHES - CLEAN VESTIBULE 4 - GL 17-19 - L-M - L3,Complete,SWA - 1,West Support Building,SUWN-2 - 21-24,L3 / Waffle Slab Level,AIRLOCKS & VESTABLES,BERNCO,TBD Architectural Finishes,JAMES LEE,2025-02-04 07:00,2025-02-12 17:00,2025-02-04 07:00,2025-02-19 17:00
CN.AB.AR.8460,FINISH DRYWALL & FINISHES - VESTIBULE 3 - GL 17-19 - L-M - L3,Complete,SWA - 1,West Support Building,SUWS-1 - 18-15,L3 / Waffle Slab Level,AIRLOCKS & VESTABLES,BERNCO,TBD Architectural Finishes,JAMES LEE,2025-02-05 07:00,2025-02-13 17:00,2025-02-05 07:00,2025-09-08 17:00
CN.AB.AR.8520,FINISH DRYWALL & FINISHES - CLEAN VESTIBULE 4 - K/23 - L2,Complete,SWA - 1,West Support Building,SUWN-2 - 21-24,L2 - SubFab Level,AIRLOCKS & VESTABLES,BERNCO,TBD Architectural Finishes,JAMES LEE,2025-08-04 07:00,2025-08-05 17:00,2025-08-04 07:00,2025-08-15 17:00
CN.AB.AR.8530,FINISH DRYWALL & FINISHES - CLEAN VESTIBULE 19 - D/25-29 - L2,Not Started,SWA - 1,West Support Building,SUEN-3 - 25-28,L2 - SubFab Level,AIRLOCKS & VESTABLES,BERNCO,TBD Architectural Finishes,JAMES LEE,2025-11-21 07:00,2025-11-24 17:00,,
CN.AB.AR.8540,FINISH DRYWALL & FINISHES - CLEAN VESTIBULE 21 - D/13 - L2,Complete,SWA - 1,West Support Building,SUEN-1 - 19-22,L2 - SubFab Level,AIRLOCKS & VESTABLES,BERNCO,TBD Architectural Finishes,JAMES LEE,2025-07-24 07:00,2025-07-25 17:00,2025-07-24 07:00,2025-07-25 17:00
CN.AB.AR.8620,IMPACT - SECAI ADDS OPENING IMPENDING DRYWALL COMPLETION - CLEAN VESTIBULE 4 - GL 17-19 - L-M - L3,Complete,SWA - 1,West Support Building,SUWN-2 - 21-24,L3 / Waffle Slab Level,AIRLOCKS & VESTABLES,BERNCO,TBD Architectural Finishes,JAMES LEE,2025-02-04 07:00,2025-02-12 17:00,2025-01-25 07:00,2025-02-14 17:00
CN.SWA2.1130,PH1- AD STEEL FRAME INSTALL - SWA-2 fab side,Complete,SWA - 2,West Support Building,SUWS-2 - 15-12,DS/AD,,,Steel Erection,SEAN MONK,2023-10-24 07:00,2023-10-28 09:00,2023-10-23 07:00,2023-10-28 10:00
CN.AB.AR.2860,TAPE & FINISH DRYWALL - WASTE WATER TANK RM SOUTH - SWA2 - GL 12-15 - L-N - L1,Complete,SWA - 2,West Support Building,SUWS-2 - 15-12,L1 - Fndn Slab,WASTE WATER TANK RM,CHERRY COATING,DRYWALL,AMBER CARO,2024-06-25 07:00,2024-07-02 17:00,2024-03-25 07:00,2024-04-01 00:00
CN.AB.AR.4460,DRYWALL 2 SIDE - WASTE WATER TANK RM SOUTH - SWA2 - GL 12-15 - L-N - L1,Complete,SWA - 2,West Support Building,SUWS-2 - 15-12,L1 - Fndn Slab,WASTE WATER TANK RM,BERG,DRYWALL,AMBER CARO,2024-03-25 07:00,2024-03-29 17:00,2024-03-23 16:05,2024-03-29 16:05
CN.AB.AR.4470,DRYWALL & INSULATION (1 side) (INT) - SWA-2-L1-WASTE WATER TANK RM SOUTH- GL 12-15 L-N,Complete,SWA - 2,West Support Building,SUWS-2 - 15-12,L1 - Fndn Slab,WASTE WATER TANK RM,,DRYWALL,AMBER CARO,2024-02-01 09:00,2024-02-05 09:00,2024-02-01 09:00,2024-02-05 13:00
CN.SWA2.1490,PH1- DS STEEL FRAME INSTALL - SWA-2 Comeback Sup Side (10-14),Complete,SWA - 2,West Support Building,SUWS-2 - 15-12,DS/AD,,,Steel Erection,SEAN MONK,2023-10-30 07:00,2023-11-04 09:00,2023-10-30 07:00,2023-11-04 10:00
CN.AB.AR.5390,TAPE & FINISH DRYWALL - SWA--L2- ELECTRICAL ROOM GL 12-15 L-N,Complete,SWA - 2,West Support Building,SUWS-2 - 15-12,L2 - SubFab Level,ELECTRIC RM 1,,DRYWALL,AMBER CARO,2024-01-30 13:00,2024-02-03 13:00,2024-01-27 13:00,2024-02-02 16:00
CN.AB.AR.5380,DRYWALL 2 SIDE - SWA-2-L2- ELECTRICAL ROOM GL 12-15 L-N,Complete,SWA - 2,West Support Building,SUWS-2 - 15-12,L2 - SubFab Level,ELECTRIC RM 1,,DRYWALL,AMBER CARO,2024-01-30 13:00,2024-02-03 13:00,2024-01-23 13:00,2024-01-27 16:00
CN.AB.AR.5370,DRYWALL & INSULATION (1 side) (INT) - SWA-2-L2- ELECTRICAL ROOM GL 12-15 L-N,Complete,SWA - 2,West Support Building,SUWS-2 - 15-12,L2 - SubFab Level,ELECTRIC RM 1,,DRYWALL,AMBER CARO,2023-12-18 10:00,2023-12-19 16:00,2023-12-18 10:00,2024-01-08 17:00
CN.AB.AR.5500,TAPE & FINISH DRYWALL - SUB CLEAN ROOM - SWA2 - GL 15-12 - L3,Complete,SWA - 2,West Support Building,SUWS-2 - 15-12,L3 / Waffle Slab Level,SUB CLEAN RM,CHERRY COATING,DRYWALL,AMBER CARO,2024-06-03 07:00,2024-06-10 17:00,2024-06-03 07:00,2024-06-08 17:00
CN.AB.AR.5490,DRYWALL 2 SIDE - SUB CLEAN ROOM - SWA2 - GL 15-12 - L3,Complete,SWA - 2,West Support Building,SUWS-2 - 15-12,L3 / Waffle Slab Level,SUB CLEAN RM,BERG,DRYWALL,AMBER CARO,2024-05-23 07:00,2024-05-31 17:00,2024-05-23 07:00,2024-05-28 17:00
CN.AB.AR.5480,DRYWALL & INSULATION (1 side) (INT) - SWA-2-L2 - SUB CLEAN ROOM CENTRAL,Complete,SWA - 2,West Support Building,SUWS-2 - 15-12,L3 / Waffle Slab Level,SUB CLEAN RM,,DRYWALL,AMBER CARO,2024-04-05 15:00,2024-04-15 15:00,2024-03-13 00:00,2024-03-20 00:00
CN.SWA2.1212,TEMP WALLS Framing and Drywall- SWA2- GL 15-12 - L1,Complete,SWA - 2,,SUWS-2 - 15-12,L2 - SubFab Level,ELECTRIC RM 1,,DRYWALL,,2023-12-11 07:00,2023-12-15 17:00,2023-12-11 07:00,2023-12-15 17:00
CN.SWA2.1362,TAPE & FINISH DRYWALL - SWA2 - GL 15-12 - K LINE - L3,Complete,SWA - 2,West Support Building,SUWS-2 - 15-12,L3 / Waffle Slab Level,DS/AD INTERIORS,CHERRY COATING,DRYWALL,FIZ DATA CENTER,2024-05-20 07:00,2024-05-24 17:00,2024-05-20 07:00,2024-05-24 17:00
CN.SWA2.1352,DRYWALL 2 SIDE - SWA2 - GL 15-12 - K LINE - L3,Complete,SWA - 2,West Support Building,SUWS-2 - 15-12,L3 / Waffle Slab Level,DS/AD INTERIORS,BERG,DRYWALL,FIZ DATA CENTER,2024-05-13 07:00,2024-05-17 17:00,2024-05-11 07:00,2024-05-16 17:00
CN.SWA2.1342,DRYWALL & INSULATION (1 side) (INT)- SWA2- GL 12-15 K LINE - L3,Complete,SWA - 2,West Support Building,SUWS-2 - 15-12,L3 / Waffle Slab Level,DS/AD INTERIORS,,DRYWALL,FIZ DATA CENTER,2024-03-29 11:00,2024-04-02 15:00,2024-03-05 11:00,2024-03-11 16:00
CN.SWA2.1292,TAPE & FINISH DRYWALL - SWA2-  GL 12-15 K LINE-  L1,Complete,SWA - 2,West Support Building,SUWS-2 - 15-12,L1 - Fndn Slab,DS/AD INTERIORS,,DRYWALL,FIZ DATA CENTER,2024-03-09 08:00,2024-03-17 08:00,2024-03-01 00:00,2024-03-06 00:00
CN.SWA2.1312,PRIMER & PAINT DRYWALL - GL 12-15 - K LINE - L1,Complete,SWA - 2,West Support Building,SUWS-2 - 15-12,L1 - Fndn Slab,DS/AD INTERIORS,FINISH PAINT,TBD Architectural Finishes,FIZ DATA CENTER,2024-10-21 07:00,2024-10-24 17:00,2024-10-19 07:00,2024-10-22 17:00
CN.SWA2.1272,DRYWALL 2 SIDE - SWA2- GL 12-15 K LINE - L1,Complete,SWA - 2,West Support Building,SUWS-2 - 15-12,L1 - Fndn Slab,DS/AD INTERIORS,,DRYWALL,FIZ DATA CENTER,2024-02-01 07:00,2024-02-04 17:00,2024-02-01 07:00,2024-02-05 11:00
CN.SWA2.1252,DRYWALL & INSULATION (1 side) (INT) - SWA2- GL 12-15 K LINE - L1,Complete,SWA - 2,West Support Building,SUWS-2 - 15-12,L1 - Fndn Slab,DS/AD INTERIORS,,DRYWALL,FIZ DATA CENTER,2024-01-30 13:00,2024-02-04 11:00,2024-01-26 13:00,2024-01-30 16:00
CN.SWA2.1282,REMEDY - TAPE & FINISH DRYWALL - SWA2 - GL 12-15 - K LINE - L2,Complete,SWA - 2,West Support Building,SUWS-2 - 15-12,L2 - SubFab Level,DS/AD INTERIORS,CHERRY COATING,DRYWALL,FIZ DATA CENTER,2024-08-12 07:00,2024-08-15 17:00,2024-08-10 07:00,2024-08-13 17:00
CN.SWA2.1262,REMEDY - FRAME & DRYWALL - SWA2 - GL 9-16 - K LINE - L2,Complete,SWA - 2,West Support Building,SUWS-2 - 15-12,L2 - SubFab Level,DS/AD INTERIORS,BERG,DRYWALL,FIZ DATA CENTER,2024-07-22 07:00,2024-08-12 17:00,2024-07-22 07:00,2024-08-05 17:00
CN.SWA2.1242,DRYWALL & INSULATION (1 side) (INT) - SWA2- GL 12-15 K LINE - L2 DS/AD,Complete,SWA - 2,West Support Building,SUWS-2 - 15-12,L2 - SubFab Level,DS/AD INTERIORS,,DRYWALL,FIZ DATA CENTER,2024-01-17 07:00,2024-01-21 15:00,2024-01-12 15:00,2024-01-14 16:00
CN.SWA2.6520,Drywall Clips & AMTS Installs Support Beams - SWA-1-L4 GL 12-15 K LINE,Complete,SWA - 2,West Support Building,SUWS-2 - 15-12,L4 - SUP Roof - FAB Roof,DS/AD INTERIORS,,Fireproofing,HOON WOO,2024-03-25 07:00,2024-04-01 10:00,2024-03-14 19:00,2024-03-25 17:00
CN.SWA2.6680,REMEDY - DEMO DRYWALL (INT) - SWA2- GL 9-16 K LINE - L2 DS/AD,Complete,SWA - 2,West Support Building,SUWS-2 - 15-12,L2 - SubFab Level,DS/AD INTERIORS,BERG,DRYWALL,FIZ DATA CENTER,2024-07-08 07:00,2024-07-15 15:00,2024-07-08 07:00,2024-07-13 15:00
CN.SWA3.1110,PH1- AD STEEL FRAME INSTALL - SWA-3 fab side,Complete,SWA - 3,West Support Building,SUWS-3 - 12-9,DS/AD,,,Steel Erection,SEAN MONK,2023-10-02 07:00,2023-10-03 13:00,2023-10-02 07:00,2023-10-08 13:00
CN.AB.AR.2950,TAPE & FINISH DRYWALL - GAS PURIFER NORTH - GL 12-9 - L-N - L1,Complete,SWA - 3,West Support Building,SUWS-3 - 12-9,L1 - Fndn Slab,GAS PURIFIER RM,CHERRY COATING,DRYWALL,AMBER CARO,2024-07-15 07:00,2024-07-19 17:00,2024-07-15 07:00,2024-07-19 17:00
CN.AB.AR.4480,DRYWALL 2 SIDE - SWA-3 - L1- GAS PURIFER NORTH GL 12-9 L-N,Complete,SWA - 3,West Support Building,SUWS-3 - 12-9,L1 - Fndn Slab,GAS PURIFIER RM,,DRYWALL,AMBER CARO,2024-02-01 13:00,2024-02-03 09:00,2024-02-01 13:00,2024-02-03 14:00
CN.AB.AR.4490,DRYWALL & INSULATION (1 side) (INT) - SWA-3 - L1- GAS PURIFER NORTH,Complete,SWA - 3,West Support Building,SUWS-3 - 12-9,L1 - Fndn Slab,GAS PURIFIER RM,,DRYWALL,AMBER CARO,2023-08-28 09:00,2023-09-02 09:00,2023-08-28 09:00,2023-09-02 10:00
CN.SWA3.1500,PH1- DS STEEL FRAME INSTALL - SWA-3 Comeback Sup Side,Complete,SWA - 3,West Support Building,SUWS-3 - 12-9,DS/AD,,,Steel Erection,SEAN MONK,2023-10-12 07:00,2023-10-13 13:00,2023-10-12 07:00,2023-10-13 13:00
CN.AB.AR.5210,TAPE & FINISH DRYWALL - SWA-3 - L2- ELECTRICAL ROOM- GL 12-9,Complete,SWA - 3,West Support Building,SUWS-3 - 12-9,L2 - SubFab Level,ELECTRIC RM 1,,DRYWALL,AMBER CARO,2023-12-22 10:00,2024-01-03 15:00,2023-12-22 10:00,2023-12-29 17:00
CN.AB.AR.5200,DRYWALL 2 SIDE - SWA-3 - L2- ELECTRICAL ROOM- GL 12-9 L-N,Complete,SWA - 3,West Support Building,SUWS-3 - 12-9,L2 - SubFab Level,ELECTRIC RM 1,,DRYWALL,AMBER CARO,2023-12-18 07:00,2023-12-21 17:00,2023-12-18 07:00,2023-12-21 17:00
CN.AB.AR.5190,DRYWALL & INSULATION (1 side) (INT) - SWA-3 - L2- ELECTRICAL ROOM,Complete,SWA - 3,West Support Building,SUWS-3 - 12-9,L2 - SubFab Level,ELECTRIC RM 1,,DRYWALL,AMBER CARO,2023-10-24 07:00,2023-10-28 17:00,2023-10-24 07:00,2023-10-27 10:00
CN.AB.AR.5300,TAPE & FINISH DRYWALL - SUB CLEAN ROOM SOUTH - SWA3 - GL 12-9 - L-N - L3,Complete,SWA - 3,West Support Building,SUWS-3 - 12-9,L3 / Waffle Slab Level,SUB CLEAN RM,CHERRY COATING,DRYWALL,AMBER CARO,2024-06-24 07:00,2024-07-01 17:00,2024-06-24 07:00,2025-09-19 17:00
CN.AB.AR.5290,DRYWALL 2 SIDE - SUB CLEAN ROOM SOUTH - SWA3 - GL 12-9 - L-N - L3,Complete,SWA - 3,West Support Building,SUWS-3 - 12-9,L3 / Waffle Slab Level,SUB CLEAN RM,BERG,DRYWALL,AMBER CARO,2024-05-28 07:00,2024-06-04 17:00,2024-05-28 07:00,2025-09-15 17:00
CN.AB.AR.5280,DRYWALL & INSULATION (1 side) (INT) - SWA-3 - L3 - SUB CLEAN ROOM SOUTH- GL 12-9 L-N,Complete,SWA - 3,West Support Building,SUWS-3 - 12-9,L3 / Waffle Slab Level,SUB CLEAN RM,,DRYWALL,AMBER CARO,2024-02-06 11:00,2024-02-12 11:00,2024-02-06 11:00,2024-02-11 14:00
CN.SWA3.1212,DRYWALL 2 SIDE - SWA-3 - L1- GAS PURIFER WEST EXTERIOR WALL TEMP- SWA3- GL 12-9 - L-N,Complete,SWA - 3,,SUWS-3 - 12-9,L1 - Fndn Slab,GAS PURIFIER RM,,DRYWALL,,2023-11-13 07:00,2023-11-17 17:00,2023-11-13 07:00,2023-11-17 17:00
CN.SWA3.1322,TAPE & FINISH DRYWALL - SWA3- GL 12-9 -  L1 - K LINE,Complete,SWA - 3,West Support Building,SUWS-3 - 12-9,L1 - Fndn Slab,DS/AD INTERIORS,,DRYWALL,FIZ DATA CENTER,2024-02-19 07:00,2024-02-23 17:00,2024-02-19 07:00,2024-02-23 17:00
CN.SWA3.1342,PRIMER & PAINT DRYWALL - GL 12-9 - K LINE - L1,Complete,SWA - 3,West Support Building,SUWS-3 - 12-9,L1 - Fndn Slab,DS/AD INTERIORS,FINISH PAINT,TBD Architectural Finishes,FIZ DATA CENTER,2024-10-15 07:00,2024-10-18 17:00,2024-10-15 07:00,2024-10-18 17:00
CN.SWA3.1302,DRYWALL 2 SIDE - SWA3- GL 12-9 - L1 - K LINE,Complete,SWA - 3,West Support Building,SUWS-3 - 12-9,L1 - Fndn Slab,DS/AD INTERIORS,,DRYWALL,FIZ DATA CENTER,2023-12-28 07:00,2024-01-04 12:00,2023-12-28 07:00,2024-01-26 13:00
CN.SWA3.1282,DRYWALL & INSULATION (1 side) (INT) - SWA3- GL 12-9 - L1 - K LINE,Complete,SWA - 3,West Support Building,SUWS-3 - 12-9,L1 - Fndn Slab,DS/AD INTERIORS,,DRYWALL,FIZ DATA CENTER,2023-12-04 12:00,2023-12-10 10:00,2023-12-04 12:00,2023-12-08 13:00
CN.SWA3.1332,REMEDY - TAPE & FINISH DRYWALL - SWA3 - GL 12-9 - K LINE - L2,Complete,SWA - 3,West Support Building,SUWS-3 - 12-9,L2 - SubFab Level,DS/AD INTERIORS,CHERRY COATING,DRYWALL,FIZ DATA CENTER,2024-08-12 07:00,2024-08-15 17:00,2024-08-12 07:00,2024-08-15 17:00
CN.SWA3.1312,REMEDY - FRAME & DRYWALL - SWA3-  GL 12-9 - K LINE - L2,Complete,SWA - 3,West Support Building,SUWS-3 - 12-9,L2 - SubFab Level,DS/AD INTERIORS,BERG,DRYWALL,FIZ DATA CENTER,2024-07-15 07:00,2024-08-02 17:00,2024-07-15 07:00,2024-08-05 17:00
CN.SWA3.1292,DRYWALL & INSULATION (1 side) (INT) - SWA3- GL 12-9 K LINE - L2,Complete,SWA - 3,West Support Building,SUWS-3 - 12-9,L2 - SubFab Level,DS/AD INTERIORS,,DRYWALL,FIZ DATA CENTER,2024-02-22 14:00,2024-02-27 12:00,2023-12-22 14:00,2024-01-25 11:00
CN.AB.AR.6100,TEMP WALLS Framing and Drywall,Complete,SWA - 3,,SUWS-3 - 12-9,L2 - SubFab Level,ELECTRIC RM 1,,DRYWALL,,2023-10-09 08:00,2023-10-13 08:00,2023-10-09 08:00,2023-10-13 16:00
CN.SWA3.1422,TAPE & FINISH DRYWALL - SWA3 - GL 12-9 - K LINE - L3,Complete,SWA - 3,West Support Building,SUWS-3 - 12-9,L3 / Waffle Slab Level,DS/AD INTERIORS,CHERRY COATING,DRYWALL,FIZ DATA CENTER,2024-05-20 07:00,2024-05-24 17:00,2024-05-20 07:00,2024-05-24 17:00
CN.SWA3.1412,DRYWALL 2 SIDE - SWA3 - GL 11.5-9 - K LINE - L3,Complete,SWA - 3,West Support Building,SUWS-3 - 12-9,L3 / Waffle Slab Level,DS/AD INTERIORS,BERG,DRYWALL,FIZ DATA CENTER,2024-05-13 07:00,2024-05-17 17:00,2024-05-13 07:00,2024-05-17 17:00
CN.SWA3.1392,DRYWALL & INSULATION (1 side) (INT) - SWA3- GL 12-9 K LINE- L3,Complete,SWA - 3,West Support Building,SUWS-3 - 12-9,L3 / Waffle Slab Level,DS/AD INTERIORS,,DRYWALL,FIZ DATA CENTER,2024-05-04 07:00,2024-05-07 11:00,2024-03-13 00:00,2024-03-22 16:00
CN.SWA3.1402,INSTALL DRYWALL & FIRE CAULKING (SHAFT LINER) SHAFT - ELEVATOR 2 - SWA3 - GL12-9 - ALL LEVELS,Complete,SWA - 3,West Support Building,SUWS-3 - 12-9,,ELEVATOR,BERG,DRYWALL,,2025-07-11 07:00,2025-08-18 17:00,2025-08-05 07:00,2025-10-31 17:00
CN.SWA3.1790,Drywall Clips & AMTS Installs Support Beams - SWA-3 L4 GL 12-9 K LINE,Complete,SWA - 3,West Support Building,SUWS-3 - 12-9,L4 - SUP Roof - FAB Roof,DS/AD INTERIORS,,Fireproofing,HOON WOO,2024-03-25 07:00,2024-04-03 09:00,2024-03-14 07:00,2024-04-01 17:00
CN.AB.AR.6790,REMAINING DRYWALL 2 SIDE - GAS PURIFER NORTH - GL 12-9 - L-N - L1,Complete,SWA - 3,West Support Building,SUWS-3 - 12-9,L1 - Fndn Slab,GAS PURIFIER RM,BERG,DRYWALL,AMBER CARO,2024-07-05 07:00,2024-07-08 17:00,2024-07-05 07:00,2024-07-10 17:00
CN.SWA3.1920,INSTALL ELEVATOR HSS STEEL DOOR OPENINGS - ELEVATOR 2,Complete,SWA - 3,West Support Building,SUWS-3 - 12-9,,ELEVATOR,W&W,DRYWALL,,2025-06-17 07:00,2025-06-30 17:00,2025-06-17 07:00,2025-06-26 17:00
CN.AB.AR.6920,IMPACT - REMOVE AND REINSTALL DAMAGED DRYWALL - SWA3 - GL 9 - L-N - L3,Complete,SWA - 3,West Support Building,SUWS-4 - 9-6,L3 / Waffle Slab Level,FA LAB,BERG,DRYWALL,AMBER CARO,2024-05-16 07:00,2024-05-23 17:00,2024-05-16 07:00,2024-07-01 17:00
CN.SWA3.9550,INSTALL FRAMING/DRYWALL/TAPE+FLOAT - MECHANICAL ROOM - ELEVATOR 2,Active,SWA - 3,West Support Building,SUWS-3 - 12-9,,ELEVATOR,W&W,TBD Architectural Finishes,,2024-10-17 07:00,2024-11-27 17:00,2024-10-17 07:00,
CN.SWA3.9560,IMPACT - SECAI - INSTALL ELEVATOR DOOR JAMBS - ELEVATOR 2 - WAITING FOR SCHEDULE,Complete,SWA - 3,West Support Building,SUWS-3 - 12-9,,ELEVATOR,W&W,DRYWALL,,2025-08-08 07:00,2025-08-21 17:00,2025-08-05 07:00,2025-08-18 17:00
CN.SWA3.9570,IMPACT - INSTALL DRYWALL & FIRE CAULKING - DOOR FRONTS - ELEVATOR 2,Complete,SWA - 3,West Support Building,SUWS-3 - 12-9,,ELEVATOR,W&W,DRYWALL,,2025-09-19 07:00,2025-09-23 17:00,2025-09-19 07:00,2025-10-31 17:00
CN.SWA3.9580,INSTALL PERMANENT DOOR & FRAME - MECHANICAL ROOM - FAB110205A - ELEVATOR 2,Not Started,SWA - 3,West Support Building,SUWS-3 - 12-9,,ELEVATOR,W&W,DRYWALL,,2025-11-24 07:00,2025-11-24 07:00,,
CN.SWA3.9590,"FINAL TURNOVER - DOOR FRONTS, MECHANICAL ROOM (WITH PERM DOOR) - ELEVATOR 2",Not Started,SWA - 3,West Support Building,SUWS-3 - 12-9,,ELEVATOR,BAKER,SOMD,CONCRETE,2025-11-24 07:00,2025-11-24 07:00,,
CN.SWA3.9610,TAPE & FLOAT - SHAFT - DOOR FRONTS - ELEVATOR 2,Complete,SWA - 3,West Support Building,SUWS-3 - 12-9,,ELEVATOR,W&W,DRYWALL,,2025-11-04 07:00,2025-11-10 17:00,2025-11-04 07:00,2025-11-07 17:00
CN.SWA3.9670,PRIMER & PAINT DRYWALL -  GL 3-6 - K LINE - L1,Complete,SWA - 3,West Support Building,SUWS-3 - 12-9,L1 - Fndn Slab,DS/AD INTERIORS,FINISH PAINT,TBD Architectural Finishes,FIZ DATA CENTER,2024-10-15 07:00,2024-10-18 17:00,2024-10-15 07:00,2024-10-18 17:00
CN.SWA3.9690,PRIMER & PAINT DRYWALL -  GL E-G - 3 LINE - L1,Not Started,SWA - 3,West Support Building,SUWS-3 - 12-9,L1 - Fndn Slab,DS/AD INTERIORS,FINISH PAINT,TBD Architectural Finishes,FIZ DATA CENTER,2025-11-21 07:00,2025-11-24 17:00,,
CN.SWA3.9700,PRIMER & PAINT DRYWALL -  GL G-J - 3 LINE - L1,Not Started,SWA - 3,West Support Building,SUWS-3 - 12-9,L1 - Fndn Slab,DS/AD INTERIORS,FINISH PAINT,TBD Architectural Finishes,FIZ DATA CENTER,2025-11-25 07:00,2025-11-26 17:00,,
CN.SWA3.9720,PRIMER & PAINT DRYWALL -  GL 6-9 - K LINE - L1,Complete,SWA - 3,West Support Building,SUWS-3 - 12-9,L1 - Fndn Slab,DS/AD INTERIORS,FINISH PAINT,TBD Architectural Finishes,FIZ DATA CENTER,2024-10-15 07:00,2024-10-18 17:00,2024-10-15 07:00,2024-10-18 17:00
CN.SWA4.1110,PH1- AD STEEL FRAME INSTALL - SWA-4 fab side,Complete,SWA - 4,West Support Building,SUWS-4 - 9-6,DS/AD,,,Steel Erection,SEAN MONK,2023-08-28 07:00,2023-09-02 15:00,2023-08-24 07:00,2023-08-26 16:00
CN.AB.AR.3040,TAPE & FINISH DRYWALL - SWA4 - GL 9-6 - L1 - L-N - GAS PURIFER SOUTH,Complete,SWA - 4,West Support Building,SUWS-4 - 9-6,L1 - Fndn Slab,GAS PURIFIER RM,,DRYWALL,AMBER CARO,2024-01-28 08:00,2024-02-01 08:00,2024-01-28 08:00,2024-02-02 09:00
CN.AB.AR.4500,DRYWALL 2 SIDE - SWA4 - GL 9-6 - L1 - L-N - GAS PURIFER SOUTH,Complete,SWA - 4,West Support Building,SUWS-4 - 9-6,L1 - Fndn Slab,GAS PURIFIER RM,,DRYWALL,AMBER CARO,2024-01-22 09:00,2024-01-26 09:00,2024-01-22 09:00,2024-01-26 09:00
CN.AB.AR.4510,DRYWALL & INSULATION (1 side) (INT) - SWA-4 - L1 - GAS PURIFER SOUTH,Complete,SWA - 4,West Support Building,SUWS-4 - 9-6,L1 - Fndn Slab,GAS PURIFIER RM,,DRYWALL,AMBER CARO,2023-08-21 15:00,2023-08-26 15:00,2023-08-21 15:00,2023-08-26 16:00
CN.SWA4.1490,PH1- DS STEEL FRAME INSTALL - SWA-4 Comeback Sup Side,Complete,SWA - 4,West Support Building,SUWS-4 - 9-6,DS/AD,,,Steel Erection,SEAN MONK,2023-08-28 13:00,2023-09-03 11:00,2023-08-26 13:00,2023-09-11 14:00
CN.AB.AR.5030,TAPE & FINISH DRYWALL - SWA4 - GL 9-6 - L2 - L-N - ELECTRICAL ROOM,Complete,SWA - 4,West Support Building,SUWS-4 - 9-6,L2 - SubFab Level,ELECTRIC RM 1,,DRYWALL,AMBER CARO,2024-01-19 10:00,2024-01-23 10:00,2024-01-19 10:00,2024-01-23 14:00
CN.AB.AR.5020,DRYWALL 2 SIDE - SWA4 - GL 9-6 - L2 - L-N - ELECTRICAL ROOM,Complete,SWA - 4,West Support Building,SUWS-4 - 9-6,L2 - SubFab Level,ELECTRIC RM 1,,DRYWALL,AMBER CARO,2023-12-12 07:00,2023-12-16 17:00,2023-12-12 07:00,2023-12-17 10:00
CN.AB.AR.5010,DRYWALL & INSULATION (1 side) (INT) - SWA-4 - L2 - ELECTRICAL ROOM,Complete,SWA - 4,West Support Building,SUWS-4 - 9-6,L2 - SubFab Level,ELECTRIC RM 1,,DRYWALL,AMBER CARO,2023-10-17 07:00,2023-10-20 17:00,2023-10-17 07:00,2023-10-20 17:00
CN.AB.AR.5120,TAPE & FINISH DRYWALL - FA LAB NORTH - SWA4 - GL 9-3 - L-N - L3,Complete,SWA - 4,West Support Building,SUWS-4 - 9-6,L3 / Waffle Slab Level,FA LAB,CHERRY COATING,DRYWALL,AMBER CARO,2024-05-02 07:00,2024-05-09 17:00,2024-05-02 07:00,2024-05-20 17:00
CN.AB.AR.5110,DRYWALL 2 SIDE - FA LAB NORTH - SWA4 - GL 9-3 - L-N - L3,Complete,SWA - 4,West Support Building,SUWS-4 - 9-6,L3 / Waffle Slab Level,FA LAB,BERG,DRYWALL,AMBER CARO,2024-05-17 07:00,2024-05-24 17:00,2024-04-15 07:00,2024-05-15 17:00
CN.AB.AR.5100,DRYWALL & INSULATION (1 side) (INT) - SWA4 - GL 9-3 - L3 - L-N - FA LAB NORTH,Complete,SWA - 4,West Support Building,SUWS-4 - 9-6,L3 / Waffle Slab Level,FA LAB,,DRYWALL,AMBER CARO,2024-03-12 07:00,2024-03-20 17:00,2024-03-12 07:00,2024-03-18 11:00
CN.SWA4.1312,TAPE & FINISH DRYWALL - SWA4 - GL 9-6 - L1 - K LINE,Complete,SWA - 4,West Support Building,SUWS-4 - 9-6,L1 - Fndn Slab,DS/AD INTERIORS,,DRYWALL,FIZ DATA CENTER,2024-01-05 10:00,2024-01-10 15:00,2024-01-05 07:00,2024-01-26 13:00
CN.SWA4.1292,DRYWALL 2 SIDE - SWA4 - GL 9-6 - L1 - K LINE,Complete,SWA - 4,West Support Building,SUWS-4 - 9-6,L1 - Fndn Slab,DS/AD INTERIORS,,DRYWALL,FIZ DATA CENTER,2023-12-28 07:00,2024-01-04 12:00,2023-12-28 07:00,2024-01-25 13:00
CN.SWA4.1262,DRYWALL & INSULATION (1 side) (INT) - SWA4- GL 9-6 - L1 K LINE,Complete,SWA - 4,West Support Building,SUWS-4 - 9-6,L1 - Fndn Slab,DS/AD INTERIORS,,DRYWALL,FIZ DATA CENTER,2023-12-04 15:00,2023-12-10 13:00,2023-12-04 15:00,2023-12-07 16:00
CN.SWA4.1322,REMEDY - TAPE & FINISH DRYWALL - SWA4 - GL 9-6 - K LINE - L2,Complete,SWA - 4,West Support Building,SUWS-4 - 9-6,L2 - SubFab Level,DS/AD INTERIORS,CHERRY COATING,DRYWALL,FIZ DATA CENTER,2024-08-12 07:00,2024-08-15 17:00,2024-08-12 07:00,2024-08-15 17:00
CN.SWA4.1302,REMEDY - FRAME & DRYWALL - SWA4 - GL 9-6 - K LINE - L2,Complete,SWA - 4,West Support Building,SUWS-4 - 9-6,L2 - SubFab Level,DS/AD INTERIORS,BERG,DRYWALL,FIZ DATA CENTER,2024-07-16 07:00,2024-08-05 17:00,2024-07-16 07:00,2024-08-05 17:00
CN.SWA4.1282,DRYWALL & INSULATION (1 side) (INT) - SWA4 - GL 9-6 - L2 - K LINE,Complete,SWA - 4,West Support Building,SUWS-4 - 9-6,L2 - SubFab Level,DS/AD INTERIORS,,DRYWALL,FIZ DATA CENTER,2023-12-04 11:00,2023-12-10 09:00,2023-12-04 11:00,2023-12-08 12:00
CN.SWA4.1212,TEMP WALLS Framing and Drywall- SWA4- GL 9-6 - L2,Complete,SWA - 4,,SUWS-4 - 9-6,L2 - SubFab Level,ELECTRIC RM 1,,DRYWALL,,2023-10-09 08:00,2023-10-13 08:00,2023-10-09 08:00,2023-10-13 16:00
CN.SWA4.1392,TAPE & FINISH DRYWALL - SWA4 - GL 9-6 - K LINE - L3,Complete,SWA - 4,West Support Building,SUWS-4 - 9-6,L3 / Waffle Slab Level,DS/AD INTERIORS,CHERRY COATING,DRYWALL,FIZ DATA CENTER,2024-05-17 07:00,2024-05-23 17:00,2024-05-17 07:00,2024-05-22 17:00
CN.SWA4.1382,DRYWALL 2 SIDE - SWA4 - GL 9-6 - K LINE - L3,Complete,SWA - 4,West Support Building,SUWS-4 - 9-6,L3 / Waffle Slab Level,DS/AD INTERIORS,BERG,DRYWALL,FIZ DATA CENTER,2024-05-13 07:00,2024-05-17 17:00,2024-05-11 07:00,2024-05-15 17:00
CN.SWA4.1372,DRYWALL & INSULATION (1 side) (INT) - SWA4 - GL 9-6 - L3 - K LINE,Complete,SWA - 4,West Support Building,SUWS-4 - 9-6,L3 / Waffle Slab Level,DS/AD INTERIORS,,DRYWALL,FIZ DATA CENTER,2024-04-29 07:00,2024-05-03 17:00,2024-03-13 00:00,2024-03-18 15:00
CN.SWA4.6370,Drywall Clips & AMTS Installs Support Beams - SWA4 - GL 9-6 - K LINE - L4,Complete,SWA - 4,West Support Building,SUWS-4 - 9-6,L4 - SUP Roof - FAB Roof,DS/AD INTERIORS,,Fireproofing,HOON WOO,2024-03-23 08:00,2024-03-30 10:00,2024-02-26 00:00,2024-03-12 00:00
CN.SWA4.6900,FRAMING & DRYWALL - STAIR 3 - SWA4 - GL 18-21 - L1- L-N(added new detailed activities in stairs),Complete,SWA - 4,West Support Building,SUWN-1 - 18-21,L1 - Fndn Slab,H2 PURIFIER RM,BERG,INSULATED METAL PANELS,JAMES LIVELY,2024-05-28 07:00,2024-06-17 17:00,2024-05-28 07:00,2024-05-28 17:00
CN.SWA4.6950,REMEDY - DEMO DRYWALL  (INT) - SWA4 - GL 9-6 - L2 - K LINE,Complete,SWA - 4,West Support Building,SUWS-4 - 9-6,L2 - SubFab Level,DS/AD INTERIORS,BERG,DRYWALL,FIZ DATA CENTER,2024-07-08 07:00,2024-07-15 15:00,2024-07-08 07:00,2024-07-13 15:00
CN.AB.AR.7370,REMAINING DRYWALL & FINISHES  - SWA4 - GL 9-3 - L-N - L3 - (Impacted Opening by SECAI),Complete,SWA - 4,West Support Building,SUWS-4 - 9-6,L3 / Waffle Slab Level,FA LAB,BERG,DRYWALL,AMBER CARO,2024-05-17 07:00,2024-05-24 17:00,2024-04-15 07:00,2024-09-20 17:00
CN.AB.AR.7900,REMAINING FRAMING & DRYWALL -  SWA4 - GL 9-12  - L-N - L1,Not Started,SWA - 4,West Support Building,SUWS-3 - 12-9,L1 - Fndn Slab,,ALK,TBD Architectural Finishes,AMBER CARO,2025-11-21 07:00,2025-12-02 07:00,,
CN.SWA5.1120,PH1- AD STEEL FRAME INSTALL - SWA-5 fab side,Complete,SWA - 5,West Support Building,FIZ 2 / SUWS 5  (GL6-1) - GL J - N - DATA CENTER 1,DS/AD,,,Steel Erection,FIZ DATA CENTER,2023-06-12 07:00,2023-06-18 13:00,2023-06-12 07:00,2023-06-19 15:00
CN.AB.AR.1440,INSTALL ELEVATOR HSS STEEL DOOR OPENINGS - ELEVATOR 01,Complete,SWA - 5,West Support Building,FIZ 2 / SUWS 5  (GL6-1) - GL J - N - DATA CENTER 1,,ELEVATOR,W&W,TBD Architectural Finishes,,2025-08-25 07:00,2025-09-22 17:00,2025-07-17 07:00,2025-07-24 17:00
CN.AB.AR.3110,TAPE & FINISH DRYWALL - SWA5 - GL 6-1 - L2 - L-N DATA CENTER 2 & ELECTRICAL ROOM 1,Complete,SWA - 5,West Support Building,FIZ 2 / SUWS 5  (GL6-1) - GL J - N - DATA CENTER 1,L2 - SubFab Level,ELECTRIC RM 1,,DRYWALL,FIZ DATA CENTER,2024-01-29 07:00,2024-02-01 17:00,2024-01-25 07:00,2024-02-01 09:00
CN.AB.AR.4520,DRYWALL 2 SIDE - SWA5 - GL 6-1 - L2 - L-N DATA CENTER 2 & ELECTRICAL ROOM 1,Complete,SWA - 5,West Support Building,FIZ 2 / SUWS 5  (GL6-1) - GL J - N - DATA CENTER 1,L2 - SubFab Level,ELECTRIC RM 1,,DRYWALL,FIZ DATA CENTER,2024-01-04 07:00,2024-01-09 11:00,2024-01-04 07:00,2024-01-08 11:00
CN.AB.AR.4530,DRYWALL & INSULATION (1 side) (INT) - SWA-5 - L2 GL 1-6- DATA CENTER 2 & ELECTRICAL ROOM 1,Complete,SWA - 5,West Support Building,FIZ 2 / SUWS 5  (GL6-1) - GL J - N - DATA CENTER 1,L2 - SubFab Level,ELECTRIC RM 1,,DRYWALL,FIZ DATA CENTER,2023-10-07 13:00,2023-10-12 11:00,2023-10-07 13:00,2023-10-14 13:00
CN.SWB5.1980,PH1- INSTALL EXTERIOR DOOR / LOUVERS FRAMES - SW PENTHOUSE,Not Started,SWA - 5,East Support Building,SOUTH WEST PENTHOUSE,L4 - SUP Roof - FAB Roof,,DOORS AND HARDWARE,TBD Architectural Finishes,SEAN MONK,2025-11-21 07:00,2025-11-21 17:00,,
CN.SWB5.2030,PH1- INSTALL INTERIOR DRYWALL - SW PENTHOUSE,Complete,SWA - 5,East Support Building,SOUTH WEST PENTHOUSE,L4 - SUP Roof - FAB Roof,,BERG,TBD Architectural Finishes,SEAN MONK,2024-06-06 07:00,2024-06-10 17:00,2024-06-06 07:00,2024-08-01 17:00
CN.SWA5.1460,PH1- DS STEEL FRAME INSTALL - SWA-5,Complete,SWA - 5,West Support Building,FIZ 2 / SUWS 5  (GL6-1) - GL J - N - DATA CENTER 1,DS/AD,,,Steel Erection,,2023-10-14 08:00,2023-10-15 14:00,2023-10-14 08:00,2023-10-15 16:00
CN.SWA5.R.1110,TAPE & FINISH DRYWALL - SWA5 - GL 6-1 - L1 - L-N,Complete,SWA - 5,West Support Building,FIZ 2 / SUWS 5  (GL6-1) - GL J - N - DATA CENTER 1,L1 - Fndn Slab,FA/TEM LAB,,DRYWALL,AMBER CARO,2023-12-22 07:00,2024-01-03 12:00,2023-12-22 07:00,2024-01-02 17:00
CN.SWA5.R.4440,DRYWALL 2 SIDE - SWA5 - GL 6-1 - L1 - L-N,Complete,SWA - 5,West Support Building,FIZ 2 / SUWS 5  (GL6-1) - GL J - N - DATA CENTER 1,L1 - Fndn Slab,FA/TEM LAB,,DRYWALL,AMBER CARO,2023-12-18 07:00,2023-12-21 17:00,2023-12-18 07:00,2023-12-21 17:00
CN.SWA5.R.4450,DRYWALL & INSULATION (1 side) (INT) - SWA-5 - L1 GL 1-6,Complete,SWA - 5,West Support Building,FIZ 2 / SUWS 5  (GL6-1) - GL J - N - DATA CENTER 1,L1 - Fndn Slab,FA/TEM LAB,,DRYWALL,AMBER CARO,2023-10-16 07:00,2023-10-19 17:00,2023-10-10 07:00,2023-10-14 17:00
CN.SWA5.R.4700,INSTALL ROLL UP DOORS - SWA5 - GL 6-1 - L1 - L-N - (MEP ROUGH IN NOT INCLUDED),Not Started,SWA - 5,West Support Building,FIZ 2 / SUWS 5  (GL6-1) - GL J - N - DATA CENTER 1,EXTERIOR SKIN,,PATRIOT,TBD Architectural Finishes,AMBER CARO,2025-11-26 07:00,2025-12-01 17:00,,
CN.SWA5.DS.2990,REMEDY - TAPE & FINISH DRYWALL - SWA5 - GL 6-1 - K LINE - L2,Complete,SWA - 5,West Support Building,FIZ 2 / SUWS 5  (GL6-1) - GL J - N - DATA CENTER 1,L2 - SubFab Level,DS/AD INTERIORS,CHERRY COATING,DRYWALL,FIZ DATA CENTER,2024-08-23 07:00,2024-08-27 17:00,2024-08-08 07:00,2024-08-10 17:00
CN.SWA5.DS.2970,DRYWALL & INSULATION (1 side) (INT) - SWA5 - GL 6-1 - L2 - K LINE,Complete,SWA - 5,West Support Building,FIZ 2 / SUWS 5  (GL6-1) - GL J - N - DATA CENTER 1,L2 - SubFab Level,DS/AD INTERIORS,,DRYWALL,FIZ DATA CENTER,2023-12-22 09:00,2024-01-04 12:00,2023-12-22 09:00,2024-01-04 17:00
CN.SWA5..1620,"INSTALL FRAMING, DRYWALL & FIRE CAULKING AT FIREPROOFING LEAVEOUTS - INTERIOR SHAFT - ELEVATOR 01",Complete,SWA - 5,West Support Building,FIZ 2 / SUWS 5  (GL6-1) - GL J - N - DATA CENTER 1,,ELEVATOR,BERG,DRYWALL,JAMES LIVELY,2024-10-21 07:00,2024-11-01 17:00,2024-09-30 07:00,2025-02-10 07:00
CN.AB.AR.6150,"INSTALL FRAMING, DRYWALL & FIRE CAULKING - INTERIOR SHAFT - ELEVATOR 01A",Complete,SWA - 5,West Support Building,FIZ 2 / SUWS 5  (GL6-1) - GL J - N - DATA CENTER 1,,ELEVATOR,BERG,DRYWALL,,2024-09-30 07:00,2024-10-25 17:00,2024-09-06 07:00,2025-03-11 17:00
CN.SWA5.L3.150,DRYWALL & INSULATION (1 side) (INT) - SWA5 - GL 6-1 - L3 - K LINE,Complete,SWA - 5,,FIZ 2 / SUWS 5  (GL6-1) - GL J - N - DATA CENTER 1,L3 / Waffle Slab Level,DS/AD INTERIORS,,TBD Architectural Finishes,,2024-04-02 07:00,2024-04-05 17:00,2024-04-02 07:00,2024-04-06 17:00
CN.SWA5.L3.170,DRYWALL 2 SIDE - SWA5 - GL 6-3 - K LINE - L3,Complete,SWA - 5,,FIZ 2 / SUWS 5  (GL6-1) - GL J - N - DATA CENTER 1,L3 / Waffle Slab Level,DS/AD INTERIORS,BERG,TBD Architectural Finishes,,2024-05-28 07:00,2024-06-03 17:00,2024-05-28 07:00,2024-06-07 17:00
CN.SWA5.L3.180,TAPE & FINISH DRYWALL - SWA5 - GL 6-1 - K LINE - L3,Complete,SWA - 5,,FIZ 2 / SUWS 5  (GL6-1) - GL J - N - DATA CENTER 1,L3 / Waffle Slab Level,DS/AD INTERIORS,CHERRY COATING,TBD Architectural Finishes,,2024-06-10 07:00,2024-06-14 17:00,2024-06-10 07:00,2024-06-14 17:00
CN.SWA5.1750,Drywall Clips & AMTS Installs Support Beams - SWA5 - GL 6-1 - K LINE - L4,Complete,SWA - 5,West Support Building,FIZ 2 / SUWS 5  (GL6-1) - GL J - N - DATA CENTER 1,L4 - SUP Roof - FAB Roof,DS/AD INTERIORS,SECAI,Fireproofing,,2024-03-18 07:00,2024-03-28 17:00,2024-03-18 07:00,2024-03-28 17:00
CN.AB.AR.6810,INSTALL ELEVATOR HSS STEEL DOOR OPENINGS - ELEVATOR 01A,Complete,SWA - 5,West Support Building,FIZ 2 / SUWS 5  (GL6-1) - GL J - N - DATA CENTER 1,,ELEVATOR,W&W,DRYWALL,,2025-03-03 07:00,2025-03-21 17:00,2025-03-03 07:00,2025-03-11 17:00
CN.AB.AR.6830,INSTALL ELEVATOR HSS STEEL DOOR OPENINGS - ELEVATOR 01B,Complete,SWA - 5,West Support Building,FIZ 2 / SUWS 5  (GL6-1) - GL J - N - DATA CENTER 1,,ELEVATOR,W&W,TBD Architectural Finishes,,2025-03-12 07:00,2025-04-01 17:00,2025-03-12 07:00,2025-04-23 17:00
CN.SWA5.L3.270,DEMO DRYWALL - INSTALL GOAL POSTS - ELEVATOR 1 HALLWAY - SWA5 - GL 6-1 - K LINE - L3,Complete,SWA - 5,,FIZ 2 / SUWS 5  (GL6-1) - GL J - N - DATA CENTER 1,L3 / Waffle Slab Level,,CHERRY COATING,TBD Architectural Finishes,,2024-07-31 07:00,2024-08-09 17:00,2024-07-09 07:00,2024-07-19 17:00
CN.SWA5..2010,HANG INTERIOR SIDE DRYWALL 1ST LAYER install & inspect - STAIR #2 - 11/L - ALL LEVELS,Complete,SWA - 5,West Support Building,SUWS-3 - 12-9,INTERIOR STAIR TOWER - STAIR #2 (CLEAN ROOM),,,INSULATED METAL PANELS,JAMES LIVELY,2024-12-11 07:00,2024-12-16 17:00,2024-12-12 07:00,2025-08-18 17:00
CN.SWA5..2020,SECAI - TAPE & FLOAT DRYWALL & CEILING remaining - STAIR #2 - 11/L - ALL LEVELS,Complete,SWA - 5,West Support Building,SUWS-3 - 12-9,INTERIOR STAIR TOWER - STAIR #2 (CLEAN ROOM),,,INSULATED METAL PANELS,JAMES LIVELY,2025-08-19 07:00,2025-08-29 17:00,2025-08-19 07:00,2025-08-29 17:00
CN.SWA5..2150,HANG INTERIOR SIDE 1ST LAYER DRYWALL & INSPECT - STAIR #3 - 18/L - ALL LEVELS,Complete,SWA - 5,West Support Building,SUWN-1 - 18-21,INTERIOR STAIR TOWER - STAIR #3,,,INSULATED METAL PANELS,JAMES LIVELY,2024-11-26 07:00,2024-12-03 17:00,2024-11-26 07:00,2025-10-09 07:00
CN.SWA5..2160,TAPE & FLOAT DRYWALL & CEILING - STAIR #3 - 18/L - ALL LEVELS,Complete,SWA - 5,West Support Building,SUWN-1 - 18-21,INTERIOR STAIR TOWER - STAIR #3,,,INSULATED METAL PANELS,JAMES LIVELY,2025-10-13 07:00,2025-10-23 17:00,2025-10-13 07:00,2025-11-11 17:00
CN.SWA5..2170,INSTALL - DOOR FRAMES  - STAIR #3 - 18/L - ALL LEVELS,Complete,SWA - 5,West Support Building,SUWN-1 - 18-21,INTERIOR STAIR TOWER - STAIR #3,,,INSULATED METAL PANELS,JAMES LIVELY,2025-10-16 07:00,2025-10-18 17:00,2025-02-18 07:00,2025-09-29 17:00
CN.SWA5..2290,INSTALL INTERIOR SIDE 1ST LAYER DRYWALL & INSPECT - STAIR #4 - 23/L - ALL LEVELS [/DAY],Complete,SWA - 5,West Support Building,SUWN-2 - 21-24,INTERIOR STAIR TOWER - STAIR #4 (CLEAN ROOM),,,INSULATED METAL PANELS,JAMES LIVELY,2025-07-09 07:00,2025-07-22 17:00,2025-06-02 07:00,2025-08-23 17:00
CN.SWA5..2300,TAPE & FLOAT DRYWALL & CEILING - STAIR #4 - 23/L - ALL LEVELS (),Complete,SWA - 5,West Support Building,SUWN-2 - 21-24,INTERIOR STAIR TOWER - STAIR #4 (CLEAN ROOM),,,INSULATED METAL PANELS,JAMES LIVELY,2025-09-27 07:00,2025-10-02 17:00,2025-09-23 12:00,2025-09-29 17:00
CN.SWA5..2570,HANG INTERIOR SIDE 1ST LAYER DRYWALL & inspect - STAIR #20 - 19/D - ALL LEVELS,Complete,SWA - 5,West Support Building,SUES-1 - 19-16,INTERIOR STAIR TOWER - STAIR #20,,,INSULATED METAL PANELS,JAMES LIVELY,2025-02-18 07:00,2025-02-22 17:00,2025-02-18 07:00,2025-10-09 17:00
CN.SWA5..2580,TAPE & FLOAT AND SANDING DRYWALL & CEILING - STAIR #20 - 19/D - ALL LEVELS,Complete,SWA - 5,West Support Building,SUES-1 - 19-16,INTERIOR STAIR TOWER - STAIR #20,,,INSULATED METAL PANELS,JAMES LIVELY,2025-10-08 07:00,2025-10-21 17:00,2025-10-08 07:00,2025-11-11 17:00
CN.SWA5..2720,"TAPE & FLOAT DRYWALL & CEILING (N, S & W WALLS COMPLETE)- STAIR #21 - 13/D - ALL LEVELS",Complete,SWA - 5,West Support Building,SUES-3 - 13-9,INTERIOR STAIR TOWER - STAIR #21 (CLEAN ROOM),,,INSULATED METAL PANELS,JAMES LIVELY,2025-08-04 07:00,2025-08-20 17:00,2025-06-09 07:00,2025-06-27 17:00
CN.SWA5..3620,DEMO DRYWALL FOR SANDBLASTING - STAIR #3 - 18/L - ALL LEVELS,Complete,SWA - 5,West Support Building,SUWN-1 - 18-21,INTERIOR STAIR TOWER - STAIR #3,,,INSULATED METAL PANELS,JAMES LIVELY,2024-09-06 07:00,2024-09-06 17:00,2024-08-31 07:00,2024-09-03 17:00
CN.AB.AR.7420,INSTALL FRAMING/DRYWALL/TAPE+FLOAT - MECHANICAL ROOM - ELEVATOR 01B,Complete,SWA - 5,West Support Building,FIZ 2 / SUWS 5  (GL6-1) - GL J - N - DATA CENTER 1,,ELEVATOR,BERG,DRYWALL,,2025-02-03 07:00,2025-02-18 17:00,2025-02-03 07:00,2025-04-25 17:00
CN.AB.AR.7480,IMPACT - SECAI - INSTALL ELEVATOR DOOR JAMBS - ELEVATOR 01B - WAITING FOR SCHEDULE & RFI ANSWER FOR WALL THICKNESS,Complete,SWA - 5,West Support Building,FIZ 2 / SUWS 5  (GL6-1) - GL J - N - DATA CENTER 1,,ELEVATOR,W&W,TBD Architectural Finishes,,2025-06-09 07:00,2025-06-20 17:00,2025-05-19 07:00,2025-06-06 17:00
CN.AB.AR.7500,INSTALL PERMANENT DOOR & FRAME - MECHANICAL ROOM - FAB140110A - ELEVATOR 01B,Not Started,SWA - 5,West Support Building,FIZ 2 / SUWS 5  (GL6-1) - GL J - N - DATA CENTER 1,,ELEVATOR,W&W,TBD Architectural Finishes,,2025-11-21 07:00,2025-11-21 07:00,,
CN.AB.AR.7510,"FINAL TURNOVER - DOOR FRONTS, MECHANICAL ROOM (WITH PERM DOOR) - ELEVATOR 01B",Not Started,SWA - 5,West Support Building,FIZ 2 / SUWS 5  (GL6-1) - GL J - N - DATA CENTER 1,,ELEVATOR,BERG,DRYWALL,,2025-11-21 07:00,2025-11-21 07:00,,
CN.AB.AR.7530,TAPE & FLOAT - SHAFT & DOOR FRONTS - ELEVATOR 01B,Complete,SWA - 5,West Support Building,FIZ 2 / SUWS 5  (GL6-1) - GL J - N - DATA CENTER 1,,ELEVATOR,W&W,TBD Architectural Finishes,,2025-08-13 13:00,2025-08-18 13:00,2025-08-13 13:00,2025-08-18 13:00
CN.SWA5..3780,SECAI TOOK OVER - TAPE & FLOAT - INTERIOR SHAFT & DOOR FRONTS- ELEVATOR 01,Active,SWA - 5,West Support Building,FIZ 2 / SUWS 5  (GL6-1) - GL J - N - DATA CENTER 1,,ELEVATOR,BERG,DRYWALL,JAMES LIVELY,2025-11-10 07:00,2025-11-19 17:00,2025-11-10 07:00,
CN.AB.AR.7560,"SECAI TOOK OVER 9/17 ONLY L1 - INSTALL REMAINING FRAMING, DRYWALL & FIRE CAULKING - SHAFT & DOOR FRONTS - ELEVATOR 01",Complete,SWA - 5,West Support Building,FIZ 2 / SUWS 5  (GL6-1) - GL J - N - DATA CENTER 1,,ELEVATOR,W&W,TBD Architectural Finishes,,2024-07-08 07:00,2024-07-17 17:00,2024-07-08 07:00,2025-09-19 17:00
CN.AB.AR.7570,INSTALL PERMANENT DOOR & FRAME - MECHANICAL ROOM - FAB110115A - ELEVATOR 01,Not Started,SWA - 5,West Support Building,FIZ 2 / SUWS 5  (GL6-1) - GL J - N - DATA CENTER 1,,ELEVATOR,W&W,TBD Architectural Finishes,,2025-11-21 07:00,2025-12-01 17:00,,
CN.AB.AR.7590,"FINAL TURNOVER - DOOR FRONTS, MECHANICAL ROOM (WITH PERM DOOR) - ELEVATOR 01",Not Started,SWA - 5,West Support Building,FIZ 2 / SUWS 5  (GL6-1) - GL J - N - DATA CENTER 1,,ELEVATOR,W&W,TBD Architectural Finishes,,2025-12-01 17:00,2025-12-01 17:00,,
CN.AB.AR.7630,"INSTALL FRAMING, DRYWALL & FIRE CAULKING AT FIREPROOFING LEAVEOUTS - INTERIOR SHAFT - ELEVATOR 01A",Complete,SWA - 5,West Support Building,FIZ 2 / SUWS 5  (GL6-1) - GL J - N - DATA CENTER 1,,ELEVATOR,BERG,DRYWALL,,2025-02-17 07:00,2025-02-26 17:00,2025-02-15 07:00,2025-02-15 17:00
CN.AB.AR.7660,IMPACT - SECAI - INSTALL ELEVATOR DOOR JAMBS- ELEVATOR 01A -A WAITING FOR SCHEDULE,Complete,SWA - 5,West Support Building,FIZ 2 / SUWS 5  (GL6-1) - GL J - N - DATA CENTER 1,,ELEVATOR,W&W,DRYWALL,,2025-06-09 07:00,2025-06-20 17:00,2025-05-12 07:00,2025-06-05 07:00
CN.AB.AR.7670,"IMPACT - INSTALL REMAINING FRAMING, DRYWALL & FIRE CAULKING - SHAFT & DOOR FRONTS - ELEVATOR 01A",Complete,SWA - 5,West Support Building,FIZ 2 / SUWS 5  (GL6-1) - GL J - N - DATA CENTER 1,,ELEVATOR,W&W,DRYWALL,,2025-06-06 07:00,2025-07-07 17:00,2025-06-06 07:00,2025-07-30 17:00
CN.AB.AR.7680,IMPACT - TAPE & FLOAT FUR OUTS - SHAFT & DOOR FRONTS - ELEVATOR 01A - Lvl 2 and 3 Cable tray in the way (SECAI to remov,Not Started,SWA - 5,West Support Building,FIZ 2 / SUWS 5  (GL6-1) - GL J - N - DATA CENTER 1,,ELEVATOR,W&W,DRYWALL,,2025-11-21 07:00,2025-12-01 17:00,,
CN.AB.AR.7700,"FINAL TURNOVER - DOOR FRONTS, MECHANICAL ROOM (WITH PERM DOOR) - ELEVATOR 01A",Not Started,SWA - 5,West Support Building,FIZ 2 / SUWS 5  (GL6-1) - GL J - N - DATA CENTER 1,,ELEVATOR,W&W,DRYWALL,,2025-12-01 17:00,2025-12-01 17:00,,
CN.AB.AR.7750,INSTALL PERMANENT DOOR & FRAME - MAN DOOR - FAB120401G - ELEVATOR 01B,Not Started,SWA - 5,West Support Building,FIZ 2 / SUWS 5  (GL6-1) - GL J - N - DATA CENTER 1,,ELEVATOR,W&W,TBD Architectural Finishes,,2025-11-21 07:00,2025-11-21 07:00,,
CN.SWA5..4160,INSTALL - INTERIOR SIDE 2ND LAYED  DRYWALL install & inspect - STAIR #2 - 11/L - ALL LEVELS,Complete,SWA - 5,West Support Building,SUWS-3 - 12-9,INTERIOR STAIR TOWER - STAIR #2 (CLEAN ROOM),,,INSULATED METAL PANELS,JAMES LIVELY,2025-06-09 07:00,2025-06-21 17:00,2025-05-06 07:00,2025-08-18 17:00
CN.SWA5..4180,INSTALL - DOOR FRAMES - STAIR #2 - 11/L - ALL LEVELS,Complete,SWA - 5,West Support Building,SUWS-3 - 12-9,INTERIOR STAIR TOWER - STAIR #2 (CLEAN ROOM),,,INSULATED METAL PANELS,JAMES LIVELY,2025-10-10 07:00,2025-10-10 17:00,2025-05-06 07:00,2025-08-06 17:00
CN.SWA5..4190,INSTALL - DOOR & HARDWARE - STAIR #2 - 11/L - ALL LEVELS,Active,SWA - 5,West Support Building,SUWS-3 - 12-9,INTERIOR STAIR TOWER - STAIR #2 (CLEAN ROOM),,,INSULATED METAL PANELS,JAMES LIVELY,2025-09-16 07:00,2025-09-20 17:00,2025-09-16 07:00,
CN.SWA5..4300,INSTALL DOOR FRAMES - STAIR #21 - 13/D - ALL LEVELS,Complete,SWA - 5,West Support Building,SUES-3 - 13-9,INTERIOR STAIR TOWER - STAIR #21 (CLEAN ROOM),,,INSULATED METAL PANELS,JAMES LIVELY,2025-10-11 07:00,2025-10-11 17:00,2025-02-13 07:00,2025-11-07 07:00
CN.SWA5..4310,INSTALL - DOOR & HARDWARE - STAIR #21 - 13/D - ALL LEVELS,Active,SWA - 5,West Support Building,SUES-3 - 13-9,INTERIOR STAIR TOWER - STAIR #21 (CLEAN ROOM),,,INSULATED METAL PANELS,JAMES LIVELY,2025-11-07 07:00,2025-11-12 17:00,2025-11-07 07:00,
CN.SWA5..4380,INSTALL - 1ST LAYER DRYWALL CEILING & INSPECT - STAIR #20 - 19/D - ALL LEVELS,Complete,SWA - 5,West Support Building,SUES-1 - 19-16,INTERIOR STAIR TOWER - STAIR #20,,,INSULATED METAL PANELS,JAMES LIVELY,2025-10-04 07:00,2025-10-11 17:00,2025-09-03 12:00,2025-09-08 14:00
CN.SWA5..4390,HANG INTERIOR SIDE 2ND LAYER DRYWALL & INSPECT - STAIR #20 - 19/D - ALL LEVELS,Complete,SWA - 5,West Support Building,SUES-1 - 19-16,INTERIOR STAIR TOWER - STAIR #20,,,INSULATED METAL PANELS,JAMES LIVELY,2025-04-09 07:00,2025-04-22 17:00,2025-04-03 07:00,2025-10-07 07:00
CN.SWA5..4400,INSTALL - 2ND  LAYER  DRYWALL CEILING & INSPECT - STAIR #20 - 19/D - ALL LEVELS,Complete,SWA - 5,West Support Building,SUES-1 - 19-16,INTERIOR STAIR TOWER - STAIR #20,,,INSULATED METAL PANELS,JAMES LIVELY,2025-10-13 07:00,2025-10-20 17:00,2025-09-09 09:30,2025-09-15 14:00
CN.SWA5..4410,INSTALL - DOOR FRAMES  - STAIR #20 - 19/D - ALL LEVELS,Active,SWA - 5,West Support Building,SUES-1 - 19-16,INTERIOR STAIR TOWER - STAIR #20,,,INSULATED METAL PANELS,JAMES LIVELY,2025-10-15 07:00,2025-10-17 17:00,2025-09-10 07:00,
CN.SWA5..4420,INSTALL - DOOR & HARDWARE  - STAIR #20 - 19/D - ALL LEVELS,Active,SWA - 5,West Support Building,SUES-1 - 19-16,INTERIOR STAIR TOWER - STAIR #20,,,INSULATED METAL PANELS,JAMES LIVELY,2025-10-28 07:00,2025-11-01 17:00,2025-10-28 07:00,
CN.SWA5..4530,INSTALL 2ND LAYER  DRYWALL CEILING & INSPECT  - STAIR #3 - 18/L - ALL LEVELS,Complete,SWA - 5,West Support Building,SUWN-1 - 18-21,INTERIOR STAIR TOWER - STAIR #3,,,INSULATED METAL PANELS,JAMES LIVELY,2025-10-02 07:00,2025-10-03 17:00,2025-10-02 07:00,2025-10-03 17:00
CN.SWA5..4540,IMPACT - SECAI DRYWALL PATCH & FINISH - STAIR #3 - 18/L - ALL LEVELS,Complete,SWA - 5,West Support Building,SUWN-1 - 18-21,INTERIOR STAIR TOWER - STAIR #3,,,INSULATED METAL PANELS,JAMES LIVELY,2025-10-10 07:00,2025-10-15 17:00,2025-10-10 07:00,2025-11-03 17:00
CN.SWA5..4550,FRAME & 1ST LAYER DRYWALL CEILINGS - INSTALL & INSPECT - STAIR #3 - 18/L - ALL LEVELS,Complete,SWA - 5,West Support Building,SUWN-1 - 18-21,INTERIOR STAIR TOWER - STAIR #3,,,INSULATED METAL PANELS,JAMES LIVELY,2025-09-30 07:00,2025-10-02 17:00,2025-09-30 07:00,2025-10-02 17:00
CN.SWA5..4560,INSTALL - DOOR & HARDWARE  - STAIR #3 - 18/L - ALL LEVELS,Active,SWA - 5,West Support Building,SUWN-1 - 18-21,INTERIOR STAIR TOWER - STAIR #3,,,INSULATED METAL PANELS,JAMES LIVELY,2025-10-13 07:00,2025-10-17 17:00,2025-10-13 07:00,
CN.SWA5..4690,INSTALL - INTERIOR SIDE 2ND LAYER DRYWALL & INSPECT - STAIR #4 - 23/L - ALL LEVELS,Complete,SWA - 5,West Support Building,SUWN-2 - 21-24,INTERIOR STAIR TOWER - STAIR #4 (CLEAN ROOM),,,INSULATED METAL PANELS,JAMES LIVELY,2025-09-06 07:00,2025-09-08 17:00,2025-08-22 07:00,2025-09-22 17:00
CN.SWA5..4700,INSTALL- DRYWALL 1ST LAYER CEILING & INSPECT - STAIR #4 - 23/L - ALL LEVELS [/DAY],Complete,SWA - 5,West Support Building,SUWN-2 - 21-24,INTERIOR STAIR TOWER - STAIR #4 (CLEAN ROOM),,,INSULATED METAL PANELS,JAMES LIVELY,2025-09-09 07:00,2025-09-16 17:00,2025-08-29 07:00,2025-09-15 07:00
CN.SWA5..4710,INSTALL- DRYWALL 2ND LAYER CEILING & INSPECT - STAIR #4 - 23/L - ALL LEVELS,Complete,SWA - 5,West Support Building,SUWN-2 - 21-24,INTERIOR STAIR TOWER - STAIR #4 (CLEAN ROOM),,,INSULATED METAL PANELS,JAMES LIVELY,2025-09-19 07:00,2025-09-26 17:00,2025-09-02 07:00,2025-09-15 16:00
CN.SWA5..4720,INSTALL DOOR FRAMES - STAIR #4 - 23/L - ALL LEVELS (),Complete,SWA - 5,West Support Building,SUWN-2 - 21-24,INTERIOR STAIR TOWER - STAIR #4 (CLEAN ROOM),,,INSULATED METAL PANELS,JAMES LIVELY,2025-10-10 07:00,2025-10-13 17:00,2025-05-27 07:00,2025-09-29 17:00
CN.SWA5..4730,INSTALL - DOOR & HARDWARE  - STAIR #4 - 23/L - ALL LEVELS,Active,SWA - 5,West Support Building,SUWN-2 - 21-24,INTERIOR STAIR TOWER - STAIR #4 (CLEAN ROOM),,,INSULATED METAL PANELS,JAMES LIVELY,2025-09-29 07:00,2025-10-15 17:00,2025-09-29 07:00,
CN.SWA5..5520,SECAI - FRAMING & 1ST LAYER INTERIOR DRYWALL - STAIR #50 - 29/L - ALL LEVELS,Complete,SWA - 5,West Support Building,SUWN-4 - 27-30,INTERIOR STAIR TOWER - STAIR #50 - DE-SCOPED,,,INSULATED METAL PANELS,JAMES LIVELY,2025-08-19 07:00,2025-08-19 17:00,2025-06-27 07:00,2025-06-27 13:00
CN.SWA5..5530,INSTALL- 2ND LAYER DRYWALL EXTERIOR - STAIR #50 - 29/L - ALL LEVELS [/DAY],Complete,SWA - 5,West Support Building,SUWN-4 - 27-30,INTERIOR STAIR TOWER - STAIR #50 - DE-SCOPED,,,INSULATED METAL PANELS,JAMES LIVELY,2025-09-04 07:00,2025-09-08 17:00,2025-06-27 07:00,2025-06-27 13:00
CN.SWA5..5540,INSPECT - 2ND  LAYER DRYWALL EXTERIOR  - STAIR #50 - 29/L - ALL LEVELS,Complete,SWA - 5,West Support Building,SUWN-4 - 27-30,INTERIOR STAIR TOWER - STAIR #50 - DE-SCOPED,,,INSULATED METAL PANELS,JAMES LIVELY,2025-09-09 07:00,2025-09-09 17:00,2025-06-27 07:00,2025-06-27 13:00
CN.SWA5..5900,IMPACT - NCR #268 DRYWALL CJ AND CAULK - STAIR #2 - 11/L - ALL LEVELS,Complete,SWA - 5,West Support Building,SUWS-3 - 12-9,INTERIOR STAIR TOWER - STAIR #2 (CLEAN ROOM),,,INSULATED METAL PANELS,JAMES LIVELY,2024-11-26 07:00,2024-12-03 17:00,2025-04-02 07:00,2025-06-18 07:00
CN.SWA5..6060,IMPACT - NCR #267 DRYWALL CJ and CAULK - STAIR #21 - 13/D - ALL LEVELS,Complete,SWA - 5,West Support Building,SUES-3 - 13-9,INTERIOR STAIR TOWER - STAIR #21 (CLEAN ROOM),,,INSULATED METAL PANELS,JAMES LIVELY,2024-11-12 07:00,2024-11-25 17:00,2025-04-02 07:00,2025-06-18 17:00
CN.SWA5..6130,SECAI -TAPE & FLOAT DRYWALL & CEILING - REMAINING - STAIR #21 - 13/D - ALL LEVELS,Complete,SWA - 5,West Support Building,SUES-3 - 13-9,INTERIOR STAIR TOWER - STAIR #21 (CLEAN ROOM),,,INSULATED METAL PANELS,JAMES LIVELY,2025-08-19 07:00,2025-08-23 17:00,2025-08-19 07:00,2025-08-23 17:00
CN.AB.AR.8750,IMPACT - WAITING ON EJ FROM WALL TO COLUMN - SHAFT & DOOR FRONTS - ELEVATOR 01A,Complete,SWA - 5,West Support Building,FIZ 2 / SUWS 5  (GL6-1) - GL J - N - DATA CENTER 1,,ELEVATOR,W&W,DRYWALL,,2025-06-30 11:00,2025-07-15 11:00,2025-06-30 11:00,2025-07-28 07:00
CN.SWB1.1140,PH1- AD STEEL FRAME INSTALL - SWB-1 fab side,Complete,SWB - 1,West Support Building,SUWN-1 - 18-21,DS/AD,,,Steel Erection,SEAN MONK,2023-08-28 07:00,2023-09-02 15:00,2023-08-24 07:00,2023-09-08 09:00
CN.AB.AR.3180,TAPE & FINISH DRYWALL- H2 PURIFER ROOM GL 18-21 K-N,Complete,SWB - 1,West Support Building,SUWN-1 - 18-21,L1 - Fndn Slab,H2 PURIFIER RM,CHERRY COATING,DRYWALL,AMBER CARO,2024-03-20 07:00,2024-03-27 17:00,2024-03-20 07:00,2024-03-26 17:00
CN.AB.AR.4540,DRYWALL 2 SIDE - SWB-1- H2 PURIFER ROOM GL 18-21 K-N,Complete,SWB - 1,West Support Building,SUWN-1 - 18-21,L1 - Fndn Slab,H2 PURIFIER RM,BERG,DRYWALL,AMBER CARO,2024-03-11 07:00,2024-03-19 17:00,2024-03-03 07:00,2024-03-14 17:00
CN.AB.AR.4550,DRYWALL & INSULATION (1 side) (INT) - SWB-1 - L1 - H2 PURIFER ROOM,Complete,SWB - 1,West Support Building,SUWN-1 - 18-21,L1 - Fndn Slab,H2 PURIFIER RM,,DRYWALL,AMBER CARO,2023-10-16 07:00,2023-10-19 17:00,2023-10-16 07:00,2023-10-20 17:00
CN.SWB1.1490,PH1- DS STEEL FRAME INSTALL - SWB-1 Comeback Sup Side,Complete,SWB - 1,West Support Building,SUWN-1 - 18-21,DS/AD,,,Steel Erection,SEAN MONK,2023-09-18 07:00,2023-09-22 09:00,2023-09-15 07:00,2023-09-19 09:00
CN.SWB1.3180,TAPE & FINISH DRYWALL - SWB-1-L2 - ELECTRICAL ROOM 2 GL 18-21 K-N,Complete,SWB - 1,West Support Building,SUWN-1 - 18-21,L2 - SubFab Level,ELECTRIC RM 2,CHERRY COATING,DRYWALL,AMBER CARO,2024-04-15 07:00,2024-04-19 17:00,2024-04-09 07:00,2024-05-04 17:00
CN.SWB1.4540,DRYWALL 2 SIDE - SWB-1-L2 - ELECTRICAL ROOM 2 GL 18-21 K-N,Complete,SWB - 1,West Support Building,SUWN-1 - 18-21,L2 - SubFab Level,ELECTRIC RM 2,,DRYWALL,AMBER CARO,2024-03-18 07:00,2024-03-22 17:00,2024-03-18 07:00,2024-03-26 17:00
CN.SWB1.4550,DRYWALL & INSULATION (1 side) (INT) - SWB-1 - L2 - ELECTRICAL ROOM 2 GL 18-21 K-N,Complete,SWB - 1,West Support Building,SUWN-1 - 18-21,L2 - SubFab Level,ELECTRIC RM 2,,DRYWALL,AMBER CARO,2024-01-10 07:00,2024-01-14 09:00,2024-01-09 15:00,2024-01-12 17:00
CN.SWB1..3180,TAPE & FINISH DRYWALL - SWB-1 - ELECTRICAL ROOM 1 SOUTH GL 18-21 K-N,Not Started,SWB - 1,West Support Building,SUWN-1 - 18-21,L3 / Waffle Slab Level,ELECTRIC RM 1,CHERRY COATING,DRYWALL,AMBER CARO,2025-12-03 07:00,2025-12-09 17:00,,
CN.SWB1..4540,DRYWALL 2 SIDE - SWB-1 - ELECTRICAL ROOM 1 SOUTH GL 18-21 K-N,Not Started,SWB - 1,West Support Building,SUWN-1 - 18-21,L3 / Waffle Slab Level,ELECTRIC RM 1,BERG,DRYWALL,AMBER CARO,2025-11-24 07:00,2025-12-02 17:00,,
CN.SWB1..4550,DRYWALL & INSULATION (1 side) (INT) - SWB-1 - L3 - ELECTRICAL ROOM 1 SOUTH GL 18-21 K-N,Complete,SWB - 1,West Support Building,SUWN-1 - 18-21,L3 / Waffle Slab Level,ELECTRIC RM 1,BERG,DRYWALL,AMBER CARO,2024-04-01 13:00,2024-04-05 13:00,2024-03-15 07:00,2024-07-02 17:00
CN.SWB1.1302,TAPE & FINISH DRYWALL- SWB1- GL 18-21  - K LINE -  L1,Complete,SWB - 1,West Support Building,SUWN-1 - 18-21,L1 - Fndn Slab,DS/AD INTERIORS,CHERRY COATING,DRYWALL,FIZ DATA CENTER,2024-09-20 07:00,2024-09-27 17:00,2024-08-22 07:00,2024-08-26 17:00
CN.SWB1.1322,PRIMER & PAINT DRYWALL -  GL 18-21 -  K LINE - L1,Complete,SWB - 1,West Support Building,SUWN-1 - 18-21,L1 - Fndn Slab,DS/AD INTERIORS,FINISH PAINT,TBD Architectural Finishes,FIZ DATA CENTER,2024-10-21 07:00,2024-10-24 17:00,2024-10-19 07:00,2024-10-22 17:00
CN.SWB1.1282,DRYWALL 2 SIDE - SWB1- GL 18-21 - K LINE - L1,Complete,SWB - 1,West Support Building,SUWN-1 - 18-21,L1 - Fndn Slab,DS/AD INTERIORS,,DRYWALL,FIZ DATA CENTER,2024-03-09 08:00,2024-03-17 08:00,2024-03-01 00:00,2024-03-18 00:00
CN.SWB1.1252,DRYWALL & INSULATION (1 side) (INT) - SWB1- GL 18-21 - K LINE - L1,Complete,SWB - 1,West Support Building,SUWN-1 - 18-21,L1 - Fndn Slab,DS/AD INTERIORS,,DRYWALL,FIZ DATA CENTER,2023-12-04 07:00,2023-12-09 15:00,2023-12-06 07:00,2023-12-09 16:00
CN.SWB1.1312,REMEDY - TAPE & FINISH DRYWALL- SWB1- GL 18-21 K LINE - L2,Complete,SWB - 1,West Support Building,SUWN-1 - 18-21,L2 - SubFab Level,DS/AD INTERIORS,CHERRY COATING,DRYWALL,FIZ DATA CENTER,2024-08-12 07:00,2024-08-15 17:00,2024-08-10 07:00,2024-08-13 17:00
CN.SWB1.1292,REMEDY - FRAME & DRYWALL - SWB1- GL 18-21 K LINE -  L2,Complete,SWB - 1,West Support Building,SUWN-1 - 18-21,L2 - SubFab Level,DS/AD INTERIORS,BERG,DRYWALL,FIZ DATA CENTER,2024-06-24 07:00,2024-07-05 17:00,2024-06-22 07:00,2024-08-03 17:00
CN.SWB1.1272,DRYWALL & INSULATION (1 side) (INT) - SWB1- GL 18-21 K LINE - L2,Complete,SWB - 1,West Support Building,SUWN-1 - 18-21,L2 - SubFab Level,DS/AD INTERIORS,BERG,DRYWALL,FIZ DATA CENTER,2024-04-15 07:00,2024-04-22 17:00,2024-04-09 07:00,2024-05-07 17:00
CN.SWB1.1212,TEMP WALLS Framing and Drywall- SWB1- GL 18-21 K-N - L2,Complete,SWB - 1,,SUWN-1 - 18-21,L2 - SubFab Level,ELECTRIC RM 2,,DRYWALL,,2024-03-09 08:00,2024-03-17 08:00,2024-02-02 00:00,2024-02-09 00:00
CN.SWB1.1382,TAPE & FINISH DRYWALL  - SWB1- GL 18-21 K LINE -  L3,Complete,SWB - 1,West Support Building,SUWN-1 - 18-21,L3 / Waffle Slab Level,DS/AD INTERIORS,CHERRY COATING,DRYWALL,FIZ DATA CENTER,2024-07-15 07:00,2024-07-18 17:00,2024-07-15 07:00,2024-07-18 17:00
CN.SWB1.1372,DRYWALL 2 SIDE - SWB1- GL 18-21 K LINE - L3,Complete,SWB - 1,West Support Building,SUWN-1 - 18-21,L3 / Waffle Slab Level,DS/AD INTERIORS,BERG,DRYWALL,FIZ DATA CENTER,2024-05-28 07:00,2024-06-03 17:00,2024-05-28 07:00,2024-06-26 17:00
CN.SWB1.1362,DRYWALL & INSULATION (1 side) (INT) - SWB1- GL 18-21 K LINE - L3,Complete,SWB - 1,West Support Building,SUWN-1 - 18-21,L3 / Waffle Slab Level,DS/AD INTERIORS,,DRYWALL,FIZ DATA CENTER,2024-05-18 10:00,2024-05-20 14:00,2024-03-10 00:00,2024-03-14 00:00
CN.SWB1.4920,Drywall Clips & AMTS Installs Support Beams - SWB-1 L4 GL 18 - 21 K LINE,Complete,SWB - 1,West Support Building,SUWN-1 - 18-21,L4 - SUP Roof - FAB Roof,DS/AD INTERIORS,SECAI,Fireproofing,HOON WOO,2024-03-27 07:00,2024-03-29 17:00,2024-03-27 07:00,2024-03-29 17:00
CN.SWB1.5260,REMEDY - DEMO DRYWALL (INT) - SWB1- GL 18-21 K LINE -  L2,Complete,SWB - 1,West Support Building,SUWN-1 - 18-21,L2 - SubFab Level,DS/AD INTERIORS,BERG,DRYWALL,FIZ DATA CENTER,2024-06-10 07:00,2024-06-18 17:00,2024-06-10 07:00,2024-06-17 17:00
CN.SWB1..4590,REMAINING DRYWALL & FINISHES  - SWB-1 - IT/SECURITY 3  GL 17-21 K- N - L3,Complete,SWB - 1,West Support Building,SUWN-1 - 18-21,L3 / Waffle Slab Level,IT/SECURITY,BERG,DRYWALL,AMBER CARO,2025-07-21 07:00,2025-07-25 17:00,2025-07-21 07:00,2025-07-25 17:00
CN.SWB2.1130,PH1- AD STEEL FRAME INSTALL - SWB-2 fab side,Complete,SWB - 2,West Support Building,SUWN-2 - 21-24,DS/AD,,,Steel Erection,SEAN MONK,2023-09-16 08:00,2023-09-18 12:00,2023-09-16 08:00,2023-09-18 15:00
CN.AB.AR.3250,TAPE & FINISH DRYWALL - SWB-2-L2 - ELECTRICAL ROOM 2 GL 21-24 K-N,Complete,SWB - 2,West Support Building,SUWN-2 - 21-24,L2 - SubFab Level,ELECTRIC RM 2,,DRYWALL,AMBER CARO,2024-03-09 08:00,2024-03-12 10:00,2024-03-01 00:00,2024-03-05 00:00
CN.AB.AR.4560,DRYWALL 2 SIDE - SWB-2-L2 - ELECTRICAL ROOM 2 GL 21-24 K-N,Complete,SWB - 2,West Support Building,SUWN-2 - 21-24,L2 - SubFab Level,ELECTRIC RM 2,,DRYWALL,AMBER CARO,2024-01-29 07:00,2024-02-01 09:00,2024-01-26 07:00,2024-02-02 11:00
CN.AB.AR.4570,DRYWALL & INSULATION (1 side) (INT) - SWB-2-L2 - ELECTRICAL ROOM 2 GL 21-24 K-N,Complete,SWB - 2,West Support Building,SUWN-2 - 21-24,L2 - SubFab Level,ELECTRIC RM 2,,DRYWALL,AMBER CARO,2024-01-10 07:00,2024-01-14 09:00,2024-01-09 15:00,2024-01-12 17:00
CN.SWB2.1470,PH1- DS STEEL FRAME INSTALL - SWB-2 Comeback Sup Side,Complete,SWB - 2,West Support Building,SUWN-2 - 21-24,DS/AD,,,Steel Erection,SEAN MONK,2023-09-21 11:00,2023-09-23 15:00,2023-09-21 11:00,2023-09-23 16:00
CN.SWB2.3880,TAPE & FINISH DRYWALL - GCS TRAINING - GL 21-24 - L-M - L1,Complete,SWB - 2,East Support Building,SUWN-2 - 21-24,L1 - Fndn Slab,GCS TRAINING,CHERRY COATING,DRYWALL,AMBER CARO,2025-08-14 07:00,2025-08-14 07:00,2025-08-14 07:00,2025-08-14 07:00
CN.SWB2.4340,DRYWALL 2 SIDE - GCS TRAINING - GL 21-24 - L-M - L1,Complete,SWB - 2,East Support Building,SUWN-2 - 21-24,L1 - Fndn Slab,GCS TRAINING,BERG,DRYWALL,AMBER CARO,2024-03-11 07:00,2024-03-19 17:00,2024-03-01 07:00,2025-08-13 17:00
CN.SWB2.4350,DRYWALL & INSULATION (1 side) (INT) - SWB2 - L1- GCS TRAINING,Complete,SWB - 2,East Support Building,SUWN-2 - 21-24,L1 - Fndn Slab,GCS TRAINING,,DRYWALL,AMBER CARO,2023-09-26 07:00,2023-09-30 17:00,2023-09-26 07:00,2023-09-30 09:00
CN.SWB23880,TAPE & FINISH DRYWALL - SWB2 - L1 - ELECTRICAL ROOM 1 CENTRAL GL 21-24 K-N,Complete,SWB - 2,East Support Building,SUWN-2 - 21-24,L3 / Waffle Slab Level,ELECTRIC RM 1,CHERRY COATING,DRYWALL,AMBER CARO,2024-09-03 07:00,2024-09-06 17:00,2024-09-03 07:00,2024-09-06 17:00
CN.SWB24340,DRYWALL 2 SIDE - SWB2 - L1 - ELECTRICAL ROOM 1 CENTRAL GL 21-24 K-N,Complete,SWB - 2,East Support Building,SUWN-2 - 21-24,L3 / Waffle Slab Level,ELECTRIC RM 1,BERG,DRYWALL,AMBER CARO,2024-08-15 07:00,2024-08-20 17:00,2024-08-15 07:00,2024-08-19 17:00
CN.SWB24350,DRYWALL & INSULATION (1 side) (INT) - SWB2 - L3 - ELECTRICAL ROOM 1 CENTRAL GL 21-24 K-N,Complete,SWB - 2,East Support Building,SUWN-2 - 21-24,L3 / Waffle Slab Level,ELECTRIC RM 1,BERG,DRYWALL,AMBER CARO,2024-03-22 07:00,2024-03-27 09:00,2024-03-04 07:00,2024-08-08 17:00
CN.SWB2.1302,TAPE & FINISH DRYWALL- SWB2- GL 21-24  - K LINE -  L1,Complete,SWB - 2,West Support Building,SUWN-2 - 21-24,L1 - Fndn Slab,DS/AD INTERIORS,,DRYWALL,FIZ DATA CENTER,2024-03-23 08:00,2024-03-27 08:00,2024-03-07 00:00,2024-03-13 00:00
CN.SWB2.1322,PRIMER & PAINT DRYWALL -  GL 21-24  - K LINE -  L1,Complete,SWB - 2,West Support Building,SUWN-2 - 21-24,L1 - Fndn Slab,DS/AD INTERIORS,FINISH PAINT,TBD Architectural Finishes,FIZ DATA CENTER,2024-10-22 07:00,2024-10-25 17:00,2024-10-22 07:00,2024-10-25 17:00
CN.SWB2.1282,DRYWALL 2 SIDE - SWB2- GL 21-24 - K LINE - L1,Complete,SWB - 2,West Support Building,SUWN-2 - 21-24,L1 - Fndn Slab,DS/AD INTERIORS,,DRYWALL,FIZ DATA CENTER,2024-03-09 08:00,2024-03-17 08:00,2024-03-01 00:00,2024-03-06 00:00
CN.SWB2.1262,DRYWALL & INSULATION (1 side) (INT)- SWB2- GL 21-24 - K LINE - L1,Complete,SWB - 2,West Support Building,SUWN-2 - 21-24,L1 - Fndn Slab,DS/AD INTERIORS,,DRYWALL,FIZ DATA CENTER,2023-12-04 15:00,2023-12-10 13:00,2023-12-04 15:00,2023-12-08 16:00
CN.SWB2.1312,REMEDY - TAPE & FINISH DRYWALL - SWB2- GL 21-24 K LINE - L2,Complete,SWB - 2,West Support Building,SUWN-2 - 21-24,L2 - SubFab Level,DS/AD INTERIORS,CHERRY COATING,DRYWALL,FIZ DATA CENTER,2024-08-12 07:00,2024-08-15 17:00,2024-08-08 07:00,2024-08-12 17:00
CN.SWB2.1292,REMEDY - FRAME & DRYWALL - SWB2- GL 21-24 K LINE -  L2,Complete,SWB - 2,West Support Building,SUWN-2 - 21-24,L2 - SubFab Level,DS/AD INTERIORS,BERG,DRYWALL,FIZ DATA CENTER,2024-06-18 07:00,2024-06-28 17:00,2024-06-18 07:00,2024-08-01 17:00
CN.SWB2.1272,DRYWALL & INSULATION (1 side) (INT)- SWB2- GL 21-24 K LINE - L2,Complete,SWB - 2,West Support Building,SUWN-2 - 21-24,L2 - SubFab Level,DS/AD INTERIORS,,DRYWALL,FIZ DATA CENTER,2024-03-09 08:00,2024-03-17 16:00,2024-03-01 00:00,2024-03-12 00:00
CN.SWB2.1212,TEMP WALLS Framing and Drywall- SWB2- GL 21-24 K-N - L2,Complete,SWB - 2,,SUWN-2 - 21-24,L2 - SubFab Level,ELECTRIC RM 2,,DRYWALL,,2024-03-09 08:00,2024-03-17 08:00,2024-02-02 00:00,2024-02-09 00:00
CN.SWB2.1382,TAPE & FINISH DRYWALL - SWB2- GL 21-24 K LINE -  L3,Complete,SWB - 2,West Support Building,SUWN-2 - 21-24,L3 / Waffle Slab Level,DS/AD INTERIORS,CHERRY COATING,DRYWALL,FIZ DATA CENTER,2024-09-23 07:00,2024-09-27 17:00,2024-09-23 07:00,2024-09-27 17:00
CN.SWB2.1372,DRYWALL 2 SIDE- SWB2- GL 21-24 K LINE - L3,Complete,SWB - 2,West Support Building,SUWN-2 - 21-24,L3 / Waffle Slab Level,DS/AD INTERIORS,BERG,DRYWALL,FIZ DATA CENTER,2024-05-13 07:00,2024-05-17 17:00,2024-05-13 07:00,2024-09-24 17:00
CN.SWB2.1362,DRYWALL & INSULATION (1 side) (INT) - SWB2- GL 21-24 K LINE - L3,Complete,SWB - 2,West Support Building,SUWN-2 - 21-24,L3 / Waffle Slab Level,DS/AD INTERIORS,,DRYWALL,FIZ DATA CENTER,2024-04-15 07:00,2024-04-18 17:00,2024-03-11 07:00,2024-03-26 17:00
CN.SWB2.6580,Drywall Clips & AMTS Installs Support Beams - SWB-2 L4 GL 21-24 K LINE,Complete,SWB - 2,West Support Building,SUWN-2 - 21-24,L4 - SUP Roof - FAB Roof,DS/AD INTERIORS,SECAI,Fireproofing,HOON WOO,2024-03-28 07:00,2024-04-11 17:00,2024-03-28 07:00,2024-04-06 17:00
CN.SWB2.6940,REMEDY - DEMO DRYWALL (INT) - SWB2- GL 21-24 K LINE -  L2,Complete,SWB - 2,West Support Building,SUWN-2 - 21-24,L2 - SubFab Level,DS/AD INTERIORS,,DRYWALL,FIZ DATA CENTER,2024-05-31 07:00,2024-06-07 15:00,2024-05-23 07:00,2024-05-28 17:00
CN.SWB3.1140,PH1- AD STEEL FRAME INSTALL - SWB-3 fab side,Complete,SWB - 3,West Support Building,SUWN-3 - 24-27,DS/AD,,,Steel Erection,SEAN MONK,2023-09-29 07:00,2023-10-02 09:00,2023-09-29 07:00,2023-10-02 15:00
CN.AB.AR.3320,TAPE & FINISH DRYWALL - SWB-3- WASTE LIQUOR RMGL 24-27 K-N - SECAI TOOK OVER FOR ACCELERATION,Complete,SWB - 3,West Support Building,SUWN-3 - 24-27,L1 - Fndn Slab,WASTE LIQUOR RM,CHERRY COATING,DRYWALL,AMBER CARO,2025-11-10 07:00,2025-11-14 17:00,2025-06-10 07:00,2025-06-10 17:00
CN.AB.AR.4580,DRYWALL 2 SIDE - SWB-3 - L1- WASTE LIQUOR RMGL 24-27 K-N - SECAI TOOK OVER FOR ACCELERATION,Complete,SWB - 3,West Support Building,SUWN-3 - 24-27,L1 - Fndn Slab,WASTE LIQUOR RM,BERG,DRYWALL,AMBER CARO,2025-11-03 07:00,2025-11-07 17:00,2025-06-10 07:00,2025-06-10 17:00
CN.AB.AR.4590,DRYWALL & INSULATION (1 side) (INT) - SWB-3 - L1- WASTE LIQUOR RMGL 24-27 K-N - SECAI TOOK OVER FOR ACCELERATION,Complete,SWB - 3,West Support Building,SUWN-3 - 24-27,L1 - Fndn Slab,WASTE LIQUOR RM,BERG,DRYWALL,AMBER CARO,2024-03-22 07:00,2024-03-29 13:00,2024-03-09 19:00,2025-06-10 07:00
CN.SWB3.1450,PH1- DS STEEL FRAME INSTALL - SWB-3 Comeback Sup Side,Complete,SWB - 3,West Support Building,SUWN-3 - 24-27,DS/AD,,,Steel Erection,SEAN MONK,2023-10-02 15:00,2023-10-05 17:00,2023-10-02 15:00,2023-10-06 17:00
CN.SWB3.3320,TAPE & FINISH DRYWALL - SWB-3 - ELECTRICAL ROOM 2 GL 24-27 K-N,Complete,SWB - 3,West Support Building,SUWN-3 - 24-27,L2 - SubFab Level,ELECTRIC RM 2,,DRYWALL,AMBER CARO,2024-03-09 08:00,2024-03-12 10:00,2024-02-29 00:00,2024-03-03 00:00
CN.SWB3.4580,DRYWALL 2 SIDE - SWB-3 - ELECTRICAL ROOM 2 GL 24-27 K-N,Complete,SWB - 3,West Support Building,SUWN-3 - 24-27,L2 - SubFab Level,ELECTRIC RM 2,,DRYWALL,AMBER CARO,2024-01-29 07:00,2024-02-01 09:00,2024-01-26 07:00,2024-01-31 11:00
CN.SWB3.4590,DRYWALL & INSULATION (1 side) (INT) - SWB-3 - ELECTRICAL ROOM 2 GL 24-27 K-N,Complete,SWB - 3,West Support Building,SUWN-3 - 24-27,L2 - SubFab Level,ELECTRIC RM 2,,DRYWALL,AMBER CARO,2024-01-10 07:00,2024-01-14 09:00,2024-01-09 15:00,2024-01-12 17:00
CN.SWB33320,TAPE & FINISH DRYWALL - SWB-3- ELECTRICAL ROOM 1 North & BATTERY ROOM 3 GL 24-27 K-N,Complete,SWB - 3,West Support Building,SUWN-3 - 24-27,L3 / Waffle Slab Level,ELECTRIC RM 1,CHERRY COATING,DRYWALL,AMBER CARO,2024-08-12 07:00,2024-08-16 17:00,2024-08-12 07:00,2024-08-16 17:00
CN.SWB34580,DRYWALL 2 SIDE - SWB-3- ELECTRICAL ROOM 1 North & BATTERY ROOM 3 GL 24-27 K-N,Complete,SWB - 3,West Support Building,SUWN-3 - 24-27,L3 / Waffle Slab Level,ELECTRIC RM 1,BERG,DRYWALL,AMBER CARO,2024-08-02 07:00,2024-08-08 17:00,2024-08-02 07:00,2024-08-06 17:00
CN.SWB34590,DRYWALL & INSULATION (1 side) (INT) - SWB-3- ELECTRICAL ROOM 1 North & BATTERY ROOM 3 GL 24-27 K-N,Complete,SWB - 3,West Support Building,SUWN-3 - 24-27,L3 / Waffle Slab Level,ELECTRIC RM 1,,DRYWALL,AMBER CARO,2024-02-05 15:00,2024-02-09 17:00,2024-01-11 15:00,2024-01-15 17:00
CN.SWB3.1292,TAPE & FINISH DRYWALL - SWB2- GL 24-27  - K LINE  -  L1,Complete,SWB - 3,West Support Building,SUWN-3 - 24-27,L1 - Fndn Slab,DS/AD INTERIORS,,DRYWALL,FIZ DATA CENTER,2024-03-09 08:00,2024-03-17 08:00,2024-03-01 00:00,2024-03-11 00:00
CN.SWB3.1322,PRIMER & PAINT DRYWALL - GL 24-27 - K LINE - L1,Complete,SWB - 3,West Support Building,SUWN-3 - 24-27,L1 - Fndn Slab,DS/AD INTERIORS,FINISH PAINT,TBD Architectural Finishes,FIZ DATA CENTER,2024-10-22 07:00,2024-10-25 17:00,2024-10-22 07:00,2024-10-25 17:00
CN.SWB3.1272,DRYWALL 2 SIDE - SWB2-GL 24-27 - K LINE - L1,Complete,SWB - 3,West Support Building,SUWN-3 - 24-27,L1 - Fndn Slab,DS/AD INTERIORS,,DRYWALL,FIZ DATA CENTER,2024-02-02 07:00,2024-02-05 17:00,2024-02-02 07:00,2024-02-06 11:00
CN.SWB3.1252,DRYWALL & INSULATION (1 side) (INT)SWB2- GL 24-27 - K LINE - L1,Complete,SWB - 3,West Support Building,SUWN-3 - 24-27,L1 - Fndn Slab,DS/AD INTERIORS,,DRYWALL,FIZ DATA CENTER,2023-12-04 07:00,2023-12-09 15:00,2023-12-04 07:00,2023-12-08 16:00
CN.SWB3.1302,REMEDY - TAPE & FINISH DRYWALL -SWB2- GL 22-28 K LINE - L2,Complete,SWB - 3,West Support Building,SUWN-3 - 24-27,L2 - SubFab Level,DS/AD INTERIORS,CHERRY COATING,DRYWALL,FIZ DATA CENTER,2024-08-12 07:00,2024-08-15 17:00,2024-08-08 07:00,2024-08-12 17:00
CN.SWB3.1282,REMEDY - FRAME & DRYWALL -SWB2-  GL 22-28 K LINE -  L2,Complete,SWB - 3,West Support Building,SUWN-3 - 24-27,L2 - SubFab Level,DS/AD INTERIORS,BERG,DRYWALL,FIZ DATA CENTER,2024-06-18 07:00,2024-06-28 17:00,2024-06-18 07:00,2024-07-29 17:00
CN.SWB3.1262,REMEDIATION - DRYWALL & INSULATION (1 side) (INT) -SWB2- GL 24-27 K LINE 7 - L2,Complete,SWB - 3,West Support Building,SUWN-3 - 24-27,L2 - SubFab Level,DS/AD INTERIORS,,DRYWALL,FIZ DATA CENTER,2024-03-12 15:00,2024-03-25 13:00,2024-03-12 15:00,2024-03-18 13:00
CN.SWB3.1081,TEMP WALLS Framing and Drywall-SWB2- GL 24-27 K-N - L2,Complete,SWB - 3,,SUWN-3 - 24-27,L2 - SubFab Level,ELECTRIC RM 2,,DRYWALL,,2024-03-12 13:00,2024-03-20 13:00,2024-02-02 00:00,2024-02-12 00:00
CN.SWB3.1372,TAPE & FINISH DRYWALL -SWB2-  GL 24-27 K LINE -  L3,Complete,SWB - 3,West Support Building,SUWN-3 - 24-27,L3 / Waffle Slab Level,DS/AD INTERIORS,CHERRY COATING,DRYWALL,FIZ DATA CENTER,2024-05-02 07:00,2024-05-07 17:00,2024-06-01 07:00,2024-06-04 17:00
CN.SWB3.1362,DRYWALL 2 SIDE -SWB2- GL 24-27 K LINE - L3,Complete,SWB - 3,West Support Building,SUWN-3 - 24-27,L3 / Waffle Slab Level,DS/AD INTERIORS,BERG,DRYWALL,FIZ DATA CENTER,2024-05-13 07:00,2024-05-17 17:00,2024-05-13 07:00,2024-05-28 17:00
CN.SWB3.1352,DRYWALL & INSULATION (1 side) (INT)-SWB2- GL 24-27 K LINE - L3,Complete,SWB - 3,West Support Building,SUWN-3 - 24-27,L3 / Waffle Slab Level,DS/AD INTERIORS,,DRYWALL,FIZ DATA CENTER,2024-04-01 11:00,2024-04-05 11:00,2024-04-01 11:00,2024-04-04 11:00
CN.SWB3.4860,Drywall Clips & AMTS Installs Support Beams - GL 24-27 K LINE - L4,Complete,SWB - 3,West Support Building,SUWN-3 - 24-27,L4 - SUP Roof - FAB Roof,DS/AD INTERIORS,SECAI,TBD Architectural Finishes,FIZ DATA CENTER,2024-03-26 07:00,2024-04-05 17:00,2024-03-26 07:00,2024-04-04 17:00
CN.SWB3.5150,IMPACT - DEMO DRYWALL -SWB2- GL 22-28 K LINE - L2,Complete,SWB - 3,West Support Building,SUWN-3 - 24-27,L2 - SubFab Level,DS/AD INTERIORS,BERG,DRYWALL,FIZ DATA CENTER,2024-05-31 07:00,2024-06-07 17:00,2024-05-23 07:00,2024-05-28 17:00
CN.SWB4.1130,PH1- AD STEEL FRAME INSTALL - SWB-4 fab side,Complete,SWB - 4,West Support Building,SUWN-4 - 27-30,DS/AD,,,Steel Erection,SEAN MONK,2023-10-07 08:00,2023-10-09 12:00,2023-10-07 08:00,2023-10-11 17:00
CN.AB.AR.3390,TAPE & FINISH DRYWALL - SWB-4-L3 - CTR LAB GL 27-30  K-N,Complete,SWB - 4,West Support Building,SUWN-4 - 27-30,L3 / Waffle Slab Level,BATT RM 3,CHERRY COATING,DRYWALL,AMBER CARO,2024-05-02 07:00,2024-05-09 17:00,2024-04-23 07:00,2024-04-27 17:00
CN.AB.AR.4600,DRYWALL 2 SIDE - SWB-4-L3 - CTR LAB GL 27-30 K-N,Complete,SWB - 4,West Support Building,SUWN-4 - 27-30,L3 / Waffle Slab Level,BATT RM 3,BERG,DRYWALL,AMBER CARO,2024-04-16 07:00,2024-04-22 17:00,2024-04-16 07:00,2024-04-20 17:00
CN.AB.AR.4610,DRYWALL & INSULATION (1 side) (INT) - SWB-4-L3 - CTR LAB GL 27-30 K-N,Complete,SWB - 4,West Support Building,SUWN-4 - 27-30,L3 / Waffle Slab Level,BATT RM 3,,DRYWALL,AMBER CARO,2024-03-09 08:00,2024-03-17 08:00,2024-02-29 00:00,2024-03-19 00:00
CN.SWB4.1470,PH1- DS STEEL FRAME INSTALL - SWB-4 Comeback Sup Side,Complete,SWB - 4,West Support Building,SUWN-4 - 27-30,DS/AD,,,Steel Erection,SEAN MONK,2023-10-12 07:00,2023-10-14 11:00,2023-10-12 07:00,2023-10-14 12:00
CN.SWB4R.3180,TAPE & FINISH DRYWALL - SWB-1- WASTE LIQUOR RM GL 27-30  K-N,Complete,SWB - 4,West Support Building,SUWN-4 - 27-30,L1 - Fndn Slab,WASTE LIQUOR RM,CHERRY COATING,DRYWALL,AMBER CARO,2025-09-15 07:00,2025-09-19 17:00,2025-09-15 07:00,2025-09-19 17:00
CN.SWB4R.4540,DRYWALL 2 SIDE - SWB-1- WASTE LIQUOR RM GL 27-30 K-N,Complete,SWB - 4,West Support Building,SUWN-4 - 27-30,L1 - Fndn Slab,WASTE LIQUOR RM,BERG,DRYWALL,AMBER CARO,2025-09-08 07:00,2025-09-12 17:00,2025-09-08 07:00,2025-09-12 17:00
CN.SWB4R.4550,DRYWALL & INSULATION (1 side) (INT) - SWB-1- WASTE LIQUOR RM GL 27-30 K-N - SECAI TOOK OVER FOR ACCELERATION,Complete,SWB - 4,West Support Building,SUWN-4 - 27-30,L1 - Fndn Slab,WASTE LIQUOR RM,BERG,DRYWALL,AMBER CARO,2024-04-01 07:00,2024-04-08 13:00,2024-03-14 07:00,2025-06-27 07:00
CN.SWB4.3180,REMAINING DRYWALL & FINISHES  - SWB-1-L2 - ELECTRICAL ROOM 2 GL 27-30  K-N,Complete,SWB - 4,West Support Building,SUWN-4 - 27-30,L2 - SubFab Level,BATT RM 3,CHERRY COATING,DRYWALL,AMBER CARO,2024-11-04 07:00,2024-11-08 17:00,2024-10-09 07:00,2024-10-18 07:00
CN.SWB4.4540,DRYWALL 2 SIDE - SWB-1-L2 - ELECTRICAL ROOM 2 GL 27-30 K-N,Complete,SWB - 4,West Support Building,SUWN-4 - 27-30,L2 - SubFab Level,BATT RM 3,,DRYWALL,AMBER CARO,2024-01-29 07:00,2024-02-01 09:00,2024-01-29 07:00,2024-02-02 09:00
CN.SWB4.4550,DRYWALL & INSULATION (1 side) (INT) - SWB-4-L2 - ELECTRICAL ROOM 2,Complete,SWB - 4,West Support Building,SUWN-4 - 27-30,L2 - SubFab Level,BATT RM 3,,DRYWALL,AMBER CARO,2023-11-16 07:00,2023-11-19 09:00,2023-11-16 07:00,2023-11-19 12:00
CN.SWB4.1302,TAPE & FINISH DRYWALL -SWB2 -  L1 GL 27-30 - K LINE,Complete,SWB - 4,West Support Building,SUWN-4 - 27-30,L1 - Fndn Slab,DS/AD INTERIORS,,DRYWALL,FIZ DATA CENTER,2024-03-09 08:00,2024-03-17 08:00,2024-02-29 00:00,2024-03-07 00:00
CN.SWB4.1332,PRIMER & PAINT DRYWALL - GL 27-30 - K LINE - L1,Complete,SWB - 4,West Support Building,SUWN-4 - 27-30,L1 - Fndn Slab,DS/AD INTERIORS,FINISH PAINT,TBD Architectural Finishes,FIZ DATA CENTER,2024-10-22 07:00,2024-10-25 17:00,2024-10-22 07:00,2024-10-28 17:00
CN.SWB4.1272,DRYWALL 2 SIDE -SWB2 - L1 GL 27-30 - K LINE,Complete,SWB - 4,West Support Building,SUWN-4 - 27-30,L1 - Fndn Slab,DS/AD INTERIORS,,DRYWALL,FIZ DATA CENTER,2024-02-02 07:00,2024-02-05 17:00,2024-02-02 07:00,2024-02-06 11:00
CN.SWB4.1252,DRYWALL & INSULATION (1 side) (INT)-SWB2 - L1 GL 27-30 - K LINE,Complete,SWB - 4,West Support Building,SUWN-4 - 27-30,L1 - Fndn Slab,DS/AD INTERIORS,,DRYWALL,FIZ DATA CENTER,2023-12-11 07:00,2023-12-16 15:00,2023-12-11 07:00,2023-12-16 16:00
CN.SWB4.1312,REMEDY - TAPE & FINISH DRYWALL SWB2 L2 GL 27-30 K LINE,Complete,SWB - 4,West Support Building,SUWN-4 - 27-30,L2 - SubFab Level,DS/AD INTERIORS,CHERRY COATING,DRYWALL,FIZ DATA CENTER,2024-09-13 07:00,2024-09-17 17:00,2024-08-27 07:00,2024-08-30 17:00
CN.SWB4.1282,REMEDY - FRAME & DRYWALL  SIDE -SWB2  L2 GL 27-30  K LINE,Complete,SWB - 4,West Support Building,SUWN-4 - 27-30,L2 - SubFab Level,DS/AD INTERIORS,BERG,DRYWALL,FIZ DATA CENTER,2024-07-23 07:00,2024-07-26 17:00,2024-07-19 07:00,2024-08-26 17:00
CN.SWB4.1262,REMEDY - DEMO DRYWALL & INSULATION (1 side) (INT) SWB2 - L2 GL 28 - 33 K LINE,Complete,SWB - 4,West Support Building,SUWN-4 - 27-30,L2 - SubFab Level,DS/AD INTERIORS,BERG,DRYWALL,FIZ DATA CENTER,2024-03-18 07:00,2024-03-25 15:00,2024-04-29 07:00,2024-05-09 17:00
CN.SWB4.1372,TAPE & FINISH DRYWALL-SWB2  L3 GL 27-30  K LINE,Complete,SWB - 4,West Support Building,SUWN-4 - 27-30,L3 / Waffle Slab Level,DS/AD INTERIORS,CHERRY COATING,DRYWALL,FIZ DATA CENTER,2024-06-10 07:00,2024-06-14 17:00,2024-06-10 07:00,2024-06-14 17:00
CN.SWB4.1362,DRYWALL 2 SIDE -SWB2 L3 GL 27-30 K LINE,Complete,SWB - 4,West Support Building,SUWN-4 - 27-30,L3 / Waffle Slab Level,DS/AD INTERIORS,BERG,DRYWALL,FIZ DATA CENTER,2024-05-16 07:00,2024-05-21 17:00,2024-05-16 07:00,2024-06-01 17:00
CN.SWB4.1352,DRYWALL & INSULATION (1 side) (INT)-SWB2 L3 GL 27-30 K LINE,Complete,SWB - 4,West Support Building,SUWN-4 - 27-30,L3 / Waffle Slab Level,DS/AD INTERIORS,,DRYWALL,FIZ DATA CENTER,2024-04-05 11:00,2024-04-15 11:00,2024-04-05 11:00,2024-04-09 11:00
CN.SWB4.6440,Drywall Clips & AMTS Installs Support Beams - L4 GL 27-30 K LINE,Complete,SWB - 4,West Support Building,SUWN-4 - 27-30,L4 - SUP Roof - FAB Roof,DS/AD INTERIORS,,TBD Architectural Finishes,FIZ DATA CENTER,2024-04-19 07:00,2024-04-25 17:00,2024-03-30 07:00,2024-04-05 11:00
CN.SWB4R.4640,IMPACT - DAMAGED DOORS & PRECAST CONNECTION ISSUES - SWB-1- WASTE SOLVENT RM - GL 27-30 K-N,Complete,SWB - 4,West Support Building,SUWN-4 - 27-30,L1 - Fndn Slab,WASTE LIQUOR RM,CHERRY COATING,DRYWALL,AMBER CARO,2024-09-12 07:00,2024-10-08 17:00,2024-09-12 07:00,2025-06-27 17:00
CN.SWB5.1130,PH1- AD STEEL FRAME INSTALL - SWB-5 fab side,Complete,SWB - 5,West Support Building,SUWN-5 - 30-33,DS/AD,,,Steel Erection,SEAN MONK,2023-10-15 15:00,2023-10-18 18:00,2023-10-15 15:00,2023-10-20 09:00
CN.AB.AR.3460,TAPE & FINISH DRYWALL - SWB-5 - L3 GL 30-33 K-N,Complete,SWB - 5,West Support Building,SUWN-5 - 30-33,L3 / Waffle Slab Level,CRT LAB,CHERRY COATING,DRYWALL,AMBER CARO,2025-08-05 07:00,2025-08-05 17:00,2025-08-05 07:00,2025-08-05 17:00
CN.AB.AR.4620,DRYWALL 2 SIDE - SWB-5 - L3- CRT LAB GL 30-33 K-N,Complete,SWB - 5,West Support Building,SUWN-5 - 30-33,L3 / Waffle Slab Level,CRT LAB,BERG,DRYWALL,AMBER CARO,2024-02-26 07:00,2024-02-27 13:00,2024-02-24 14:00,2024-05-29 17:00
CN.AB.AR.4630,DRYWALL & INSULATION (1 side) (INT) - SWB-5 - L3 GL 30-33 K-N,Complete,SWB - 5,West Support Building,SUWN-5 - 30-33,L3 / Waffle Slab Level,CRT LAB,,DRYWALL,AMBER CARO,2024-02-20 11:00,2024-02-26 11:00,2024-02-20 11:00,2024-04-05 17:00
CN.SWB5.1800,PH1- INSTALL EXTERIOR DOOR / LOUVERS FRAMES - NW PENTHOUSE,Not Started,SWB - 5,East Support Building,NORTH WEST PENTHOUSE,L4 - SUP Roof - FAB Roof,,DOORS AND HARDWARE,TBD Architectural Finishes,SEAN MONK,2025-12-04 07:00,2025-12-08 17:00,,
CN.SWB5.1820,PH1- INSTALL EXTERIOR DOORS / LOUVERS - NW PENTHOUSE,Not Started,SWB - 5,East Support Building,NORTH WEST PENTHOUSE,L4 - SUP Roof - FAB Roof,,DOORS AND HARDWARE,TBD Architectural Finishes,SEAN MONK,2025-12-09 07:00,2025-12-11 17:00,,
CN.SWB5.1850,PH1- INSTALL INTERIOR DRYWALL 1ST LAYER - IT SECURITY/ FIRE ALARM ROOM - NW PENTHOUSE,Complete,SWB - 5,East Support Building,NORTH WEST PENTHOUSE,L4 - SUP Roof - FAB Roof,,BERG,DRYWALL,SEAN MONK,2025-02-28 07:00,2025-03-05 17:00,2025-02-10 07:00,2025-05-30 17:00
CN.SWB5.2130,PH1- DS STEEL FRAME INSTALL - SWB-5 Comeback Sup Side,Complete,SWB - 5,West Support Building,SUWN-5 - 30-33,DS/AD,,,Steel Erection,SEAN MONK,2023-10-21 08:00,2023-10-25 10:30,2023-10-21 08:00,2023-10-25 15:00
CN.SWB5.1941,METAL STUD FRAMING (2hr) w DOOR FRAMES - SWB-5 - L1 only - GCS STORAGE GL 30-33 K-N,Complete,SWB - 5,East Support Building,SUWN-5 - 30-33,L1 - Fndn Slab,,BERG,TBD Architectural Finishes,AMBER CARO,2024-01-17 07:00,2024-01-22 13:00,2024-01-16 07:00,2024-01-22 17:00
CN.SWB5.4250,DRYWALL & INSULATION (1 side) - SWB-5 - L1 only - GCS STORAGE GL 30-33 K-N,Complete,SWB - 5,East Support Building,SUWN-5 - 30-33,L1 - Fndn Slab,,,DRYWALL,AMBER CARO,2024-01-30 07:00,2024-02-04 13:00,2024-01-30 07:00,2024-02-05 17:00
CN.SWB54671,H FRAME FOR ROLL UP DOOR - SWB-5 - L1 only - GCS STORAGE GL 30-33 K-N,Not Started,SWB - 5,East Support Building,SUWN-5 - 30-33,L1 - Fndn Slab,,PATRIOT,TBD Architectural Finishes,AMBER CARO,2025-11-21 07:00,2025-11-24 17:00,,
CN.SWB53180,TAPE & FINISH DRYWALL - SWB-1-L2 - ELECTRICAL ROOM 2 GL 30-33 K-N,Not Started,SWB - 5,West Support Building,SUWN-5 - 30-33,L2 - SubFab Level,GCS STORAGE,CHERRY COATING,DRYWALL,AMBER CARO,2025-12-02 07:00,2025-12-08 17:00,,
CN.SWB54540,DRYWALL 2 SIDE - SWB-1-L2 - ELECTRICAL ROOM 2 GL 30-33 K-N,Not Started,SWB - 5,West Support Building,SUWN-5 - 30-33,L2 - SubFab Level,GCS STORAGE,BERG,DRYWALL,AMBER CARO,2025-11-21 07:00,2025-12-01 17:00,,
CN.SWB54550,DRYWALL & INSULATION (1 side) (INT) - SWB-5-L2 - ELECTRICAL ROOM 2 GL 30-33 K-N,Complete,SWB - 5,West Support Building,SUWN-5 - 30-33,L2 - SubFab Level,GCS STORAGE,,DRYWALL,AMBER CARO,2023-11-27 07:00,2023-12-01 17:00,2023-11-27 07:00,2023-12-01 17:00
CN.SWB5.1302,TAPE & FINISH DRYWALL -SWB5  L1 GL 30-33  - K LINE,Complete,SWB - 5,West Support Building,SUWN-5 - 30-33,L1 - Fndn Slab,DS/AD INTERIORS,CHERRY COATING,DRYWALL,FIZ DATA CENTER,2024-09-20 07:00,2024-09-27 17:00,2024-03-15 07:00,2024-03-20 17:00
CN.SWB5.1332,PRIMER & PAINT DRYWALL - GL 30-33 - K LINE - L1,Complete,SWB - 5,West Support Building,SUWN-5 - 30-33,L1 - Fndn Slab,DS/AD INTERIORS,FINISH PAINT,TBD Architectural Finishes,FIZ DATA CENTER,2024-10-22 07:00,2024-10-25 17:00,2024-10-22 07:00,2024-10-25 17:00
CN.SWB5.1282,DRYWALL 2 SIDE-SWB5 L1 GL 30-33 - K LINE,Complete,SWB - 5,West Support Building,SUWN-5 - 30-33,L1 - Fndn Slab,DS/AD INTERIORS,,DRYWALL,FIZ DATA CENTER,2024-03-09 08:00,2024-03-17 08:00,2024-03-01 00:00,2024-03-11 13:00
CN.SWB5.1262,DRYWALL & INSULATION (1 side) (INT) - SWB5 L1 GL 30-33 - K LINE,Complete,SWB - 5,West Support Building,SUWN-5 - 30-33,L1 - Fndn Slab,DS/AD INTERIORS,,DRYWALL,FIZ DATA CENTER,2024-01-02 09:00,2024-01-07 16:00,2024-01-02 07:00,2024-01-08 09:00
CN.SWB5.1292,REMEDY - TAPE & FINISH DRYWALL -SWB5 L2 GL 30-33 K LINE,Not Started,SWB - 5,West Support Building,SUWN-5 - 30-33,L2 - SubFab Level,DS/AD INTERIORS,CHERRY COATING,DRYWALL,FIZ DATA CENTER,2025-11-21 07:00,2025-11-21 17:00,,
CN.SWB5.1272,REMEDY - FRAME & DRYWALL 2 SIDE -SWB5  L2 GL 30-33 K LINE,Complete,SWB - 5,West Support Building,SUWN-5 - 30-33,L2 - SubFab Level,DS/AD INTERIORS,BERG,DRYWALL,FIZ DATA CENTER,2024-07-22 07:00,2024-07-25 17:00,2024-07-22 07:00,2024-09-20 17:00
CN.SWB5.1252,REMEDY - DEMO DRYWALL - SWB5  L2 GL 28-33 K LINE [AWAITING SECAI TO RELEASE WORK],Complete,SWB - 5,West Support Building,SUWN-5 - 30-33,L2 - SubFab Level,DS/AD INTERIORS,BERG,DRYWALL,FIZ DATA CENTER,2024-05-31 07:00,2024-06-10 17:00,2024-05-10 07:00,2024-05-21 11:00
CN.SWB5.1372,TAPE & FINISH DRYWALL -SWB5  L3 GL 30-33 K LINE,Complete,SWB - 5,West Support Building,SUWN-5 - 30-33,L3 / Waffle Slab Level,DS/AD INTERIORS,CHERRY COATING,DRYWALL,FIZ DATA CENTER,2024-05-28 07:00,2024-06-03 17:00,2024-05-28 07:00,2024-06-01 17:00
CN.SWB5.1362,DRYWALL 2 SIDE -SWB5 L3 GL 30-33 K LINE,Complete,SWB - 5,West Support Building,SUWN-5 - 30-33,L3 / Waffle Slab Level,DS/AD INTERIORS,BERG,DRYWALL,FIZ DATA CENTER,2024-05-21 07:00,2024-05-28 17:00,2024-05-21 07:00,2024-05-27 17:00
CN.SWB5.1352,DRYWALL & INSULATION (1 side) (INT) - SWB5 L3 GL 30-33 K LINE,Complete,SWB - 5,West Support Building,SUWN-5 - 30-33,L3 / Waffle Slab Level,DS/AD INTERIORS,BERG,DRYWALL,FIZ DATA CENTER,2024-04-24 07:00,2024-04-30 17:00,2024-04-24 07:00,2024-04-29 17:00
CN.SWB5.1412,INSTALL ELEVATOR HSS STEEL DOOR OPENINGS - ELEVATOR 5 - TURNOVER TO SECAI,Complete,SWB - 5,West Support Building,SUWN-5 - 30-33,,ELEVATOR,W&W,DRYWALL,,2025-08-08 07:00,2025-09-05 17:00,2025-07-17 07:00,2025-07-25 17:00
CN.SWB5.6410,DOOR FRAMES BITUMINOUS COATING (2 Exterior) - NW PENTHOUSE,Not Started,SWB - 5,East Support Building,NORTH WEST PENTHOUSE,L4 - SUP Roof - FAB Roof,,DOORS AND HARDWARE,TBD Architectural Finishes,SEAN MONK,2025-11-21 07:00,2025-11-21 17:00,,
CN.SWB5.6520,Drywall Clips & AMTS Installs Support Beams - L4- GL 30-33 L4 K LINE,Complete,SWB - 5,West Support Building,SUWN-5 - 30-33,L4 - SUP Roof - FAB Roof,DS/AD INTERIORS,SECAI,TBD Architectural Finishes,FIZ DATA CENTER,2024-04-01 07:00,2024-04-12 09:00,2024-03-25 07:00,2024-04-08 17:00
CN.SWB5.9490,TAPE & FINISH DRYWALL - SWB-5 - L1 only - GCS STORAGE GL 30-33 K-N - SECAI TOOK OVER FOR ACCELERATION,Complete,SWB - 5,East Support Building,SUWN-5 - 30-33,L1 - Fndn Slab,GCS STORAGE ,CHERRY COATING,DRYWALL,AMBER CARO,2025-06-23 07:00,2025-06-27 17:00,2025-06-27 07:00,2025-06-27 17:00
CN.SWB5.9480,DRYWALL 2 SIDE - SWB-5 - L1 only - GCS STORAGE GL 30-33 K-N - SECAI TOOK OVER FOR ACCELERATION,Complete,SWB - 5,East Support Building,SUWN-5 - 30-33,L1 - Fndn Slab,GCS STORAGE ,BERG,DRYWALL,AMBER CARO,2025-06-27 07:00,2025-06-27 17:00,2025-06-27 07:00,2025-06-27 17:00
CN.SWB5.9470,REMAINING DRYWALL & FINISHES - SWB-5 - L1 - FIRE ALARM 5 - GL 30-33 K-N,Complete,SWB - 5,East Support Building,SUWN-5 - 30-33,L1 - Fndn Slab,FIRE ALARM ,,DRYWALL,AMBER CARO,2024-11-02 07:00,2024-11-08 17:00,2024-10-08 07:00,2024-10-29 17:00
CN.SWB5.9510,REMAINING DRYWALL & FINISHES  - SWB-5 - L2 - FIRE ALARM 22 GL 5-6 A/B,Complete,SWB - 5,East Support Building,SUES-5 - 6-1 - FIZ - GL A -E,L2 - SubFab Level,FIRE ALARM ,,DRYWALL,AMBER CARO,2024-11-03 07:00,2024-11-09 17:00,2024-05-27 07:00,2025-10-13 07:00
CN.SWB5.9550,REMAINING DRYWALL & FINISHES  - SWB-5 - L2 - FIRE ALARM 20 -  GL 30-33 K-N,Complete,SWB - 5,East Support Building,SUES-1 - 19-16,L2 - SubFab Level,FIRE ALARM ,CHERRY COATING,DRYWALL,AMBER CARO,2024-08-28 07:00,2024-09-06 17:00,2024-08-12 07:00,2024-08-19 17:00
CN.SWB5.9580,TAPE & FINISH DRYWALL - SEB-5 - L2 - FIRE ALARM 18 GL 32-33  A-B - B/33 FA room,Not Started,SWB - 5,East Support Building,SUEN-5 - 31-33,L2 - SubFab Level,FIRE ALARM ,CHERRY COATING,DRYWALL,AMBER CARO,2025-11-21 07:00,2025-12-01 17:00,,
CN.SWB5.9570,FRAMING & DRYWALL (1 side) - SEB-5 - L2 - FIRE ALARM 18 GL 32-33 A-B - B/33 FA room,Complete,SWB - 5,East Support Building,SUEN-5 - 31-33,L2 - SubFab Level,FIRE ALARM ,,DRYWALL,AMBER CARO,2025-09-02 07:00,2025-09-02 17:00,2025-09-02 07:00,2025-09-02 17:00
CN.SWB5.9590,REMAINING DRYWALL & FINISHES  - SWB-5 - L2 - FIRE ALARM 1 GL 4-5  K-L,Complete,SWB - 5,East Support Building,FIZ 2 / SUWS 5  (GL6-1) - GL J - N - DATA CENTER 1,L2 - SubFab Level,FIRE ALARM ,,DRYWALL,AMBER CARO,2024-09-10 07:00,2024-09-16 13:00,2024-08-03 07:00,2024-08-07 13:00
CN.SWB5.9630,TAPE & FINISH DRYWALL - SWB-5 - L2 - FIRE ALARM 11 GL 30-31  K-L,Complete,SWB - 5,East Support Building,SUWN-5 - 30-33,L2 - SubFab Level,FIRE ALARM ,CHERRY COATING,DRYWALL,AMBER CARO,2024-09-03 07:00,2024-09-09 17:00,2024-09-03 07:00,2024-09-07 17:00
CN.SWB5.9620,FRAMING & DRYWALL - SWB-5 - L2 - FIRE ALARM 5 GL 30-31 K-L,Complete,SWB - 5,East Support Building,SUWN-5 - 30-33,L2 - SubFab Level,FIRE ALARM ,,DRYWALL,AMBER CARO,2024-08-26 07:00,2024-08-31 17:00,2024-08-26 07:00,2024-08-31 17:00
CN.SWB5.9650,REMAINING DRYWALL & FINISHES  - SWB-5 - L2 - IT/SECURITY  20 -  GL 18-19 K-N,Complete,SWB - 5,East Support Building,SUES-1 - 19-16,L2 - SubFab Level,IT/SECURITY,CHERRY COATING,DRYWALL,AMBER CARO,2024-08-23 07:00,2024-08-29 17:00,2024-08-01 07:00,2024-08-08 17:00
CN.SWB5.9660,REMAINING DRYWALL & FINISHES  - SWB-5 - L2 - IT/SECURITY 1 GL 4-5  K-L,Complete,SWB - 5,East Support Building,FIZ 2 / SUWS 5  (GL6-1) - GL J - N - DATA CENTER 1,L2 - SubFab Level,IT/SECURITY,,DRYWALL,AMBER CARO,2024-08-03 07:00,2024-08-09 13:00,2024-08-03 07:00,2024-08-07 13:00
CN.SWB5.9800,REMAINING DRYWALL & FRAMING - SWB-5 - L2 - PR LIFTER RM 18 GL 32-33 A-B,Not Started,SWB - 5,East Support Building,SUEN-5 - 31-33,L2 - SubFab Level,PR RM,,DRYWALL,AMBER CARO,2025-11-21 07:00,2025-11-21 17:00,,
CN.SWB5.9930,COMPLETE FRAMING/DRYWALL/TAPE+FLOAT - MECHANICAL ROOM - ELEVATOR 5 (MK MARLOW),Complete,SWB - 5,West Support Building,SUWN-5 - 30-33,,ELEVATOR,BERG,DRYWALL,,2024-09-05 07:00,2024-09-24 17:00,2024-08-12 07:00,2024-11-20 17:00
CN.AB.AR.7780,FINISH DRYWALL & FINISHES - AIRLOCK 5 - SWB-5 - L3 GL 30-33 K-N,Complete,SWB - 5,West Support Building,SUWN-5 - 30-33,L3 / Waffle Slab Level,AIRLOCKS & VESTABLES,CHERRY COATING,DRYWALL,AMBER CARO,2025-01-23 07:00,2025-01-30 17:00,2025-01-23 07:00,2025-02-03 17:00
CN.AB.AR.8470,FINISH DRYWALL & FINISHES - VESTIBULE 5 - SWB-5 - L3 GL 30-33 K-N,Complete,SWB - 5,West Support Building,SUWN-5 - 30-33,L3 / Waffle Slab Level,AIRLOCKS & VESTABLES,CHERRY COATING,DRYWALL,AMBER CARO,2025-02-05 07:00,2025-02-13 17:00,2025-02-05 07:00,2025-07-25 17:00
CN.AB.AR.8630,FINISH DRYWALL & FINISHES - ELEVATOR 5 HALLWAY - SWB-5 - L3 - GL 30-33 K-N,Complete,SWB - 5,West Support Building,SUWN-5 - 30-33,L3 / Waffle Slab Level,,BERG,DRYWALL,AMBER CARO,2025-09-08 07:00,2025-09-19 17:00,2025-09-08 07:00,2025-09-19 17:00
CN.SWB5.10840,FRAMING & DRYWALL COLUMN N33 M33 - NW PENTHOUSE,Complete,SWB - 5,East Support Building,NORTH WEST PENTHOUSE,L4 - SUP Roof - FAB Roof,,BERG,DRYWALL,SEAN MONK,2025-07-14 07:00,2025-07-17 17:00,2025-07-14 07:00,2025-07-25 17:00
CN.SEA1.1110,PH1- AD STEEL FRAME INSTALL TIER 1 - SEA-1 fab side,Complete,SEA - 1,East Support Building,SUES-1 - 19-16,DS/AD,,,Steel Erection,SEAN MONK,2023-06-10 14:00,2023-06-16 12:00,2023-05-09 16:00,2023-05-19 17:00
CN.AB.AR.1940,METAL STUD FRAMING (2hr) w DOOR FRAMES - SEA1 - GL 19-16 - L1 - C-A - (Leave Out holding work)- MECHANICAL ROOM 3 SOUTH,Complete,SEA - 1,East Support Building,SUES-1 - 19-16,L1 - Fndn Slab,MECH RM 2,BERG,TBD Architectural Finishes,AMBER CARO,2024-01-06 11:00,2024-01-13 11:00,2024-01-06 11:00,2024-01-09 12:00
CN.AB.AR.3530,TAPE & FINISH DRYWALL - MECHANICAL ROOM 3 SOUTH - SEA1 - GL 19-16 - C-A - L1,Complete,SEA - 1,East Support Building,SUES-1 - 19-16,L1 - Fndn Slab,MECH RM 2,CHERRY COATING,DRYWALL,AMBER CARO,2025-10-09 07:00,2025-10-15 17:00,2025-10-09 07:00,2025-10-15 17:00
CN.AB.AR.4240,REMAINING FRAMING & DRYWALL - MECHANICAL ROOM 3 SOUTH - WALK WAY - SEA1 - GL 19-16 - C-A - L1(On Hold until 12/15),Complete,SEA - 1,East Support Building,SUES-1 - 19-16,L1 - Fndn Slab,MECH RM 2,BERG,DRYWALL,AMBER CARO,2024-10-17 07:00,2024-10-24 17:00,2024-10-17 07:00,2025-09-08 07:00
CN.AB.AR.4250,DRYWALL & INSULATION (1 side) - SEA1 - GL 19-16 - L1 - C-A - MECHANICAL ROOM 3 SOUTH,Complete,SEA - 1,East Support Building,SUES-1 - 19-16,L1 - Fndn Slab,MECH RM 2,,DRYWALL,AMBER CARO,2024-01-12 09:00,2024-01-18 12:00,2024-01-12 07:00,2024-01-16 11:00
CN.SEA1.5130,PH1- DS STEEL FRAME INSTALL - SEA-1 Comeback Sup Side GL 19-16,Complete,SEA - 1,East Support Building,SUES-1 - 19-16,DS/AD,,,Steel Erection,SEAN MONK,2023-09-30 08:00,2023-10-07 10:00,2023-09-26 08:00,2023-09-30 17:00
CN.SEA1.4671,H FRAME FOR ROLL UP DOOR - MECHANICAL ROOM 3 SOUTH - SEA1 - GL 19-16 - C-A - L1,Complete,SEA - 1,East Support Building,SUES-1 - 19-16,L1 - Fndn Slab,MECH RM 2,PATRIOT,TBD Architectural Finishes,AMBER CARO,2024-09-03 07:00,2024-09-04 17:00,2024-09-03 07:00,2024-09-07 17:00
CN.AB.AR.4670,INSTALL ROLL UP DOORS (MEP ROUGH IN NOT INCLUDED) - SEA1 - GL 19-16 - C-A - L1,Not Started,SEA - 1,East Support Building,SUES-1 - 19-16,EXTERIOR SKIN,,PATRIOT,TBD Architectural Finishes,AMBER CARO,2025-11-26 07:00,2025-11-26 17:00,,
CN.AB.AR.4710,METAL STUD FRAMING (2hr) w DOOR FRAMES - SEA1 - GL 19-16 - L3 - C-A - ELECTRICAL ROOM 2,Complete,SEA - 1,East Support Building,SUES-1 - 19-16,L3 / Waffle Slab Level,ELECTRIC RM 2,BERG,TBD Architectural Finishes,AMBER CARO,2024-01-04 09:00,2024-01-10 15:00,2023-12-20 09:00,2023-12-30 17:00
CN.AB.AR.4750,TAPE & FINISH DRYWALL - ELECTRICAL ROOM 2 - SEA1 - GL 19-16 - C-A - L3,Active,SEA - 1,East Support Building,SUES-1 - 19-16,L3 / Waffle Slab Level,ELECTRIC RM 2,CHERRY COATING,DRYWALL,AMBER CARO,2024-04-23 07:00,2024-04-29 17:00,2024-04-23 07:00,
CN.AB.AR.4740,DRYWALL 2 SIDE - ELECTRICAL ROOM 2 - SEA1 - GL 19-16 - C-A - L3,Complete,SEA - 1,East Support Building,SUES-1 - 19-16,L3 / Waffle Slab Level,ELECTRIC RM 2,BERG,DRYWALL,AMBER CARO,2024-04-15 07:00,2024-04-19 17:00,2024-04-10 07:00,2024-10-28 17:00
CN.AB.AR.4730,DRYWALL & INSULATION (1 side) - SEA1 - GL 19-16 - L3 - C-A - ELECTRICAL ROOM 2,Complete,SEA - 1,East Support Building,SUES-1 - 19-16,L3 / Waffle Slab Level,ELECTRIC RM 2,,DRYWALL,AMBER CARO,2024-01-09 11:00,2024-01-14 15:00,2024-01-09 11:00,2024-01-13 12:00
CN.SEA1.DS.2210,TAPE & FINISH DRYWALLSEA1 - GL 19-16 - L1 - D LINE - DS/AD,Complete,SEA - 1,West Support Building,SUES-1 - 19-16,L1 - Fndn Slab,DS/AD INTERIORS,,DRYWALL,FIZ DATA CENTER,2024-01-26 07:00,2024-01-29 17:00,2023-12-13 07:00,2024-01-31 17:00
CN.SEA1.DS.2220,PRIMER & PAINT DRYWALL -  GL 19-16 - D LINE - L1,Complete,SEA - 1,West Support Building,SUES-1 - 19-16,L1 - Fndn Slab,DS/AD INTERIORS,FINISH PAINT,TBD Architectural Finishes,FIZ DATA CENTER,2024-10-25 07:00,2024-10-29 17:00,2024-10-25 07:00,2024-10-28 17:00
CN.SEA1.DS.2200,DRYWALL 2 SIDE SEA1 - GL 19-16 - L1 - D LINE - DS/AD,Complete,SEA - 1,West Support Building,SUES-1 - 19-16,L1 - Fndn Slab,DS/AD INTERIORS,,DRYWALL,FIZ DATA CENTER,2024-01-22 07:00,2024-01-25 17:00,2023-11-20 07:00,2024-01-31 17:00
CN.SEA1.DS.2190,DRYWALL & INSULATION (1 side) (INT) - SEA1 - GL 19-16 - L1 - D LINE - DS/AD,Complete,SEA - 1,West Support Building,SUES-1 - 19-16,L1 - Fndn Slab,DS/AD INTERIORS,,DRYWALL,FIZ DATA CENTER,2023-11-13 07:00,2023-11-18 15:00,2023-11-13 07:00,2023-11-18 16:00
CN.SEA1.DS.3090,REMEDY - TAPE & FINISH DRYWALL - SEA1 - GL 19-16 - D LINE - L2,Complete,SEA - 1,West Support Building,SUES-1 - 19-16,L2 - SubFab Level,DS/AD INTERIORS,CHERRY COATING,DRYWALL,FIZ DATA CENTER,2024-08-15 07:00,2024-08-19 17:00,2024-08-11 07:00,2024-08-13 17:00
CN.SEA1.DS..3080,REMEDY - FRAME & DRYWALL - SEA1 - GL 19-16 - D LINE - L2,Complete,SEA - 1,West Support Building,SUES-1 - 19-16,L2 - SubFab Level,DS/AD INTERIORS,BERG,DRYWALL,FIZ DATA CENTER,2024-06-24 07:00,2024-07-05 17:00,2024-06-24 07:00,2024-07-02 17:00
CN.SEA1.DS..3070,DRYWALL (1 side) (INT) - SEA1 - GL 19-16 - L2 - D LINE - DS/AD,Complete,SEA - 1,West Support Building,SUES-1 - 19-16,L2 - SubFab Level,DS/AD INTERIORS,,DRYWALL,FIZ DATA CENTER,2024-01-17 07:00,2024-01-21 15:00,2024-02-09 07:00,2024-02-15 16:00
CN.AB.AR.6120,TEMP WALLS Framing and Drywall- SEB1- GL 19-16 - L3 - C-A,Complete,SEA - 1,,SUES-1 - 19-16,L3 / Waffle Slab Level,ELECTRIC RM 2,,DRYWALL,,2023-10-09 08:00,2023-10-13 08:00,2023-10-03 08:00,2023-10-07 16:00
CN.SEA1.DS..4040,TAPE & FINISH DRYWALL - SEA1 - GL 19-16 - D LINE - L3,Complete,SEA - 1,West Support Building,SUES-1 - 19-16,L3 / Waffle Slab Level,DS/AD INTERIORS,CHERRY COATING,DRYWALL,FIZ DATA CENTER,2024-06-13 07:00,2024-06-18 17:00,2024-06-13 07:00,2024-06-20 17:00
CN.SEA1.DS.4030,DRYWALL 2 SIDE - SEA1 - GL 20-16 - D LINE - L3,Complete,SEA - 1,West Support Building,SUES-1 - 19-16,L3 / Waffle Slab Level,DS/AD INTERIORS,BERG,DRYWALL,FIZ DATA CENTER,2024-04-29 07:00,2024-05-03 17:00,2024-04-29 07:00,2024-06-18 17:00
CN.SEA1.DS.4020,DRYWALL & INSULATION (1st layer) (INT) - SEA1 - GL 19-16 - L3 - D LINE - DS/AD,Complete,SEA - 1,West Support Building,SUES-1 - 19-16,L3 / Waffle Slab Level,DS/AD INTERIORS,BERG,DRYWALL,FIZ DATA CENTER,2024-04-22 07:00,2024-04-24 17:00,2024-04-22 07:00,2024-04-29 17:00
CN.SEA1.5360,FRAMING & DRYWALL - ELEVATOR 20 - SEA1 - GL 19-16 - L1 - B-C (3 sides only),Complete,SEA - 1,West Support Building,SUES-1 - 19-16,L1 - Fndn Slab,,,DRYWALL,,2023-11-13 07:00,2023-11-20 11:00,2023-11-10 07:00,2023-11-20 17:00
CN.SEA1.5380,FRAMING & DRYWALL - ELEVATOR 20 - SEA-1 - L3 GL 19-16 - B-C (3 sides only),Complete,SEA - 1,West Support Building,SUES-1 - 19-16,L3 / Waffle Slab Level,,,DRYWALL,,2024-02-29 07:00,2024-03-06 11:00,2024-02-29 07:00,2024-03-07 00:00
CN.AB.AR.4800,OVERHEAD DOOR DIMENSIONS FIELD MEASURE- SEA1 - GL 19-16 - L1 - C-A,Complete,SEA - 1,,SUES-1 - 19-16,EXTERIOR SKIN,,,INSULATED METAL PANELS,,2023-11-27 08:00,2023-11-28 14:00,2023-11-16 08:00,2023-11-17 16:00
CN.SEA1.DS..4050,DRYWALL (1 side) (INT) - SEA1 - GL 19-16 - L2 - D LINE - DS/AD,Complete,SEA - 1,West Support Building,SUES-1 - 19-16,L2 - SubFab Level,DS/AD INTERIORS,,DRYWALL,FIZ DATA CENTER,2024-01-26 15:00,2024-01-31 13:00,2024-01-03 15:00,2024-01-16 17:00
CN.SEA1.DS.4070,REMAINING - DRYWALL 2 SIDE SEA1 - GL 19-16 - L1 - D LINE - DS/AD,Complete,SEA - 1,West Support Building,SUES-1 - 19-16,L1 - Fndn Slab,DS/AD INTERIORS,,DRYWALL,FIZ DATA CENTER,2024-02-12 07:00,2024-02-15 17:00,2024-02-12 07:00,2024-02-15 17:00
CN.SEA1.6540,INSTALL ELEVATOR HSS STEEL DOOR OPENINGS - ELEVATOR 20 - SEA1 - GL 19-16 - B-C - L3,Complete,SEA - 1,West Support Building,SUES-1 - 19-16,L3 / Waffle Slab Level,,W&W,DRYWALL,,2024-04-08 07:00,2024-04-18 11:00,2024-03-25 07:00,2025-01-20 17:00
CN.SEA1.DS..4060,REMEDY - DEMO DRYWALL (INT) - SEA1 - GL 19-16 - L2 - D LINE - DS/AD,Complete,SEA - 1,West Support Building,SUES-1 - 19-16,L2 - SubFab Level,DS/AD INTERIORS,,DRYWALL,FIZ DATA CENTER,2024-06-03 07:00,2024-06-10 15:00,2024-06-01 07:00,2024-06-06 15:00
CN.SEA1.8985,COMPLETE EXTERIOR DRYWALL - ELEVATOR 20 - SEA1 - GL 19-16 - L1- L3 - B-C (3 sides only),Complete,SEA - 1,West Support Building,SUES-1 - 19-16,,ELEVATOR,BERG,DRYWALL,,2024-08-09 07:00,2024-08-20 17:00,2024-08-02 07:00,2024-08-10 17:00
CN.AB.AR.7020,REMAINING DRYWALL & FINISHES  - FIRE ALARM ROOM 20  - SEA1 - GL 18-19 - C-A - L1,Complete,SEA - 1,East Support Building,SUES-1 - 19-16,L1 - Fndn Slab,FIRE ALARM ,BERG,DRYWALL,AMBER CARO,2024-07-26 07:00,2024-08-01 17:00,2024-07-23 07:00,2024-08-01 17:00
CN.AB.AR.7040,REMAINING DRYWALL & FINISHES - FIRE ALARM 18 - SEA1 - GL 30-31 - C-A - L1,Complete,SEA - 1,East Support Building,SUEN-5 - 31-33,L1 - Fndn Slab,FIRE ALARM ,BERG,DRYWALL,AMBER CARO,2024-08-09 07:00,2024-08-16 17:00,2024-07-24 07:00,2024-08-03 17:00
CN.SEA1.9355,IMPACT - APACHE DEMO DRYWALL & SCRAPE FIREPROOFING SFRM-1 - ELEVATOR 20 - ALL LEVELS,Complete,SEA - 1,West Support Building,SUES-1 - 19-16,,ELEVATOR,,TBD Architectural Finishes,,2024-08-23 07:00,2024-08-30 17:00,2024-08-11 07:00,2024-08-15 17:00
CN.SEA1.9375,DESCOPED - DRYWALL - CATCH-UP INSPECTIONS (INTERIOR SHAFT) & FIRE CAULK - L1&L2 ONLY,Complete,SEA - 1,West Support Building,SUES-1 - 19-16,,ELEVATOR,,TBD Architectural Finishes,,2025-05-12 07:00,2025-05-30 17:00,2025-05-12 07:00,2025-07-03 09:00
CN.SEA1.DS.4080,REMEDY - TAPE & FINISH DRYWALL - SEA1 - GL 15-20 - C LINE - L2,Not Started,SEA - 1,West Support Building,SUES-1 - 19-16,L2 - SubFab Level,DS/AD INTERIORS,CHERRY COATING,DRYWALL,FIZ DATA CENTER,2025-12-08 07:00,2025-12-10 17:00,,
CN.SEA1.DS..4090,REMEDY - FRAME & DRYWALL - SEA1 - GL 15-20 - C LINE - L2,Active,SEA - 1,West Support Building,SUES-1 - 19-16,L2 - SubFab Level,DS/AD INTERIORS,BERG,DRYWALL,FIZ DATA CENTER,2024-10-15 07:00,2024-11-08 17:00,2024-10-07 07:00,
CN.SEA1.9435,COMPLETE MECHANICAL ROOM DRYWALL / TAPE & FLOAT - ELEVATOR 20,Complete,SEA - 1,West Support Building,SUES-1 - 19-16,,ELEVATOR,BERG,DRYWALL,,2024-08-09 07:00,2024-08-27 17:00,2024-08-02 07:00,2024-08-29 17:00
CN.SEA1.10235,IMPACT - REMEDIATION OF MECHANICAL ROOM DRYWALL & CEILING DAMEGED DUE TO WATER INTRUSION - ELEVATOR 20,Complete,SEA - 1,West Support Building,SUES-1 - 19-16,,ELEVATOR,BERG,DRYWALL,,2024-09-27 07:00,2024-10-21 17:00,2024-09-07 07:00,2024-10-01 17:00
CN.SEA1.10295,"COMPLETE REMAINING FRAMING, DRYWALL, FIRE CAULKING - INTERIOR SHAFT & DOOR FRONTS - ELEVATOR 20 - complete 5/9",Complete,SEA - 1,West Support Building,SUES-1 - 19-16,,ELEVATOR,,TBD Architectural Finishes,,2025-04-23 07:00,2025-05-16 17:00,2025-03-10 07:00,2025-04-11 17:00
CN.SEA1.10305,IMPACT - COMPLETE REMAINING HSS STEEL DOOR OPENINGS - ELEVATOR 20,Complete,SEA - 1,West Support Building,SUES-1 - 19-16,,ELEVATOR,,TBD Architectural Finishes,,2025-01-16 07:00,2025-02-02 17:00,2025-01-16 07:00,2025-02-20 17:00
CN.SEA1.10325,DESCOPED - TAPE & FLOAT - DOOR FRONTS & SHAFT - ELEVATOR 20,Complete,SEA - 1,West Support Building,SUES-1 - 19-16,,ELEVATOR,,TBD Architectural Finishes,,2025-09-12 07:00,2025-09-16 17:00,2025-07-02 08:31,2025-07-03 17:00
CN.SEA1.10335,SECAI - INSTALL ELEVATOR DOOR FRAMES - ELEVATOR 20 - SECAI TO PROVIDE SCHEDULE,Complete,SEA - 1,West Support Building,SUES-1 - 19-16,,ELEVATOR,,TBD Architectural Finishes,,2025-07-18 07:00,2025-07-24 17:00,2025-06-30 12:00,2025-07-03 17:00
CN.AB.AR.7830,FINISH DRYWALL & FINISHES - AIRLOCK ROOM 20 - SEA1 - GL 19-16 - C-A - L3,Complete,SEA - 1,East Support Building,SUES-1 - 19-16,L3 / Waffle Slab Level,AIRLOCKS & VESTABLES,FINISH PAINT,TBD Architectural Finishes,JAMES LEE,2025-01-23 07:00,2025-01-29 17:00,2025-01-23 07:00,2025-02-03 17:00
CN.AB.AR.7850,DRYWALL & TAPE & FINISH- E 33 - SEA1 - GL 19-16 - C-A - L3,Not Started,SEA - 1,East Support Building,SUEN-5 - 31-33,L3 / Waffle Slab Level,,CHERRY COATING,DRYWALL,AMBER CARO,2025-11-24 07:00,2025-11-24 07:00,,
CN.AB.AR.7860,IMPACT - E33 CEILING B-B.5 MEP MATERIAL IN WAY OF STUDS - DRYWALL & TAPE & FINISH- E 33 - SEA1 - GL 19-16 - C-A - L3,Active,SEA - 1,East Support Building,SUEN-5 - 31-33,L3 / Waffle Slab Level,,CHERRY COATING,DRYWALL,AMBER CARO,2024-11-18 07:00,2024-11-25 17:00,2024-10-24 07:00,
CN.AB.AR.8390,FINISH DRYWALL - VESTIBULE 21 - L3,Complete,SEA - 1,East Support Building,SUES-3 - 13-9,L3 / Waffle Slab Level,AIRLOCKS & VESTABLES,FINISH PAINT,TBD Architectural Finishes,JAMES LEE,2025-02-04 07:00,2025-02-12 17:00,2025-02-04 07:00,2025-07-21 17:00
CN.AB.AR.8410,FINISH DRYWALL & FINISHES -VESTIUBLE 20 - SEA1 - GL 19-16 - C-A - L3,Complete,SEA - 1,East Support Building,SUES-1 - 19-16,L3 / Waffle Slab Level,AIRLOCKS & VESTABLES,FINISH PAINT,TBD Architectural Finishes,JAMES LEE,2025-09-25 07:00,2025-09-26 17:00,2025-05-13 07:00,2025-09-30 17:00
CN.AB.AR.8420,FINISH DRYWALL -CLEAN VESITUBLE 19 - SEA1 - GL 19-16 - C-A - L3,Active,SEA - 1,East Support Building,SUEN-3 - 25-28,L3 / Waffle Slab Level,AIRLOCKS & VESTABLES,FINISH PAINT,TBD Architectural Finishes,JAMES LEE,2025-02-05 07:00,2025-02-13 17:00,2025-02-05 07:00,
CN.AB.AR.8570,FINISH DRYWALL &_ FINISHES - ELEVTOR HALL 20 - SEA1 - GL 19-16 - C-A - L3,Not Started,SEA - 1,East Support Building,SUES-1 - 19-16,L3 / Waffle Slab Level,ELECTRIC RM 2,CHERRY COATING,DRYWALL,AMBER CARO,2025-11-24 07:00,2025-11-24 07:00,,
CN.SEA1.10415,DRYWALL - DOOR FRONTS - ELEVATOR 20,Complete,SEA - 1,West Support Building,SUES-1 - 19-16,,ELEVATOR,,TBD Architectural Finishes,,2025-04-22 07:00,2025-05-09 17:00,2025-04-22 07:00,2025-05-09 17:00
CN.SEA2.1110,PH1- AD STEEL FRAME INSTALL - SEA-2 fab side,Complete,SEA - 2,East Support Building,SUES-2 - 16-13,DS/AD,,,Steel Erection,SEAN MONK,2023-05-23 07:00,2023-05-28 15:00,2023-05-23 07:00,2023-06-02 15:00
CN.AB.AR.3600,TAPE & FINISH DRYWALL - MECHANICAL RM-2 - SEA2 - GL 16-13 - C-A - L1,Complete,SEA - 2,West Support Building,SUES-2 - 16-13,L1 - Fndn Slab,MECH RM 2,CHERRY COATING,DRYWALL,AMBER CARO,2024-02-29 11:00,2024-03-06 11:00,2024-02-29 07:00,2024-08-30 17:00
CN.AB.AR.3610,FRAMING & DRYWALL -- SEA2 - GL 13 - C-A - L1- EXIT PASSWAY 21 - SECAI TOOK OVER FOR ACCELERATION,Complete,SEA - 2,West Support Building,SUES-2 - 16-13,L1 - Fndn Slab,MECH RM 2,FINISH PAINT,TBD Architectural Finishes,JAMES LEE,2025-06-27 07:00,2025-07-25 17:00,2025-06-27 07:00,2025-06-27 17:00
CN.AB.AR.4260,DRYWALL 2 SIDE - MECHANICAL RM-2 - SEA2 - GL 16-13 - C-A - L1,Complete,SEA - 2,East Support Building,SUES-2 - 16-13,L1 - Fndn Slab,MECH RM 2,BERG,DRYWALL,AMBER CARO,2024-02-29 07:00,2024-03-05 17:00,2024-02-27 07:00,2024-08-26 17:00
CN.AB.AR.4270,DRYWALL & INSULATION (1 side) (INT) - SEA2 - GL 16-13 - L1 - C-A MECHANICAL RM-2,Complete,SEA - 2,East Support Building,SUES-2 - 16-13,L1 - Fndn Slab,MECH RM 2,,DRYWALL,AMBER CARO,2024-01-23 07:00,2024-01-24 13:00,2024-01-23 07:00,2024-01-26 13:00
CN.SEA2.1420,PH1- DS STEEL FRAME INSTALL - SEA-2 Comeback Sup Side,Complete,SEA - 2,East Support Building,SUES-2 - 16-13,DS/AD,,,Steel Erection,SEAN MONK,2023-07-25 13:00,2023-07-30 11:00,2023-07-13 13:00,2023-07-17 17:00
CN.SEA2.AR.3600,TAPE & FINISH DRYWALL - SEA2 - GL 16-13 - L3 - C-A - ELECTRICAL ROOM 2,Complete,SEA - 2,West Support Building,SUES-2 - 16-13,L3 / Waffle Slab Level,ELECTRIC RM 2,,DRYWALL,AMBER CARO,2024-03-25 07:00,2024-03-28 09:00,2024-03-25 07:00,2024-03-28 09:00
CN.SEA2.AR.4260,DRYWALL 2 SIDE - SEA2 - GL 16-13 - L3 - C-A - ELECTRICAL ROOM 2,Complete,SEA - 2,East Support Building,SUES-2 - 16-13,L3 / Waffle Slab Level,ELECTRIC RM 2,,DRYWALL,AMBER CARO,2024-03-09 08:00,2024-03-12 10:00,2024-03-01 00:00,2024-03-08 16:00
CN.SEA2.AR.4270,DRYWALL & INSULATION (1 side) (INT) - SEA2 - GL 16-13 - L3 - C-A - ELECTRICAL ROOM 2,Complete,SEA - 2,East Support Building,SUES-2 - 16-13,L3 / Waffle Slab Level,ELECTRIC RM 2,,DRYWALL,AMBER CARO,2024-01-02 09:00,2024-01-06 10:00,2024-01-02 07:00,2024-01-06 10:00
CN.SEA2.1041,TAPE & FINISH DRYWALL - SEA2 - GL 16-13 - L1 -  D LINE,Complete,SEA - 2,West Support Building,SUES-2 - 16-13,L1 - Fndn Slab,DS/AD INTERIORS,,DRYWALL,FIZ DATA CENTER,2024-01-29 07:00,2024-02-01 17:00,2024-01-29 07:00,2024-02-02 17:00
CN.SEA2.1051,PRIMER & PAINT DRYWALL - GL 16-13 - D LINE - L1,Complete,SEA - 2,West Support Building,SUES-2 - 16-13,L1 - Fndn Slab,DS/AD INTERIORS,FINISH PAINT,TBD Architectural Finishes,FIZ DATA CENTER,2024-10-25 07:00,2024-10-29 17:00,2024-10-25 07:00,2024-10-28 17:00
CN.SEA2.1031,DRYWALL 2 SIDE - SEA2 - GL 16-13 - L1 - D LINE,Complete,SEA - 2,West Support Building,SUES-2 - 16-13,L1 - Fndn Slab,DS/AD INTERIORS,,DRYWALL,FIZ DATA CENTER,2024-02-10 08:00,2024-02-14 08:00,2024-01-23 08:00,2024-01-26 11:00
CN.SEA2.1021,DRYWALL & INSULATION (1 side) (INT) - SWA2-GL 16-13- L1 D LINE,Complete,SEA - 2,West Support Building,SUES-2 - 16-13,L1 - Fndn Slab,DS/AD INTERIORS,,DRYWALL,FIZ DATA CENTER,2023-10-16 07:00,2023-10-20 15:00,2023-10-16 07:00,2023-10-21 13:00
CN.SEA2.1101,REMEDY - TAPE & FINISH DRYWALL - SEA2 - GL 16-13 - D LINE - L2,Complete,SEA - 2,West Support Building,SUES-2 - 16-13,L2 - SubFab Level,DS/AD INTERIORS,CHERRY COATING,DRYWALL,FIZ DATA CENTER,2024-08-23 07:00,2024-08-27 17:00,2024-08-07 07:00,2024-08-10 17:00
CN.SEA2.1091,REMEDY - DEMO DRYWALL (INT) - SEA2 - GL 16-13 - L2 - D LINE,Complete,SEA - 2,West Support Building,SUES-2 - 16-13,L2 - SubFab Level,DS/AD INTERIORS,,DRYWALL,FIZ DATA CENTER,2024-06-03 07:00,2024-06-13 09:00,2024-06-01 07:00,2024-06-10 09:00
CN.SEA2.1081,DRYWALL & INSULATION (1 side) (INT) - SEA2 - GL 16-13 - L2 - D LINE,Complete,SEA - 2,West Support Building,SUES-2 - 16-13,L2 - SubFab Level,DS/AD INTERIORS,,DRYWALL,FIZ DATA CENTER,2024-01-22 08:00,2024-01-26 16:00,2024-01-22 08:00,2024-01-26 16:00
CN.SEA2.AR.2040,TEMP WALLS Framing and Drywall- SEB2- GL 16-13 - L3 - C-A,Complete,SEA - 2,,SUES-2 - 16-13,L3 / Waffle Slab Level,ELECTRIC RM 2,,DRYWALL,,2023-10-07 08:00,2023-10-11 08:00,2023-10-07 08:00,2023-10-11 16:00
CN.SEA2.1161,TAPE & FINISH DRYWALL - SEA2 - GL 16-13 - D LINE - L3,Complete,SEA - 2,West Support Building,SUES-2 - 16-13,L3 / Waffle Slab Level,DS/AD INTERIORS,CHERRY COATING,DRYWALL,FIZ DATA CENTER,2024-05-17 07:00,2024-05-23 17:00,2024-05-17 07:00,2024-05-21 17:00
CN.SEA2.1151,DRYWALL 2 SIDE - SEA2 - GL 16-13 - L3 - D LINE,Complete,SEA - 2,West Support Building,SUES-2 - 16-13,L3 / Waffle Slab Level,DS/AD INTERIORS,BERG,DRYWALL,FIZ DATA CENTER,2024-04-30 07:00,2024-05-06 17:00,2024-04-30 07:00,2024-05-03 09:00
CN.SEA2.1141,DRYWALL & INSULATION (1st layer) (INT) - SEA2 - GL 16-13 - L3 - D LINE,Complete,SEA - 2,West Support Building,SUES-2 - 16-13,L3 / Waffle Slab Level,DS/AD INTERIORS,,DRYWALL,FIZ DATA CENTER,2024-02-19 11:00,2024-02-25 09:00,2024-02-19 11:00,2024-02-25 12:00
CN.SEA2.1221,IMPACT DRYWALL DAMAGED BY SECAI D LINE,Complete,SEA - 2,,SUES-2 - 16-13,L1 - Fndn Slab,DS/AD INTERIORS,,DRYWALL,,2023-11-13 08:00,2023-11-18 08:00,2023-11-13 08:00,2023-11-25 16:00
CN.SEA2.1241,DRYWALL & INSULATION (1 side) (INT) - SEA2 - GL 16-13 - L2 - D Line,Complete,SEA - 2,,SUES-2 - 16-13,L2 - SubFab Level,DS/AD INTERIORS,,,,2023-10-24 08:00,2023-10-29 08:00,2023-10-24 08:00,2023-10-28 16:00
CN.SEA2.1251,IMPACT DRYWALL REWORK DUE TO DAMAGE BY SECAI (TIDY),Complete,SEA - 2,,SUES-2 - 16-13,L2 - SubFab Level,DS/AD INTERIORS,,TBD Architectural Finishes,,2023-11-30 07:00,2023-12-03 17:00,2023-11-29 08:00,2023-12-31 13:00
CN.SEA2.6670,REMEDY - FRAME & DRYWALL- SEA2 - GL 16-13 - L2 - D LINE,Complete,SEA - 2,West Support Building,SUES-2 - 16-13,L2 - SubFab Level,DS/AD INTERIORS,BERG,DRYWALL,FIZ DATA CENTER,2024-07-22 07:00,2024-08-12 17:00,2024-07-19 07:00,2024-07-30 17:00
CN.SEA3.1140,PH1- AD STEEL FRAME INSTALL - SEA-3 fab side,Complete,SEA - 3,East Support Building,SUES-3 - 13-9,DS/AD,,,Steel Erection,SEAN MONK,2023-06-12 07:00,2023-06-16 17:00,2023-06-06 07:00,2023-06-10 17:00
CN.AB.AR.3670,TAPE & FINISH DRYWALL - MECHANICAL ROOM 1 NORTH - SEA3 - GL 13-9 - C-A - L1,Complete,SEA - 3,East Support Building,SUES-3 - 13-9,L1 - Fndn Slab,MECH RM 1,CHERRY COATING,DRYWALL,AMBER CARO,2024-10-21 07:00,2024-10-28 17:00,2024-08-21 07:00,2024-08-27 17:00
CN.AB.AR.4280,DRYWALL 2 SIDE - MECHANICAL ROOM 1 NORTH - SEA3 - GL 13-9 - C-A - L1,Complete,SEA - 3,East Support Building,SUES-3 - 13-9,L1 - Fndn Slab,MECH RM 1,BERG,DRYWALL,AMBER CARO,2024-03-18 07:00,2024-03-22 17:00,2024-03-16 07:00,2024-08-20 17:00
CN.AB.AR.4290,DRYWALL & INSULATION (1 side) (INT) - SEA3 - GL 13-9 - L1 - C-A - MECHANICAL ROOM 1 NORTH,Complete,SEA - 3,East Support Building,SUES-3 - 13-9,L1 - Fndn Slab,MECH RM 1,,DRYWALL,AMBER CARO,2023-12-04 07:00,2023-12-08 17:00,2023-12-04 07:00,2023-12-08 17:00
CN.SEA3.1580,PH1- DS STEEL FRAME INSTALL - SEA-3 Comeback Sup Side,Complete,SEA - 3,East Support Building,SUES-3 - 13-9,DS/AD,,,Steel Erection,SEAN MONK,2023-07-24 07:00,2023-07-28 15:00,2023-07-17 07:00,2023-07-29 11:00
CN.SEA3.3670,TAPE & FINISH DRYWALL - SEA3 - GL 13-9 - L3 - C-A - ELECTRICAL ROOM 2 & BATTERY ROOM 1,Complete,SEA - 3,East Support Building,SUES-3 - 13-9,L3 / Waffle Slab Level,ELECTRIC RM 2,,DRYWALL,AMBER CARO,2024-03-22 07:00,2024-03-27 09:00,2024-03-21 07:00,2024-03-25 11:00
CN.SEA3.3680,REMAINING DRYWALL & FINISHES  -BATTERY ROOM 1 - SEA3 - GL 13-9 - C-A - L3,Complete,SEA - 3,East Support Building,SUES-3 - 13-9,L3 / Waffle Slab Level,ELECTRIC RM 2,FINISH PAINT,TBD Architectural Finishes,JAMES LEE,2025-09-03 07:00,2025-09-08 17:00,2025-09-03 07:00,2025-09-08 17:00
CN.SEA3.4280,DRYWALL 2 SIDE - SEA3 - GL 13-9 - L3 - C-A - ELECTRICAL ROOM 2 & BATTERY ROOM 1,Complete,SEA - 3,East Support Building,SUES-3 - 13-9,L3 / Waffle Slab Level,ELECTRIC RM 2,,DRYWALL,AMBER CARO,2024-03-09 15:00,2024-03-12 17:00,2024-03-09 15:00,2024-03-14 10:00
CN.SEA3.4290,DRYWALL & INSULATION (1 side) (INT) - SEA-3-L3- ELECTRICAL ROOM 2 & BATTERY ROOM 1,Complete,SEA - 3,East Support Building,SUES-3 - 13-9,L3 / Waffle Slab Level,ELECTRIC RM 2,,DRYWALL,AMBER CARO,2023-10-24 07:00,2023-10-28 09:00,2023-10-24 07:00,2023-10-28 10:00
CN.SEA3.1111,TAPE & FINISH DRYWALL - SEA3 - GL 13-9 - L1 - D LINE,Complete,SEA - 3,West Support Building,SUES-3 - 13-9,L1 - Fndn Slab,DS/AD INTERIORS,,DRYWALL,FIZ DATA CENTER,2024-02-01 13:00,2024-02-05 13:00,2024-02-01 13:00,2024-02-05 17:00
CN.SEA3.1121,PRIMER & PAINT DRYWALL -  GL 13-9 - D LINE - L1,Complete,SEA - 3,West Support Building,SUES-3 - 13-9,L1 - Fndn Slab,DS/AD INTERIORS,FINISH PAINT,TBD Architectural Finishes,FIZ DATA CENTER,2024-10-21 07:00,2024-10-24 17:00,2024-10-21 07:00,2024-10-24 17:00
CN.SEA3.1091,DRYWALL 2 SIDE - SEA3 - GL 13-9 - L1 - D LINE,Complete,SEA - 3,West Support Building,SUES-3 - 13-9,L1 - Fndn Slab,DS/AD INTERIORS,,DRYWALL,FIZ DATA CENTER,2024-01-22 09:00,2024-01-26 09:00,2024-01-22 09:00,2024-01-26 09:00
CN.SEA3.1081,DRYWALL & INSULATION (1 side) (INT) - SEA3 - GL 13-9 - L1 - D LINE,Complete,SEA - 3,West Support Building,SUES-3 - 13-9,L1 - Fndn Slab,DS/AD INTERIORS,,DRYWALL,FIZ DATA CENTER,2023-10-20 11:00,2023-10-27 09:00,2023-10-20 11:00,2023-11-16 11:00
CN.SEA3.5040,TEMP WALLS Framing and Drywall - SEB2- GL 13-9 - L3 - C-A,Complete,SEA - 3,,SUES-3 - 13-9,L3 / Waffle Slab Level,ELECTRIC RM 2,,DRYWALL,,2023-10-09 08:00,2023-10-13 08:00,2023-10-09 08:00,2023-10-13 16:00
CN.SEA3.1161,TAPE & FINISH DRYWALL - SEA3 - GL 13-9 - D LINE - L3,Complete,SEA - 3,West Support Building,SUES-3 - 13-9,L3 / Waffle Slab Level,DS/AD INTERIORS,CHERRY COATING,DRYWALL,FIZ DATA CENTER,2024-06-13 07:00,2024-06-18 17:00,2024-06-13 07:00,2024-08-07 17:00
CN.SEA3.1151,DRYWALL 2 SIDE - SEA3 - GL 13-9 - D LINE - L3,Complete,SEA - 3,West Support Building,SUES-3 - 13-9,L3 / Waffle Slab Level,DS/AD INTERIORS,BERG,DRYWALL,FIZ DATA CENTER,2024-04-24 07:00,2024-04-29 17:00,2024-04-24 07:00,2024-07-30 17:00
CN.SEA3.1141,DRYWALL & INSULATION (1st layer) (INT) - SEA3 - GL 13-9 - L3 - D LINE,Complete,SEA - 3,West Support Building,SUES-3 - 13-9,L3 / Waffle Slab Level,DS/AD INTERIORS,,DRYWALL,FIZ DATA CENTER,2024-03-09 08:00,2024-03-17 16:00,2024-02-29 00:00,2024-03-05 16:00
CN.SEA3.6670,IMPACT - MULTIPLE CABLE TRAY IN THE WAY - DRYWALL 2 SIDE - SEA3 - GL 13-9 - L3 - C-A - ELEC ROOM 2 & BATTERY ROOM 1,Complete,SEA - 3,East Support Building,SUES-3 - 13-9,L3 / Waffle Slab Level,ELECTRIC RM 2,,DRYWALL,AMBER CARO,2024-01-25 09:00,2024-01-28 11:00,2023-11-06 09:00,2024-03-08 15:00
CN.SEA3.7080,DEMO DRYWALL - INSTALL GOAL POSTS - BATTERY ROOM 1 - SEA3 - GL 13-9 - C-A - L3,Complete,SEA - 3,East Support Building,SUES-3 - 13-9,L3 / Waffle Slab Level,ELECTRIC RM 2,FINISH PAINT,TBD Architectural Finishes,JAMES LEE,2024-07-26 07:00,2024-07-31 17:00,2024-07-15 07:00,2024-07-29 17:00
CN.SEA4.1120,PH1- AD STEEL FRAME INSTALL - SEA-4 fab side,Complete,SEA - 4,East Support Building,SUES-4 - 9-6,DS/AD,,,Steel Erection,SEAN MONK,2023-08-21 07:00,2023-08-26 15:00,2023-08-12 07:00,2023-08-14 16:00
CN.SEA4.1420,PH1- DS STEEL FRAME INSTALL - SEA-4 Comeback Sup Side,Complete,SEA - 4,East Support Building,SUES-4 - 9-6,DS/AD,,,Steel Erection,SEAN MONK,2023-08-28 07:00,2023-09-02 15:00,2023-08-15 07:00,2023-08-20 16:00
CN.SEA4.3670,TAPE & FINISH DRYWALL - MECHANICAL ROOM 1 SOUTH - SEA4 - GL 9-6 - C-A - L1,Complete,SEA - 4,East Support Building,SUES-4 - 9-6,L1 - Fndn Slab,MECH RM 1,CHERRY COATING,DRYWALL,AMBER CARO,2024-08-19 07:00,2024-08-26 17:00,2024-08-19 07:00,2024-08-30 17:00
CN.SEA4.4280,DRYWALL 2 SIDE - MECHANICAL ROOM 1 SOUTH - SEA4 - GL 9-6 - C-A - L1,Complete,SEA - 4,East Support Building,SUES-4 - 9-6,L1 - Fndn Slab,MECH RM 1,BERG,DRYWALL,AMBER CARO,2024-03-18 07:00,2024-03-22 17:00,2024-03-16 07:00,2024-08-27 17:00
CN.SEA4.4290,DRYWALL & INSULATION (1 side) (INT) - SEA4 - GL 9-6 L1 - C-A - MECHANICAL ROOM 1 SOUTH,Complete,SEA - 4,East Support Building,SUES-4 - 9-6,L1 - Fndn Slab,MECH RM 1,,DRYWALL,AMBER CARO,2023-11-20 07:00,2023-11-27 17:00,2023-11-20 07:00,2023-11-27 17:00
CN.SEA4.4340,TAPE & FINISH DRYWALL - SEA4 - GL 9-6 - L3 - C-A,Complete,SEA - 4,East Support Building,SUES-4 - 9-6,L3 / Waffle Slab Level,ELECTRIC RM 2,,DRYWALL,AMBER CARO,2024-03-17 07:00,2024-03-20 17:00,2024-03-03 00:00,2024-03-08 16:00
CN.SEA4.4350,TAPE & FINISH DRYWALL - SEA4 - GL 9-6 - C-A - L3- ELEVATOR HALL 22,Not Started,SEA - 4,East Support Building,SUES-4 - 9-6,L3 / Waffle Slab Level,ELECTRIC RM 2,FINISH PAINT,TBD Architectural Finishes,JAMES LEE,2025-11-25 07:00,2025-12-03 17:00,,
CN.SEA4.4330,DRYWALL 2 SIDE - SEA4 - GL 9-6 - L3 - C-A,Complete,SEA - 4,East Support Building,SUES-4 - 9-6,L3 / Waffle Slab Level,ELECTRIC RM 2,,DRYWALL,AMBER CARO,2024-03-09 08:00,2024-03-17 08:00,2024-02-28 00:00,2024-03-02 00:00
CN.SEA4.4320,DRYWALL & INSULATION (3=1 side) (INT) - SEA-4-L3,Complete,SEA - 4,East Support Building,SUES-4 - 9-6,L3 / Waffle Slab Level,ELECTRIC RM 2,,DRYWALL,AMBER CARO,2023-10-25 07:30,2023-10-29 17:00,2023-10-25 07:30,2023-10-28 11:00
CN.SEA4.1131,TAPE & FINISH DRYWALL - SEA4 - GL 9-6 L1 - D LINE,Complete,SEA - 4,West Support Building,SUES-4 - 9-6,L1 - Fndn Slab,DS/AD INTERIORS,,DRYWALL,FIZ DATA CENTER,2024-01-22 07:00,2024-01-25 17:00,2024-01-04 07:00,2024-01-06 17:00
CN.SEA4.1151,PRIMER & PAINT DRYWALL -  GL 9-6 - D LINE - L1,Complete,SEA - 4,West Support Building,SUES-4 - 9-6,L1 - Fndn Slab,DS/AD INTERIORS,FINISH PAINT,TBD Architectural Finishes,FIZ DATA CENTER,2024-10-21 07:00,2024-10-24 17:00,2024-10-21 07:00,2024-10-24 17:00
CN.SEA4.1111,DRYWALL 2 SIDE - SEA4 - GL 9-6 L1 - D LINE,Complete,SEA - 4,West Support Building,SUES-4 - 9-6,L1 - Fndn Slab,DS/AD INTERIORS,,DRYWALL,FIZ DATA CENTER,2023-12-04 07:00,2023-12-08 17:00,2023-12-04 07:00,2023-12-11 15:00
CN.SEA4.1081,DRYWALL & INSULATION (1 side) (INT) - SEA4 - GL 9-6 L1 - D LINE,Complete,SEA - 4,West Support Building,SUES-4 - 9-6,L1 - Fndn Slab,DS/AD INTERIORS,,DRYWALL,FIZ DATA CENTER,2023-10-16 07:00,2023-10-20 15:00,2023-10-16 07:00,2023-11-16 11:00
CN.SEA4.1141,REMEDY - TAPE & FINISH DRYWALL - SEA4 - GL 9-6 - D LINE - L2,Complete,SEA - 4,West Support Building,SUES-4 - 9-6,L2 - SubFab Level,DS/AD INTERIORS,CHERRY COATING,DRYWALL,FIZ DATA CENTER,2024-08-23 07:00,2024-08-27 17:00,2024-08-07 07:00,2024-08-10 17:00
CN.SEA4.1121,REMEDY - FRAME & DRYWALL - SEA4 - GL 9-6 - D LINE - L2,Complete,SEA - 4,West Support Building,SUES-4 - 9-6,L2 - SubFab Level,DS/AD INTERIORS,BERG,DRYWALL,FIZ DATA CENTER,2024-07-18 07:00,2024-08-08 17:00,2024-07-18 07:00,2024-08-06 17:00
CN.SEA4.1101,DRYWALL & INSULATION (1 side) (INT) - SEA4 - GL 9-6 L2 - D LINE,Complete,SEA - 4,West Support Building,SUES-4 - 9-6,L2 - SubFab Level,DS/AD INTERIORS,,DRYWALL,FIZ DATA CENTER,2024-01-24 11:00,2024-01-29 09:00,2024-01-18 11:00,2024-01-21 13:00
CN.SEA4.4390,TEMP WALLS Framing and Drywall - SEB2- GL 9-6 - L3 - C-A,Complete,SEA - 4,,SUES-4 - 9-6,L3 / Waffle Slab Level,ELECTRIC RM 2,,DRYWALL,,2023-10-09 08:00,2023-10-13 08:00,2023-10-09 08:00,2023-10-13 16:00
CN.SEA4.1211,TAPE & FINISH DRYWALL - SEA4 - GL 9-6 - D LINE - L3,Complete,SEA - 4,West Support Building,SUES-4 - 9-6,L3 / Waffle Slab Level,DS/AD INTERIORS,CHERRY COATING,DRYWALL,FIZ DATA CENTER,2024-06-13 07:00,2024-06-18 17:00,2024-06-13 07:00,2024-06-20 17:00
CN.SEA4.1201,DRYWALL 2 SIDE - SEA4 - GL 9-6 - D LINE - L3,Complete,SEA - 4,West Support Building,SUES-4 - 9-6,L3 / Waffle Slab Level,DS/AD INTERIORS,BERG,DRYWALL,FIZ DATA CENTER,2024-04-22 07:00,2024-04-25 17:00,2024-04-22 07:00,2024-06-10 17:00
CN.SEA4.1191,DRYWALL & INSULATION (1st layer) (INT) - SEA4 - GL 9-6 - L3 - D LINE,Complete,SEA - 4,West Support Building,SUES-4 - 9-6,L3 / Waffle Slab Level,DS/AD INTERIORS,,DRYWALL,FIZ DATA CENTER,2024-02-29 07:00,2024-03-02 11:00,2024-02-29 07:00,2024-03-02 12:00
CN.SEA4.6290,Drywall Clips & AMTS Installs Support Beams - SEA4 - GL 9-6 - D LINE - L4,Complete,SEA - 4,,SUES-4 - 9-6,L4 - SUP Roof - FAB Roof,DS/AD INTERIORS,,Fireproofing,,2024-03-23 08:00,2024-03-30 10:00,2024-03-01 00:00,2024-03-07 00:00
CN.SEA1.6350,Drywall Clips & AMTS Installs Support Beams - SEA4 - GL 19-16 - D LINE - L4,Complete,SEA - 4,,SUES-1 - 19-16,L4 - SUP Roof - FAB Roof,DS/AD INTERIORS,,Fireproofing,,2024-03-23 08:00,2024-03-30 10:00,2024-03-13 00:00,2024-03-20 00:00
CN.SEA2.6450,Drywall Clips & AMTS Installs Support Beams - SEA4 - GL 16-13 - D LINE - L4,Complete,SEA - 4,,SUES-2 - 16-13,L4 - SUP Roof - FAB Roof,DS/AD INTERIORS,,Fireproofing,,2024-02-19 07:00,2024-02-27 09:00,2024-02-19 07:00,2024-02-24 13:00
CN.SEA3.6560,Drywall Clips & AMTS Installs Support Beams - SEA4 - GL 13-9 - D LINE - L4,Complete,SEA - 4,,SUES-3 - 13-9,L4 - SUP Roof - FAB Roof,DS/AD INTERIORS,,Fireproofing,,2024-03-23 08:00,2024-03-27 08:00,2024-03-11 08:00,2024-03-15 11:00
CN.SEA4.6500,REMAINING TAPE & FINISH DRYWALL - SEA4 - GL 9-6 L1 - D LINE,Complete,SEA - 4,West Support Building,SUES-4 - 9-6,L1 - Fndn Slab,DS/AD INTERIORS,,DRYWALL,FIZ DATA CENTER,2024-01-26 07:00,2024-01-28 11:00,2024-01-26 07:00,2024-01-28 14:00
CN.SEA4.6590,REMEDY - TAPE & FINISH DRYWALL - SEA4 - GL 13-9 - D LINE - L2,Complete,SEA - 4,West Support Building,SUES-3 - 13-9,L2 - SubFab Level,DS/AD INTERIORS,CHERRY COATING,DRYWALL,FIZ DATA CENTER,2024-08-12 07:00,2024-08-15 17:00,2024-08-07 07:00,2024-08-10 17:00
CN.SEA4.6580,REMEDY - FRAME & DRYWALL - SEA4 - GL 13-9 - D LINE - L2,Complete,SEA - 4,West Support Building,SUES-3 - 13-9,L2 - SubFab Level,DS/AD INTERIORS,BERG,DRYWALL,FIZ DATA CENTER,2024-07-26 07:00,2024-08-19 17:00,2024-07-17 07:00,2024-08-06 17:00
CN.SEA4.6570,DRYWALL & INSULATION (1 side) (INT) - SEA4 - GL 13-9 L2 - D LINE,Complete,SEA - 4,West Support Building,SUES-3 - 13-9,L2 - SubFab Level,DS/AD INTERIORS,,DRYWALL,FIZ DATA CENTER,2024-01-24 11:00,2024-01-29 09:00,2024-01-29 11:00,2024-02-02 11:00
CN.SEA4.6610,REMEDY - DEMO DRYWALL (INT) - SEA4 - GL 13-9 L2 - D LINE,Complete,SEA - 4,West Support Building,SUES-3 - 13-9,L2 - SubFab Level,DS/AD INTERIORS,BERG,DRYWALL,FIZ DATA CENTER,2024-07-01 07:00,2024-07-08 17:00,2024-07-01 07:00,2024-07-06 17:00
CN.SEA4.6720,REMEDY - TAPE & FINISH DRYWALL - SEA4 - GL 5-10 - C LINE - L2,Not Started,SEA - 4,West Support Building,SUES-4 - 9-6,L2 - SubFab Level,DS/AD INTERIORS,CHERRY COATING,DRYWALL,FIZ DATA CENTER,2025-12-08 07:00,2025-12-10 17:00,,
CN.SEA4.6710,REMEDY - FRAME & DRYWALL - SEA4 - GL 5-10 - C LINE - L2,Active,SEA - 4,West Support Building,SUES-4 - 9-6,L2 - SubFab Level,DS/AD INTERIORS,BERG,DRYWALL,FIZ DATA CENTER,2024-10-07 07:00,2024-10-31 17:00,2024-10-07 07:00,
CN.SEA4.6740,REMEDY - TAPE & FINISH DRYWALL - SEA4 - GL 10-15 - C LINE - L2,Not Started,SEA - 4,West Support Building,SUES-3 - 13-9,L2 - SubFab Level,DS/AD INTERIORS,CHERRY COATING,DRYWALL,FIZ DATA CENTER,2025-12-08 07:00,2025-12-10 17:00,,
CN.SEA4.6730,REMEDY - FRAME & DRYWALL - SEA4 - GL 10-15 - C LINE - L2,Active,SEA - 4,West Support Building,SUES-3 - 13-9,L2 - SubFab Level,DS/AD INTERIORS,BERG,DRYWALL,FIZ DATA CENTER,2024-08-05 07:00,2024-08-28 17:00,2024-08-05 07:00,
CN.SEA5.1120,PH1- AD STEEL FRAME INSTALL - SEA-5 fab side,Complete,SEA - 5,East Support Building,SUES-5 - 6-1 - FIZ - GL A -E,DS/AD,,,Steel Erection,SEAN MONK,2023-08-28 07:00,2023-09-06 09:00,2023-08-28 07:00,2023-09-15 10:00
CN.AB.AR.3810,TAPE & FINISH DRYWALL - SEA5 FIZ - GL 6-1 - C-A - L3,Complete,SEA - 5,East Support Building,SUES-5 - 6-1 - FIZ - GL A -E,L3 / Waffle Slab Level,ELECTRIC RM 2,CHERRY COATING,DRYWALL,AMBER CARO,2024-04-30 07:00,2024-05-07 17:00,2024-04-30 07:00,2024-10-01 17:00
CN.AB.AR.4320,DRYWALL 2 SIDE - SEA5 FIZ - GL 6-1 - C-A - L3,Complete,SEA - 5,East Support Building,SUES-5 - 6-1 - FIZ - GL A -E,L3 / Waffle Slab Level,ELECTRIC RM 2,BERG,DRYWALL,AMBER CARO,2024-04-16 07:00,2024-04-22 17:00,2024-04-16 07:00,2024-09-26 17:00
CN.AB.AR.4330,DRYWALL & INSULATION (1 side) (INT) - SEA5 FIZ - GL 6-1 - L3 - C-A,Complete,SEA - 5,East Support Building,SUES-5 - 6-1 - FIZ - GL A -E,L3 / Waffle Slab Level,,,DRYWALL,AMBER CARO,2024-02-01 07:00,2024-02-05 15:00,2024-01-04 07:00,2024-01-14 09:00
CN.SWB5.1600,PH1- INSTALL EXTERIOR DOOR / LOUVERS FRAMES - NE PENTHOUSE,Not Started,SEA - 5,East Support Building,NORTH EAST PENTHOUSE,L4 - SUP Roof - FAB Roof,,DOORS AND HARDWARE,TBD Architectural Finishes,SEAN MONK,2025-11-25 07:00,2025-12-01 17:00,,
CN.SWB5.1610,PH1- INSTALL EXTERIOR DOORS / LOUVERS - NE PENTHOUSE,Not Started,SEA - 5,East Support Building,NORTH EAST PENTHOUSE,L4 - SUP Roof - FAB Roof,,DOORS AND HARDWARE,TBD Architectural Finishes,SEAN MONK,2025-11-25 07:00,2025-12-01 17:00,,
CN.SWB5.1630,PH1- INSTALL INTERIOR DRYWALL - NE PENTHOUSE,Complete,SEA - 5,East Support Building,NORTH EAST PENTHOUSE,L4 - SUP Roof - FAB Roof,,BERG,TBD Architectural Finishes,SEAN MONK,2024-06-20 07:00,2024-06-24 17:00,2024-07-20 07:00,2024-08-03 07:00
CN.SEA5.1440,PH1- DS STEEL FRAME INSTALL - SEA5 FIZ - GL 6-1 - C-E - ROOF Comeback Sup Side,Complete,SEA - 5,East Support Building,SUES-5 - 6-1 - FIZ - GL A -E,DS/AD,,,Steel Erection,SEAN MONK,2023-11-02 07:00,2023-11-05 09:00,2023-11-02 07:00,2023-11-05 12:00
CN.SEA51941,METAL STUD FRAMING (2hr) w DOOR FRAMES - SEA5 FIZ - GL 6-1 - L1 - C-A - OAC MECHANICAL RM & I/O ROOM 1,Complete,SEA - 5,East Support Building,SUES-5 - 6-1 - FIZ - GL A -E,L1 - Fndn Slab,OAC MECH RM,BERG,TBD Architectural Finishes,AMBER CARO,2023-10-14 08:00,2023-10-19 14:00,2023-10-14 08:00,2023-11-17 17:00
CN.SEA53530,TAPE & FINISH DRYWALL - SEA5 FIZ - GL 6-1 - L1 - C-A - OAC MECHANICAL RM & I/O ROOM 1,Complete,SEA - 5,East Support Building,SUES-5 - 6-1 - FIZ - GL A -E,L1 - Fndn Slab,OAC MECH RM,,DRYWALL,AMBER CARO,2024-01-22 07:00,2024-01-25 17:00,2024-01-16 07:00,2024-01-21 17:00
CN.SEA53540,FRAMING & DRYWALL - SEA5 - GL 4/ A-B - L1,Complete,SEA - 5,East Support Building,SUES-5 - 6-1 - FIZ - GL A -E,L1 - Fndn Slab,OAC MECH RM,FINISH PAINT,TBD Architectural Finishes,JAMES LEE,2025-06-13 07:00,2025-07-25 17:00,2025-06-13 07:00,2025-09-22 17:00
CN.SEA54240,DRYWALL 2 SIDE - SEA5 FIZ - GL 6-1 - L1 - C-A - OAC MECHANICAL RM & I/O ROOM 1,Complete,SEA - 5,East Support Building,SUES-5 - 6-1 - FIZ - GL A -E,L1 - Fndn Slab,OAC MECH RM,,DRYWALL,AMBER CARO,2023-12-18 07:00,2023-12-21 17:00,2023-12-18 07:00,2023-12-21 17:00
CN.SEA54250,DRYWALL & INSULATION (1 side) - SEA5 FIZ - GL 6-1 - L1 - C-A - OAC MECHANICAL RM & I/O ROOM 1,Complete,SEA - 5,East Support Building,SUES-5 - 6-1 - FIZ - GL A -E,L1 - Fndn Slab,OAC MECH RM,,DRYWALL,AMBER CARO,2023-11-30 07:00,2023-12-04 15:00,2023-11-30 07:00,2023-12-05 11:00
CN.SEA5530,TAPE & FINISH DRYWALL - SEA5 FIZ - GL 6-1 - L2 - C-A - ELECTRICAL ROOM 4,Complete,SEA - 5,East Support Building,SUES-5 - 6-1 - FIZ - GL A -E,L2 - SubFab Level,ELECTRIC RM 4,,DRYWALL,AMBER CARO,2024-01-12 09:00,2024-01-18 12:00,2024-01-12 09:00,2024-01-16 13:00
CN.SEA5240,DRYWALL 2 SIDE - SEA5 FIZ - GL 6-1 - L2 - C-A - ELECTRICAL ROOM 4,Complete,SEA - 5,East Support Building,SUES-5 - 6-1 - FIZ - GL A -E,L2 - SubFab Level,ELECTRIC RM 4,,DRYWALL,AMBER CARO,2024-01-08 09:00,2024-01-14 09:00,2024-01-08 09:00,2024-01-12 09:00
CN.SEA5250,DRYWALL & INSULATION (1 side) - SEA-5 - L2 only - ELECTRICAL ROOM 4,Complete,SEA - 5,East Support Building,SUES-5 - 6-1 - FIZ - GL A -E,L2 - SubFab Level,ELECTRIC RM 4,,DRYWALL,AMBER CARO,2023-11-06 09:00,2023-11-10 17:00,2023-09-19 09:00,2023-09-26 17:00
CN.SEA5.1302,TAPE & FINISH DRYWALL - SEA5 FIZ - GL 6-1 - L1 - D LINE,Complete,SEA - 5,West Support Building,SUES-5 - 6-1 - FIZ - GL A -E,L1 - Fndn Slab,DS/AD INTERIORS,,DRYWALL,FIZ DATA CENTER,2023-12-14 07:00,2023-12-17 17:00,2023-12-14 07:00,2024-01-08 13:00
CN.SEA5.1322,PRIMER & PAINT DRYWALL -  GL 6-3 - D LINE - L1,Complete,SEA - 5,West Support Building,SUES-5 - 6-1 - FIZ - GL A -E,L1 - Fndn Slab,DS/AD INTERIORS,FINISH PAINT,TBD Architectural Finishes,FIZ DATA CENTER,2024-10-21 07:00,2024-10-24 17:00,2024-10-21 07:00,2024-10-24 17:00
CN.SEA5.1282,DRYWALL 2 SIDE - SEA5 FIZ - GL 6-1 - L1 - D LINE,Complete,SEA - 5,West Support Building,SUES-5 - 6-1 - FIZ - GL A -E,L1 - Fndn Slab,DS/AD INTERIORS,,DRYWALL,FIZ DATA CENTER,2023-12-11 07:00,2023-12-15 17:00,2023-12-11 07:00,2023-12-29 13:00
CN.SEA5.1262,DRYWALL & INSULATION (1 side) (INT) - SEA5 FIZ - GL 6-1 - L1 - D LINE,Complete,SEA - 5,West Support Building,SUES-5 - 6-1 - FIZ - GL A -E,L1 - Fndn Slab,DS/AD INTERIORS,,DRYWALL,FIZ DATA CENTER,2023-12-01 15:00,2023-12-07 13:00,2023-12-01 15:00,2023-12-08 09:00
CN.SEA5.1312,REMEDY - TAPE & FINISH DRYWALL - SEA5 FIZ - GL 3-6 - D LINE - L2,Complete,SEA - 5,West Support Building,SUES-5 - 6-1 - FIZ - GL A -E,L2 - SubFab Level,DS/AD INTERIORS,CHERRY COATING,DRYWALL,FIZ DATA CENTER,2024-08-23 07:00,2024-08-27 17:00,2024-08-07 07:00,2024-08-10 17:00
CN.SEA5.1292,REMEDY - FRAME & DRYWALL - SEA5 FIZ - GL 3-6 - D LINE - L2,Complete,SEA - 5,West Support Building,SUES-5 - 6-1 - FIZ - GL A -E,L2 - SubFab Level,DS/AD INTERIORS,BERG,DRYWALL,FIZ DATA CENTER,2024-07-15 07:00,2024-08-02 17:00,2024-07-19 07:00,2024-08-06 17:00
CN.SEA5.1272,DRYWALL (1 side) (INT) - SEA5 FIZ - GL 6-1 - L2 - D LINE,Complete,SEA - 5,West Support Building,SUES-5 - 6-1 - FIZ - GL A -E,L2 - SubFab Level,DS/AD INTERIORS,,DRYWALL,FIZ DATA CENTER,2024-01-26 15:00,2024-01-31 13:00,2024-01-08 15:00,2024-01-15 09:00
CN.SEA5.1382,TAPE & FINISH DRYWALL - SEA5 FIZ - GL 6-3 - D LINE - L3,Complete,SEA - 5,West Support Building,SUES-5 - 6-1 - FIZ - GL A -E,L3 / Waffle Slab Level,DS/AD INTERIORS,CHERRY COATING,DRYWALL,FIZ DATA CENTER,2024-06-13 07:00,2024-06-18 17:00,2024-06-13 07:00,2024-06-25 17:00
CN.SEA5.1372,DRYWALL 2 SIDE - SEA5 FIZ - GL 6-3 - D LINE - L3,Complete,SEA - 5,West Support Building,SUES-5 - 6-1 - FIZ - GL A -E,L3 / Waffle Slab Level,DS/AD INTERIORS,BERG,DRYWALL,FIZ DATA CENTER,2024-04-18 07:00,2024-04-26 17:00,2024-04-18 07:00,2024-06-21 17:00
CN.SEA5.1362,DRYWALL & INSULATION (1st layer) (INT) - SEA5 FIZ - GL 6-1 - L3 - D LINE,Complete,SEA - 5,West Support Building,SUES-5 - 6-1 - FIZ - GL A -E,L3 / Waffle Slab Level,DS/AD INTERIORS,,DRYWALL,FIZ DATA CENTER,2024-02-26 07:00,2024-02-29 17:00,2024-02-24 11:00,2024-02-29 12:00
CN.AB.AR.6510,INSTALL VIP ROOM GLASS WINDOW & FRAME - SEA5 FIZ - GL 2 - G-F - L3,Complete,SEA - 5,East Support Building,SUES-5 - 6-1 - FIZ - GL A -E,L3 / Waffle Slab Level,ELECTRIC RM 2,BERG,TBD Architectural Finishes,AMBER CARO,2024-09-23 07:00,2024-10-03 17:00,2024-09-21 07:00,2024-09-26 17:00
CN.SEA5.6330,Drywall Clips & AMTS Installs Support Beams - SEA5 - GL 6-3 - L4- D LINE,Complete,SEA - 5,,SUES-5 - 6-1 - FIZ - GL A -E,L4 - SUP Roof - FAB Roof,DS/AD INTERIORS,,Fireproofing,,2024-03-23 08:00,2024-03-30 10:00,2024-03-04 00:00,2024-03-13 00:00
CN.SEA5.6480,REMAINING - TAPE & FINISH DRYWALL - SEA5 FIZ - GL 6-1 - L1 - D LINE,Complete,SEA - 5,West Support Building,SUES-5 - 6-1 - FIZ - GL A -E,L1 - Fndn Slab,DS/AD INTERIORS,,DRYWALL,FIZ DATA CENTER,2024-01-29 07:00,2024-01-31 11:00,2024-01-29 07:00,2024-01-30 11:00
CN.SEA5.6490,REMAINING FRAMING & DRYWALL - ELEVATOR 22 - ALL LEVELS,Complete,SEA - 5,West Support Building,SUES-5 - 6-1 - FIZ - GL A -E,,ELEVATOR,BERG,DRYWALL,,2024-03-25 07:00,2024-04-23 17:00,2024-03-15 07:00,2024-08-11 17:00
CN.SEA5.6560,INSTALL ELEVATOR HSS STEEL DOOR OPENINGS - ELEVATOR 22 - SEA5 - GL 6-1 - L2-3,Complete,SEA - 5,West Support Building,SUES-5 - 6-1 - FIZ - GL A -E,,ELEVATOR,W&W,DRYWALL,,2024-04-08 07:00,2024-04-18 11:00,2024-03-25 07:00,2024-04-24 17:00
CN.SEA5.8980,REMEDY - DEMO DRYWALL (INT)  - SEA5 FIZ - GL 3-6 - L2 - D LINE,Complete,SEA - 5,West Support Building,SUES-5 - 6-1 - FIZ - GL A -E,L2 - SubFab Level,DS/AD INTERIORS,BERG,DRYWALL,FIZ DATA CENTER,2024-07-08 07:00,2024-07-15 15:00,2024-07-08 07:00,2024-07-11 15:00
CN.SEA5.9010,IMPACT - REMEDY - TAPE & FINISH DRYWALL - SEA5 FIZ - GL 6-3 - D LINE - L1,Complete,SEA - 5,West Support Building,SUES-5 - 6-1 - FIZ - GL A -E,L1 - Fndn Slab,DS/AD INTERIORS,CHERRY COATING,DRYWALL,FIZ DATA CENTER,2024-10-21 07:00,2024-10-24 17:00,2024-10-01 07:00,2024-10-07 17:00
CN.SEA5.9000,IMPACT - REMEDY - FRAME & DRYWALL - SEA5 FIZ - GL 6-3 - D LINE - L1,Complete,SEA - 5,West Support Building,SUES-5 - 6-1 - FIZ - GL A -E,L1 - Fndn Slab,DS/AD INTERIORS,BERG,DRYWALL,FIZ DATA CENTER,2024-07-26 07:00,2024-08-19 17:00,2024-07-22 07:00,2024-09-19 17:00
CN.SEA5.8990,IMPACT - REMEDY - DEMO DRYWALL (INT) - GL 6-1 - L1 - D LINE,Complete,SEA - 5,West Support Building,SUES-5 - 6-1 - FIZ - GL A -E,L1 - Fndn Slab,DS/AD INTERIORS,,DRYWALL,FIZ DATA CENTER,2024-05-29 12:00,2024-06-06 12:00,2024-05-16 09:01,2024-05-24 17:00
CN.SEA5.9040,IMPACT - REMEDY - TAPE & FINISH DRYWALL - SEA5- GL 9-6 - D LINE - L1,Complete,SEA - 5,West Support Building,SUES-4 - 9-6,L1 - Fndn Slab,DS/AD INTERIORS,CHERRY COATING,DRYWALL,FIZ DATA CENTER,2024-09-20 07:00,2024-09-24 17:00,2024-09-09 07:00,2024-09-12 17:00
CN.SEA5.9030,IMPACT - REMEDY - FRAME & DRYWALL - SEA5- GL 9-6 - D LINE - L1,Complete,SEA - 5,West Support Building,SUES-4 - 9-6,L1 - Fndn Slab,DS/AD INTERIORS,BERG,DRYWALL,FIZ DATA CENTER,2024-08-16 07:00,2024-08-30 17:00,2024-08-08 07:00,2024-09-07 17:00
CN.SEA5.9020,IMPACT - REMEDY - DEMO DRYWALL (INT) - GL 9-6 - L1 - D LINE,Complete,SEA - 5,West Support Building,SUES-4 - 9-6,L1 - Fndn Slab,DS/AD INTERIORS,,DRYWALL,FIZ DATA CENTER,2024-05-29 12:00,2024-06-06 12:00,2024-05-16 14:02,2024-05-24 17:00
CN.SEA5.9070,IMPACT - REMEDY - TAPE & FINISH DRYWALL - SEA3 - GL 13-9 - D LINE - L1,Complete,SEA - 5,West Support Building,SUES-3 - 13-9,L1 - Fndn Slab,DS/AD INTERIORS,CHERRY COATING,DRYWALL,FIZ DATA CENTER,2024-09-20 07:00,2024-09-24 17:00,2024-09-10 07:00,2024-09-19 17:00
CN.SEA5.9060,IMPACT - REMEDY - FRAME & DRYWALL - SEA3 - GL 13-9 - D LINE - L1,Complete,SEA - 5,West Support Building,SUES-3 - 13-9,L1 - Fndn Slab,DS/AD INTERIORS,BERG,DRYWALL,FIZ DATA CENTER,2024-08-09 07:00,2024-08-26 17:00,2024-08-02 07:00,2024-09-05 17:00
CN.SEA5.9050,IMPACT - REMEDY - DEMO DRYWALL (INT) - GL 13-9 - L1 - D LINE,Complete,SEA - 5,West Support Building,SUES-3 - 13-9,L1 - Fndn Slab,DS/AD INTERIORS,,DRYWALL,FIZ DATA CENTER,2024-06-04 12:00,2024-06-13 12:00,2024-05-23 12:00,2024-06-04 17:00
CN.SEA5.9100,IMPACT - REMEDY - TAPE & FINISH DRYWALL - SEA2 - GL 16-13 - D LINE - L1,Complete,SEA - 5,West Support Building,SUES-2 - 16-13,L1 - Fndn Slab,DS/AD INTERIORS,CHERRY COATING,DRYWALL,FIZ DATA CENTER,2024-09-10 07:00,2024-09-13 17:00,2024-09-10 07:00,2024-09-13 17:00
CN.SEA5.9080,IMPACT - REMEDY - FRAME & DRYWALL - SEA2 - GL 16-13 - D LINE - L1,Complete,SEA - 5,West Support Building,SUES-2 - 16-13,L1 - Fndn Slab,DS/AD INTERIORS,BERG,DRYWALL,FIZ DATA CENTER,2024-07-17 07:00,2024-08-06 17:00,2024-07-17 07:00,2024-08-27 17:00
CN.SEA5.9090,IMPACT - REMEDY - DEMO DRYWALL (INT) - GL 16-13 - L1 - D LINE,Complete,SEA - 5,West Support Building,SUES-2 - 16-13,L1 - Fndn Slab,DS/AD INTERIORS,,DRYWALL,FIZ DATA CENTER,2024-06-04 12:00,2024-06-13 12:00,2024-05-26 10:01,2024-06-04 17:00
CN.SEA5.9130,IMPACT - REMEDY - TAPE & FINISH DRYWALL - SEA3 - GL 19-16 - D LINE - L1,Complete,SEA - 5,West Support Building,SUES-1 - 19-16,L1 - Fndn Slab,DS/AD INTERIORS,CHERRY COATING,DRYWALL,FIZ DATA CENTER,2024-09-09 07:00,2024-09-12 17:00,2024-09-07 07:00,2024-09-10 17:00
CN.SEA5.9110,IMPACT - REMEDY - FRAME & DRYWALL - SEA3 - GL 19-16 - D LINE - L1,Complete,SEA - 5,West Support Building,SUES-1 - 19-16,L1 - Fndn Slab,DS/AD INTERIORS,BERG,DRYWALL,FIZ DATA CENTER,2024-08-09 07:00,2024-08-26 17:00,2024-08-03 07:00,2024-08-27 17:00
CN.SEA5.9120,IMPACT - REMEDY - DEMO DRYWALL (INT) - GL 19-16 - L1 - D LINE,Complete,SEA - 5,West Support Building,SUES-1 - 19-16,L1 - Fndn Slab,DS/AD INTERIORS,,DRYWALL,FIZ DATA CENTER,2024-06-04 12:00,2024-06-13 12:00,2024-05-26 07:00,2024-06-04 17:00
CN.SEA5.9160,IMPACT - REMEDY - TAPE & FINISH DRYWALL - SEA3 - GL 19-22 - D LINE - L1,Complete,SEA - 5,West Support Building,SUEN-1 - 19-22,L1 - Fndn Slab,DS/AD INTERIORS,CHERRY COATING,DRYWALL,FIZ DATA CENTER,2024-09-09 07:00,2024-09-12 17:00,2024-09-07 07:00,2024-09-10 17:00
CN.SEA5.9140,IMPACT - REMEDY - FRAME & DRYWALL - SEA3 - GL 19-22 - D LINE - L1,Complete,SEA - 5,West Support Building,SUEN-1 - 19-22,L1 - Fndn Slab,DS/AD INTERIORS,BERG,DRYWALL,FIZ DATA CENTER,2024-07-17 07:00,2024-08-06 17:00,2024-07-17 07:00,2024-08-27 17:00
CN.SEA5.9150,IMPACT - REMEDY - DEMO DRYWALL (INT) -  GL 19-22 - L1 - D LINE,Complete,SEA - 5,West Support Building,SUEN-1 - 19-22,L1 - Fndn Slab,DS/AD INTERIORS,,DRYWALL,FIZ DATA CENTER,2024-06-03 12:00,2024-06-11 12:00,2024-05-24 08:47,2024-06-02 17:00
CN.SEA5.9190,IMPACT - REMEDY - TAPE & FINISH DRYWALL - SEA3 - GL 22-25 - D LINE - L1,Complete,SEA - 5,West Support Building,SUEN-2 - 22-25,L1 - Fndn Slab,DS/AD INTERIORS,CHERRY COATING,DRYWALL,FIZ DATA CENTER,2024-09-20 07:00,2024-09-24 17:00,2024-09-07 07:00,2024-09-10 17:00
CN.SEA5.9170,IMPACT - REMEDY - FRAME & DRYWALL - SEA3 - GL 22-25 - D LINE - L1,Complete,SEA - 5,West Support Building,SUEN-2 - 22-25,L1 - Fndn Slab,DS/AD INTERIORS,BERG,DRYWALL,FIZ DATA CENTER,2024-07-15 07:00,2024-08-02 17:00,2024-07-15 07:00,2024-08-27 17:00
CN.SEA5.9180,IMPACT - REMEDY - DEMO DRYWALL (INT) -  GL 22-25 - L1 - D LINE,Complete,SEA - 5,West Support Building,SUEN-2 - 22-25,L1 - Fndn Slab,DS/AD INTERIORS,,DRYWALL,FIZ DATA CENTER,2024-06-03 12:00,2024-06-11 12:00,2024-06-03 12:00,2024-06-11 12:00
CN.SEA5.9220,IMPACT - REMEDY - TAPE & FINISH DRYWALL - SEA3 - GL 25-28 - D LINE - L1,Complete,SEA - 5,West Support Building,SUEN-3 - 25-28,L1 - Fndn Slab,DS/AD INTERIORS,CHERRY COATING,DRYWALL,FIZ DATA CENTER,2024-08-26 07:00,2024-08-28 17:00,2024-08-24 07:00,2024-08-27 17:00
CN.SEA5.9200,IMPACT - REMEDY - FRAME & DRYWALL - SEB3 - GL 25-28 - D LINE - L1,Complete,SEA - 5,West Support Building,SUEN-3 - 25-28,L1 - Fndn Slab,DS/AD INTERIORS,BERG,DRYWALL,FIZ DATA CENTER,2024-07-15 07:00,2024-08-02 17:00,2024-07-15 07:00,2024-08-23 17:00
CN.SEA5.9210,IMPACT - REMEDY - DEMO DRYWALL (INT) -  GL 25-28 - L1 - D LINE,Complete,SEA - 5,West Support Building,SUEN-3 - 25-28,L1 - Fndn Slab,DS/AD INTERIORS,,DRYWALL,FIZ DATA CENTER,2024-06-03 12:00,2024-06-11 12:00,2024-06-03 12:00,2024-06-11 16:00
CN.SEA5.9250,IMPACT - REMEDY - TAPE & FINISH DRYWALL - SEA3 - GL 28-31 - D LINE - L1,Complete,SEA - 5,West Support Building,SUEN-4 - 28-31,L1 - Fndn Slab,DS/AD INTERIORS,CHERRY COATING,DRYWALL,FIZ DATA CENTER,2024-08-26 07:00,2024-08-28 17:00,2024-08-24 07:00,2024-08-27 17:00
CN.SEA5.9230,IMPACT - REMEDY - FRAME & DRYWALL - SEA3 - GL 28-31 - D LINE - L1,Complete,SEA - 5,West Support Building,SUEN-4 - 28-31,L1 - Fndn Slab,DS/AD INTERIORS,BERG,DRYWALL,FIZ DATA CENTER,2024-07-16 07:00,2024-08-05 17:00,2024-07-16 07:00,2024-08-23 17:00
CN.SEA5.9240,IMPACT - REMEDY - DEMO DRYWALL (INT) -  GL 28-31 - L1 - D LINE,Complete,SEA - 5,West Support Building,SUEN-4 - 28-31,L1 - Fndn Slab,DS/AD INTERIORS,,DRYWALL,FIZ DATA CENTER,2024-06-03 07:00,2024-06-10 17:00,2024-06-03 07:00,2024-06-10 17:00
CN.SEA5.9280,IMPACT - REMEDY - TAPE & FINISH DRYWALL - SWA3 - GL 31-33 - D LINE - L1,Complete,SEA - 5,West Support Building,SUEN-5 - 31-33,L1 - Fndn Slab,DS/AD INTERIORS,CHERRY COATING,DRYWALL,FIZ DATA CENTER,2024-08-26 07:00,2024-08-28 17:00,2024-08-24 07:00,2024-08-27 17:00
CN.SEA5.9260,IMPACT - REMEDY - FRAME & DRYWALL - SWA3 - GL 31-33 - D LINE - L1,Complete,SEA - 5,West Support Building,SUEN-5 - 31-33,L1 - Fndn Slab,DS/AD INTERIORS,BERG,DRYWALL,FIZ DATA CENTER,2024-07-15 07:00,2024-08-02 17:00,2024-07-15 07:00,2024-08-23 17:00
CN.SEA5.9270,IMPACT - REMEDY - DEMO DRYWALL (INT) -  GL 31-33 - L1 - D LINE,Complete,SEA - 5,West Support Building,SUEN-5 - 31-33,L1 - Fndn Slab,DS/AD INTERIORS,,DRYWALL,FIZ DATA CENTER,2024-06-03 07:00,2024-06-10 17:00,2024-06-03 07:00,2024-06-10 17:00
CN.SEA5.9310,IMPACT - REMEDY - TAPE & FINISH DRYWALL - SUW4 - GL 9-6 - K LINE - L1,Complete,SEA - 5,West Support Building,SUWS-4 - 9-6,L1 - Fndn Slab,DS/AD INTERIORS,CHERRY COATING,DRYWALL,FIZ DATA CENTER,2024-09-12 07:00,2024-09-16 17:00,2024-09-12 07:00,2024-09-13 17:00
CN.SEA5.9300,IMPACT - REMEDY - FRAME & DRYWALL - SUW4 - GL 9-6 - K LINE - L1,Complete,SEA - 5,West Support Building,SUWS-4 - 9-6,L1 - Fndn Slab,DS/AD INTERIORS,BERG,DRYWALL,FIZ DATA CENTER,2024-07-31 07:00,2024-08-23 17:00,2024-07-22 07:00,2024-09-07 17:00
CN.SEA5.9290,IMPACT - REMEDY - DEMO DRYWALL (INT) -  GL 3-6 - L1 - K LINE,Complete,SEA - 5,West Support Building,FIZ 2 / SUWS 5  (GL6-1) - GL J - N - DATA CENTER 1,L1 - Fndn Slab,DS/AD INTERIORS,,DRYWALL,FIZ DATA CENTER,2024-05-28 07:00,2024-06-03 17:00,2024-05-28 07:00,2024-06-03 17:00
CN.SEA5.9340,IMPACT - REMEDY - TAPE & FINISH DRYWALL - SWA3 - GL 12-9 - K LINE - L1,Complete,SEA - 5,West Support Building,SUWS-3 - 12-9,L1 - Fndn Slab,DS/AD INTERIORS,CHERRY COATING,DRYWALL,FIZ DATA CENTER,2024-09-09 07:00,2024-09-12 17:00,2024-09-07 07:00,2024-09-10 17:00
CN.SEA5.9330,IMPACT - REMEDY - FRAME & DRYWALL - SWA3 - GL 12-9 - K LINE - L1,Complete,SEA - 5,West Support Building,SUWS-3 - 12-9,L1 - Fndn Slab,DS/AD INTERIORS,BERG,DRYWALL,FIZ DATA CENTER,2024-08-23 07:00,2024-09-16 17:00,2024-08-12 07:00,2024-09-05 17:00
CN.SEA5.9320,IMPACT - REMEDY - DEMO DRYWALL (INT) - GL 12-9 - L1 - K LINE,Complete,SEA - 5,West Support Building,SUWS-3 - 12-9,L1 - Fndn Slab,DS/AD INTERIORS,,DRYWALL,FIZ DATA CENTER,2024-05-28 07:00,2024-06-03 17:00,2024-05-28 07:00,2024-06-03 17:00
CN.SEA5.9370,IMPACT - REMEDY - TAPE & FINISH DRYWALL - SWA3 - GL 15-12 - K LINE - L1,Complete,SEA - 5,West Support Building,SUWS-2 - 15-12,L1 - Fndn Slab,DS/AD INTERIORS,CHERRY COATING,DRYWALL,FIZ DATA CENTER,2024-09-09 07:00,2024-09-12 17:00,2024-09-07 07:00,2024-09-10 17:00
CN.SEA5.9360,IMPACT - REMEDY - FRAME & DRYWALL - SWA3 - GL 15-12 - K LINE - L1,Complete,SEA - 5,West Support Building,SUWS-2 - 15-12,L1 - Fndn Slab,DS/AD INTERIORS,BERG,DRYWALL,FIZ DATA CENTER,2024-08-23 07:00,2024-08-27 17:00,2024-08-07 07:00,2024-09-05 17:00
CN.SEA5.9350,IMPACT - REMEDY - DEMO DRYWALL (INT) - GL 15-12 - L1 - K LINE,Complete,SEA - 5,West Support Building,SUWS-2 - 15-12,L1 - Fndn Slab,DS/AD INTERIORS,,DRYWALL,FIZ DATA CENTER,2024-05-28 07:00,2024-06-03 17:00,2024-05-28 07:00,2024-06-03 17:00
CN.SEA5.9400,IMPACT - REMEDY - TAPE & FINISH DRYWALL - SWA3 - GL 18-15 - K LINE - L1,Complete,SEA - 5,West Support Building,SUWS-1 - 18-15,L1 - Fndn Slab,DS/AD INTERIORS,CHERRY COATING,DRYWALL,FIZ DATA CENTER,2024-09-20 07:00,2024-09-24 17:00,2024-09-07 07:00,2024-09-10 17:00
CN.SEA5.9390,IMPACT - REMEDY - FRAME & DRYWALL - SWA3 - GL 18-15 - K LINE - L1,Complete,SEA - 5,West Support Building,SUWS-1 - 18-15,L1 - Fndn Slab,DS/AD INTERIORS,BERG,DRYWALL,FIZ DATA CENTER,2024-08-23 07:00,2024-09-12 17:00,2024-08-01 07:00,2024-09-04 17:00
CN.SEA5.9380,IMPACT - REMEDY - DEMO DRYWALL (INT) - GL 18-15 - L1 - K LINE,Complete,SEA - 5,West Support Building,SUWS-1 - 18-15,L1 - Fndn Slab,DS/AD INTERIORS,,DRYWALL,FIZ DATA CENTER,2024-06-04 07:00,2024-06-11 17:00,2024-06-04 07:00,2024-06-11 17:00
CN.SEA5.9430,IMPACT - REMEDY - TAPE & FINISH DRYWALL - SWB3 - GL 18-21 - K LINE - L1,Complete,SEA - 5,West Support Building,SUWN-1 - 18-21,L1 - Fndn Slab,DS/AD INTERIORS,CHERRY COATING,DRYWALL,FIZ DATA CENTER,2024-09-06 07:00,2024-09-10 17:00,2024-08-22 07:00,2024-08-24 17:00
CN.SEA5.9420,IMPACT - REMEDY - FRAME & DRYWALL - SWB3 - GL 18-21 - K LINE - L1,Complete,SEA - 5,West Support Building,SUWN-1 - 18-21,L1 - Fndn Slab,DS/AD INTERIORS,BERG,DRYWALL,FIZ DATA CENTER,2024-07-26 07:00,2024-08-19 17:00,2024-07-24 07:00,2024-08-21 17:00
CN.SEA5.9410,IMPACT - REMEDY - DEMO DRYWALL (INT) - GL 18-21 - L1 - K LINE,Complete,SEA - 5,West Support Building,SUWN-1 - 18-21,L1 - Fndn Slab,DS/AD INTERIORS,,DRYWALL,FIZ DATA CENTER,2024-06-04 07:00,2024-06-11 17:00,2024-06-04 07:00,2024-06-11 17:00
CN.SEA5.9460,IMPACT - REMEDY - TAPE & FINISH DRYWALL - SWB3 - GL 21-24 - K LINE - L1,Complete,SEA - 5,West Support Building,SUWN-2 - 21-24,L1 - Fndn Slab,DS/AD INTERIORS,CHERRY COATING,DRYWALL,FIZ DATA CENTER,2024-08-23 07:00,2024-08-27 17:00,2024-08-20 07:00,2024-08-22 17:00
CN.SEA5.9450,IMPACT - REMEDY - FRAME & DRYWALL - SWB3 - GL 21-24 - K LINE - L1,Complete,SEA - 5,West Support Building,SUWN-2 - 21-24,L1 - Fndn Slab,DS/AD INTERIORS,BERG,DRYWALL,FIZ DATA CENTER,2024-07-16 07:00,2024-08-05 17:00,2024-07-16 07:00,2024-08-19 17:00
CN.SEA5.9440,IMPACT - REMEDY - DEMO DRYWALL (INT) -  GL 21-24 - L1 - K LINE,Complete,SEA - 5,West Support Building,SUWN-2 - 21-24,L1 - Fndn Slab,DS/AD INTERIORS,,DRYWALL,FIZ DATA CENTER,2024-06-04 07:00,2024-06-11 17:00,2024-06-04 07:00,2024-06-11 17:00
CN.SEA5.9490,IMPACT - REMEDY - TAPE & FINISH DRYWALL - SWB3 - GL 24-27 - K LINE - L1,Complete,SEA - 5,West Support Building,SUWN-3 - 24-27,L1 - Fndn Slab,DS/AD INTERIORS,CHERRY COATING,DRYWALL,FIZ DATA CENTER,2024-08-20 07:00,2024-08-23 17:00,2024-08-20 07:00,2024-08-22 17:00
CN.SEA5.9480,IMPACT - REMEDY - FRAME & DRYWALL - SWB3 - GL 24-27 - K LINE - L1,Complete,SEA - 5,West Support Building,SUWN-3 - 24-27,L1 - Fndn Slab,DS/AD INTERIORS,BERG,DRYWALL,FIZ DATA CENTER,2024-07-16 07:00,2024-08-05 17:00,2024-07-16 07:00,2024-08-19 17:00
CN.SEA5.9470,IMPACT - REMEDY - DEMO DRYWALL (INT) -  GL 24-27 - L1 - K LINE,Complete,SEA - 5,West Support Building,SUWN-3 - 24-27,L1 - Fndn Slab,DS/AD INTERIORS,,DRYWALL,FIZ DATA CENTER,2024-06-04 07:00,2024-06-11 17:00,2024-06-04 07:00,2024-06-11 17:00
CN.SEA5.9520,IMPACT - REMEDY - TAPE & FINISH DRYWALL - SWB3 - GL 27-30 - K LINE - L1,Complete,SEA - 5,West Support Building,SUWN-4 - 27-30,L1 - Fndn Slab,DS/AD INTERIORS,CHERRY COATING,DRYWALL,FIZ DATA CENTER,2024-08-19 07:00,2024-08-22 17:00,2024-08-17 07:00,2024-08-21 17:00
CN.SEA5.9510,IMPACT - REMEDY - FRAME & DRYWALL - SWB3 - GL 27-30 - K LINE - L1,Complete,SEA - 5,West Support Building,SUWN-4 - 27-30,L1 - Fndn Slab,DS/AD INTERIORS,BERG,DRYWALL,FIZ DATA CENTER,2024-07-16 07:00,2024-08-05 17:00,2024-07-16 07:00,2024-08-15 17:00
CN.SEA5.9500,IMPACT - REMEDY - DEMO DRYWALL (INT) -  GL 27-30 - L1 - K LINE,Complete,SEA - 5,West Support Building,SUWN-4 - 27-30,L1 - Fndn Slab,DS/AD INTERIORS,,DRYWALL,FIZ DATA CENTER,2024-06-04 07:00,2024-06-11 17:00,2024-06-04 07:00,2024-06-11 17:00
CN.SEA5.9550,IMPACT - REMEDY - TAPE & FINISH DRYWALL - SEA3 - GL 30-33 - K LINE - L1,Complete,SEA - 5,West Support Building,SUWN-5 - 30-33,L1 - Fndn Slab,DS/AD INTERIORS,CHERRY COATING,DRYWALL,FIZ DATA CENTER,2024-08-23 07:00,2024-08-27 17:00,2024-08-17 07:00,2024-08-22 17:00
CN.SEA5.9540,IMPACT - REMEDY - FRAME & DRYWALL - SWB3 - GL 30-33 - K LINE - L1,Complete,SEA - 5,West Support Building,SUWN-5 - 30-33,L1 - Fndn Slab,DS/AD INTERIORS,BERG,DRYWALL,FIZ DATA CENTER,2024-07-18 07:00,2024-08-08 17:00,2024-07-18 07:00,2024-08-15 17:00
CN.SEA5.9530,IMPACT - REMEDY - DEMO DRYWALL (INT) -  GL 30-33 - L1 - K LINE,Complete,SEA - 5,West Support Building,SUWN-5 - 30-33,L1 - Fndn Slab,DS/AD INTERIORS,,DRYWALL,FIZ DATA CENTER,2024-06-04 07:00,2024-06-11 17:00,2024-06-04 07:00,2024-06-11 17:00
CN.SEA5.9580,IMPACT - REMEDY - TAPE & FINISH DRYWALL - SEA5- GL 5-10 - C LINE - L1,Complete,SEA - 5,West Support Building,SUES-4 - 9-6,L1 - Fndn Slab,DS/AD INTERIORS,CHERRY COATING,DRYWALL,FIZ DATA CENTER,2024-09-05 07:00,2024-09-09 17:00,2024-08-16 07:00,2024-08-20 17:00
CN.SEA5.9570,IMPACT - REMEDY - FRAME & DRYWALL - SEA5- GL 5-10 - C LINE - L1,Complete,SEA - 5,West Support Building,SUES-4 - 9-6,L1 - Fndn Slab,DS/AD INTERIORS,BERG,DRYWALL,FIZ DATA CENTER,2024-07-15 07:00,2024-08-02 17:00,2024-07-15 07:00,2024-08-15 17:00
CN.SEA5.9560,IMPACT - REMEDY - CLEAN UP DRYWALL (INT) - GL 5-10 - L1 - C LINE,Complete,SEA - 5,West Support Building,SUES-4 - 9-6,L1 - Fndn Slab,DS/AD INTERIORS,MK MARLOW,DRYWALL,FIZ DATA CENTER,2024-07-08 07:00,2024-07-11 17:00,2024-07-10 07:00,2024-07-13 17:00
CN.SEA5.9610,IMPACT - REMEDY - TAPE & FINISH DRYWALL - SEA5- GL 10-13 - C LINE - L1,Complete,SEA - 5,West Support Building,SUES-3 - 13-9,L1 - Fndn Slab,DS/AD INTERIORS,CHERRY COATING,DRYWALL,FIZ DATA CENTER,2024-08-16 07:00,2024-08-20 17:00,2024-08-16 07:00,2024-08-20 17:00
CN.SEA5.9600,IMPACT - REMEDY - FRAME & DRYWALL - SEA5- GL 10-13 - C LINE - L1,Complete,SEA - 5,West Support Building,SUES-3 - 13-9,L1 - Fndn Slab,DS/AD INTERIORS,BERG,DRYWALL,FIZ DATA CENTER,2024-07-17 07:00,2024-08-06 17:00,2024-07-17 07:00,2024-08-15 17:00
CN.SEA5.9590,IMPACT - REMEDY - CLEAN UP DRYWALL (INT) - GL 10-13 - L1 - C LINE,Complete,SEA - 5,West Support Building,SUES-3 - 13-9,L1 - Fndn Slab,DS/AD INTERIORS,MK MARLOW,DRYWALL,FIZ DATA CENTER,2024-07-11 07:00,2024-07-19 17:00,2024-07-11 07:00,2024-07-15 17:00
CN.SEA5.9640,IMPACT - REMEDY - TAPE & FINISH DRYWALL - SEA5- GL 13-16 - C LINE - L1,Complete,SEA - 5,West Support Building,SUES-2 - 16-13,L1 - Fndn Slab,DS/AD INTERIORS,CHERRY COATING,DRYWALL,FIZ DATA CENTER,2024-09-06 07:00,2024-09-10 17:00,2024-08-27 07:00,2024-08-30 17:00
CN.SEA5.9630,IMPACT - REMEDY - FRAME & DRYWALL - SEA5- GL 13-16 - C LINE - L1,Complete,SEA - 5,West Support Building,SUES-2 - 16-13,L1 - Fndn Slab,DS/AD INTERIORS,BERG,DRYWALL,FIZ DATA CENTER,2024-07-18 07:00,2024-08-08 17:00,2024-07-18 07:00,2024-08-26 17:00
CN.SEA5.9620,IMPACT - REMEDY - CLEAN UP DRYWALL (INT) - GL 13-16 - L1 - C LINE,Complete,SEA - 5,West Support Building,SUES-2 - 16-13,L1 - Fndn Slab,DS/AD INTERIORS,MK MARLOW,DRYWALL,FIZ DATA CENTER,2024-07-11 07:00,2024-07-19 17:00,2024-07-13 07:00,2024-07-17 17:00
CN.SEA5.9670,IMPACT - REMEDY - TAPE & FINISH DRYWALL - SEA5- GL 16-19 - C LINE - L1,Complete,SEA - 5,West Support Building,SUES-1 - 19-16,L1 - Fndn Slab,DS/AD INTERIORS,CHERRY COATING,DRYWALL,FIZ DATA CENTER,2024-08-29 07:00,2024-09-03 17:00,2024-08-29 07:00,2024-11-13 17:00
CN.SEA5.9660,IMPACT - REMEDY - FRAME & DRYWALL - SEA5- GL 16-19 - C LINE - L1,Complete,SEA - 5,West Support Building,SUES-1 - 19-16,L1 - Fndn Slab,DS/AD INTERIORS,BERG,DRYWALL,FIZ DATA CENTER,2024-09-03 07:00,2024-09-26 17:00,2024-07-27 07:00,2024-08-24 17:00
CN.SEA5.9650,IMPACT - REMEDY - CLEAN UP DRYWALL (INT) - GL 16-19 - L1 - C LINE,Complete,SEA - 5,West Support Building,SUES-1 - 19-16,L1 - Fndn Slab,DS/AD INTERIORS,MK MARLOW,DRYWALL,FIZ DATA CENTER,2024-07-15 07:00,2024-07-23 17:00,2024-07-15 07:00,2024-07-18 17:00
CN.SEA5.9700,IMPACT - REMEDY - TAPE & FINISH DRYWALL - SEA5- GL 19-22 - C LINE - L1,Complete,SEA - 5,West Support Building,SUEN-1 - 19-22,L1 - Fndn Slab,DS/AD INTERIORS,CHERRY COATING,DRYWALL,FIZ DATA CENTER,2024-09-06 07:00,2024-09-10 17:00,2024-08-26 07:00,2024-08-28 17:00
CN.SEA5.9690,IMPACT - REMEDY - FRAME & DRYWALL - SEA5- GL 19-22 - C LINE - L1,Complete,SEA - 5,West Support Building,SUEN-1 - 19-22,L1 - Fndn Slab,DS/AD INTERIORS,BERG,DRYWALL,FIZ DATA CENTER,2024-07-18 07:00,2024-08-08 17:00,2024-07-18 07:00,2024-08-24 17:00
CN.SEA5.9680,IMPACT - REMEDY - CLEAN UP DRYWALL (INT) - GL 19-22 - L1 - C LINE,Complete,SEA - 5,West Support Building,SUEN-1 - 19-22,L1 - Fndn Slab,DS/AD INTERIORS,MK MARLOW,DRYWALL,FIZ DATA CENTER,2024-07-11 07:00,2024-07-19 17:00,2024-07-11 07:00,2024-07-15 17:00
CN.SEA5.9730,IMPACT - REMEDY - TAPE & FINISH DRYWALL - SEA5- GL 22-25 - C LINE - L1,Complete,SEA - 5,West Support Building,SUEN-2 - 22-25,L1 - Fndn Slab,DS/AD INTERIORS,CHERRY COATING,DRYWALL,FIZ DATA CENTER,2024-08-26 07:00,2024-08-28 17:00,2024-08-26 07:00,2024-08-28 17:00
CN.SEA5.9720,IMPACT - REMEDY - FRAME & DRYWALL - SEA5- GL 22-25 - C LINE - L1,Complete,SEA - 5,West Support Building,SUEN-2 - 22-25,L1 - Fndn Slab,DS/AD INTERIORS,BERG,DRYWALL,FIZ DATA CENTER,2024-08-27 07:00,2024-09-19 17:00,2024-08-01 07:00,2024-08-24 17:00
CN.SEA5.9710,IMPACT - REMEDY - CLEAN UP DRYWALL (INT) - GL 22-25 - L1 - C LINE,Complete,SEA - 5,West Support Building,SUEN-2 - 22-25,L1 - Fndn Slab,DS/AD INTERIORS,MK MARLOW,DRYWALL,FIZ DATA CENTER,2024-07-11 07:00,2024-07-19 17:00,2024-07-11 07:00,2024-07-29 17:00
CN.SEA5.9760,IMPACT - REMEDY - TAPE & FINISH DRYWALL - 1 LINE - L1- A-N,Complete,SEA - 5,West Support Building,FIZ3 (East Inner) GL G-E,L1 - Fndn Slab,FA/TEM LAB,CHERRY COATING,DRYWALL,FIZ DATA CENTER,2024-08-26 07:00,2024-08-30 17:00,2024-07-31 07:00,2024-08-05 17:00
CN.SEA5.9750,IMPACT - REMEDY - FRAME & DRYWALL - 1 LINE - L1- A-N,Complete,SEA - 5,West Support Building,FIZ3 (East Inner) GL G-E,L1 - Fndn Slab,FA/TEM LAB,BERG,DRYWALL,FIZ DATA CENTER,2024-06-06 07:00,2024-07-18 17:00,2024-06-06 07:00,2024-07-30 17:00
CN.SEA5.9740,IMPACT - REMEDY - DEMO DRYWALL (INT) - 1 LINE - L1 - A-N,Complete,SEA - 5,West Support Building,FIZ3 (East Inner) GL G-E,L1 - Fndn Slab,FA/TEM LAB,,DRYWALL,FIZ DATA CENTER,2024-05-20 07:00,2024-05-26 17:00,2024-05-20 07:00,2024-06-11 17:00
CN.SEA5.9790,IMPACT - REMEDY - TAPE & FINISH DRYWALL - 3 LINE - L1- A-N,Complete,SEA - 5,West Support Building,FIZ3 (East Inner) GL G-E,L1 - Fndn Slab,FA/TEM LAB,CHERRY COATING,DRYWALL,FIZ DATA CENTER,2024-08-09 07:00,2024-08-16 17:00,2024-07-29 07:00,2024-08-05 17:00
CN.SEA5.9780,IMPACT - REMEDY - FRAME & DRYWALL - 3 LINE - L1- A-N,Complete,SEA - 5,West Support Building,FIZ3 (East Inner) GL G-E,L1 - Fndn Slab,FA/TEM LAB,BERG,DRYWALL,FIZ DATA CENTER,2024-06-11 07:00,2024-07-16 17:00,2024-06-11 07:00,2024-07-25 17:00
CN.SEA5.9770,IMPACT - REMEDY - DEMO DRYWALL (INT) - 3 LINE - L1 - A-N,Complete,SEA - 5,West Support Building,FIZ3 (East Inner) GL G-E,L1 - Fndn Slab,FA/TEM LAB,,DRYWALL,FIZ DATA CENTER,2024-05-20 07:00,2024-05-26 17:00,2024-05-20 07:00,2024-05-30 17:00
CN.SEA5.9835,IMPACT - REMEDY - TAPE & FINISH DRYWALL - 1 LINE - L3- A-N,Complete,SEA - 5,West Support Building,FIZ3 (East Inner) GL G-E,L3 / Waffle Slab Level,FA/TEM LAB,CHERRY COATING,DRYWALL,FIZ DATA CENTER,2024-09-27 07:00,2024-10-04 17:00,2024-07-15 07:00,2024-10-03 17:00
CN.SEA5.9821,IMPACT - REMEDY - FRAME & DRYWALL - 1 LINE - L3 - A-N,Complete,SEA - 5,West Support Building,FIZ3 (East Inner) GL G-E,L3 / Waffle Slab Level,FA/TEM LAB,BERG,DRYWALL,FIZ DATA CENTER,2024-06-24 07:00,2024-08-01 17:00,2024-06-24 07:00,2024-09-26 17:00
CN.SEA5.9805,IMPACT - REMEDY - DEMO DRYWALL (INT) - 1 LINE - L3 - A-N,Complete,SEA - 5,West Support Building,FIZ3 (East Inner) GL G-E,L3 / Waffle Slab Level,FA/TEM LAB,MK MARLOW,DRYWALL,FIZ DATA CENTER,2024-06-18 07:00,2024-06-28 17:00,2024-06-18 07:00,2024-08-01 17:00
CN.SEA5.9865,REMEDY - TAPE & FINISH DRYWALL - SEA5 - DATA CENTER 2  - GL G-N - L2 - 1 LINE,Complete,SEA - 5,West Support Building,FIZ1 (West Inner) GL J-G - DATA CENTER 2,L2 - SubFab Level,DATA CENTER 2,CHERRY COATING,DRYWALL,FIZ DATA CENTER,2024-09-26 07:00,2024-10-03 17:00,2024-09-26 07:00,2024-10-01 17:00
CN.SEA5.9855,REMEDY - FRAME & DRYWALL - SEA5 - DATA CENTER 2  - GL G-N - D LINE - 1 LINE,Complete,SEA - 5,West Support Building,FIZ1 (West Inner) GL J-G - DATA CENTER 2,L2 - SubFab Level,DATA CENTER 2,BERG,DRYWALL,FIZ DATA CENTER,2024-09-20 07:00,2024-10-10 17:00,2024-09-17 07:00,2024-09-30 17:00
CN.SEA5.9845,REMEDY - DEMO DAMAGED DRYWALL (INT)  - SEA5 - DATA CENTER 2  - GL G-N - L2 -1 LINE,Complete,SEA - 5,West Support Building,FIZ1 (West Inner) GL J-G - DATA CENTER 2,L2 - SubFab Level,DATA CENTER 2,BERG,DRYWALL,FIZ DATA CENTER,2024-09-20 07:00,2024-09-27 17:00,2024-09-11 07:00,2024-09-16 17:00
CN.SEA5.9895,REMEDY - TAPE & FINISH DRYWALL - SEA5 - DATA CENTER 2  - GL G-N - L2 - 3 LINE,Complete,SEA - 5,West Support Building,FIZ1 (West Inner) GL J-G - DATA CENTER 2,L2 - SubFab Level,DATA CENTER 2,CHERRY COATING,DRYWALL,FIZ DATA CENTER,2025-08-18 07:00,2025-08-22 17:00,2025-08-18 07:00,2025-08-22 17:00
CN.SEA5.9885,REMEDY - FRAME & DRYWALL - SEA5 - DATA CENTER 2  - GL G-N - D LINE - 3 LINE,Complete,SEA - 5,West Support Building,FIZ1 (West Inner) GL J-G - DATA CENTER 2,L2 - SubFab Level,DATA CENTER 2,BERG,DRYWALL,FIZ DATA CENTER,2024-09-26 07:00,2024-10-15 17:00,2024-09-23 07:00,2025-08-22 17:00
CN.SEA5.9875,REMEDY - DEMO DRYWALL (INT)  - SEA5 - DATA CENTER 2  - GL G-N - L2 -3 LINE,Complete,SEA - 5,West Support Building,FIZ1 (West Inner) GL J-G - DATA CENTER 2,L2 - SubFab Level,DATA CENTER 2,BERG,DRYWALL,FIZ DATA CENTER,2024-09-20 07:00,2024-09-27 17:00,2024-09-11 07:00,2024-09-16 17:00
CN.SEA5.10115,IMPACT - REMEDY - DEMO DRYWALL (INT) -  GL 9-6 - L1 - K LINE,Complete,SEA - 5,West Support Building,SUWS-4 - 9-6,L1 - Fndn Slab,DS/AD INTERIORS,,DRYWALL,FIZ DATA CENTER,2024-05-28 07:00,2024-06-03 17:00,2024-05-28 07:00,2024-06-03 17:00
CN.SEA5.10135,IMPACT - REMEDY - TAPE & FINISH DRYWALL - SUW4 - GL 3-6 - K LINE - L1,Complete,SEA - 5,West Support Building,FIZ 2 / SUWS 5  (GL6-1) - GL J - N - DATA CENTER 1,L1 - Fndn Slab,DS/AD INTERIORS,CHERRY COATING,DRYWALL,FIZ DATA CENTER,2024-09-26 07:00,2024-09-30 17:00,2024-09-26 07:00,2024-09-28 17:00
CN.SEA5.10125,IMPACT - REMEDY - FRAME & DRYWALL - SUW4 - GL 3-6 - K LINE - L1,Complete,SEA - 5,West Support Building,FIZ 2 / SUWS 5  (GL6-1) - GL J - N - DATA CENTER 1,L1 - Fndn Slab,DS/AD INTERIORS,BERG,DRYWALL,FIZ DATA CENTER,2024-07-22 07:00,2024-08-12 17:00,2024-07-22 07:00,2024-09-23 17:00
CN.SEA5.10205,IMPACT - REMEDY - DEMO DRYWALL INCOMPLETE 8'' ON THE TOP - GL 5-10 - L1 - K LINE,Complete,SEA - 5,West Support Building,SUWS-4 - 9-6,L1 - Fndn Slab,DS/AD INTERIORS,,DRYWALL,FIZ DATA CENTER,2024-05-28 07:00,2024-06-03 17:00,2024-06-20 07:00,2024-07-30 17:00
CN.SEA5.10255,IMPACT - REMEDY - TAPE & FINISH DRYWALL - SEA5 FIZ - GL 3-5 - C LINE - L1,Complete,SEA - 5,West Support Building,SUES-5 - 6-1 - FIZ - GL A -E,L1 - Fndn Slab,DS/AD INTERIORS,CHERRY COATING,DRYWALL,FIZ DATA CENTER,2024-08-19 07:00,2024-08-22 17:00,2024-08-16 07:00,2024-08-19 07:00
CN.SEA5.10245,IMPACT - REMEDY - FRAME & DRYWALL - SEA5 FIZ - GL 3-5 - C LINE - L1,Complete,SEA - 5,West Support Building,SUES-5 - 6-1 - FIZ - GL A -E,L1 - Fndn Slab,DS/AD INTERIORS,BERG,DRYWALL,FIZ DATA CENTER,2024-07-15 07:00,2024-08-02 17:00,2024-07-15 07:00,2024-08-15 17:00
CN.SEA5.10295,DEMO DRYWALL - INSTALL GOAL POSTS - ELEVATOR 22 - SEA5 - GL 6-1 - L2,Complete,SEA - 5,West Support Building,SUES-5 - 6-1 - FIZ - GL A -E,,ELEVATOR,BERG,DRYWALL,,2024-08-06 07:00,2024-08-09 17:00,2024-08-06 07:00,2024-08-12 17:00
CN.SEA5.10316,IMPACT - REMEDY - DEMOLISH SCAFFODLING & DRYWALL L - 1 LINE - L3 - C-E,Complete,SEA - 5,West Support Building,FIZ3 (East Inner) GL G-E,L3 / Waffle Slab Level,FA/TEM LAB,BERG,DRYWALL,FIZ DATA CENTER,2024-06-24 07:00,2024-08-01 17:00,2024-06-24 07:00,2024-08-01 17:00
CN.SEA5.10610,latcon - INSTALL ELEVATOR HSS STEEL DOOR FRONTS - ELEVATOR 22 - 5 per front,Complete,SEA - 5,West Support Building,SUES-5 - 6-1 - FIZ - GL A -E,,ELEVATOR,W&W,DRYWALL,,2025-05-13 07:00,2025-06-18 17:00,2025-05-19 07:00,2025-07-03 17:00
CN.SEA5.10780,IMPACT - Scaffold obstruction 2nd layer of drywall - SUE - Level 1 - B/3-4,Complete,SEA - 5,West Support Building,B3 - Area 10 (Gridlines 24-27),L1 - Fndn Slab,BUNKER ROOM,CHERRY COATING,DRYWALL,FIZ DATA CENTER,2024-10-14 07:00,2024-10-21 17:00,2024-08-19 07:00,2024-11-20 17:00
CN.AB.AR.7810,FINISH DRYWALL & FINISHES - AIRLOCK 22,Complete,SEA - 5,East Support Building,SUES-5 - 6-1 - FIZ - GL A -E,L3 / Waffle Slab Level,AIRLOCKS & VESTABLES,CHERRY COATING,DRYWALL,AMBER CARO,2025-02-04 07:00,2025-02-12 17:00,2025-02-04 07:00,2025-08-15 17:00
CN.AB.AR.8400,FINISH DRYWALL & FINISHES - VESTIBULE 22,Complete,SEA - 5,East Support Building,SUES-5 - 6-1 - FIZ - GL A -E,L3 / Waffle Slab Level,AIRLOCKS & VESTABLES,CHERRY COATING,DRYWALL,AMBER CARO,2025-09-25 07:00,2025-09-26 17:00,2025-09-25 07:00,2025-09-26 17:00
CN.SWB5.10890,CEILING STUD FRAME FIX W/ PROPER SPACING - NE - BREEZEWAY - (removal & install framing),Complete,SEA - 5,East Support Building,NORTH EAST PENTHOUSE,EXTERIOR SKIN,,KOVACH,INSULATED METAL PANELS,SEAN MONK,2025-09-04 07:00,2025-09-13 17:00,2025-09-04 07:00,2025-09-07 17:00
CN.SEB1.1110,PH1- AD STEEL FRAME INSTALL - SEB-1 fab side - (South crane moves here),Complete,SEB - 1,East Support Building,SUEN-1 - 19-22,DS/AD,,,Steel Erection,SEAN MONK,2023-10-10 13:00,2023-10-13 15:00,2023-10-04 13:00,2023-10-08 08:00
CN.AB.AR.3880,TAPE & FINISH DRYWALL - MECHANICAL ROOM 3 CENTRAL - SEB1 - GL 19-22 - C-A - L1,Complete,SEB - 1,East Support Building,SUEN-1 - 19-22,L1 - Fndn Slab,MECH RM 3,CHERRY COATING,DRYWALL,AMBER CARO,2024-06-28 07:00,2024-07-08 17:00,2024-06-28 07:00,2024-07-05 17:00
CN.AB.AR.4340,DRYWALL 2 SIDE - MECHANICAL ROOM 3 CENTRAL - SEB1 - GL 19-22 - C-A - L1,Complete,SEB - 1,East Support Building,SUEN-1 - 19-22,L1 - Fndn Slab,MECH RM 3,BERG,DRYWALL,AMBER CARO,2024-06-17 07:00,2024-06-24 17:00,2024-06-17 07:00,2024-06-22 17:00
CN.AB.AR.4350,DRYWALL & INSULATION (1 side) (INT) - MECHANICAL ROOM 3 CENTRAL - SEB1 - GL 19-22 - C-A - L1,Complete,SEB - 1,East Support Building,SUEN-1 - 19-22,L1 - Fndn Slab,MECH RM 3,BERG,DRYWALL,AMBER CARO,2024-03-22 07:00,2024-03-27 17:00,2024-03-08 07:00,2024-04-09 17:00
CN.SEB1.1410,PH1- DS STEEL FRAME INSTALL - SEB-1 Comeback Sup Side,Complete,SEB - 1,East Support Building,SUEN-1 - 19-22,DS/AD,,,Steel Erection,SEAN MONK,2023-10-09 08:00,2023-10-12 10:00,2023-10-09 08:00,2023-10-12 10:00
CN.SEB1.3810,TAPE & FINISH DRYWALL  - SEB1- GL 19-22 -  L3 - C-A - ELECTRICAL ROOM 2,Complete,SEB - 1,East Support Building,SUEN-1 - 19-22,L3 / Waffle Slab Level,ELECTRIC RM 2,,DRYWALL,AMBER CARO,2024-03-23 08:00,2024-03-27 08:00,2024-03-07 00:00,2024-03-11 00:00
CN.SEB1.4320,DRYWALL 2 SIDE - SEB1- GL 19-22 - L3 - C-A - ELECTRICAL ROOM 2,Complete,SEB - 1,East Support Building,SUEN-1 - 19-22,L3 / Waffle Slab Level,ELECTRIC RM 2,,DRYWALL,AMBER CARO,2024-02-06 13:00,2024-02-11 13:00,2024-02-06 13:00,2024-03-08 16:00
CN.SEB1.4330,DRYWALL & INSULATION (1 side) (INT) - SEB1- GL 19-22 - L3 - C-A- ELECTRICAL ROOM 2,Complete,SEB - 1,East Support Building,SUEN-1 - 19-22,L3 / Waffle Slab Level,ELECTRIC RM 2,,DRYWALL,AMBER CARO,2024-01-04 13:00,2024-01-10 11:00,2024-01-04 13:00,2024-01-08 17:00
CN.SEB1.1121,REMEDY - TAPE & FINISH DRYWALL - SEB1- GL 19-22 -  L2 - D LINE,Complete,SEB - 1,West Support Building,SUEN-1 - 19-22,L2 - SubFab Level,DS/AD INTERIORS,CHERRY COATING,DRYWALL,FIZ DATA CENTER,2024-08-23 07:00,2024-08-27 17:00,2024-08-11 07:00,2024-08-13 17:00
CN.SEB1.1091,DRYWALL 2 SIDE- SEB1- GL 19-22 - L2 - D LINE,Complete,SEB - 1,West Support Building,SUEN-1 - 19-22,L2 - SubFab Level,DS/AD INTERIORS,,DRYWALL,FIZ DATA CENTER,2024-02-26 07:00,2024-03-01 17:00,2024-02-29 07:00,2024-03-01 11:00
CN.SEB1.1061,DRYWALL & INSULATION (1 side) (INT)- SEB1- GL 19-22 - L2 D LINE,Complete,SEB - 1,West Support Building,SUEN-1 - 19-22,L2 - SubFab Level,DS/AD INTERIORS,,DRYWALL,FIZ DATA CENTER,2024-02-12 07:00,2024-02-16 15:00,2024-02-12 07:00,2024-02-16 15:00
CN.SEB1.1001,TEMP WALLS Framing and Drywall - SEB1- GL 19-22 - L3 - C-A,Complete,SEB - 1,,SUEN-1 - 19-22,L3 / Waffle Slab Level,ELECTRIC RM 2,,DRYWALL,,2023-10-13 08:00,2023-10-17 08:00,2023-10-13 08:00,2023-12-26 11:00
CN.SEB1.1201,TAPE & FINISH DRYWALL - SEB1 - GL 19-22 - D LINE - L3,Complete,SEB - 1,West Support Building,SUEN-1 - 19-22,L3 / Waffle Slab Level,DS/AD INTERIORS,CHERRY COATING,DRYWALL,FIZ DATA CENTER,2024-05-28 07:00,2024-06-03 17:00,2024-05-28 07:00,2024-06-01 17:00
CN.SEB1.1191,DRYWALL 2 SIDE - SEB1 - GL 20-22 - D LINE - L3,Complete,SEB - 1,West Support Building,SUEN-1 - 19-22,L3 / Waffle Slab Level,DS/AD INTERIORS,BERG,DRYWALL,FIZ DATA CENTER,2024-05-06 07:00,2024-05-10 17:00,2024-04-26 07:00,2024-05-15 17:00
CN.SEB1.1181,DRYWALL & INSULATION (1st layer) (INT) - SEB1- GL 19-22 - L3 - D LINE,Complete,SEB - 1,West Support Building,SUEN-1 - 19-22,L3 / Waffle Slab Level,DS/AD INTERIORS,,DRYWALL,FIZ DATA CENTER,2024-03-18 07:00,2024-03-20 11:00,2024-03-11 00:00,2024-03-18 00:00
CN.SEB1.1131,TAPE & FINISH DRYWALL - SEB1 - GL 19-22 - D LINE - L1,Complete,SEB - 1,West Support Building,SUEN-1 - 19-22,L1 - Fndn Slab,DS/AD INTERIORS,CHERRY COATING,DRYWALL,FIZ DATA CENTER,2024-04-04 07:00,2024-04-12 17:00,2024-04-04 07:00,2024-04-11 17:00
CN.SEB1.1151,PRIMER & PAINT DRYWALL -  GL 19-22 - D LINE - L1,Complete,SEB - 1,West Support Building,SUEN-1 - 19-22,L1 - Fndn Slab,DS/AD INTERIORS,FINISH PAINT,TBD Architectural Finishes,FIZ DATA CENTER,2024-10-25 07:00,2024-10-29 17:00,2024-10-25 07:00,2024-10-28 17:00
CN.SEB1.1101,DRYWALL 2 SIDE - SEB1 - GL 19-22 - D LINE - L1,Complete,SEB - 1,West Support Building,SUEN-1 - 19-22,L1 - Fndn Slab,DS/AD INTERIORS,BERG,DRYWALL,FIZ DATA CENTER,2024-03-27 07:00,2024-04-02 17:00,2024-03-27 07:00,2024-04-01 17:00
CN.SEB1.1071,DRYWALL & INSULATION (1 side) (INT) - SEB1 - GL 19-22 - L1 D LINE,Complete,SEB - 1,West Support Building,SUEN-1 - 19-22,L1 - Fndn Slab,DS/AD INTERIORS,,DRYWALL,FIZ DATA CENTER,2023-12-01 07:00,2023-12-05 15:00,2023-12-01 07:00,2024-01-04 13:00
CN.SEB1.6260,Drywall Clips & AMTS Installs Support Beams - SEB1- GL 19-22 - D LINE L4,Complete,SEB - 1,,SUEN-1 - 19-22,L4 - SUP Roof - FAB Roof,DS/AD INTERIORS,,Fireproofing,,2024-03-23 08:00,2024-03-30 10:00,2024-03-04 00:00,2024-03-11 00:00
CN.SEB1.7450,REMEDY - TAPE & FINISH DRYWALL - SEB2 - GL 22-25 - D LINE - L2,Complete,SEB - 1,West Support Building,SUEN-2 - 22-25,L2 - SubFab Level,DS/AD INTERIORS,CHERRY COATING,DRYWALL,FIZ DATA CENTER,2024-08-16 07:00,2024-08-20 17:00,2024-08-14 07:00,2024-08-16 17:00
CN.SEB1.7420,REMEDY - FRAME & DRYWALL (INT) - SEB2 - GL 22-25 - D LINE - L2,Complete,SEB - 1,West Support Building,SUEN-2 - 22-25,L2 - SubFab Level,DS/AD INTERIORS,BERG,DRYWALL,FIZ DATA CENTER,2024-06-17 07:00,2024-06-21 17:00,2024-06-17 07:00,2024-08-02 17:00
CN.SEB1.8940,REMEDY - DEMO DRYWALL (INT)- SEB1- GL 19-22 -  L2 - D LINE,Complete,SEB - 1,West Support Building,SUEN-1 - 19-22,L2 - SubFab Level,DS/AD INTERIORS,,DRYWALL,FIZ DATA CENTER,2024-06-03 07:00,2024-06-10 17:00,2024-06-01 07:00,2024-06-06 17:00
CN.SEB1.8950,REMEDY - FRAME & DRYWALL- SEB1- GL 19-22 -  L2 - D LINE,Complete,SEB - 1,West Support Building,SUEN-1 - 19-22,L2 - SubFab Level,DS/AD INTERIORS,BERG,DRYWALL,FIZ DATA CENTER,2024-06-17 07:00,2024-06-27 17:00,2024-06-17 07:00,2024-08-06 17:00
CN.SEB1.10060,REMEDY - TAPE & FINISH DRYWALL - SEB2 - GL 20-25 - C LINE - L2,Not Started,SEB - 1,West Support Building,SUEN-2 - 22-25,L2 - SubFab Level,DS/AD INTERIORS,CHERRY COATING,DRYWALL,FIZ DATA CENTER,2025-12-08 07:00,2025-12-10 17:00,,
CN.SEB1.10050,REMEDY - FRAME & DRYWALL (INT) - SEB2 - GL 20-25 - C LINE - L2,Not Started,SEB - 1,West Support Building,SUEN-2 - 22-25,L2 - SubFab Level,DS/AD INTERIORS,BERG,DRYWALL,FIZ DATA CENTER,2025-12-01 07:00,2025-12-05 17:00,,
CN.SEB2.1110,PH1- AD STEEL FRAME INSTALL - SEB-2 fab side,Complete,SEB - 2,East Support Building,SUEN-2 - 22-25,DS/AD,,,Steel Erection,SEAN MONK,2023-09-22 15:00,2023-09-25 17:00,2023-09-22 15:00,2023-09-27 11:00
CN.AB.AR.3950,TAPE & FINISH DRYWALL - MECHANICAL ROOM 3 NORTH - SEB2 - GL 22-25 - C-A - L1,Complete,SEB - 2,East Support Building,SUEN-2 - 22-25,L1 - Fndn Slab,MECH RM 2,CHERRY COATING,DRYWALL,AMBER CARO,2025-08-11 07:00,2025-08-12 17:00,2025-08-11 07:00,2025-08-22 17:00
CN.AB.AR.4360,DRYWALL 2 SIDE - MECHANICAL ROOM 3 NORTH - SEB2 - GL 22-25 - C-A - L1,Complete,SEB - 2,East Support Building,SUEN-2 - 22-25,L1 - Fndn Slab,MECH RM 2,BERG,DRYWALL,AMBER CARO,2024-11-11 07:00,2024-11-18 17:00,2024-10-18 07:00,2024-10-30 17:00
CN.AB.AR.4370,DRYWALL & INSULATION (1 side) (INT) - MECHANICAL RM 3 NORTH [LEAVEOUT AT A LINE FOR SECAI] - SEB2 - GL 22-25 - C-A - L1,Complete,SEB - 2,East Support Building,SUEN-2 - 22-25,L1 - Fndn Slab,MECH RM 2,BERG,DRYWALL,AMBER CARO,2024-03-18 07:00,2024-03-22 17:00,2024-03-04 07:00,2024-07-01 17:00
CN.SEB2.1400,PH1- DS STEEL FRAME INSTALL - SEB-2 Comeback Sup Side,Complete,SEB - 2,East Support Building,SUEN-2 - 22-25,DS/AD,,,Steel Erection,SEAN MONK,2023-09-29 07:00,2023-10-02 09:00,2023-09-29 07:00,2023-10-03 13:00
CN.SEB23810,TAPE & FINISH DRYWALL - ELECTRICAL ROOM 2 - SEB2 - GL 22-25 - C-A - L3,Complete,SEB - 2,East Support Building,SUEN-2 - 22-25,L3 / Waffle Slab Level,ELECTRIC RM 2,CHERRY COATING,DRYWALL,AMBER CARO,2024-11-11 07:00,2024-11-18 17:00,2024-09-16 07:00,2024-09-23 07:00
CN.SEB24320,DRYWALL 2 SIDE - ELECTRICAL ROOM 2 - SEB2 - GL 22-25 - C-A - L3,Complete,SEB - 2,East Support Building,SUEN-2 - 22-25,L3 / Waffle Slab Level,ELECTRIC RM 2,BERG,DRYWALL,AMBER CARO,2024-11-04 07:00,2024-11-11 17:00,2024-07-29 07:00,2024-09-11 17:00
CN.SEB24330,DRYWALL & INSULATION (1 side) (INT) - SEB2 GL 22-25 - L3 C-A - ELECTRICAL ROOM 2,Complete,SEB - 2,East Support Building,SUEN-2 - 22-25,L3 / Waffle Slab Level,ELECTRIC RM 2,,DRYWALL,AMBER CARO,2024-03-17 07:00,2024-03-20 17:00,2024-03-12 07:00,2024-03-15 11:00
CN.SEB21091,TAPE & FINISH DRYWALL - SEB2 GL 22-25 - L1 D LINE,Complete,SEB - 2,West Support Building,SUEN-2 - 22-25,L1 - Fndn Slab,DS/AD INTERIORS,CHERRY COATING,DRYWALL,FIZ DATA CENTER,2024-09-27 07:00,2024-10-04 17:00,2024-09-07 07:00,2024-09-10 17:00
CN.SEB21101,PRIMER & PAINT DRYWALL -  GL 22-25 - D LINE-L1,Complete,SEB - 2,West Support Building,SUEN-2 - 22-25,L1 - Fndn Slab,DS/AD INTERIORS,FINISH PAINT,TBD Architectural Finishes,FIZ DATA CENTER,2024-10-28 07:00,2024-10-31 17:00,2024-10-28 07:00,2024-10-31 17:00
CN.SEB21081,DRYWALL 2 SIDE - SEB2 GL 22-25 - L1 D LINE,Complete,SEB - 2,West Support Building,SUEN-2 - 22-25,L1 - Fndn Slab,DS/AD INTERIORS,BERG,DRYWALL,FIZ DATA CENTER,2024-09-20 07:00,2024-09-27 17:00,2024-07-15 07:00,2024-08-27 17:00
CN.SEB21071,DRYWALL & INSULATION (1 side) (INT) - SEB2 GL 22-25 - L1 D LINE,Complete,SEB - 2,West Support Building,SUEN-2 - 22-25,L1 - Fndn Slab,DS/AD INTERIORS,,DRYWALL,FIZ DATA CENTER,2023-11-30 15:00,2023-12-05 13:00,2023-11-30 15:00,2023-12-11 11:00
CN.SEB21001,TEMP WALLS Framing and Drywall - SEB2 GL 22-25 - L3 C-A,Complete,SEB - 2,,SUEN-2 - 22-25,L3 / Waffle Slab Level,ELECTRIC RM 2,,DRYWALL,,2023-10-16 08:00,2023-10-20 08:00,2023-10-13 08:00,2024-01-21 11:00
CN.SEB21151,TAPE & FINISH DRYWALL - SEB2 - GL 22-25 - D LINE - L3,Complete,SEB - 2,West Support Building,SUEN-2 - 22-25,L3 / Waffle Slab Level,DS/AD INTERIORS,CHERRY COATING,DRYWALL,FIZ DATA CENTER,2024-05-17 07:00,2024-05-23 17:00,2024-05-17 07:00,2024-05-21 17:00
CN.SEB21141,DRYWALL 2 SIDE - SEB2 - GL 22-25 - D LINE - L3,Complete,SEB - 2,West Support Building,SUEN-2 - 22-25,L3 / Waffle Slab Level,DS/AD INTERIORS,BERG,DRYWALL,FIZ DATA CENTER,2024-05-13 07:00,2024-05-17 17:00,2024-04-29 07:00,2024-05-13 17:00
CN.SEB21131,DRYWALL & INSULATION (1st layer) (INT) - SEB2 GL 22-25 - L3 D LINE,Complete,SEB - 2,West Support Building,SUEN-2 - 22-25,L3 / Waffle Slab Level,DS/AD INTERIORS,,DRYWALL,FIZ DATA CENTER,2024-03-17 07:00,2024-03-19 11:00,2024-03-01 00:00,2024-03-14 00:00
CN.SEB55170,DEMO DRYWALL - INSTALL GOAL POSTS - BATTERY ROOM 2 - SEB2 - GL 22-25 - C-A - L3,Complete,SEB - 2,East Support Building,SUEN-2 - 22-25,L3 / Waffle Slab Level,ELECTRIC RM 2,BERG,DRYWALL,AMBER CARO,2024-08-16 07:00,2024-08-23 17:00,2024-08-05 07:00,2024-08-13 17:00
CN.SEB55390,FINISH DRYWALL & FINISHES - VESTIBULE - 19 - B-C - L3,Not Started,SEB - 2,East Support Building,SUEN-2 - 22-25,L3 / Waffle Slab Level,ELECTRIC RM 2,BERNCO,TBD Architectural Finishes,JAMES LEE,2025-11-21 07:00,2025-11-21 17:00,,
CN.SEB3.1110,PH1- AD STEEL FRAME INSTALL - SEB-3 fab side,Complete,SEB - 3,East Support Building,SUEN-3 - 25-28,DS/AD,,,Steel Erection,SEAN MONK,2023-09-22 09:00,2023-09-24 13:00,2023-09-15 09:00,2023-09-17 16:00
CN.AB.AR.4020,TAPE & FINISH DRYWALL - WAFER I/O RM - SEB3 - GL 25-28 - C-A - L3,Complete,SEB - 3,East Support Building,SUEN-3 - 25-28,L3 / Waffle Slab Level,WAFER I/O RM,CHERRY COATING,DRYWALL,AMBER CARO,2024-05-06 07:00,2024-05-13 17:00,2024-05-06 07:00,2024-08-07 17:00
CN.AB.AR.4380,DRYWALL 2 SIDE - WAFER I/O RM - SEB3 - GL 25-28 - C-A - L3,Complete,SEB - 3,East Support Building,SUEN-3 - 25-28,L3 / Waffle Slab Level,WAFER I/O RM,BERG,DRYWALL,AMBER CARO,2024-04-30 07:00,2024-05-07 17:00,2024-04-30 07:00,2024-08-03 17:00
CN.AB.AR.4390,DRYWALL & INSULATION (1 side) (INT) - SEB3 - GL 25-28 - L3 - C-E - (WAFER I/O RM),Complete,SEB - 3,East Support Building,SUEN-3 - 25-28,L3 / Waffle Slab Level,WAFER I/O RM,BERG,DRYWALL,AMBER CARO,2024-04-01 15:00,2024-04-05 15:00,2024-02-01 07:00,2024-04-17 17:00
CN.SEB3.1440,PH1- DS STEEL FRAME INSTALL - SEB-3 Comeback Sup Side,Complete,SEB - 3,East Support Building,SUEN-3 - 25-28,DS/AD,,,Steel Erection,SEAN MONK,2023-09-29 09:00,2023-10-01 13:00,2023-09-20 07:00,2023-09-22 16:00
CN.SEB3R.3880,TAPE & FINISH DRYWALL - WAFER I/O - SEB3 - GL 25-28 - C-A - L1,Complete,SEB - 3,East Support Building,SUEN-3 - 25-28,L1 - Fndn Slab,WAFER I/O RM,CHERRY COATING,DRYWALL,AMBER CARO,2024-05-02 07:00,2024-05-02 17:00,2024-05-02 07:00,2024-05-07 17:00
CN.SEB3R.4340,DRYWALL 2 SIDE - WAFER I/O - SEB3 - GL 25-28 - C-A - L1,Complete,SEB - 3,East Support Building,SUEN-3 - 25-28,L1 - Fndn Slab,WAFER I/O RM,BERG,DRYWALL,AMBER CARO,2024-04-11 07:00,2024-04-17 17:00,2024-04-11 07:00,2024-04-25 17:00
CN.SEB3R.4350,DRYWALL & INSULATION (1 side) (INT) - WAFER I/O - SEB3 - GL 25-28 - C-A - L1,Complete,SEB - 3,East Support Building,SUEN-3 - 25-28,L1 - Fndn Slab,WAFER I/O RM,BERG,DRYWALL,AMBER CARO,2024-03-11 07:00,2024-03-19 17:00,2024-03-04 07:00,2024-06-01 17:00
CN.SEB3R.4730,TAPE & FINISH DRYWALL - ELECTRICAL ROOM 3 - SEB3 - GL 25-28 - C-A - L2,Complete,SEB - 3,East Support Building,SUEN-3 - 25-28,L2 - SubFab Level,Electric RM 3,CHERRY COATING,DRYWALL,AMBER CARO,2025-07-17 07:00,2025-07-23 17:00,2025-07-17 07:00,2025-07-23 17:00
CN.SEB3R.4720,DRYWALL 2 SIDE - ELECTRICAL ROOM 3 - SEB3 - GL 25-28 - C-A - L2,Complete,SEB - 3,East Support Building,SUEN-3 - 25-28,L2 - SubFab Level,Electric RM 3,BERG,DRYWALL,AMBER CARO,2025-07-10 07:00,2025-07-16 17:00,2025-07-10 07:00,2025-07-16 17:00
CN.SEB3R.4710,DRYWALL & INSULATION (1 side) (INT) - ELECTRICAL ROOM 3 - SEB3 - GL 25-28 - C-A - L2,Complete,SEB - 3,East Support Building,SUEN-3 - 25-28,L2 - SubFab Level,Electric RM 3,BERG,DRYWALL,AMBER CARO,2024-03-26 11:00,2024-04-01 11:00,2024-03-18 07:00,2024-07-15 17:00
CN.SEB31101,PRIMER & PAINT DRYWALL -  GL 25-28 - D LINE- L1,Not Started,SEB - 3,West Support Building,SUEN-3 - 25-28,L1 - Fndn Slab,DS/AD INTERIORS,FINISH PAINT,TBD Architectural Finishes,FIZ DATA CENTER,2025-11-21 07:00,2025-11-21 17:00,,
CN.SEB31041,DRYWALL & INSULATION (1 side) (INT) - SEB3 - GL 25-28 - L1 - D LINE,Complete,SEB - 3,West Support Building,SUEN-3 - 25-28,L1 - Fndn Slab,DS/AD INTERIORS,,DRYWALL,FIZ DATA CENTER,2023-11-30 07:00,2023-12-04 15:00,2023-11-30 07:00,2023-12-29 13:00
CN.SEB31011,REMEDY - DEMO DRYWALL (2hr) - SEB3 - GL 22-25-28 - D LINE - L2,Complete,SEB - 3,West Support Building,SUEN-3 - 25-28,L2 - SubFab Level,DS/AD INTERIORS,BERG,TBD Architectural Finishes,FIZ DATA CENTER,2024-05-31 07:00,2024-06-06 17:00,2024-05-23 07:00,2024-05-28 17:00
CN.SEB31091,REMEDY - TAPE & FINISH DRYWALL - SEB3 - GL 25-28 - D LINE - L2,Complete,SEB - 3,West Support Building,SUEN-3 - 25-28,L2 - SubFab Level,DS/AD INTERIORS,CHERRY COATING,DRYWALL,FIZ DATA CENTER,2024-08-16 07:00,2024-08-20 17:00,2024-08-14 07:00,2024-08-16 17:00
CN.SEB31051,REMEDY - FRAME & DRYWALL (INT) - SEB3 - GL 25-28 - D LINE - L2,Complete,SEB - 3,West Support Building,SUEN-3 - 25-28,L2 - SubFab Level,DS/AD INTERIORS,BERG,DRYWALL,FIZ DATA CENTER,2024-07-23 07:00,2024-07-31 17:00,2024-07-23 07:00,2024-08-12 17:00
CN.SEB31161,TAPE & FINISH DRYWALL - SEB3 - GL 25-28 - L3 - D LINE - L3,Complete,SEB - 3,West Support Building,SUEN-3 - 25-28,L3 / Waffle Slab Level,DS/AD INTERIORS,CHERRY COATING,DRYWALL,FIZ DATA CENTER,2024-06-17 07:00,2024-06-21 17:00,2024-06-05 07:00,2024-06-15 17:00
CN.SEB31151,DRYWALL 2 SIDE - SEB3 - GL 25-28 - L3 - D LINE - L3,Complete,SEB - 3,West Support Building,SUEN-3 - 25-28,L3 / Waffle Slab Level,DS/AD INTERIORS,BERG,DRYWALL,FIZ DATA CENTER,2024-04-18 07:00,2024-04-23 17:00,2024-04-18 07:00,2024-05-13 17:00
CN.SEB31141,DRYWALL & INSULATION (1st layer) (INT) - SEB3 - GL 25-28 - L3 - D LINE,Complete,SEB - 3,West Support Building,SUEN-3 - 25-28,L3 / Waffle Slab Level,DS/AD INTERIORS,,DRYWALL,FIZ DATA CENTER,2024-02-22 11:00,2024-02-24 15:00,2024-02-22 11:00,2024-02-24 16:00
CN.SEB3.6230,Drywall Clips & AMTS Installs Support Beams - SEB3 - GL 25-28 - D LINE - L4E,Complete,SEB - 3,East Support Building,SUEN-3 - 25-28,L4 - SUP Roof - FAB Roof,DS/AD INTERIORS,,Waterproofing - Preferred,JAMES LIVELY,2024-03-23 08:00,2024-03-30 10:00,2024-03-11 00:00,2024-03-21 00:00
CN.SEB3.6800,REMAINING FRAMING AND 1ST LAYER DRYWALL EXTERIOR install & inspect - STAIR #19 - 26/D - ALL LEVELS(),Complete,SEB - 3,East Support Building,SUEN-3 - 25-28,INTERIOR STAIR TOWER - STAIR #19 (CLEAN ROOM) - DE-SCOPED,,BERG,INSULATED METAL PANELS,JAMES LIVELY,2025-08-29 07:00,2025-09-02 17:00,2025-06-27 07:00,2025-06-27 17:00
CN.AB.AR.7360,REMAINING DRYWALL & FINISHES -WAFER I/O RM - SEB3 - GL 25-28 - C-A - L3,Not Started,SEB - 3,East Support Building,SUEN-3 - 25-28,L3 / Waffle Slab Level,WAFER I/O RM,BERG,DRYWALL,AMBER CARO,2025-12-05 07:00,2025-12-11 17:00,,
CN.SEB3R.4880,IMPACT - ALUMINIUM SLIDING DOOR -SHOP DRAWINGS & FAB - GOAL POSTS - 7A WAFER I/O - SEB3 - GL 25-28 - C-A - L1,Active,SEB - 3,East Support Building,SUEN-3 - 25-28,L1 - Fndn Slab,WAFER I/O RM,CHERRY COATING,DRYWALL,AMBER CARO,2024-09-13 07:00,2024-09-20 17:00,2024-09-13 07:00,
CN.SEB55400,FINISH REMAINING DRYWALL & FINISHES - SEB3 - GL 25-28 - T/L MAINTAINANCE RM 23 - L2,Not Started,SEB - 3,West Support Building,SUEN-3 - 25-28,L2 - SubFab Level,DS/AD INTERIORS,FINISH PAINT,TBD Architectural Finishes,FIZ DATA CENTER,2025-11-21 07:00,2025-11-21 17:00,,
CN.AB.AR.8600,REMAINING DRYWALL & FINISHES -BATTERY ROOM 2 - SEB3 - GL 25-28 - C-A - L3,Complete,SEB - 3,East Support Building,SUEN-3 - 25-28,L3 / Waffle Slab Level,WAFER I/O RM,BERG,DRYWALL,AMBER CARO,2025-09-03 07:00,2025-09-04 17:00,2025-09-03 07:00,2025-09-04 17:00
CN.SEB4.1120,PH1- AD STEEL FRAME INSTALL - SEB-4 fab side,Complete,SEB - 4,East Support Building,SUEN-4 - 28-31,DS/AD,,,Steel Erection,SEAN MONK,2023-09-05 07:00,2023-09-08 17:00,2023-09-05 07:00,2023-09-08 17:00
CN.AB.AR.4090,TAPE & FINISH DRYWALL - RETICLE RM  - SEB4 - GL 28-31 - C-A  - L3,Complete,SEB - 4,East Support Building,SUEN-4 - 28-31,L3 / Waffle Slab Level,RETICLE RM,CHERRY COATING,DRYWALL,AMBER CARO,2024-08-02 07:00,2024-08-09 17:00,2024-05-01 07:00,2024-12-10 17:00
CN.AB.AR.4400,DRYWALL 2 SIDE - RETICLE RM - SEB4 - GL 28-31 - C-A - L3,Complete,SEB - 4,East Support Building,SUEN-4 - 28-31,L3 / Waffle Slab Level,RETICLE RM,BERG,DRYWALL,AMBER CARO,2024-04-30 07:00,2024-05-10 17:00,2024-04-30 07:00,2024-08-01 17:00
CN.AB.AR.4410,DRYWALL & INSULATION (1 side) (INT) - RETICLE RM - SEB4 - GL 28-31 - C-A - L3,Complete,SEB - 4,East Support Building,SUEN-4 - 28-31,L3 / Waffle Slab Level,RETICLE RM,BERG,DRYWALL,AMBER CARO,2024-04-08 07:00,2024-04-15 17:00,2024-02-01 07:00,2024-07-23 17:00
CN.SEB4.1470,PH1- DS STEEL FRAME INSTALL - SEB-4 Comeback Sup Side,Complete,SEB - 4,East Support Building,SUEN-4 - 28-31,DS/AD,,,Steel Erection,SEAN MONK,2023-09-19 13:00,2023-09-23 15:00,2023-09-11 13:00,2023-09-15 16:00
CN.SEB4.3880,TAPE & FINISH DRYWALL - SEB4 - GL 28-31 - L1 C-A  PR RM,Complete,SEB - 4,East Support Building,SUEN-4 - 28-31,L1 - Fndn Slab,PR RM,,DRYWALL,AMBER CARO,2024-01-26 07:00,2024-01-29 17:00,2024-01-18 07:00,2024-01-20 11:00
CN.SEB4.4340,DRYWALL 2 SIDE - SEB4 - GL 28-31 - L1 C-A PR RM,Complete,SEB - 4,East Support Building,SUEN-4 - 28-31,L1 - Fndn Slab,PR RM,,DRYWALL,AMBER CARO,2024-01-22 07:00,2024-01-25 17:00,2024-01-15 07:00,2024-01-17 17:00
CN.SEB4.4350,DRYWALL & INSULATION (1 side) (INT) - SEB4 - GL 28-31 - L1 C-A PR RM,Complete,SEB - 4,East Support Building,SUEN-4 - 28-31,L1 - Fndn Slab,PR RM,,DRYWALL,AMBER CARO,2024-01-07 10:00,2024-01-13 12:00,2024-01-07 10:00,2024-01-11 11:00
CN.SEB44840,TAPE & FINISH DRYWALL - ELECTRICAL ROOM 3 NORTH - SEB4 - GL 28-31 - C-A - L2,Complete,SEB - 4,East Support Building,SUEN-4 - 28-31,L2 - SubFab Level,Electric RM 3,CHERRY COATING,DRYWALL,AMBER CARO,2025-06-16 07:00,2025-06-20 17:00,2025-06-16 07:00,2025-06-20 17:00
CN.SEB44830,DRYWALL 2 SIDE - ELECTRICAL ROOM 3 NORTH - SEB4 - GL C-D/ 27-30 - C-A - L2,Complete,SEB - 4,East Support Building,SUEN-4 - 28-31,L2 - SubFab Level,Electric RM 3,BERG,DRYWALL,AMBER CARO,2025-06-10 07:00,2025-06-16 17:00,2025-06-10 07:00,2025-06-16 17:00
CN.SEB44820,DRYWALL & INSULATION (1 side) - SEB4 - GL 28-31 - L2 C-A ELECTRICAL ROOM 3 NORTH [LEAVEOUT FOR REMEDITATION],Complete,SEB - 4,East Support Building,SUEN-4 - 28-31,L2 - SubFab Level,Electric RM 3,,DRYWALL,AMBER CARO,2024-03-28 09:00,2024-04-03 09:00,2024-03-18 07:00,2024-04-12 17:00
CN.SEB4.1081,TAPE & FINISH DRYWALL - SEB4 - GL 28-31 - L1 D LINE,Complete,SEB - 4,West Support Building,SUEN-4 - 28-31,L1 - Fndn Slab,DS/AD INTERIORS,,DRYWALL,FIZ DATA CENTER,2024-02-09 08:00,2024-02-13 08:00,2024-02-09 08:00,2024-03-07 00:00
CN.SEB4.1101,PRIMER & PAINT DRYWALL -  GL 28-31 - D LINE - L1,Not Started,SEB - 4,West Support Building,SUEN-4 - 28-31,L1 - Fndn Slab,DS/AD INTERIORS,FINISH PAINT,TBD Architectural Finishes,,2025-11-21 07:00,2025-11-21 17:00,,
CN.SEB4.1061,DRYWALL 2 SIDE- SEB4 - SEB4 - GL 28-31 - L1 D LINE,Complete,SEB - 4,West Support Building,SUEN-4 - 28-31,L1 - Fndn Slab,DS/AD INTERIORS,,DRYWALL,FIZ DATA CENTER,2024-02-08 07:00,2024-02-11 17:00,2024-02-01 07:00,2024-02-03 11:00
CN.SEB4.1041,DRYWALL & INSULATION (1 side) (INT) - SEB4 - GL 28-31 - L1 D LINE(Waiting On Stair Install),Complete,SEB - 4,West Support Building,SUEN-4 - 28-31,L1 - Fndn Slab,DS/AD INTERIORS,,DRYWALL,FIZ DATA CENTER,2023-12-11 07:00,2023-12-14 11:00,2023-12-11 07:00,2023-12-14 11:00
CN.SEB4.1011,REMEDY - DEMO DRYWALL (2hr) - SEB4 - GL 28-31 - D LINE - L2,Complete,SEB - 4,West Support Building,SUEN-4 - 28-31,L2 - SubFab Level,DS/AD INTERIORS,BERG,TBD Architectural Finishes,FIZ DATA CENTER,2024-06-10 07:00,2024-06-18 17:00,2024-05-23 07:00,2024-05-28 17:00
CN.SEB4.1091,REMEDY - TAPE & FINISH DRYWALL - SEB4 - GL 28-31 - D LINE - L2,Complete,SEB - 4,West Support Building,SUEN-4 - 28-31,L2 - SubFab Level,DS/AD INTERIORS,CHERRY COATING,DRYWALL,FIZ DATA CENTER,2024-08-23 07:00,2024-08-27 17:00,2024-08-16 07:00,2024-08-19 17:00
CN.SEB4.1051,REMEDY - FRAME & DRYWALL (INT) - SEB4 - GL 28-31 - D LINE - L2,Complete,SEB - 4,West Support Building,SUEN-4 - 28-31,L2 - SubFab Level,DS/AD INTERIORS,BERG,DRYWALL,FIZ DATA CENTER,2024-07-22 07:00,2024-07-30 17:00,2024-07-22 07:00,2024-08-12 17:00
CN.SEB4.1191,TAPE & FINISH DRYWALL - SEB4 - GL 28-31 - D LINE - L3,Complete,SEB - 4,West Support Building,SUEN-4 - 28-31,L3 / Waffle Slab Level,DS/AD INTERIORS,CHERRY COATING,DRYWALL,FIZ DATA CENTER,2024-06-21 07:00,2024-06-27 17:00,2024-06-21 07:00,2024-06-25 17:00
CN.SEB4.1181,DRYWALL 2 SIDE - SEB4 - GL 28-31 - D LINE - L3,Complete,SEB - 4,West Support Building,SUEN-4 - 28-31,L3 / Waffle Slab Level,DS/AD INTERIORS,BERG,DRYWALL,FIZ DATA CENTER,2024-05-17 07:00,2024-05-23 17:00,2024-04-29 07:00,2024-06-20 17:00
CN.SEB4.1171,DRYWALL & INSULATION (1st layer) (INT) - SEB4 - GL 28-31 - L3 - D LINE,Complete,SEB - 4,West Support Building,SUEN-4 - 28-31,L3 / Waffle Slab Level,DS/AD INTERIORS,,DRYWALL,FIZ DATA CENTER,2024-03-25 08:00,2024-03-29 08:00,2024-03-25 08:00,2024-03-29 09:00
CN.SEB4.1121,INSTALL DRYWALL & FIRE CAULKING (SHAFT LINER) SHAFT - ELEVATOR 19 - ALL LEVELS,Complete,SEB - 4,East Support Building,SUEN-4 - 28-31,,ELEVATOR,BERG,DRYWALL,JAMES LIVELY,2025-01-20 07:00,2025-02-04 17:00,2025-01-20 07:00,2025-08-15 17:00
CN.SEB4.6360,Drywall Clips & AMTS Installs Support Beams - SEB4 - GL 28-31 - D LINE L4,Complete,SEB - 4,,SUEN-4 - 28-31,L4 - SUP Roof - FAB Roof,DS/AD INTERIORS,SECAI,Fireproofing,,2024-03-25 07:00,2024-04-03 09:00,2024-03-16 07:00,2024-03-27 17:00
CN.SEB4.9020,INSTALL FRAMING/DRYWALL/TAPE+FLOAT - ELEVATOR 19 - Lvl 3 only remaining,Active,SEB - 4,East Support Building,SUEN-4 - 28-31,,ELEVATOR,BERG,DRYWALL,JAMES LIVELY,2025-01-20 07:00,2025-02-04 17:00,2024-12-23 07:00,
CN.SEB4.9030,SECAI - INSTALL ELEVATOR DOOR JAMBS - ELEVATOR 19 - WAITING FOR SCHEDULE - (9/13 ETA turnover),Complete,SEB - 4,East Support Building,SUEN-4 - 28-31,,ELEVATOR,W&W,DRYWALL,JAMES LIVELY,2025-09-04 07:00,2025-09-17 17:00,2025-08-13 11:51,2025-08-18 17:00
CN.SEB4.9040,INSTALL DRYWALL & FIRE CAULKING - DOOR FRONTS - ELEVATOR 19,Complete,SEB - 4,East Support Building,SUEN-4 - 28-31,,ELEVATOR,W&W,DRYWALL,JAMES LIVELY,2025-09-18 07:00,2025-10-09 17:00,2025-08-20 07:00,2025-08-29 17:00
CN.SEB4.9050,INSTALL PERMANENT DOOR & FRAME - MECHANICAL ROOM - FAB116526A - ELEVATOR 19,Not Started,SEB - 4,East Support Building,SUEN-4 - 28-31,,ELEVATOR,W&W,DRYWALL,JAMES LIVELY,2025-12-09 07:00,2025-12-10 17:00,,
CN.SEB4.9070,TAPE & FLOAT - SHAFT & DOOR FRONTS  - ELEVATOR 19,Complete,SEB - 4,East Support Building,SUEN-4 - 28-31,,ELEVATOR,W&W,DRYWALL,JAMES LIVELY,2025-09-02 07:00,2025-09-08 17:00,2025-09-02 07:00,2025-09-05 17:00
CN.SEB4.9090,INSTALL PERMANENT DOOR & FRAME - MAN DOOR - FAB126502F - ELEVATOR 19,Not Started,SEB - 4,East Support Building,SUEN-4 - 28-31,,ELEVATOR,W&W,DRYWALL,JAMES LIVELY,2025-11-21 07:00,2025-11-24 17:00,,
CN.SEB4.9100,IMPACT - L2 & L3 DRYWALL LOCATION RFI 1584 - ELEVATOR 19,Complete,SEB - 4,East Support Building,SUEN-4 - 28-31,,ELEVATOR,BERG,DRYWALL,JAMES LIVELY,2024-10-21 07:00,2024-11-08 17:00,2024-10-21 07:00,2024-10-29 17:00
CN.AB.AR.7777,IMPACT - RELOCATE A -LINE DRYWALL - RETICLE RM - SEB4 - GL 28-31 - C-A - L3,Complete,SEB - 4,East Support Building,SUEN-4 - 28-31,L3 / Waffle Slab Level,RETICLE RM,CHERRY COATING,DRYWALL,AMBER CARO,2024-11-25 07:00,2024-12-03 17:00,2024-11-25 07:00,2024-12-07 17:00
CN.SEB55420,IMPACT - SECAI WALL OPENING IMPENDING DRYWALL - ELECTRICAL ROOM 3 NORTH - SEB4 - GL 28-31 - C-A - L2,Complete,SEB - 4,East Support Building,SUEN-4 - 28-31,L2 - SubFab Level,Electric RM 3,BERG,DRYWALL,AMBER CARO,2024-12-03 07:00,2024-12-10 17:00,2025-01-06 07:00,2025-06-16 07:00
CN.SEB5.1120,PH1- AD STEEL FRAME INSTALL - SEB-5 fab side,Complete,SEB - 5,East Support Building,SUEN-5 - 31-33,DS/AD,,,Steel Erection,SEAN MONK,2023-08-21 07:00,2023-08-26 15:00,2023-08-17 15:00,2023-08-24 11:00
CN.AB.AR.4160,TAPE & FINISH DRYWALL - RETICLE ROOM - SEB5 - GL 31-33 - C-A - L3,Complete,SEB - 5,East Support Building,SUEN-5 - 31-33,L3 / Waffle Slab Level,RETICLE RM,CHERRY COATING,DRYWALL,AMBER CARO,2025-04-24 07:00,2025-04-25 17:00,2025-04-24 07:00,2025-04-25 17:00
CN.AB.AR.4420,DRYWALL 2 SIDE - RETICLE ROOM - SEB5 - GL 31-33 - C-A - L3 (Impacted by Temp Opening by SECAI),Complete,SEB - 5,East Support Building,SUEN-5 - 31-33,L3 / Waffle Slab Level,RETICLE RM,BERG,DRYWALL,AMBER CARO,2024-11-04 07:00,2024-11-14 17:00,2024-05-09 07:00,2024-09-16 07:00
CN.AB.AR.4430,DRYWALL & INSULATION (1 side) (INT) - RETICLE ROOM - SEB5 - GL 31-33 - C-A - L3,Complete,SEB - 5,East Support Building,SUEN-5 - 31-33,L3 / Waffle Slab Level,RETICLE RM,BERG,DRYWALL,AMBER CARO,2024-04-05 15:00,2024-04-15 15:00,2024-03-11 07:00,2024-05-08 17:00
CN.SWB5.1720,IMPACT - SECAI DEMO TEMP DOOR FRAMES - RE-INSTALL DOOR FRAMES & DOORS - MCC/ IO ROOM - SE PENTHOUSE,Active,SEB - 5,East Support Building,SOUTH EAST PENTHOUSE,L4 - SUP Roof - FAB Roof,,DOORS AND HARDWARE,TBD Architectural Finishes,SEAN MONK,2024-10-10 07:00,2024-10-11 17:00,2024-09-26 07:00,
CN.SWB5.1740,PH1- INSTALL EXTERIOR DOORS / LOUVERS - SE PENTHOUSE - MCC ROOF ROOF,Not Started,SEB - 5,East Support Building,SOUTH EAST PENTHOUSE,EXTERIOR SKIN,,DOORS AND HARDWARE,TBD Architectural Finishes,SEAN MONK,2025-11-24 07:00,2025-11-26 17:00,,
CN.SWB5.1770,PH1- INSTALL INTERIOR DRYWALL - SE PENTHOUSE - GL 3-5 C-D,Complete,SEB - 5,East Support Building,SOUTH EAST PENTHOUSE,L4 - SUP Roof - FAB Roof,,BERG,DRYWALL,SEAN MONK,2024-06-04 07:00,2024-06-10 17:00,2024-06-04 07:00,2024-07-31 17:00
CN.SEB5.1450,PH1- DS STEEL FRAME INSTALL - SEB-5 Comeback Sup Side,Complete,SEB - 5,East Support Building,SUEN-5 - 31-33,DS/AD,,,Steel Erection,SEAN MONK,2023-08-31 11:00,2023-09-06 09:00,2023-08-24 11:00,2023-09-02 09:00
CN.SEB5.4250,DRYWALL & INSULATION (1 side) - SEB-5 - L1 only,Complete,SEB - 5,East Support Building,SUEN-5 - 31-33,L1 - Fndn Slab,,,DRYWALL,AMBER CARO,2023-10-16 07:00,2023-10-19 17:00,2023-10-16 07:00,2023-10-20 17:00
CN.SEB54671,H FRAME FOR ROLL UP DOOR - SEB5 - GL 31-33 - C-A - L1,Not Started,SEB - 5,East Support Building,SUEN-5 - 31-33,L1 - Fndn Slab,,PATRIOT,TBD Architectural Finishes,AMBER CARO,2025-11-21 07:00,2025-11-21 17:00,,
CN.SEB5.4670,INSTALL ROLL UP DOORS (MEP ROUGH IN NOT INCLUDED) - SEA5 - GL 31-33 - C-A - L1,Not Started,SEB - 5,East Support Building,SUEN-5 - 31-33,EXTERIOR SKIN,,PATRIOT,TBD Architectural Finishes,AMBER CARO,2025-11-26 07:00,2025-11-26 17:00,,
CN.SEB5R.4090,TAPE & FINISH DRYWALL - SEA5 - GL 31-33 - L2 - C-A - BATTERY ROOM 4,Complete,SEB - 5,East Support Building,SUEN-5 - 31-33,L2 - SubFab Level,BATT RM 4,,DRYWALL,AMBER CARO,2024-04-01 07:00,2024-04-05 17:00,2024-03-30 07:00,2024-04-04 17:00
CN.SEB5R.4400,DRYWALL 2 SIDE - SEA5 - GL 31-33 - L2 - C-A - BATTERY ROOM 4 [AWAITING SPRAYPAINT TO CLOSE-IN WALL],Complete,SEB - 5,East Support Building,SUEN-5 - 31-33,L2 - SubFab Level,BATT RM 4,ROLLING PLAINS,DRYWALL,AMBER CARO,2024-03-25 07:00,2024-03-29 17:00,2024-03-25 07:00,2024-03-29 17:00
CN.SEB5R.4410,DRYWALL & INSULATION (1 side) (INT) - SEA5 - GL 31-33 - L2 - C-A - BATTERY ROOM 4,Complete,SEB - 5,East Support Building,SUEN-5 - 31-33,L2 - SubFab Level,BATT RM 4,,DRYWALL,AMBER CARO,2023-11-27 07:00,2023-12-01 17:00,2023-11-27 07:00,2023-12-01 17:00
CN.SEB5.1181,TAPE & FINISH DRYWALL - SEA5 - GL 31-33 - L1 - D LINE,Complete,SEB - 5,West Support Building,SUEN-5 - 31-33,L1 - Fndn Slab,DS/AD INTERIORS,,DRYWALL,FIZ DATA CENTER,2024-01-26 07:00,2024-01-29 17:00,2023-11-22 07:00,2023-11-28 11:00
CN.SEB5.1191,PRIMER & PAINT DRYWALL -  GL 31-33 - D LINE - L1,Not Started,SEB - 5,West Support Building,SUEN-5 - 31-33,L1 - Fndn Slab,DS/AD INTERIORS,FINISH PAINT,TBD Architectural Finishes,FIZ DATA CENTER,2025-11-21 07:00,2025-11-21 07:00,,
CN.SEB5.1171,DRYWALL 2 SIDE - SEA5 - GL 31-33 - L1 - D LINE,Complete,SEB - 5,West Support Building,SUEN-5 - 31-33,L1 - Fndn Slab,DS/AD INTERIORS,,DRYWALL,FIZ DATA CENTER,2024-01-22 07:00,2024-01-25 17:00,2023-11-18 07:00,2023-11-22 17:00
CN.SEB5.1151,DRYWALL & INSULATION (1 side) (INT) - SEA5 - GL 31-33 - L1 - D LINE,Complete,SEB - 5,West Support Building,SUEN-5 - 31-33,L1 - Fndn Slab,DS/AD INTERIORS,,DRYWALL,FIZ DATA CENTER,2023-11-14 09:00,2023-11-19 17:00,2023-11-14 09:00,2023-11-17 11:00
CN.SEB5.1011,REMEDY - DEMO DRYWALL (2hr) - SEB5 - GL 31-33 - D LINE - L2,Complete,SEB - 5,West Support Building,SUEN-5 - 31-33,L2 - SubFab Level,DS/AD INTERIORS,BERG,TBD Architectural Finishes,FIZ DATA CENTER,2024-06-17 07:00,2024-06-25 17:00,2024-04-23 12:55,2024-04-25 17:00
CN.SEB5.1061,REMEDY - TAPE & FINISH DRYWALL - SEB5 - GL 31-33 - D LINE - L2,Complete,SEB - 5,West Support Building,SUEN-5 - 31-33,L2 - SubFab Level,DS/AD INTERIORS,CHERRY COATING,DRYWALL,FIZ DATA CENTER,2024-08-16 07:00,2024-08-20 17:00,2024-08-16 07:00,2024-08-19 17:00
CN.SEB5.1041,REMEDY - FRAME & DRYWALL (INT)- SEB5 - GL 31-33 - D LINE - L2,Complete,SEB - 5,West Support Building,SUEN-5 - 31-33,L2 - SubFab Level,DS/AD INTERIORS,BERG,DRYWALL,FIZ DATA CENTER,2024-07-22 07:00,2024-07-30 17:00,2024-07-22 07:00,2024-08-12 17:00
CN.SEB5.1121,TAPE & FINISH DRYWALL - SEB5 - GL 31-33 - D LINE - L3,Complete,SEB - 5,West Support Building,SUEN-5 - 31-33,L3 / Waffle Slab Level,DS/AD INTERIORS,CHERRY COATING,DRYWALL,FIZ DATA CENTER,2024-06-10 07:00,2024-06-14 17:00,2024-06-10 07:00,2024-06-14 17:00
CN.SEB5.1111,DRYWALL 2 SIDE - SEB5 - GL 31-33 - D LINE - L3,Complete,SEB - 5,West Support Building,SUEN-5 - 31-33,L3 / Waffle Slab Level,DS/AD INTERIORS,BERG,DRYWALL,FIZ DATA CENTER,2024-05-23 07:00,2024-05-30 17:00,2024-04-25 07:00,2024-06-03 17:00
CN.SEB5.1101,DRYWALL & INSULATION (1 side) (INT) - SEA5 - GL 31-33 - L3 - D LINE,Complete,SEB - 5,West Support Building,SUEN-5 - 31-33,L3 / Waffle Slab Level,DS/AD INTERIORS,,DRYWALL,FIZ DATA CENTER,2024-03-28 07:00,2024-03-31 17:00,2024-03-28 07:00,2024-03-30 11:00
CN.SEB5.1141,FRAMING & DRYWALL - ELEVATOR 18 (MK MARLOW) - LEVEL 1&2,Complete,SEB - 5,West Support Building,SUEN-5 - 31-33,L1 - Fndn Slab,ELEVATOR,BERG,DRYWALL,JAMES LIVELY,2024-07-01 07:00,2024-08-01 17:00,2024-07-03 07:00,2024-08-26 17:00
CN.SEB5.6310,Drywall Clips & AMTS Installs Support Beams - SEB5 - GL 31-33 - D LINE - L4,Complete,SEB - 5,,SUEN-5 - 31-33,L4 - SUP Roof - FAB Roof,DS/AD INTERIORS,SECAI,Fireproofing,,2024-03-25 07:00,2024-04-03 09:00,2024-03-21 07:00,2024-04-08 17:00
CN.SEB5.6560,INSTALL ELEVATOR HSS STEEL DOOR OPENINGS - ELEVATOR 18 - Expected finish 5/9,Complete,SEB - 5,East Support Building,SUEN-5 - 31-33,,ELEVATOR,W&W,DRYWALL,AMBER CARO,2025-05-07 07:00,2025-05-19 17:00,2025-04-28 07:00,2025-05-16 17:00
CN.SEB5.9200,INSTALL FRAMING & DRYWALL - ELEVATOR 18 (MK MARLOW) - LEVEL 3 (SOUTH WALL FIX INCLUDED),Complete,SEB - 5,West Support Building,SUEN-5 - 31-33,L1 - Fndn Slab,ELEVATOR,BERG,DRYWALL,JAMES LIVELY,2024-09-06 07:00,2024-09-17 17:00,2024-08-28 07:00,2024-10-03 17:00
CN.SEB5.9300,PREP & INSTALL INSTALL PERMANENT DOOR & FRAME - MECHANICAL ROOM - FAB116514A - ELEVATOR 18,Active,SEB - 5,East Support Building,SUEN-5 - 31-33,,ELEVATOR,W&W,DRYWALL,AMBER CARO,2024-10-01 07:00,2024-10-25 17:00,2024-10-01 07:00,
CN.SEB5.9310,"FINAL TURNOVER - DOOR FRONTS, MECHANICAL ROOM (WITH PERM DOOR) - ELEVATOR 18",Not Started,SEB - 5,East Support Building,SUEN-5 - 31-33,,ELEVATOR,W&W,DRYWALL,AMBER CARO,2025-12-01 17:00,2025-12-01 17:00,,
CN.SEB5.9320,"COMPLETE REMAINING FRAMING, DRYWALL, FIRE CAULKING - DOOR FRONTS - ELEVATOR 18",Complete,SEB - 5,East Support Building,SUEN-5 - 31-33,,ELEVATOR,W&W,DRYWALL,AMBER CARO,2025-06-18 07:00,2025-07-21 17:00,2025-06-05 07:00,2025-07-31 17:00
CN.SEB5.9330,INTERIOR SHAFT & TAPE & FLOAT - SHAFT & DOOR FRONTS  - ELEVATOR 18,Active,SEB - 5,East Support Building,SUEN-5 - 31-33,,ELEVATOR,W&W,DRYWALL,AMBER CARO,2025-09-04 07:00,2025-09-17 17:00,2025-08-25 07:00,
CN.SWB5.10240,INSTALL SCAFFOLD TO DEMO DRYWALL - SE PENTHOUSE - GL 3-5 A,Complete,SEB - 5,East Support Building,SOUTH EAST PENTHOUSE,L4 - SUP Roof - FAB Roof,,BERG,DRYWALL,SEAN MONK,2024-10-04 07:00,2024-10-04 17:00,2024-10-03 07:00,2024-10-14 17:00
CN.SWB5.10250,"DEMO A LINE TEMP DRYWALL, CLEANUP & REMOVE SCAFFOLD - SE PENTHOUSE - GL 3-5 A",Complete,SEB - 5,East Support Building,SOUTH EAST PENTHOUSE,L4 - SUP Roof - FAB Roof,,BERG,DRYWALL,SEAN MONK,2024-10-15 07:00,2024-10-18 17:00,2024-10-15 07:00,2024-10-18 17:00
CN.SWB5.10270,REMAINING COLUMN WRAP FRAMING & DRYWALL - MCC ROOM / SE PENTHOUSE - GL 3-4,Complete,SEB - 5,East Support Building,SOUTH EAST PENTHOUSE,L4 - SUP Roof - FAB Roof,,BERG,DRYWALL,SEAN MONK,2024-10-21 07:00,2024-10-22 17:00,2024-10-21 07:00,2025-01-06 17:00
CN.AB.AR.8360,FINISH DRYWALL & FINISHES- AIRLOCK 18 - SEB5 - GL 31-33 - C-A - L3 SECAI TOOK OVER FOR ACCELERATION,Complete,SEB - 5,East Support Building,SUEN-5 - 31-33,L3 / Waffle Slab Level,AIRLOCKS & VESTABLES,ALK,TBD Architectural Finishes,AMBER CARO,2025-01-22 07:00,2025-01-28 17:00,2025-01-22 07:00,2025-06-06 17:00
CN.AB.AR.8430,FINISH DRYWALL & FINISHES- VESTIUBLE 18 - SEB5 - GL 31-33 - C-A - L3 SECAI TOOK OVER FOR ACCELERATION,Complete,SEB - 5,East Support Building,SUEN-5 - 31-33,L3 / Waffle Slab Level,AIRLOCKS & VESTABLES,ALK,TBD Architectural Finishes,AMBER CARO,2025-02-10 07:00,2025-02-18 17:00,2025-02-04 07:00,2025-06-06 17:00
CN.SEB5.9420,"COMPLETE REMAINING FRAMING, DRYWALL, FIRE CAULKING - SHAFT & DOOR FRONTS - ELEVATOR 01B -",Complete,SEB - 5,East Support Building,SUEN-5 - 31-33,,ELEVATOR,W&W,DRYWALL,AMBER CARO,2025-06-13 07:00,2025-07-10 17:00,2025-06-19 07:00,2025-08-01 17:00
INT.P1.DH&HW.1120,Execute Subcontract / NTP - Doors & Hardware - INTERIOR - TEMPORARY,Complete,PRE CONSTRUCTION,Support Building Overall,Doors & Hardware - INTERIOR,DOORS & HARDWARE INTERIOR,,,DOORS & HARDWARE - INTERIOR,AMBER CARO,2023-05-08 07:00,2023-05-14 12:00,2023-04-24 09:00,2023-06-24 16:00
INT.P1.Gypsum.1130,LOI - Execute Subcontract - Gypsum,Complete,PRE CONSTRUCTION,Support Building Overall,Gypsum,FRAMING/ DRYWALL GYPSUM,,,DRYWALL,AMBER CARO,2023-05-23 07:00,2023-05-28 15:00,2023-05-23 07:00,2023-05-30 17:00
INT.P2.WDP.1320,Execute Subcontract - Wall / Door Protection,Complete,PRE CONSTRUCTION,Support Building Overall,Wall / Door Protection - DIV10,WALL & DOOR PROTECTION,,,DOORS & HARDWARE - INTERIOR,JAMES LEE,2023-11-11 15:00,2023-11-13 11:00,2023-10-17 15:00,2023-10-19 12:00
INT.P1.DH&HW.1130,Subcontractor Submit Shop Drawings / Product Data - Doors & Hardware - INTERIOR,Complete,PRE CONSTRUCTION,Support Building Overall,Doors & Hardware - INTERIOR,DOORS & HARDWARE INTERIOR,,,DOORS & HARDWARE - INTERIOR,AMBER CARO,2023-08-01 13:00,2023-08-12 09:00,2023-07-03 13:00,2023-09-13 09:00
INT.P1.Gypsum.1140,Subcontractor Submit Shop Drawings / Product Data - Gypsum,Complete,PRE CONSTRUCTION,Support Building Overall,Gypsum,FRAMING/ DRYWALL GYPSUM,,,DRYWALL,AMBER CARO,2023-06-02 07:00,2023-06-12 13:00,2023-06-02 07:00,2023-06-22 11:00
INT.P2.WDP.1330,Subcontractor Submit Shop Drawings / Product Data - Wall / Door Protection,Complete,PRE CONSTRUCTION,Support Building Overall,Wall / Door Protection - DIV10,WALL & DOOR PROTECTION,,,DOORS & HARDWARE - INTERIOR,JAMES LEE,2023-10-02 07:00,2023-10-06 15:00,2023-09-11 07:00,2023-09-23 16:00
INT.P1.DH&HW.1140,IMPACT - SECAI / Jacobs Review / Approve shop Drawings - Doors & Hardware - INTERIOR,Complete,PRE CONSTRUCTION,Support Building Overall,Doors & Hardware - INTERIOR,DOORS & HARDWARE INTERIOR,,,DOORS & HARDWARE - INTERIOR,AMBER CARO,2023-10-09 07:00,2023-10-18 14:00,2023-09-14 07:00,2024-01-18 17:00
INT.P1.Gypsum.1150,Jacobs Review / Approve shop Drawings - Gypsum,Complete,PRE CONSTRUCTION,Support Building Overall,Gypsum,FRAMING/ DRYWALL GYPSUM,,,DRYWALL,AMBER CARO,2023-06-22 11:00,2023-07-02 17:00,2023-06-22 11:00,2023-07-10 09:00
INT.P1.DH&HW.1150,Fabrication / Lead time - Doors & Hardware - INTERIOR TEMPORARY,Complete,PRE CONSTRUCTION,Support Building Overall,Doors & Hardware - INTERIOR,DOORS & HARDWARE INTERIOR,,,DOORS & HARDWARE - INTERIOR,AMBER CARO,2023-10-09 07:00,2023-10-25 10:30,2023-10-02 07:00,2023-10-30 15:00
INT.P1.Gypsum.1160,Fabrication / Lead time - Gypsum,Complete,PRE CONSTRUCTION,Support Building Overall,Gypsum,FRAMING/ DRYWALL GYPSUM,,,DRYWALL,AMBER CARO,2023-07-10 09:00,2023-07-14 09:00,2023-07-10 09:00,2023-07-14 09:00
DS.SECAI.1140,EXT Door Schedule,Complete,PRE CONSTRUCTION,,Schedules,DRAWING PACKAGES,,,DOORS & HARDWARE - INTERIOR,DONGSOO,2023-02-20 08:00,2023-02-20 08:00,2023-01-30 08:00,2023-01-30 08:00
DS.SECAI.1150,INT Door Schedule,Complete,PRE CONSTRUCTION,,Schedules,DRAWING PACKAGES,,,DOORS & HARDWARE - INTERIOR,DONGSOO,2023-02-20 08:00,2023-02-20 08:00,2023-01-30 08:00,2023-01-30 08:00
INT.P1.DH&HW.1160,Execute Subcontract/ NTP - Doors & Hardware - PERMANENT,Complete,PRE CONSTRUCTION,Support Building Overall,Doors & Hardware - EXTERIOR,DOORS & HARDWARE EXTERIOR,,,DOORS & HARDWARE - EXTERIOR,AMBER CARO,2023-08-01 13:00,2023-08-05 13:00,2023-06-08 07:00,2023-06-24 11:00
INT.P1.DH&HW.1170,Subcontractor Submit Shop Drawings / Product Data - Doors & Hardware - PERMANENT,Complete,PRE CONSTRUCTION,Support Building Overall,Doors & Hardware - EXTERIOR,DOORS & HARDWARE EXTERIOR,,,DOORS & HARDWARE - EXTERIOR,AMBER CARO,2023-08-05 14:00,2023-08-16 10:00,2023-07-03 14:00,2023-10-03 17:00
INT.P1.DH&HW.1180,Jacobs Review / Approve shop Drawings - Doors & Hardware - PERMANENT,Complete,PRE CONSTRUCTION,Support Building Overall,Doors & Hardware - EXTERIOR,DOORS & HARDWARE EXTERIOR,,,DOORS & HARDWARE - EXTERIOR,AMBER CARO,2023-10-02 07:00,2023-10-11 13:00,2023-10-04 07:00,2023-10-09 16:00
INT.P1.DH&HW.1190,Fabrication / Lead time - Doors & Hardware Exterior - PERMANENT,Complete,PRE CONSTRUCTION,Support Building Overall,Doors & Hardware - EXTERIOR,DOORS & HARDWARE EXTERIOR,,,DOORS & HARDWARE - EXTERIOR,AMBER CARO,2023-10-09 07:00,2023-11-21 11:00,2023-10-10 07:00,2024-02-25 17:00
INT.P1.DH&HW.1200,Execute RFA - Doors & Hardware - OVERHEAD,Complete,PRE CONSTRUCTION,Support Building Overall,Doors & Hardware - OVERHEAD,DOORS & HARDWARE OVERHEAD,,,DOORS & HARDWARE - OVERHEAD,AMBER CARO,2023-08-28 07:00,2023-09-06 17:00,2023-08-28 07:00,2023-10-20 13:00
INT.P1.DH&HW.1210,Subcontractor Submit Shop Drawings / Product Data - Doors & Hardware - OVERHEAD,Complete,PRE CONSTRUCTION,Support Building Overall,Doors & Hardware - OVERHEAD,DOORS & HARDWARE OVERHEAD,,,DOORS & HARDWARE - OVERHEAD,AMBER CARO,2023-10-17 13:00,2023-10-29 09:00,2023-09-14 14:51,2023-09-26 17:00
INT.P1.DH&HW.1220,Jacobs Review / Approve shop Drawings - Doors & Hardware - OVERHEAD,Complete,PRE CONSTRUCTION,Support Building Overall,Doors & Hardware - OVERHEAD,DOORS & HARDWARE OVERHEAD,,,DOORS & HARDWARE - OVERHEAD,AMBER CARO,2023-11-02 13:00,2023-11-12 09:00,2023-09-28 07:00,2023-10-10 13:00
INT.P1.DH&HW.1230,Fabrication / Lead time - Doors & Hardware - OVERHEAD,Complete,PRE CONSTRUCTION,Support Building Overall,Doors & Hardware - OVERHEAD,DOORS & HARDWARE OVERHEAD,,,DOORS & HARDWARE - OVERHEAD,AMBER CARO,2023-11-27 07:00,2023-12-16 15:00,2023-11-18 07:00,2023-12-22 11:00
INT.P1.Gypsum.1190,GL 33 - DRYWALL LEAD TIME,Complete,PRE CONSTRUCTION,Support Building Overall,GRIDLINE 33,FRAMING/ DRYWALL GYPSUM,GL 33 PROCUREMENT ITEMS,,DRYWALL,AMBER CARO,2023-11-27 07:00,2023-12-28 15:00,2023-11-20 20:44,2023-12-01 18:44
INT.P1.DH&HW.1240,SECAI DIRECTIVE TO FABRICATE BASED ON SAMOO 6.6 - Doors & Hardware - INTERIOR,Complete,PRE CONSTRUCTION,Support Building Overall,Doors & Hardware - INTERIOR,DOORS & HARDWARE INTERIOR,,,DOORS & HARDWARE - INTERIOR,AMBER CARO,2023-08-01 13:00,2023-08-12 09:00,2023-09-07 07:00,2023-09-13 09:00
INT.P1.DH&HW.1250,C&B OUTREACH MANUFACTURERS - Doors & Hardware - INTERIOR,Complete,PRE CONSTRUCTION,Support Building Overall,Doors & Hardware - INTERIOR,DOORS & HARDWARE INTERIOR,,,DOORS & HARDWARE - INTERIOR,AMBER CARO,2023-08-01 13:00,2023-08-12 09:00,2023-09-14 07:00,2023-10-12 09:00
IMP.DH&HW.1270,IMPACT - FABRICATE / DELIVER AUTOMATIC ALUMINUM DOORS - QA-1/SA-1 - CLEAN ROOMS (14-16 WEEK LEADTIME),Complete,PRE CONSTRUCTION,Support Building Overall,Doors & Hardware - INTERIOR,DOORS & HARDWARE INTERIOR,,SECAI,DOORS & HARDWARE - INTERIOR,AMBER CARO,2023-11-30 07:00,2024-04-04 17:00,2024-05-23 07:00,2025-03-07 17:00
EXT.P1.DH&HW.1270,SECAI DIRECTIVE TO FABRICATE BASED ON SAMOO 6.6 - Doors & Hardware - EXTERIOR,Complete,PRE CONSTRUCTION,Support Building Overall,Doors & Hardware - EXTERIOR,DOORS & HARDWARE EXTERIOR,,,DOORS & HARDWARE - INTERIOR,AMBER CARO,2023-08-01 13:00,2023-08-12 09:00,2023-09-07 07:00,2023-09-13 09:00
INT.P1.DH&HW.1270,Fabrication / Lead time - Exterior Door Frames - PERMANENT,Complete,PRE CONSTRUCTION,Support Building Overall,Doors & Hardware - EXTERIOR,DOORS & HARDWARE EXTERIOR,,,DOORS & HARDWARE - EXTERIOR,AMBER CARO,2023-10-09 07:00,2023-11-21 11:00,2023-10-10 07:00,2024-02-23 13:00
INT.P1.Gypsum.1200,IMPACT - STOP WORK - RAIN WATER INTRUSION - DRYWALL,Complete,PRE CONSTRUCTION,Support Building Overall,Gypsum,FRAMING/ DRYWALL GYPSUM,,,DRYWALL,AMBER CARO,2024-02-19 07:00,2024-03-18 11:00,2024-01-31 00:00,2024-02-27 00:00
INT.P1.Gypsum.1210,IMPACT - REMEDY - CCD#327 APACHE DRYWALL DEMO #324 MKMarlow Re Install #281/ 307 BERG #314 Apache scaffold,Complete,PRE CONSTRUCTION,Support Building Overall,Gypsum,FRAMING/ DRYWALL GYPSUM,,,DRYWALL,AMBER CARO,2024-02-19 07:00,2024-03-18 11:00,2024-05-13 00:00,2024-05-28 00:00
IMP.DH&HW.1280,IMPACT - Y_SBMT 0626 - PREP & SUBMIT AUTOMATIC ALUMINUM SLIDING DOOR DA-1 SHOP DRAWINGS,Complete,PRE CONSTRUCTION,Support Building Overall,Doors & Hardware - INTERIOR,DOORS & HARDWARE INTERIOR,,SECAI,DOORS & HARDWARE - INTERIOR,AMBER CARO,2023-11-30 07:00,2023-12-15 17:00,2024-05-22 07:00,2024-06-11 17:00
IMP.DH&HW.1290,IMPACT - Y_SBMT 0626 - SECAI REVIEW AUTOMATIC ALUMINUM SLIDING DOOR - DA-1 SHOP DRAWINGS - REVISE & RESUBMIT,Complete,PRE CONSTRUCTION,Support Building Overall,Doors & Hardware - INTERIOR,DOORS & HARDWARE INTERIOR,,SECAI,DOORS & HARDWARE - INTERIOR,AMBER CARO,2023-11-30 07:00,2023-12-15 17:00,2024-06-12 07:00,2024-06-20 17:00
IMP.DH&HW.1300,IMPACT - Y_SBMT 0626 - Submit Re-Submit AUTOMATIC ALUMINUM SLIDING DOOR - DA-1 SHOP DRAWINGS - R1-R4,Complete,PRE CONSTRUCTION,Support Building Overall,Doors & Hardware - INTERIOR,DOORS & HARDWARE INTERIOR,,SECAI,DOORS & HARDWARE - INTERIOR,AMBER CARO,2024-06-28 07:00,2024-07-16 17:00,2024-06-21 07:00,2025-04-07 11:00
IMP.DH&HW.1310,IMPACT - Y_SBMT 0626 - SECAI REVIEW & APPROVE AUTOMATIC ALUMINUM SLIDING DOOR - DA-1 SHOP DRAWINGS - R1-R4,Complete,PRE CONSTRUCTION,Support Building Overall,Doors & Hardware - INTERIOR,DOORS & HARDWARE INTERIOR,,SECAI,DOORS & HARDWARE - INTERIOR,AMBER CARO,2025-08-19 11:00,2025-09-03 11:00,2024-10-02 11:00,2025-04-23 11:00
IMP.DH&HW.1320,IMPACT - Y_SBMT 0626 - FABRICATE / DELIVER AUTOMATIC ALUMINUM DOORS DA-1 - CLEAN ROOMS (14-16 WEEK LEADTIME),Complete,PRE CONSTRUCTION,Support Building Overall,Doors & Hardware - INTERIOR,DOORS & HARDWARE INTERIOR,,SECAI,DOORS & HARDWARE - INTERIOR,AMBER CARO,2025-09-03 11:00,2025-10-08 11:00,2024-06-12 11:00,2024-10-04 11:00
INT.P1.T&F.1230,IMPACT - REMEDY - YATES SUBMIT CCD #368 REMEDY DRYWALL TAPE & FINISH,Complete,PRE CONSTRUCTION,Support Building Overall,Gypsum,FRAMING/ DRYWALL GYPSUM,,,DRYWALL,AMBER CARO,2024-02-19 07:00,2024-03-18 11:00,2024-06-03 00:00,2024-06-10 07:00
INT.P1.DH&HW.1280,INTERIOR OVERHEAD COILING DOORS - CCD Negotiation,Complete,PRE CONSTRUCTION,Support Building Overall,Doors & Hardware - OVERHEAD,DOORS & HARDWARE OVERHEAD,,,DOORS & HARDWARE - OVERHEAD,AMBER CARO,2023-11-27 07:00,2023-12-16 15:00,2024-11-11 07:00,2024-12-19 11:00
INT.P1.DH&HW.1290,INTERIOR OVERHEAD COILING DOORS - SAS Redesign - confirmed 1/6/25,Complete,PRE CONSTRUCTION,Support Building Overall,Doors & Hardware - OVERHEAD,DOORS & HARDWARE OVERHEAD,,,DOORS & HARDWARE - OVERHEAD,AMBER CARO,2023-11-27 07:00,2023-12-16 15:00,2024-12-18 07:00,2025-01-06 11:00
INT.P1.DH&HW.1300,IMPACT - INTERIOR OVERHEAD COILING DOORS - UNDER REDESIGN - Y-1356 -SHOP DWGS R1 -R2 - REVIEW AND APPROVAL,Complete,PRE CONSTRUCTION,Support Building Overall,Doors & Hardware - OVERHEAD,DOORS & HARDWARE OVERHEAD,,,DOORS & HARDWARE - OVERHEAD,AMBER CARO,2023-11-27 07:00,2023-12-16 15:00,2025-01-13 07:00,2025-05-30 10:00
INT.P1.DH&HW.1310,INTERIOR OVERHEAD COILING DOORS - RFI ISSUED / ANWERED,Complete,PRE CONSTRUCTION,Support Building Overall,Doors & Hardware - OVERHEAD,DOORS & HARDWARE OVERHEAD,,,DOORS & HARDWARE - OVERHEAD,AMBER CARO,2023-11-27 07:00,2023-12-16 15:00,2025-01-06 07:00,2025-01-10 11:00
INT.P1.DH&HW.1320,IMPACT - INTERIOR OVERHEAD COILING DOORS - UNDER REDESIGN - FABRICATION LEAD TIME,Complete,PRE CONSTRUCTION,Support Building Overall,Doors & Hardware - OVERHEAD,DOORS & HARDWARE OVERHEAD,,,DOORS & HARDWARE - OVERHEAD,AMBER CARO,2025-08-20 07:00,2025-09-29 17:00,2025-06-02 07:00,2025-08-08 17:00
A1000,DRYWALL SCOPE SUBSTANTIAL COMPLETION,Not Started,Remobilization and Out-of-Sequence Completion List - DD07-10-2025,,,,,,,,2025-12-22 17:00,2025-12-22 17:00,,
A2000,ALL YATES DOOR FRAME INSPECTION - FAB110110B - turnover frames to SECAI to install,Complete,Remobilization and Out-of-Sequence Completion List - DD07-10-2025,,,,,,,,2025-06-20 08:00,2025-07-21 17:00,2025-06-20 08:00,2025-08-28 17:00
MS.SECAI.GC,SECAI - CONDITION BUILDING - drives door paint,Complete,Remobilization and Out-of-Sequence Completion List - DD07-10-2025,,,,,,,,2025-08-15 08:00,2025-08-15 17:00,2025-08-15 08:00,2025-08-15 17:00
FAB1-A1010,DOORS SCOPE SUBSTANTIAL COMPLETION - SCP Panels L1 FIZ driving,Not Started,Remobilization and Out-of-Sequence Completion List - DD07-10-2025,,,,,,,,2026-05-15 17:00,2026-05-15 17:00,,
IMPACT2 - constraint,IMPACT - RFI 1779/1781/1835 DOOR THRESHOLD AND WP - SHOP DWG - ALL LEVEL 4 EXTERIOR DOORS,Complete,Remobilization and Out-of-Sequence Completion List - DD07-10-2025,,,,,,,,2025-06-20 08:00,2025-07-17 17:00,2025-05-27 08:00,2025-09-23 08:00
IMPACT1 - constraint,IMPACT - PENDING CLADDING MODIFICATION (DBLE DOORS) & CABINET DOORS,Complete,Remobilization and Out-of-Sequence Completion List - DD07-10-2025,,,,,,,,2025-06-20 08:00,2025-07-17 16:00,2025-06-20 08:00,2025-08-22 08:00
ZX-4330,Complete Drywall & Inspect - Elevator #22 - FAB1 - 2F,Complete,Elevator 22 - 2F -SUE-FAB1-EL22,,,,,,,,2025-08-01 08:00,2025-08-14 17:00,2025-07-16 08:00,2025-07-25 17:00
ZX-11710,Complete Drywall & Inspect - 4F-D/3-33 West Face,Complete,4F-D/3-33 West Face - 4F - SUE,,,,,,,,2025-08-25 08:00,2025-09-12 17:00,2025-08-25 08:00,2025-09-08 17:00
ZX-11830,Complete Drywall & Inspect - Duct Shaft - 4F-SUE-FAB146103,Complete,Duct Shaft - 4F -SUE-FAB146103,,,,,,,,2025-09-02 08:00,2025-09-08 17:00,2025-09-02 08:00,2025-09-08 17:00
ZX-13900,Complete Drywall & Inspect - MCC Rm - 4F-SUE-FAB146106 NON RATED,Complete,MCC Rm - 4F -SUE-FAB146106,,,,,,,,2025-06-18 08:00,2025-07-01 17:00,2025-06-10 08:00,2025-09-08 08:00
FAB146106A-03,INSTALL DOOR FRAMES - FAB146106A,Not Started,MCC Rm - 4F -SUE-FAB146106,,,,,,,,2025-11-21 08:00,2025-11-21 17:00,,
FAB146106A-04,INSTALL DOOR & HARDWARE - FAB146106A,Not Started,MCC Rm - 4F -SUE-FAB146106,,,,,,,,2025-11-24 08:00,2025-11-28 17:00,,
FAB146106A-05,PAINT & PROTECT DOORS & FRAMES -  FAB146106A,Not Started,MCC Rm - 4F -SUE-FAB146106,,,,,,,,2026-02-16 08:00,2026-02-19 15:00,,
FAB146106B-03,INSTALL DOOR FRAMES - FAB146106B,Complete,MCC Rm - 4F -SUE-FAB146106,,,,,,,,2025-11-13 08:00,2025-11-13 17:00,2025-11-13 08:00,2025-11-13 17:00
FAB146106B-04,INSTALL DOOR & HARDWARE - FAB146106B,Not Started,MCC Rm - 4F -SUE-FAB146106,,,,,,,,2025-11-21 08:00,2025-11-27 17:00,,
FAB146106B-05,PAINT & PROTECT DOORS & FRAMES -  FAB146106B,Not Started,MCC Rm - 4F -SUE-FAB146106,,,,,,,,2026-02-16 08:00,2026-02-19 15:00,,
ZX-13510,Complete Drywall & Inspect - I/O Rm 1-4FSUE-FAB146107 NON RATED WALLS,Complete,I/O Rm 1 - 4F- SUE-FAB146107,,,,,,,,2025-06-18 08:00,2025-06-26 17:00,2025-06-10 08:00,2025-06-19 16:00
FAB146107A-03,INSTALL DOOR FRAMES - FAB146107A,Not Started,I/O Rm 1 - 4F- SUE-FAB146107,,,,,,,,2025-12-01 08:00,2025-12-02 17:00,,
FAB146107A-04,INSTALL DOOR & HARDWARE - FAB146107A,Not Started,I/O Rm 1 - 4F- SUE-FAB146107,,,,,,,,2025-12-03 08:00,2025-12-09 17:00,,
FAB146107A-05,PAINT & PROTECT DOORS & FRAMES -  FAB146107A,Not Started,I/O Rm 1 - 4F- SUE-FAB146107,,,,,,,,2026-02-16 08:00,2026-02-19 15:00,,
FAB146107A-30,IMPACT - SECAI LAYDOWN FOR DOORS AND FRAMES - FAB146107A,Active,I/O Rm 1 - 4F- SUE-FAB146107,,,,,,,,2025-07-09 08:00,2025-07-15 17:00,2025-07-09 08:00,
ZX-11860,Complete Drywall & Inspect - Elevator #22 - 4F-1FAB-EL22,Complete,Elevator 22 - 4F -SUE-FAB1-EL22,,,,,,,,2025-08-01 08:00,2025-08-14 17:00,2025-08-01 08:00,2025-08-08 17:00
ZX-11980,Complete Drywall & Inspect - Elevator Hall #22 - 4F-FAB146105,Complete,Elevator Hall 22 - 4F -SUE-FAB146105,,,,,,,,2025-09-02 08:00,2025-09-08 17:00,2025-09-02 08:00,2025-09-08 17:00
FAB146105A-01,INSTALL DOOR FRAMES - FAB146105A,Not Started,Elevator Hall 22 - 4F -SUE-FAB146105,,,,,,,,2025-12-10 08:00,2025-12-10 17:00,,
FAB146105A-04,INSTALL DOOR & HARDWARE - FAB146105A,Not Started,Elevator Hall 22 - 4F -SUE-FAB146105,,,,,,,,2025-12-12 08:00,2025-12-18 17:00,,
FAB146105A-05,PAINT & PROTECT DOORS & FRAMES -  FAB146105A,Not Started,Elevator Hall 22 - 4F -SUE-FAB146105,,,,,,,,2026-02-16 08:00,2026-02-19 15:00,,
FAB146105D-03,INSTALL DOOR FRAMES - FAB146105D,Not Started,Elevator Hall 22 - 4F -SUE-FAB146105,,,,,,,,2025-11-28 08:00,2025-11-28 17:00,,
FAB146105D-04,INSTALL DOOR & HARDWARE - FAB146105D,Not Started,Elevator Hall 22 - 4F -SUE-FAB146105,,,,,,,,2025-12-01 08:00,2025-12-05 17:00,,
FAB146105D-05,PAINT & PROTECT DOORS & FRAMES - FAB146105D,Not Started,Elevator Hall 22 - 4F -SUE-FAB146105,,,,,,,,2026-02-16 08:00,2026-02-19 15:00,,
FAB146109B-01,INSTALL DOOR FRAMES - FAB146109B,Not Started,Elevator Hall 22 - 4F -SUE-FAB146105,,,,,,,,2025-12-10 08:00,2025-12-10 17:00,,
FAB146109B-04,INSTALL DOOR & HARDWARE - FAB146109B,Not Started,Elevator Hall 22 - 4F -SUE-FAB146105,,,,,,,,2025-12-12 08:00,2025-12-18 17:00,,
FAB146109C-01,INSTALL DOOR FRAMES - FAB146109C,Not Started,Elevator Hall 22 - 4F -SUE-FAB146105,,,,,,,,2025-12-10 08:00,2025-12-10 17:00,,
FAB146109C-04,INSTALL DOOR & HARDWARE - FAB146109C,Not Started,Elevator Hall 22 - 4F -SUE-FAB146105,,,,,,,,2025-12-12 08:00,2025-12-18 17:00,,
FAB146110B-02,INSTALL DOOR FRAMES - FAB146110B,Not Started,Elevator Hall 22 - 4F -SUE-FAB146105,,,,,,,,2025-12-10 08:00,2025-12-10 17:00,,
FAB146110B-04,INSTALL DOOR & HARDWARE - FAB146110B,Not Started,Elevator Hall 22 - 4F -SUE-FAB146105,,,,,,,,2025-12-12 08:00,2025-12-18 17:00,,
FAB146109B-05,PAINT & PROTECT DOORS & FRAMES -  FAB146109B,Not Started,Elevator Hall 22 - 4F -SUE-FAB146105,,,,,,,,2026-02-16 08:00,2026-02-19 15:00,,
FAB146109C-05,PAINT & PROTECT DOORS & FRAMES -  FAB146109C,Not Started,Elevator Hall 22 - 4F -SUE-FAB146105,,,,,,,,2026-02-16 08:00,2026-02-19 15:00,,
FAB146110B-05,PAINT & PROTECT DOORS & FRAMES -  FAB146110B,Not Started,Elevator Hall 22 - 4F -SUE-FAB146105,,,,,,,,2026-02-16 08:00,2026-02-19 15:00,,
ZX-12010,Complete Drywall & Inspect - Duct Shaft - 4F-SUE-FAB146101,Complete,Duct Shaft - 4F -SUE-FAB146101,,,,,,,,2025-07-28 08:00,2025-08-08 17:00,2025-07-28 08:00,2025-08-08 17:00
FAB146101A-01,IMPACT - INSTALL/REWORK DRYWALL FRAMING AROUND DOORS - FAB146101A,Complete,Duct Shaft - 4F -SUE-FAB146101,,,,,,,,2025-05-07 08:00,2025-05-15 17:00,2025-05-07 08:00,2025-05-07 17:00
FAB146101A-03,INSTALL DOOR FRAMES - FAB146101A,Complete,Duct Shaft - 4F -SUE-FAB146101,,,,,,,,2025-08-18 13:00,2025-08-19 12:00,2025-05-07 00:00,2025-05-07 16:00
FAB146101A-04,INSTALL DOOR & HARDWARE - FAB146101A,Active,Duct Shaft - 4F -SUE-FAB146101,,,,,,,,2025-11-10 08:00,2025-11-14 17:00,2025-11-10 08:00,
FAB146101A-05,PAINT & PROTECT DOORS & FRAMES -  FAB146101A,Not Started,Duct Shaft - 4F -SUE-FAB146101,,,,,,,,2026-02-16 08:00,2026-02-19 15:00,,
FAB146101B-01,IMPACT - INSTALL/REWORK DRYWALL FRAMING AROUND DOORS - FAB146101B,Complete,Duct Shaft - 4F -SUE-FAB146101,,,,,,,,2025-05-07 08:00,2025-05-15 17:00,2025-05-07 08:00,2025-05-07 17:00
FAB146101B-03,INSTALL DOOR FRAMES - FAB146101B,Complete,Duct Shaft - 4F -SUE-FAB146101,,,,,,,,2025-08-18 13:00,2025-08-19 12:00,2025-05-07 00:00,2025-05-07 16:00
FAB146101B-04,INSTALL DOOR & HARDWARE - FAB146101B,Active,Duct Shaft - 4F -SUE-FAB146101,,,,,,,,2025-11-10 08:00,2025-11-14 17:00,2025-11-10 08:00,
FAB146101B-05,PAINT & PROTECT DOORS & FRAMES -  FAB146101B,Not Started,Duct Shaft - 4F -SUE-FAB146101,,,,,,,,2026-02-16 08:00,2026-02-19 15:00,,
ZX-12310,Complete Drywall & CATCHUP Inspect - Fire Alarm 22 - 4F-FAB146102,Complete,Fire Alarm 22 - 4F -SUE-FAB146102,,,,,,,,2025-05-16 08:00,2025-05-26 17:00,2025-05-16 08:00,2025-06-16 16:00
FAB146102A-03,INSTALL DOOR FRAMES - FAB146102A,Complete,Fire Alarm 22 - 4F -SUE-FAB146102,,,,,,,,2025-09-12 08:00,2025-09-12 17:00,2025-09-12 08:00,2025-09-12 17:00
FAB146102A-04,INSTALL DOOR & HARDWARE - FAB146102A,Not Started,Fire Alarm 22 - 4F -SUE-FAB146102,,,,,,,,2025-11-21 08:00,2025-11-27 17:00,,
FAB146102A-05,PAINT & PROTECT DOORS & FRAMES -  FAB146102A,Not Started,Fire Alarm 22 - 4F -SUE-FAB146102,,,,,,,,2026-02-16 08:00,2026-02-19 15:00,,
ZX-12610,Complete Drywall & Inspect - IT/Security 22 - 4F-TR-FAB146103,Complete,IT/Security 22 - 4F -SUE-TR-FAB146103,,,,,,,,2025-05-16 08:00,2025-05-26 17:00,2025-05-16 08:00,2025-06-30 16:00
TR-FAB146103A-03,INSTALL DOOR FRAMES - TR - FAB146103A,Complete,IT/Security 22 - 4F -SUE-TR-FAB146103,,,,,,,,2025-06-27 08:00,2025-06-27 17:00,2025-06-27 08:00,2025-06-27 17:00
TR-FAB146103A-04,INSTALL DOOR & HARDWARE - TR - FAB146103A,Not Started,IT/Security 22 - 4F -SUE-TR-FAB146103,,,,,,,,2025-11-21 08:00,2025-11-27 17:00,,
TR-FAB146103A-05,PAINT & PROTECT DOORS & FRAMES -  TR - FAB146103A,Not Started,IT/Security 22 - 4F -SUE-TR-FAB146103,,,,,,,,2026-02-16 08:00,2026-02-19 15:00,,
ZX-11950,Complete Drywall & Inspect - Duct Shaft - 4F-SUE-FAB146302,Complete,Duct Shaft - 4F -SUE-FAB146302,,,,,,,,2025-09-29 08:00,2025-09-30 17:00,2025-09-29 08:00,2025-09-30 17:00
FAB142101D-03,INSTALL DOOR FRAMES - FAB142101D,Not Started,Duct Shaft - 4F -SUE-FAB146302,,,,,,,,2025-11-21 08:00,2025-11-21 17:00,,
FAB142101D-04,INSTALL DOOR & HARDWARE - FAB142101D,Not Started,Duct Shaft - 4F -SUE-FAB146302,,,,,,,,2025-11-24 08:00,2025-11-28 17:00,,
FAB142101D-05,PAINT & PROTECT DOORS & FRAMES -  FAB142101D,Not Started,Duct Shaft - 4F -SUE-FAB146302,,,,,,,,2026-02-16 08:00,2026-02-19 15:00,,
FAB142101E-03,INSTALL DOOR FRAMES - FAB142101E,Not Started,Duct Shaft - 4F -SUE-FAB146302,,,,,,,,2025-11-21 08:00,2025-11-21 17:00,,
FAB142101E-04,INSTALL DOOR & HARDWARE - FAB142101E,Not Started,Duct Shaft - 4F -SUE-FAB146302,,,,,,,,2025-11-24 08:00,2025-11-28 17:00,,
FAB142101E-05,PAINT & PROTECT DOORS & FRAMES -  FAB142101E,Not Started,Duct Shaft - 4F -SUE-FAB146302,,,,,,,,2026-02-16 08:00,2026-02-19 15:00,,
FAB142101F-03,INSTALL DOOR FRAMES - FAB142101F,Not Started,Duct Shaft - 4F -SUE-FAB146302,,,,,,,,2025-11-21 08:00,2025-11-21 17:00,,
FAB142101F-04,INSTALL DOOR & HARDWARE - FAB142101F,Not Started,Duct Shaft - 4F -SUE-FAB146302,,,,,,,,2025-11-24 08:00,2025-11-28 17:00,,
FAB142101F-05,PAINT & PROTECT DOORS & FRAMES -  FAB142101F,Not Started,Duct Shaft - 4F -SUE-FAB146302,,,,,,,,2026-02-16 08:00,2026-02-19 15:00,,
ZX-12100,Complete Drywall & Inspect - 4F-Vestibule @ ST20-SUE-FAB146303,Complete,4F-Vestibule @ ST20 - 4F -SUE-FAB146303,,,,,,,,2025-07-18 08:00,2025-07-31 17:00,2025-07-18 08:00,2025-08-08 17:00
FAB146303A-01,INSTALL DOOR FRAMES - FAB146303A,Not Started,4F-Vestibule @ ST20 - 4F -SUE-FAB146303,,,,,,,,2025-12-10 08:00,2025-12-11 17:00,,
FAB146303A-04,INSTALL DOOR & HARDWARE - FAB146303A,Not Started,4F-Vestibule @ ST20 - 4F -SUE-FAB146303,,,,,,,,2025-12-15 08:00,2025-12-19 17:00,,
FAB146303A-05,PAINT & PROTECT DOORS & FRAMES -  FAB146303A,Not Started,4F-Vestibule @ ST20 - 4F -SUE-FAB146303,,,,,,,,2026-02-16 08:00,2026-02-19 15:00,,
FAB146303B-03,INSTALL DOOR FRAMES - FAB146303B,Not Started,4F-Vestibule @ ST20 - 4F -SUE-FAB146303,,,,,,,,2025-11-21 08:00,2025-11-21 17:00,,
FAB146303B-04,INSTALL DOOR & HARDWARE - FAB146303B,Not Started,4F-Vestibule @ ST20 - 4F -SUE-FAB146303,,,,,,,,2025-11-24 08:00,2025-11-28 17:00,,
FAB146303B-05,PAINT & PROTECT DOORS & FRAMES -  FAB146303B,Not Started,4F-Vestibule @ ST20 - 4F -SUE-FAB146303,,,,,,,,2026-02-16 08:00,2026-02-19 15:00,,
FAB146303C-03,INSTALL DOOR FRAMES - FAB146303C,Not Started,4F-Vestibule @ ST20 - 4F -SUE-FAB146303,,,,,,,,2025-11-21 08:00,2025-11-21 17:00,,
FAB146303C-04,INSTALL DOOR & HARDWARE - FAB146303C,Not Started,4F-Vestibule @ ST20 - 4F -SUE-FAB146303,,,,,,,,2025-11-24 08:00,2025-11-28 17:00,,
FAB146303C-05,PAINT & PROTECT DOORS & FRAMES -  FAB146303C,Not Started,4F-Vestibule @ ST20 - 4F -SUE-FAB146303,,,,,,,,2026-02-16 08:00,2026-02-19 15:00,,
FAB146303B-11,IMPACT - PROCUREMENT - REORDERED DOORS (JAMB DEPTH ISSUE),Complete,4F-Vestibule @ ST20 - 4F -SUE-FAB146303,,,,,,,,2025-06-09 08:00,2025-08-12 17:00,2025-06-09 08:00,2025-07-14 17:00
ZX-12400,Complete Drywall & Inspect - Duct Shaft - 4F-SUE-FAB146402,Complete,Duct Shaft - 4F -SUE-FAB146402,,,,,,,,2025-09-01 08:00,2025-09-12 17:00,2025-09-01 08:00,2025-09-09 17:00
ZX-12700,Complete Drywall & Inspect - IT/Security 18 - 4F-SUE-FAB146508,Complete,IT/Security 18 - 4F -SUE-FAB146508,,,,,,,,2025-09-29 08:00,2025-09-30 17:00,2025-09-29 08:00,2025-09-30 17:00
TR-FAB146508A-01,IMPACT - INSTALL/REWORK DRYWALL FRAMING AROUND DOORS - TR - FAB146508A,Complete,IT/Security 18 - 4F -SUE-FAB146508,,,,,,,,2025-09-29 08:00,2025-09-30 17:00,2025-09-29 08:00,2025-09-30 17:00
TR-FAB146508A-03,INSTALL DOOR FRAMES - TR - FAB146508A,Complete,IT/Security 18 - 4F -SUE-FAB146508,,,,,,,,2025-09-30 08:00,2025-09-30 17:00,2025-09-30 08:00,2025-09-30 17:00
TR-FAB146508A-04,INSTALL DOOR & HARDWARE - TR - FAB146508A,Not Started,IT/Security 18 - 4F -SUE-FAB146508,,,,,,,,2025-11-21 08:00,2025-11-27 17:00,,
TR-FAB146508A-05,PAINT & PROTECT DOORS & FRAMES -  TR - FAB146508A,Not Started,IT/Security 18 - 4F -SUE-FAB146508,,,,,,,,2026-02-16 08:00,2026-02-19 15:00,,
ZX-11920,Complete Drywall & Inspect - Fire Alarm 18 - 4F-FAB146506,Complete,Fire Alarm 18 - 4F -SUE-FAB146506,,,,,,,,2025-06-26 08:00,2025-07-04 17:00,2025-06-10 08:00,2025-06-16 16:00
FAB146506A-01,IMPACT - INSTALL/REWORK DRYWALL FRAMING AROUND DOORS - FAB146506A,Complete,Fire Alarm 18 - 4F -SUE-FAB146506,,,,,,,,2025-09-03 08:00,2025-09-04 17:00,2025-09-03 08:00,2025-09-04 17:00
FAB146506A-03,INSTALL DOOR FRAMES - FAB146506A,Complete,Fire Alarm 18 - 4F -SUE-FAB146506,,,,,,,,2025-09-05 08:00,2025-09-05 17:00,2025-09-05 08:00,2025-09-05 17:00
FAB146506A-04,INSTALL DOOR & HARDWARE - FAB146506A,Not Started,Fire Alarm 18 - 4F -SUE-FAB146506,,,,,,,,2025-11-21 08:00,2025-11-27 17:00,,
FAB146506A-05,PAINT & PROTECT DOORS & FRAMES - FAB146506A,Not Started,Fire Alarm 18 - 4F -SUE-FAB146506,,,,,,,,2026-02-16 08:00,2026-02-19 15:00,,
FAB146506A-11,IMPACT - PROCUREMENT - Reordered doors (Wall Thickness and Door Swing Design Changes),Complete,Fire Alarm 18 - 4F -SUE-FAB146506,,,,,,,,2025-06-20 08:00,2025-08-14 17:00,2025-06-20 08:00,2025-07-14 17:00
ZX-12160,Complete Drywall & Inspect - Elevator Hall #18 - 4F-SUE-FAB146507,Complete,Elevator Hall 18 - 4F -SUE-FAB146507,,,,,,,,2025-06-30 08:00,2025-07-08 17:00,2025-06-10 08:00,2025-06-30 16:00
FAB146507A-01,INSTALL DOOR FRAMES - FAB146507A,Complete,Elevator Hall 18 - 4F -SUE-FAB146507,,,,,,,,2025-07-23 08:00,2025-07-23 17:00,2025-07-23 08:00,2025-07-23 17:00
FAB146507A-07,DOOR FRAME PAINT & 1ST COAT - FAB146507A,Not Started,Elevator Hall 18 - 4F -SUE-FAB146507,,,,,,,,2026-02-16 08:00,2026-02-18 17:00,,
FAB146507A-04,INSTALL DOOR & HARDWARE - FAB146507A,Not Started,Elevator Hall 18 - 4F -SUE-FAB146507,,,,,,,,2026-02-19 08:00,2026-02-25 17:00,,
FAB146507A-05,PAINT & PROTECT DOORS & FRAMES -  FAB146507A,Not Started,Elevator Hall 18 - 4F -SUE-FAB146507,,,,,,,,2026-02-26 08:00,2026-03-03 15:00,,
FAB146507B-01,INSTALL DOOR FRAMES - FAB146507B,Not Started,Elevator Hall 18 - 4F -SUE-FAB146507,,,,,,,,2025-12-01 08:00,2025-12-01 17:00,,
FAB146507B-04,INSTALL DOOR & HARDWARE - FAB146507B,Not Started,Elevator Hall 18 - 4F -SUE-FAB146507,,,,,,,,2025-12-03 08:00,2025-12-09 17:00,,
FAB146507B-05,PAINT & PROTECT DOORS & FRAMES -  FAB146507B,Not Started,Elevator Hall 18 - 4F -SUE-FAB146507,,,,,,,,2026-02-16 08:00,2026-02-19 15:00,,
FAB146507C-01,IMPACT - INSTALL/REWORK DRYWALL FRAMING AROUND DOORS - FAB146507C,Complete,Elevator Hall 18 - 4F -SUE-FAB146507,,,,,,,,2025-07-09 08:00,2025-07-10 17:00,2025-07-09 08:00,2025-07-10 17:00
FAB146507C-03,INSTALL DOOR FRAMES - FAB146507C,Complete,Elevator Hall 18 - 4F -SUE-FAB146507,,,,,,,,2025-07-11 08:00,2025-07-11 17:00,2025-07-11 08:00,2025-07-11 17:00
FAB146507C-04,INSTALL DOOR & HARDWARE - FAB146507C,Active,Elevator Hall 18 - 4F -SUE-FAB146507,,,,,,,,2025-11-18 08:00,2025-11-24 17:00,2025-11-18 08:00,
FAB146507C-05,PAINT & PROTECT DOORS & FRAMES -  FAB146507C,Not Started,Elevator Hall 18 - 4F -SUE-FAB146507,,,,,,,,2026-02-16 08:00,2026-02-19 15:00,,
ZX-12460,Complete Drywall & Inspect - Elevator #18 - 4F-1FAB-EL18,Complete,Elevator 18 - 4F -SUE-FAB1-EL18,,,,,,,,2025-07-18 08:00,2025-07-28 17:00,2025-07-18 08:00,2025-07-28 17:00
ZX-12760,Complete Drywall & Inspect - NE Breezway-4F,Complete,NE Breezway - 4F - SUE,,,,,,,,2025-09-04 08:00,2025-09-16 17:00,2025-09-04 08:00,2025-09-11 17:00
ZX-11890,Complete Drywall & Inspect - I/O Rm 2 - 4F-SUE-FAB146502,Complete,I/O Rm 2 - 4F -SUE-FAB146502,,,,,,,,2025-05-29 08:00,2025-06-06 17:00,2025-05-14 08:00,2025-05-19 16:00
FAB146502A-03,INSTALL DOOR FRAMES - FAB146502A,Not Started,I/O Rm 2 - 4F -SUE-FAB146502,,,,,,,,2025-12-10 08:00,2025-12-10 17:00,,
FAB146502A-04,INSTALL DOOR & HARDWARE - FAB146502A,Not Started,I/O Rm 2 - 4F -SUE-FAB146502,,,,,,,,2025-12-11 08:00,2025-12-17 17:00,,
FAB146502A-05,PAINT & PROTECT DOORS & FRAMES -  FAB146502A,Not Started,I/O Rm 2 - 4F -SUE-FAB146502,,,,,,,,2026-02-16 08:00,2026-02-19 15:00,,
ZX-12070,Complete Drywall & Inspect - MCC Rm 2 - 4F-SUE-FAB146503 NON RATED WALLS,Complete,MCC Rm 2 - 4F -SUE-FAB146503,,,,,,,,2025-06-12 08:00,2025-06-23 17:00,2025-05-23 08:00,2025-05-28 16:00
FAB146503A-01,INSTALL DOOR FRAMES - FAB146503A,Not Started,MCC Rm 2 - 4F -SUE-FAB146503,,,,,,,,2025-12-10 08:00,2025-12-10 17:00,,
FAB146503A-04,INSTALL DOOR & HARDWARE - FAB146503A,Not Started,MCC Rm 2 - 4F -SUE-FAB146503,,,,,,,,2025-12-12 08:00,2025-12-18 17:00,,
FAB146503A-05,PAINT & PROTECT DOORS & FRAMES -  FAB146503A,Not Started,MCC Rm 2 - 4F -SUE-FAB146503,,,,,,,,2026-02-16 08:00,2026-02-19 15:00,,
FAB146503B-03,INSTALL DOOR FRAMES - FAB146503B,Not Started,MCC Rm 2 - 4F -SUE-FAB146503,,,,,,,,2025-11-21 08:00,2025-11-21 17:00,,
FAB146503B-04,INSTALL DOOR & HARDWARE - FAB146503B,Not Started,MCC Rm 2 - 4F -SUE-FAB146503,,,,,,,,2025-11-24 08:00,2025-11-28 17:00,,
FAB146503B-05,PAINT & PROTECT DOORS & FRAMES - FAB146503B,Not Started,MCC Rm 2 - 4F -SUE-FAB146503,,,,,,,,2026-02-16 08:00,2026-02-19 15:00,,
ZX-18670,Complete Drywall & Inspect CATCH-UP - MCC Rm 2 - 4F-SUE-FAB146503,Complete,MCC Rm 2 - 4F -SUE-FAB146503,,,,,,,,2025-06-13 08:00,2025-06-23 17:00,2025-06-13 08:00,2025-06-27 16:00
ZX-12370,Complete Drywall & Inspect - 4F-D-G/33,Complete,4F-D-G/33 - 4F - SUE,,,,,,,,2025-06-06 08:00,2025-06-19 17:00,2025-05-26 08:00,2025-05-29 16:00
ZX-12670,Complete Drywall & Inspect - 4F-G.3-K/33,Complete,4F-G.3-K/33 - 4F - SUW,,,,,,,,2025-09-25 08:00,2025-09-29 17:00,2025-09-25 08:00,2025-09-29 17:00
ZX-12220,Complete Drywall & Inspect - 4F-K/33-3,Complete,4F-K/33-3 - 4F - SUW,,,,,,,,2025-07-09 08:00,2025-07-29 17:00,2025-06-23 08:00,2025-06-30 16:00
ZX-12520,Complete Drywall & Inspect - IT/Security 5 - 4F-SUW-FAB140503,Complete,IT/Security 5 - 4F -SUW-FAB140503,,,,,,,,2025-05-27 08:00,2025-05-28 17:00,2025-05-27 08:00,2025-05-28 16:00
TR-FAB140503A-01,IMPACT - INSTALL/REWORK DRYWALL FRAMING AROUND DOORS - TR - FAB140503A,Complete,IT/Security 5 - 4F -SUW-FAB140503,,,,,,,,2025-05-01 08:00,2025-05-02 17:00,2025-05-01 08:00,2025-05-02 17:00
TR-FAB140503A-03,INSTALL DOOR FRAMES - TR - FAB140503A,Complete,IT/Security 5 - 4F -SUW-FAB140503,,,,,,,,2025-05-05 08:00,2025-05-05 17:00,2025-05-05 08:00,2025-05-05 17:00
TR-FAB140503A-04,INSTALL DOOR & HARDWARE - TR - FAB140503A,Not Started,IT/Security 5 - 4F -SUW-FAB140503,,,,,,,,2025-11-21 08:00,2025-11-27 17:00,,
TR-FAB140503A-05,PAINT & PROTECT DOORS & FRAMES -  TR - FAB140503A,Not Started,IT/Security 5 - 4F -SUW-FAB140503,,,,,,,,2026-02-16 08:00,2026-02-19 15:00,,
ZX-12820,Complete Drywall & Inspect - Fire Alarm 5 - 4F-FAB140507,Complete,Fire Alarm 5 - 4F -SUW-FAB140507,,,,,,,,2025-05-16 08:00,2025-05-19 17:00,2025-05-16 08:00,2025-05-21 16:00
FAB140507A-03,INSTALL DOOR FRAMES - FAB140507A,Complete,Fire Alarm 5 - 4F -SUW-FAB140507,,,,,,,,2025-06-20 08:00,2025-06-27 17:00,2025-06-11 08:00,2025-06-12 16:00
FAB140507A-04,INSTALL DOOR & HARDWARE - FAB140507A,Not Started,Fire Alarm 5 - 4F -SUW-FAB140507,,,,,,,,2025-11-21 08:00,2025-11-27 17:00,,
FAB140507A-05,PAINT & PROTECT DOORS & FRAMES -  FAB140507A,Not Started,Fire Alarm 5 - 4F -SUW-FAB140507,,,,,,,,2026-02-16 08:00,2026-02-19 15:00,,
ZX-12040,Complete Drywall & Inspect - Elevator Hall #05 - 4F-SUW-FAB140508,Complete,Elevator Hall 5 - 4F -SUW-FAB140508,,,,,,,,2025-09-01 08:00,2025-09-05 17:00,2025-09-01 08:00,2025-09-05 17:00
FAB140508A-01,INSTALL DOOR FRAMES - FAB140508A,Not Started,Elevator Hall 5 - 4F -SUW-FAB140508,,,,,,,,2025-12-01 08:00,2025-12-01 17:00,,
FAB140508A-04,INSTALL DOOR & HARDWARE - FAB140508A,Not Started,Elevator Hall 5 - 4F -SUW-FAB140508,,,,,,,,2025-12-03 08:00,2025-12-09 17:00,,
FAB140508A-05,PAINT & PROTECT DOORS & FRAMES -  FAB140508A,Not Started,Elevator Hall 5 - 4F -SUW-FAB140508,,,,,,,,2026-02-16 08:00,2026-02-19 15:00,,
FAB140508B-01,INSTALL DOOR FRAMES - FAB140508B,Complete,Elevator Hall 5 - 4F -SUW-FAB140508,,,,,,,,2025-07-11 08:00,2025-07-11 17:00,2025-07-11 08:00,2025-07-11 17:00
FAB140508B-04,INSTALL DOOR & HARDWARE - FAB140508B,Not Started,Elevator Hall 5 - 4F -SUW-FAB140508,,,,,,,,2025-11-21 08:00,2025-11-27 17:00,,
FAB140508B-05,PAINT & PROTECT DOORS & FRAMES -  FAB140508B,Not Started,Elevator Hall 5 - 4F -SUW-FAB140508,,,,,,,,2026-02-16 08:00,2026-02-19 15:00,,
ZX-12340,Complete Drywall & Inspect - Elevator #05 - 4F-1FAB-EL5,Complete,Elevator 5 - 4F -SUW-FAB1-EL05,,,,,,,,2025-09-29 08:00,2025-09-30 17:00,2025-09-29 08:00,2025-09-30 17:00
ZX-12640,Complete Drywall & Inspect - NW Breezway 4F,Complete,NW Breezway - 4F - SUW,,,,,,,,2025-10-01 08:00,2025-10-14 17:00,2025-10-01 08:00,2025-10-13 17:00
ZX-12130,Complete Drywall & Inspect - I/O Rm 2 - 4F-SUW-FAB140501 NON RATED WALLS,Complete,I/O Rm 2 - 4F - SUW-FAB140501,,,,,,,,2025-06-13 08:00,2025-06-23 17:00,2025-06-13 08:00,2025-06-19 16:00
FAB140501A-03,INSTALL DOOR FRAMES - FAB140501A,Not Started,I/O Rm 2 - 4F - SUW-FAB140501,,,,,,,,2025-12-10 08:00,2025-12-10 17:00,,
FAB140501A-04,INSTALL DOOR & HARDWARE - FAB140501A,Not Started,I/O Rm 2 - 4F - SUW-FAB140501,,,,,,,,2025-12-11 08:00,2025-12-17 17:00,,
FAB140501A-05,PAINT & PROTECT DOORS & FRAMES -  FAB140501A,Not Started,I/O Rm 2 - 4F - SUW-FAB140501,,,,,,,,2026-02-16 08:00,2026-02-19 15:00,,
ZX-12430,Complete Drywall & Inspect - MCC Rm 2 - 4F-SUW-FAB140509 NON RATED WALLS,Complete,MCC Rm 2 - 4F -SUW-FAB140509,,,,,,,,2025-06-10 08:00,2025-06-19 17:00,2025-06-10 08:00,2025-08-01 17:00
FAB140509A-01,INSTALL DOOR FRAMES - FAB140509A,Not Started,MCC Rm 2 - 4F -SUW-FAB140509,,,,,,,,2025-11-21 08:00,2025-11-21 17:00,,
FAB140509A-04,INSTALL DOOR & HARDWARE - FAB140509A,Not Started,MCC Rm 2 - 4F -SUW-FAB140509,,,,,,,,2025-11-24 08:00,2025-11-28 17:00,,
FAB140509A-05,PAINT & PROTECT DOORS & FRAMES -  FAB140509A,Not Started,MCC Rm 2 - 4F -SUW-FAB140509,,,,,,,,2026-02-16 08:00,2026-02-19 15:00,,
FAB140509B-01,INSTALL DOOR FRAMES - FAB140509B,Not Started,MCC Rm 2 - 4F -SUW-FAB140509,,,,,,,,2025-12-10 08:00,2025-12-10 17:00,,
FAB140509B-04,INSTALL DOOR & HARDWARE - FAB140509B,Not Started,MCC Rm 2 - 4F -SUW-FAB140509,,,,,,,,2025-12-12 08:00,2025-12-18 17:00,,
FAB140509B-05,PAINT & PROTECT DOORS & FRAMES -  FAB140509B,Not Started,MCC Rm 2 - 4F -SUW-FAB140509,,,,,,,,2026-02-16 08:00,2026-02-19 15:00,,
ZX-12730,SECAI TOOK OVER FOR DESIGN ISSUES - Complete Drywall & Inspect - Rated Chase West - 4F-SUW-FAB140510,Complete,Rated Chase West - 4F -SUW-FAB140510,,,,,,,,2025-08-04 08:00,2025-08-15 17:00,2025-08-15 08:00,2025-08-15 17:00
FAB140510A-03,INSTALL DOOR FRAMES - FAB140510A,Not Started,Rated Chase West - 4F -SUW-FAB140510,,,,,,,,2025-11-21 08:00,2025-11-21 17:00,,
FAB140510A-04,INSTALL DOOR & HARDWARE - FAB140510A,Not Started,Rated Chase West - 4F -SUW-FAB140510,,,,,,,,2025-11-24 08:00,2025-11-28 17:00,,
FAB140510A-05,PAINT & PROTECT DOORS & FRAMES -  FAB140510A,Not Started,Rated Chase West - 4F -SUW-FAB140510,,,,,,,,2026-02-16 08:00,2026-02-19 15:00,,
ZX-12280,Complete Drywall & Inspect - Duct Shaft - 4F-SUW-FAB140502 (MK MARLOW),Complete,Duct Shaft - 4F -SUW-FAB140502,,,,,,,,2025-09-02 08:00,2025-09-08 17:00,2025-09-02 08:00,2025-09-08 17:00
FAB140502A-03,INSTALL DOOR FRAMES - FAB140502A,Not Started,Duct Shaft - 4F -SUW-FAB140502,,,,,,,,2025-11-21 08:00,2025-11-21 17:00,,
FAB140502A-04,INSTALL DOOR & HARDWARE - FAB140502A,Not Started,Duct Shaft - 4F -SUW-FAB140502,,,,,,,,2025-11-24 08:00,2025-11-28 17:00,,
FAB140502A-05,PAINT & PROTECT DOORS & FRAMES -  FAB140502A,Not Started,Duct Shaft - 4F -SUW-FAB140502,,,,,,,,2026-02-16 08:00,2026-02-19 15:00,,
FAB142101B-03,INSTALL DOOR FRAMES - FAB142101B,Not Started,Duct Shaft - 4F -SUW-FAB140502,,,,,,,,2025-11-21 08:00,2025-11-21 17:00,,
FAB142101B-04,INSTALL DOOR & HARDWARE - FAB142101B,Not Started,Duct Shaft - 4F -SUW-FAB140502,,,,,,,,2025-11-24 08:00,2025-11-28 17:00,,
FAB142101B-05,PAINT & PROTECT DOORS & FRAMES -  FAB142101B,Not Started,Duct Shaft - 4F -SUW-FAB140502,,,,,,,,2026-02-16 08:00,2026-02-19 15:00,,
FAB142101C-03,INSTALL DOOR FRAMES - FAB142101C,Not Started,Duct Shaft - 4F -SUW-FAB140502,,,,,,,,2025-11-21 08:00,2025-11-21 17:00,,
FAB142101C -04,INSTALL DOOR & HARDWARE - FAB142101C,Not Started,Duct Shaft - 4F -SUW-FAB140502,,,,,,,,2025-11-24 08:00,2025-11-28 17:00,,
FAB142101C-05,PAINT & PROTECT DOORS & FRAMES -  FAB142101C,Not Started,Duct Shaft - 4F -SUW-FAB140502,,,,,,,,2026-02-16 08:00,2026-02-19 15:00,,
ZX-12580,Complete Drywall & Inspect - Vestibule 3 - 4F-SUW-FAB140303,Complete,Vestibule 3 - 4F -SUW-FAB140303,,,,,,,,2025-06-19 08:00,2025-06-27 17:00,2025-06-10 08:00,2025-08-08 17:00
FAB140303A-01,INSTALL DOOR FRAMES - FAB140303A,Not Started,Vestibule 3 - 4F -SUW-FAB140303,,,,,,,,2025-12-10 08:00,2025-12-10 17:00,,
FAB140303A-04,INSTALL DOOR & HARDWARE - FAB140303A,Not Started,Vestibule 3 - 4F -SUW-FAB140303,,,,,,,,2025-12-12 08:00,2025-12-18 17:00,,
FAB140303A-05,PAINT & PROTECT DOORS & FRAMES - FAB140303A,Not Started,Vestibule 3 - 4F -SUW-FAB140303,,,,,,,,2026-02-16 08:00,2026-02-19 15:00,,
FAB140303B-01,INSTALL DOOR FRAMES - FAB140303B,Complete,Vestibule 3 - 4F -SUW-FAB140303,,,,,,,,2025-07-03 08:00,2025-07-03 17:00,2025-05-22 08:00,2025-05-22 16:00
FAB140303B-04,INSTALL DOOR & HARDWARE - FAB140303B,Active,Vestibule 3 - 4F -SUW-FAB140303,,,,,,,,2025-09-10 08:00,2025-09-16 17:00,2025-09-10 08:00,
FAB140303B-05,PAINT & PROTECT DOORS & FRAMES - FAB140303B,Not Started,Vestibule 3 - 4F -SUW-FAB140303,,,,,,,,2026-02-16 08:00,2026-02-19 15:00,,
FAB140303C-01,INSTALL DOOR FRAMES - FAB140303C,Complete,Vestibule 3 - 4F -SUW-FAB140303,,,,,,,,2025-07-03 08:00,2025-07-03 17:00,2025-05-22 08:00,2025-05-22 16:00
FAB140303C-04,INSTALL DOOR & HARDWARE - FAB140303C,Not Started,Vestibule 3 - 4F -SUW-FAB140303,,,,,,,,2025-12-01 08:00,2025-12-05 17:00,,
FAB140303C-05,PAINT & PROTECT DOORS & FRAMES  - FAB140303C,Not Started,Vestibule 3 - 4F -SUW-FAB140303,,,,,,,,2026-02-16 08:00,2026-02-19 15:00,,
ZX-12880,Complete Drywall & Inspect - Voc CTR Rm - 4F-SUW-FAB140301,Complete,Voc CTR Rm - 4F -SUW-FAB140301,,,,,,,,2025-06-23 08:00,2025-07-01 17:00,2025-05-15 08:00,2025-05-19 16:00
FAB140301A-01,INSTALL DOOR FRAMES - FAB140301A,Not Started,Voc CTR Rm - 4F -SUW-FAB140301,,,,,,,,2025-12-10 08:00,2025-12-10 17:00,,
FAB140301A-04,INSTALL DOOR & HARDWARE - FAB140301A,Not Started,Voc CTR Rm - 4F -SUW-FAB140301,,,,,,,,2025-12-12 08:00,2025-12-18 17:00,,
FAB140301A-05,PAINT & PROTECT DOORS & FRAMES -  FAB140301A,Not Started,Voc CTR Rm - 4F -SUW-FAB140301,,,,,,,,2026-02-16 08:00,2026-02-19 15:00,,
ZX-12250,Complete Drywall & Inspect - Duct Shaft - 4F-SUW-FAB140201 (MK MARLOW),Complete,Duct Shaft - 4F -SUW-FAB140201,,,,,,,,2025-09-02 08:00,2025-09-08 17:00,2025-09-02 08:00,2025-09-08 17:00
FAB140201A-01,IMPACT - INSTALL/REWORK DRYWALL FRAMING AROUND DOORS - FAB140201A,Complete,Duct Shaft - 4F -SUW-FAB140201,,,,,,,,2025-07-30 08:00,2025-08-07 17:00,2025-07-11 08:00,2025-07-11 17:00
FAB140201A-03,INSTALL DOOR FRAMES - FAB140201A,Complete,Duct Shaft - 4F -SUW-FAB140201,,,,,,,,2025-08-11 08:00,2025-08-11 17:00,2025-07-11 08:00,2025-07-11 17:00
FAB140201A-04,INSTALL DOOR & HARDWARE - FAB140201A,Not Started,Duct Shaft - 4F -SUW-FAB140201,,,,,,,,2025-11-21 08:00,2025-11-27 17:00,,
FAB140201A-05,PAINT & PROTECT DOORS & FRAMES -  FAB140201A,Not Started,Duct Shaft - 4F -SUW-FAB140201,,,,,,,,2026-02-16 08:00,2026-02-19 15:00,,
FAB142101A-03,INSTALL DOOR FRAMES - FAB142101A,Not Started,Duct Shaft - 4F -SUW-FAB140201,,,,,,,,2025-11-21 08:00,2025-11-21 17:00,,
FAB142101A-04,INSTALL DOOR & HARDWARE - FAB142101A,Not Started,Duct Shaft - 4F -SUW-FAB140201,,,,,,,,2025-11-24 08:00,2025-11-28 17:00,,
FAB142101A-05,PAINT & PROTECT DOORS & FRAMES -  FAB142101A,Not Started,Duct Shaft - 4F -SUW-FAB140201,,,,,,,,2026-02-16 08:00,2026-02-19 15:00,,
ZX-12550,Complete Drywall & Inspect - IT/Security 1 - 4F-SUW-FAB140105,Complete,IT/Security 1 - 4F -SUW-FAB140105,,,,,,,,2025-06-16 08:00,2025-06-17 17:00,2025-06-02 08:00,2025-06-04 16:00
TR-FAB140105A-03,INSTALL DOOR FRAMES - TR - FAB140105A,Complete,IT/Security 1 - 4F -SUW-FAB140105,,,,,,,,2025-07-03 08:00,2025-07-11 17:00,2025-07-03 08:00,2025-07-03 17:00
TR-FAB140105A-04,INSTALL DOOR & HARDWARE - TR - FAB140105A,Not Started,IT/Security 1 - 4F -SUW-FAB140105,,,,,,,,2025-11-21 08:00,2025-11-27 17:00,,
TR-FAB140105A-05,PAINT & PROTECT DOORS & FRAMES -  TR - FAB140105A,Not Started,IT/Security 1 - 4F -SUW-FAB140105,,,,,,,,2026-02-16 08:00,2026-02-19 15:00,,
ZX-12850,Complete Drywall & Inspect - Fire Alarm 1 - 4F-SUW-FAB140103,Complete,Fire Alarm 1 - 4F -SUW-FAB140103,,,,,,,,2025-06-10 08:00,2025-06-18 17:00,2025-06-10 08:00,2025-06-16 16:00
FAB140103A-03,INSTALL DOOR FRAMES - FAB140103A,Not Started,Fire Alarm 1 - 4F -SUW-FAB140103,,,,,,,,2025-11-21 08:00,2025-11-21 17:00,,
FAB140103A-04,INSTALL DOOR & HARDWARE - FAB140103A,Not Started,Fire Alarm 1 - 4F -SUW-FAB140103,,,,,,,,2025-11-24 08:00,2025-11-28 17:00,,
FAB140103A-05,PAINT & PROTECT DOORS & FRAMES -  FAB140103A,Not Started,Fire Alarm 1 - 4F -SUW-FAB140103,,,,,,,,2026-02-16 08:00,2026-02-19 15:00,,
FAB140103A-11,IMPACT - PROCUREMENT - REORDERED DOORS (JAMB DEPTH ISSUE),Complete,Fire Alarm 1 - 4F -SUW-FAB140103,,,,,,,,2025-06-20 08:00,2025-08-14 17:00,2025-06-20 08:00,2025-06-30 17:00
ZX-12190,Complete Drywall & Inspect - Elevator Hall #01 - 4F-SUW-FAB140101,Complete,Elevator Hall 1 - 4F -SUW-FAB140101,,,,,,,,2025-09-04 08:00,2025-09-08 17:00,2025-09-04 08:00,2025-09-08 17:00
FAB140101A-01,INSTALL DOOR FRAMES - FAB140101A,Not Started,Elevator Hall 1 - 4F -SUW-FAB140101,,,,,,,,2025-12-10 08:00,2025-12-10 17:00,,
FAB140101A-04,INSTALL DOOR & HARDWARE - FAB140101A,Not Started,Elevator Hall 1 - 4F -SUW-FAB140101,,,,,,,,2025-12-12 08:00,2025-12-18 17:00,,
FAB140101A-05,PAINT & PROTECT DOORS & FRAMES -  FAB140101A,Not Started,Elevator Hall 1 - 4F -SUW-FAB140101,,,,,,,,2026-02-16 08:00,2026-02-19 15:00,,
FAB140101B-01,INSTALL DOOR FRAMES - FAB140101B,Not Started,Elevator Hall 1 - 4F -SUW-FAB140101,,,,,,,,2025-12-10 08:00,2025-12-10 17:00,,
FAB140101B-04,INSTALL DOOR & HARDWARE - FAB140101B,Not Started,Elevator Hall 1 - 4F -SUW-FAB140101,,,,,,,,2025-12-12 08:00,2025-12-18 17:00,,
FAB140101B-05,PAINT & PROTECT DOORS & FRAMES -  FAB140101B,Not Started,Elevator Hall 1 - 4F -SUW-FAB140101,,,,,,,,2026-02-16 08:00,2026-02-19 15:00,,
FAB140601C-01,INSTALL DOOR FRAMES - FAB140601C,Not Started,Elevator Hall 1 - 4F -SUW-FAB140101,,,,,,,,2025-12-10 08:00,2025-12-10 17:00,,
FAB140601C-04,INSTALL DOOR & HARDWARE - FAB140601C,Not Started,Elevator Hall 1 - 4F -SUW-FAB140101,,,,,,,,2025-12-12 08:00,2025-12-18 17:00,,
FAB140601C-05,PAINT & PROTECT DOORS & FRAMES -  FAB140601C,Not Started,Elevator Hall 1 - 4F -SUW-FAB140101,,,,,,,,2026-02-16 08:00,2026-02-19 15:00,,
FAB140601B-01,INSTALL DOOR FRAMES - FAB140601B,Not Started,Elevator Hall 1 - 4F -SUW-FAB140101,,,,,,,,2025-12-10 08:00,2025-12-10 17:00,,
FAB140601B-04,INSTALL DOOR & HARDWARE - FAB140601B,Not Started,Elevator Hall 1 - 4F -SUW-FAB140101,,,,,,,,2025-12-12 08:00,2025-12-18 17:00,,
FAB140601B-05,PAINT & PROTECT DOORS & FRAMES -  FAB140601B,Not Started,Elevator Hall 1 - 4F -SUW-FAB140101,,,,,,,,2026-02-16 08:00,2026-02-19 15:00,,
ZX-12490,SECAI TOOK OVER FOR ACCELERATION - Drywall & Inspect - Elevator #01 - 4F-1FAB-EL,Complete,Elevator 1 - 4F -SUW-FAB1-EL01,,,,,,,,2025-09-09 08:00,2025-09-19 17:00,2025-09-19 08:00,2025-09-19 17:00
ZX-16600,IMPACT - Complete Drywall & Inspect - Elevator #01 - 4F-1FAB-EL - ELEVATOR TEAM TOOK OVER,Complete,Elevator 1 - 4F -SUW-FAB1-EL01,,,,,,,,2025-05-05 08:00,2025-05-23 17:00,2025-05-05 08:00,2025-09-15 17:00
ZX-12790,Complete Drywall & Inspect - Elevator #1B - 4F-1FAB-EL1B (Only missing FRONT by MK MARLOW),Complete,Elevator 1B-4F-1FAB-EL1B,,,,,,,,2025-05-16 08:00,2025-05-29 17:00,2025-05-16 08:00,2025-08-01 08:00
ZX-13030,Complete Drywall & Inspect - MCC Rm - 4F-SUW-FAB140106,Complete,MCC Rm - 4F -SUW-FAB140106,,,,,,,,2025-05-13 08:00,2025-05-15 17:00,2025-05-13 08:00,2025-05-15 16:00
FAB140106A-01,IMPACT - INSTALL/REWORK DRYWALL FRAMING AROUND DOORS - FAB140106A,Complete,MCC Rm - 4F -SUW-FAB140106,,,,,,,,2025-09-08 08:00,2025-09-09 17:00,2025-09-08 08:00,2025-09-09 17:00
FAB140106A-03,INSTALL DOOR FRAMES - FAB140106A,Complete,MCC Rm - 4F -SUW-FAB140106,,,,,,,,2025-09-11 08:00,2025-09-11 17:00,2025-09-11 08:00,2025-09-11 17:00
FAB140106A-04,INSTALL DOOR & HARDWARE - FAB140106A,Active,MCC Rm - 4F -SUW-FAB140106,,,,,,,,2025-11-19 08:00,2025-11-25 17:00,2025-11-19 08:00,
FAB140106A-05,PAINT & PROTECT DOORS & FRAMES -  FAB140106A,Not Started,MCC Rm - 4F -SUW-FAB140106,,,,,,,,2026-02-16 08:00,2026-02-19 15:00,,
FAB140106B-01,INSTALL DOOR FRAMES - FAB140106B,Not Started,MCC Rm - 4F -SUW-FAB140106,,,,,,,,2025-12-10 08:00,2025-12-10 17:00,,
FAB140106B-04,INSTALL DOOR & HARDWARE - FAB140106B,Not Started,MCC Rm - 4F -SUW-FAB140106,,,,,,,,2025-12-12 08:00,2025-12-18 17:00,,
FAB140106B-05,PAINT & PROTECT DOORS & FRAMES -  FAB140106B,Not Started,MCC Rm - 4F -SUW-FAB140106,,,,,,,,2026-02-16 08:00,2026-02-19 15:00,,
FAB140106A-40,IMPACT - SECAI LAYDOWN FOR DOORS AND FRAMES - FAB140106A,Complete,MCC Rm - 4F -SUW-FAB140106,,,,,,,,2025-07-09 08:00,2025-07-15 17:00,2025-07-09 08:00,2025-09-08 17:00
ZX-13330,Complete Drywall & Inspect - I/O Rm - 4F-SUW-FAB140109 NON RATED WALLS,Complete,I/O Rm - 4F -SUW-FAB140109,,,,,,,,2025-06-11 08:00,2025-06-16 17:00,2025-06-11 08:00,2025-06-16 16:00
FAB140109A-01,INSTALL DOOR FRAMES - FAB140109A,Complete,I/O Rm - 4F -SUW-FAB140109,,,,,,,,2025-09-08 08:00,2025-09-08 17:00,2025-09-08 08:00,2025-09-08 17:00
FAB140109A-04,INSTALL DOOR & HARDWARE - FAB140109A,Active,I/O Rm - 4F -SUW-FAB140109,,,,,,,,2025-09-10 08:00,2025-09-16 17:00,2025-09-10 08:00,
FAB140109A-05,PAINT & PROTECT DOORS & FRAMES -  FAB140109A,Not Started,I/O Rm - 4F -SUW-FAB140109,,,,,,,,2026-02-16 08:00,2026-02-19 15:00,,
FAB140109A-30,IMPACT - SECAI LAYDOWN FOR DOORS AND FRAMES - FAB140109A,Complete,I/O Rm - 4F -SUW-FAB140109,,,,,,,,2025-07-09 08:00,2025-07-15 17:00,2025-07-09 08:00,2025-09-04 17:00
ZX-13630,Complete Drywall & Inspect - Duct Shaft - 4F-SUW-FAB140104 (MK MARLOW),Complete,Duct Shaft - 4F -SUW-FAB140104,,,,,,,,2025-09-02 08:00,2025-09-08 17:00,2025-09-02 08:00,2025-09-08 17:00
FAB140104A-01,IMPACT - INSTALL/REWORK DRYWALL FRAMING AROUND DOORS - FAB140104A,Complete,Duct Shaft - 4F -SUW-FAB140104,,,,,,,,2025-05-01 08:00,2025-05-09 17:00,2025-05-01 08:00,2025-05-06 17:00
FAB140104A-03,INSTALL DOOR FRAMES - FAB140104A,Complete,Duct Shaft - 4F -SUW-FAB140104,,,,,,,,2025-09-11 08:00,2025-09-11 17:00,2025-05-06 00:00,2025-05-06 16:00
FAB140104A-04,INSTALL DOOR & HARDWARE - FAB140104A,Active,Duct Shaft - 4F -SUW-FAB140104,,,,,,,,2025-11-10 08:00,2025-11-14 17:00,2025-11-10 08:00,
FAB140104A-05,PAINT & PROTECT DOORS & FRAMES -  FAB140104A,Not Started,Duct Shaft - 4F -SUW-FAB140104,,,,,,,,2026-02-16 08:00,2026-02-19 15:00,,
FAB140104B-03,INSTALL DOOR FRAMES - FAB140104BB,Not Started,Duct Shaft - 4F -SUW-FAB140104,,,,,,,,2025-11-21 08:00,2025-11-21 17:00,,
FAB140104B-04,INSTALL DOOR & HARDWARE - FAB140104BB,Not Started,Duct Shaft - 4F -SUW-FAB140104,,,,,,,,2025-11-24 08:00,2025-11-28 17:00,,
FAB140104B-05,PAINT & PROTECT DOORS & FRAMES -  FAB140104B,Not Started,Duct Shaft - 4F -SUW-FAB140104,,,,,,,,2026-02-16 08:00,2026-02-19 15:00,,
ZX-12970,Complete Drywall & Inspect - Elevator Machine - 5F-FAB140110,Complete,Elevator Machine - 4F -SUW-FAB140110,,,,,,,,2025-09-04 08:00,2025-09-05 17:00,2025-09-04 08:00,2025-09-05 17:00
FAB140110A-03,INSTALL DOOR FRAMES - FAB140110A,Not Started,Elevator Machine - 4F -SUW-FAB140110,,,,,,,,2025-11-21 08:00,2025-11-21 17:00,,
FAB140110A-04,INSTALL DOOR & HARDWARE - FAB140110A,Not Started,Elevator Machine - 4F -SUW-FAB140110,,,,,,,,2025-11-24 08:00,2025-11-28 17:00,,
FAB140110A-05,PAINT & PROTECT DOORS & FRAMES -  FAB140110A,Not Started,Elevator Machine - 4F -SUW-FAB140110,,,,,,,,2026-02-16 08:00,2026-02-19 15:00,,
ZX-13540,Complete Drywall & Inspect - 4F-D-G/3 North Face,Complete,4F-D-G/3 North Face - 4F - SUE,,,,,,,,2025-09-04 08:00,2025-09-08 17:00,2025-09-04 08:00,2025-09-08 17:00
ZX-16750,Complete Drywall & Inspect - Stair #03 SUW- 4F- FAB1-ST03,Complete,Stair 3 - 4F -SUW-FAB1-ST03,,,,,,,,2025-05-13 08:00,2025-05-26 17:00,2025-05-13 08:00,2025-10-03 08:00
ZX-16780,Complete Drywall CEILING & Inspect - Stair #03 SUW- 4F- FAB1-ST03,Complete,Stair 3 - 4F -SUW-FAB1-ST03,,,,,,,,2025-09-29 08:00,2025-10-03 17:00,2025-09-29 08:00,2025-10-03 17:00
ZX-17560,IMPACT RFI Drywall CEILING - Stair #03,Complete,Stair 3 - 4F -SUW-FAB1-ST03,,,,,,,,2025-06-16 08:00,2025-06-20 17:00,2025-06-16 08:00,2025-06-18 16:00
FAB140401A-03,INSTALL DOOR FRAMES - FAB140401A,Not Started,Stair 3 - 4F -SUW-FAB1-ST03,,,,,,,,2025-11-21 08:00,2025-11-21 17:00,,
FAB140401A-04,INSTALL DOOR & HARDWARE - FAB140401A,Not Started,Stair 3 - 4F -SUW-FAB1-ST03,,,,,,,,2025-11-24 08:00,2025-11-28 17:00,,
FAB140401A-05,PAINT & PROTECT DOORS & FRAMES -  FAB140401A,Not Started,Stair 3 - 4F -SUW-FAB1-ST03,,,,,,,,2026-02-16 08:00,2026-02-20 17:00,,
ZX-16970,Complete Drywall & Inspect - Stair #20 SUE- 4F- FAB1-ST20,Complete,Stair 20 - 4F-SUE-FAB1-ST20,,,,,,,,2025-05-13 08:00,2025-05-26 17:00,2025-05-13 08:00,2025-09-30 08:00
ZX-17000,Complete Drywall CEILING & Inspect - Stair #20 SUE- 4F- FAB1-ST20,Complete,Stair 20 - 4F-SUE-FAB1-ST20,,,,,,,,2025-09-29 08:00,2025-10-03 17:00,2025-09-29 08:00,2025-10-03 17:00
ZX-17570,IMPACT RFI Drywall CEILING - Stair #20,Complete,Stair 20 - 4F-SUE-FAB1-ST20,,,,,,,,2025-06-16 08:00,2025-06-20 17:00,2025-06-16 08:00,2025-06-19 16:00
FAB1-ST20D-03,INSTALL DOOR FRAMES - FAB1-ST20D,Not Started,Stair 20 - 4F-SUE-FAB1-ST20,,,,,,,,2025-11-21 08:00,2025-11-21 17:00,,
FAB1-ST20D-04,INSTALL DOOR & HARDWARE - FAB1-ST20D,Not Started,Stair 20 - 4F-SUE-FAB1-ST20,,,,,,,,2025-11-24 08:00,2025-11-28 17:00,,
FAB1-ST20D-05,PAINT & PROTECT DOORS & FRAMES - FAB1-ST20D,Not Started,Stair 20 - 4F-SUE-FAB1-ST20,,,,,,,,2026-02-16 08:00,2026-02-20 17:00,,
ZX-18560,Complete Drywall & Inspect - MCC Rm - 4F-SUW-FAB140106,Complete,TRUSS AREA VESTIBULE - 4F -FIZ-FAB142102 (LVL 4G),,,,,,,,2025-05-13 08:00,2025-05-15 17:00,2025-05-13 08:00,2025-05-15 16:00
FAB142102A-03,INSTALL DOOR FRAMES - FAB142102A,Not Started,TRUSS AREA VESTIBULE - 4F -FIZ-FAB142102 (LVL 4G),,,,,,,,2025-11-21 08:00,2025-11-21 17:00,,
FAB142102A-04,INSTALL DOOR & HARDWARE - FAB142102A,Not Started,TRUSS AREA VESTIBULE - 4F -FIZ-FAB142102 (LVL 4G),,,,,,,,2025-11-24 08:00,2025-11-28 17:00,,
FAB142102A-05,PAINT & PROTECT DOORS & FRAMES -  FAB142102A,Not Started,TRUSS AREA VESTIBULE - 4F -FIZ-FAB142102 (LVL 4G),,,,,,,,2026-02-16 08:00,2026-02-19 15:00,,
FAB145101C-02,INSTALL DOOR FRAMES - FAB145101C,Complete,TRUSS AREA VESTIBULE - 4F -FIZ-FAB142102 (LVL 4G),,,,,,,,2025-06-27 08:00,2025-06-30 17:00,2025-06-30 08:00,2025-06-30 16:00
FAB145101C-04,INSTALL DOOR & HARDWARE - FAB145101C,Not Started,TRUSS AREA VESTIBULE - 4F -FIZ-FAB142102 (LVL 4G),,,,,,,,2025-11-21 08:00,2025-11-27 17:00,,
FAB145101C-03,SECAI ROUGH IN FRAME - FAB145101C,Complete,TRUSS AREA VESTIBULE - 4F -FIZ-FAB142102 (LVL 4G),,,,,,,,2025-07-10 08:00,2025-07-10 17:00,2025-06-30 08:00,2025-06-30 16:00
FAB145101C-05,PAINT & PROTECT DOORS & FRAMES -  FAB145101C,Not Started,TRUSS AREA VESTIBULE - 4F -FIZ-FAB142102 (LVL 4G),,,,,,,,2026-02-16 08:00,2026-02-19 15:00,,
FAB166101A-04,INSTALL DOOR & HARDWARE - FAB166101A,Not Started,Mechanical Penthouse - 6F - FIZ-FAB166101,,,,,,,,2025-12-12 08:00,2025-12-18 17:00,,
FAB166101A-05,PAINT & PROTECT DOORS & FRAMES -  FAB166101A,Not Started,Mechanical Penthouse - 6F - FIZ-FAB166101,,,,,,,,2026-02-16 08:00,2026-02-19 17:00,,
FAB166101A-03,INSTALL DOOR FRAMES - FAB166101A,Not Started,Mechanical Penthouse - 6F - FIZ-FAB166101,,,,,,,,2025-12-10 08:00,2025-12-10 17:00,,
ZX-1120,Complete Drywall & Inspect - Airlock #1-Airlock 1 - 3F-FAB130110,Complete,Air Lock 1 - 3F -SUW-FAB130110,,,,,,,,2025-05-05 08:00,2025-05-08 17:00,2025-05-05 08:00,2025-05-08 16:00
ZX-1180,Complete Drywall & Inspect - Airlock #5-Airlock 5 - 3F-FAB130505,Complete,Air Lock 5 - 3F -SUW-FAB130505,,,,,,,,2025-05-05 08:00,2025-05-13 17:00,2025-05-05 08:00,2025-05-19 16:00
ZX-17350,IMPACT - SECAI DENIAL OF ACCEL COST FOR BERG - Complete Drywall & Inspect - Airlock #5-Airlock 5 - 3F-FAB130505,Complete,Air Lock 5 - 3F -SUW-FAB130505,,,,,,,,2025-05-05 08:00,2025-05-13 17:00,2025-05-12 08:00,2025-05-16 16:00
FAB130505A-03,INSTALL DOOR FRAMES - FAB130505A,Complete,Air Lock 5 - 3F -SUW-FAB130505,,,,,,,,2025-06-13 08:00,2025-06-23 17:00,2025-01-20 08:00,2025-01-20 16:00
FAB130505A-04,INSTALL DOOR & HARDWARE - FAB130505A,Active,Air Lock 5 - 3F -SUW-FAB130505,,,,,,,,2025-06-13 08:00,2025-06-19 17:00,2025-06-13 08:00,
FAB130505A-05,PAINT & PROTECT DOORS & FRAMES -  FAB130505A,Not Started,Air Lock 5 - 3F -SUW-FAB130505,,,,,,,,2026-02-16 08:00,2026-02-17 17:00,,
FAB130505C-01,IMPACT - INSTALL/REWORK DRYWALL FRAMING AROUND DOORS - FAB136102C,Complete,Air Lock 5 - 3F -SUW-FAB130505,,,,,,,,2025-07-29 08:00,2025-08-06 17:00,2025-07-29 08:00,2025-08-06 17:00
FAB130505C-03,INSTALL DOOR FRAMES - FAB130505C,Complete,Air Lock 5 - 3F -SUW-FAB130505,,,,,,,,2025-08-06 08:00,2025-08-06 17:00,2025-08-06 08:00,2025-08-06 17:00
FAB130505C-04,INSTALL DOOR & HARDWARE - FAB130505C,Not Started,Air Lock 5 - 3F -SUW-FAB130505,,,,,,,,2025-11-21 08:00,2025-11-27 17:00,,
FAB130505C-05,PAINT & PROTECT DOORS & FRAMES -  FAB130505C,Not Started,Air Lock 5 - 3F -SUW-FAB130505,,,,,,,,2026-02-16 08:00,2026-02-19 15:00,,
ZX-1210,Complete Drywall & Inspect - Vestibule #22 - 3F-FAB136108,Complete,Vestibule 22 - 3F -SUE-FAB136108,,,,,,,,2025-09-23 08:00,2025-09-25 17:00,2025-09-23 08:00,2025-09-25 17:00
ZX-16430,IMPACT - SECAI DENIAL OF ACCEL COST FOR BERG - Complete Drywall & Inspect - Vestibule #22 - 3F-FAB136108,Complete,Vestibule 22 - 3F -SUE-FAB136108,,,,,,,,2025-05-05 08:00,2025-05-30 17:00,2025-05-05 08:00,2025-05-18 16:00
FAB136108B-03,INSTALL DOOR FRAMES - FAB136108B,Complete,Vestibule 22 - 3F -SUE-FAB136108,,,,,,,,2025-06-02 08:00,2025-06-02 17:00,2025-01-24 08:00,2025-01-24 16:00
FAB136108B-04,INSTALL DOOR & HARDWARE - FAB136108B,Active,Vestibule 22 - 3F -SUE-FAB136108,,,,,,,,2025-05-07 08:00,2025-05-13 17:00,2025-05-07 08:00,
FAB136108B-05,PAINT & PROTECT DOORS & FRAMES -  FAB136108B,Not Started,Vestibule 22 - 3F -SUE-FAB136108,,,,,,,,2026-02-16 08:00,2026-02-19 15:00,,
FAB136108C-03,INSTALL DOOR FRAMES - FAB136108C,Complete,Vestibule 22 - 3F -SUE-FAB136108,,,,,,,,2025-06-09 13:00,2025-06-10 12:00,2025-02-13 00:00,2025-02-13 12:00
FAB136108C-04,INSTALL DOOR & HARDWARE - FAB136108C,Active,Vestibule 22 - 3F -SUE-FAB136108,,,,,,,,2025-06-11 08:00,2025-06-17 17:00,2025-06-11 08:00,
FAB136108C-05,PAINT & PROTECT DOORS & FRAMES -  FAB136108C,Not Started,Vestibule 22 - 3F -SUE-FAB136108,,,,,,,,2026-02-16 08:00,2026-02-19 15:00,,
ZX-1240,Complete Drywall & Inspect - Elevator Hall #22 - 3F-FAB136107,Complete,Elevator Hall 22 - 3F -SUE-FAB136107,,,,,,,,2025-08-07 10:00,2025-08-18 10:00,2025-08-07 10:00,2025-08-18 10:00
FAB136107A-03,INSTALL DOOR FRAMES - FAB136107A,Complete,Elevator Hall 22 - 3F -SUE-FAB136107,,,,,,,,2025-07-23 13:00,2025-07-24 12:00,2025-01-08 12:00,2025-01-08 12:00
FAB136107A-04,INSTALL DOOR & HARDWARE - FAB136107A,Not Started,Elevator Hall 22 - 3F -SUE-FAB136107,,,,,,,,2025-11-21 08:00,2025-11-27 17:00,,
FAB136107A-05,PAINT & PROTECT DOORS & FRAMES -  FAB136107A,Not Started,Elevator Hall 22 - 3F -SUE-FAB136107,,,,,,,,2026-02-16 08:00,2026-02-19 15:00,,
FAB136107C-03,INSTALL DOOR FRAMES - FAB136107C,Complete,Elevator Hall 22 - 3F -SUE-FAB136107,,,,,,,,2025-09-25 10:00,2025-10-06 10:00,2025-07-22 10:00,2025-07-23 10:00
FAB136107C-04,INSTALL DOOR & HARDWARE - FAB136107C,Not Started,Elevator Hall 22 - 3F -SUE-FAB136107,,,,,,,,2025-11-21 08:00,2025-11-27 17:00,,
FAB136107C-05,PAINT & PROTECT DOORS & FRAMES -  FAB136107C,Not Started,Elevator Hall 22 - 3F -SUE-FAB136107,,,,,,,,2026-02-16 08:00,2026-02-19 15:00,,
FAB136107D-01,IMPACT - INSTALL/REWORK DRYWALL FRAMING AROUND DOORS - FAB136107D,Complete,Elevator Hall 22 - 3F -SUE-FAB136107,,,,,,,,2025-09-22 10:00,2025-10-01 10:00,2025-03-27 10:00,2025-04-04 10:00
FAB136107D-03,INSTALL DOOR FRAMES - FAB136107D,Complete,Elevator Hall 22 - 3F -SUE-FAB136107,,,,,,,,2025-07-23 13:00,2025-07-24 12:00,2025-04-04 00:00,2025-04-04 12:00
FAB136107D-04,INSTALL DOOR & HARDWARE - FAB136107D,Not Started,Elevator Hall 22 - 3F -SUE-FAB136107,,,,,,,,2025-11-21 08:00,2025-11-27 17:00,,
FAB136107D-05,PAINT & PROTECT DOORS & FRAMES -  FAB136107D,Not Started,Elevator Hall 22 - 3F -SUE-FAB136107,,,,,,,,2026-02-16 08:00,2026-02-19 15:00,,
FAB136107C-11,IMPACT - SECAI - ADDED FIRE RATED DOORS (CONCEPT FRAMES INC) - Design changed installed,Complete,Elevator Hall 22 - 3F -SUE-FAB136107,,,,,,,,2025-07-25 08:00,2025-08-01 17:00,2025-07-09 11:35,2025-07-17 15:00
ZX-1270,Complete Drywall & Inspect - Clean Vestibule #21 - 3F- FAB136203,Complete,Clean Vestibule 21 - 3F -SUE-FAB136203,,,,,,,,2025-06-10 08:00,2025-06-10 08:00,2025-05-26 08:00,2025-05-27 15:00
ZX-16620,IMPACT - MEP OPENING - Complete Drywall & Inspect - Clean Vestibule #21 - 3F- FAB136203,Complete,Clean Vestibule 21 - 3F -SUE-FAB136203,,,,,,,,2025-05-05 08:00,2025-05-05 08:00,2025-05-05 08:00,2025-06-19 16:00
FAB136203A-03,INSTALL DOOR FRAMES - FAB136203A,Complete,Clean Vestibule 21 - 3F -SUE-FAB136203,,,,,,,,2025-06-11 13:00,2025-06-12 12:00,2025-01-17 00:00,2025-01-17 12:00
FAB136203A-04,INSTALL DOOR & HARDWARE - FAB136203A,Not Started,Clean Vestibule 21 - 3F -SUE-FAB136203,,,,,,,,2025-11-21 08:00,2025-11-27 17:00,,
FAB136203A-05,PAINT & PROTECT DOORS & FRAMES -  FAB136203A,Not Started,Clean Vestibule 21 - 3F -SUE-FAB136203,,,,,,,,2026-02-16 08:00,2026-02-19 15:00,,
FAB136203B-03,INSTALL DOOR FRAMES - FAB136203B,Complete,Clean Vestibule 21 - 3F -SUE-FAB136203,,,,,,,,2025-06-11 13:00,2025-06-12 12:00,2025-01-23 00:00,2025-01-23 12:00
FAB136203B-04,INSTALL DOOR & HARDWARE - FAB136203B,Active,Clean Vestibule 21 - 3F -SUE-FAB136203,,,,,,,,2025-06-19 08:00,2025-06-25 17:00,2025-06-19 08:00,
FAB136203B-05,PAINT & PROTECT DOORS & FRAMES -  FAB136203B,Not Started,Clean Vestibule 21 - 3F -SUE-FAB136203,,,,,,,,2026-02-16 08:00,2026-02-17 17:00,,
ZX-18180,IMPACT - DRYWALL for mep opening - Clean Vestibule #21 - 3F- FAB136203,Complete,Clean Vestibule 21 - 3F -SUE-FAB136203,,,,,,,,2025-06-20 08:00,2025-06-23 17:00,2025-06-19 08:00,2025-06-20 16:00
ZX-1300,SECAI TURNOVER FOR ACELERATION - Complete Drywall & Inspect - Elevator Hall #20 - 3F-FAB136311,Complete,Elevator Hall 20 - 3F -SUE-FAB136311,,,,,,,,2025-08-12 08:00,2025-08-20 17:00,2025-07-18 08:00,2025-07-18 17:00
FAB136311A-03,INSTALL DOOR FRAMES - FAB136311A,Complete,Elevator Hall 20 - 3F -SUE-FAB136311,,,,,,,,2025-10-20 08:00,2025-10-20 17:00,2025-10-20 08:00,2025-10-20 17:00
FAB136311A-04,INSTALL DOOR & HARDWARE - FAB136311A,Not Started,Elevator Hall 20 - 3F -SUE-FAB136311,,,,,,,,2025-11-21 08:00,2025-11-27 17:00,,
FAB136311A-05,PAINT & PROTECT DOORS & FRAMES - FAB136311A,Not Started,Elevator Hall 20 - 3F -SUE-FAB136311,,,,,,,,2026-02-16 08:00,2026-02-19 15:00,,
FAB136311B-01,INSTALL DOOR FRAMES - FAB136311B,Complete,Elevator Hall 20 - 3F -SUE-FAB136311,,,,,,,,2025-09-29 08:00,2025-09-29 17:00,2025-09-29 08:00,2025-09-29 17:00
FAB136311B-04,INSTALL DOOR & HARDWARE - FAB136311B,Not Started,Elevator Hall 20 - 3F -SUE-FAB136311,,,,,,,,2025-11-21 08:00,2025-11-27 17:00,,
FAB136311B-05,PAINT & PROTECT DOORS & FRAMES  - FAB136311B,Not Started,Elevator Hall 20 - 3F -SUE-FAB136311,,,,,,,,2026-02-16 08:00,2026-02-19 15:00,,
ZX-1330,Complete Drywall & Inspect - Vestibule #20 - 3F-FAB136310,Complete,Vestibule 20 - 3F -SUE-FAB136310,,,,,,,,2025-05-05 08:00,2025-05-07 17:00,2025-05-05 08:00,2025-05-13 08:00
FAB136310C-03,INSTALL DOOR FRAMES - FAB136310C,Complete,Vestibule 20 - 3F -SUE-FAB136310,,,,,,,,2025-05-27 08:00,2025-06-04 17:00,2025-01-15 08:00,2025-01-15 16:00
FAB136310C-04,INSTALL DOOR & HARDWARE - FAB136310C,Active,Vestibule 20 - 3F -SUE-FAB136310,,,,,,,,2025-04-01 08:00,2025-04-07 17:00,2025-04-01 08:00,
FAB136310C-05,PAINT & PROTECT DOORS & FRAMES -  FAB136310C,Not Started,Vestibule 20 - 3F -SUE-FAB136310,,,,,,,,2026-02-16 08:00,2026-02-17 17:00,,
FAB136310D-03,INSTALL DOOR FRAMES - FAB136310D,Complete,Vestibule 20 - 3F -SUE-FAB136310,,,,,,,,2025-01-24 08:00,2025-02-27 17:00,2025-01-27 08:00,2025-01-27 16:00
FAB136310D-04,INSTALL DOOR & HARDWARE - FAB136310D,Not Started,Vestibule 20 - 3F -SUE-FAB136310,,,,,,,,2025-11-21 08:00,2025-11-27 17:00,,
FAB136310D-05,PAINT & PROTECT DOORS & FRAMES -  FAB136310D,Not Started,Vestibule 20 - 3F -SUE-FAB136310,,,,,,,,2026-02-16 08:00,2026-02-19 15:00,,
ZX-1360,SECAI TOOK OVER FOR ACCELERATION - Complete Drywall & Inspect - Clean Vestibule #19 - 3F-FAB136406,Complete,Clean Vestibule 19 - 3F -SUE-FAB136406,,,,,,,,2025-10-21 08:00,2025-10-22 17:00,2025-10-22 08:00,2025-10-22 17:00
FAB136406A-03,INSTALL DOOR FRAMES - FAB136406A,Not Started,Clean Vestibule 19 - 3F -SUE-FAB136406,,,,,,,,2025-11-28 08:00,2025-11-28 17:00,,
FAB136406A-04,INSTALL DOOR & HARDWARE - FAB136406A,Not Started,Clean Vestibule 19 - 3F -SUE-FAB136406,,,,,,,,2025-12-01 08:00,2025-12-05 17:00,,
FAB136406A-05,PAINT & PROTECT DOORS & FRAMES -  FAB136406A,Not Started,Clean Vestibule 19 - 3F -SUE-FAB136406,,,,,,,,2026-02-16 08:00,2026-02-19 15:00,,
FAB136406B-03,INSTALL DOOR FRAMES  - FAB136406B,Not Started,Clean Vestibule 19 - 3F -SUE-FAB136406,,,,,,,,2025-11-28 08:00,2025-11-28 17:00,,
FAB136406B-04,INSTALL DOOR & HARDWARE - FAB136406B,Not Started,Clean Vestibule 19 - 3F -SUE-FAB136406,,,,,,,,2025-12-01 08:00,2025-12-05 17:00,,
FAB136406B-05,PAINT & PROTECT DOORS & FRAMES -  FAB136406B,Not Started,Clean Vestibule 19 - 3F -SUE-FAB136406,,,,,,,,2026-02-16 08:00,2026-02-19 15:00,,
FAB136406C-03,INSTALL DOOR FRAMES  - FAB136406C,Complete,Clean Vestibule 19 - 3F -SUE-FAB136406,,,,,,,,2025-01-27 08:00,2025-01-27 17:00,2025-01-27 08:00,2025-01-27 17:00
FAB136406C-04,INSTALL DOOR & HARDWARE - FAB136406C,Not Started,Clean Vestibule 19 - 3F -SUE-FAB136406,,,,,,,,2025-11-21 08:00,2025-11-27 17:00,,
FAB136406C-05,PAINT & PROTECT DOORS & FRAMES -  FAB136406C,Not Started,Clean Vestibule 19 - 3F -SUE-FAB136406,,,,,,,,2026-02-16 08:00,2026-02-19 15:00,,
ZX-1390,SECAI TOOK OVER FOR ACCELERATION - Complete Drywall & Inspect - Clean Vestibule #19 - 3F-FAB136407,Complete,Clean Vestibule 19 - 3F -SUE-FAB136407,,,,,,,,2025-10-22 08:00,2025-10-22 17:00,2025-10-22 08:00,2025-10-22 17:00
FAB136407A-03,INSTALL DOOR FRAMES - FAB136407A,Complete,Clean Vestibule 19 - 3F -SUE-FAB136407,,,,,,,,2025-06-10 08:00,2025-06-18 17:00,2025-05-23 08:00,2025-05-23 08:00
FAB136407A-04,INSTALL DOOR & HARDWARE - FAB136407A,Not Started,Clean Vestibule 19 - 3F -SUE-FAB136407,,,,,,,,2025-11-21 08:00,2025-11-27 17:00,,
FAB136407A-05,PAINT & PROTECT DOORS & FRAMES - FAB136407A,Not Started,Clean Vestibule 19 - 3F -SUE-FAB136407,,,,,,,,2026-02-16 08:00,2026-02-19 15:00,,
FAB136407B-03,INSTALL DOOR FRAMES - FAB136407B,Complete,Clean Vestibule 19 - 3F -SUE-FAB136407,,,,,,,,2025-06-10 08:00,2025-06-18 17:00,2025-05-12 08:00,2025-05-13 16:00
FAB136407B-04,INSTALL DOOR & HARDWARE - FAB136407B,Not Started,Clean Vestibule 19 - 3F -SUE-FAB136407,,,,,,,,2025-11-21 08:00,2025-11-27 17:00,,
FAB136407B-05,PAINT & PROTECT DOORS & FRAMES - FAB136407B,Not Started,Clean Vestibule 19 - 3F -SUE-FAB136407,,,,,,,,2026-02-16 08:00,2026-02-19 15:00,,
ZX-1450,Complete Drywall & Inspect - Wafer I/O Entrance - 3F-FAB136501,Complete,Wafer I/O Entrance - 3F -SUE-FAB136501,,,,,,,,2025-06-10 08:00,2025-06-23 17:00,2025-06-02 08:00,2025-06-10 16:00
FAB136502C-04,INSTALL DOOR & HARDWARE - FAB136502C,Not Started,Wafer I/O Entrance - 3F -SUE-FAB136501,,,,,,,,2025-11-21 08:00,2025-11-27 17:00,,
FAB136502C-05,PAINT & PROTECT DOORS & FRAMES -  FAB136502C,Not Started,Wafer I/O Entrance - 3F -SUE-FAB136501,,,,,,,,2026-02-16 08:00,2026-02-19 15:00,,
FAB136502C-03,INSTALL DOOR FRAMES - FAB136502C,Complete,Wafer I/O Entrance - 3F -SUE-FAB136501,,,,,,,,2025-10-20 08:00,2025-10-20 17:00,2025-10-20 08:00,2025-10-20 17:00
FAB136502B-04,INSTALL DOOR & HARDWARE - FAB136502B,Not Started,Wafer I/O Entrance - 3F -SUE-FAB136501,,,,,,,,2025-12-01 08:00,2025-12-05 17:00,,
FAB136502B-05,PAINT & PROTECT DOORS & FRAMES -  FAB136502B,Not Started,Wafer I/O Entrance - 3F -SUE-FAB136501,,,,,,,,2026-02-16 08:00,2026-02-19 15:00,,
FAB136502B-03,INSTALL DOOR FRAME BY SECAI - FAB136502B - HANDED OVER ON 10/01,Active,Wafer I/O Entrance - 3F -SUE-FAB136501,,,,,,,,2025-10-01 08:00,2025-10-01 17:00,2025-10-01 08:00,
FAB136502C-8,IMPACT - WELDING REQUIRED ON FRAME - FAB136502C,Complete,Wafer I/O Entrance - 3F -SUE-FAB136501,,,,,,,,2025-07-03 08:00,2025-07-10 17:00,2025-07-03 08:00,2025-10-20 17:00
ZX-1480,Complete Drywall & Inspect - Vestibule #18 - 3F-FAB136505,Complete,Vestibule 18 - 3F -SUE-FAB136505,,,,,,,,2025-05-05 08:00,2025-05-09 17:00,2025-05-05 08:00,2025-05-14 16:00
FAB136505A-03,INSTALL DOOR FRAMES - FAB136505A,Complete,Vestibule 18 - 3F -SUE-FAB136505,,,,,,,,2025-05-27 08:00,2025-06-04 17:00,2025-01-14 08:00,2025-01-17 16:00
FAB136505A-04,INSTALL DOOR & HARDWARE - FAB136505A,Not Started,Vestibule 18 - 3F -SUE-FAB136505,,,,,,,,2025-12-01 08:00,2025-12-05 17:00,,
FAB136505A-05,PAINT & PROTECT DOORS & FRAMES - FAB136505A,Not Started,Vestibule 18 - 3F -SUE-FAB136505,,,,,,,,2026-02-16 08:00,2026-02-19 15:00,,
FAB136505B-01,IMPACT - INSTALL/REWORK DRYWALL FRAMING AROUND DOORS- FAB136505B,Complete,Vestibule 18 - 3F -SUE-FAB136505,,,,,,,,2025-06-23 08:00,2025-07-01 17:00,2025-01-08 08:00,2025-01-16 16:00
FAB136505B-04,INSTALL DOOR & HARDWARE - FAB136505B,Not Started,Vestibule 18 - 3F -SUE-FAB136505,,,,,,,,2025-11-21 08:00,2025-11-27 17:00,,
FAB136505B-05,PAINT & PROTECT DOORS & FRAMES - FAB136505B,Not Started,Vestibule 18 - 3F -SUE-FAB136505,,,,,,,,2026-02-16 08:00,2026-02-19 15:00,,
FAB136505C-03,INSTALL DOOR FRAMES - FAB136505C,Complete,Vestibule 18 - 3F -SUE-FAB136505,,,,,,,,2025-06-27 08:00,2025-06-27 17:00,2025-06-25 08:00,2025-06-26 17:00
FAB136505C-04,INSTALL DOOR & HARDWARE - FAB136505C,Active,Vestibule 18 - 3F -SUE-FAB136505,,,,,,,,2025-11-18 08:00,2025-11-24 17:00,2025-11-18 08:00,
FAB136505C-05,PAINT & PROTECT DOORS & FRAMES - FAB136505C,Not Started,Vestibule 18 - 3F -SUE-FAB136505,,,,,,,,2026-02-16 08:00,2026-02-19 15:00,,
FAB136505A-03A,INSTALL DOOR FRAMES - RE-ORDERED - FAB136505A,Active,Vestibule 18 - 3F -SUE-FAB136505,,,,,,,,2025-08-18 08:00,2025-09-25 17:00,2025-08-18 08:00,
ZX-1510,Complete Drywall & Inspect - Vestibule #5 - 3F-FAB130504,Complete,Vestibule 5 - 3F -SUW-FAB130504,,,,,,,,2025-05-16 08:00,2025-05-21 17:00,2025-05-16 08:00,2025-05-21 16:00
ZX-16510,IMPACT - Complete Drywall & Inspect - Vestibule #5 - 3F-FAB130504 INPSECTION,Complete,Vestibule 5 - 3F -SUW-FAB130504,,,,,,,,2025-05-12 08:00,2025-05-16 17:00,2025-05-09 08:00,2025-05-14 16:00
FAB130504A-03,INSTALL DOOR FRAMES - FAB130504A,Complete,Vestibule 5 - 3F -SUW-FAB130504,,,,,,,,2025-05-29 08:00,2025-06-06 17:00,2025-04-28 08:00,2025-04-28 16:00
FAB130504A-04,INSTALL DOOR & HARDWARE - FAB130504A,Active,Vestibule 5 - 3F -SUW-FAB130504,,,,,,,,2025-06-11 08:00,2025-06-17 17:00,2025-06-11 08:00,
FAB130504A-05,PAINT & PROTECT DOORS & FRAMES -  FAB130504A,Not Started,Vestibule 5 - 3F -SUW-FAB130504,,,,,,,,2026-02-16 08:00,2026-02-17 17:00,,
FAB130504B-03,INSTALL DOOR FRAMES - FAB130504B,Complete,Vestibule 5 - 3F -SUW-FAB130504,,,,,,,,2025-05-29 08:00,2025-06-06 17:00,2025-04-03 08:00,2025-04-03 16:00
FAB130504B-04,INSTALL DOOR & HARDWARE - FAB130504B,Active,Vestibule 5 - 3F -SUW-FAB130504,,,,,,,,2025-05-19 08:00,2025-05-23 17:00,2025-05-19 08:00,
FAB130504B-05,PAINT & PROTECT DOORS & FRAMES -  FAB130504B,Not Started,Vestibule 5 - 3F -SUW-FAB130504,,,,,,,,2026-02-16 08:00,2026-02-17 17:00,,
FAB130504C-03,INSTALL DOOR FRAMES - FAB130504C,Complete,Vestibule 5 - 3F -SUW-FAB130504,,,,,,,,2025-05-29 08:00,2025-05-29 17:00,2025-04-07 08:00,2025-04-07 16:00
FAB130504C-04,INSTALL DOOR & HARDWARE - FAB130504C,Active,Vestibule 5 - 3F -SUW-FAB130504,,,,,,,,2025-05-19 08:00,2025-05-23 17:00,2025-05-19 08:00,
FAB130504C-05,PAINT & PROTECT DOORS & FRAMES - FAB130504C,Not Started,Vestibule 5 - 3F -SUW-FAB130504,,,,,,,,2026-02-16 08:00,2026-02-17 17:00,,
ZX-1540,Complete Drywall & Inspect - Elevator Hall #05 - 3F-FAB130505,Complete,Elevator Hall 5 - 3F -SUW-FAB130505,,,,,,,,2025-09-12 08:00,2025-09-15 17:00,2025-09-12 08:00,2025-09-15 17:00
FAB130505B-03,INSTALL DOOR FRAMES - FAB130505B,Not Started,Elevator Hall 5 - 3F -SUW-FAB130505,,,,,,,,2025-11-21 08:00,2025-11-21 17:00,,
FAB130505B-04,INSTALL DOOR & HARDWARE - FAB130505B,Not Started,Elevator Hall 5 - 3F -SUW-FAB130505,,,,,,,,2025-11-24 08:00,2025-11-28 17:00,,
FAB130505B-05,PAINT & PROTECT DOORS & FRAMES -  FAB130505B,Not Started,Elevator Hall 5 - 3F -SUW-FAB130505,,,,,,,,2026-02-16 08:00,2026-02-19 15:00,,
ZX-1570,Complete Drywall & Inspect - CRT Lab Entrance - 3F-FAB130507,Complete,CRT Lab Entrance - 3F -SUW-FAB130507,,,,,,,,2025-05-05 08:00,2025-05-23 17:00,2025-05-05 08:00,2025-05-13 16:00
FAB130507B-01,IMPACT - INSTALL/REWORK DRYWALL FRAMING AROUND DOORS- FAB130507B,Complete,CRT Lab Entrance - 3F -SUW-FAB130507,,,,,,,,2025-05-15 08:00,2025-05-23 17:00,2025-05-07 08:00,2025-05-15 17:00
FAB130507B-03,INSTALL DOOR FRAMES - FAB130507B,Complete,CRT Lab Entrance - 3F -SUW-FAB130507,,,,,,,,2025-05-15 08:00,2025-05-15 17:00,2025-05-15 08:00,2025-05-15 17:00
FAB130507B-04,INSTALL DOOR & HARDWARE - FAB130507B,Active,CRT Lab Entrance - 3F -SUW-FAB130507,,,,,,,,2025-11-18 08:00,2025-11-24 17:00,2025-11-18 08:00,
FAB130507B-05,PAINT & PROTECT DOORS & FRAMES -  FAB130507B,Not Started,CRT Lab Entrance - 3F -SUW-FAB130507,,,,,,,,2026-02-16 08:00,2026-02-19 15:00,,
FAB130507C-01,DOOR ASSEMBLY - FAB130507C,Not Started,CRT Lab Entrance - 3F -SUW-FAB130507,,,,,,,,2026-01-19 08:00,2026-01-20 17:00,,
FAB130507C-02,DOOR PACKAGE INSTALL - FAB130507C,Not Started,CRT Lab Entrance - 3F -SUW-FAB130507,,,,,,,,2026-01-19 08:00,2026-01-20 17:00,,
ZX-1600,Complete Drywall & Inspect - Clean Vestibule #04 - 3F-FAB130403,Complete,Clean Vestibule 4 -3F -SUW-FAB130403,,,,,,,,2025-06-20 08:00,2025-06-30 17:00,2025-06-13 08:00,2025-06-23 16:00
FAB130403A-01,INSTALL DOOR FRAMES - FAB130403A,Complete,Clean Vestibule 4 -3F -SUW-FAB130403,,,,,,,,2025-06-23 08:00,2025-07-01 17:00,2025-01-21 08:00,2025-01-22 16:00
FAB130403A-03,INSTALL DOOR FRAMES - FAB130403A,Complete,Clean Vestibule 4 -3F -SUW-FAB130403,,,,,,,,2025-01-22 08:00,2025-01-22 17:00,2025-01-22 08:00,2025-01-22 17:00
FAB130403A-04,INSTALL DOOR & HARDWARE - FAB130403A,Not Started,Clean Vestibule 4 -3F -SUW-FAB130403,,,,,,,,2025-11-21 08:00,2025-11-27 17:00,,
FAB130403A-05,PAINT & PROTECT DOORS & FRAMES - FAB130403A,Not Started,Clean Vestibule 4 -3F -SUW-FAB130403,,,,,,,,2026-02-16 08:00,2026-02-19 15:00,,
ZX-1630,Complete Drywall & Inspect - Clean Vestibule @M/17 - 3F-FAB130320 NON RATED WALLS,Complete,Clean Vestibule @M/17 - 3F -SUW-FAB130320,,,,,,,,2025-06-24 08:00,2025-07-11 17:00,2025-06-24 08:00,2025-08-12 17:00
ZX-17370,IMPACT - MEP WORK BLOCKING - Complete Drywall & Inspect - Clean Vestibule @M/17 - 3F-FAB130320,Complete,Clean Vestibule @M/17 - 3F -SUW-FAB130320,,,,,,,,2025-05-05 08:00,2025-05-22 17:00,2025-05-05 08:00,2025-06-23 16:00
ZX-1660,Complete Drywall & Inspect - SUB Clean Rm. Airlock - 3F-FAB130315,Complete,SUB Clean Rm. Airlock - 3F -SUW-FAB130315,,,,,,,,2025-05-13 08:00,2025-05-21 17:00,2025-05-13 08:00,2025-09-12 17:00
ZX-16520,IMPACT - Complete Drywall & Inspect - SUB Clean Rm. Airlock - 3F-FAB130315 SECAI DENIAL OF ACCEL COST FOR BERG,Complete,SUB Clean Rm. Airlock - 3F -SUW-FAB130315,,,,,,,,2025-05-05 08:00,2025-05-12 17:00,2025-05-05 08:00,2025-05-12 16:00
FAB130315A-01,IMPACT - INSTALL/REWORK DRYWALL FRAMING AROUND DOORS - FAB130315A,Complete,SUB Clean Rm. Airlock - 3F -SUW-FAB130315,,,,,,,,2025-07-24 08:00,2025-08-01 17:00,2025-07-24 08:00,2025-08-01 17:00
FAB130315A-03,INSTALL DOOR FRAMES - FAB130315A,Complete,SUB Clean Rm. Airlock - 3F -SUW-FAB130315,,,,,,,,2025-08-01 08:00,2025-08-01 17:00,2025-08-01 08:00,2025-08-01 17:00
FAB130315A-04,INSTALL DOOR & HARDWARE - FAB130315A,Active,SUB Clean Rm. Airlock - 3F -SUW-FAB130315,,,,,,,,2025-11-18 08:00,2025-11-24 17:00,2025-11-18 08:00,
FAB130315A-05,PAINT & PROTECT DOORS & FRAMES -  FAB130315A,Not Started,SUB Clean Rm. Airlock - 3F -SUW-FAB130315,,,,,,,,2026-02-16 08:00,2026-02-19 15:00,,
ZX-1690,Complete Drywall & Inspect - Clean Toilet Corridor - 3F-FAB130319,Complete,Clean Toilet Corridor - 3F -SUW-FAB130319,,,,,,,,2025-06-10 08:00,2025-06-23 17:00,2025-05-26 08:00,2025-06-05 16:00
FAB130319A-03,INSTALL DOOR FRAMES - FAB130319A,Complete,Clean Toilet Corridor - 3F -SUW-FAB130319,,,,,,,,2025-06-27 08:00,2025-07-07 17:00,2025-05-30 08:00,2025-05-30 16:00
FAB130319A-04,INSTALL DOOR & HARDWARE - FAB130319A,Active,Clean Toilet Corridor - 3F -SUW-FAB130319,,,,,,,,2025-11-13 08:00,2025-11-19 17:00,2025-11-13 08:00,
FAB130319A-05,PAINT & PROTECT DOORS & FRAMES - FAB130319A,Not Started,Clean Toilet Corridor - 3F -SUW-FAB130319,,,,,,,,2026-02-16 08:00,2026-02-19 15:00,,
FAB130319B-03,INSTALL DOOR FRAMES - FAB130319B,Complete,Clean Toilet Corridor - 3F -SUW-FAB130319,,,,,,,,2025-06-27 08:00,2025-07-07 17:00,2025-05-30 08:00,2025-05-30 16:00
FAB130319B-04,INSTALL DOOR & HARDWARE - FAB130319B,Active,Clean Toilet Corridor - 3F -SUW-FAB130319,,,,,,,,2025-11-13 08:00,2025-11-19 17:00,2025-11-13 08:00,
FAB130319B-05,PAINT & PROTECT DOORS & FRAMES - FAB130319B,Not Started,Clean Toilet Corridor - 3F -SUW-FAB130319,,,,,,,,2026-02-16 08:00,2026-02-19 15:00,,
FAB130319C-01,IMPACT - INSTALL/REWORK DRYWALL FRAMING AROUND DOORS - FAB130319C,Complete,Clean Toilet Corridor - 3F -SUW-FAB130319,,,,,,,,2025-06-27 08:00,2025-07-07 17:00,2025-02-19 08:00,2025-02-27 16:00
FAB130319C-03,INSTALL DOOR FRAMES - FAB130319C,Complete,Clean Toilet Corridor - 3F -SUW-FAB130319,,,,,,,,2025-06-23 13:00,2025-06-24 12:00,2025-02-27 00:00,2025-02-27 08:00
FAB130319C-04,INSTALL DOOR & HARDWARE - FAB130319C,Active,Clean Toilet Corridor - 3F -SUW-FAB130319,,,,,,,,2025-09-10 08:00,2025-09-16 17:00,2025-09-10 08:00,
FAB130319C-05,PAINT & PROTECT DOORS & FRAMES - FAB130319C,Not Started,Clean Toilet Corridor - 3F -SUW-FAB130319,,,,,,,,2026-02-16 08:00,2026-02-19 15:00,,
ZX-1720,SECAI TURNOVER FOR ACELERATION - Drywall & Inspect - Elevator Hall #03 - 3F-FAB130310 BAKER/DESCOPE,Complete,Elevator Hall 3 - 3F -SUW-FAB130310,,,,,,,,2025-06-27 08:00,2025-07-10 17:00,2025-06-27 08:00,2025-06-27 16:00
FAB130310A-03,INSTALL DOOR FRAMES - FAB130310A,Complete,Elevator Hall 3 - 3F -SUW-FAB130310,,,,,,,,2025-09-29 13:00,2025-09-30 12:00,2025-04-04 00:00,2025-04-04 12:00
FAB130310A-04,INSTALL DOOR & HARDWARE - FAB130310A,Active,Elevator Hall 3 - 3F -SUW-FAB130310,,,,,,,,2025-11-18 08:00,2025-11-24 17:00,2025-11-18 08:00,
FAB130310A-05,PAINT & PROTECT DOORS & FRAMES - FAB130310A,Not Started,Elevator Hall 3 - 3F -SUW-FAB130310,,,,,,,,2026-02-16 08:00,2026-02-19 15:00,,
FAB130310B-03,INSTALL DOOR FRAMES - FAB130310B,Complete,Elevator Hall 3 - 3F -SUW-FAB130310,,,,,,,,2025-09-29 13:00,2025-09-30 12:00,2025-01-31 00:00,2025-01-31 12:00
FAB130310B-04,INSTALL DOOR & HARDWARE - FAB130310B,Active,Elevator Hall 3 - 3F -SUW-FAB130310,,,,,,,,2025-11-18 08:00,2025-11-24 17:00,2025-11-18 08:00,
FAB130310B-05,PAINT & PROTECT DOORS & FRAMES - FAB130310B,Not Started,Elevator Hall 3 - 3F -SUW-FAB130310,,,,,,,,2026-02-16 08:00,2026-02-19 15:00,,
FAB130310C-03,INSTALL DOOR FRAMES - FAB130310C,Complete,Elevator Hall 3 - 3F -SUW-FAB130310,,,,,,,,2025-07-29 08:00,2025-07-29 17:00,2025-07-29 08:00,2025-07-29 17:00
FAB130310C-04,INSTALL DOOR & HARDWARE - FAB130310C,Not Started,Elevator Hall 3 - 3F -SUW-FAB130310,,,,,,,,2025-11-21 08:00,2025-11-27 17:00,,
FAB130310C-05,PAINT & PROTECT DOORS & FRAMES - FAB130310C,Not Started,Elevator Hall 3 - 3F -SUW-FAB130310,,,,,,,,2026-02-16 08:00,2026-02-19 15:00,,
ZX-1750,Complete Drywall & Inspect - Vestibule #3 - 3F-FAB130303,Complete,Vestibule 3 - 3F -SUW-FAB130303,,,,,,,,2025-05-16 08:00,2025-05-27 17:00,2025-05-21 08:00,2025-05-27 08:00
ZX-16420,IMPACT - SECAI DENIAL OF ACCEL COST FOR BERG - Complete Drywall & Inspect - Vestibule #3 - 3F-FAB130303,Complete,Vestibule 3 - 3F -SUW-FAB130303,,,,,,,,2025-05-09 08:00,2025-05-12 17:00,2025-05-09 08:00,2025-05-19 16:00
FAB130303A-03,INSTALL DOOR FRAMES - FAB130303A,Complete,Vestibule 3 - 3F -SUW-FAB130303,,,,,,,,2025-06-03 08:00,2025-06-11 17:00,2025-04-28 08:00,2025-04-28 16:00
FAB130303A-04,INSTALL DOOR & HARDWARE - FAB130303A,Active,Vestibule 3 - 3F -SUW-FAB130303,,,,,,,,2025-10-21 08:00,2025-10-27 17:00,2025-10-21 08:00,
FAB130303A-05,PAINT & PROTECT DOORS & FRAMES -  FAB130303A,Not Started,Vestibule 3 - 3F -SUW-FAB130303,,,,,,,,2026-02-16 08:00,2026-02-19 15:00,,
FAB130303B-01,INSTALL DOOR FRAMES - FAB130303B,Complete,Vestibule 3 - 3F -SUW-FAB130303,,,,,,,,2025-06-17 08:00,2025-06-25 17:00,2025-06-05 08:00,2025-06-05 16:00
FAB130303B-04,INSTALL DOOR & HARDWARE - FAB130303B,Active,Vestibule 3 - 3F -SUW-FAB130303,,,,,,,,2025-06-17 08:00,2025-06-23 17:00,2025-06-17 08:00,
FAB130303B-05,PAINT & PROTECT DOORS & FRAMES -  FAB130303B,Not Started,Vestibule 3 - 3F -SUW-FAB130303,,,,,,,,2026-02-16 08:00,2026-02-17 17:00,,
FAB130303A-65,IMPACT - RE-INSTALL CORRECT FRAME - FAB130303A,Complete,Vestibule 3 - 3F -SUW-FAB130303,,,,,,,,2025-06-20 08:00,2025-06-25 15:00,2025-06-20 08:00,2025-06-23 14:00
ZX-1150,Complete Drywall & Inspect - Airlock 3 - 3F-SUW-FAB130302,Complete,Air Lock 3 - 3F -SUW-FAB130302,,,,,,,,2025-05-05 08:00,2025-05-09 17:00,2025-05-05 08:00,2025-05-30 16:00
ZX-17380,IMPACT - RFI SOFFIT DETAIL DESIGN - Complete Drywall & Inspect - Airlock 3 - 3F-SUW-FAB130302,Complete,Air Lock 3 - 3F -SUW-FAB130302,,,,,,,,2025-05-05 08:00,2025-05-09 17:00,2025-05-06 08:00,2025-05-16 08:00
ZX-1060,Complete Drywall & Inspect - Airlock #20-Airlock 20 - 3F-FAB136312,Complete,Air Lock 20 - 3F -SUE-FAB136312,,,,,,,,2025-05-05 08:00,2025-05-08 17:00,2025-05-05 08:00,2025-05-08 16:00
ZX-1030,Complete Drywall & Inspect - Airlock #22-Airlock 22 - 3F-FAB136109,Complete,Air Lock 22 - 3F -SUE-FAB136109,,,,,,,,2025-05-05 08:00,2025-05-07 17:00,2025-05-05 08:00,2025-05-24 16:00
ZX-16490,IMPACT - Complete Drywall & Inspect - Airlock #22-Airlock 22 - 3F-FAB136109 INSPECTIONS,Complete,Air Lock 22 - 3F -SUE-FAB136109,,,,,,,,2025-05-05 08:00,2025-05-07 17:00,2025-05-05 08:00,2025-05-16 16:00
TR-FAB130109A-01,IMPACT - INSTALL/REWORK DRYWALL FRAMING AROUND DOORS - TR - FAB130109A,Complete,Air Lock 22 - 3F -SUE-FAB136109,,,,,,,,2025-07-09 08:00,2025-07-16 17:00,2025-07-09 08:00,2025-07-16 17:00
TR-FAB130109A-03,INSTALL DOOR FRAMES - TR - FAB130109A,Complete,Air Lock 22 - 3F -SUE-FAB136109,,,,,,,,2025-07-16 08:00,2025-07-16 17:00,2025-07-16 08:00,2025-07-16 17:00
TR-FAB130109A-04,INSTALL DOOR & HARDWARE - TR - FAB130109A,Not Started,Air Lock 22 - 3F -SUE-FAB136109,,,,,,,,2025-11-21 08:00,2025-11-27 17:00,,
TR-FAB130109A-05,PAINT & PROTECT DOORS & FRAMES - TR - FAB130109A,Not Started,Air Lock 22 - 3F -SUE-FAB136109,,,,,,,,2026-02-16 08:00,2026-02-19 15:00,,
TR-FAB130109A-11,IMPACT - PROCUREMENT - Reordered doors (Wall Thickness and Door Swing Design Changes),Complete,Air Lock 22 - 3F -SUE-FAB136109,,,,,,,,2025-06-09 08:00,2025-08-15 17:00,2025-06-09 08:00,2025-07-14 17:00
ZX-1810,Complete Drywall & Inspect - Elevator #22 - 3F-FAB1-EL22,Complete,Elevator 22 - 3F -SUE-FAB1-EL22,,,,,,,,2025-07-28 08:00,2025-07-30 17:00,2025-07-28 08:00,2025-08-19 17:00
ZX-1840,Complete Drywall & Inspect - Elevator #20 - 3F-FAB1-EL20,Complete,Elevator 20 - 3F -SUE-FAB1-EL20,,,,,,,,2025-05-05 08:00,2025-05-16 17:00,2025-05-19 08:00,2025-05-28 16:00
ZX-1870,Complete Drywall & Inspect - Elevator #19 - 3F-FAB1-EL19,Complete,Elevator 19 - 3F -SUE-FAB1-EL19,,,,,,,,2025-06-30 08:00,2025-07-23 12:00,2025-06-30 08:00,2025-08-19 17:00
ZX-1900,Complete Drywall & Inspect - Elevator Hall #18 - 3F-FAB136504,Complete,Elevator Hall 18 - 3F -SUE-FAB136504,,,,,,,,2025-10-10 08:00,2025-10-13 17:00,2025-10-10 08:00,2025-10-13 17:00
FAB136504A-03,INSTALL DOOR FRAMES - FAB136504A,Complete,Elevator Hall 18 - 3F -SUE-FAB136504,,,,,,,,2025-07-16 08:00,2025-07-16 17:00,2025-01-15 00:00,2025-01-16 16:00
FAB136504A-04,INSTALL DOOR & HARDWARE - FAB136504A,Not Started,Elevator Hall 18 - 3F -SUE-FAB136504,,,,,,,,2025-11-21 08:00,2025-11-27 17:00,,
FAB136504A-05,PAINT & PROTECT DOORS & FRAMES - FAB136504A,Not Started,Elevator Hall 18 - 3F -SUE-FAB136504,,,,,,,,2026-02-16 08:00,2026-02-19 15:00,,
FAB136504B-03,INSTALL DOOR FRAMES - FAB136504B,Not Started,Elevator Hall 18 - 3F -SUE-FAB136504,,,,,,,,2025-11-21 08:00,2025-11-21 17:00,,
FAB136504B-04,INSTALL DOOR & HARDWARE - FAB136504B,Not Started,Elevator Hall 18 - 3F -SUE-FAB136504,,,,,,,,2025-11-24 08:00,2025-11-28 17:00,,
FAB136504B-05,PAINT & PROTECT DOORS & FRAMES - FAB136504B,Not Started,Elevator Hall 18 - 3F -SUE-FAB136504,,,,,,,,2026-02-16 08:00,2026-02-19 15:00,,
FAB136504C-07,DOOR INSTALL - FAB136504C (OHC),Not Started,Elevator Hall 18 - 3F -SUE-FAB136504,,,,,,,,2025-12-03 08:00,2025-12-04 17:00,,
ZX-1930,Complete Drywall & Inspect - Elevator #18 - 3F-FAB1-EL18 - MKM,Complete,Elevator 18- 3F -SUE-FAB1-EL18,,,,,,,,2025-07-25 08:00,2025-08-07 17:00,2025-07-21 08:00,2025-07-28 17:00
ZX-1960,Complete Drywall & Inspect - Elevator #05 - 3F-FAB1-EL5,Complete,Elevator 5 - 3F -SUW-FAB1-EL05,,,,,,,,2025-09-29 08:00,2025-09-30 17:00,2025-09-29 08:00,2025-09-30 17:00
ZX-1990,SECAI TOOK OVER FOR ACCELERATION - Complete Drywall & Inspect - Elevator #03 - 3F-FAB1-EL3,Complete,Elevator 3 - 3F -SUW-FAB1-EL03,,,,,,,,2025-05-05 08:00,2025-05-16 17:00,2025-05-05 08:00,2025-05-12 17:00
ZX-17320,IMPACT - SECAI OPEN FOR USE - Drywall & Inspect - Elevator #03 - 3F-FAB1-EL3,Complete,Elevator 3 - 3F -SUW-FAB1-EL03,,,,,,,,2025-05-05 08:00,2025-05-16 17:00,2025-05-12 08:00,2025-05-12 17:00
ZX-2020,Complete Drywall & Inspect - Vestibule #1 - 3F-FAB130111,Complete,Vestibule 1 - 3F -SUW-FAB130111,,,,,,,,2025-05-05 08:00,2025-05-22 17:00,2025-05-05 08:00,2025-05-28 16:00
FAB130111B-03,INSTALL DOOR FRAMES - FAB130111B,Complete,Vestibule 1 - 3F -SUW-FAB130111,,,,,,,,2025-08-08 08:00,2025-08-08 17:00,2025-08-09 08:00,2025-08-09 17:00
FAB130111B-04,INSTALL DOOR & HARDWARE - FAB130111B,Active,Vestibule 1 - 3F -SUW-FAB130111,,,,,,,,2025-11-13 08:00,2025-11-19 17:00,2025-11-13 08:00,
FAB130111B-05,PAINT & PROTECT DOORS & FRAMES -  FAB130111B,Not Started,Vestibule 1 - 3F -SUW-FAB130111,,,,,,,,2026-02-16 08:00,2026-02-19 15:00,,
FAB130111C-03,INSTALL DOOR FRAMES - FAB130111C,Complete,Vestibule 1 - 3F -SUW-FAB130111,,,,,,,,2025-06-02 08:00,2025-06-02 17:00,2025-01-24 08:00,2025-01-24 16:00
FAB130111C-04,INSTALL DOOR & HARDWARE - FAB130111C,Not Started,Vestibule 1 - 3F -SUW-FAB130111,,,,,,,,2025-11-28 08:00,2025-11-28 17:00,,
FAB130111C-05,PAINT & PROTECT DOORS & FRAMES -  FAB130111C,Not Started,Vestibule 1 - 3F -SUW-FAB130111,,,,,,,,2026-02-16 08:00,2026-02-19 15:00,,
FAB120311A-01,IMPACT - INSTALL/REWORK DRYWALL FRAMING AROUND DOORS - FAB120311A,Complete,Fire Alarm 3 - 2F -SUW-FAB120311,,,,,,,,2025-03-21 08:00,2025-03-31 17:00,2025-03-21 08:00,2025-03-31 17:00
FAB120311A-04,INSTALL DOOR & HARDWARE - FAB120311A,Active,Fire Alarm 3 - 2F -SUW-FAB120311,,,,,,,,2025-06-18 08:00,2025-06-24 17:00,2025-06-18 08:00,
FAB120311A-05,PAINT & PROTECT DOORS & FRAMES -  FAB120311A,Not Started,Fire Alarm 3 - 2F -SUW-FAB120311,,,,,,,,2026-02-16 08:00,2026-02-19 17:00,,
FAB130111C-60,IMPACT - SECAI REMOVED FRAME - REINSTALL - FAB130111C,Complete,Vestibule 1 - 3F -SUW-FAB130111,,,,,,,,2025-07-25 08:00,2025-07-25 17:00,2025-07-25 08:00,2025-07-25 17:00
FAB120311A-03,INSTALL DOOR FRAMES - FAB120311A,Complete,Fire Alarm 3 - 2F -SUW-FAB120311,,,,,,,,2025-03-31 08:00,2025-03-31 17:00,2025-03-31 08:00,2025-03-31 17:00
ZX-2050,Complete Drywall & Inspect - Elevator #02 - 3F-FAB1-EL2,Complete,Elevator 2 - 3F -SUW-FAB1-EL02,,,,,,,,2025-10-22 08:00,2025-10-28 17:00,2025-10-22 08:00,2025-10-28 17:00
ZX-2110,SECAI TOOK OVER FOR ACCELERATION - Drywall & Inspect - Elevator #01 - 3F-FAB1-EL1,Complete,Elevator 1 - 3F -SUW-FAB1-EL01,,,,,,,,2025-09-09 08:00,2025-09-19 17:00,2025-09-19 08:00,2025-09-19 17:00
ZX-16480,IMPACT - Complete Drywall & Inspect - Elevator #01 - 3F-FAB1-EL1 ELEVATOR TEAM TOOK OVER,Complete,Elevator 1 - 3F -SUW-FAB1-EL01,,,,,,,,2025-05-05 08:00,2025-05-23 17:00,2025-05-05 08:00,2025-09-15 17:00
ZX-2140,Complete Drywall & Inspect - Elevator #01A - 3F-FAB1-EL1A,Complete,Elevator 1A - 3F -SUW-FAB1-EL01A,,,,,,,,2025-05-05 08:00,2025-05-22 17:00,2025-05-05 08:00,2025-06-13 16:00
ZX-17310,IMPACT - SECAI SCAFFOLD - Drywall & Inspect - Elevator #01A - 3F-FAB1-EL1A,Complete,Elevator 1A - 3F -SUW-FAB1-EL01A,,,,,,,,2025-05-05 08:00,2025-05-22 17:00,2025-05-12 08:00,2025-05-28 14:00
ZX-2170,Complete Drywall & Inspect - Elevator #1B - 3F-FAB1-EL1B - MK MARLOW FRONTS ONLY,Complete,Elevator 1B - 3F -SUW-FAB1-EL01B,,,,,,,,2025-06-27 08:00,2025-07-16 17:00,2025-06-27 08:00,2025-07-28 17:00
ZX-16500,IMPACT - Complete Drywall & Inspect - Elevator #01B - 3F-FAB1-EL1B RFI PENDING,Complete,Elevator 1B - 3F -SUW-FAB1-EL01B,,,,,,,,2025-05-13 08:00,2025-05-26 17:00,2025-05-05 08:00,2025-06-10 16:00
ZX-2200,Complete Drywall & Inspect - VIP Tour - 3F-FAB134101 NON RATED WALLS,Complete,VIP Tour - 3F -FIZ-FAB134101,,,,,,,,2025-06-05 08:00,2025-06-24 17:00,2025-05-12 08:00,2025-08-28 08:00
FAB134101A-03,INSTALL DOOR FRAMES - FAB134101A,Complete,VIP Tour - 3F -FIZ-FAB134101,,,,,,,,2025-10-21 08:00,2025-10-21 17:00,2025-10-21 08:00,2025-10-21 17:00
FAB134101A-04,INSTALL DOOR & HARDWARE - FAB134101A,Not Started,VIP Tour - 3F -FIZ-FAB134101,,,,,,,,2025-11-21 08:00,2025-11-27 17:00,,
FAB134101A-05,PAINT & PROTECT DOORS & FRAMES - FAB134101A,Not Started,VIP Tour - 3F -FIZ-FAB134101,,,,,,,,2026-02-16 08:00,2026-02-19 15:00,,
FAB134101D-01,IMPACT - INSTALL/REWORK DRYWALL FRAMING AROUND DOORS - FAB134101D,Complete,VIP Tour - 3F -FIZ-FAB134101,,,,,,,,2025-10-16 08:00,2025-10-17 17:00,2025-10-16 08:00,2025-10-17 17:00
FAB134101D-03,INSTALL DOOR FRAMES - FAB134101D,Complete,VIP Tour - 3F -FIZ-FAB134101,,,,,,,,2025-10-20 08:00,2025-10-20 17:00,2025-10-20 08:00,2025-10-20 17:00
FAB134101D-04,INSTALL DOOR & HARDWARE - FAB134101D,Not Started,VIP Tour - 3F -FIZ-FAB134101,,,,,,,,2025-11-21 08:00,2025-11-27 17:00,,
FAB134101D-05,PAINT & PROTECT DOORS & FRAMES - FAB134101D,Not Started,VIP Tour - 3F -FIZ-FAB134101,,,,,,,,2026-02-16 08:00,2026-02-19 15:00,,
FAB134101A-22,IMPACT - PROCUREMENT DOOR FRAMES - FAB134101A,Active,VIP Tour - 3F -FIZ-FAB134101,,,,,,,,2025-07-03 10:00,2025-08-28 10:00,2025-06-19 10:00,
ZX-2230,Complete Drywall & Inspect - VIP Tour Vestibule - 3F-FAB134103 NON RATED WALLS,Complete,VIP Tour Vestibule - 3F -FIZ-FAB134103,,,,,,,,2025-06-19 08:00,2025-06-27 17:00,2025-05-12 08:00,2025-06-16 16:00
FAB134103A-01,INSTALL DOOR FRAMES - FAB134103A,Complete,VIP Tour Vestibule - 3F -FIZ-FAB134103,,,,,,,,2025-10-24 08:00,2025-10-24 17:00,2025-10-24 08:00,2025-10-24 17:00
FAB134103A-04,INSTALL DOOR & HARDWARE - FAB134103A,Active,VIP Tour Vestibule - 3F -FIZ-FAB134103,,,,,,,,2025-11-18 08:00,2025-11-24 17:00,2025-11-18 08:00,
FAB134103A-05,PAINT & PROTECT DOORS & FRAMES - FAB134103A,Not Started,VIP Tour Vestibule - 3F -FIZ-FAB134103,,,,,,,,2026-02-16 08:00,2026-02-19 15:00,,
FAB134103C-03,INSTALL DOOR FRAMES - FAB134103C,Complete,VIP Tour Vestibule - 3F -FIZ-FAB134103,,,,,,,,2025-05-30 08:00,2025-06-09 17:00,2025-05-14 08:00,2025-05-16 16:00
FAB134103C-04,INSTALL DOOR & HARDWARE - FAB134103C,Not Started,VIP Tour Vestibule - 3F -FIZ-FAB134103,,,,,,,,2025-12-01 08:00,2025-12-05 17:00,,
FAB134103C-05,PAINT & PROTECT DOORS & FRAMES - FAB134103C,Not Started,VIP Tour Vestibule - 3F -FIZ-FAB134103,,,,,,,,2026-02-16 08:00,2026-02-19 15:00,,
FAB134103D-01,INSTALL DOOR FRAMES - FAB134103D,Complete,VIP Tour Vestibule - 3F -FIZ-FAB134103,,,,,,,,2025-06-26 08:00,2025-06-26 17:00,2025-06-27 08:00,2025-06-27 08:00
FAB134103D-04,INSTALL DOOR & HARDWARE - FAB134103D,Active,VIP Tour Vestibule - 3F -FIZ-FAB134103,,,,,,,,2025-11-18 08:00,2025-11-24 17:00,2025-11-18 08:00,
FAB134103D-05,PAINT & PROTECT DOORS & FRAMES - FAB134103D,Not Started,VIP Tour Vestibule - 3F -FIZ-FAB134103,,,,,,,,2026-02-16 08:00,2026-02-19 15:00,,
FAB134103A-21,PROCUREMENT - FRAME RE-ORDER - FAB134103A,Complete,VIP Tour Vestibule - 3F -FIZ-FAB134103,,,,,,,,2025-06-20 08:00,2025-08-14 17:00,2025-06-20 08:00,2025-10-20 17:00
ZX-2260,Complete Drywall & Inspect - Vestibule @ F.4/1 - 3F-FAB134104,Complete,Vestibule @ F.4/1 - 3F -FIZ-FAB134104,,,,,,,,2025-09-01 08:00,2025-09-05 17:00,2025-09-01 08:00,2025-09-05 17:00
FAB134104A-03,INSTALL DOOR FRAMES - FAB134104A,Complete,Vestibule @ F.4/1 - 3F -FIZ-FAB134104,,,,,,,,2025-10-22 08:00,2025-10-22 17:00,2025-10-22 08:00,2025-10-22 17:00
FAB134104A-04,INSTALL DOOR & HARDWARE - FAB134104A,Not Started,Vestibule @ F.4/1 - 3F -FIZ-FAB134104,,,,,,,,2025-11-21 08:00,2025-11-27 17:00,,
FAB134104A-05,PAINT & PROTECT DOORS & FRAMES -  FAB134104A,Not Started,Vestibule @ F.4/1 - 3F -FIZ-FAB134104,,,,,,,,2026-02-16 08:00,2026-02-19 17:00,,
ZX-2290,Complete Drywall & Inspect - Unassigned - 3F-FAB132102,Complete,Unassigned - 3F - FIZ-FAB134102,,,,,,,,2025-08-15 08:00,2025-08-25 17:00,2025-08-15 08:00,2025-09-05 17:00
ZX-2320,Complete Drywall & Inspect - Smock Locker@A-D/1-2 - 3F-FAB134106,Complete,Smock Locker@A-D/1-2 - 3F -FIZ-FAB134106,,,,,,,,2025-08-12 08:00,2025-08-18 17:00,2025-08-12 08:00,2025-08-18 17:00
ZX-16640,IMPACT SG PANELS TO BE REMOVED - Complete Drywall & Inspect - Smock Locker@A-D/1-2 - 3F-FAB134106,Complete,Smock Locker@A-D/1-2 - 3F -FIZ-FAB134106,,,,,,,,2025-05-05 08:00,2025-05-16 17:00,2025-05-05 08:00,2025-09-05 17:00
FAB136102A-03,INSTALL DOOR FRAMES - FAB136102A,Complete,Smock Locker@A-D/1-2 - 3F -FIZ-FAB134106,,,,,,,,2025-05-13 08:00,2025-05-13 17:00,2025-05-13 08:00,2025-05-13 17:00
FAB136102A-04,INSTALL DOOR & HARDWARE - FAB136102A,Not Started,Smock Locker@A-D/1-2 - 3F -FIZ-FAB134106,,,,,,,,2025-11-21 08:00,2025-11-27 17:00,,
FAB136102A-05,PAINT & PROTECT DOORS & FRAMES -  FAB136102A,Not Started,Smock Locker@A-D/1-2 - 3F -FIZ-FAB134106,,,,,,,,2026-02-16 08:00,2026-02-19 15:00,,
FAB136102B-01,DOOR ASSEMBLY - FAB136102B,Complete,Smock Locker@A-D/1-2 - 3F -FIZ-FAB134106,,,,,,,,2025-08-06 08:00,2025-08-07 17:00,2025-08-06 08:00,2025-08-07 17:00
FAB136102B-02,DOOR PACKAGE INSTALL - FAB136102B,Complete,Smock Locker@A-D/1-2 - 3F -FIZ-FAB134106,,,,,,,,2025-08-06 08:00,2025-08-07 17:00,2025-08-06 08:00,2025-08-07 17:00
ZX-2410,Complete Drywall & Inspect - Duct Shaft - 3F-SUE-FAB136105,Complete,Duct Shaft - 3F -SUE-FAB136105,,,,,,,,2025-09-05 08:00,2025-09-11 17:00,2025-09-05 08:00,2025-09-11 17:00
FAB136105A-01,IMPACT - INSTALL/REWORK DRYWALL FRAMING AROUND DOORS - FAB136105A,Complete,Duct Shaft - 3F -SUE-FAB136105,,,,,,,,2025-05-05 08:00,2025-05-06 17:00,2025-05-05 08:00,2025-05-06 17:00
FAB136105A-03,INSTALL DOOR FRAMES - FAB136105A,Complete,Duct Shaft - 3F -SUE-FAB136105,,,,,,,,2025-08-18 13:00,2025-08-19 12:00,2025-05-05 00:00,2025-05-06 12:00
FAB136105A-04,INSTALL DOOR & HARDWARE - FAB136105A,Not Started,Duct Shaft - 3F -SUE-FAB136105,,,,,,,,2025-11-21 08:00,2025-11-27 17:00,,
FAB136105A-05,PAINT & PROTECT DOORS & FRAMES - FAB136105A,Not Started,Duct Shaft - 3F -SUE-FAB136105,,,,,,,,2026-02-16 08:00,2026-02-19 15:00,,
ZX-2380,Complete Drywall & Inspect - Fire Alarm - 3F-FAB136114,Complete,Fire Alarm 22 - 3F -SUE-FAB136114,,,,,,,,2024-12-09 08:00,2024-12-09 08:00,2024-12-09 08:00,2024-12-12 16:00
FAB136114A-03,INSTALL DOOR FRAMES - FAB136114A,Complete,Fire Alarm 22 - 3F -SUE-FAB136114,,,,,,,,2025-07-07 13:00,2025-07-08 12:00,2025-01-15 00:00,2025-01-16 12:00
FAB136114A-04,INSTALL DOOR & HARDWARE - FAB136114A,Active,Fire Alarm 22 - 3F -SUE-FAB136114,,,,,,,,2025-07-09 08:00,2025-07-15 17:00,2025-07-09 08:00,
FAB136114A-05,PAINT & PROTECT DOORS & FRAMES -  FAB136114A,Not Started,Fire Alarm 22 - 3F -SUE-FAB136114,,,,,,,,2026-02-16 08:00,2026-02-19 15:00,,
ZX-2500,SECAI TOOK OVER FOR ACCELERATION Drywall & Inspect - Electrical Rm - 3F-SUE-FAB136302,Complete,Electrical Rm - 3F -SUE-FAB136302,,,,,,,,2025-07-21 13:00,2025-08-06 12:00,2025-06-16 12:00,2025-11-05 08:00
FAB136302A-01,IMPACT - INSTALL/REWORK DRYWALL FRAMING AROUND DOORS - FAB136302A HANDED OVER TO SECAI ON 08/29,Complete,Electrical Rm - 3F -SUE-FAB136302,,,,,,,,2025-08-18 08:00,2025-08-26 17:00,2025-08-29 08:00,2025-08-29 17:00
FAB136302A-03,INSTALL DOOR FRAMES - FAB136302A,Complete,Electrical Rm - 3F -SUE-FAB136302,,,,,,,,2025-08-29 08:00,2025-08-29 17:00,2025-08-29 08:00,2025-11-14 17:00
FAB136302A-04,INSTALL DOOR & HARDWARE - FAB136302A,Active,Electrical Rm - 3F -SUE-FAB136302,,,,,,,,2025-11-17 08:00,2025-11-21 17:00,2025-11-17 08:00,
FAB136302A-05,PAINT & PROTECT DOORS & FRAMES - FAB136302A,Not Started,Electrical Rm - 3F -SUE-FAB136302,,,,,,,,2026-02-16 08:00,2026-02-19 15:00,,
FAB136302B-03,INSTALL DOOR FRAMES - FAB136302B,Not Started,Electrical Rm - 3F -SUE-FAB136302,,,,,,,,2025-12-05 08:00,2025-12-05 17:00,,
FAB136302B-04,INSTALL DOOR & HARDWARE - FAB136302B,Not Started,Electrical Rm - 3F -SUE-FAB136302,,,,,,,,2025-12-05 08:00,2025-12-11 17:00,,
FAB136302B-05,PAINT & PROTECT DOORS & FRAMES - FAB136302B,Not Started,Electrical Rm - 3F -SUE-FAB136302,,,,,,,,2026-02-16 08:00,2026-02-19 15:00,,
FAB136302C-01,IMPACT - INSTALL/REWORK DRYWALL FRAMING AROUND DOORS - FAB136302C HANDED OVER TO SECAI ON 08/29,Complete,Electrical Rm - 3F -SUE-FAB136302,,,,,,,,2025-08-28 08:00,2025-08-29 17:00,2025-08-29 08:00,2025-08-29 17:00
FAB136302C-03,INSTALL DOOR FRAME BY SECAI - FAB136302C HANDED OVER ON 08/29,Active,Electrical Rm - 3F -SUE-FAB136302,,,,,,,,2025-08-29 08:00,2025-08-29 17:00,2025-08-29 08:00,
FAB136302C-04,INSTALL DOOR & HARDWARE - FAB136302C,Not Started,Electrical Rm - 3F -SUE-FAB136302,,,,,,,,2025-12-01 08:00,2025-12-05 17:00,,
FAB136302C-05,PAINT & PROTECT DOORS & FRAMES - FAB136302C,Not Started,Electrical Rm - 3F -SUE-FAB136302,,,,,,,,2026-02-16 08:00,2026-02-19 15:00,,
FAB136302D-01,IMPACT - INSTALL/REWORK DRYWALL FRAMING AROUND DOORS - FAB136302D,Complete,Electrical Rm - 3F -SUE-FAB136302,,,,,,,,2025-01-17 08:00,2025-01-27 17:00,2025-01-17 08:00,2025-01-27 17:00
FAB136302D-03,INSTALL DOOR FRAMES - FAB136302D,Complete,Electrical Rm - 3F -SUE-FAB136302,,,,,,,,2025-08-18 08:00,2025-08-18 17:00,2025-01-27 00:00,2025-01-27 16:00
FAB136302D-04,INSTALL DOOR & HARDWARE - FAB136302D,Active,Electrical Rm - 3F -SUE-FAB136302,,,,,,,,2025-11-17 08:00,2025-11-21 17:00,2025-11-17 08:00,
FAB136302D-05,PAINT & PROTECT DOORS & FRAMES - FAB136302D,Not Started,Electrical Rm - 3F -SUE-FAB136302,,,,,,,,2026-02-16 08:00,2026-02-19 15:00,,
FAB136302E-01,IMPACT - INSTALL/REWORK DRYWALL FRAMING AROUND DOORS - FAB136302E,Complete,Electrical Rm - 3F -SUE-FAB136302,,,,,,,,2025-05-16 08:00,2025-05-26 17:00,2025-05-16 08:00,2025-05-21 17:00
FAB136302E-03,INSTALL DOOR FRAMES - FAB136302E,Complete,Electrical Rm - 3F -SUE-FAB136302,,,,,,,,2025-08-18 08:00,2025-08-18 17:00,2025-05-21 00:00,2025-05-21 16:00
FAB136302E-04,INSTALL DOOR & HARDWARE - FAB136302E,Active,Electrical Rm - 3F -SUE-FAB136302,,,,,,,,2025-11-18 08:00,2025-11-24 17:00,2025-11-18 08:00,
FAB136302E-05,PAINT & PROTECT DOORS & FRAMES - FAB136302E,Not Started,Electrical Rm - 3F -SUE-FAB136302,,,,,,,,2026-02-16 08:00,2026-02-19 15:00,,
FAB136302F-01,IMPACT - INSTALL/REWORK DRYWALL FRAMING AROUND DOORS - FAB136302F,Complete,Electrical Rm - 3F -SUE-FAB136302,,,,,,,,2025-04-28 08:00,2025-05-06 17:00,2025-04-28 08:00,2025-05-06 17:00
FAB136302F-03,INSTALL DOOR FRAMES - FAB136302F,Complete,Electrical Rm - 3F -SUE-FAB136302,,,,,,,,2025-08-18 08:00,2025-08-18 17:00,2025-05-06 00:00,2025-05-06 16:00
FAB136302F-04,INSTALL DOOR & HARDWARE - FAB136302F,Active,Electrical Rm - 3F -SUE-FAB136302,,,,,,,,2025-11-06 08:00,2025-11-12 17:00,2025-11-06 08:00,
FAB136302F-05,PAINT & PROTECT DOORS & FRAMES - FFAB136302F,Not Started,Electrical Rm - 3F -SUE-FAB136302,,,,,,,,2026-02-16 08:00,2026-02-19 15:00,,
FAB136302G-01,IMPACT - INSTALL/REWORK DRYWALL FRAMING AROUND DOORS - FAB136302G HANDED OVER TO SECAI ON 08/29,Complete,Electrical Rm - 3F -SUE-FAB136302,,,,,,,,2025-08-28 08:00,2025-08-29 17:00,2025-08-29 08:00,2025-08-29 17:00
FAB136302G-03,INSTALL DOOR FRAME BY SECAI- FAB136302G HANDED OVER TO SECAI ON 08/29,Complete,Electrical Rm - 3F -SUE-FAB136302,,,,,,,,2025-08-29 08:00,2025-08-29 17:00,2025-08-29 08:00,2025-11-04 17:00
FAB136302G-04,INSTALL DOOR & HARDWARE - FAB136302G,Active,Electrical Rm - 3F -SUE-FAB136302,,,,,,,,2025-11-06 08:00,2025-11-12 17:00,2025-11-06 08:00,
FAB136302G-05,PAINT & PROTECT DOORS & FRAMES - FAB136302G,Not Started,Electrical Rm - 3F -SUE-FAB136302,,,,,,,,2026-02-16 08:00,2026-02-19 15:00,,
FAB136302H-01,IMPACT - INSTALL/REWORK DRYWALL FRAMING AROUND DOORS - FAB136302H,Complete,Electrical Rm - 3F -SUE-FAB136302,,,,,,,,2025-01-16 08:00,2025-01-24 17:00,2025-01-16 08:00,2025-01-24 17:00
FAB136302H-03,INSTALL DOOR FRAMES - FAB136302H,Complete,Electrical Rm - 3F -SUE-FAB136302,,,,,,,,2025-08-18 08:00,2025-08-18 17:00,2025-01-24 00:00,2025-01-24 16:00
FAB136302H-04,INSTALL DOOR & HARDWARE - FAB136302H,Active,Electrical Rm - 3F -SUE-FAB136302,,,,,,,,2025-11-07 08:00,2025-11-13 17:00,2025-11-07 08:00,
FAB136302H-05,PAINT & PROTECT DOORS & FRAMES - FAB136302H,Not Started,Electrical Rm - 3F -SUE-FAB136302,,,,,,,,2026-02-16 08:00,2026-02-19 15:00,,
FAB136302J-01,IMPACT - INSTALL/REWORK DRYWALL FRAMING AROUND DOORS - FAB136302J HANDED OVER TO SECAI ON 08/29,Complete,Electrical Rm - 3F -SUE-FAB136302,,,,,,,,2025-08-28 08:00,2025-08-29 17:00,2025-08-29 08:00,2025-08-29 17:00
FAB136302J-03,INSTALL DOOR FRAME BY SECAI - FAB136302J HANDED OVER ON 08/29,Complete,Electrical Rm - 3F -SUE-FAB136302,,,,,,,,2025-08-29 08:00,2025-08-29 17:00,2025-08-29 08:00,2025-11-03 17:00
FAB136302J-04,INSTALL DOOR & HARDWARE - FAB136302J,Active,Electrical Rm - 3F -SUE-FAB136302,,,,,,,,2025-11-04 08:00,2025-11-10 17:00,2025-11-04 08:00,
FAB136302J-05,PAINT & PROTECT DOORS & FRAMES - FAB136302J,Not Started,Electrical Rm - 3F -SUE-FAB136302,,,,,,,,2026-02-16 08:00,2026-02-19 15:00,,
FAB136302G-11,IMPACT - INTERNAL - UNASSEMBLED TRANSOM FRAMES FAB136302G HANDED OVER TO SECAI ON 08/29,Complete,Electrical Rm - 3F -SUE-FAB136302,,,,,,,,2025-06-20 08:00,2025-07-10 17:00,2025-06-20 08:00,2025-08-29 17:00
FAB136302J-11,IMPACT - INTERNAL - UNASSEMBLED TRANSOM FRAMES FAB136302J HANDED OVER TO SECAI ON 08/29,Complete,Electrical Rm - 3F -SUE-FAB136302,,,,,,,,2025-06-20 08:00,2025-07-10 17:00,2025-06-20 08:00,2025-08-29 17:00
FAB136408A-03,INSTALL DOOR FRAMES - FAB136408A,Complete,Electrical Rm - 3F -SUE-FAB136302,,,,,,,,2025-07-03 08:00,2025-07-03 17:00,2025-07-03 08:00,2025-07-03 17:00
FAB136408A-04,INSTALL DOOR & HARDWARE - FAB136408A,Not Started,Electrical Rm - 3F -SUE-FAB136302,,,,,,,,2025-11-21 08:00,2025-11-27 17:00,,
FAB136408A-05,PAINT & PROTECT DOORS & FRAMES -  FAB136408A,Not Started,Electrical Rm - 3F -SUE-FAB136302,,,,,,,,2026-02-16 08:00,2026-02-19 15:00,,
ZX-2590,Complete Drywall & Inspect - Duct Shaft - 3F-SUE-FAB136301,Complete,Duct Shaft - 3F -SUE-FAB136301,,,,,,,,2025-09-26 08:00,2025-09-29 17:00,2025-09-26 08:00,2025-09-29 17:00
ZX-2950,Complete Drywall & Inspect - Duct Shaft - 3F-SUE-FAB136106,Complete,Duct Shaft - 3F -SUE-FAB136106,,,,,,,,2025-10-03 08:00,2025-10-06 17:00,2025-10-03 08:00,2025-10-06 17:00
FAB136106A-01,IMPACT - INSTALL/REWORK DRYWALL FRAMING AROUND DOORS - FAB136106A,Complete,Duct Shaft - 3F -SUE-FAB136106,,,,,,,,2025-01-14 08:00,2025-01-15 17:00,2025-01-14 08:00,2025-01-15 17:00
FAB136106A-03,INSTALL DOOR FRAMES - FAB136106A,Complete,Duct Shaft - 3F -SUE-FAB136106,,,,,,,,2025-07-09 13:00,2025-07-10 12:00,2025-01-16 00:00,2025-01-17 12:00
FAB136106A-04,INSTALL DOOR & HARDWARE - FAB136106A,Active,Duct Shaft - 3F -SUE-FAB136106,,,,,,,,2025-07-09 08:00,2025-07-15 17:00,2025-07-09 08:00,
FAB136106A-05,PAINT & PROTECT DOORS & FRAMES - FAB136106A,Not Started,Duct Shaft - 3F -SUE-FAB136106,,,,,,,,2026-02-16 08:00,2026-02-19 15:00,,
ZX-2650,Complete Drywall & Inspect - Battery Rm1 - 3F-SUE-FAB136202,Complete,Battery Rm 1 - 3F -SUE-FAB136202,,,,,,,,2025-06-26 08:00,2025-07-09 17:00,2025-06-16 08:00,2025-09-08 17:00
ZX-2740,Complete Drywall & Inspect - Duct Shaft - 3F-SUE-FAB136201,Not Started,Duct Shaft - 3F -SUE-FAB136201,,,,,,,,2025-12-05 08:00,2025-12-08 17:00,,
ZX-2830,Complete Drywall & Inspect - Smock Locker @D-F/1-3 - 3F-FAB134106,Complete,Smock Locker @D-F/1-3 - 3F -FIZ-FAB134106,,,,,,,,2025-08-12 08:00,2025-08-18 17:00,2025-08-12 08:00,2025-08-18 17:00
ZX-16630,IMPACT SG PANELS TO BE REMOVED - Complete Drywall & Inspect - Smock Locker @D-F/1-3 - 3F-FAB134106,Complete,Smock Locker @D-F/1-3 - 3F -FIZ-FAB134106,,,,,,,,2025-05-05 08:00,2025-05-16 17:00,2025-05-05 08:00,2025-09-05 17:00
FAB134106A-03,INSTALL DOOR FRAMES - FAB134106A,Complete,Smock Locker @D-F/1-3 - 3F -FIZ-FAB134106,,,,,,,,2025-07-17 13:00,2025-07-18 12:00,2025-04-30 00:00,2025-04-30 16:00
FAB134106A-04,INSTALL DOOR & HARDWARE - FAB134106A,Active,Smock Locker @D-F/1-3 - 3F -FIZ-FAB134106,,,,,,,,2025-08-15 08:00,2025-08-21 17:00,2025-08-15 08:00,
FAB134106A-05,PAINT & PROTECT DOORS & FRAMES -  FAB134106A,Not Started,Smock Locker @D-F/1-3 - 3F -FIZ-FAB134106,,,,,,,,2026-02-16 08:00,2026-02-16 17:00,,
FAB134106C-01,DOOR ASSEMBLY - FAB134106C,Not Started,Smock Locker @D-F/1-3 - 3F -FIZ-FAB134106,,,,,,,,2025-12-03 08:00,2025-12-04 17:00,,
FAB134106C-02,DOOR PACKAGE INSTALL - FAB134106C,Not Started,Smock Locker @D-F/1-3 - 3F -FIZ-FAB134106,,,,,,,,2025-12-03 08:00,2025-12-04 17:00,,
FAB134106B-07,DOOR INSTALL - FAB134106B (OHC),Not Started,Smock Locker @D-F/1-3 - 3F -FIZ-FAB134106,,,,,,,,2025-11-21 08:00,2025-11-24 17:00,,
ZX-2920,Complete Drywall & Inspect - Fire Alarm 20 - 3F-FAB136308,Complete,Fire Alarm 20 - 3F -SUE-FAB136308,,,,,,,,2025-06-26 08:00,2025-06-26 17:00,2024-09-16 08:00,2024-09-20 16:00
FAB136308A-01,IMPACT - INSTALL/REWORK DRYWALL FRAMING AROUND DOORS - FAB136308A,Complete,Fire Alarm 20 - 3F -SUE-FAB136308,,,,,,,,2025-01-17 08:00,2025-01-27 17:00,2025-01-17 08:00,2025-01-27 17:00
FAB136308A-03,INSTALL DOOR FRAMES - FAB136308A,Complete,Fire Alarm 20 - 3F -SUE-FAB136308,,,,,,,,2025-07-25 08:00,2025-07-25 17:00,2025-01-27 00:00,2025-01-27 16:00
FAB136308A-04,INSTALL DOOR & HARDWARE - FAB136308A,Not Started,Fire Alarm 20 - 3F -SUE-FAB136308,,,,,,,,2025-11-21 08:00,2025-11-27 17:00,,
FAB136308A-05,PAINT & PROTECT DOORS & FRAMES - FAB136308A,Not Started,Fire Alarm 20 - 3F -SUE-FAB136308,,,,,,,,2026-02-16 08:00,2026-02-19 15:00,,
ZX-2680,Complete Drywall & Inspect - IT Security 22 - 3F-FAB136112,Complete,IT Security 22 - 3F -SUE-FAB136112,,,,,,,,2025-09-11 08:00,2025-09-11 08:00,2025-09-11 08:00,2025-09-11 08:00
TR-FAB136112A-03,INSTALL DOOR FRAMES - TR - FAB136112A,Complete,IT Security 22 - 3F -SUE-FAB136112,,,,,,,,2025-08-14 08:00,2025-08-22 17:00,2025-07-18 08:00,2025-07-18 17:00
TR-FAB136112A-04,INSTALL DOOR & HARDWARE - TR - FAB136112A,Not Started,IT Security 22 - 3F -SUE-FAB136112,,,,,,,,2025-11-21 08:00,2025-11-27 17:00,,
TR-FAB136112A-05,PAINT & PROTECT DOORS & FRAMES -  TR - FAB136112A,Not Started,IT Security 22 - 3F -SUE-FAB136112,,,,,,,,2026-02-16 08:00,2026-02-19 15:00,,
TR-FAB136112A-11,IMPACT - PROCUREMENT - Reordered doors (Wall Thickness and Door Swing Design Changes),Complete,IT Security 22 - 3F -SUE-FAB136112,,,,,,,,2025-06-20 08:00,2025-08-14 17:00,2025-06-20 08:00,2025-07-14 17:00
ZX-3070,Complete Drywall & Inspect - Electrical RM - 3F-SUW-FAB130402,Complete,Electrical Rm - 3F -SUW-FAB130402,,,,,,,,2025-07-25 08:00,2025-08-07 17:00,2025-06-16 08:00,2025-09-29 08:00
FAB130402A-03,INSTALL DOOR FRAMES - FAB130402A,Complete,Electrical Rm - 3F -SUW-FAB130402,,,,,,,,2025-07-28 13:00,2025-07-29 12:00,2025-02-13 00:00,2025-02-13 12:00
FAB130402A-04,INSTALL DOOR & HARDWARE - FAB130402A,Active,Electrical Rm - 3F -SUW-FAB130402,,,,,,,,2025-11-13 08:00,2025-11-19 17:00,2025-11-13 08:00,
FAB130402A-05,PAINT & PROTECT DOORS & FRAMES -  FAB130402A,Not Started,Electrical Rm - 3F -SUW-FAB130402,,,,,,,,2026-02-16 08:00,2026-02-19 15:00,,
FAB130402B-01,IMPACT - INSTALL/REWORK DRYWALL FRAMING AROUND DOORS - FAB130402B,Complete,Electrical Rm - 3F -SUW-FAB130402,,,,,,,,2025-04-30 08:00,2025-05-01 17:00,2025-04-30 08:00,2025-05-01 17:00
FAB130402B-03,INSTALL DOOR FRAMES - FAB130402B,Complete,Electrical Rm - 3F -SUW-FAB130402,,,,,,,,2025-05-01 08:00,2025-05-01 17:00,2025-05-01 08:00,2025-05-01 17:00
FAB130402B-04,INSTALL DOOR & HARDWARE - FAB130402B,Not Started,Electrical Rm - 3F -SUW-FAB130402,,,,,,,,2025-11-28 08:00,2025-12-04 17:00,,
FAB130402B-05,PAINT & PROTECT DOORS & FRAMES -  FAB130402B,Not Started,Electrical Rm - 3F -SUW-FAB130402,,,,,,,,2026-02-16 08:00,2026-02-19 15:00,,
FAB130402C-03,INSTALL DOOR FRAMES - FAB130402C,Complete,Electrical Rm - 3F -SUW-FAB130402,,,,,,,,2025-07-28 13:00,2025-07-29 12:00,2025-01-22 00:00,2025-01-22 12:00
FAB130402C-04,INSTALL DOOR & HARDWARE - FAB130402C,Not Started,Electrical Rm - 3F -SUW-FAB130402,,,,,,,,2025-11-21 08:00,2025-11-27 17:00,,
FAB130402C-05,PAINT & PROTECT DOORS & FRAMES -  FAB130402C,Not Started,Electrical Rm - 3F -SUW-FAB130402,,,,,,,,2026-02-16 08:00,2026-02-19 15:00,,
FAB130402D-03,INSTALL DOOR FRAMES - FAB130402D,Not Started,Electrical Rm - 3F -SUW-FAB130402,,,,,,,,2025-12-12 08:00,2025-12-12 17:00,,
FAB130402D-04,INSTALL DOOR & HARDWARE - FAB130402D,Not Started,Electrical Rm - 3F -SUW-FAB130402,,,,,,,,2025-12-12 08:00,2025-12-18 17:00,,
FAB130402D-05,PAINT & PROTECT DOORS & FRAMES -  FAB130402D,Not Started,Electrical Rm - 3F -SUW-FAB130402,,,,,,,,2026-02-16 08:00,2026-02-19 15:00,,
FAB130402D-11,IMPACT - INTERNAL - UNASSEMBLED TRANSOM FRAMES,Active,Electrical Rm - 3F -SUW-FAB130402,,,,,,,,2025-06-20 08:00,2025-07-10 17:00,2025-06-20 08:00,
FAB1-ST50D-03,INSTALL DOOR FRAMES - FAB1-ST50D,Complete,Electrical Rm - 3F -SUW-FAB130402,,,,,,,,2025-09-16 08:00,2025-09-16 17:00,2025-09-16 08:00,2025-09-16 17:00
FAB1-ST50D-04,INSTALL DOOR & HARDWARE - FAB1-ST50D,Active,Electrical Rm - 3F -SUW-FAB130402,,,,,,,,2025-10-02 08:00,2025-10-08 17:00,2025-10-02 08:00,
FAB1-ST50D-05,PAINT & PROTECT DOORS & FRAMES - FAB1-ST50D,Not Started,Electrical Rm - 3F -SUW-FAB130402,,,,,,,,2026-02-16 08:00,2026-02-19 15:00,,
FAB1-ST50D-50,IMPACT - PROCUREMENT - REORDERED DOORS (JAMB DEPTH ISSUE),Complete,Electrical Rm - 3F -SUW-FAB130402,,,,,,,,2025-09-03 08:00,2025-11-20 10:00,2025-06-09 08:00,2025-07-14 10:00
FAB130402E-07,DOOR INSTALL - FAB130402E (OHC),Not Started,Electrical Rm - 3F -SUW-FAB130402,,,,,,,,2025-12-19 08:00,2025-12-22 17:00,,
ZX-3160,Complete Drywall & Inspect - IT/Security 3 - 3F-FAB130307 NON RATED WALLS,Complete,IT/Security 3 - 3F -SUW-FAB130307,,,,,,,,2025-06-24 08:00,2025-06-26 17:00,2025-06-13 08:00,2025-06-23 16:00
TR-FAB130307A-01,IMPACT - INSTALL/REWORK DRYWALL FRAMING AROUND DOORS - TR - FAB130307A,Complete,IT/Security 3 - 3F -SUW-FAB130307,,,,,,,,2025-01-15 08:00,2025-01-23 17:00,2025-01-15 08:00,2025-01-23 17:00
TR-FAB130307A-03,INSTALL DOOR FRAMES - TR - FAB130307A,Complete,IT/Security 3 - 3F -SUW-FAB130307,,,,,,,,2025-06-27 13:00,2025-06-30 12:00,2025-01-23 00:00,2025-01-23 12:00
TR-FAB130307A-04,INSTALL DOOR & HARDWARE - TR - FAB130307A,Active,IT/Security 3 - 3F -SUW-FAB130307,,,,,,,,2025-10-20 08:00,2025-10-24 17:00,2025-10-20 08:00,
TR-FAB130307A-05,PAINT & PROTECT DOORS & FRAMES - TR - FAB130307A,Not Started,IT/Security 3 - 3F -SUW-FAB130307,,,,,,,,2026-02-16 08:00,2026-02-19 15:00,,
ZX-3010,Complete Drywall & Inspect - Duct Shaft - 3F-SUW-FAB130112,Complete,Duct Shaft - 3F -SUW-FAB130112,,,,,,,,2025-09-04 08:00,2025-09-08 17:00,2025-09-04 08:00,2025-09-08 17:00
ZX-3460,Complete Drywall & Inspect - Duct Shaft - 3F-SUE-FAB136510,Complete,Duct Shaft - 3F -SUE-FAB136510,,,,,,,,2025-08-27 08:00,2025-09-02 17:00,2025-08-27 08:00,2025-09-02 17:00
FAB136510A-01,IMPACT - INSTALL/REWORK DRYWALL FRAMING AROUND DOORS - FAB136510A,Complete,Duct Shaft - 3F -SUE-FAB136510,,,,,,,,2025-05-05 08:00,2025-05-13 17:00,2025-05-05 08:00,2025-05-09 17:00
FAB136510A-03,INSTALL DOOR FRAMES - FAB136510A,Complete,Duct Shaft - 3F -SUE-FAB136510,,,,,,,,2025-07-28 13:00,2025-07-29 12:00,2025-05-08 00:00,2025-05-09 12:00
FAB136510A-04,INSTALL DOOR & HARDWARE - FAB136510A,Active,Duct Shaft - 3F -SUE-FAB136510,,,,,,,,2025-07-09 08:00,2025-07-15 17:00,2025-07-09 08:00,
FAB136510A-05,PAINT & PROTECT DOORS & FRAMES -  FAB136510A,Not Started,Duct Shaft - 3F -SUE-FAB136510,,,,,,,,2026-02-16 08:00,2026-02-19 15:00,,
ZX-3430,SECAI TOOK OVER FOR DESIGN ISSUES - Complete Drywall & Inspect - Rated Chase-West - 3F-SUW-FAB130408,Complete,Rated Chase West - 3F -SUW-FAB130408,,,,,,,,2025-08-15 08:00,2025-08-21 17:00,2025-08-15 08:00,2025-08-15 17:00
FAB130408A-03,INSTALL DOOR FRAMES - FAB130408A,Not Started,Rated Chase West - 3F -SUW-FAB130408,,,,,,,,2025-11-21 08:00,2025-11-21 17:00,,
FAB130408A-04,INSTALL DOOR & HARDWARE - FAB130408A,Not Started,Rated Chase West - 3F -SUW-FAB130408,,,,,,,,2025-11-24 08:00,2025-11-28 17:00,,
FAB130408A-05,PAINT & PROTECT DOORS & FRAMES -  FAB130408A,Not Started,Rated Chase West - 3F -SUW-FAB130408,,,,,,,,2026-02-16 08:00,2026-02-19 17:00,,
ZX-3520,Complete Drywall & Inspect - Duct Shaft - 3F-SUW_FAB130401,Complete,Duct Shaft - 3F -SUW-FAB130401,,,,,,,,2025-09-02 08:00,2025-09-08 17:00,2025-09-02 08:00,2025-09-08 17:00
FAB130401A-01,IMPACT - INSTALL/REWORK DRYWALL FRAMING AROUND DOORS - FAB130401A,Complete,Duct Shaft - 3F -SUW-FAB130401,,,,,,,,2025-02-05 08:00,2025-02-13 17:00,2025-02-05 08:00,2025-02-13 17:00
FAB130401A-03,INSTALL DOOR FRAMES - FAB130401A,Complete,Duct Shaft - 3F -SUW-FAB130401,,,,,,,,2025-07-31 13:00,2025-08-01 12:00,2025-02-13 00:00,2025-02-13 12:00
FAB130401A-04,INSTALL DOOR & HARDWARE - FAB130401A,Not Started,Duct Shaft - 3F -SUW-FAB130401,,,,,,,,2025-11-28 08:00,2025-12-04 17:00,,
FAB130401A-05,PAINT & PROTECT DOORS & FRAMES -  FAB130401A,Not Started,Duct Shaft - 3F -SUW-FAB130401,,,,,,,,2026-02-16 08:00,2026-02-19 15:00,,
ZX-3370,Complete Drywall & Inspect - NaOH Transfer Rm - 3F-FAB130311,Complete,NaOH Transfer Rm - 3F -SUW-FAB130311,,,,,,,,2025-08-18 08:00,2025-08-26 17:00,2025-08-18 08:00,2025-08-26 17:00
FAB130311A-01,IMPACT - INSTALL/REWORK DRYWALL FRAMING AROUND DOORS - FAB130311A,Complete,NaOH Transfer Rm - 3F -SUW-FAB130311,,,,,,,,2025-07-14 08:00,2025-07-22 17:00,2025-05-12 08:00,2025-05-20 16:00
FAB130311A-03,INSTALL DOOR FRAMES - FAB130311A,Complete,NaOH Transfer Rm - 3F -SUW-FAB130311,,,,,,,,2025-07-24 08:00,2025-07-24 17:00,2025-05-27 08:00,2025-05-29 08:00
FAB130311A-04,INSTALL DOOR & HARDWARE - FAB130311A,Not Started,NaOH Transfer Rm - 3F -SUW-FAB130311,,,,,,,,2025-12-05 08:00,2025-12-11 17:00,,
FAB130311A-05,PAINT & PROTECT DOORS & FRAMES - FAB130311A,Not Started,NaOH Transfer Rm - 3F -SUW-FAB130311,,,,,,,,2026-02-16 08:00,2026-02-19 15:00,,
FAB130311B-03,INSTALL DOOR FRAMES - FAB130311B,Not Started,NaOH Transfer Rm - 3F -SUW-FAB130311,,,,,,,,2025-11-28 08:00,2025-11-28 17:00,,
FAB130311B-04,INSTALL DOOR & HARDWARE - FAB130311B,Not Started,NaOH Transfer Rm - 3F -SUW-FAB130311,,,,,,,,2025-12-01 08:00,2025-12-05 17:00,,
FAB130311B-05,PAINT & PROTECT DOORS & FRAMES - FAB130311B,Not Started,NaOH Transfer Rm - 3F -SUW-FAB130311,,,,,,,,2026-02-16 08:00,2026-02-19 15:00,,
ZX-3400,Complete Drywall & Inspect - Duct Shaft - 3F-SUW-FAB130102,Complete,Duct Shaft-3F-SUW-FAB130102,,,,,,,,2025-09-04 08:00,2025-09-08 17:00,2025-09-04 08:00,2025-09-08 17:00
FAB130102A-03,INSTALL DOOR FRAMES - FAB130102A,Complete,Duct Shaft-3F-SUW-FAB130102,,,,,,,,2025-08-08 08:00,2025-08-08 17:00,2025-01-20 00:00,2025-01-20 16:00
FAB130102A-04,INSTALL DOOR & HARDWARE - FAB130102A,Not Started,Duct Shaft-3F-SUW-FAB130102,,,,,,,,2025-11-21 08:00,2025-11-27 17:00,,
FAB130102A-05,PAINT & PROTECT DOORS & FRAMES - FAB130102A,Not Started,Duct Shaft-3F-SUW-FAB130102,,,,,,,,2026-02-16 08:00,2026-02-19 15:00,,
ZX-4030,Complete Drywall & Inspect - Duct Shaft - 3F-SUE-FAB136401,Complete,Duct Shaft - 3F -SUE-FAB136401,,,,,,,,2025-11-03 08:00,2025-11-11 17:00,2025-11-03 08:00,2025-11-07 17:00
FAB136401A-01,IMPACT - INSTALL/REWORK DRYWALL FRAMING AROUND DOORS - FAB136401A FRAME HANDED OVER TO SECAI 07/18,Complete,Duct Shaft - 3F -SUE-FAB136401,,,,,,,,2025-07-18 08:00,2025-07-28 17:00,2025-07-18 08:00,2025-07-18 17:00
FAB136401A-02,SECAI ROUGH IN/SECURITY - FAB136401A FRAME HANDED OVER TO SECAI 07/18,Complete,Duct Shaft - 3F -SUE-FAB136401,,,,,,,,2025-07-18 08:00,2025-07-18 17:00,2025-07-18 08:00,2025-07-18 17:00
FAB136401A-03,INSTALL DOOR FRAME BY SECAI - FAB136401A HANDED OVER TO SECAI 07/18,Complete,Duct Shaft - 3F -SUE-FAB136401,,,,,,,,2025-09-17 08:00,2025-09-17 17:00,2025-08-11 08:00,2025-08-12 17:00
FAB136401A-04,INSTALL DOOR & HARDWARE - FAB136401A,Not Started,Duct Shaft - 3F -SUE-FAB136401,,,,,,,,2025-11-21 08:00,2025-11-27 17:00,,
FAB136401A-05,PAINT & PROTECT DOORS & FRAMES -  FAB136401A,Not Started,Duct Shaft - 3F -SUE-FAB136401,,,,,,,,2026-02-16 08:00,2026-02-19 15:00,,
FAB136401A-11,IMPACT - SECAI - DIRECTIVE TO HOLD FRAME INSTALLATION FRAME HANDED OVER TO SECAI 07/18,Complete,Duct Shaft - 3F -SUE-FAB136401,,,,,,,,2025-07-18 08:00,2025-07-28 10:00,2025-07-18 08:00,2025-07-18 10:00
FAB136401B-03,INSTALL DOOR FRAMES - FAB136401B,Not Started,Duct Shaft - 3F -SUE-FAB136401,,,,,,,,2025-11-28 08:00,2025-11-28 17:00,,
FAB136401B-04,INSTALL DOOR & HARDWARE - FAB136401B,Not Started,Duct Shaft - 3F -SUE-FAB136401,,,,,,,,2025-12-01 08:00,2025-12-05 17:00,,
FAB136401B-05,PAINT & PROTECT DOORS & FRAMES - FAB136401B,Not Started,Duct Shaft - 3F -SUE-FAB136401,,,,,,,,2026-02-16 08:00,2026-02-19 15:00,,
ZX-3820,Complete Drywall & Inspect - Reticle Rm - 3F-SUE-FAB136502,Complete,Reticle Rm - 3F -SUE-FAB136502,,,,,,,,2025-04-14 08:00,2025-04-18 17:00,2025-04-14 08:00,2025-04-18 17:00
ZX-3790,Complete Drywall & Inspect - Battery Rm - 3F-SUW-FAB130501,Complete,Battery Rm - 3F -SUW-FAB130501,,,,,,,,2025-07-18 08:00,2025-07-31 17:00,2025-06-16 08:00,2025-09-05 17:00
FAB130501A-04,INSTALL DOOR & HARDWARE - FAB130501A,Not Started,Battery Rm - 3F -SUW-FAB130501,,,,,,,,2025-11-24 08:00,2025-11-28 17:00,,
FAB130501A-05,PAINT & PROTECT DOORS & FRAMES -  FAB130501A,Not Started,Battery Rm - 3F -SUW-FAB130501,,,,,,,,2026-02-16 08:00,2026-02-19 15:00,,
FAB130501A-03,INSTALL DOOR FRAMES - FAB130501A,Not Started,Battery Rm - 3F -SUW-FAB130501,,,,,,,,2025-11-21 08:00,2025-11-21 17:00,,
ZX-3880,Complete Drywall & Inspect - W-H2SO4 Transfer Rm - 3F-FAB130312,Complete,W-H2SO4 Transfer Rm - 3F -SUW-FAB130312,,,,,,,,2025-08-25 08:00,2025-08-26 17:00,2025-08-25 08:00,2025-08-26 17:00
ZX-3730,Complete Drywall & Inspect - Duct Shaft - 3F-SUW-FAB130301,Complete,Duct Shaft - 3F -SUW-FAB130301,,,,,,,,2025-09-29 08:00,2025-10-03 17:00,2025-09-29 08:00,2025-10-03 17:00
ZX-3760,Complete Drywall & Inspect - Quitz - 3F-FAB130313,Complete,Quitz - 3F -SUW-FAB130313,,,,,,,,2025-06-11 08:00,2025-06-24 17:00,2025-05-09 08:00,2025-05-23 16:00
FAB130313A-03,INSTALL DOOR FRAMES - FAB130313A,Complete,Quitz - 3F -SUW-FAB130313,,,,,,,,2025-05-19 13:00,2025-05-20 12:00,2025-05-19 13:00,2025-05-20 12:00
FAB130313A-04,INSTALL DOOR & HARDWARE - FAB130313A,Active,Quitz - 3F -SUW-FAB130313,,,,,,,,2025-11-18 08:00,2025-11-24 17:00,2025-11-18 08:00,
FAB130313A-05,PAINT & PROTECT DOORS & FRAMES - FAB130313A,Not Started,Quitz - 3F -SUW-FAB130313,,,,,,,,2026-02-16 08:00,2026-02-19 15:00,,
ZX-4180,Complete Drywall & Inspect - Duct Shaft - 3F-SUE-FAB136507,Not Started,Duct Shaft - 3F -SUE-FAB136507,,,,,,,,2025-12-05 08:00,2025-12-05 08:00,,
ZX-4060,Complete Drywall & Inspect - Duct Shaft - 3F-SUW-FAB130502,Complete,Duct Shaft - 3F -SUW-FAB130502,,,,,,,,2025-09-01 08:00,2025-09-05 17:00,2025-09-01 08:00,2025-09-05 17:00
FAB130502A-01,IMPACT - INSTALL/REWORK DRYWALL FRAMING AROUND DOORS - FAB130502A,Complete,Duct Shaft - 3F -SUW-FAB130502,,,,,,,,2025-01-10 08:00,2025-01-20 17:00,2025-01-10 08:00,2025-01-20 17:00
FAB130502A-04,INSTALL DOOR & HARDWARE - FAB130502A,Not Started,Duct Shaft - 3F -SUW-FAB130502,,,,,,,,2025-11-21 08:00,2025-11-27 17:00,,
FAB130502A-05,PAINT & PROTECT DOORS & FRAMES - FAB130502A,Not Started,Duct Shaft - 3F -SUW-FAB130502,,,,,,,,2026-02-16 08:00,2026-02-19 15:00,,
FAB130502B-04,INSTALL DOOR & HARDWARE - FAB130502B,Not Started,Duct Shaft - 3F -SUW-FAB130502,,,,,,,,2025-11-25 08:00,2025-12-01 17:00,,
FAB130502B-05,PAINT & PROTECT DOORS & FRAMES - FAB130502B,Not Started,Duct Shaft - 3F -SUW-FAB130502,,,,,,,,2026-02-16 08:00,2026-02-19 15:00,,
FAB130502B-11,IMPACT - SECAI - DIRECTIVE TO HOLD FRAME INSTALLATION,Not Started,Duct Shaft - 3F -SUW-FAB130502,,,,,,,,2025-11-21 08:00,2025-11-21 17:00,,
ZX-4150,Complete Drywall & Inspect - Duct Shaft - 3F-SUW-FAB130406,Complete,Duct Shaft - 3F -SUW-FAB130406,,,,,,,,2025-09-09 08:00,2025-09-15 17:00,2025-09-09 08:00,2025-09-15 17:00
FAB130406A-01,IMPACT - INSTALL/REWORK DRYWALL FRAMING AROUND DOORS - FAB130406A,Complete,Duct Shaft - 3F -SUW-FAB130406,,,,,,,,2025-01-14 08:00,2025-01-22 17:00,2025-01-14 08:00,2025-01-22 17:00
FAB130406A-03,INSTALL DOOR FRAMES - FAB130406A,Complete,Duct Shaft - 3F -SUW-FAB130406,,,,,,,,2025-07-22 13:00,2025-07-23 12:00,2025-01-22 00:00,2025-01-22 12:00
FAB130406A-04,INSTALL DOOR & HARDWARE - FAB130406A,Not Started,Duct Shaft - 3F -SUW-FAB130406,,,,,,,,2025-11-21 08:00,2025-11-27 17:00,,
FAB130406A-05,PAINT & PROTECT DOORS & FRAMES - FAB130406A,Not Started,Duct Shaft - 3F -SUW-FAB130406,,,,,,,,2026-02-16 08:00,2026-02-19 15:00,,
ZX-16120,Complete Drywall & Inspect - G.3-J/33 - 3F-SECAI refuse to remove the panels - HANDED OVER DUE TO REFUSUAL,Complete,G.3-J/33 - 3F - FAB,,,,,,,,2025-09-23 08:00,2025-09-29 17:00,2025-09-29 08:00,2025-09-29 17:00
ZX-16440,IMPACT - Complete Drywall & Inspect - G.3-J/33 - 3F SG PANELS TO BE REMOVED,Complete,G.3-J/33 - 3F - FAB,,,,,,,,2025-05-05 08:00,2025-05-30 17:00,2025-05-05 08:00,2025-09-08 17:00
ZX-4090,Complete Drywall & Inspect - Duct Shaft - 3F-SUW-FAB130204,Complete,Duct Shaft - 3F -SUW-FAB130204,,,,,,,,2025-09-01 08:00,2025-09-05 17:00,2025-09-01 08:00,2025-09-05 17:00
FAB130204A-01,INSTALL DOOR FRAMES - FAB130204A,Complete,Duct Shaft - 3F -SUW-FAB130204,,,,,,,,2025-01-17 08:00,2025-01-27 17:00,2025-01-17 08:00,2025-01-17 17:00
FAB130204A-04,INSTALL DOOR & HARDWARE - FAB130204A,Not Started,Duct Shaft - 3F -SUW-FAB130204,,,,,,,,2025-11-21 08:00,2025-11-27 17:00,,
FAB130204A-05,PAINT & PROTECT DOORS & FRAMES - FAB130204A,Not Started,Duct Shaft - 3F -SUW-FAB130204,,,,,,,,2026-02-16 08:00,2026-02-19 15:00,,
ZX-4750,Complete Drywall & Inspect - Battery Rm 2 - 3F-SUE-FAB136402,Complete,Battery Rm 2 - 3F -SUE-FAB136402,,,,,,,,2025-07-18 08:00,2025-07-31 17:00,2025-07-18 08:00,2025-09-05 17:00
ZX-4540,Complete Drywall & Inspect - PR Lifter Rm - 3F-SUE-FAB126509,Complete,PR Lifter Rm - 2F -SUE-FAB126509,,,,,,,,2025-09-04 08:00,2025-09-05 17:00,2025-09-04 08:00,2025-09-05 17:00
FAB126509A-01,IMPACT - INSTALL/REWORK DRYWALL FRAMING AROUND DOORS - FAB126509A,Complete,PR Lifter Rm - 2F -SUE-FAB126509,,,,,,,,2025-09-26 08:00,2025-09-29 17:00,2025-09-26 08:00,2025-09-29 17:00
FAB126509A-03,INSTALL DOOR FRAMES - FAB126509A,Complete,PR Lifter Rm - 2F -SUE-FAB126509,,,,,,,,2025-09-29 08:00,2025-09-29 17:00,2025-09-29 08:00,2025-09-29 17:00
FAB126509A-04,INSTALL DOOR & HARDWARE - FAB126509A,Not Started,PR Lifter Rm - 2F -SUE-FAB126509,,,,,,,,2025-11-21 08:00,2025-11-27 17:00,,
FAB126509A-05,PAINT & PROTECT DOORS & FRAMES -  FAB126509A,Not Started,PR Lifter Rm - 2F -SUE-FAB126509,,,,,,,,2026-02-16 08:00,2026-02-19 15:00,,
ZX-4420,Complete Drywall & Inspect - Duct Shaft - 3F-SUE-FAB136405,Complete,Duct Shaft - 3F -SUE-FAB136405,,,,,,,,2025-11-03 08:00,2025-11-11 17:00,2025-11-03 08:00,2025-11-07 17:00
ZX-4510,Complete Drywall & Inspect - Fire Alarm Rm 3 - 3F-FAB130305,Complete,Fire Alarm Rm 3 - 3F -SUW-FAB130305,,,,,,,,2025-09-03 08:00,2025-09-05 17:00,2025-09-03 08:00,2025-09-05 17:00
FAB130305A-01,IMPACT - INSTALL/REWORK DRYWALL FRAMING AROUND DOORS - FAB130305A,Complete,Fire Alarm Rm 3 - 3F -SUW-FAB130305,,,,,,,,2025-03-27 08:00,2025-04-04 17:00,2025-03-27 08:00,2025-04-03 17:00
FAB130305A-03,INSTALL DOOR FRAMES - FAB130305A,Complete,Fire Alarm Rm 3 - 3F -SUW-FAB130305,,,,,,,,2025-06-27 13:00,2025-06-30 12:00,2025-04-03 00:00,2025-04-03 12:00
FAB130305A-04,INSTALL DOOR & HARDWARE - FAB130305A,Active,Fire Alarm Rm 3 - 3F -SUW-FAB130305,,,,,,,,2025-10-21 08:00,2025-10-27 17:00,2025-10-21 08:00,
FAB130305A-05,PAINT & PROTECT DOORS & FRAMES - FAB130305A,Not Started,Fire Alarm Rm 3 - 3F -SUW-FAB130305,,,,,,,,2026-02-16 08:00,2026-02-19 15:00,,
ZX-4450,Complete Drywall & Inspect - Fire Alarm Rm 1 - 3F-FAB130105,Complete,Fire Alarm Rm 1 - 3F -SUW-FAB130105,,,,,,,,2025-07-21 08:00,2025-07-29 17:00,2024-08-12 08:00,2024-08-20 16:00
ZX-4480,Complete Drywall & Inspect - IT/Security 1 - 3F-FAB130109,Complete,IT/Security 1- 3F -SUW-FAB130109,,,,,,,,2024-11-11 08:00,2024-11-19 17:00,2024-11-11 08:00,2024-11-21 16:00
ZX-5770,Complete Drywall & Inspect - D-G/33 - 3F-SECAI refuse to remove the panels - HANDED OVER DUE TO REFUSUAL,Complete,D-G/33 - 3F - FAB,,,,,,,,2025-09-23 08:00,2025-09-29 17:00,2025-09-29 08:00,2025-09-29 17:00
ZX-16460,IMPACT - Complete Drywall & Inspect - D-G/33 - 3F-SECAI refuse to remove the panels - HANDED OVER DUE TO REFUSUAL,Complete,D-G/33 - 3F - FAB,,,,,,,,2025-05-05 08:00,2025-05-30 17:00,2025-05-05 08:00,2025-09-29 17:00
ZX-10450,Complete Drywall & Inspect - IT/Security 20 - 3F-TR-FAB136306,Complete,IT/Security 20 - 3F -SUE-TR-FAB136306,,,,,,,,2024-08-05 08:00,2024-08-06 17:00,2024-08-05 08:00,2024-08-09 16:00
TR-FAB136306A-01,IMPACT - INSTALL/REWORK DRYWALL FRAMING AROUND DOORS - TR - FAB136306A,Complete,IT/Security 20 - 3F -SUE-TR-FAB136306,,,,,,,,2025-01-09 08:00,2025-01-17 17:00,2025-01-09 08:00,2025-01-17 17:00
TR-FAB136306A-03,INSTALL DOOR FRAMES - TR - FAB136306A,Complete,IT/Security 20 - 3F -SUE-TR-FAB136306,,,,,,,,2025-01-17 08:00,2025-01-17 17:00,2025-01-17 08:00,2025-01-17 17:00
TR-FAB136306A-04,INSTALL DOOR & HARDWARE - TR - FAB136306A,Not Started,IT/Security 20 - 3F -SUE-TR-FAB136306,,,,,,,,2025-11-21 08:00,2025-11-27 17:00,,
TR-FAB136306A-05,PAINT & PROTECT DOORS & FRAMES -  TR - FAB136306A,Not Started,IT/Security 20 - 3F -SUE-TR-FAB136306,,,,,,,,2026-02-16 08:00,2026-02-19 15:00,,
ZX-16180,Complete Drywall & Inspect - Clean Toilet (M) 1 - 3F-FAB130317,Complete,Clean Toilet (M) 1- 3F -SUW-FAB130317,,,,,,,,2025-06-10 10:00,2025-06-26 10:00,2025-05-26 10:00,2025-06-05 10:00
FAB130317A-03,INSTALL DOOR FRAMES - FAB130317A,Complete,Clean Toilet (M) 1- 3F -SUW-FAB130317,,,,,,,,2025-07-09 13:00,2025-07-10 12:00,2025-05-11 00:00,2025-05-12 16:00
FAB130317A-04,INSTALL DOOR & HARDWARE - FAB130317A,Active,Clean Toilet (M) 1- 3F -SUW-FAB130317,,,,,,,,2025-11-13 08:00,2025-11-19 17:00,2025-11-13 08:00,
FAB130317A-05,PAINT & PROTECT DOORS & FRAMES - FAB130317A,Not Started,Clean Toilet (M) 1- 3F -SUW-FAB130317,,,,,,,,2026-02-16 08:00,2026-02-19 15:00,,
ZX-16210,Complete Drywall & Inspect - Clean Toilet (W) 1 - 3F-FAB130316,Complete,Clean Toilet (W) 1 - 3F -SUW-FAB130316,,,,,,,,2025-06-12 08:00,2025-06-20 17:00,2025-05-06 08:00,2025-05-23 16:00
FAB130316A-01,IMPACT - INSTALL/REWORK DRYWALL FRAMING AROUND DOORS- FAB130316A,Complete,Clean Toilet (W) 1 - 3F -SUW-FAB130316,,,,,,,,2025-06-06 08:00,2025-06-16 17:00,2025-05-06 08:00,2025-05-06 16:00
FAB130316A-03,INSTALL DOOR FRAMES - FAB130316A,Complete,Clean Toilet (W) 1 - 3F -SUW-FAB130316,,,,,,,,2025-06-24 13:00,2025-06-25 12:00,2025-05-06 00:00,2025-05-06 12:00
FAB130316A-04,INSTALL DOOR & HARDWARE - FAB130316A,Active,Clean Toilet (W) 1 - 3F -SUW-FAB130316,,,,,,,,2025-06-10 08:00,2025-06-16 17:00,2025-06-10 08:00,
FAB130316A-05,PAINT & PROTECT DOORS & FRAMES - FAB130316A,Not Started,Clean Toilet (W) 1 - 3F -SUW-FAB130316,,,,,,,,2026-02-16 08:00,2026-02-19 17:00,,
ZX-16240,Complete Drywall & Inspect - Airlock 18 - 3F-FAB136506,Complete,Air Lock 18 - 3F -SUE-FAB136506,,,,,,,,2025-05-05 08:00,2025-05-07 17:00,2025-05-05 08:00,2025-05-13 16:00
ZX-16270,Complete Drywall & Inspect - CRT Airlock - 3F-FAB130506,Complete,CRT Air Lock - 3F -SUW-FAB130506,,,,,,,,2025-07-09 08:00,2025-07-17 17:00,2025-06-19 08:00,2025-08-12 08:00
ZX-16650,Complete Drywall & Inspect - Stair #02 SUW- 3F- FAB1-ST02,Complete,Stair 2 - 3F-SUW-FAB1-ST02,,,,,,,,2025-05-13 08:00,2025-05-26 17:00,2025-05-13 08:00,2025-08-18 17:00
ZX-16710,Complete Drywall CEILING & Inspect - Stair #02 SUW- 3F- FAB1-ST02,Complete,Stair 2 - 3F-SUW-FAB1-ST02,,,,,,,,2025-07-16 08:00,2025-07-29 17:00,2025-06-09 08:00,2025-06-30 16:00
FAB1-ST02C-03,INSTALL DOOR FRAMES - FAB1-ST02C,Complete,Stair 2 - 3F-SUW-FAB1-ST02,,,,,,,,2025-07-01 08:00,2025-07-01 17:00,2025-07-01 08:00,2025-07-01 16:00
FAB1-ST02C-04,INSTALL DOOR & HARDWARE - FAB1-ST02C,Active,Stair 2 - 3F-SUW-FAB1-ST02,,,,,,,,2025-11-12 08:00,2025-11-18 17:00,2025-11-12 08:00,
FAB1-ST02C-05,PAINT & PROTECT DOORS & FRAMES - FAB1-ST02C,Not Started,Stair 2 - 3F-SUW-FAB1-ST02,,,,,,,,2026-02-16 08:00,2026-02-20 17:00,,
FAB1-ST02D-04,INSTALL DOOR & HARDWARE - FAB1-ST02D-03,Not Started,Stair 2 - 3F-SUW-FAB1-ST02,,,,,,,,2025-11-28 08:00,2025-12-04 17:00,,
FAB1-ST02D-05,PAINT & PROTECT DOORS & FRAMES - FAB1-ST02D-03,Not Started,Stair 2 - 3F-SUW-FAB1-ST02,,,,,,,,2026-02-16 08:00,2026-02-19 17:00,,
FAB1-ST02D-03,INSTALL DOOR FRAMES - FAB1-ST02D-03,Complete,Stair 2 - 3F-SUW-FAB1-ST02,,,,,,,,2025-08-06 08:00,2025-08-06 17:00,2025-08-06 08:00,2025-08-06 17:00
ZX-16850,Complete Drywall & Inspect - Stair #03 SUW- 3F- FAB1-ST03,Complete,Stair 3 - 3F- SUW-FAB1-ST03,,,,,,,,2025-05-13 08:00,2025-05-26 17:00,2025-05-13 08:00,2025-10-13 17:00
FAB1-ST03C-01,IMPACT - INSTALL/REWORK DRYWALL FRAMING AROUND DOORS - FAB1-ST03C,Complete,Stair 3 - 3F- SUW-FAB1-ST03,,,,,,,,2025-04-01 08:00,2025-04-09 17:00,2025-04-01 08:00,2025-04-07 17:00
FAB1-ST03C-03,INSTALL DOOR FRAMES - FAB1-ST03C,Complete,Stair 3 - 3F- SUW-FAB1-ST03,,,,,,,,2025-04-07 08:00,2025-04-07 17:00,2025-04-07 08:00,2025-04-07 17:00
FAB1-ST03C-04,INSTALL DOOR & HARDWARE - FAB1-ST03C,Not Started,Stair 3 - 3F- SUW-FAB1-ST03,,,,,,,,2025-11-28 08:00,2025-12-04 17:00,,
FAB1-ST03C-05,PAINT & PROTECT DOORS & FRAMES - FAB1-ST03C,Not Started,Stair 3 - 3F- SUW-FAB1-ST03,,,,,,,,2026-02-16 08:00,2026-02-19 17:00,,
ZX-16880,Complete Drywall & Inspect - Stair #20 SUE- 3F- FAB1-ST20,Complete,Stair 20 - 3F -SUE-FAB1-ST20,,,,,,,,2025-05-13 08:00,2025-05-19 17:00,2025-05-13 08:00,2025-10-06 17:00
FAB1-ST20C-01,IMPACT - INSTALL/REWORK DRYWALL FRAMING AROUND DOORS - FAB1-ST20C,Complete,Stair 20 - 3F -SUE-FAB1-ST20,,,,,,,,2025-09-09 08:00,2025-09-10 17:00,2025-09-09 08:00,2025-09-10 17:00
FAB1-ST20C-03,INSTALL DOOR FRAMES - FAB1-ST20C,Complete,Stair 20 - 3F -SUE-FAB1-ST20,,,,,,,,2025-09-10 08:00,2025-09-10 17:00,2025-09-10 08:00,2025-09-10 17:00
FAB1-ST20C-04,INSTALL DOOR & HARDWARE - FAB1-ST20C,Active,Stair 20 - 3F -SUE-FAB1-ST20,,,,,,,,2025-11-18 08:00,2025-11-24 17:00,2025-11-18 08:00,
FAB1-ST20C-05,PAINT & PROTECT DOORS & FRAMES - FAB1-ST20C,Not Started,Stair 20 - 3F -SUE-FAB1-ST20,,,,,,,,2026-02-16 08:00,2026-02-20 17:00,,
ZX-17010,Complete Drywall & Inspect - Stair #21 SUE- 3F- FAB1-ST21,Complete,Stair 21 - 3F-SUE-FAB1-ST21,,,,,,,,2025-05-13 08:00,2025-05-26 17:00,2025-05-13 08:00,2025-08-18 17:00
ZX-17040,Complete Drywall CEILING & Inspect - Stair #21 SUE- 3F- FAB1-ST21,Complete,Stair 21 - 3F-SUE-FAB1-ST21,,,,,,,,2025-08-05 08:00,2025-08-18 17:00,2025-08-05 08:00,2025-08-18 17:00
ZX-17540,IMPACT RFI Drywall CEILING - Stair #21,Complete,Stair 21 - 3F-SUE-FAB1-ST21,,,,,,,,2025-05-30 08:00,2025-06-05 17:00,2025-05-26 08:00,2025-05-30 16:00
FAB1-ST21C-01,IMPACT - INSTALL/REWORK DRYWALL FRAMING AROUND DOORS - FAB1-ST21C,Complete,Stair 21 - 3F-SUE-FAB1-ST21,,,,,,,,2025-02-05 08:00,2025-02-13 17:00,2025-02-05 08:00,2025-02-13 17:00
FAB1-ST21C-03,INSTALL DOOR FRAMES - FAB1-ST21C,Complete,Stair 21 - 3F-SUE-FAB1-ST21,,,,,,,,2025-02-13 08:00,2025-02-13 17:00,2025-02-13 08:00,2025-02-13 17:00
FAB1-ST21C-04,INSTALL DOOR & HARDWARE - FAB1-ST21C,Active,Stair 21 - 3F-SUE-FAB1-ST21,,,,,,,,2025-11-12 08:00,2025-11-18 17:00,2025-11-12 08:00,
FAB1-ST21C-05,PAINT & PROTECT DOORS & FRAMES - FAB1-ST21C,Not Started,Stair 21 - 3F-SUE-FAB1-ST21,,,,,,,,2026-02-16 08:00,2026-02-20 17:00,,
FAB1-ST21D-03,INSTALL DOOR FRAMES - FAB1-ST21D,Complete,Stair 21 - 3F-SUE-FAB1-ST21,,,,,,,,2025-06-27 08:00,2025-06-27 17:00,2025-07-01 08:00,2025-07-01 08:00
FAB1-ST21D-04,INSTALL DOOR & HARDWARE - FAB1-ST21D,Not Started,Stair 21 - 3F-SUE-FAB1-ST21,,,,,,,,2025-11-21 08:00,2025-11-27 17:00,,
FAB1-ST21D-05,PAINT & PROTECT DOORS & FRAMES - FAB1-ST21D,Not Started,Stair 21 - 3F-SUE-FAB1-ST21,,,,,,,,2026-02-16 08:00,2026-02-20 17:00,,
ZX-17170,Complete Drywall & Inspect - Stair #04 SUW- 3F- FAB1-ST04 - MKMARLOW,Complete,Stair 4 - 3F-SUW-FAB1-ST04,,,,,,,,2025-06-27 08:00,2025-07-10 17:00,2025-06-27 08:00,2025-09-05 17:00
ZX-17200,Complete Drywall CEILING & Inspect - Stair #04 SUE- 3F- FAB1-ST04 - MKMARLOW,Complete,Stair 4 - 3F-SUW-FAB1-ST04,,,,,,,,2025-09-15 08:00,2025-09-15 08:00,2025-09-15 08:00,2025-09-15 08:00
FAB1-ST04C-01,IMPACT - INSTALL/REWORK DRYWALL FRAMING AROUND DOORS - FAB1-ST04C,Complete,Stair 4 - 3F-SUW-FAB1-ST04,,,,,,,,2025-09-04 08:00,2025-09-05 17:00,2025-09-04 08:00,2025-09-05 17:00
FAB1-ST04C-03,INSTALL DOOR FRAMES - FAB1-ST04C,Complete,Stair 4 - 3F-SUW-FAB1-ST04,,,,,,,,2025-09-05 08:00,2025-09-05 17:00,2025-09-05 08:00,2025-09-05 17:00
FAB1-ST04C-04,INSTALL DOOR & HARDWARE - FAB1-ST04C,Active,Stair 4 - 3F-SUW-FAB1-ST04,,,,,,,,2025-11-12 08:00,2025-11-18 17:00,2025-11-12 08:00,
FAB1-ST04C-05,PAINT & PROTECT DOORS & FRAMES - FAB1-ST04C,Not Started,Stair 4 - 3F-SUW-FAB1-ST04,,,,,,,,2026-02-16 08:00,2026-02-19 17:00,,
ZX-17210,SECAI TURNOVER FOR ACELERATION - Drywall & Inspect - Stair #19 SUE- 3F- FAB1-ST19 BAKER/DESCOPE,Complete,Stair 19 - 3F -SUE-FAB1-ST19,,,,,,,,2025-06-10 08:00,2025-06-23 17:00,2025-06-10 08:00,2025-06-10 16:00
ZX-17240,SECAI TURNOVER FOR ACELERATION - Drywall CEILING & Inspect - Stair #19 SUE- 3F- FAB1-ST19 BAKER/DESCOPE,Complete,Stair 19 - 3F -SUE-FAB1-ST19,,,,,,,,2025-06-10 08:00,2025-06-23 17:00,2025-06-10 08:00,2025-06-10 16:00
FAB1-ST19C-04,INSTALL DOOR & HARDWARE - FAB1-ST19C,Active,Stair 19 - 3F -SUE-FAB1-ST19,,,,,,,,2025-11-11 08:00,2025-11-17 17:00,2025-11-11 08:00,
FAB1-ST19C-05,PAINT & PROTECT DOORS & FRAMES - FAB1-ST19C,Not Started,Stair 19 - 3F -SUE-FAB1-ST19,,,,,,,,2026-02-16 08:00,2026-02-19 17:00,,
ZX-18080,Complete Drywall & Inspect - Stair #18 SUE- 3F- FAB1-ST18,Complete,Stair 18 - 3F -SUE-FAB1-ST18,,,,,,,,2025-09-29 08:00,2025-10-03 17:00,2025-09-29 08:00,2025-10-03 17:00
FAB130116A-01,DOOR ASSEMBLY - FAB130116A,Not Started,FA Lab - 3F -SUW-FAB130116,,,,,,,,2025-12-05 08:00,2025-12-08 17:00,,
FAB130116A-02,DOOR PACKAGE INSTALL - FAB130116A,Not Started,FA Lab - 3F -SUW-FAB130116,,,,,,,,2025-12-05 08:00,2025-12-08 17:00,,
FAB130117F-01,DOOR ASSEMBLY - FAB130117F,Not Started,FAB Lab - 3F -SUW-FAB130115,,,,,,,,2025-12-10 08:00,2025-12-11 17:00,,
FAB130117F-02,DOOR PACKAGE INSTALL - FAB130117F,Not Started,FAB Lab - 3F -SUW-FAB130115,,,,,,,,2025-12-10 08:00,2025-12-11 17:00,,
FAB130117G-01,DOOR ASSEMBLY - FAB130117G,Not Started,FAB Lab - 3F -SUW-FAB130114,,,,,,,,2025-12-19 08:00,2025-12-22 17:00,,
FAB130117G-02,DOOR PACKAGE INSTALL - FAB130117G,Not Started,FAB Lab - 3F -SUW-FAB130114,,,,,,,,2025-12-19 08:00,2025-12-22 17:00,,
FAB130117H-01,DOOR ASSEMBLY - FAB130117H,Not Started,FAB Lab - 3F -SUW-FAB130113,,,,,,,,2025-12-30 08:00,2025-12-31 17:00,,
FAB130117H-02,DOOR PACKAGE INSTALL - FAB130117H,Not Started,FAB Lab - 3F -SUW-FAB130113,,,,,,,,2025-12-30 08:00,2025-12-31 17:00,,
FAB130117I-01,DOOR ASSEMBLY - FAB130117I,Not Started,FA Lab - 3F -SUW-FAB130201,,,,,,,,2026-01-08 08:00,2026-01-09 17:00,,
FAB130117I-02,DOOR PACKAGE INSTALL - FAB130117I,Not Started,FA Lab - 3F -SUW-FAB130201,,,,,,,,2026-01-08 08:00,2026-01-09 17:00,,
FAB134105A-01,DOOR ASSEMBLY - FAB134105A,Complete,S/L Entrance - 3F -FIZ-FAB134105,,,,,,,,2025-08-06 08:00,2025-08-07 17:00,2025-08-06 08:00,2025-08-07 17:00
FAB134105A-02,DOOR PACKAGE INSTALL - FAB134105A,Complete,S/L Entrance - 3F -FIZ-FAB134105,,,,,,,,2025-08-06 08:00,2025-08-07 17:00,2025-08-06 08:00,2025-08-07 17:00
FAB134105C-01,DOOR ASSEMBLY - FAB134105C,Complete,S/L Entrance - 3F -FIZ-FAB134105,,,,,,,,2025-08-06 08:00,2025-08-07 17:00,2025-08-06 08:00,2025-08-07 17:00
FAB134105C-02,DOOR PACKAGE INSTALL - FAB134105C,Complete,S/L Entrance - 3F -FIZ-FAB134105,,,,,,,,2025-08-06 08:00,2025-08-07 17:00,2025-08-06 08:00,2025-08-07 17:00
ZX-2350,Complete Drywall & Inspect - Clean Vestibule #19 - 2F-FAB126402,Complete,Clean Vestibule 19 - 2F -SUE-FAB126402,,,,,,,,2025-10-22 08:00,2025-10-28 17:00,2025-10-22 08:00,2025-10-28 17:00
FAB126402A-03,INSTALL DOOR FRAMES - FAB126402A,Complete,Clean Vestibule 19 - 2F -SUE-FAB126402,,,,,,,,2025-08-04 13:00,2025-08-05 12:00,2025-03-28 00:00,2025-03-28 16:00
FAB126402A-04,INSTALL DOOR & HARDWARE - FAB126402A,Active,Clean Vestibule 19 - 2F -SUE-FAB126402,,,,,,,,2025-11-13 08:00,2025-11-19 17:00,2025-11-13 08:00,
FAB126402A-05,PAINT & PROTECT DOORS & FRAMES -  FAB126402A,Not Started,Clean Vestibule 19 - 2F -SUE-FAB126402,,,,,,,,2026-02-16 08:00,2026-02-19 15:00,,
ZX-2440,Complete Drywall & Inspect - Elevator #19 - 2F-FAB1-EL19,Complete,Elevator 19 - 2F -SUE-FAB1-EL19,,,,,,,,2025-06-19 08:00,2025-07-02 17:00,2025-06-11 08:00,2025-07-21 11:00
FAB126502F-01,DOOR FRAME HANDED OVER TO SECAI ON 10/01 - FAB126502F,Complete,Elevator 19 - 2F -SUE-FAB1-EL19,,,,,,,,2025-10-01 08:00,2025-10-01 17:00,2025-10-01 08:00,2025-10-01 17:00
FAB126502F-03,INSTALL DOOR FRAME BY SECAI - FAB126502F - HANDED OVER TO SECAI ON 10/01,Complete,Elevator 19 - 2F -SUE-FAB1-EL19,,,,,,,,2025-10-01 08:00,2025-10-01 17:00,2025-10-01 08:00,2025-11-17 17:00
FAB126502F-04,INSTALL DOOR & HARDWARE - FAB126502F,Active,Elevator 19 - 2F -SUE-FAB1-EL19,,,,,,,,2025-11-18 08:00,2025-11-24 17:00,2025-11-18 08:00,
FAB126502F-05,PAINT & PROTECT DOORS & FRAMES -  FAB126502F,Not Started,Elevator 19 - 2F -SUE-FAB1-EL19,,,,,,,,2026-02-16 08:00,2026-02-19 15:00,,
FAB126502F-30,IMPACT - REORDER FRAME -Elevator #19 - 2F - FAB1-EL19,Complete,Elevator 19 - 2F -SUE-FAB1-EL19,,,,,,,,2025-09-15 08:00,2025-10-01 17:00,2025-09-15 08:00,2025-10-01 17:00
ZX-2620,Complete Drywall & Inspect - Duct Shaft - 2F-SUE-FAB126510,Complete,Duct Shaft - 2F -SUE-FAB126510,,,,,,,,2025-09-01 08:00,2025-09-05 17:00,2025-09-01 08:00,2025-09-05 17:00
ZX-2560,Complete Drywall & Inspect - Airlock 20 - 2F-FAB126311,Complete,Air Lock 20 - 2F -SUE-FAB126311,,,,,,,,2025-06-27 08:00,2025-07-10 17:00,2024-08-19 08:00,2024-08-30 16:00
FAB126311B-01,IMPACT - INSTALL/REWORK DRYWALL FRAMING AROUND DOORS - FAB126311B,Complete,Air Lock 20 - 2F -SUE-FAB126311,,,,,,,,2025-04-01 08:00,2025-04-09 17:00,2025-04-01 08:00,2025-04-09 17:00
FAB126311B-03,INSTALL DOOR FRAMES - FAB126311B,Complete,Air Lock 20 - 2F -SUE-FAB126311,,,,,,,,2025-07-15 13:00,2025-07-16 12:00,2025-04-09 00:00,2025-04-09 16:00
FAB126311B-04,INSTALL DOOR & HARDWARE - FAB126311B,Active,Air Lock 20 - 2F -SUE-FAB126311,,,,,,,,2025-11-14 08:00,2025-11-20 17:00,2025-11-14 08:00,
FAB126311B-05,PAINT & PROTECT DOORS & FRAMES - FAB126311B,Not Started,Air Lock 20 - 2F -SUE-FAB126311,,,,,,,,2026-02-16 08:00,2026-02-19 15:00,,
FAB126311C-01,IMPACT - INSTALL/REWORK DRYWALL FRAMING AROUND DOORS - FAB126311C,Complete,Air Lock 20 - 2F -SUE-FAB126311,,,,,,,,2025-04-01 08:00,2025-04-09 17:00,2025-04-01 08:00,2025-04-09 17:00
FAB126311C-03,INSTALL DOOR FRAMES - FAB126311C,Complete,Air Lock 20 - 2F -SUE-FAB126311,,,,,,,,2025-07-15 13:00,2025-07-16 12:00,2025-04-09 00:00,2025-04-09 16:00
FAB126311C-04,INSTALL DOOR & HARDWARE - FAB126311C,Active,Air Lock 20 - 2F -SUE-FAB126311,,,,,,,,2025-09-04 08:00,2025-09-10 17:00,2025-09-04 08:00,
FAB126311C-05,PAINT & PROTECT DOORS & FRAMES - FAB126311C,Not Started,Air Lock 20 - 2F -SUE-FAB126311,,,,,,,,2026-02-16 08:00,2026-02-19 15:00,,
FAB126311D-01,IMPACT - INSTALL/REWORK DRYWALL FRAMING AROUND DOORS - FAB126311D,Complete,Air Lock 20 - 2F -SUE-FAB126311,,,,,,,,2025-04-02 08:00,2025-04-10 17:00,2025-04-02 08:00,2025-04-09 17:00
FAB126311D-03,INSTALL DOOR FRAMES - FAB126311D,Complete,Air Lock 20 - 2F -SUE-FAB126311,,,,,,,,2025-07-15 13:00,2025-07-16 12:00,2025-04-09 00:00,2025-04-09 16:00
FAB126311D-04,INSTALL DOOR & HARDWARE - FAB126311D,Not Started,Air Lock 20 - 2F -SUE-FAB126311,,,,,,,,2025-11-21 08:00,2025-11-27 17:00,,
FAB126311D-05,PAINT & PROTECT DOORS & FRAMES - FAB126311D,Not Started,Air Lock 20 - 2F -SUE-FAB126311,,,,,,,,2026-02-16 08:00,2026-02-19 15:00,,
FAB126311E-01,IMPACT - INSTALL/REWORK DRYWALL FRAMING AROUND DOORS - FAB126311E,Complete,Air Lock 20 - 2F -SUE-FAB126311,,,,,,,,2025-02-26 08:00,2025-03-06 17:00,2025-02-26 08:00,2025-03-06 17:00
FAB126311E-03,INSTALL DOOR FRAMES - FAB126311E,Complete,Air Lock 20 - 2F -SUE-FAB126311,,,,,,,,2025-03-06 08:00,2025-03-06 17:00,2025-03-06 08:00,2025-03-06 17:00
FAB126311E-04,INSTALL DOOR & HARDWARE - FAB126311E,Active,Air Lock 20 - 2F -SUE-FAB126311,,,,,,,,2025-09-05 08:00,2025-09-11 17:00,2025-09-05 08:00,
FAB126311E-05,PAINT & PROTECT DOORS & FRAMES - FAB126311E,Not Started,Air Lock 20 - 2F -SUE-FAB126311,,,,,,,,2026-02-16 08:00,2026-02-19 15:00,,
ZX-2530,Complete Drywall & Inspect - Duct Shaft - 2F-SUE-FAB126403,Complete,Duct Shaft - 2F -SUE-FAB126403,,,,,,,,2025-10-22 08:00,2025-10-28 17:00,2025-10-22 08:00,2025-10-28 17:00
FAB126110A-01,IMPACT - INSTALL/REWORK DRYWALL FRAMING AROUND DOORS - FAB126110A,Complete,Duct Shaft - 2F -SUE-FAB126403,,,,,,,,2025-05-08 08:00,2025-05-16 17:00,2025-05-08 08:00,2025-05-16 17:00
FAB126110A-03,INSTALL DOOR FRAMES - FAB126110A,Complete,Duct Shaft - 2F -SUE-FAB126403,,,,,,,,2025-05-16 08:00,2025-05-16 17:00,2025-05-16 08:00,2025-05-16 17:00
FAB126110A-04,INSTALL DOOR & HARDWARE - FAB126110A,Active,Duct Shaft - 2F -SUE-FAB126403,,,,,,,,2025-11-13 08:00,2025-11-19 17:00,2025-11-13 08:00,
FAB126110A-05,PAINT & PROTECT DOORS & FRAMES -  FAB126110A,Not Started,Duct Shaft - 2F -SUE-FAB126403,,,,,,,,2026-02-16 08:00,2026-02-19 15:00,,
ZX-2470,SECAI TOOK OVER FOR ACCELERATION - Complete Drywall & Inspect - PR Lifter Vestibule - 2F-FAB126511,Complete,PR Lifter Vestibule - 2F -SUE-FAB126511,,,,,,,,2025-10-22 08:00,2025-10-23 17:00,2025-10-22 08:00,2025-10-22 17:00
FAB126511A-03,INSTALL DOOR FRAMES - FAB126511A,Complete,PR Lifter Vestibule - 2F -SUE-FAB126511,,,,,,,,2025-04-09 08:00,2025-04-09 17:00,2025-04-09 08:00,2025-04-09 17:00
FAB126511A-04,INSTALL DOOR & HARDWARE - FAB126511A,Active,PR Lifter Vestibule - 2F -SUE-FAB126511,,,,,,,,2025-06-06 08:00,2025-06-12 17:00,2025-06-06 08:00,
FAB126511A-05,PAINT & PROTECT DOORS & FRAMES -  FAB126511A,Not Started,PR Lifter Vestibule - 2F -SUE-FAB126511,,,,,,,,2026-02-16 08:00,2026-02-19 17:00,,
FAB126511A-07,DOOR FRAME PAINT & 1ST COAT - FAB126511A,Complete,PR Lifter Vestibule - 2F -SUE-FAB126511,,,,,,,,2025-05-26 08:00,2025-05-30 17:00,2025-05-26 08:00,2025-05-30 17:00
ZX-2710,Complete Drywall & Inspect - T/L Maint. Rm 23 - 2F-SUE-FAB126501,Complete,T/L Maint. Rm 23 - 2F -SUE-FAB126501,,,,,,,,2025-09-22 08:00,2025-09-26 17:00,2025-09-22 08:00,2025-09-26 17:00
FAB126501A-01,IMPACT - INSTALL/REWORK DRYWALL FRAMING AROUND DOORS - FAB126501A,Complete,T/L Maint. Rm 23 - 2F -SUE-FAB126501,,,,,,,,2025-05-12 08:00,2025-05-20 17:00,2025-05-12 08:00,2025-05-16 17:00
FAB126501A-03,INSTALL DOOR FRAMES - FAB126501A,Complete,T/L Maint. Rm 23 - 2F -SUE-FAB126501,,,,,,,,2025-08-12 13:00,2025-08-13 12:00,2025-05-15 00:00,2025-05-16 16:00
FAB126501A-04,INSTALL DOOR & HARDWARE - FAB126501A,Not Started,T/L Maint. Rm 23 - 2F -SUE-FAB126501,,,,,,,,2025-11-21 08:00,2025-11-27 17:00,,
FAB126501A-05,PAINT & PROTECT DOORS & FRAMES -  FAB126501A,Not Started,T/L Maint. Rm 23 - 2F -SUE-FAB126501,,,,,,,,2026-02-16 08:00,2026-02-19 15:00,,
ZX-2890,Complete Drywall & Inspect - Airlock 18 - 2F-FAB126506,Complete,Air Lock 18 - 2F -SUE-FAB126506,,,,,,,,2025-09-01 08:00,2025-09-05 17:00,2025-09-01 08:00,2025-09-05 17:00
FAB126506B-01,IMPACT - INSTALL/REWORK DRYWALL FRAMING AROUND DOORS - FAB126506B HANDED OVER TO SECAI ON 08/29,Complete,Air Lock 18 - 2F -SUE-FAB126506,,,,,,,,2025-08-28 08:00,2025-08-29 17:00,2025-08-29 08:00,2025-08-29 17:00
FAB126506B-03,INSTALL DOOR FRAME BY SECAI - FAB126506B HANDED OVER ON 08/29,Active,Air Lock 18 - 2F -SUE-FAB126506,,,,,,,,2025-08-29 08:00,2025-08-29 17:00,2025-08-29 08:00,
FAB126506B-04,INSTALL DOOR & HARDWARE - FAB126506B,Not Started,Air Lock 18 - 2F -SUE-FAB126506,,,,,,,,2025-12-05 08:00,2025-12-11 17:00,,
FAB126506B-05,PAINT & PROTECT DOORS & FRAMES -  FAB126506B,Not Started,Air Lock 18 - 2F -SUE-FAB126506,,,,,,,,2026-02-16 08:00,2026-02-19 15:00,,
FAB126506C-03,INSTALL DOOR FRAME BY SECAI - FAB126506C HANDED OVER ON 10/27,Complete,Air Lock 18 - 2F -SUE-FAB126506,,,,,,,,2025-10-27 08:00,2025-10-27 17:00,2025-10-27 08:00,2025-11-13 17:00
FAB126506C-04,INSTALL DOOR & HARDWARE - FAB126506C,Active,Air Lock 18 - 2F -SUE-FAB126506,,,,,,,,2025-11-14 08:00,2025-11-20 17:00,2025-11-14 08:00,
FAB126506C-05,PAINT & PROTECT DOORS & FRAMES -  FAB126506C,Not Started,Air Lock 18 - 2F -SUE-FAB126506,,,,,,,,2026-02-16 08:00,2026-02-19 15:00,,
FAB126506D-01,IMPACT - INSTALL/REWORK DRYWALL FRAMING AROUND DOORS - FAB126506D,Complete,Air Lock 18 - 2F -SUE-FAB126506,,,,,,,,2025-02-18 08:00,2025-02-26 17:00,2025-02-18 08:00,2025-02-26 17:00
FAB126506D-03,INSTALL DOOR FRAMES - FAB126506D,Complete,Air Lock 18 - 2F -SUE-FAB126506,,,,,,,,2025-07-17 13:00,2025-07-18 12:00,2025-02-26 00:00,2025-02-26 16:00
FAB126506D-04,INSTALL DOOR & HARDWARE - FAB126506D,Active,Air Lock 18 - 2F -SUE-FAB126506,,,,,,,,2025-05-14 08:00,2025-05-20 17:00,2025-05-14 08:00,
FAB126506D-05,PAINT & PROTECT DOORS & FRAMES -  FAB126506D,Not Started,Air Lock 18 - 2F -SUE-FAB126506,,,,,,,,2026-02-16 08:00,2026-02-19 15:00,,
FAB126506E-01,IMPACT - INSTALL/REWORK DRYWALL FRAMING AROUND DOORS - FAB126506E HANDED OVER TO SECAI ON 08/29,Complete,Air Lock 18 - 2F -SUE-FAB126506,,,,,,,,2025-08-28 08:00,2025-08-29 17:00,2025-08-29 08:00,2025-08-29 17:00
FAB126506E-04,INSTALL DOOR & HARDWARE - FAB126506E,Active,Air Lock 18 - 2F -SUE-FAB126506,,,,,,,,2025-11-18 08:00,2025-11-24 17:00,2025-11-18 08:00,
FAB126506E-05,PAINT & PROTECT DOORS & FRAMES -  FAB126506E,Not Started,Air Lock 18 - 2F -SUE-FAB126506,,,,,,,,2026-02-16 08:00,2026-02-19 15:00,,
FAB126506E-11,IMPACT - PROCUREMENT - REORDERED DOORS (JAMB DEPTH ISSUE) FAB126506E,Complete,Air Lock 18 - 2F -SUE-FAB126506,,,,,,,,2025-06-20 08:00,2025-08-14 17:00,2025-06-20 08:00,2025-06-30 17:00
FAB126506E-03,INSTALL DOOR FRAME BY SECAI - FAB126506E HANDED OVER ON 08/29,Complete,Air Lock 18 - 2F -SUE-FAB126506,,,,,,,,2025-08-29 08:00,2025-08-29 17:00,2025-08-29 08:00,2025-09-16 17:00
ZX-2860,Complete Drywall & Inspect - Fire Alarm 18 - 2F-FAB126513,Complete,Fire Alarm 18 - 2F -SUE-FAB126513,,,,,,,,2025-09-10 08:00,2025-09-16 17:00,2025-09-10 08:00,2025-09-16 17:00
FAB126513A-01,IMPACT - INSTALL/REWORK DRYWALL FRAMING AROUND DOORS - FAB126513A,Complete,Fire Alarm 18 - 2F -SUE-FAB126513,,,,,,,,2025-02-27 08:00,2025-03-07 17:00,2025-02-27 08:00,2025-03-07 17:00
FAB126513A-03,INSTALL DOOR FRAMES - FAB126513A,Complete,Fire Alarm 18 - 2F -SUE-FAB126513,,,,,,,,2025-09-08 13:00,2025-09-09 12:00,2025-03-07 00:00,2025-03-07 16:00
FAB126513A-04,INSTALL DOOR & HARDWARE - FAB126513A,Active,Fire Alarm 18 - 2F -SUE-FAB126513,,,,,,,,2025-10-20 08:00,2025-10-24 17:00,2025-10-20 08:00,
FAB126513A-05,PAINT & PROTECT DOORS & FRAMES -  FAB126513A,Not Started,Fire Alarm 18 - 2F -SUE-FAB126513,,,,,,,,2026-02-16 08:00,2026-02-19 15:00,,
ZX-2800,Complete Drywall & Inspect - Elevator Hall #18 - 2F-FAB126504,Complete,Elevator Hall 18 - 2F -SUE-FAB126504,,,,,,,,2025-10-01 08:00,2025-10-07 17:00,2025-10-01 08:00,2025-10-07 17:00
ZX-2770,Complete Drywall & Inspect - Vestibule 18 - 2F-FAB126505,Complete,Vestibule 18 - 2F -SUE-FAB126505,,,,,,,,2025-11-03 08:00,2025-11-07 17:00,2025-11-03 08:00,2025-11-07 17:00
FAB126505A-03,INSTALL DOOR FRAMES - FAB126505A,Complete,Vestibule 18 - 2F -SUE-FAB126505,,,,,,,,2025-07-02 08:00,2025-07-02 17:00,2025-07-31 08:00,2025-07-31 16:00
FAB126505A-04,INSTALL DOOR & HARDWARE - FAB126505A,Not Started,Vestibule 18 - 2F -SUE-FAB126505,,,,,,,,2025-11-28 08:00,2025-12-04 17:00,,
FAB126505A-05,PAINT & PROTECT DOORS & FRAMES -  FAB126505A,Not Started,Vestibule 18 - 2F -SUE-FAB126505,,,,,,,,2026-02-16 08:00,2026-02-16 17:00,,
FAB126505B-01,IMPACT - INSTALL/REWORK DRYWALL FRAMING AROUND DOORS - FAB126505B,Complete,Vestibule 18 - 2F -SUE-FAB126505,,,,,,,,2025-03-05 08:00,2025-03-13 17:00,2025-03-05 08:00,2025-03-13 17:00
FAB126505B-03,INSTALL DOOR FRAMES - FAB126505B,Complete,Vestibule 18 - 2F -SUE-FAB126505,,,,,,,,2025-08-04 13:00,2025-08-05 12:00,2025-03-13 00:00,2025-03-13 16:00
FAB126505B-04,INSTALL DOOR & HARDWARE - FAB126505B,Not Started,Vestibule 18 - 2F -SUE-FAB126505,,,,,,,,2025-11-21 08:00,2025-11-27 17:00,,
FAB126505B-05,PAINT & PROTECT DOORS & FRAMES -  FAB126505B,Not Started,Vestibule 18 - 2F -SUE-FAB126505,,,,,,,,2026-02-16 08:00,2026-02-19 15:00,,
ZX-3310,Complete Drywall & Inspect - Vestibule 20 - 2F-FAB126310,Complete,Vestibule 20 - 2F -SUE-FAB126310,,,,,,,,2025-09-25 08:00,2025-09-26 17:00,2025-09-25 08:00,2025-09-26 17:00
FAB126310A-03,INSTALL DOOR FRAME BY SECAI - FAB126310A HANDED OVER TO SECAI 06/27,Complete,Vestibule 20 - 2F -SUE-FAB126310,,,,,,,,2025-06-30 08:00,2025-07-11 17:00,2025-06-28 08:00,2025-10-22 17:00
FAB126310A-04,INSTALL DOOR & HARDWARE - FAB126310A,Active,Vestibule 20 - 2F -SUE-FAB126310,,,,,,,,2025-10-23 08:00,2025-10-29 17:00,2025-10-23 08:00,
FAB126310A-05,PAINT & PROTECT DOORS & FRAMES - FAB126310A,Not Started,Vestibule 20 - 2F -SUE-FAB126310,,,,,,,,2026-02-16 08:00,2026-02-19 15:00,,
FAB126310B-01,IMPACT - INSTALL/REWORK DRYWALL FRAMING AROUND DOORS - FAB126310B,Complete,Vestibule 20 - 2F -SUE-FAB126310,,,,,,,,2025-02-25 10:00,2025-03-06 10:00,2025-02-25 10:00,2025-03-06 10:00
FAB126310B-03,INSTALL DOOR FRAMES - FAB126310B,Complete,Vestibule 20 - 2F -SUE-FAB126310,,,,,,,,2025-07-10 13:00,2025-07-11 12:00,2025-03-06 00:00,2025-03-06 16:00
FAB126310B-04,INSTALL DOOR & HARDWARE - FAB126310B,Active,Vestibule 20 - 2F -SUE-FAB126310,,,,,,,,2025-10-23 08:00,2025-10-29 17:00,2025-10-23 08:00,
FAB126310B-05,PAINT & PROTECT DOORS & FRAMES - FAB126310B,Not Started,Vestibule 20 - 2F -SUE-FAB126310,,,,,,,,2026-02-16 08:00,2026-02-19 15:00,,
FAB126310A-13,DOOR FRAME HANDED OVER TO SECAI 06/27- FAB126310A,Complete,Vestibule 20 - 2F -SUE-FAB126310,,,,,,,,2025-06-27 08:00,2025-06-27 17:00,2025-06-27 08:00,2025-06-27 16:00
ZX-3130,Complete Drywall & Inspect - Duct Shaft - 2F-SUE-FAB126102,Complete,Duct Shaft - 2F -SUE-FAB126102,,,,,,,,2025-09-01 08:00,2025-09-05 17:00,2025-09-01 08:00,2025-09-05 17:00
FAB126102A-01,IMPACT - INSTALL/REWORK DRYWALL FRAMING AROUND DOORS - FAB126102A,Complete,Duct Shaft - 2F -SUE-FAB126102,,,,,,,,2025-05-01 08:00,2025-05-09 17:00,2025-05-01 08:00,2025-05-05 17:00
FAB126102A-03,INSTALL DOOR FRAMES - FAB126102A,Complete,Duct Shaft - 2F -SUE-FAB126102,,,,,,,,2025-08-26 08:00,2025-08-26 17:00,2025-05-05 00:00,2025-05-05 16:00
FAB126102A-04,INSTALL DOOR & HARDWARE - FAB126102A,Active,Duct Shaft - 2F -SUE-FAB126102,,,,,,,,2025-06-06 08:00,2025-06-12 17:00,2025-06-06 08:00,
FAB126102A-05,PAINT & PROTECT DOORS & FRAMES -  FAB126102A,Not Started,Duct Shaft - 2F -SUE-FAB126102,,,,,,,,2026-02-16 08:00,2026-02-19 15:00,,
ZX-3280,Complete Drywall & Inspect - Thermohygrostat Rm - 2F-FAB122103,Complete,Thermohygrostat Rm - 2F -FIZ-FAB122103,,,,,,,,2025-07-07 08:00,2025-07-18 17:00,2025-07-07 08:00,2025-07-18 17:00
ZX-3190,Complete Drywall & Inspect - Data Center B - 2F-FAB122106,Complete,Data Center B - 2F -FIZ-FAB122106,,,,,,,,2025-08-11 08:00,2025-08-22 17:00,2025-05-05 08:00,2025-08-22 17:00
FAB122106A-01,IMPACT - INSTALL/REWORK DRYWALL FRAMING AROUND DOORS - FAB122106A,Complete,Data Center B - 2F -FIZ-FAB122106,,,,,,,,2025-08-18 08:00,2025-08-26 17:00,2025-05-07 08:00,2025-05-15 17:00
FAB122106A-03,INSTALL DOOR FRAMES - FAB122106A,Complete,Data Center B - 2F -FIZ-FAB122106,,,,,,,,2025-05-15 08:00,2025-05-15 17:00,2025-05-15 08:00,2025-05-15 17:00
FAB122106A-04,INSTALL DOOR & HARDWARE - FAB122106A,Active,Data Center B - 2F -FIZ-FAB122106,,,,,,,,2025-05-15 08:00,2025-05-21 17:00,2025-05-15 08:00,
FAB122106A-05,PAINT & PROTECT DOORS & FRAMES -  FAB122106A,Not Started,Data Center B - 2F -FIZ-FAB122106,,,,,,,,2026-02-16 08:00,2026-02-19 15:00,,
FAB122106B-01,IMPACT - INSTALL/REWORK DRYWALL FRAMING AROUND DOORS - FAB122106B,Complete,Data Center B - 2F -FIZ-FAB122106,,,,,,,,2025-05-07 08:00,2025-05-15 17:00,2025-05-07 08:00,2025-05-15 17:00
FAB122106B-03,INSTALL DOOR FRAMES - FAB122106B,Complete,Data Center B - 2F -FIZ-FAB122106,,,,,,,,2025-05-15 08:00,2025-05-15 17:00,2025-05-15 08:00,2025-05-15 17:00
FAB122106B-04,INSTALL DOOR & HARDWARE - FAB122106B,Not Started,Data Center B - 2F -FIZ-FAB122106,,,,,,,,2025-11-21 08:00,2025-11-27 17:00,,
FAB122106B-05,PAINT & PROTECT DOORS & FRAMES -  FAB122106B,Not Started,Data Center B - 2F -FIZ-FAB122106,,,,,,,,2026-02-16 08:00,2026-02-19 15:00,,
FAB122106C-01,IMPACT - INSTALL/REWORK DRYWALL FRAMING AROUND DOORS - FAB122106C,Complete,Data Center B - 2F -FIZ-FAB122106,,,,,,,,2025-05-15 08:00,2025-05-23 17:00,2025-05-07 08:00,2025-05-15 17:00
FAB122106C-03,INSTALL DOOR FRAMES - FAB122106C,Complete,Data Center B - 2F -FIZ-FAB122106,,,,,,,,2025-05-15 08:00,2025-05-15 17:00,2025-05-15 08:00,2025-05-15 17:00
FAB122106C-04,INSTALL DOOR & HARDWARE - FAB122106C,Not Started,Data Center B - 2F -FIZ-FAB122106,,,,,,,,2025-11-21 08:00,2025-11-27 17:00,,
FAB122106C-05,PAINT & PROTECT DOORS & FRAMES -  FAB122106C,Not Started,Data Center B - 2F -FIZ-FAB122106,,,,,,,,2026-02-16 08:00,2026-02-19 15:00,,
ZX-3250,Complete Drywall & Inspect - Airlock 22 - 2F-FAB126107 - MKM,Complete,Air Lock 22 - 2F -SUE-FAB126107,,,,,,,,2025-07-18 08:00,2025-07-31 17:00,2025-07-18 08:00,2025-09-05 17:00
FAB126107A-01,INSTALL DOOR FRAME BY SECAI - FAB126107A HANDED OVER ON 08/29,Complete,Air Lock 22 - 2F -SUE-FAB126107,,,,,,,,2025-08-29 08:00,2025-08-29 17:00,2025-08-29 08:00,2025-11-07 17:00
FAB126107A-04,INSTALL DOOR & HARDWARE - FAB126107A,Active,Air Lock 22 - 2F -SUE-FAB126107,,,,,,,,2025-11-10 08:00,2025-11-14 17:00,2025-11-10 08:00,
FAB126107A-05,PAINT & PROTECT DOORS & FRAMES - FAB126107A,Not Started,Air Lock 22 - 2F -SUE-FAB126107,,,,,,,,2026-02-16 08:00,2026-02-19 15:00,,
FAB126107B-01,INSTALL DOOR FRAMES - FAB126107B,Complete,Air Lock 22 - 2F -SUE-FAB126107,,,,,,,,2025-07-29 08:00,2025-07-29 17:00,2025-07-29 08:00,2025-07-29 17:00
FAB126107B-04,INSTALL DOOR & HARDWARE - FAB126107B,Active,Air Lock 22 - 2F -SUE-FAB126107,,,,,,,,2025-10-31 08:00,2025-11-06 17:00,2025-10-31 08:00,
FAB126107B-05,PAINT & PROTECT DOORS & FRAMES - FAB126107B,Not Started,Air Lock 22 - 2F -SUE-FAB126107,,,,,,,,2026-02-16 08:00,2026-02-19 15:00,,
FAB126107D-01,IMPACT - INSTALL/REWORK DRYWALL FRAMING AROUND DOORS - FAB126107D,Complete,Air Lock 22 - 2F -SUE-FAB126107,,,,,,,,2025-03-25 08:00,2025-04-02 17:00,2025-03-25 08:00,2025-04-01 17:00
FAB126107D-03,INSTALL DOOR FRAMES - FAB126107D,Complete,Air Lock 22 - 2F -SUE-FAB126107,,,,,,,,2025-07-11 13:00,2025-07-14 12:00,2025-03-31 00:00,2025-04-01 16:00
FAB126107D-04,INSTALL DOOR & HARDWARE - FAB126107D,Active,Air Lock 22 - 2F -SUE-FAB126107,,,,,,,,2025-11-13 08:00,2025-11-19 17:00,2025-11-13 08:00,
FAB126107D-05,PAINT & PROTECT DOORS & FRAMES - FAB126107D,Not Started,Air Lock 22 - 2F -SUE-FAB126107,,,,,,,,2026-02-16 08:00,2026-02-19 15:00,,
FAB126107E-01,IMPACT - INSTALL/REWORK DRYWALL FRAMING AROUND DOORS - FAB126107E,Complete,Air Lock 22 - 2F -SUE-FAB126107,,,,,,,,2025-04-01 08:00,2025-04-09 17:00,2025-04-01 08:00,2025-04-11 17:00
FAB126107E-03,INSTALL DOOR FRAMES - FAB126107E,Complete,Air Lock 22 - 2F -SUE-FAB126107,,,,,,,,2025-07-11 13:00,2025-07-14 12:00,2025-04-11 00:00,2025-04-11 16:00
FAB126107E-04,INSTALL DOOR & HARDWARE - FAB126107E,Active,Air Lock 22 - 2F -SUE-FAB126107,,,,,,,,2025-11-11 08:00,2025-11-17 17:00,2025-11-11 08:00,
FAB126107E-05,PAINT & PROTECT DOORS & FRAMES - FAB126107E,Not Started,Air Lock 22 - 2F -SUE-FAB126107,,,,,,,,2026-02-16 08:00,2026-02-19 15:00,,
FAB126107A-11,IMPACT - PROCUREMENT - REORDERED DOORS (JAMB DEPTH ISSUE),Complete,Air Lock 22 - 2F -SUE-FAB126107,,,,,,,,2025-07-10 08:00,2025-09-12 17:00,2025-06-09 08:00,2025-07-14 17:00
FAB126107B-11,IMPACT - PROCUREMENT - REORDERED DOORS (JAMB DEPTH ISSUE),Complete,Air Lock 22 - 2F -SUE-FAB126107,,,,,,,,2025-07-10 08:00,2025-09-12 17:00,2025-06-09 08:00,2025-07-14 17:00
ZX-3220,Complete Drywall & Inspect - Elevator Hall #20 - 2F-FAB126302,Complete,Elevator Hall 20 - 2F SUE-FAB126302,,,,,,,,2025-09-01 08:00,2025-09-05 17:00,2025-09-01 08:00,2025-09-05 17:00
ZX-3670,Complete Drywall & Inspect - Clean Vestibule #21 - 2F-FAB126201 - MKM,Complete,Clean Vestibule 21 - 2F -SUE-FAB126201,,,,,,,,2025-07-18 08:00,2025-07-31 17:00,2025-07-18 08:00,2025-09-04 17:00
FAB126201A-01,IMPACT - INSTALL/REWORK DRYWALL FRAMING AROUND DOORS - FAB126201A,Complete,Clean Vestibule 21 - 2F -SUE-FAB126201,,,,,,,,2025-03-20 08:00,2025-03-28 17:00,2025-03-20 08:00,2025-03-28 17:00
FAB126201A-03,INSTALL DOOR FRAMES - FAB126201A,Complete,Clean Vestibule 21 - 2F -SUE-FAB126201,,,,,,,,2025-06-27 13:00,2025-06-30 12:00,2025-03-28 00:00,2025-03-28 16:00
FAB126201A-04,INSTALL DOOR & HARDWARE - FAB126201A,Active,Clean Vestibule 21 - 2F -SUE-FAB126201,,,,,,,,2025-09-04 08:00,2025-09-10 17:00,2025-09-04 08:00,
FAB126201A-05,PAINT & PROTECT DOORS & FRAMES - FAB126201A,Not Started,Clean Vestibule 21 - 2F -SUE-FAB126201,,,,,,,,2026-02-16 08:00,2026-02-19 15:00,,
ZX-3490,SECAI TOOK OVER ACCELERATION - Remaining CEILING Drywall & Inspect - Pedestrian Walkway - 2F-FAB120111,Complete,Pedestrian Walkway - 2F -FIZ-FAB120111,,,,,,,,2025-11-06 08:00,2025-11-12 17:00,2025-11-06 08:00,2025-11-06 17:00
ZX-3640,Complete Drywall & Inspect - Elevator Hall #22 - 2F-FAB126104,Complete,Elevator Hall 22 - 2F -SUE-FAB126104,,,,,,,,2025-09-01 08:00,2025-09-05 17:00,2025-09-01 08:00,2025-09-05 17:00
FAB126104D-01,INSTALL DOOR FRAME BY SECAI - FAB126104D HANDED OVER 06/27,Complete,Elevator Hall 22 - 2F -SUE-FAB126104,,,,,,,,2025-06-27 08:00,2025-07-10 17:00,2025-06-28 08:00,2025-08-13 08:00
FAB126104D-04,INSTALL DOOR & HARDWARE - FAB126104D,Active,Elevator Hall 22 - 2F -SUE-FAB126104,,,,,,,,2025-11-13 08:00,2025-11-19 17:00,2025-11-13 08:00,
FAB126104D-05,PAINT & PROTECT DOORS & FRAMES - FAB126104D,Not Started,Elevator Hall 22 - 2F -SUE-FAB126104,,,,,,,,2026-02-16 08:00,2026-02-19 15:00,,
FAB126104E-01,INSTALL DOOR FRAMES - FAB126104E,Not Started,Elevator Hall 22 - 2F -SUE-FAB126104,,,,,,,,2025-12-01 08:00,2025-12-02 17:00,,
FAB126104E-04,INSTALL DOOR & HARDWARE - FAB126104E,Not Started,Elevator Hall 22 - 2F -SUE-FAB126104,,,,,,,,2025-11-28 08:00,2025-12-04 17:00,,
FAB126104E-05,PAINT & PROTECT DOORS & FRAMES - FAB126104E,Not Started,Elevator Hall 22 - 2F -SUE-FAB126104,,,,,,,,2026-02-16 08:00,2026-02-19 15:00,,
FAB126104E-11,IMPACT - INTERNAL - UNASSEMBLED TRANSOM FRAMES,Not Started,Elevator Hall 22 - 2F -SUE-FAB126104,,,,,,,,2025-11-21 08:00,2025-11-28 17:00,,
FAB126104D-40,DOOR FRAME HANDED OVER TO SECAI ON 06/27 - FAB126104D,Complete,Elevator Hall 22 - 2F -SUE-FAB126104,,,,,,,,2025-06-27 08:00,2025-06-27 17:00,2025-06-27 08:00,2025-06-27 16:00
ZX-3610,SECAI TOOK OVER FOR ACCELERATION - Complete Drywall & Inspect - Vestibule 22 - 2F-FAB126106,Complete,Vestibule 22 - 2F -SUE-FAB126106,,,,,,,,2025-08-19 08:00,2025-08-25 17:00,2025-08-26 08:00,2025-08-26 17:00
FAB126106A-03,INSTALL DOOR FRAMES - FAB126106A,Complete,Vestibule 22 - 2F -SUE-FAB126106,,,,,,,,2025-10-03 08:00,2025-10-03 17:00,2025-10-03 08:00,2025-10-03 17:00
FAB126106A-04,INSTALL DOOR & HARDWARE - FAB126106A,Active,Vestibule 22 - 2F -SUE-FAB126106,,,,,,,,2025-10-23 08:00,2025-10-29 17:00,2025-10-23 08:00,
FAB126106A-05,PAINT & PROTECT DOORS & FRAMES - FAB126106A,Not Started,Vestibule 22 - 2F -SUE-FAB126106,,,,,,,,2026-02-16 08:00,2026-02-19 15:00,,
FAB126106B-01,IMPACT - INSTALL/REWORK DRYWALL FRAMING AROUND DOORS - FAB126106B,Complete,Vestibule 22 - 2F -SUE-FAB126106,,,,,,,,2025-02-17 08:00,2025-02-25 17:00,2025-02-17 08:00,2025-02-25 17:00
FAB126106B-03,INSTALL DOOR FRAMES - FAB126106B,Complete,Vestibule 22 - 2F -SUE-FAB126106,,,,,,,,2025-08-18 13:00,2025-08-19 12:00,2025-02-25 00:00,2025-02-25 16:00
FAB126106B-04,INSTALL DOOR & HARDWARE - FAB126106B,Active,Vestibule 22 - 2F -SUE-FAB126106,,,,,,,,2025-10-22 08:00,2025-10-28 17:00,2025-10-22 08:00,
FAB126106B-05,PAINT & PROTECT DOORS & FRAMES - FAB126106B,Not Started,Vestibule 22 - 2F -SUE-FAB126106,,,,,,,,2026-02-16 08:00,2026-02-19 15:00,,
ZX-3580,Complete Drywall & Inspect - Fire Alarm 22 - 2F-FAB126112,Complete,Fire Alarm 22 - 2F - SUE-FAB126112,,,,,,,,2025-09-09 08:00,2025-09-15 17:00,2025-09-09 08:00,2025-09-15 17:00
FAB126112A-01,IMPACT - INSTALL/REWORK DRYWALL FRAMING AROUND DOORS - FAB126112A,Complete,Fire Alarm 22 - 2F - SUE-FAB126112,,,,,,,,2025-05-12 08:00,2025-05-20 17:00,2025-05-12 08:00,2025-05-16 17:00
FAB126112A-03,INSTALL DOOR FRAMES - FAB126112A,Complete,Fire Alarm 22 - 2F - SUE-FAB126112,,,,,,,,2025-07-28 13:00,2025-07-29 12:00,2025-05-15 00:00,2025-05-16 16:00
FAB126112A-04,INSTALL DOOR & HARDWARE - FAB126112A,Active,Fire Alarm 22 - 2F - SUE-FAB126112,,,,,,,,2025-05-16 08:00,2025-05-22 17:00,2025-05-16 08:00,
FAB126112A-05,PAINT & PROTECT DOORS & FRAMES - FAB126112A,Not Started,Fire Alarm 22 - 2F - SUE-FAB126112,,,,,,,,2026-02-16 08:00,2026-02-19 15:00,,
ZX-3850,Complete Drywall & Inspect - Data Center A - 2F-FAB120106,Complete,Data Center A - 2F -FIZ-FAB120106,,,,,,,,2025-06-10 08:00,2025-07-07 17:00,2025-06-10 08:00,2025-07-25 17:00
FAB120106A-01,IMPACT - INSTALL/REWORK DRYWALL FRAMING AROUND DOORS - FAB120106A,Complete,Data Center A - 2F -FIZ-FAB120106,,,,,,,,2025-08-01 08:00,2025-08-11 17:00,2025-07-08 13:00,2025-07-15 17:00
FAB120106A-03,INSTALL DOOR FRAMES - FAB120106A,Complete,Data Center A - 2F -FIZ-FAB120106,,,,,,,,2025-08-01 08:00,2025-08-01 17:00,2025-07-21 08:00,2025-07-22 17:00
FAB120106A-04,INSTALL DOOR & HARDWARE - FAB120106A,Active,Data Center A - 2F -FIZ-FAB120106,,,,,,,,2025-08-25 08:00,2025-08-29 17:00,2025-08-25 08:00,
FAB120106A-05,PAINT & PROTECT DOORS & FRAMES - FAB120106A,Not Started,Data Center A - 2F -FIZ-FAB120106,,,,,,,,2026-02-16 08:00,2026-02-17 17:00,,
FAB120106B-01,IMPACT - INSTALL/REWORK DRYWALL FRAMING AROUND DOORS - FAB120106B,Complete,Data Center A - 2F -FIZ-FAB120106,,,,,,,,2025-08-01 08:00,2025-08-01 17:00,2025-07-14 08:00,2025-07-17 17:00
FAB120106B-03,INSTALL DOOR FRAME  - FAB120106B,Complete,Data Center A - 2F -FIZ-FAB120106,,,,,,,,2025-08-01 08:00,2025-08-01 17:00,2025-07-23 08:00,2025-07-23 17:00
FAB120106B-04,INSTALL DOOR & HARDWARE - FAB120106B,Active,Data Center A - 2F -FIZ-FAB120106,,,,,,,,2025-09-11 08:00,2025-09-17 17:00,2025-09-11 08:00,
FAB120106B-05,PAINT & PROTECT DOORS & FRAMES - FAB120106B,Not Started,Data Center A - 2F -FIZ-FAB120106,,,,,,,,2026-02-16 08:00,2026-02-19 15:00,,
FAB120106C-03,INSTALL DOOR FRAMES - FAB120106C,Not Started,Data Center A - 2F -FIZ-FAB120106,,,,,,,,2025-11-21 08:00,2025-11-21 17:00,,
FAB120106C-04,INSTALL DOOR & HARDWARE - FAB120106C,Not Started,Data Center A - 2F -FIZ-FAB120106,,,,,,,,2025-11-24 08:00,2025-11-28 17:00,,
FAB120106C-05,PAINT & PROTECT DOORS & FRAMES - FAB120106C,Not Started,Data Center A - 2F -FIZ-FAB120106,,,,,,,,2026-02-16 08:00,2026-02-19 15:00,,
FAB120118K-03,INSTALL DOOR FRAMES - FAB120118K,Complete,Data Center A - 2F -FIZ-FAB120106,,,,,,,,2025-06-30 08:00,2025-06-30 17:00,2025-06-30 08:00,2025-06-30 16:00
FAB120118K-04,INSTALL DOOR & HARDWARE - FAB120118K,Active,Data Center A - 2F -FIZ-FAB120106,,,,,,,,2025-08-26 08:00,2025-09-01 17:00,2025-08-26 08:00,
FAB120118K-05,PAINT & PROTECT DOORS & FRAMES - FAB120118K,Not Started,Data Center A - 2F -FIZ-FAB120106,,,,,,,,2026-02-16 08:00,2026-02-17 17:00,,
FAB120106B-60,IMPACT - SECAI MEP SCAFFOLD IMPEDING DOOR INSTALLATION- FAB120106B,Complete,Data Center A - 2F -FIZ-FAB120106,,,,,,,,2025-08-01 08:00,2025-09-11 17:00,2025-07-04 08:00,2025-09-10 17:00
FAB120118K-6,DOOR PREP - FAB120118K,Complete,Data Center A - 2F -FIZ-FAB120106,,,,,,,,2025-06-30 08:00,2025-07-11 17:00,2025-06-30 08:00,2025-08-25 08:00
ZX-4000,Complete Drywall & Inspect - Thermohygrostat Rm - 2F-FAB120103,Complete,Thermohygrostat Rm - 2F -FIZ-FAB120103,,,,,,,,2025-07-07 08:00,2025-07-18 17:00,2025-07-07 08:00,2025-07-17 17:00
FAB120103A-01,IMPACT - INSTALL/REWORK DRYWALL FRAMING AROUND DOORS - FAB120103A,Complete,Thermohygrostat Rm - 2F -FIZ-FAB120103,,,,,,,,2025-09-24 08:00,2025-09-25 17:00,2025-09-24 08:00,2025-09-25 17:00
FAB120103A-03,INSTALL DOOR FRAMES - FAB120103A,Complete,Thermohygrostat Rm - 2F -FIZ-FAB120103,,,,,,,,2025-09-25 08:00,2025-09-25 17:00,2025-09-25 08:00,2025-09-25 17:00
FAB120103A-04,INSTALL DOOR & HARDWARE - FAB120103A,Not Started,Thermohygrostat Rm - 2F -FIZ-FAB120103,,,,,,,,2025-11-21 08:00,2025-11-27 17:00,,
FAB120103A-05,PAINT & PROTECT DOORS & FRAMES -  FAB120103A,Not Started,Thermohygrostat Rm - 2F -FIZ-FAB120103,,,,,,,,2026-02-16 08:00,2026-02-19 15:00,,
ZX-3910,Complete Drywall & Inspect - Duct Shaft - 2F-SUE-FAB126103,Complete,Duct Shaft - 2F -SUE-FAB126103,,,,,,,,2025-09-09 08:00,2025-09-15 17:00,2025-09-09 08:00,2025-09-15 17:00
ZX-3970,Complete Drywall & Inspect - Duct Shaft - 2F-SUE-FAB126105,Complete,Duct Shaft - 2F -SUE-FAB126105,,,,,,,,2025-10-06 08:00,2025-10-07 17:00,2025-10-06 08:00,2025-10-07 17:00
FAB126105A-01,IMPACT - INSTALL/REWORK DRYWALL FRAMING AROUND DOORS - FAB126105A,Complete,Duct Shaft - 2F -SUE-FAB126105,,,,,,,,2025-05-01 08:00,2025-05-02 17:00,2025-05-01 08:00,2025-05-02 17:00
FAB126105A-03,INSTALL DOOR FRAMES - FAB126105A,Complete,Duct Shaft - 2F -SUE-FAB126105,,,,,,,,2025-08-12 13:00,2025-08-13 12:00,2025-05-04 00:00,2025-05-05 12:00
FAB126105A-04,INSTALL DOOR & HARDWARE - FAB126105A,Active,Duct Shaft - 2F -SUE-FAB126105,,,,,,,,2025-11-18 08:00,2025-11-24 17:00,2025-11-18 08:00,
FAB126105A-05,PAINT & PROTECT DOORS & FRAMES -  FAB126105A,Not Started,Duct Shaft - 2F -SUE-FAB126105,,,,,,,,2026-02-16 08:00,2026-02-19 15:00,,
FAB126109A-01,IMPACT - INSTALL/REWORK DRYWALL FRAMING AROUND DOORS - FAB126109A,Complete,Duct Shaft - 2F -SUE-FAB126105,,,,,,,,2025-05-08 08:00,2025-05-16 17:00,2025-05-08 08:00,2025-05-19 17:00
FAB126109A-03,INSTALL DOOR FRAMES - FAB126109A,Complete,Duct Shaft - 2F -SUE-FAB126105,,,,,,,,2025-05-19 08:00,2025-05-19 17:00,2025-05-19 08:00,2025-05-19 17:00
FAB126109A-04,INSTALL DOOR & HARDWARE - FAB126109A,Active,Duct Shaft - 2F -SUE-FAB126105,,,,,,,,2025-06-06 08:00,2025-06-12 17:00,2025-06-06 08:00,
FAB126109A-05,PAINT & PROTECT DOORS & FRAMES - FAB126109A,Not Started,Duct Shaft - 2F -SUE-FAB126105,,,,,,,,2026-02-16 08:00,2026-02-19 15:00,,
ZX-3940,Complete Drywall & Inspect - Fire Alarm 20 - 2F-FAB126308,Complete,Fire Alarm 20 - 2F -SUE-FAB126308,,,,,,,,2025-09-01 08:00,2025-09-05 17:00,2025-09-01 08:00,2025-09-05 17:00
FAB126308A-03,INSTALL DOOR FRAME BY SECAI - FAB126308A HANDED OVER 06/27,Complete,Fire Alarm 20 - 2F -SUE-FAB126308,,,,,,,,2025-06-27 08:00,2025-07-10 17:00,2025-06-28 08:00,2025-10-30 17:00
FAB126308A-04,INSTALL DOOR & HARDWARE - FAB126308A,Active,Fire Alarm 20 - 2F -SUE-FAB126308,,,,,,,,2025-11-12 08:00,2025-11-18 17:00,2025-11-12 08:00,
FAB126308A-05,PAINT & PROTECT DOORS & FRAMES - FAB126308A,Not Started,Fire Alarm 20 - 2F -SUE-FAB126308,,,,,,,,2026-02-16 08:00,2026-02-19 17:00,,
FAB126308A-13,DOOR FRAME HANDED OVER TO SECAI ON 06/27- FAB126308A,Complete,Fire Alarm 20 - 2F -SUE-FAB126308,,,,,,,,2025-06-27 08:00,2025-06-27 17:00,2025-06-27 08:00,2025-06-27 16:00
ZX-4390,Complete Drywall & Inspect - Duct Shaft - 2F-SUE-FAB126401,Not Started,Duct Shaft - 2F -SUE-FAB126401,,,,,,,,2025-12-05 08:00,2025-12-11 17:00,,
FAB126401A-01,IMPACT - INSTALL/REWORK DRYWALL FRAMING AROUND DOORS - FAB126401A,Complete,Duct Shaft - 2F -SUE-FAB126401,,,,,,,,2025-07-09 08:00,2025-07-17 17:00,2025-07-09 08:00,2025-07-17 17:00
FAB126401A-03,INSTALL DOOR FRAMES - FAB126401A,Complete,Duct Shaft - 2F -SUE-FAB126401,,,,,,,,2025-07-17 08:00,2025-07-17 17:00,2025-07-17 08:00,2025-07-17 17:00
FAB126401A-04,INSTALL DOOR & HARDWARE - FAB126401A,Active,Duct Shaft - 2F -SUE-FAB126401,,,,,,,,2025-11-13 08:00,2025-11-19 17:00,2025-11-13 08:00,
FAB126401A-05,PAINT & PROTECT DOORS & FRAMES - FAB126401A,Not Started,Duct Shaft - 2F -SUE-FAB126401,,,,,,,,2026-02-16 08:00,2026-02-19 15:00,,
FAB126401B-01,IMPACT - INSTALL/REWORK DRYWALL FRAMING AROUND DOORS - FAB126401B,Complete,Duct Shaft - 2F -SUE-FAB126401,,,,,,,,2025-07-21 08:00,2025-07-29 17:00,2025-07-21 08:00,2025-07-29 17:00
FAB126401B-03,INSTALL DOOR FRAMES - FAB126401B,Complete,Duct Shaft - 2F -SUE-FAB126401,,,,,,,,2025-07-29 08:00,2025-07-29 17:00,2025-07-29 08:00,2025-07-29 17:00
FAB126401B-04,INSTALL DOOR & HARDWARE - FAB126401B,Not Started,Duct Shaft - 2F -SUE-FAB126401,,,,,,,,2025-11-21 08:00,2025-11-27 17:00,,
FAB126401B-05,PAINT & PROTECT DOORS & FRAMES - FAB126401B,Not Started,Duct Shaft - 2F -SUE-FAB126401,,,,,,,,2026-02-16 08:00,2026-02-19 15:00,,
ZX-4210,Complete Drywall & Inspect - Thermohygrostat Rm - 2F-FAB120104,Complete,Thermohygrostat Rm - 2F -FIZ-FAB120104,,,,,,,,2025-09-05 08:00,2025-09-18 17:00,2025-06-23 08:00,2025-06-25 11:00
FAB120104A-03,INSTALL DOOR FRAMES - FAB120104A,Complete,Thermohygrostat Rm - 2F -FIZ-FAB120104,,,,,,,,2025-10-27 08:00,2025-10-27 17:00,2025-10-27 08:00,2025-10-27 17:00
FAB120104A-04,INSTALL DOOR & HARDWARE - FAB120104A,Not Started,Thermohygrostat Rm - 2F -FIZ-FAB120104,,,,,,,,2025-11-21 08:00,2025-11-27 17:00,,
FAB120104A-05,PAINT & PROTECT DOORS & FRAMES -  FAB120104A,Not Started,Thermohygrostat Rm - 2F -FIZ-FAB120104,,,,,,,,2026-02-16 08:00,2026-02-19 15:00,,
ZX-4360,SECAI TURNOVER FOR ACELERATION - Drywall & Inspect - Battery Rm - 2F-FAB124102 BAKER/DESCOPE,Complete,Battery Rm - 2F -FIZ-FAB124102,,,,,,,,2025-08-04 08:00,2025-08-22 17:00,2025-06-16 08:00,2025-06-16 16:00
FAB124102A-01,SECAI TURNOVER FOR ACELERATION - INSTALL/REWORK DRYWALL FRAMING AROUND DOORS - FAB124102A,Complete,Battery Rm - 2F -FIZ-FAB124102,,,,,,,,2025-07-17 08:00,2025-07-25 17:00,2025-06-16 08:00,2025-06-16 16:00
FAB124102A-03,INSTALL DOOR FRAMES - FAB124102A,Complete,Battery Rm - 2F -FIZ-FAB124102,,,,,,,,2025-10-17 08:00,2025-10-17 17:00,2025-10-17 08:00,2025-10-17 17:00
FAB124102A-04,INSTALL DOOR & HARDWARE - FAB124102A,Not Started,Battery Rm - 2F -FIZ-FAB124102,,,,,,,,2025-11-21 08:00,2025-11-27 17:00,,
FAB124102A-05,PAINT & PROTECT DOORS & FRAMES - FAB124102A,Not Started,Battery Rm - 2F -FIZ-FAB124102,,,,,,,,2026-02-16 08:00,2026-02-19 15:00,,
FAB124102B-03,INSTALL DOOR FRAMES - FAB124102B,Complete,Battery Rm - 2F -FIZ-FAB124102,,,,,,,,2025-10-22 08:00,2025-10-22 17:00,2025-10-22 08:00,2025-10-22 17:00
FAB124102B-04,INSTALL DOOR & HARDWARE - FAB124102B,Not Started,Battery Rm - 2F -FIZ-FAB124102,,,,,,,,2025-11-28 08:00,2025-12-04 17:00,,
FAB124102B-05,PAINT & PROTECT DOORS & FRAMES - FAB124102B,Not Started,Battery Rm - 2F -FIZ-FAB124102,,,,,,,,2026-02-16 08:00,2026-02-19 15:00,,
FAB124102B-11,IMPACT - PROCUREMENT - REORDERED DOORS (JAMB DEPTH ISSUE),Complete,Battery Rm - 2F -FIZ-FAB124102,,,,,,,,2025-06-20 08:00,2025-08-14 17:00,2025-06-20 08:00,2025-06-30 17:00
ZX-4270,Complete Drywall & Inspect - IT/Security Rm 22 - 2F-FAB126108,Complete,IT/Security Rm 22 - 2F -SUE-FAB126108,,,,,,,,2025-09-01 08:00,2025-09-05 17:00,2025-09-01 08:00,2025-09-05 17:00
TR-FAB126108A-01,IMPACT - INSTALL/REWORK DRYWALL FRAMING AROUND DOORS - TR - FAB126108A,Complete,IT/Security Rm 22 - 2F -SUE-FAB126108,,,,,,,,2025-05-12 08:00,2025-05-20 17:00,2025-05-12 08:00,2025-05-16 17:00
TR-FAB126108A-03,INSTALL DOOR FRAMES - TR - FAB126108A,Complete,IT/Security Rm 22 - 2F -SUE-FAB126108,,,,,,,,2025-07-31 13:00,2025-08-01 12:00,2025-05-15 00:00,2025-05-16 16:00
TR-FAB126108A-04,INSTALL DOOR & HARDWARE - TR - FAB126108A,Active,IT/Security Rm 22 - 2F -SUE-FAB126108,,,,,,,,2025-10-08 08:00,2025-10-14 17:00,2025-10-08 08:00,
TR-FAB126108A-05,PAINT & PROTECT DOORS & FRAMES - TR - FAB126108A,Not Started,IT/Security Rm 22 - 2F -SUE-FAB126108,,,,,,,,2026-02-16 08:00,2026-02-19 15:00,,
ZX-4300,Complete Drywall & Inspect - IT/Security 20 - 2F-FABTR-FAB126304,Complete,IT/Security 20 - 2F -SUE-TR-FAB-FAB126304,,,,,,,,2024-08-19 08:00,2024-08-19 17:00,2024-08-19 08:00,2024-08-30 16:00
TR-FAB126304A-01,INSTALL DOOR FRAMES - TR - FAB126304A,Complete,IT/Security 20 - 2F -SUE-TR-FAB-FAB126304,,,,,,,,2025-11-07 08:00,2025-11-07 17:00,2025-11-07 08:00,2025-11-07 17:00
TR-FAB126304A-04,INSTALL DOOR & HARDWARE - TR - FAB126304A,Active,IT/Security 20 - 2F -SUE-TR-FAB-FAB126304,,,,,,,,2025-11-10 08:00,2025-11-14 17:00,2025-11-10 08:00,
TR-FAB126304A-05,PAINT & PROTECT DOORS & FRAMES - TR - FAB126304A,Not Started,IT/Security 20 - 2F -SUE-TR-FAB-FAB126304,,,,,,,,2026-02-16 08:00,2026-02-19 15:00,,
ZX-4570,SECAI TOOK OVER ACCELERATION - Complete Drywall & Inspect - Pedestrian Walkway - 2F-FAB122105,Complete,Pedestrian Walkway - 2F -FIZ-FAB122105,,,,,,,,2025-10-13 08:00,2025-10-17 17:00,2025-10-13 08:00,2025-11-06 17:00
ZX-4720,Complete Drywall & Inspect - I/O Rm - 2F-FAB124101,Complete,I/O Rm - 2F -FIZ-FAB124101,,,,,,,,2025-07-07 08:00,2025-07-18 17:00,2025-07-07 08:00,2025-07-18 17:00
FAB124101A-01,IMPACT - INSTALL/REWORK DRYWALL FRAMING AROUND DOORS - FAB124101A,Complete,I/O Rm - 2F -FIZ-FAB124101,,,,,,,,2025-10-08 08:00,2025-10-14 17:00,2025-10-08 08:00,2025-10-14 17:00
FAB124101A-03,INSTALL DOOR FRAMES - FAB124101A,Complete,I/O Rm - 2F -FIZ-FAB124101,,,,,,,,2025-10-17 08:00,2025-10-17 08:00,2025-10-17 08:00,2025-10-17 08:00
FAB124101A-04,INSTALL DOOR & HARDWARE - FAB124101A,Not Started,I/O Rm - 2F -FIZ-FAB124101,,,,,,,,2025-11-28 08:00,2025-12-04 17:00,,
FAB124101A-05,PAINT & PROTECT DOORS & FRAMES - FAB124101A,Not Started,I/O Rm - 2F -FIZ-FAB124101,,,,,,,,2026-02-16 08:00,2026-02-19 15:00,,
FAB124101B-01,IMPACT - INSTALL/REWORK DRYWALL FRAMING AROUND DOORS - FAB124101B,Complete,I/O Rm - 2F -FIZ-FAB124101,,,,,,,,2025-10-08 08:00,2025-10-14 17:00,2025-10-08 08:00,2025-10-14 17:00
FAB124101B-03,INSTALL DOOR FRAMES - FAB124101B,Complete,I/O Rm - 2F -FIZ-FAB124101,,,,,,,,2025-10-17 08:00,2025-10-17 17:00,2025-10-17 08:00,2025-10-17 17:00
FAB124101B-04,INSTALL DOOR & HARDWARE - FAB124101B,Not Started,I/O Rm - 2F -FIZ-FAB124101,,,,,,,,2025-11-28 08:00,2025-12-04 17:00,,
FAB124101B-05,PAINT & PROTECT DOORS & FRAMES - FAB124101B,Not Started,I/O Rm - 2F -FIZ-FAB124101,,,,,,,,2026-02-16 08:00,2026-02-19 15:00,,
FAB124101A-11,IMPACT - PROCUREMENT - REORDERED DOORS (JAMB DEPTH ISSUE),Complete,I/O Rm - 2F -FIZ-FAB124101,,,,,,,,2025-06-09 08:00,2025-08-12 17:00,2025-06-09 08:00,2025-07-14 17:00
FAB124101B-11,IMPACT - PROCUREMENT - REORDERED DOORS (JAMB DEPTH ISSUE),Complete,I/O Rm - 2F -FIZ-FAB124101,,,,,,,,2025-06-09 08:00,2025-08-12 17:00,2025-06-09 08:00,2025-07-14 17:00
ZX-4630,SECAI TURNOVER FOR ACELERATION - Drywall & Inspect - Electrical Rm - 2F-FAB124103,Complete,Electrical Rm - 2F -FIZ-FAB124103,,,,,,,,2025-06-16 08:00,2025-06-24 17:00,2025-06-16 08:00,2025-06-27 17:00
ZX-4690,Complete Drywall & Inspect - Duct Shaft - 2F-SUE-FAB126301,Complete,Duct Shaft - 2F -SUE-FAB126301,,,,,,,,2025-10-01 08:00,2025-10-07 17:00,2025-10-01 08:00,2025-10-07 17:00
FAB126301A-01,IMPACT - INSTALL/REWORK DRYWALL FRAMING AROUND DOORS - FAB126301A,Complete,Duct Shaft - 2F -SUE-FAB126301,,,,,,,,2025-04-24 08:00,2025-05-02 17:00,2025-04-24 08:00,2025-05-02 17:00
FAB126301A-03,INSTALL DOOR FRAMES - FAB126301A,Complete,Duct Shaft - 2F -SUE-FAB126301,,,,,,,,2025-08-19 13:00,2025-08-20 12:00,2025-05-02 00:00,2025-05-02 16:00
FAB126301A-04,INSTALL DOOR & HARDWARE - FAB126301A,Active,Duct Shaft - 2F -SUE-FAB126301,,,,,,,,2025-09-04 08:00,2025-09-10 17:00,2025-09-04 08:00,
FAB126301A-05,PAINT & PROTECT DOORS & FRAMES -  FAB126301A,Not Started,Duct Shaft - 2F -SUE-FAB126301,,,,,,,,2026-02-16 08:00,2026-02-19 15:00,,
FAB126302A-01,IMPACT - INSTALL/REWORK DRYWALL FRAMING AROUND DOORS - FAB126302A,Complete,Duct Shaft - 2F -SUE-FAB126301,,,,,,,,2025-02-17 08:00,2025-02-25 17:00,2025-02-17 08:00,2025-02-25 17:00
FAB126302A-03,INSTALL DOOR FRAMES - FAB126302A,Complete,Duct Shaft - 2F -SUE-FAB126301,,,,,,,,2025-02-25 08:00,2025-02-25 17:00,2025-02-25 08:00,2025-02-25 17:00
FAB126302A-04,INSTALL DOOR & HARDWARE - FAB126302A,Active,Duct Shaft - 2F -SUE-FAB126301,,,,,,,,2025-09-04 08:00,2025-09-10 17:00,2025-09-04 08:00,
FAB126302A-05,PAINT & PROTECT DOORS & FRAMES -  FAB126302A,Not Started,Duct Shaft - 2F -SUE-FAB126301,,,,,,,,2026-02-16 08:00,2026-02-19 15:00,,
ZX-4660,SECAI TOOK OVER FOR ACCELERATION - Complete Drywall & Inspect - Elevator 20 - 2F-1FAB-EL20,Complete,Elevator 20 - 2F -SUE-FAB1-EL20,,,,,,,,2025-05-16 08:00,2025-05-29 17:00,2025-05-16 08:00,2025-06-27 16:00
ZX-4780,Complete Drywall & Inspect - Elevator #05 - 2F-1FAB-EL5,Complete,Elevator 5 - 2F -SUW-FAB1-EL05,,,,,,,,2025-09-05 08:00,2025-09-11 17:00,2025-09-05 08:00,2025-09-11 17:00
ZX-4810,Complete Drywall & Inspect - Battery Rm - 2F-SUW-FAB120501,Complete,Battery Rm 3 - 2F -SUW-FAB120501,,,,,,,,2025-07-14 08:00,2025-07-25 17:00,2025-06-16 08:00,2025-09-02 17:00
FAB120501A-01,IMPACT - INSTALL/REWORK DRYWALL FRAMING AROUND DOORS - FAB120501A,Complete,Battery Rm 3 - 2F -SUW-FAB120501,,,,,,,,2025-05-16 08:00,2025-05-26 17:00,2025-05-16 08:00,2025-05-21 17:00
FAB120501A-03,INSTALL DOOR FRAMES - FAB120501A,Complete,Battery Rm 3 - 2F -SUW-FAB120501,,,,,,,,2025-07-22 13:00,2025-07-23 12:00,2025-05-20 00:00,2025-05-21 16:00
FAB120501A-04,INSTALL DOOR & HARDWARE - FAB120501A,Not Started,Battery Rm 3 - 2F -SUW-FAB120501,,,,,,,,2025-11-28 08:00,2025-12-04 17:00,,
FAB120501A-05,PAINT & PROTECT DOORS & FRAMES - FAB120501A,Not Started,Battery Rm 3 - 2F -SUW-FAB120501,,,,,,,,2026-02-16 08:00,2026-02-19 15:00,,
FAB120501B-01,IMPACT - INSTALL/REWORK DRYWALL FRAMING AROUND DOORS - FAB120501B,Complete,Battery Rm 3 - 2F -SUW-FAB120501,,,,,,,,2025-05-05 08:00,2025-05-13 17:00,2025-05-05 08:00,2025-05-12 17:00
FAB120501B-03,INSTALL DOOR FRAMES - FAB120501B,Complete,Battery Rm 3 - 2F -SUW-FAB120501,,,,,,,,2025-07-22 13:00,2025-07-23 12:00,2025-05-11 00:00,2025-05-12 16:00
FAB120501B-04,INSTALL DOOR & HARDWARE - FAB120501B,Active,Battery Rm 3 - 2F -SUW-FAB120501,,,,,,,,2025-09-09 08:00,2025-09-15 17:00,2025-09-09 08:00,
FAB120501B-05,PAINT & PROTECT DOORS & FRAMES -  FAB120501B,Not Started,Battery Rm 3 - 2F -SUW-FAB120501,,,,,,,,2026-02-16 08:00,2026-02-19 15:00,,
ZX-4870,Complete Drywall & Inspect - Elevator #03 - 2F-1FAB-EL3,Complete,Elevator 3 - 2F -SUW-FAB1-EL03,,,,,,,,2025-08-14 08:00,2025-08-27 17:00,2025-05-05 08:00,2025-05-23 16:00
ZX-4840,Complete Drywall & Inspect - Vestibule 1 - 2F-SUW-FAB120508,Complete,Vestibule 1 - 2F -SUW-FAB120508,,,,,,,,2025-08-18 08:00,2025-08-18 08:00,2025-08-18 08:00,2025-10-28 17:00
FAB120508A-01,IMPACT - INSTALL/REWORK DRYWALL FRAMING AROUND DOORS - FAB120508A,Complete,Vestibule 1 - 2F -SUW-FAB120508,,,,,,,,2025-04-25 08:00,2025-05-05 17:00,2025-04-25 08:00,2025-05-02 17:00
FAB120508A-03,INSTALL DOOR FRAMES - FAB120508A,Complete,Vestibule 1 - 2F -SUW-FAB120508,,,,,,,,2025-06-26 13:00,2025-06-27 12:00,2025-05-01 00:00,2025-05-02 16:00
FAB120508A-04,INSTALL DOOR & HARDWARE - FAB120508A,Active,Vestibule 1 - 2F -SUW-FAB120508,,,,,,,,2025-07-10 08:00,2025-07-16 17:00,2025-07-10 08:00,
FAB120508A-05,PAINT & PROTECT DOORS & FRAMES - FAB120508A,Not Started,Vestibule 1 - 2F -SUW-FAB120508,,,,,,,,2026-02-16 08:00,2026-02-19 15:00,,
ZX-4990,Complete Drywall & Inspect - T/L Maint. Rm 1 - 2F-SUW-FAB120102,Complete,T/L Maint. Rm 1 - 2F -SUW-FAB120102,,,,,,,,2025-09-01 08:00,2025-09-05 17:00,2025-09-01 08:00,2025-09-05 17:00
FAB120102A-01,IMPACT - INSTALL/REWORK DRYWALL FRAMING AROUND DOORS - FAB120102A,Complete,T/L Maint. Rm 1 - 2F -SUW-FAB120102,,,,,,,,2025-04-07 08:00,2025-04-15 17:00,2025-04-07 08:00,2025-04-14 17:00
FAB120102A-03,INSTALL DOOR FRAMES - FAB120102A,Complete,T/L Maint. Rm 1 - 2F -SUW-FAB120102,,,,,,,,2025-08-21 13:00,2025-08-22 12:00,2025-04-14 00:00,2025-04-14 16:00
FAB120102A-04,INSTALL DOOR & HARDWARE - FAB120102A,Active,T/L Maint. Rm 1 - 2F -SUW-FAB120102,,,,,,,,2025-10-07 08:00,2025-10-13 17:00,2025-10-07 08:00,
FAB120102A-05,PAINT & PROTECT DOORS & FRAMES -  FAB120102A,Not Started,T/L Maint. Rm 1 - 2F -SUW-FAB120102,,,,,,,,2026-02-16 08:00,2026-02-19 15:00,,
ZX-4900,Complete Drywall & Inspect - GCS Storage - 2F-FAB120506,Complete,GCS Storage - 2F -SUW-FAB120506,,,,,,,,2025-09-08 08:00,2025-09-12 17:00,2025-09-08 08:00,2025-09-12 17:00
FAB120506D-01,IMPACT - INSTALL/REWORK DRYWALL FRAMING AROUND DOORS - FAB120506D,Complete,GCS Storage - 2F -SUW-FAB120506,,,,,,,,2025-02-19 08:00,2025-02-27 17:00,2025-02-19 00:00,2025-02-27 17:00
FAB120506D-03,INSTALL DOOR FRAMES - FAB120506D,Complete,GCS Storage - 2F -SUW-FAB120506,,,,,,,,2025-07-25 13:00,2025-07-28 12:00,2025-02-27 00:00,2025-02-27 16:00
FAB120506D-04,INSTALL DOOR & HARDWARE - FAB120506D,Active,GCS Storage - 2F -SUW-FAB120506,,,,,,,,2025-11-05 08:00,2025-11-11 17:00,2025-11-05 08:00,
FAB120506D-05,PAINT & PROTECT DOORS & FRAMES -  FAB120506D,Not Started,GCS Storage - 2F -SUW-FAB120506,,,,,,,,2026-02-16 08:00,2026-02-19 17:00,,
FAB120506E-01,IMPACT - INSTALL/REWORK DRYWALL FRAMING AROUND DOORS - FAB120506E,Complete,GCS Storage - 2F -SUW-FAB120506,,,,,,,,2025-02-12 08:00,2025-02-20 17:00,2025-02-12 08:00,2025-02-20 17:00
FAB120506E-03,INSTALL DOOR FRAMES - FAB120506E,Complete,GCS Storage - 2F -SUW-FAB120506,,,,,,,,2025-07-25 13:00,2025-07-28 12:00,2025-02-20 00:00,2025-02-20 16:00
FAB120506E-04,INSTALL DOOR & HARDWARE - FAB120506E,Active,GCS Storage - 2F -SUW-FAB120506,,,,,,,,2025-10-31 08:00,2025-11-06 17:00,2025-10-31 08:00,
FAB120506E-05,PAINT & PROTECT DOORS & FRAMES -  FAB120506E,Not Started,GCS Storage - 2F -SUW-FAB120506,,,,,,,,2026-02-16 08:00,2026-02-19 17:00,,
FAB120506A-00,IMPACT - SECAI SCAFFOLD IMPEDING DOOR FRAME INSTALLATION - FAB120506A,Complete,GCS Storage - 2F -SUW-FAB120506,,,,,,,,2025-06-20 08:00,2025-06-26 17:00,2025-06-20 08:00,2025-10-03 17:00
 FAB120506A-04,INSTALL DOOR & HARDWARE - FAB120506A,Active,GCS Storage - 2F -SUW-FAB120506,,,,,,,,2025-11-05 08:00,2025-11-11 17:00,2025-11-05 08:00,
 FAB120506A-05,PAINT & PROTECT DOORS & FRAMES -  FAB120506A,Not Started,GCS Storage - 2F -SUW-FAB120506,,,,,,,,2026-02-16 08:00,2026-02-19 17:00,,
FAB120506B-00,IMPACT - SECAI SCAFFOLD IMPEDING DOOR FRAME INSTALLATION - FAB120506B,Complete,GCS Storage - 2F -SUW-FAB120506,,,,,,,,2025-06-20 08:00,2025-06-26 17:00,2025-06-20 08:00,2025-10-03 17:00
 FAB120506B-04,INSTALL DOOR & HARDWARE - FAB120506B,Active,GCS Storage - 2F -SUW-FAB120506,,,,,,,,2025-11-14 08:00,2025-11-20 17:00,2025-11-14 08:00,
 FAB120506B-05,PAINT & PROTECT DOORS & FRAMES -  FAB120506B,Not Started,GCS Storage - 2F -SUW-FAB120506,,,,,,,,2026-02-16 08:00,2026-02-19 17:00,,
FAB120506C-00,IMPACT - SECAI SCAFFOLD IMPEDING DOOR FRAME INSTALLATION - FAB120506C,Complete,GCS Storage - 2F -SUW-FAB120506,,,,,,,,2025-06-20 08:00,2025-06-26 17:00,2025-06-20 08:00,2025-10-03 17:00
 FAB120506C-04,INSTALL DOOR & HARDWARE - FAB120506C,Active,GCS Storage - 2F -SUW-FAB120506,,,,,,,,2025-11-05 08:00,2025-11-11 17:00,2025-11-05 08:00,
 FAB120506C-05,PAINT & PROTECT DOORS & FRAMES - FAB120506C,Not Started,GCS Storage - 2F -SUW-FAB120506,,,,,,,,2026-02-16 08:00,2026-02-19 17:00,,
FAB120506A-03,INSTALL DOOR FRAMES - FAB120506A,Complete,GCS Storage - 2F -SUW-FAB120506,,,,,,,,2025-10-07 08:00,2025-10-07 17:00,2025-10-07 08:00,2025-10-07 17:00
FAB120506B-03,INSTALL DOOR FRAMES - FAB120506B,Complete,GCS Storage - 2F -SUW-FAB120506,,,,,,,,2025-10-06 08:00,2025-10-06 17:00,2025-10-06 08:00,2025-10-06 17:00
FAB120506C-03,INSTALL DOOR FRAMES - FAB120506C,Complete,GCS Storage - 2F -SUW-FAB120506,,,,,,,,2025-10-07 08:00,2025-10-07 17:00,2025-10-07 08:00,2025-10-07 17:00
ZX-4960,Complete Drywall & Inspect-Electrical Rm - 2F-SUW-FAB120401,Complete,Electrical Rm - 2F -SUW-FAB120401,,,,,,,,2025-05-16 08:00,2025-05-29 17:00,2025-05-16 08:00,2025-10-13 17:00
FAB120401A-01,INSTALL DOOR FRAME BY SECAI - FAB120401A HANDED OVER 06/27,Complete,Electrical Rm - 2F -SUW-FAB120401,,,,,,,,2025-06-30 08:00,2025-07-11 17:00,2025-06-28 08:00,2025-09-16 17:00
FAB120401A-04,INSTALL DOOR & HARDWARE - FAB120401A,Active,Electrical Rm - 2F -SUW-FAB120401,,,,,,,,2025-10-24 08:00,2025-10-30 17:00,2025-10-24 08:00,
FAB120401A-05,PAINT & PROTECT DOORS & FRAMES -  FAB120401A,Not Started,Electrical Rm - 2F -SUW-FAB120401,,,,,,,,2026-02-16 08:00,2026-02-19 15:00,,
FAB120401B-04,INSTALL DOOR & HARDWARE - FAB120401B,Not Started,Electrical Rm - 2F -SUW-FAB120401,,,,,,,,2025-12-01 08:00,2025-12-05 17:00,,
FAB120401B-05,PAINT & PROTECT DOORS & FRAMES - FAB120401B,Not Started,Electrical Rm - 2F -SUW-FAB120401,,,,,,,,2026-02-16 08:00,2026-02-19 15:00,,
FAB120401C-01,INSTALL DOOR FRAME BY SECAI - FAB120401C HANDED OVER 06/27,Complete,Electrical Rm - 2F -SUW-FAB120401,,,,,,,,2025-06-27 08:00,2025-07-10 17:00,2025-06-28 08:00,2025-11-05 17:00
FAB120401C-04,INSTALL DOOR & HARDWARE - FAB120401C,Active,Electrical Rm - 2F -SUW-FAB120401,,,,,,,,2025-11-06 08:00,2025-11-12 17:00,2025-11-06 08:00,
FAB120401C-05,PAINT & PROTECT DOORS & FRAMES -  FAB120401C,Not Started,Electrical Rm - 2F -SUW-FAB120401,,,,,,,,2026-02-16 08:00,2026-02-19 15:00,,
FAB120401D-01,SECAI - INSTALL DOOR FRAMES - FAB120401D,Not Started,Electrical Rm - 2F -SUW-FAB120401,,,,,,,,2025-12-01 08:00,2025-12-01 17:00,,
FAB120401D-04,INSTALL DOOR & HARDWARE - FAB120401D,Not Started,Electrical Rm - 2F -SUW-FAB120401,,,,,,,,2025-12-02 08:00,2025-12-08 17:00,,
FAB120401D-05,PAINT & PROTECT DOORS & FRAMES -  FAB120401D,Not Started,Electrical Rm - 2F -SUW-FAB120401,,,,,,,,2026-02-16 08:00,2026-02-19 15:00,,
FAB120401E-01,IMPACT - INSTALL/REWORK DRYWALL FRAMING AROUND DOORS - FAB120401E,Complete,Electrical Rm - 2F -SUW-FAB120401,,,,,,,,2025-06-25 08:00,2025-06-25 17:00,2025-06-12 08:00,2025-06-20 16:00
FAB120401E-03,INSTALL DOOR FRAME & INSPECT - FAB120401E,Complete,Electrical Rm - 2F -SUW-FAB120401,,,,,,,,2025-07-02 08:00,2025-07-02 17:00,2025-06-20 08:00,2025-06-20 16:00
FAB120401E-04,INSTALL DOOR & HARDWARE - FAB120401E,Active,Electrical Rm - 2F -SUW-FAB120401,,,,,,,,2025-06-20 08:00,2025-06-26 17:00,2025-06-20 08:00,
FAB120401E-05,PAINT & PROTECT DOORS & FRAMES -  FAB120401E,Not Started,Electrical Rm - 2F -SUW-FAB120401,,,,,,,,2026-02-16 08:00,2026-02-19 15:00,,
FAB120401F-01,INSTALL DOOR FRAME BY SECAI - FAB120401F - HANDED OVER ON 10/14,Complete,Electrical Rm - 2F -SUW-FAB120401,,,,,,,,2025-10-14 08:00,2025-10-14 17:00,2025-10-14 08:00,2025-11-05 17:00
FAB120401F-04,INSTALL DOOR & HARDWARE - FAB120401F,Active,Electrical Rm - 2F -SUW-FAB120401,,,,,,,,2025-11-06 08:00,2025-11-12 17:00,2025-11-06 08:00,
FAB120401F-05,PAINT & PROTECT DOORS & FRAMES -  FAB120401F,Not Started,Electrical Rm - 2F -SUW-FAB120401,,,,,,,,2026-02-16 08:00,2026-02-19 15:00,,
FAB120401G-70,DOOR FRAME HANDED OVER TO SECAI ON 10/01 - FAB120401G,Complete,Electrical Rm - 2F -SUW-FAB120401,,,,,,,,2025-10-01 08:00,2025-10-01 17:00,2025-10-01 08:00,2025-10-01 17:00
FAB120401G-03,INSTALL DOOR FRAME BY SECAI - FAB120401G - HANDED OVER ON 10/01,Active,Electrical Rm - 2F -SUW-FAB120401,,,,,,,,2025-10-01 08:00,2025-10-01 17:00,2025-10-01 08:00,
FAB120401G-04,INSTALL DOOR & HARDWARE - FAB120401G,Not Started,Electrical Rm - 2F -SUW-FAB120401,,,,,,,,2025-12-01 08:00,2025-12-05 17:00,,
FAB120401G-05,PAINT & PROTECT DOORS & FRAMES -  FAB120401G,Not Started,Electrical Rm - 2F -SUW-FAB120401,,,,,,,,2026-02-16 08:00,2026-02-19 15:00,,
FAB120401D-11,IMPACT - INTERNAL - UNASSEMBLED TRANSOM FRAMES FAB120401D,Active,Electrical Rm - 2F -SUW-FAB120401,,,,,,,,2025-06-06 08:00,2025-07-21 10:00,2025-06-06 08:00,
FAB120401F-11,IMPACT - INTERNAL - UNASSEMBLED TRANSOM FRAMES FAB120401F - DOOR FRAME HANDED OVER TO SECAI ON 10/14,Complete,Electrical Rm - 2F -SUW-FAB120401,,,,,,,,2025-06-06 08:00,2025-07-21 10:00,2025-06-06 08:00,2025-10-14 17:00
FAB120401G-11,"IMPACT - INTERNAL - ELEVATOR WORK, SCAFFOLD IN THE WAY - DOOR FRAME HANDED OVER TO SECAI ON 10/01",Complete,Electrical Rm - 2F -SUW-FAB120401,,,,,,,,2025-06-06 08:00,2025-06-16 10:00,2025-06-06 08:00,2025-10-01 17:00
FAB120401G-21,PROCUREMENT - RE-ORDER - DOOR FRAMES - FAB120401G,Complete,Electrical Rm - 2F -SUW-FAB120401,,,,,,,,2025-06-16 08:00,2025-08-01 17:00,2025-06-05 08:00,2025-07-14 17:00
FAB120303F-01,IMPACT - INSTALL/REWORK DRYWALL FRAMING AROUND DOORS - FAB120303F HANDED OVER TO SECAI ON 08/29,Complete,Electrical Rm - 2F -SUW-FAB120401,,,,,,,,2025-08-29 08:00,2025-08-29 17:00,2025-08-29 08:00,2025-08-29 17:00
FAB120303F-03,INSTALL DOOR FRAME BY SECAI - FAB120303F HANDED OVER ON 08/29,Complete,Electrical Rm - 2F -SUW-FAB120401,,,,,,,,2025-08-29 08:00,2025-08-29 17:00,2025-08-29 08:00,2025-11-06 17:00
FAB120303F-04,INSTALL DOOR & HARDWARE - FAB120303F,Active,Electrical Rm - 2F -SUW-FAB120401,,,,,,,,2025-11-07 08:00,2025-11-13 17:00,2025-11-07 08:00,
FAB120303F-05,PAINT & PROTECT DOORS & FRAMES -  FAB120303F,Not Started,Electrical Rm - 2F -SUW-FAB120401,,,,,,,,2026-02-16 08:00,2026-02-19 15:00,,
FAB120303H-01,IMPACT - INSTALL/REWORK DRYWALL FRAMING AROUND DOORS - FAB120303FH - P1,Complete,Electrical Rm - 2F -SUW-FAB120401,,,,,,,,2025-06-27 08:00,2025-06-27 17:00,2025-06-27 08:00,2025-06-27 16:00
FAB120303H-04,INSTALL DOOR & HARDWARE - FAB120303H - P1,Active,Electrical Rm - 2F -SUW-FAB120401,,,,,,,,2025-06-30 08:00,2025-07-04 17:00,2025-06-30 08:00,
FAB120303H-05,PAINT & PROTECT DOORS & FRAMES -  FAB120303H,Not Started,Electrical Rm - 2F -SUW-FAB120401,,,,,,,,2026-02-16 08:00,2026-02-19 17:00,,
FAB120303H-03,INSTALL DOOR FRAMES - FAB120303H,Complete,Electrical Rm - 2F -SUW-FAB120401,,,,,,,,2025-06-27 08:00,2025-06-27 17:00,2025-06-30 08:00,2025-06-30 16:00
FAB120401C-13,DOOR FRAME HANDED OVER TO SECAI ON 06/27 - FAB120401C,Complete,Electrical Rm - 2F -SUW-FAB120401,,,,,,,,2025-06-27 08:00,2025-06-27 17:00,2025-06-27 08:00,2025-06-27 16:00
FAB120401A-13,DOOR FRAME HANDED OVER TO SECAI ON 06/27 - FAB120401A,Complete,Electrical Rm - 2F -SUW-FAB120401,,,,,,,,2025-06-27 08:00,2025-06-27 17:00,2025-06-27 08:00,2025-06-27 16:00
ZX-4930,Complete Drywall & Inspect - Fire Alarm 3 - 2F-FAB120311,Complete,Fire Alarm 3 - 2F -SUW-FAB120311,,,,,,,,2025-07-23 08:00,2025-08-05 17:00,2025-07-23 08:00,2025-08-05 17:00
ZX-5230,Complete Drywall & Inspect - i/o Rm - 2F-SUE-FAB126512,Complete,I/O Rm - 2F -SUE-FAB126512,,,,,,,,2025-09-02 08:00,2025-09-08 17:00,2025-09-02 08:00,2025-09-08 17:00
FAB126512A-03,INSTALL DOOR FRAMES - FAB126512A,Complete,I/O Rm - 2F -SUE-FAB126512,,,,,,,,2025-10-23 08:00,2025-10-23 17:00,2025-10-23 08:00,2025-10-23 17:00
FAB126512A-04,INSTALL DOOR & HARDWARE - FAB126512A,Active,I/O Rm - 2F -SUE-FAB126512,,,,,,,,2025-10-28 08:00,2025-11-03 17:00,2025-10-28 08:00,
FAB126512A-05,PAINT & PROTECT DOORS & FRAMES - FAB126512A,Not Started,I/O Rm - 2F -SUE-FAB126512,,,,,,,,2026-02-16 08:00,2026-02-19 15:00,,
ZX-5020,Complete Drywall & Inspect - Fire Alarm 5 - 2F-FAB120510,Complete,Fire Alarm 5 - 2F -SUW-FAB120510,,,,,,,,2025-09-29 08:00,2025-10-03 17:00,2025-09-29 08:00,2025-10-03 17:00
FAB120510A-01,SECAI - INSTALL DOOR FRAMES - FAB120510A,Complete,Fire Alarm 5 - 2F -SUW-FAB120510,,,,,,,,2025-07-11 10:00,2025-07-22 10:00,2025-07-09 10:00,2025-07-09 10:00
FAB120510A-04,INSTALL DOOR & HARDWARE - FAB120510A,Active,Fire Alarm 5 - 2F -SUW-FAB120510,,,,,,,,2025-07-09 08:00,2025-07-15 17:00,2025-07-09 08:00,
FAB120510A-05,PAINT & PROTECT DOORS & FRAMES - FAB120510A,Not Started,Fire Alarm 5 - 2F -SUW-FAB120510,,,,,,,,2026-02-16 08:00,2026-02-19 15:00,,
ZX-5080,SECAI TOOK OVER FOR DESIGN - Complete Drywall & Inspect - Rated Chase-West - 2F-SUW-FAB120511,Complete,Rated Chase West - 2F -SUW-FAB120511,,,,,,,,2025-08-15 08:00,2025-08-21 17:00,2025-08-15 08:00,2025-08-15 17:00
FAB120511A-01,DOOR FRAME HANDED OVER TO SECAI ON 10/14 - FAB120511A,Complete,Rated Chase West - 2F -SUW-FAB120511,,,,,,,,2025-10-14 08:00,2025-10-14 17:00,2025-10-14 08:00,2025-10-14 17:00
FAB120511A-03,INSTALL DOOR FRAME BY SECAI - FAB120511A - HANDED OVER TO SECAI ON 10/14,Active,Rated Chase West - 2F -SUW-FAB120511,,,,,,,,2025-10-14 08:00,2025-10-14 17:00,2025-10-14 08:00,
FAB120511A-04,INSTALL DOOR & HARDWARE - FAB120511A,Not Started,Rated Chase West - 2F -SUW-FAB120511,,,,,,,,2025-12-01 08:00,2025-12-05 17:00,,
FAB120511A-05,PAINT & PROTECT DOORS & FRAMES -  FAB120511A,Not Started,Rated Chase West - 2F -SUW-FAB120511,,,,,,,,2026-02-16 08:00,2026-02-19 15:00,,
ZX-5140,Complete Drywall & Inspect - IT/Security 3 - 2F-TR-FAB120307,Complete,IT/Security 3 - 2F -SUW-TR-FAB120307,,,,,,,,2025-08-27 08:00,2025-09-02 17:00,2025-08-27 08:00,2025-09-02 17:00
TR-FAB120307A-01,IMPACT - INSTALL/REWORK DRYWALL FRAMING AROUND DOORS - TR - FAB120307A,Complete,IT/Security 3 - 2F -SUW-TR-FAB120307,,,,,,,,2025-05-21 08:00,2025-05-29 17:00,2025-05-21 08:00,2025-05-29 17:00
TR-FAB120307A-03,INSTALL DOOR FRAMES - TR - FAB120307A,Complete,IT/Security 3 - 2F -SUW-TR-FAB120307,,,,,,,,2025-05-29 08:00,2025-05-29 17:00,2025-05-29 08:00,2025-05-29 17:00
TR-FAB120307A-04,INSTALL DOOR & HARDWARE - TR - FAB120307A,Active,IT/Security 3 - 2F -SUW-TR-FAB120307,,,,,,,,2025-11-13 08:00,2025-11-19 17:00,2025-11-13 08:00,
TR-FAB120307A-05,PAINT & PROTECT DOORS & FRAMES - TR - FAB120307A,Not Started,IT/Security 3 - 2F -SUW-TR-FAB120307,,,,,,,,2026-02-16 08:00,2026-02-19 15:00,,
ZX-5050,Complete Drywall & Inspect - Battery Rm 2 - 2F-SUW-FAB120314,Complete,Battery Rm 2 - 2F -SUW-FAB120314,,,,,,,,2025-07-22 08:00,2025-08-04 17:00,2025-06-16 08:00,2025-09-03 17:00
FAB120314A-01,IMPACT - INSTALL/REWORK DRYWALL FRAMING AROUND DOORS - FAB120314A,Complete,Battery Rm 2 - 2F -SUW-FAB120314,,,,,,,,2025-04-01 08:00,2025-04-09 17:00,2025-04-01 08:00,2025-04-09 17:00
FAB120314A-03,INSTALL DOOR FRAMES - FAB120314A,Complete,Battery Rm 2 - 2F -SUW-FAB120314,,,,,,,,2025-07-21 13:00,2025-07-22 12:00,2025-04-09 00:00,2025-04-09 16:00
FAB120314A-04,INSTALL DOOR & HARDWARE - FAB120314A,Not Started,Battery Rm 2 - 2F -SUW-FAB120314,,,,,,,,2025-11-28 08:00,2025-12-04 17:00,,
FAB120314A-05,PAINT & PROTECT DOORS & FRAMES - FAB120314A,Not Started,Battery Rm 2 - 2F -SUW-FAB120314,,,,,,,,2026-02-16 08:00,2026-02-19 15:00,,
FAB120314B-01,IMPACT - INSTALL/REWORK DRYWALL FRAMING AROUND DOORS - FAB120314B,Complete,Battery Rm 2 - 2F -SUW-FAB120314,,,,,,,,2025-02-13 08:00,2025-02-21 17:00,2025-02-13 08:00,2025-02-21 17:00
FAB120314B-03,INSTALL DOOR FRAMES - FAB120314B,Complete,Battery Rm 2 - 2F -SUW-FAB120314,,,,,,,,2025-07-21 13:00,2025-07-22 12:00,2025-02-21 00:00,2025-02-21 16:00
FAB120314B-04,INSTALL DOOR & HARDWARE - FAB120314B,Not Started,Battery Rm 2 - 2F -SUW-FAB120314,,,,,,,,2025-11-28 08:00,2025-12-04 17:00,,
FAB120314B-05,PAINT & PROTECT DOORS & FRAMES - FAB120314B,Not Started,Battery Rm 2 - 2F -SUW-FAB120314,,,,,,,,2026-02-16 08:00,2026-02-19 15:00,,
ZX-5200,Complete Drywall & Inspect - Clean Vestibule #02 - 2F-FAB120201,Complete,Clean Vestibule 2 - 2F -SUW-FAB120201,,,,,,,,2025-10-01 08:00,2025-10-07 17:00,2025-10-01 08:00,2025-10-07 17:00
FAB120201A-01,IMPACT - INSTALL/REWORK DRYWALL FRAMING AROUND DOORS - FAB120201A,Complete,Clean Vestibule 2 - 2F -SUW-FAB120201,,,,,,,,2025-02-10 08:00,2025-02-18 17:00,2025-02-10 08:00,2025-02-18 17:00
FAB120201A-03,INSTALL DOOR FRAMES - FAB120201A,Complete,Clean Vestibule 2 - 2F -SUW-FAB120201,,,,,,,,2025-07-10 13:00,2025-07-11 12:00,2025-02-18 00:00,2025-02-18 16:00
FAB120201A-04,INSTALL DOOR & HARDWARE - FAB120201A,Active,Clean Vestibule 2 - 2F -SUW-FAB120201,,,,,,,,2025-11-13 08:00,2025-11-19 17:00,2025-11-13 08:00,
FAB120201A-05,PAINT & PROTECT DOORS & FRAMES - FAB120201A,Not Started,Clean Vestibule 2 - 2F -SUW-FAB120201,,,,,,,,2026-02-16 08:00,2026-02-19 15:00,,
ZX-5170,SECAI TOOK OVER FOR ACCELERATION - Complete Drywall & Inspect - Airlock 1 - 2F-FAB120108 - MKM,Complete,Air Lock 1 - 2F -SUW-FAB120108,,,,,,,,2025-07-18 08:00,2025-07-31 17:00,2025-07-18 08:00,2025-08-18 17:00
FAB120108A-13,DOOR FRAME HANDED OVER TO SECAI - FAB120108A,Complete,Air Lock 1 - 2F -SUW-FAB120108,,,,,,,,2025-06-27 08:00,2025-06-27 17:00,2025-06-27 08:00,2025-06-27 17:00
FAB120108A-04,INSTALL DOOR & HARDWARE - FAB120108A,Not Started,Air Lock 1 - 2F -SUW-FAB120108,,,,,,,,2025-11-28 08:00,2025-12-04 17:00,,
FAB120108A-05,PAINT & PROTECT DOORS & FRAMES - FAB120108A,Not Started,Air Lock 1 - 2F -SUW-FAB120108,,,,,,,,2026-02-16 08:00,2026-02-19 15:00,,
FAB120108B-13,DOOR FRAME HANDED OVER TO SECAI ON 06/27 - FAB120108B,Complete,Air Lock 1 - 2F -SUW-FAB120108,,,,,,,,2025-06-27 08:00,2025-06-27 17:00,2025-06-27 08:00,2025-06-27 08:00
FAB120108B-03,INSTALL DOOR FRAME BY SECAI - FAB120108B HANDED OVER ON 06/27,Complete,Air Lock 1 - 2F -SUW-FAB120108,,,,,,,,2025-06-27 08:00,2025-07-10 17:00,2025-06-28 08:00,2025-09-15 17:00
FAB120108B-04,INSTALL DOOR & HARDWARE - FAB120108B,Active,Air Lock 1 - 2F -SUW-FAB120108,,,,,,,,2025-10-27 08:00,2025-10-31 17:00,2025-10-27 08:00,
FAB120108B-05,PAINT & PROTECT DOORS & FRAMES - FAB120108B,Not Started,Air Lock 1 - 2F -SUW-FAB120108,,,,,,,,2026-02-16 08:00,2026-02-19 15:00,,
FAB120108D-75,DOOR FRAME HANDED OVER TO SECAI ON 10/03 - FAB120108D,Complete,Air Lock 1 - 2F -SUW-FAB120108,,,,,,,,2025-10-03 08:00,2025-10-03 17:00,2025-10-03 08:00,2025-10-03 17:00
FAB120108D-03,INSTALL DOOR FRAME BY SECAI - FAB120108D - HANDED OVER ON 10/03,Complete,Air Lock 1 - 2F -SUW-FAB120108,,,,,,,,2025-10-02 08:00,2025-10-02 17:00,2025-10-02 08:00,2025-10-02 17:00
FAB120108D-04,INSTALL DOOR & HARDWARE - FAB120108D,Not Started,Air Lock 1 - 2F -SUW-FAB120108,,,,,,,,2025-12-01 08:00,2025-12-05 17:00,,
FAB120108D-05,PAINT & PROTECT DOORS & FRAMES - FAB120108D,Not Started,Air Lock 1 - 2F -SUW-FAB120108,,,,,,,,2026-02-16 08:00,2026-02-19 15:00,,
FAB120108E-13,DOOR FRAME HANDED OVER TO SECAI ON 08/29 - FAB120108E,Complete,Air Lock 1 - 2F -SUW-FAB120108,,,,,,,,2025-08-29 08:00,2025-08-29 17:00,2025-08-29 08:00,2025-08-29 17:00
FAB120108E-04,INSTALL DOOR & HARDWARE - FAB120108E,Not Started,Air Lock 1 - 2F -SUW-FAB120108,,,,,,,,2025-12-01 08:00,2025-12-05 17:00,,
FAB120108E-05,PAINT & PROTECT DOORS & FRAMES - FAB120108E,Not Started,Air Lock 1 - 2F -SUW-FAB120108,,,,,,,,2026-02-16 08:00,2026-02-19 15:00,,
FAB120108D-11,IMPACT - PROCUREMENT - REORDERED DOOR FRAME (JAMB DEPTH ISSUE) FAB120108D,Complete,Air Lock 1 - 2F -SUW-FAB120108,,,,,,,,2025-06-20 08:00,2025-08-14 17:00,2025-06-20 08:00,2025-06-30 17:00
FAB120108E-11,IMPACT - PROCUREMENT - REORDERED DOOR FRAME (JAMB DEPTH ISSUE) FAB120108E,Complete,Air Lock 1 - 2F -SUW-FAB120108,,,,,,,,2025-06-20 08:00,2025-08-14 17:00,2025-06-20 08:00,2025-06-30 17:00
FAB120108A-21,IMPACT - RFI 9489 HOLLOWMETAL FRAME CLASH WITH GOALPOST BASE PLATES,Complete,Air Lock 1 - 2F -SUW-FAB120108,,,,,,,,2025-06-20 08:00,2025-06-30 10:00,2024-11-04 08:00,2025-06-27 17:00
ZX-5110,Complete Drywall & Inspect - Elevator Hall #01 - 2F-FAB120113,Complete,Elevator Hall 1 - 2F -SUW-FAB120113,,,,,,,,2025-10-09 08:00,2025-10-10 17:00,2025-10-09 08:00,2025-10-10 17:00
FAB120113A-01,IMPACT - INSTALL/REWORK DRYWALL FRAMING AROUND DOORS - FAB120113A HANDED OVER TO SECAI 09/05,Complete,Elevator Hall 1 - 2F -SUW-FAB120113,,,,,,,,2025-09-05 08:00,2025-09-08 17:00,2025-09-05 08:00,2025-09-05 17:00
FAB120113A-03,INSTALL DOOR FRAME BY SECAI - FAB120113A HANDED OVER ON 09/05,Active,Elevator Hall 1 - 2F -SUW-FAB120113,,,,,,,,2025-09-05 08:00,2025-09-05 17:00,2025-09-05 08:00,
FAB120113A-04,INSTALL DOOR & HARDWARE - FAB120113A,Not Started,Elevator Hall 1 - 2F -SUW-FAB120113,,,,,,,,2025-12-01 08:00,2025-12-05 17:00,,
FAB120113A-05,PAINT & PROTECT DOORS & FRAMES - FAB120113A,Not Started,Elevator Hall 1 - 2F -SUW-FAB120113,,,,,,,,2026-02-16 08:00,2026-02-19 15:00,,
FAB120113B-01,IMPACT - INSTALL/REWORK DRYWALL FRAMING AROUND DOORS - FAB120113B,Complete,Elevator Hall 1 - 2F -SUW-FAB120113,,,,,,,,2025-03-21 08:00,2025-03-31 17:00,2025-03-21 08:00,2025-03-31 17:00
FAB120113B-03,INSTALL DOOR FRAMES - FAB120113B,Complete,Elevator Hall 1 - 2F -SUW-FAB120113,,,,,,,,2025-09-03 13:00,2025-09-04 12:00,2025-03-31 00:00,2025-03-31 16:00
FAB120113B-04,INSTALL DOOR & HARDWARE - FAB120113B,Not Started,Elevator Hall 1 - 2F -SUW-FAB120113,,,,,,,,2025-11-21 08:00,2025-11-27 17:00,,
FAB120113B-05,PAINT & PROTECT DOORS & FRAMES - FAB120113B,Not Started,Elevator Hall 1 - 2F -SUW-FAB120113,,,,,,,,2026-02-16 08:00,2026-02-19 15:00,,
ZX-5710,SECAI TURNOVER FOR ACELERATION - Drywall & Inspect - Battery Rm - 2F-SUE-FAB126503 BAKER/DESCOPE,Complete,Battery Rm - 2F -SUE-FAB126503,,,,,,,,2025-07-15 08:00,2025-07-28 17:00,2025-06-16 08:00,2025-06-16 16:00
FAB126503A-01,INSTALL/REWORK DRYWALL FRAMING AROUND DOORS - FAB126503A,Complete,Battery Rm - 2F -SUE-FAB126503,,,,,,,,2025-07-04 08:00,2025-07-14 17:00,2025-07-04 08:00,2025-07-14 17:00
FAB126503A-03,INSTALL DOOR FRAMES - FAB126503A,Complete,Battery Rm - 2F -SUE-FAB126503,,,,,,,,2025-07-15 08:00,2025-07-15 17:00,2025-07-15 08:00,2025-07-15 17:00
FAB126503A-04,INSTALL DOOR & HARDWARE - FAB126503A,Active,Battery Rm - 2F -SUE-FAB126503,,,,,,,,2025-07-16 08:00,2025-07-22 17:00,2025-07-16 08:00,
FAB126503A-05,PAINT & PROTECT DOORS & FRAMES - FAB126503A,Not Started,Battery Rm - 2F -SUE-FAB126503,,,,,,,,2026-02-16 08:00,2026-02-17 17:00,,
FAB126503B-01,INSTALL/REWORK DRYWALL FRAMING AROUND DOORS - FAB126503B,Complete,Battery Rm - 2F -SUE-FAB126503,,,,,,,,2025-06-18 08:00,2025-06-26 17:00,2025-06-18 08:00,2025-06-26 17:00
FAB126503B-03,INSTALL DOOR FRAMES - FAB126503B,Complete,Battery Rm - 2F -SUE-FAB126503,,,,,,,,2025-06-26 08:00,2025-06-26 17:00,2025-06-26 08:00,2025-06-26 17:00
FAB126503B-04,INSTALL DOOR & HARDWARE - FAB126503B,Active,Battery Rm - 2F -SUE-FAB126503,,,,,,,,2025-11-13 08:00,2025-11-19 17:00,2025-11-13 08:00,
FAB126503B-05,PAINT & PROTECT DOORS & FRAMES - FAB126503B,Not Started,Battery Rm - 2F -SUE-FAB126503,,,,,,,,2026-02-16 08:00,2026-02-19 15:00,,
ZX-5260,Complete Drywall & Inspect - Storage - 2F-SUW-FAB120509 NON RATED,Complete,Storage - 2F -SUW-FAB120509,,,,,,,,2025-07-11 08:00,2025-07-24 17:00,2025-06-10 08:00,2025-06-20 16:00
FAB120509A-01,IMPACT - INSTALL/REWORK DRYWALL FRAMING AROUND DOORS - FAB120509A,Complete,Storage - 2F -SUW-FAB120509,,,,,,,,2025-02-10 08:00,2025-02-18 17:00,2025-02-10 08:00,2025-02-18 17:00
FAB120509A-03,INSTALL DOOR FRAMES - FAB120509A,Complete,Storage - 2F -SUW-FAB120509,,,,,,,,2025-09-04 13:00,2025-09-05 12:00,2025-02-18 00:00,2025-02-18 16:00
FAB120509A-04,INSTALL DOOR & HARDWARE - FAB120509A,Active,Storage - 2F -SUW-FAB120509,,,,,,,,2025-11-07 08:00,2025-11-13 17:00,2025-11-07 08:00,
FAB120509A-05,PAINT & PROTECT DOORS & FRAMES -  FAB120509A,Not Started,Storage - 2F -SUW-FAB120509,,,,,,,,2026-02-16 08:00,2026-02-19 15:00,,
ZX-5320,Complete Drywall & Inspect - Duct Shaft - 2F-SUW-FAB120403,Complete,Duct Shaft - 2F -SUW-FAB120403,,,,,,,,2025-11-06 08:00,2025-11-07 17:00,2025-11-06 08:00,2025-11-08 17:00
FAB120403A-01,IMPACT - INSTALL/REWORK DRYWALL FRAMING AROUND DOORS  - FAB120403A,Complete,Duct Shaft - 2F -SUW-FAB120403,,,,,,,,2025-05-19 08:00,2025-05-27 17:00,2025-05-19 08:00,2025-05-22 17:00
FAB120403A-03,INSTALL DOOR FRAMES - FAB120403A,Complete,Duct Shaft - 2F -SUW-FAB120403,,,,,,,,2025-05-22 08:00,2025-05-22 17:00,2025-05-22 08:00,2025-05-22 17:00
FAB120403A-04,INSTALL DOOR & HARDWARE - FAB120403A,Active,Duct Shaft - 2F -SUW-FAB120403,,,,,,,,2025-10-24 08:00,2025-10-30 17:00,2025-10-24 08:00,
FAB120403A-05,PAINT & PROTECT DOORS & FRAMES -  FAB120403A,Not Started,Duct Shaft - 2F -SUW-FAB120403,,,,,,,,2026-02-16 08:00,2026-02-19 15:00,,
ZX-5380,Complete Drywall & Inspect - Vestibule 3 - 2F-FAB120304 - MKM,Complete,Vestibule 3 - 2F -SUW-FAB120304,,,,,,,,2025-07-18 08:00,2025-07-24 17:00,2025-07-18 08:00,2025-09-26 17:00
FAB120304A-01,IMPACT - INSTALL/REWORK DRYWALL FRAMING AROUND DOORS - FAB120304A,Complete,Vestibule 3 - 2F -SUW-FAB120304,,,,,,,,2025-02-11 08:00,2025-02-19 17:00,2025-02-11 08:00,2025-02-19 17:00
FAB120304A-03,INSTALL DOOR FRAMES - FAB120304A,Complete,Vestibule 3 - 2F -SUW-FAB120304,,,,,,,,2025-08-08 13:00,2025-08-11 12:00,2025-02-19 00:00,2025-02-19 16:00
FAB120304A-04,INSTALL DOOR & HARDWARE - FAB120304A,Active,Vestibule 3 - 2F -SUW-FAB120304,,,,,,,,2025-09-26 08:00,2025-10-02 17:00,2025-09-26 08:00,
FAB120304A-05,PAINT & PROTECT DOORS & FRAMES - FAB120304A,Not Started,Vestibule 3 - 2F -SUW-FAB120304,,,,,,,,2026-02-16 08:00,2026-02-19 15:00,,
FAB120304B-01,IMPACT - INSTALL/REWORK DRYWALL FRAMING AROUND DOORS - FAB120304B,Complete,Vestibule 3 - 2F -SUW-FAB120304,,,,,,,,2025-02-11 08:00,2025-02-19 17:00,2025-02-11 08:00,2025-02-19 17:00
FAB120304B-03,INSTALL DOOR FRAMES - FAB120304B,Complete,Vestibule 3 - 2F -SUW-FAB120304,,,,,,,,2025-08-08 13:00,2025-08-11 12:00,2025-02-19 00:00,2025-02-19 16:00
FAB120304B-04,INSTALL DOOR & HARDWARE - FAB120304B,Active,Vestibule 3 - 2F -SUW-FAB120304,,,,,,,,2025-04-04 08:00,2025-04-10 17:00,2025-04-04 08:00,
FAB120304B-05,PAINT & PROTECT DOORS & FRAMES - FAB120304B,Not Started,Vestibule 3 - 2F -SUW-FAB120304,,,,,,,,2026-02-16 08:00,2026-02-19 15:00,,
ZX-5500,Complete Drywall & Inspect - Battery Rm 1 - 2F-SUW-FAB120315,Complete,Battery Rm 1- 2F -SUW-FAB120315,,,,,,,,2025-07-15 08:00,2025-07-28 17:00,2025-06-16 08:00,2025-08-29 17:00
FAB120315A-01,IMPACT - INSTALL/REWORK DRYWALL FRAMING AROUND DOORS - FAB120315A,Complete,Battery Rm 1- 2F -SUW-FAB120315,,,,,,,,2025-05-01 08:00,2025-05-09 17:00,2025-05-01 08:00,2025-05-08 17:00
FAB120315A-03,INSTALL DOOR FRAMES - FAB120315A,Complete,Battery Rm 1- 2F -SUW-FAB120315,,,,,,,,2025-07-23 13:00,2025-07-24 12:00,2025-05-08 00:00,2025-05-08 16:00
FAB120315A-04,INSTALL DOOR & HARDWARE - FAB120315A,Not Started,Battery Rm 1- 2F -SUW-FAB120315,,,,,,,,2025-11-28 08:00,2025-12-04 17:00,,
FAB120315A-05,PAINT & PROTECT DOORS & FRAMES - FAB120315A,Not Started,Battery Rm 1- 2F -SUW-FAB120315,,,,,,,,2026-02-16 08:00,2026-02-19 15:00,,
FAB120315B-01,IMPACT - INSTALL/REWORK DRYWALL FRAMING AROUND DOORS - FAB120315B,Complete,Battery Rm 1- 2F -SUW-FAB120315,,,,,,,,2025-04-01 08:00,2025-04-09 17:00,2025-03-26 08:00,2025-04-01 17:00
FAB120315B-03,INSTALL DOOR FRAMES - FAB120315B,Complete,Battery Rm 1- 2F -SUW-FAB120315,,,,,,,,2025-07-23 13:00,2025-07-24 12:00,2025-04-01 00:00,2025-04-01 16:00
FAB120315B-04,INSTALL DOOR & HARDWARE - FAB120315B,Active,Battery Rm 1- 2F -SUW-FAB120315,,,,,,,,2025-09-09 08:00,2025-09-15 17:00,2025-09-09 08:00,
FAB120315B-05,PAINT & PROTECT DOORS & FRAMES - FAB120315B,Not Started,Battery Rm 1- 2F -SUW-FAB120315,,,,,,,,2026-02-16 08:00,2026-02-17 17:00,,
ZX-5290,Complete Drywall & Inspect - Duct Shaft - 2F-SUW-FAB120110,Complete,Duct Shaft - 2F -SUW-FAB120110,,,,,,,,2025-09-01 08:00,2025-09-05 17:00,2025-09-01 08:00,2025-09-05 17:00
ZX-5440,Complete Drywall & Inspect - IT/Security 1 - 2F-TR-FAB120107,Complete,IT/Security 1 - 2F -SUW-TR-FAB120107,,,,,,,,2025-09-01 08:00,2025-09-05 17:00,2025-09-01 08:00,2025-09-05 17:00
TR-FAB120107A-01,IMPACT - INSTALL/REWORK DRYWALL FRAMING AROUND DOORS - TR - FAB120107A,Complete,IT/Security 1 - 2F -SUW-TR-FAB120107,,,,,,,,2025-08-13 08:00,2025-08-13 08:00,2025-08-13 08:00,2025-08-13 08:00
TR-FAB120107A-03,INSTALL DOOR FRAMES - TR - FAB120107A,Complete,IT/Security 1 - 2F -SUW-TR-FAB120107,,,,,,,,2025-08-13 08:00,2025-08-13 17:00,2025-08-13 08:00,2025-08-13 08:00
TR-FAB120107A-04,INSTALL DOOR & HARDWARE - TR - FAB120107A,Not Started,IT/Security 1 - 2F -SUW-TR-FAB120107,,,,,,,,2025-11-21 08:00,2025-11-27 17:00,,
TR-FAB120107A-05,PAINT & PROTECT DOORS & FRAMES - TR - FAB120107A,Not Started,IT/Security 1 - 2F -SUW-TR-FAB120107,,,,,,,,2026-02-16 08:00,2026-02-19 15:00,,
TR-FAB120107A-11,IMPACT - PROCUREMENT - Reordered doors (Wall Thickness and Door Swing Design Changes),Complete,IT/Security 1 - 2F -SUW-TR-FAB120107,,,,,,,,2025-06-09 08:00,2025-08-04 17:00,2025-06-09 08:00,2025-07-14 17:00
ZX-5560,Complete Drywall & Inspect - Elevator #01A - 2F-1FAB-EL1A,Complete,Elevator 1A - 2F -SUW-FAB1-EL01A,,,,,,,,2025-05-16 08:00,2025-05-29 17:00,2025-05-16 08:00,2025-07-14 17:00
ZX-5410,Complete Drywall & Inspect - Duct Shaft - 2F-SUW-FAB120101,Not Started,Duct Shaft - 2F -SUW-FAB120101,,,,,,,,2025-12-05 08:00,2025-12-05 17:00,,
ZX-5470,SECAI TURNOVER FOR ACELERATION - Drywall & Inspect - Electrical Rm - 2F-SUE-FAB126502 BAKER/DESCOPE,Complete,Electrical Rm - 2F -SUE-FAB126502,,,,,,,,2025-07-15 08:00,2025-07-28 17:00,2025-06-16 08:00,2025-06-16 16:00
FAB126502A-01,INSTALL/REWORK DRYWALL FRAMING AROUND DOORS - FAB126502A,Complete,Electrical Rm - 2F -SUE-FAB126502,,,,,,,,2025-07-22 08:00,2025-07-30 17:00,2025-07-22 08:00,2025-07-30 17:00
FAB126502A-03,INSTALL DOOR FRAMES - FAB126502A,Complete,Electrical Rm - 2F -SUE-FAB126502,,,,,,,,2025-07-30 13:00,2025-07-31 12:00,2025-07-30 13:00,2025-07-31 12:00
FAB126502A-04,INSTALL DOOR & HARDWARE - FAB126502A,Active,Electrical Rm - 2F -SUE-FAB126502,,,,,,,,2025-05-19 08:00,2025-05-23 17:00,2025-05-19 08:00,
FAB126502A-05,PAINT & PROTECT DOORS & FRAMES - FAB126502A,Not Started,Electrical Rm - 2F -SUE-FAB126502,,,,,,,,2026-02-16 08:00,2026-02-16 08:00,,
FAB126502C-01,INSTALL DOOR FRAMES - FAB126502C,Active,Electrical Rm - 2F -SUE-FAB126502,,,,,,,,2025-08-29 08:00,2025-08-29 17:00,2025-08-29 08:00,
FAB126502C-04,INSTALL DOOR & HARDWARE - FAB126502C,Not Started,Electrical Rm - 2F -SUE-FAB126502,,,,,,,,2025-11-21 08:00,2025-11-27 17:00,,
FAB126502C-05,PAINT & PROTECT DOORS & FRAMES - FAB126502C,Not Started,Electrical Rm - 2F -SUE-FAB126502,,,,,,,,2026-02-16 08:00,2026-02-19 15:00,,
FAB126502D-03,INSTALL DOOR FRAME BY SECAI - FAB126502D HANDED OVER 06/27,Complete,Electrical Rm - 2F -SUE-FAB126502,,,,,,,,2025-06-27 08:00,2025-07-10 17:00,2025-06-28 08:00,2025-09-17 17:00
FAB126502D-04,INSTALL DOOR & HARDWARE - FAB126502D,Active,Electrical Rm - 2F -SUE-FAB126502,,,,,,,,2025-10-22 08:00,2025-10-28 17:00,2025-10-22 08:00,
FAB126502D-05,PAINT & PROTECT DOORS & FRAMES - FAB126502D,Not Started,Electrical Rm - 2F -SUE-FAB126502,,,,,,,,2026-02-16 08:00,2026-02-19 15:00,,
FAB126502E-01,INSTALL/REWORK DRYWALL FRAMING AROUND DOORS - FAB126502E,Complete,Electrical Rm - 2F -SUE-FAB126502,,,,,,,,2025-07-22 08:00,2025-07-30 17:00,2025-05-08 08:00,2025-05-13 16:00
FAB126502E-03,INSTALL DOOR FRAMES - FAB126502E,Complete,Electrical Rm - 2F -SUE-FAB126502,,,,,,,,2025-07-30 13:00,2025-07-31 12:00,2025-05-13 00:00,2025-05-14 16:00
FAB126502E-04,INSTALL DOOR & HARDWARE - FAB126502E,Active,Electrical Rm - 2F -SUE-FAB126502,,,,,,,,2025-05-15 08:00,2025-05-21 17:00,2025-05-15 08:00,
FAB126502E-05,PAINT & PROTECT DOORS & FRAMES - FAB126502E,Not Started,Electrical Rm - 2F -SUE-FAB126502,,,,,,,,2026-02-16 08:00,2026-02-16 17:00,,
FAB126502D-13,DOOR FRAME HANDED OVER TO SECAI ON 06/27 - FAB126502D,Complete,Electrical Rm - 2F -SUE-FAB126502,,,,,,,,2025-06-27 08:00,2025-06-27 17:00,2025-06-27 08:00,2025-06-27 16:00
ZX-5740,Complete Drywall & Inspect - Duct Shaft - 2F-SUW-FAB120512,Complete,Duct Shaft - 2F -SUW-FAB120512,,,,,,,,2025-11-03 08:00,2025-11-07 17:00,2025-11-03 08:00,2025-11-07 17:00
ZX-5800,Complete Drywall & Inspect - Clean Vestibule #04 - 2F-FAB120402,Complete,Clean Vestibule 4 - 2F -SUW-FAB120402,,,,,,,,2025-07-09 08:00,2025-07-22 17:00,2025-02-04 08:00,2025-02-14 16:00
FAB120402A-01,IMPACT - INSTALL/REWORK DRYWALL FRAMING AROUND DOORS - FAB120402A,Complete,Clean Vestibule 4 - 2F -SUW-FAB120402,,,,,,,,2025-05-29 08:00,2025-06-06 17:00,2025-05-29 08:00,2025-05-30 08:00
FAB120402A-03,INSTALL DOOR FRAMES - FAB120402A,Complete,Clean Vestibule 4 - 2F -SUW-FAB120402,,,,,,,,2025-05-30 08:00,2025-05-30 17:00,2025-05-30 08:00,2025-05-30 17:00
FAB120402A-04,INSTALL DOOR & HARDWARE - FAB120402A,Active,Clean Vestibule 4 - 2F -SUW-FAB120402,,,,,,,,2025-11-12 08:00,2025-11-18 17:00,2025-11-12 08:00,
FAB120402A-05,PAINT & PROTECT DOORS & FRAMES -  FAB120402A,Not Started,Clean Vestibule 4 - 2F -SUW-FAB120402,,,,,,,,2026-02-16 08:00,2026-02-19 15:00,,
ZX-5860,Complete Drywall & Inspect - Airlock 3 - 2F-FAB120303 - MKM,Complete,Air Lock 3 - 2F -SUW-FAB120303,,,,,,,,2025-07-18 08:00,2025-07-31 17:00,2025-07-18 08:00,2025-08-25 08:00
FAB120303A-01,IMPACT - INSTALL/REWORK DRYWALL FRAMING AROUND DOORS - FAB120303A,Complete,Air Lock 3 - 2F -SUW-FAB120303,,,,,,,,2025-03-20 08:00,2025-03-28 17:00,2025-03-20 08:00,2025-03-28 17:00
FAB120303A-03,INSTALL DOOR FRAMES - FAB120303A,Complete,Air Lock 3 - 2F -SUW-FAB120303,,,,,,,,2025-07-14 13:00,2025-07-15 12:00,2025-03-28 00:00,2025-03-28 16:00
FAB120303A-04,INSTALL DOOR & HARDWARE - FAB120303A,Not Started,Air Lock 3 - 2F -SUW-FAB120303,,,,,,,,2025-11-21 08:00,2025-11-27 17:00,,
FAB120303A-05,PAINT & PROTECT DOORS & FRAMES - FAB120303A,Not Started,Air Lock 3 - 2F -SUW-FAB120303,,,,,,,,2026-02-16 08:00,2026-02-19 15:00,,
FAB120303B-01,IMPACT - INSTALL/REWORK DRYWALL FRAMING AROUND DOORS - FAB120303B,Complete,Air Lock 3 - 2F -SUW-FAB120303,,,,,,,,2025-02-25 08:00,2025-03-05 17:00,2025-02-25 08:00,2025-03-05 17:00
FAB120303B-03,INSTALL DOOR FRAMES - FAB120303B,Complete,Air Lock 3 - 2F -SUW-FAB120303,,,,,,,,2025-07-14 13:00,2025-07-15 12:00,2025-03-05 00:00,2025-03-05 16:00
FAB120303B-04,INSTALL DOOR & HARDWARE - FAB120303B,Active,Air Lock 3 - 2F -SUW-FAB120303,,,,,,,,2025-10-23 08:00,2025-10-29 17:00,2025-10-23 08:00,
FAB120303B-05,PAINT & PROTECT DOORS & FRAMES - FAB120303B,Not Started,Air Lock 3 - 2F -SUW-FAB120303,,,,,,,,2026-02-16 08:00,2026-02-19 15:00,,
FAB120303C-01,IMPACT - INSTALL/REWORK DRYWALL FRAMING AROUND DOORS - FAB120303C,Complete,Air Lock 3 - 2F -SUW-FAB120303,,,,,,,,2025-08-12 08:00,2025-08-20 17:00,2025-07-15 08:00,2025-07-16 17:00
FAB120303C-04,INSTALL DOOR & HARDWARE - FAB120303C,Active,Air Lock 3 - 2F -SUW-FAB120303,,,,,,,,2025-10-23 08:00,2025-10-29 17:00,2025-10-23 08:00,
FAB120303C-05,PAINT & PROTECT DOORS & FRAMES - FAB120303C,Not Started,Air Lock 3 - 2F -SUW-FAB120303,,,,,,,,2026-02-16 08:00,2026-02-19 15:00,,
FAB120303D-03,INSTALL DOOR FRAMES BY SECAI - FAB120303D HANDED OVER ON 08/15,Complete,Air Lock 3 - 2F -SUW-FAB120303,,,,,,,,2025-08-15 08:00,2025-08-15 17:00,2025-08-15 08:00,2025-11-07 17:00
FAB120303D-04,INSTALL DOOR & HARDWARE - FAB120303D,Active,Air Lock 3 - 2F -SUW-FAB120303,,,,,,,,2025-11-11 08:00,2025-11-17 17:00,2025-11-11 08:00,
FAB120303D-05,PAINT & PROTECT DOORS & FRAMES - FAB120303D,Not Started,Air Lock 3 - 2F -SUW-FAB120303,,,,,,,,2026-02-16 08:00,2026-02-19 15:00,,
FAB120303C-11,IMPACT - PROCUREMENT - REORDERED DOORS (JAMB DEPTH ISSUE),Complete,Air Lock 3 - 2F -SUW-FAB120303,,,,,,,,2025-06-09 08:00,2025-08-12 17:00,2025-06-09 08:00,2025-07-14 17:00
FAB120303D-11,IMPACT - PROCUREMENT - REORDERED DOORS (JAMB DEPTH ISSUE),Complete,Air Lock 3 - 2F -SUW-FAB120303,,,,,,,,2025-06-09 08:00,2025-08-12 17:00,2025-06-09 08:00,2025-07-14 17:00
ZX-5980,Complete Drywall & Inspect - Duct Shaft - 2F-SUW-FAB120301,Complete,Duct Shaft - 2F -SUW-FAB120301,,,,,,,,2025-09-01 08:00,2025-09-05 17:00,2025-09-01 08:00,2025-09-05 17:00
FAB120301A-01,IMPACT - INSTALL/REWORK DRYWALL FRAMING AROUND DOORS - FAB120301A,Complete,Duct Shaft - 2F -SUW-FAB120301,,,,,,,,2025-02-25 08:00,2025-03-05 17:00,2025-02-25 08:00,2025-03-05 17:00
FAB120301A-03,INSTALL DOOR FRAMES - FAB120301A,Complete,Duct Shaft - 2F -SUW-FAB120301,,,,,,,,2025-09-22 13:00,2025-09-23 12:00,2025-03-05 00:00,2025-03-05 16:00
FAB120301A-04,INSTALL DOOR & HARDWARE - FAB120301A,Active,Duct Shaft - 2F -SUW-FAB120301,,,,,,,,2025-04-04 08:00,2025-04-10 17:00,2025-04-04 08:00,
FAB120301A-05,PAINT & PROTECT DOORS & FRAMES -  FAB120301A,Not Started,Duct Shaft - 2F -SUW-FAB120301,,,,,,,,2026-02-16 08:00,2026-02-19 17:00,,
ZX-5920,Complete Drywall & Inspect - Fire Alarm 1 - 2F-FAB120105,Complete,Fire Alarm 1 - 2F -SUW-FAB120105,,,,,,,,2025-08-01 08:00,2025-08-14 17:00,2025-08-01 08:00,2025-08-11 17:00
FAB120105A-01,IMPACT - INSTALL/REWORK DRYWALL FRAMING AROUND DOORS - FAB120105A,Complete,Fire Alarm 1 - 2F -SUW-FAB120105,,,,,,,,2025-03-14 08:00,2025-03-24 17:00,2025-03-14 08:00,2025-03-24 17:00
FAB120105A-03,INSTALL DOOR FRAMES - FAB120105A,Complete,Fire Alarm 1 - 2F -SUW-FAB120105,,,,,,,,2025-03-24 08:00,2025-03-24 17:00,2025-03-24 08:00,2025-03-24 17:00
FAB120105A-04,INSTALL DOOR & HARDWARE - FAB120105A,Active,Fire Alarm 1 - 2F -SUW-FAB120105,,,,,,,,2025-10-28 08:00,2025-11-03 17:00,2025-10-28 08:00,
FAB120105A-05,PAINT & PROTECT DOORS & FRAMES - FAB120105A,Not Started,Fire Alarm 1 - 2F -SUW-FAB120105,,,,,,,,2026-02-16 08:00,2026-02-19 15:00,,
ZX-6040,SECAI TOOK OVER FOR ACCELERATION - Drywall & Inspect - Elevator #01 - 2F-1FAB-EL1,Complete,Elevator 1 - 2F -SUW-FAB1-EL01,,,,,,,,2025-09-09 08:00,2025-09-19 17:00,2025-09-19 08:00,2025-09-19 17:00
ZX-5950,SECAI TOOK OVER ACCELERATION - Drywall & Inspect - Vestibule 5 - 2F-FAB120504 - MKM,Complete,Vestibule 5 - 2F -SUW-FAB120504,,,,,,,,2025-10-23 08:00,2025-10-24 17:00,2025-10-23 08:00,2025-10-30 17:00
FAB120504B-01,DOOR FRAME HANDED OVER TO SECAI ON 10/01 - FAB120504B,Complete,Vestibule 5 - 2F -SUW-FAB120504,,,,,,,,2025-10-01 08:00,2025-10-01 17:00,2025-10-01 08:00,2025-10-01 17:00
FAB120504B-04,INSTALL DOOR & HARDWARE - FAB120504B,Active,Vestibule 5 - 2F -SUW-FAB120504,,,,,,,,2025-11-18 08:00,2025-11-24 17:00,2025-11-18 08:00,
FAB120504B-05,PAINT & PROTECT DOORS & FRAMES - FAB120504B,Not Started,Vestibule 5 - 2F -SUW-FAB120504,,,,,,,,2026-02-16 08:00,2026-02-19 15:00,,
FAB120504B-03,INSTALL DOOR FRAME BY SECAI - FAB120504B - HANDED OVER ON 10/01,Complete,Vestibule 5 - 2F -SUW-FAB120504,,,,,,,,2025-10-01 08:00,2025-10-02 17:00,2025-10-01 08:00,2025-10-06 17:00
FAB120504D-04,INSTALL DOOR & HARDWARE - FAB120504D,Active,Vestibule 5 - 2F -SUW-FAB120504,,,,,,,,2025-10-31 08:00,2025-11-06 17:00,2025-10-31 08:00,
FAB120504D-05,PAINT & PROTECT DOORS & FRAMES - FAB120504D,Not Started,Vestibule 5 - 2F -SUW-FAB120504,,,,,,,,2026-02-16 08:00,2026-02-19 15:00,,
ZX-6190,Complete Drywall & Inspect - Elevator #18 - 2F-1FAB-EL18 - MKM,Complete,Elevator 18 - 2F -SUE-FAB1-EL18,,,,,,,,2025-07-18 08:00,2025-07-28 17:00,2025-06-25 15:39,2025-07-04 17:00
ZX-6220,Complete Drywall & Inspect - Utility Rm - 2F-FAB120507,Complete,Utility Rm - 2F -SUW-FAB120507,,,,,,,,2025-09-01 08:00,2025-09-05 17:00,2025-09-01 08:00,2025-09-05 17:00
FAB120507A-04,INSTALL DOOR & HARDWARE - FAB120507A,Active,Utility Rm - 2F -SUW-FAB120507,,,,,,,,2025-11-13 08:00,2025-11-19 17:00,2025-11-13 08:00,
FAB120507A-05,PAINT & PROTECT DOORS & FRAMES -  FAB120507A,Not Started,Utility Rm - 2F -SUW-FAB120507,,,,,,,,2026-02-16 08:00,2026-02-19 15:00,,
FAB120507B-01,IMPACT - SECAI SCAFFOLD IMPEDING DOOR FRAME INSTALLATION - FAB120507B,Active,Utility Rm - 2F -SUW-FAB120507,,,,,,,,2025-08-25 08:00,2025-08-25 17:00,2025-08-25 08:00,
FAB120507B-04,INSTALL DOOR & HARDWARE - FAB120507B,Not Started,Utility Rm - 2F -SUW-FAB120507,,,,,,,,2025-12-03 08:00,2025-12-09 17:00,,
FAB120507B-05,PAINT & PROTECT DOORS & FRAMES -  FAB120507B,Not Started,Utility Rm - 2F -SUW-FAB120507,,,,,,,,2026-02-16 08:00,2026-02-19 15:00,,
FAB120507C-01,IMPACT - INSTALL/REWORK DRYWALL FRAMING AROUND DOORS - FAB120507C,Complete,Utility Rm - 2F -SUW-FAB120507,,,,,,,,2025-02-13 08:00,2025-02-21 17:00,2025-02-13 08:00,2025-02-21 17:00
FAB120507C-03,INSTALL DOOR FRAMES - FAB120507C,Complete,Utility Rm - 2F -SUW-FAB120507,,,,,,,,2025-08-18 13:00,2025-08-19 12:00,2025-02-21 00:00,2025-02-21 16:00
FAB120507C-04,INSTALL DOOR & HARDWARE - FAB120507C,Not Started,Utility Rm - 2F -SUW-FAB120507,,,,,,,,2025-11-28 08:00,2025-12-04 17:00,,
FAB120507C-05,PAINT & PROTECT DOORS & FRAMES -  FAB120507C,Not Started,Utility Rm - 2F -SUW-FAB120507,,,,,,,,2026-02-16 08:00,2026-02-19 15:00,,
FAB120507A-03,INSTALL DOOR FRAMES - FAB120507A,Complete,Utility Rm - 2F -SUW-FAB120507,,,,,,,,2025-11-11 08:00,2025-11-11 17:00,2025-11-11 08:00,2025-11-11 17:00
FAB120507B-03,INSTALL DOOR FRAMES - FAB120507B,Not Started,Utility Rm - 2F -SUW-FAB120507,,,,,,,,2025-12-01 08:00,2025-12-01 17:00,,
ZX-6280,Complete Drywall & Inspect - Duct Shaft - 2F-SUW-FAB120312,Complete,Duct Shaft - 2F -SUW-FAB120312,,,,,,,,2025-08-19 08:00,2025-08-25 17:00,2025-08-19 08:00,2025-08-25 17:00
FAB120308A-01,IMPACT - INSTALL/REWORK DRYWALL FRAMING AROUND DOORS - FAB120308A,Complete,Duct Shaft - 2F -SUW-FAB120312,,,,,,,,2025-02-25 08:00,2025-03-05 17:00,2025-02-25 08:00,2025-03-05 17:00
FAB120308A-03,INSTALL DOOR FRAMES - FAB120308A,Complete,Duct Shaft - 2F -SUW-FAB120312,,,,,,,,2025-03-05 08:00,2025-03-05 17:00,2025-03-05 08:00,2025-03-05 17:00
FAB120308A-04,INSTALL DOOR & HARDWARE - FAB120308A,Active,Duct Shaft - 2F -SUW-FAB120312,,,,,,,,2025-07-10 08:00,2025-07-16 17:00,2025-07-10 08:00,
FAB120308A-05,PAINT & PROTECT DOORS & FRAMES -  FAB120308A,Not Started,Duct Shaft - 2F -SUW-FAB120312,,,,,,,,2026-02-16 08:00,2026-02-19 15:00,,
ZX-6340,Complete Drywall & Inspect - Elevator Hall #03 - 2F-FAB120305,Not Started,Elevator Hall 3 - 2F -SUW-FAB120305,,,,,,,,2025-12-12 08:00,2025-12-18 17:00,,
FAB120305A-07,DOOR INSTALL - FAB120305A (OHC),Not Started,Elevator Hall 3 - 2F -SUW-FAB120305,,,,,,,,2025-12-09 08:00,2025-12-10 17:00,,
ZX-6460,Complete Drywall & Inspect - Clean Elevator 2 - 2F-1FAB-EL2 - MKM,Complete,Clean Elevator 2 - 2F -SUW-FAB1-EL02,,,,,,,,2025-06-10 08:00,2025-06-23 17:00,2025-08-05 08:00,2025-10-27 08:00
ZX-6250,Complete Drywall & Inspect - Vestibule 1 - 2F-FAB120109,Complete,Vestibule 1 - 2F -SUW-FAB120109,,,,,,,,2024-11-01 08:00,2024-11-14 17:00,2024-11-01 08:00,2024-11-12 16:00
FAB120109A-01,IMPACT - INSTALL/REWORK DRYWALL FRAMING AROUND DOORS - FAB120109A,Complete,Vestibule 1 - 2F -SUW-FAB120109,,,,,,,,2025-03-24 08:00,2025-04-01 17:00,2025-03-24 08:00,2025-03-31 17:00
FAB120109A-03,INSTALL DOOR FRAMES  - FAB120109A,Complete,Vestibule 1 - 2F -SUW-FAB120109,,,,,,,,2025-07-23 13:00,2025-07-24 12:00,2025-03-31 00:00,2025-03-31 08:00
FAB120109A-04,INSTALL DOOR & HARDWARE - FAB120109A,Active,Vestibule 1 - 2F -SUW-FAB120109,,,,,,,,2025-09-12 08:00,2025-09-18 17:00,2025-09-12 08:00,
FAB120109A-05,PAINT & PROTECT DOORS & FRAMES - FAB120109A,Not Started,Vestibule 1 - 2F -SUW-FAB120109,,,,,,,,2026-02-16 08:00,2026-02-19 15:00,,
FAB120109B-01,IMPACT - INSTALL/REWORK DRYWALL FRAMING AROUND DOORS - FAB120109B,Complete,Vestibule 1 - 2F -SUW-FAB120109,,,,,,,,2025-02-12 08:00,2025-02-20 17:00,2025-02-12 08:00,2025-02-20 17:00
FAB120109B-03,INSTALL DOOR FRAMES  - FAB120109B,Complete,Vestibule 1 - 2F -SUW-FAB120109,,,,,,,,2025-07-23 13:00,2025-07-24 12:00,2025-02-20 00:00,2025-02-20 16:00
FAB120109B-04,INSTALL DOOR & HARDWARE - FAB120109B,Active,Vestibule 1 - 2F -SUW-FAB120109,,,,,,,,2025-11-12 08:00,2025-11-18 17:00,2025-11-12 08:00,
FAB120109B-05,PAINT & PROTECT DOORS & FRAMES - FAB120109B,Not Started,Vestibule 1 - 2F -SUW-FAB120109,,,,,,,,2026-02-16 08:00,2026-02-19 15:00,,
FAB120109C-01,IMPACT - INSTALL/REWORK DRYWALL FRAMING AROUND DOORS - FAB120109C,Complete,Vestibule 1 - 2F -SUW-FAB120109,,,,,,,,2025-05-01 08:00,2025-05-09 17:00,2025-05-01 08:00,2025-05-05 17:00
FAB120109C-03,INSTALL DOOR FRAMES - FAB120109C,Complete,Vestibule 1 - 2F -SUW-FAB120109,,,,,,,,2025-07-23 13:00,2025-07-24 12:00,2025-05-04 00:00,2025-05-05 16:00
FAB120109C-04,INSTALL DOOR & HARDWARE - FAB120109C,Active,Vestibule 1 - 2F -SUW-FAB120109,,,,,,,,2025-08-26 08:00,2025-09-01 17:00,2025-08-26 08:00,
FAB120109C-05,PAINT & PROTECT DOORS & FRAMES - FAB120109C,Not Started,Vestibule 1 - 2F -SUW-FAB120109,,,,,,,,2026-02-16 08:00,2026-02-19 15:00,,
ZX-6400,Complete Drywall & Inspect - Duct Shaft - 2F-SUW-FAB120112,Complete,Duct Shaft - 2F -SUW-FAB120112,,,,,,,,2025-10-01 08:00,2025-10-07 17:00,2025-10-01 08:00,2025-10-06 17:00
FAB120112A-01,IMPACT - INSTALL/REWORK DRYWALL FRAMING AROUND DOORS - FAB120112A,Complete,Duct Shaft - 2F -SUW-FAB120112,,,,,,,,2025-07-21 08:00,2025-07-29 17:00,2025-07-21 08:00,2025-07-29 17:00
FAB120112A-03,INSTALL DOOR FRAMES - FAB120112A,Complete,Duct Shaft - 2F -SUW-FAB120112,,,,,,,,2025-07-29 08:00,2025-07-29 17:00,2025-07-29 08:00,2025-07-29 17:00
FAB120112A-04,INSTALL DOOR & HARDWARE - FAB120112A,Active,Duct Shaft - 2F -SUW-FAB120112,,,,,,,,2025-11-07 08:00,2025-11-13 17:00,2025-11-07 08:00,
FAB120112A-05,PAINT & PROTECT DOORS & FRAMES -  FAB120112A,Not Started,Duct Shaft - 2F -SUW-FAB120112,,,,,,,,2026-02-16 08:00,2026-02-19 15:00,,
ZX-6520,Complete Drywall & Inspect - Elevator #1B - 2F-1FAB-EL1B - MK MARLOW,Complete,Elevator 1B - 2F -SUW-FAB1-EL01B,,,,,,,,2025-05-13 08:00,2025-05-26 17:00,2025-05-13 08:00,2025-07-18 10:00
ZX-18270,IMPACT - RFI DOOR FRONT DESIGN - Elevator #1B - 2F-1FAB-EL1B,Complete,Elevator 1B - 2F -SUW-FAB1-EL01B,,,,,,,,2025-05-13 08:00,2025-05-26 17:00,2025-05-13 08:00,2025-06-10 16:00
ZX-6430,Complete Drywall & Inspect - Airlock 5 - 2F-FAB120503,Complete,Air lock 5 - 2F -SUW-FAB120503,,,,,,,,2025-06-27 08:00,2025-07-10 17:00,2024-12-09 08:00,2024-12-18 08:00
FAB120503A-01,IMPACT - INSTALL/REWORK DRYWALL FRAMING AROUND DOORS - FAB120503A,Complete,Air lock 5 - 2F -SUW-FAB120503,,,,,,,,2025-02-13 08:00,2025-02-21 17:00,2025-02-13 08:00,2025-02-21 17:00
FAB120503A-03,INSTALL DOOR FRAMES - FAB120503A,Complete,Air lock 5 - 2F -SUW-FAB120503,,,,,,,,2025-07-10 13:00,2025-07-11 12:00,2025-02-21 00:00,2025-02-21 16:00
FAB120503A-04,INSTALL DOOR & HARDWARE - FAB120503A,Active,Air lock 5 - 2F -SUW-FAB120503,,,,,,,,2025-10-31 08:00,2025-11-06 17:00,2025-10-31 08:00,
FAB120503A-05,PAINT & PROTECT DOORS & FRAMES - FAB120503A,Not Started,Air lock 5 - 2F -SUW-FAB120503,,,,,,,,2026-02-16 08:00,2026-02-19 15:00,,
FAB120503B-01,IMPACT - INSTALL/REWORK DRYWALL FRAMING AROUND DOORS - FAB120503B HANDED OVER TO SECAI ON 08/29,Complete,Air lock 5 - 2F -SUW-FAB120503,,,,,,,,2025-08-29 08:00,2025-09-01 17:00,2025-08-29 08:00,2025-08-29 17:00
FAB120503B-04,INSTALL DOOR & HARDWARE - FAB120503B,Not Started,Air lock 5 - 2F -SUW-FAB120503,,,,,,,,2025-12-01 08:00,2025-12-05 17:00,,
FAB120503B-05,PAINT & PROTECT DOORS & FRAMES - FAB120503B,Not Started,Air lock 5 - 2F -SUW-FAB120503,,,,,,,,2026-02-16 08:00,2026-02-19 15:00,,
FAB120503D-01,IMPACT - INSTALL/REWORK DRYWALL FRAMING AROUND DOORS - FAB120503D HANDED OVER TO SECAI ON 08/29,Complete,Air lock 5 - 2F -SUW-FAB120503,,,,,,,,2025-08-28 08:00,2025-08-29 17:00,2025-08-29 08:00,2025-08-29 17:00
FAB120503D-03,INSTALL DOOR FRAME BY SECAI - FAB120503D HANDED OVER ON 08/29,Active,Air lock 5 - 2F -SUW-FAB120503,,,,,,,,2025-08-29 08:00,2025-08-29 17:00,2025-08-29 08:00,
FAB120503D-04,INSTALL DOOR & HARDWARE - FAB120503D,Not Started,Air lock 5 - 2F -SUW-FAB120503,,,,,,,,2025-11-28 08:00,2025-12-04 17:00,,
FAB120503D-05,PAINT & PROTECT DOORS & FRAMES - FAB120503D,Not Started,Air lock 5 - 2F -SUW-FAB120503,,,,,,,,2026-02-16 08:00,2026-02-19 15:00,,
FAB120503E-01,IMPACT - INSTALL/REWORK DRYWALL FRAMING AROUND DOORS - FAB120503E,Complete,Air lock 5 - 2F -SUW-FAB120503,,,,,,,,2025-07-24 08:00,2025-08-01 17:00,2025-07-24 08:00,2025-08-01 17:00
FAB120503E-04,INSTALL DOOR & HARDWARE - FAB120503E,Active,Air lock 5 - 2F -SUW-FAB120503,,,,,,,,2025-10-31 08:00,2025-11-06 17:00,2025-10-31 08:00,
FAB120503E-05,PAINT & PROTECT DOORS & FRAMES - FAB120503E,Not Started,Air lock 5 - 2F -SUW-FAB120503,,,,,,,,2026-02-16 08:00,2026-02-19 15:00,,
FAB120503D-00,IMPACT - PROCUREMENT - REORDERED DOORS (JAMB DEPTH ISSUE),Complete,Air lock 5 - 2F -SUW-FAB120503,,,,,,,,2025-06-09 08:00,2025-08-12 17:00,2025-06-09 08:00,2025-07-14 17:00
FAB120503E-00,IMPACT - PROCUREMENT - REORDERED DOORS (JAMB DEPTH ISSUE),Complete,Air lock 5 - 2F -SUW-FAB120503,,,,,,,,2025-06-09 08:00,2025-08-12 17:00,2025-06-09 08:00,2025-07-14 17:00
ZX-6670,Complete Drywall & Inspect - Elevator Hall #05 - 2F-FAB120505,Complete,Elevator Hall 5 - 2F -SUW-FAB120505,,,,,,,,2025-09-05 08:00,2025-09-11 17:00,2025-09-05 08:00,2025-09-11 17:00
FAB120505A-03,INSTALL DOOR FRAMES - FAB120505A,Not Started,Elevator Hall 5 - 2F -SUW-FAB120505,,,,,,,,2025-11-28 08:00,2025-11-28 17:00,,
FAB120505A-04,INSTALL DOOR & HARDWARE - FAB120505A,Not Started,Elevator Hall 5 - 2F -SUW-FAB120505,,,,,,,,2025-12-01 08:00,2025-12-05 17:00,,
FAB120505A-05,PAINT & PROTECT DOORS & FRAMES - FAB120505A,Not Started,Elevator Hall 5 - 2F -SUW-FAB120505,,,,,,,,2026-02-16 08:00,2026-02-19 15:00,,
FAB120505C-01,IMPACT - INSTALL/REWORK DRYWALL FRAMING AROUND DOORS - FAB120505C,Complete,Elevator Hall 5 - 2F -SUW-FAB120505,,,,,,,,2025-02-24 08:00,2025-03-04 17:00,2025-02-24 08:00,2025-03-04 17:00
FAB120505C-03,INSTALL DOOR FRAMES - FAB120505C,Complete,Elevator Hall 5 - 2F -SUW-FAB120505,,,,,,,,2025-08-13 13:00,2025-08-14 12:00,2025-03-04 00:00,2025-03-04 16:00
FAB120505C-04,INSTALL DOOR & HARDWARE - FAB120505C,Active,Elevator Hall 5 - 2F -SUW-FAB120505,,,,,,,,2025-11-05 08:00,2025-11-11 17:00,2025-11-05 08:00,
FAB120505C-05,PAINT & PROTECT DOORS & FRAMES - FAB120505C,Not Started,Elevator Hall 5 - 2F -SUW-FAB120505,,,,,,,,2026-02-16 08:00,2026-02-19 15:00,,
FAB120505A-11,IMPACT - INTERNAL - UNASSEMBLED TRANSOM FRAMES,Not Started,Elevator Hall 5 - 2F -SUW-FAB120505,,,,,,,,2025-11-21 08:00,2025-11-24 17:00,,
FAB120505B-07,DOOR INSTALL - FAB120505B (OHC),Not Started,Elevator Hall 5 - 2F -SUW-FAB120505,,,,,,,,2025-12-08 08:00,2025-12-09 17:00,,
ZX-16720,Complete Drywall & Inspect - Stair #02 SUW- 2F- FAB1-ST02,Complete,Stair 2 - 2F -SUW-FAB1-ST02,,,,,,,,2025-05-13 08:00,2025-05-26 17:00,2025-05-13 08:00,2025-08-18 08:00
FAB1-ST02B-01,IMPACT - INSTALL/REWORK DRYWALL FRAMING AROUND DOORS - FAB1-ST02B,Complete,Stair 2 - 2F -SUW-FAB1-ST02,,,,,,,,2025-02-10 08:00,2025-02-18 17:00,2025-02-10 08:00,2025-02-18 17:00
FAB1-ST02B-03,INSTALL DOOR FRAMES - FAB1-ST02B,Complete,Stair 2 - 2F -SUW-FAB1-ST02,,,,,,,,2025-02-18 08:00,2025-02-18 17:00,2025-02-18 08:00,2025-02-18 17:00
FAB1-ST02B-04,INSTALL DOOR & HARDWARE - FAB1-ST02B,Active,Stair 2 - 2F -SUW-FAB1-ST02,,,,,,,,2025-11-05 08:00,2025-11-11 17:00,2025-11-05 08:00,
FAB1-ST02B-05,PAINT & PROTECT DOORS & FRAMES - FAB1-ST02B,Not Started,Stair 2 - 2F -SUW-FAB1-ST02,,,,,,,,2026-02-16 08:00,2026-02-17 17:00,,
ZX-16790,Complete Drywall & Inspect - Stair #03 SUW- 2F- FAB1-ST03,Complete,Stair 3 - 2F -SUW-FAB1-ST03,,,,,,,,2025-05-13 08:00,2025-05-19 17:00,2025-05-13 08:00,2025-10-13 17:00
FAB1-ST03B-01,IMPACT - INSTALL/REWORK DRYWALL FRAMING AROUND DOORS - FAB1-ST03B,Complete,Stair 3 - 2F -SUW-FAB1-ST03,,,,,,,,2025-02-10 08:00,2025-02-18 17:00,2025-02-10 08:00,2025-02-18 17:00
FAB1-ST03B-03,INSTALL DOOR FRAMES - FAB1-ST03B,Complete,Stair 3 - 2F -SUW-FAB1-ST03,,,,,,,,2025-02-18 08:00,2025-02-18 17:00,2025-02-18 08:00,2025-02-18 17:00
FAB1-ST03B-04,INSTALL DOOR & HARDWARE - FAB1-ST03B,Not Started,Stair 3 - 2F -SUW-FAB1-ST03,,,,,,,,2025-11-28 08:00,2025-12-04 17:00,,
FAB1-ST03B-05,PAINT & PROTECT DOORS & FRAMES - FAB1-ST03B,Not Started,Stair 3 - 2F -SUW-FAB1-ST03,,,,,,,,2026-02-16 08:00,2026-02-20 17:00,,
ZX-16940,Complete Drywall & Inspect - Stair #20 SUE- 2F- FAB1-ST20,Complete,Stair #20 - 2F -SUE-FAB1-ST20,,,,,,,,2025-05-13 08:00,2025-05-26 17:00,2025-05-13 08:00,2025-05-30 08:00
FAB1-ST20B-01,IMPACT - INSTALL/REWORK DRYWALL FRAMING AROUND DOORS - FAB1-ST20B,Complete,Stair #20 - 2F -SUE-FAB1-ST20,,,,,,,,2025-10-10 08:00,2025-10-13 17:00,2025-10-10 08:00,2025-10-13 17:00
FAB1-ST20B-03,INSTALL DOOR FRAMES - FAB1-ST20B,Complete,Stair #20 - 2F -SUE-FAB1-ST20,,,,,,,,2025-10-13 08:00,2025-10-13 17:00,2025-10-13 08:00,2025-10-13 17:00
FAB1-ST20B-04,INSTALL DOOR & HARDWARE - FAB1-ST20B,Active,Stair #20 - 2F -SUE-FAB1-ST20,,,,,,,,2025-11-07 08:00,2025-11-13 17:00,2025-11-07 08:00,
FAB1-ST20B-05,PAINT & PROTECT DOORS & FRAMES - FAB1-ST20B,Not Started,Stair #20 - 2F -SUE-FAB1-ST20,,,,,,,,2026-02-16 08:00,2026-02-20 17:00,,
ZX-17080,Complete Drywall & Inspect - Stair #21 SUE- 2F- FAB1-ST20,Complete,Stair #21 - 2F -SUE- FAB1-ST21,,,,,,,,2025-05-13 08:00,2025-05-26 17:00,2025-05-13 08:00,2025-08-18 08:00
FAB1-ST21B-01,INSTALL DOOR FRAMES - FAB1-ST21B,Complete,Stair #21 - 2F -SUE- FAB1-ST21,,,,,,,,2025-06-27 08:00,2025-06-27 17:00,2025-06-30 08:00,2025-06-30 16:00
FAB1-ST21B-04,INSTALL DOOR & HARDWARE - FAB1-ST21B,Active,Stair #21 - 2F -SUE- FAB1-ST21,,,,,,,,2025-11-14 08:00,2025-11-20 17:00,2025-11-14 08:00,
FAB1-ST21B-05,PAINT & PROTECT DOORS & FRAMES - FAB1-ST21B,Not Started,Stair #21 - 2F -SUE- FAB1-ST21,,,,,,,,2026-02-16 08:00,2026-02-20 17:00,,
ZX-17110,Complete Drywall & Inspect - Stair #04 SUW- 2F- FAB1-ST04 - MK MARLOW,Complete,Stair #4 SUW- 2F -SUWFAB1-ST04,,,,,,,,2025-06-10 08:00,2025-06-18 17:00,2025-06-10 08:00,2025-09-05 17:00
FAB1-ST04B-01,IMPACT - INSTALL/REWORK DRYWALL FRAMING AROUND DOORS - FAB1-ST04B,Complete,Stair #4 SUW- 2F -SUWFAB1-ST04,,,,,,,,2025-08-25 08:00,2025-08-26 17:00,2025-08-25 08:00,2025-08-26 17:00
FAB1-ST04B-03,INSTALL DOOR FRAMES - FAB1-ST04B,Complete,Stair #4 SUW- 2F -SUWFAB1-ST04,,,,,,,,2025-08-26 08:00,2025-08-26 17:00,2025-08-26 08:00,2025-08-26 17:00
FAB1-ST04B-04,INSTALL DOOR & HARDWARE - FAB1-ST04B,Active,Stair #4 SUW- 2F -SUWFAB1-ST04,,,,,,,,2025-11-06 08:00,2025-11-12 17:00,2025-11-06 08:00,
FAB1-ST04B-05,PAINT & PROTECT DOORS & FRAMES - FAB1-ST04B,Not Started,Stair #4 SUW- 2F -SUWFAB1-ST04,,,,,,,,2026-02-16 08:00,2026-02-20 17:00,,
ZX-17250,SECAI TURNOVER FOR ACELERATION - Drywall & Inspect - Stair #19 SUE- 2F- FAB1-ST19 BAKER/DESCOPE,Complete,Stair #19 - 2F -SUE-FAB1-ST19,,,,,,,,2025-07-17 08:00,2025-07-30 17:00,2025-06-06 08:00,2025-06-06 16:00
FAB1-ST19B-04,INSTALL DOOR & HARDWARE - FAB1-ST19B,Active,Stair #19 - 2F -SUE-FAB1-ST19,,,,,,,,2025-11-14 08:00,2025-11-20 17:00,2025-11-14 08:00,
FAB1-ST19B-05,PAINT & PROTECT DOORS & FRAMES - FAB1-ST19B,Not Started,Stair #19 - 2F -SUE-FAB1-ST19,,,,,,,,2026-02-16 08:00,2026-02-19 17:00,,
ZX-18150,Complete Drywall & Inspect - Stair 18 SUE- 2F- FAB1-ST18,Complete,Stair 18 - 2F -SUE-FAB1-ST18,,,,,,,,2025-10-03 08:00,2025-10-06 17:00,2025-10-03 08:00,2025-10-06 17:00
ZX-18530,Complete Drywall & Inspect - Duct Shaft - 2F-SUE-FAB126507,Complete,Duct Shaft - 2F -SUE-FAB126507,,,,,,,,2025-09-01 08:00,2025-09-05 17:00,2025-09-01 08:00,2025-09-05 17:00
FAB126507B-70,DOOR FRAME HANDED OVER TO SECAI ON 10/14 - FAB126507B,Complete,Duct Shaft - 2F -SUE-FAB126507,,,,,,,,2025-10-14 08:00,2025-10-14 17:00,2025-10-14 08:00,2025-10-14 17:00
FAB126507B-03,INSTALL DOOR FRAME BY SECAI - FAB126507B  - HANDED OVER ON 10/14,Complete,Duct Shaft - 2F -SUE-FAB126507,,,,,,,,2025-10-14 08:00,2025-10-14 17:00,2025-10-14 08:00,2025-11-17 17:00
FAB126507B-04,INSTALL DOOR & HARDWARE - FAB126507B,Active,Duct Shaft - 2F -SUE-FAB126507,,,,,,,,2025-11-18 08:00,2025-11-24 17:00,2025-11-18 08:00,
FAB126507B-05,PAINT & PROTECT DOORS & FRAMES -  FAB126507B,Not Started,Duct Shaft - 2F -SUE-FAB126507,,,,,,,,2026-02-16 08:00,2026-02-19 15:00,,
ZX-2080,Complete Drywall & Inspect - Elevator Hall #01 - 3F-FAB130103,Complete,Elevator Hall 1 - 3F -SUW-FAB130103,,,,,,,,2025-09-03 08:00,2025-09-04 17:00,2025-09-03 08:00,2025-09-04 17:00
FAB130103A-01,IMPACT - INSTALL/REWORK DRYWALL FRAMING AROUND DOORS - FAB130103A,Complete,Elevator Hall 1 - 3F -SUW-FAB130103,,,,,,,,2025-01-20 08:00,2025-01-28 17:00,2025-01-20 08:00,2025-01-27 17:00
FAB130103A-03,INSTALL DOOR FRAMES - FAB130103A,Complete,Elevator Hall 1 - 3F -SUW-FAB130103,,,,,,,,2025-08-12 13:00,2025-08-13 12:00,2025-01-27 00:00,2025-01-27 16:00
FAB130103A-04,INSTALL DOOR & HARDWARE - FAB130103A,Not Started,Elevator Hall 1 - 3F -SUW-FAB130103,,,,,,,,2025-11-21 08:00,2025-11-27 17:00,,
FAB130103A-05,PAINT & PROTECT DOORS & FRAMES -  FAB130103A,Not Started,Elevator Hall 1 - 3F -SUW-FAB130103,,,,,,,,2026-02-16 08:00,2026-02-19 15:00,,
FAB130103B-03,INSTALL DOOR FRAMES - FAB130103B,Complete,Elevator Hall 1 - 3F -SUW-FAB130103,,,,,,,,2025-07-28 08:00,2025-07-28 17:00,2025-07-22 08:00,2025-07-22 17:00
FAB130103B-04,INSTALL DOOR & HARDWARE - FAB130103B,Not Started,Elevator Hall 1 - 3F -SUW-FAB130103,,,,,,,,2025-11-21 08:00,2025-11-27 17:00,,
FAB130103B-05,PAINT & PROTECT DOORS & FRAMES -  FAB130103B,Not Started,Elevator Hall 1 - 3F -SUW-FAB130103,,,,,,,,2026-02-16 08:00,2026-02-19 15:00,,
FAB130103C-01,IMPACT - INSTALL/REWORK DRYWALL FRAMING AROUND DOORS - FAB130103C,Complete,Elevator Hall 1 - 3F -SUW-FAB130103,,,,,,,,2025-03-26 08:00,2025-04-03 17:00,2025-03-26 08:00,2025-04-03 17:00
FAB130103C-03,INSTALL DOOR FRAMES - FAB130103C,Complete,Elevator Hall 1 - 3F -SUW-FAB130103,,,,,,,,2025-08-12 13:00,2025-08-13 12:00,2025-04-03 00:00,2025-04-03 16:00
FAB130103C-04,INSTALL DOOR & HARDWARE - FAB130103C,Not Started,Elevator Hall 1 - 3F -SUW-FAB130103,,,,,,,,2025-11-21 08:00,2025-11-27 17:00,,
FAB130103C-05,PAINT & PROTECT DOORS & FRAMES -  FAB130103C,Not Started,Elevator Hall 1 - 3F -SUW-FAB130103,,,,,,,,2026-02-16 08:00,2026-02-19 15:00,,
FAB130103B-11,IMPACT - SECAI - ADDED FIRE RATED DOORS (CONCEPT FRAMES INC),Complete,Elevator Hall 1 - 3F -SUW-FAB130103,,,,,,,,2025-06-27 08:00,2025-07-17 17:00,2025-06-27 08:00,2025-07-18 10:00
FAB130103B-07,DOOR FRAME PREP AND PLACEMENT- FAB130103B,Complete,Elevator Hall 1 - 3F -SUW-FAB130103,,,,,,,,2025-07-03 08:00,2025-07-09 17:00,2025-07-03 08:00,2025-07-21 17:00
ZX-5620,Complete Drywall & Inspect - Elevator Mech Rm #22 - 1F-FAB116103,Complete,Elevator Mech. Rm 22 - 1F -SUE-FAB116103,,,,,,,,2024-09-10 08:00,2024-09-16 17:00,2024-09-10 08:00,2024-09-16 17:00
FAB116103A-04,INSTALL DOOR & HARDWARE - FAB116103A,Not Started,Elevator Mech. Rm 22 - 1F -SUE-FAB116103,,,,,,,,2025-12-01 08:00,2025-12-05 17:00,,
FAB116103A-05,PAINT & PROTECT DOORS & FRAMES - FAB116103A,Not Started,Elevator Mech. Rm 22 - 1F -SUE-FAB116103,,,,,,,,2026-02-16 08:00,2026-02-19 15:00,,
ZX-5350,Complete Drywall & Inspect - Fire Alarm 22-1F-FAB116116,Complete,Fire Alarm 22 - 1F -FAB116116,,,,,,,,2025-09-12 08:00,2025-09-12 17:00,2025-09-12 08:00,2025-09-16 17:00
ZX-5370,SECAI TOOK OVER FOR ACCELERATION - Control Joint & Inspect - Fire Alarm 22-1F-FAB116116 SECAI INSTALLED DOOR FRAME,Complete,Fire Alarm 22 - 1F -FAB116116,,,,,,,,2025-06-19 08:00,2025-06-20 17:00,2025-06-19 08:00,2025-06-19 17:00
FAB116116A-01,IMPACT - INSTALL/REWORK DRYWALL FRAMING AROUND DOORS - FAB116116A HANDED OVER TO SECAI ON 08/20,Complete,Fire Alarm 22 - 1F -FAB116116,,,,,,,,2025-08-20 08:00,2025-08-21 17:00,2025-08-20 08:00,2025-08-20 17:00
FAB116116A-03,INSTALL DOOR FRAME BY SECAI - FAB116116A HANDED OVER TO SECAI ON 08/20,Complete,Fire Alarm 22 - 1F -FAB116116,,,,,,,,2025-08-20 08:00,2025-08-20 17:00,2025-08-20 08:00,2025-09-06 08:00
FAB116116A-04,INSTALL DOOR & HARDWARE - FAB116116A,Active,Fire Alarm 22 - 1F -FAB116116,,,,,,,,2025-10-01 08:00,2025-10-07 17:00,2025-10-01 08:00,
FAB116116A-05,PAINT & PROTECT DOORS & FRAMES - FAB116116A,Not Started,Fire Alarm 22 - 1F -FAB116116,,,,,,,,2026-02-16 08:00,2026-02-19 15:00,,
FAB116116A-11,IMPACT - PROCUREMENT - REORDERED DOORS (JAMB DEPTH ISSUE),Complete,Fire Alarm 22 - 1F -FAB116116,,,,,,,,2025-06-20 08:00,2025-08-14 17:00,2025-06-20 08:00,2025-06-30 17:00
ZX-5530,SECAI TOOK OVER FOR ACCELERATION - Drywall & Inspect - Airlock 22-1F-FAB116111,Complete,Air Lock 22 - 1F -SUE-FAB116111,,,,,,,,2025-06-10 08:00,2025-06-10 08:00,2025-06-10 08:00,2025-06-10 08:00
FAB116111A-01,INSTALL DOOR FRAME BY SECAI - FAB116111A HANDED OVER TO SECAI ON 07/18,Complete,Air Lock 22 - 1F -SUE-FAB116111,,,,,,,,2025-08-29 08:00,2025-09-04 17:00,2025-08-29 08:00,2025-09-05 08:00
FAB116111A-04,INSTALL DOOR & HARDWARE - FAB116111A,Not Started,Air Lock 22 - 1F -SUE-FAB116111,,,,,,,,2025-12-05 08:00,2025-12-11 17:00,,
FAB116111A-05,PAINT & PROTECT DOORS & FRAMES - FAB116111A,Not Started,Air Lock 22 - 1F -SUE-FAB116111,,,,,,,,2026-02-16 08:00,2026-02-19 15:00,,
FAB116111B-01,IMPACT - INSTALL/REWORK DRYWALL FRAMING AROUND DOORS - FAB116111B,Complete,Air Lock 22 - 1F -SUE-FAB116111,,,,,,,,2025-06-10 08:00,2025-06-18 17:00,2025-03-10 08:00,2025-03-17 08:00
FAB116111B-03,INSTALL DOOR FRAMES - FAB116111B,Complete,Air Lock 22 - 1F -SUE-FAB116111,,,,,,,,2025-09-23 13:00,2025-09-24 12:00,2025-03-17 00:00,2025-03-17 16:00
FAB116111B-04,INSTALL DOOR & HARDWARE - FAB116111B,Active,Air Lock 22 - 1F -SUE-FAB116111,,,,,,,,2025-08-22 08:00,2025-08-28 17:00,2025-08-22 08:00,
FAB116111B-05,PAINT & PROTECT DOORS & FRAMES - FAB116111B,Not Started,Air Lock 22 - 1F -SUE-FAB116111,,,,,,,,2026-02-16 08:00,2026-02-19 15:00,,
FAB116111C-01,IMPACT - INSTALL/REWORK DRYWALL FRAMING AROUND DOORS - FAB116111C,Complete,Air Lock 22 - 1F -SUE-FAB116111,,,,,,,,2025-06-10 08:00,2025-06-18 17:00,2025-04-01 08:00,2025-04-07 08:00
FAB116111C-03,INSTALL DOOR FRAMES - FAB116111C,Complete,Air Lock 22 - 1F -SUE-FAB116111,,,,,,,,2025-09-23 13:00,2025-09-24 12:00,2025-04-07 00:00,2025-04-07 16:00
FAB116111C-04,INSTALL DOOR & HARDWARE - FAB116111C,Active,Air Lock 22 - 1F -SUE-FAB116111,,,,,,,,2025-05-30 08:00,2025-06-05 17:00,2025-05-30 08:00,
FAB116111C-05,PAINT & PROTECT DOORS & FRAMES - FAB116111C,Not Started,Air Lock 22 - 1F -SUE-FAB116111,,,,,,,,2026-02-16 08:00,2026-02-19 15:00,,
FAB116111D-01,IMPACT - INSTALL/REWORK DRYWALL FRAMING AROUND DOORS - FAB116111D,Complete,Air Lock 22 - 1F -SUE-FAB116111,,,,,,,,2025-06-10 08:00,2025-06-18 17:00,2025-05-01 08:00,2025-05-01 08:00
FAB116111D-03,INSTALL DOOR FRAMES - FAB116111D,Complete,Air Lock 22 - 1F -SUE-FAB116111,,,,,,,,2025-10-10 08:00,2025-10-10 17:00,2025-10-10 08:00,2025-10-10 17:00
FAB116111D-04,INSTALL DOOR & HARDWARE - FAB116111D,Active,Air Lock 22 - 1F -SUE-FAB116111,,,,,,,,2025-10-13 08:00,2025-10-17 17:00,2025-10-13 08:00,
FAB116111D-05,PAINT & PROTECT DOORS & FRAMES - FAB116111D,Not Started,Air Lock 22 - 1F -SUE-FAB116111,,,,,,,,2026-02-16 08:00,2026-02-19 15:00,,
FAB116111E-13,DOOR FRAME HANDED OVER TO SECAI ON 07/18 - FAB116111E,Complete,Air Lock 22 - 1F -SUE-FAB116111,,,,,,,,2025-07-18 08:00,2025-07-18 17:00,2025-07-18 08:00,2025-07-18 08:00
FAB116111E-03,INSTALL DOOR FRAME BY SECAI - FAB116111E HANDED OVER TO SECAI ON 07/18,Complete,Air Lock 22 - 1F -SUE-FAB116111,,,,,,,,2025-07-18 08:00,2025-07-18 17:00,2025-07-18 08:00,2025-09-10 08:00
FAB116111E-04,INSTALL DOOR & HARDWARE - FAB116111E,Active,Air Lock 22 - 1F -SUE-FAB116111,,,,,,,,2025-10-01 08:00,2025-10-07 17:00,2025-10-01 08:00,
FAB116111E-05,PAINT & PROTECT DOORS & FRAMES - FAB116111E,Not Started,Air Lock 22 - 1F -SUE-FAB116111,,,,,,,,2026-02-16 08:00,2026-02-19 15:00,,
FAB116111F-01,IMPACT - INSTALL/REWORK DRYWALL FRAMING AROUND DOORS - FAB116111F,Complete,Air Lock 22 - 1F -SUE-FAB116111,,,,,,,,2025-06-10 08:00,2025-06-18 17:00,2025-03-24 08:00,2025-04-01 08:00
FAB116111F-03,INSTALL DOOR FRAMES - FAB116111F,Complete,Air Lock 22 - 1F -SUE-FAB116111,,,,,,,,2025-09-23 13:00,2025-09-24 12:00,2025-04-01 00:00,2025-04-01 16:00
FAB116111F-04,INSTALL DOOR & HARDWARE - FAB116111F,Active,Air Lock 22 - 1F -SUE-FAB116111,,,,,,,,2025-10-01 08:00,2025-10-07 17:00,2025-10-01 08:00,
FAB116111F-05,PAINT & PROTECT DOORS & FRAMES - FAB116111F,Not Started,Air Lock 22 - 1F -SUE-FAB116111,,,,,,,,2026-02-16 08:00,2026-02-19 15:00,,
FAB116111E-11,IMPACT - PROCUREMENT - Reordered doors (Wall Thickness and Door Swing Design Changes),Complete,Air Lock 22 - 1F -SUE-FAB116111,,,,,,,,2025-06-09 08:00,2025-07-21 17:00,2025-06-09 08:00,2025-07-14 17:00
ZX-5680,SECAI TURNOVER FOR ACELERATION - Drywall & Inspect - Fire Riser Rm 3-1F-SUE-FAB116107,Complete,Fire Riser Rm 3 - 1F -SUE-FAB116107,,,,,,,,2025-06-30 08:00,2025-07-11 17:00,2025-06-30 08:00,2025-06-30 17:00
FAB116107A-03,INSTALL DOOR FRAMES - FAB116107A,Complete,Fire Riser Rm 3 - 1F -SUE-FAB116107,,,,,,,,2025-07-30 08:00,2025-07-30 17:00,2025-07-30 08:00,2025-07-30 17:00
FAB116107A-04,INSTALL DOOR & HARDWARE - FAB116107A,Active,Fire Riser Rm 3 - 1F -SUE-FAB116107,,,,,,,,2025-08-12 08:00,2025-08-18 17:00,2025-08-12 08:00,
FAB116107A-05,PAINT & PROTECT DOORS & FRAMES - FAB116107A,Not Started,Fire Riser Rm 3 - 1F -SUE-FAB116107,,,,,,,,2026-02-16 08:00,2026-02-17 17:00,,
FAB116107A-07,DOOR FRAME PAINT & 1ST COAT - FAB116107A,Complete,Fire Riser Rm 3 - 1F -SUE-FAB116107,,,,,,,,2025-08-06 08:00,2025-08-08 17:00,2025-08-06 08:00,2025-08-08 17:00
ZX-5650,Complete Drywall & Inspect - Duct Shaft - 1F-SUE-FAB116109,Complete,Duct Shaft - 1F -SUE-FAB116109,,,,,,,,2025-09-01 08:00,2025-09-05 17:00,2025-09-01 08:00,2025-09-05 17:00
FAB116109A-01,IMPACT - INSTALL/REWORK DRYWALL FRAMING AROUND DOORS - FAB116109A,Complete,Duct Shaft - 1F -SUE-FAB116109,,,,,,,,2025-05-12 08:00,2025-05-20 17:00,2025-05-12 08:00,2025-05-16 17:00
FAB116109A-03,INSTALL DOOR FRAMES - FAB116109A,Complete,Duct Shaft - 1F -SUE-FAB116109,,,,,,,,2025-09-19 13:00,2025-09-22 12:00,2025-05-15 00:00,2025-05-16 16:00
FAB116109A-04,INSTALL DOOR & HARDWARE - FAB116109A,Active,Duct Shaft - 1F -SUE-FAB116109,,,,,,,,2025-10-14 08:00,2025-10-20 17:00,2025-10-14 08:00,
FAB116109A-05,PAINT & PROTECT DOORS & FRAMES - FAB116109A,Not Started,Duct Shaft - 1F -SUE-FAB116109,,,,,,,,2026-02-16 08:00,2026-02-19 15:00,,
FAB116109B-01,IMPACT - INSTALL/REWORK DRYWALL FRAMING AROUND DOORS - FAB116109B,Complete,Duct Shaft - 1F -SUE-FAB116109,,,,,,,,2025-09-15 08:00,2025-09-23 17:00,2025-07-15 08:00,2025-07-18 17:00
FAB116109B-03,INSTALL DOOR FRAMES - FAB116109B,Complete,Duct Shaft - 1F -SUE-FAB116109,,,,,,,,2025-09-25 08:00,2025-09-25 17:00,2025-07-24 08:00,2025-07-25 17:00
FAB116109B-04,INSTALL DOOR & HARDWARE - FAB116109B,Active,Duct Shaft - 1F -SUE-FAB116109,,,,,,,,2025-08-20 08:00,2025-08-26 17:00,2025-08-20 08:00,
FAB116109B-05,PAINT & PROTECT DOORS & FRAMES - FAB116109B,Not Started,Duct Shaft - 1F -SUE-FAB116109,,,,,,,,2026-02-16 08:00,2026-02-17 17:00,,
ZX-5590,Drywall & Inspect - Mechanical Rm 2-1F-SUE-FAB116203,Complete,Mechanical Rm 2 - 1F -SUE-FAB116203,,,,,,,,2024-08-15 08:00,2024-08-28 17:00,2024-08-15 08:00,2024-08-28 17:00
FAB116203A-03,INSTALL DOOR FRAMES - FAB116203A HANDED OVER TO SECAI 07/07,Complete,Mechanical Rm 2 - 1F -SUE-FAB116203,,,,,,,,2025-07-09 08:00,2025-07-22 17:00,2025-07-09 08:00,2025-09-18 17:00
FAB116203A-04,INSTALL DOOR & HARDWARE - FAB116203A,Active,Mechanical Rm 2 - 1F -SUE-FAB116203,,,,,,,,2025-09-19 08:00,2025-09-25 17:00,2025-09-19 08:00,
FAB116203A-05,PAINT & PROTECT DOORS & FRAMES - FAB116203A,Not Started,Mechanical Rm 2 - 1F -SUE-FAB116203,,,,,,,,2026-02-16 08:00,2026-02-19 15:00,,
FAB116203B-03,INSTALL DOOR FRAMES - FAB116203B,Complete,Mechanical Rm 2 - 1F -SUE-FAB116203,,,,,,,,2025-07-11 08:00,2025-07-11 17:00,2025-07-07 08:00,2025-07-07 17:00
FAB116203B-04,INSTALL DOOR & HARDWARE - FAB116203B,Active,Mechanical Rm 2 - 1F -SUE-FAB116203,,,,,,,,2025-08-29 08:00,2025-09-04 17:00,2025-08-29 08:00,
FAB116203B-05,PAINT & PROTECT DOORS & FRAMES - FAB116203B,Not Started,Mechanical Rm 2 - 1F -SUE-FAB116203,,,,,,,,2026-02-16 08:00,2026-02-19 15:00,,
FAB116203C-03,INSTALL DOOR FRAMES - FAB116203C,Complete,Mechanical Rm 2 - 1F -SUE-FAB116203,,,,,,,,2025-07-11 08:00,2025-07-11 17:00,2025-07-11 08:00,2025-07-11 17:00
FAB116203C-04,INSTALL DOOR & HARDWARE - FAB116203C,Not Started,Mechanical Rm 2 - 1F -SUE-FAB116203,,,,,,,,2025-11-21 08:00,2025-11-27 17:00,,
FAB116203C-05,PAINT & PROTECT DOORS & FRAMES - FAB116203C,Not Started,Mechanical Rm 2 - 1F -SUE-FAB116203,,,,,,,,2026-02-16 08:00,2026-02-19 15:00,,
FAB116203B-07,DOOR FRAME PAINT & 1ST COAT - FAB116203B,Complete,Mechanical Rm 2 - 1F -SUE-FAB116203,,,,,,,,2025-08-25 08:00,2025-08-27 17:00,2025-08-25 08:00,2025-08-27 17:00
FAB116203A-13,DOOR FRAME HANDED OVER TO SECAI ON 07/07- FAB116203A,Complete,Mechanical Rm 2 - 1F -SUE-FAB116203,,,,,,,,2025-07-07 08:00,2025-07-07 17:00,2025-07-07 08:00,2025-07-07 16:00
ZX-5890,Complete Drywall & Inspect - Pedestrian Walkway-1F-FAB114108,Complete,Pedestrian Walkway - 1F -FIZ-FAB114108,,,,,,,,2025-09-03 08:00,2025-09-16 17:00,2024-11-04 08:00,2024-11-11 16:00
ZX-6100,Complete Drywall & Inspect - Elevator #22 - 1F-1FAB-EL22,Complete,Elevator 22 - 1F -SUE-FAB1-EL22,,,,,,,,2025-07-18 08:00,2025-07-31 17:00,2025-07-14 08:00,2025-08-11 17:00
ZX-5830,Complete Drywall & Inspect - IT/Security 22-1F-FAB116112,Complete,IT/Security 22 - 1F -TR-SUE-FAB116112,,,,,,,,2025-09-12 08:00,2025-09-25 17:00,2025-05-16 08:00,2025-05-30 17:00
TR-FAB116112A-01,IMPACT - INSTALL/REWORK DRYWALL FRAMING AROUND DOORS - TR - FAB116112A,Complete,IT/Security 22 - 1F -TR-SUE-FAB116112,,,,,,,,2025-09-01 08:00,2025-09-09 17:00,2025-09-05 08:00,2025-09-05 17:00
TR-FAB116112A-03,INSTALL DOOR FRAME BY SECAI - TR - FAB116112A,Complete,IT/Security 22 - 1F -TR-SUE-FAB116112,,,,,,,,2025-09-05 08:00,2025-09-05 17:00,2025-09-05 08:00,2025-09-29 08:00
TR-FAB116112A-04,INSTALL DOOR & HARDWARE - TR - FAB116112A,Active,IT/Security 22 - 1F -TR-SUE-FAB116112,,,,,,,,2025-10-02 08:00,2025-10-08 17:00,2025-10-02 08:00,
TR-FAB116112A-05,PAINT & PROTECT DOORS & FRAMES -  TR - FAB116112A,Not Started,IT/Security 22 - 1F -TR-SUE-FAB116112,,,,,,,,2026-02-16 08:00,2026-02-19 15:00,,
TR-FAB116112A-11,IMPACT - PROCUREMENT - Reordered doors (Wall Thickness and Door Swing Design Changes),Complete,IT/Security 22 - 1F -TR-SUE-FAB116112,,,,,,,,2025-06-20 08:00,2025-08-14 17:00,2025-04-14 08:00,2025-05-12 17:00
ZX-6010,SECAI TURNOVER FOR ACELERATION - Drywall & Inspect - Exit Passageway 22-1F-FAB116106 - BAKER/DESCOPE,Complete,Exit Passageway 22 - 1F -SUE-FAB116106,,,,,,,,2025-10-17 13:00,2025-10-31 12:00,2025-06-10 12:00,2025-06-10 12:00
FAB116106B-04,INSTALL DOOR & HARDWARE - FAB116106B,Not Started,Exit Passageway 22 - 1F -SUE-FAB116106,,,,,,,,2025-12-05 08:00,2025-12-11 17:00,,
FAB116106B-05,PAINT & PROTECT DOORS & FRAMES - FAB116106B,Not Started,Exit Passageway 22 - 1F -SUE-FAB116106,,,,,,,,2026-02-16 08:00,2026-02-19 15:00,,
FAB116106B-03,INSTALL DOOR FRAMES - FAB116106B,Complete,Exit Passageway 22 - 1F -SUE-FAB116106,,,,,,,,2025-06-13 08:00,2025-06-13 17:00,2025-06-13 08:00,2025-06-13 16:00
ZX-6160,Complete Drywall & Inspect - I/O Rm 1-1F-SUE-FAB116108,Complete,I/O Rm 1 - 1F -SUE-FAB116108,,,,,,,,2025-08-19 08:00,2025-08-25 17:00,2025-08-19 08:00,2025-08-25 17:00
FAB116108A-01,IMPACT - INSTALL/REWORK DRYWALL FRAMING AROUND DOORS - FAB116108A,Complete,I/O Rm 1 - 1F -SUE-FAB116108,,,,,,,,2025-06-25 08:00,2025-07-03 17:00,2025-06-25 08:00,2025-06-25 17:00
FAB116108A-03,INSTALL DOOR FRAMES - FAB116108A,Complete,I/O Rm 1 - 1F -SUE-FAB116108,,,,,,,,2025-08-07 08:00,2025-08-07 17:00,2025-06-26 08:00,2025-06-26 17:00
FAB116108A-04,INSTALL DOOR & HARDWARE - FAB116108A,Active,I/O Rm 1 - 1F -SUE-FAB116108,,,,,,,,2025-07-01 08:00,2025-07-07 17:00,2025-07-01 08:00,
FAB116108A-05,PAINT & PROTECT DOORS & FRAMES - FAB116108A,Not Started,I/O Rm 1 - 1F -SUE-FAB116108,,,,,,,,2026-02-16 08:00,2026-02-19 15:00,,
ZX-6130,Complete Drywall & Inspect - Duct Shaft Vestibule - 1F-SUE-FAB116205,Complete,Duct Shaft Vestibule - 1F -SUE-FAB116205,,,,,,,,2025-09-22 08:00,2025-10-03 17:00,2024-12-03 08:00,2024-12-09 16:00
FAB116205A-03,INSTALL DOOR FRAMES - FAB116205A,Complete,Duct Shaft Vestibule - 1F -SUE-FAB116205,,,,,,,,2025-10-22 08:00,2025-10-22 17:00,2025-10-22 08:00,2025-10-22 17:00
FAB116205A-04,INSTALL DOOR & HARDWARE - FAB116205A,Active,Duct Shaft Vestibule - 1F -SUE-FAB116205,,,,,,,,2025-11-13 08:00,2025-11-19 17:00,2025-11-13 08:00,
FAB116205A-05,PAINT & PROTECT DOORS & FRAMES - FAB116205A,Not Started,Duct Shaft Vestibule - 1F -SUE-FAB116205,,,,,,,,2026-02-16 08:00,2026-02-19 15:00,,
ZX-6070,Complete Drywall & Inspect - Duct Shaft Vestibule - 1F-SUE-FAB116206,Complete,Duct Shaft Vestibule - 1F -SUE-FAB116206,,,,,,,,2025-10-06 08:00,2025-10-07 17:00,2025-10-06 08:00,2025-10-07 17:00
FAB116206A-01,IMPACT - INSTALL/REWORK DRYWALL FRAMING AROUND DOORS - FAB116206A,Complete,Duct Shaft Vestibule - 1F -SUE-FAB116206,,,,,,,,2025-08-13 08:00,2025-08-21 17:00,2025-08-13 08:00,2025-08-21 17:00
FAB116206A-03,INSTALL DOOR FRAMES - FAB116206A,Complete,Duct Shaft Vestibule - 1F -SUE-FAB116206,,,,,,,,2025-08-22 08:00,2025-08-22 17:00,2025-08-22 08:00,2025-08-22 17:00
FAB116206A-04,INSTALL DOOR & HARDWARE - FAB116206A,Active,Duct Shaft Vestibule - 1F -SUE-FAB116206,,,,,,,,2025-09-24 08:00,2025-09-30 17:00,2025-09-24 08:00,
FAB116206A-05,PAINT & PROTECT DOORS & FRAMES - FAB116206A,Not Started,Duct Shaft Vestibule - 1F -SUE-FAB116206,,,,,,,,2026-02-16 08:00,2026-02-19 15:00,,
FAB116206A-11,IMPACT - SECAI - DIRECTIVE TO HOLD FRAME INSTALLATION,Complete,Duct Shaft Vestibule - 1F -SUE-FAB116206,,,,,,,,2025-08-21 08:00,2025-08-21 17:00,2025-08-21 08:00,2025-08-21 17:00
ZX-6370,Complete Drywall & Inspect - OAC Mechanical RM-1F-FAB116101,Complete,OAC Mechanical RM - 1F -FIZ-FAB116101,,,,,,,,2025-09-22 08:00,2025-09-22 17:00,2025-09-22 08:00,2025-09-22 17:00
FAB116101B-02,INSTALL DOOR FRAMES - FAB116101B,Not Started,OAC Mechanical RM - 1F -FIZ-FAB116101,,,,,,,,2025-11-28 08:00,2025-11-28 17:00,,
FAB116101B-04,INSTALL DOOR & HARDWARE - FAB116101B,Not Started,OAC Mechanical RM - 1F -FIZ-FAB116101,,,,,,,,2025-12-02 08:00,2025-12-08 17:00,,
FAB116101B-05,PAINT & PROTECT DOORS & FRAMES - FAB116101B,Not Started,OAC Mechanical RM - 1F -FIZ-FAB116101,,,,,,,,2026-02-16 08:00,2026-02-19 15:00,,
FAB116101E-03,INSTALL DOOR FRAMES - FAB116101E,Not Started,OAC Mechanical RM - 1F -FIZ-FAB116101,,,,,,,,2025-11-21 08:00,2025-11-21 17:00,,
FAB116101E-04,INSTALL DOOR & HARDWARE - FAB116101E,Not Started,OAC Mechanical RM - 1F -FIZ-FAB116101,,,,,,,,2025-11-24 08:00,2025-11-28 17:00,,
FAB116101E-05,PAINT & PROTECT DOORS & FRAMES - FAB116101E,Not Started,OAC Mechanical RM - 1F -FIZ-FAB116101,,,,,,,,2026-02-16 08:00,2026-02-19 15:00,,
FAB116101B-08,IMPACT - TEMP UTILITY LINE RUNNING TROUGH THE DOOR OPENING - FAB116101B,Active,OAC Mechanical RM - 1F -FIZ-FAB116101,,,,,,,,2025-06-13 08:00,2025-07-03 17:00,2025-06-13 08:00,
ZX-6580,Complete Drywall & Inspect - Duct Shaft - 1F-SUE-FAB116102,Complete,Duct Shaft - 1F -SUE-FAB116102,,,,,,,,2025-09-01 08:00,2025-09-05 17:00,2025-09-01 08:00,2025-09-05 17:00
FAB116102A-01,IMPACT - INSTALL/REWORK DRYWALL FRAMING AROUND DOORS - FAB116102A,Complete,Duct Shaft - 1F -SUE-FAB116102,,,,,,,,2025-03-25 08:00,2025-04-02 17:00,2025-03-25 08:00,2025-04-02 17:00
FAB116102A-03,INSTALL DOOR FRAMES - FAB116102A,Complete,Duct Shaft - 1F -SUE-FAB116102,,,,,,,,2025-09-10 13:00,2025-09-11 12:00,2025-04-02 00:00,2025-04-02 16:00
FAB116102A-04,INSTALL DOOR & HARDWARE - FAB116102A,Active,Duct Shaft - 1F -SUE-FAB116102,,,,,,,,2025-05-30 08:00,2025-06-05 17:00,2025-05-30 08:00,
FAB116102A-05,PAINT & PROTECT DOORS & FRAMES - FAB116102A,Not Started,Duct Shaft - 1F -SUE-FAB116102,,,,,,,,2026-02-16 08:00,2026-02-17 17:00,,
ZX-6310,SECAI TURNOVER FOR ACELERATION - Drywall & Inspect - Elevator Hall #22 - 1F-FAB116110 BAKER/DESCOPE,Complete,Elevator Hall 22 - 1F -SUE-FAB116110,,,,,,,,2025-09-19 08:00,2025-10-02 17:00,2025-06-27 08:00,2025-06-27 16:00
FAB116110B-01,IMPACT - REWORK DRYWALL FOR/AND DOOR FRAME INSTALL BY SECAI - FAB116110B,Complete,Elevator Hall 22 - 1F -SUE-FAB116110,,,,,,,,2025-09-17 08:00,2025-09-25 17:00,2025-06-27 08:00,2025-06-27 16:00
FAB116110B-05,PAINT & PROTECT DOORS & FRAMES - FAB116110B,Not Started,Elevator Hall 22 - 1F -SUE-FAB116110,,,,,,,,2026-02-16 08:00,2026-02-17 17:00,,
FAB116110B-04A,INSTALL DOOR & HARDWARE - FAB116110B,Active,Elevator Hall 22 - 1F -SUE-FAB116110,,,,,,,,2025-08-21 08:00,2025-08-27 17:00,2025-08-21 08:00,
FAB116110B-11,IMPACT - PROCUREMENT - REORDERED DOORS (JAMB DEPTH ISSUE),Complete,Elevator Hall 22 - 1F -SUE-FAB116110,,,,,,,,2025-06-09 08:00,2025-07-29 10:00,2025-06-09 08:00,2025-07-14 10:00
FAB116105E-01,IMPACT - INSTALL/REWORK DRYWALL FRAMING AROUND DOORS - FAB116105E,Complete,Elevator Hall 22 - 1F -SUE-FAB116110,,,,,,,,2025-01-13 08:00,2025-01-13 17:00,2025-01-13 08:00,2025-01-13 17:00
FAB116105E-03,INSTALL DOOR FRAMES - FAB116105E,Complete,Elevator Hall 22 - 1F -SUE-FAB116110,,,,,,,,2025-01-14 08:00,2025-01-14 17:00,2025-01-14 08:00,2025-01-14 17:00
FAB116105E-04,INSTALL DOOR & HARDWARE - FAB116105E,Active,Elevator Hall 22 - 1F -SUE-FAB116110,,,,,,,,2025-01-14 08:00,2025-01-20 17:00,2025-01-14 08:00,
FAB116105E-05,PAINT & PROTECT DOORS & FRAMES - FAB116105E,Not Started,Elevator Hall 22 - 1F -SUE-FAB116110,,,,,,,,2026-02-16 08:00,2026-02-17 17:00,,
FAB116105B-04,DOOR INSTALL - FAB116105B (OHC),Not Started,Elevator Hall 22 - 1F -SUE-FAB116110,,,,,,,,2025-12-12 08:00,2025-12-15 17:00,,
FAB116105B-60,IMPACT - TEMP DOORS TO BE REMOVED - FAB116105B,Active,Elevator Hall 22 - 1F -SUE-FAB116110,,,,,,,,2025-07-03 08:00,2025-09-02 15:00,2025-07-03 07:00,
FAB116110B-03A,INSTALL DOOR FRAMES - REORDERED DOORS (JAMB DEPTH ISSUE) - FAB116110B,Complete,Elevator Hall 22 - 1F -SUE-FAB116110,,,,,,,,2025-07-25 08:00,2025-07-25 17:00,2025-07-25 08:00,2025-07-25 17:00
ZX-6490,Complete Drywall & Inspect - Duct Shaft Vestibule - 1F-SUE-FAB116112 (MK MARLOW),Complete,Duct Shaft Vestibule - 1F -SUE-FAB116112,,,,,,,,2025-09-10 08:00,2025-09-23 17:00,2025-05-23 08:00,2025-06-02 16:00
FAB116112A-01,IMPACT - INSTALL/REWORK DRYWALL FRAMING AROUND DOORS - FAB116112A,Complete,Duct Shaft Vestibule - 1F -SUE-FAB116112,,,,,,,,2025-05-12 08:00,2025-05-13 17:00,2025-05-12 08:00,2025-05-13 17:00
FAB116112A-03,INSTALL DOOR FRAMES - FAB116112A,Complete,Duct Shaft Vestibule - 1F -SUE-FAB116112,,,,,,,,2025-09-30 13:00,2025-10-01 12:00,2025-05-13 00:00,2025-05-14 16:00
FAB116112A-04,INSTALL DOOR & HARDWARE - FAB116112A,Active,Duct Shaft Vestibule - 1F -SUE-FAB116112,,,,,,,,2025-10-01 08:00,2025-10-07 17:00,2025-10-01 08:00,
FAB116112A-05,PAINT & PROTECT DOORS & FRAMES - FAB116112A,Not Started,Duct Shaft Vestibule - 1F -SUE-FAB116112,,,,,,,,2026-02-16 08:00,2026-02-19 15:00,,
ZX-6640,Drywall & Inspect - Mechanical Rm1-1F-SUE-FAB116201,Complete,Mechanical Rm1 - 1F -SUE-FAB116201,,,,,,,,2024-09-12 08:00,2024-09-25 17:00,2024-09-12 08:00,2024-09-25 17:00
FAB116201B-04,INSTALL DOOR & HARDWARE - FAB116201B,Active,Mechanical Rm1 - 1F -SUE-FAB116201,,,,,,,,2025-11-07 08:00,2025-11-13 17:00,2025-11-07 08:00,
FAB116201B-05,PAINT & PROTECT DOORS & FRAMES - FAB116201B,Not Started,Mechanical Rm1 - 1F -SUE-FAB116201,,,,,,,,2026-02-16 08:00,2026-02-20 17:00,,
FAB116201C-01,IMPACT - INSTALL/REWORK DRYWALL FRAMING AROUND DOORS - FAB116201C,Complete,Mechanical Rm1 - 1F -SUE-FAB116201,,,,,,,,2025-07-07 08:00,2025-07-07 17:00,2025-07-07 08:00,2025-07-07 17:00
FAB116201C-02,DOOR FRAME HANDED OVER TO SECAI 07/10 - FAB116201C,Complete,Mechanical Rm1 - 1F -SUE-FAB116201,,,,,,,,2025-07-07 08:00,2025-07-07 17:00,2025-07-07 08:00,2025-07-07 17:00
FAB116201C-03,INSTALL DOOR FRAME BY SECAI - FAB116201C HANDED OVER 07/10,Complete,Mechanical Rm1 - 1F -SUE-FAB116201,,,,,,,,2025-07-07 08:00,2025-07-07 17:00,2025-07-07 08:00,2025-09-18 08:00
FAB116201C-04,INSTALL DOOR & HARDWARE - FAB116201C,Active,Mechanical Rm1 - 1F -SUE-FAB116201,,,,,,,,2025-09-19 08:00,2025-09-25 17:00,2025-09-19 08:00,
FAB116201C-05,PAINT & PROTECT DOORS & FRAMES - FAB116201C,Not Started,Mechanical Rm1 - 1F -SUE-FAB116201,,,,,,,,2026-02-16 08:00,2026-02-20 17:00,,
 FAB116201A-04,INSTALL DOOR & HARDWARE - FAB116201A,Not Started,Mechanical Rm1 - 1F -SUE-FAB116201,,,,,,,,2025-11-21 08:00,2025-11-27 17:00,,
 FAB116201A-05,PAINT & PROTECT DOORS & FRAMES - FAB116201A,Not Started,Mechanical Rm1 - 1F -SUE-FAB116201,,,,,,,,2026-02-16 08:00,2026-02-19 17:00,,
 FAB116201D-03,INSTALL DOOR FRAMES - FAB116201D,Complete,Mechanical Rm1 - 1F -SUE-FAB116201,,,,,,,,2025-07-10 08:00,2025-07-10 17:00,2025-06-23 08:00,2025-06-23 16:00
 FAB116201D-04,INSTALL DOOR & HARDWARE - FAB116201D,Active,Mechanical Rm1 - 1F -SUE-FAB116201,,,,,,,,2025-08-28 08:00,2025-09-03 17:00,2025-08-28 08:00,
 FAB116201D-05,PAINT & PROTECT DOORS & FRAMES - FAB116201D,Not Started,Mechanical Rm1 - 1F -SUE-FAB116201,,,,,,,,2026-02-16 08:00,2026-02-19 17:00,,
FAB116201A-03,INSTALL DOOR FRAMES - FAB116201A,Complete,Mechanical Rm1 - 1F -SUE-FAB116201,,,,,,,,2025-08-11 08:00,2025-08-11 17:00,2025-08-11 08:00,2025-08-11 17:00
FAB116201B-03,INSTALL DOOR FRAMES - FAB116201B,Complete,Mechanical Rm1 - 1F -SUE-FAB116201,,,,,,,,2025-11-06 08:00,2025-11-06 17:00,2025-11-06 08:00,2025-11-06 17:00
ZX-6610,SECAI TURNOVER FOR ACELERATION - Drywall & Inspect - Exit Passageway 21-1F-FAB116202 - BAKER/DESCOPE,Complete,Exit Passageway 21 - 1F -SUE-FAB116202,,,,,,,,2025-06-10 08:00,2025-06-10 08:00,2025-06-10 08:00,2025-06-10 08:00
FAB116202B-02,INSTALL DOOR FRAMES - FAB116202B,Complete,Exit Passageway 21 - 1F -SUE-FAB116202,,,,,,,,2025-06-26 08:00,2025-06-26 17:00,2025-06-25 08:00,2025-06-25 17:00
FAB116202B-07,DOOR FRAME PAINT & 1ST COAT - FAB116202B,Complete,Exit Passageway 21 - 1F -SUE-FAB116202,,,,,,,,2025-08-26 08:00,2025-08-28 17:00,2025-08-26 08:00,2025-08-26 17:00
FAB116202B-04,INSTALL DOOR & HARDWARE - FAB116202B,Active,Exit Passageway 21 - 1F -SUE-FAB116202,,,,,,,,2025-08-27 08:00,2025-09-02 17:00,2025-08-27 08:00,
FAB116202B-05,PAINT & PROTECT DOORS & FRAMES - FAB116202B,Not Started,Exit Passageway 21 - 1F -SUE-FAB116202,,,,,,,,2026-02-16 08:00,2026-02-19 15:00,,
FAB116202D-01,INSTALL DOOR FRAMES - FAB116202D,Complete,Exit Passageway 21 - 1F -SUE-FAB116202,,,,,,,,2025-07-29 08:00,2025-07-29 17:00,2025-07-29 08:00,2025-07-29 08:00
FAB116202D-04,INSTALL DOOR & HARDWARE - FAB116202D,Active,Exit Passageway 21 - 1F -SUE-FAB116202,,,,,,,,2025-10-06 08:00,2025-10-10 17:00,2025-10-06 08:00,
FAB116202D-05,PAINT & PROTECT DOORS & FRAMES - FAB116202D,Not Started,Exit Passageway 21 - 1F -SUE-FAB116202,,,,,,,,2026-02-16 08:00,2026-02-19 15:00,,
FAB116202D-11,IMPACT - PROCUREMENT - Reordered doors (Wall Thickness and Door Swing Design Changes),Complete,Exit Passageway 21 - 1F -SUE-FAB116202,,,,,,,,2025-07-10 08:00,2025-07-31 17:00,2025-06-09 08:00,2025-07-14 17:00
ZX-6550,Complete Drywall & Inspect - Duct Shaft - 1F-SUE-FAB116204,Complete,Duct Shaft - 1F -SUE-FAB116204,,,,,,,,2025-09-01 08:00,2025-09-05 17:00,2025-09-01 08:00,2025-09-05 17:00
FAB116204A-03,INSTALL DOOR FRAMES - FAB116204A,Not Started,Duct Shaft - 1F -SUE-FAB116204,,,,,,,,2025-11-21 08:00,2025-11-21 17:00,,
FAB116204A-04,INSTALL DOOR & HARDWARE - FAB116204A,Not Started,Duct Shaft - 1F -SUE-FAB116204,,,,,,,,2025-11-24 08:00,2025-11-28 17:00,,
FAB116204A-05,PAINT & PROTECT DOORS & FRAMES - FAB116204A,Not Started,Duct Shaft - 1F -SUE-FAB116204,,,,,,,,2026-02-16 08:00,2026-02-19 15:00,,
FAB116204B-01,IMPACT - INSTALL/REWORK DRYWALL FRAMING AROUND DOORS - FAB116204B,Complete,Duct Shaft - 1F -SUE-FAB116204,,,,,,,,2025-03-18 08:00,2025-03-26 17:00,2025-03-18 08:00,2025-03-26 17:00
FAB116204B-03,INSTALL DOOR FRAME - FAB116204B,Complete,Duct Shaft - 1F -SUE-FAB116204,,,,,,,,2025-03-26 13:00,2025-03-27 12:00,2025-03-26 13:00,2025-03-26 17:00
FAB116204B-04,DOOR INSTALL - FAB116204B,Complete,Duct Shaft - 1F -SUE-FAB116204,,,,,,,,2025-09-24 08:00,2025-09-24 17:00,2025-09-24 08:00,2025-09-24 17:00
FAB116204B-05,PAINT & PROTECT DOORS & FRAMES - FAB116204B,Not Started,Duct Shaft - 1F -SUE-FAB116204,,,,,,,,2026-02-16 08:00,2026-02-19 15:00,,
ZX-6790,SECAI TOOK OVER FOR ACCELERATION - Complete Drywall & Inspect - CV Room-1F-SUE-FAB116304,Complete,CV Room - 1F -SUE-FAB116304,,,,,,,,2025-06-27 08:00,2025-07-10 17:00,2025-06-27 08:00,2025-06-27 17:00
FAB116304A-03,INSTALL DOOR FRAMES - FAB116304A,Complete,CV Room - 1F -SUE-FAB116304,,,,,,,,2025-08-11 08:00,2025-08-11 17:00,2025-08-11 08:00,2025-08-11 08:00
FAB116304A-04,INSTALL DOOR & HARDWARE - FAB116304A,Not Started,CV Room - 1F -SUE-FAB116304,,,,,,,,2025-11-21 08:00,2025-11-27 17:00,,
FAB116304A-05,PAINT & PROTECT DOORS & FRAMES - FAB116304A,Not Started,CV Room - 1F -SUE-FAB116304,,,,,,,,2026-02-16 08:00,2026-02-19 15:00,,
FAB116304B-03,INSTALL DOOR FRAMES - FAB116304B,Complete,CV Room - 1F -SUE-FAB116304,,,,,,,,2025-07-28 08:00,2025-07-28 17:00,2025-07-21 08:00,2025-07-21 17:00
FAB116304B-04,DOOR INSTALL - FAB116304B,Complete,CV Room - 1F -SUE-FAB116304,,,,,,,,2025-08-29 08:00,2025-08-29 17:00,2025-08-27 08:00,2025-08-27 17:00
FAB116304B-05,PAINT & PROTECT DOORS & FRAMES - FAB116304B,Complete,CV Room - 1F -SUE-FAB116304,,,,,,,,2025-08-20 08:00,2025-08-25 15:00,2025-08-20 08:00,2025-08-25 15:00
FAB116304B-06,INSTALL DOOR HARDWARE - FAB116304B,Not Started,CV Room - 1F -SUE-FAB116304,,,,,,,,2025-11-21 08:00,2025-11-24 17:00,,
FAB116304C-60,DOOR FRAME HANDED OVER TO SECAI ON 07/18 - FAB116304C,Complete,CV Room - 1F -SUE-FAB116304,,,,,,,,2025-07-18 08:00,2025-07-18 17:00,2025-07-18 08:00,2025-07-18 17:00
FAB116304C-03,INSTALL DOOR FRAME BY SECAI - FAB116304C HANDED OVER ON 07/18,Complete,CV Room - 1F -SUE-FAB116304,,,,,,,,2025-07-18 08:00,2025-07-24 17:00,2025-07-18 08:00,2025-09-11 08:00
FAB116304C-04,INSTALL DOOR & HARDWARE - FAB116304C,Not Started,CV Room - 1F -SUE-FAB116304,,,,,,,,2025-11-28 08:00,2025-12-04 17:00,,
FAB116304C-05,PAINT & PROTECT DOORS & FRAMES - FAB116304C,Not Started,CV Room - 1F -SUE-FAB116304,,,,,,,,2026-02-16 08:00,2026-02-19 15:00,,
FAB116304B-07,DOOR FRAME PAINT & 1ST COAT - FAB116304B,Complete,CV Room - 1F -SUE-FAB116304,,,,,,,,2025-07-25 08:00,2025-07-29 17:00,2025-07-22 08:00,2025-07-23 17:00
ZX-6820,Complete Drywall & Inspect - I/O Rm 2-1F-SUE-FAB116303,Complete,I/O Rm 2 - 1F -SUE-FAB116303,,,,,,,,2025-09-09 08:00,2025-09-15 17:00,2025-09-09 08:00,2025-09-15 17:00
FAB116303A-03,INSTALL DOOR FRAMES - FAB116303A,Complete,I/O Rm 2 - 1F -SUE-FAB116303,,,,,,,,2025-08-15 08:00,2025-08-15 17:00,2025-06-12 08:00,2025-06-12 16:00
FAB116303A-04,INSTALL DOOR & HARDWARE - FAB116303A,Active,I/O Rm 2 - 1F -SUE-FAB116303,,,,,,,,2025-06-12 08:00,2025-06-18 17:00,2025-06-12 08:00,
FAB116303A-05,PAINT & PROTECT DOORS & FRAMES - FAB116303A,Not Started,I/O Rm 2 - 1F -SUE-FAB116303,,,,,,,,2026-02-16 08:00,2026-02-19 15:00,,
FAB116303A-11,IMPACT - SECAI - DIRECTIVE TO HOLD FRAME INSTALLATION,Complete,I/O Rm 2 - 1F -SUE-FAB116303,,,,,,,,2025-06-20 08:00,2025-06-30 10:00,2025-06-09 08:00,2025-06-11 10:00
ZX-7120,SECAI TURNOVER FOR ACELERATION - Drywall & Inspect - Elevator Hall #20 - 1F-FAB116305 BAKER/DESCOPE,Complete,Elevator Hall 20 - 1F -SUE-FAB116305,,,,,,,,2025-06-27 08:00,2025-07-10 17:00,2025-06-27 08:00,2025-06-27 16:00
FAB116305A-25,DOOR FRAME HANDED OVER TO SECAI ON 07/07 - FAB116305A,Complete,Elevator Hall 20 - 1F -SUE-FAB116305,,,,,,,,2025-07-07 08:00,2025-07-07 17:00,2025-07-07 08:00,2025-07-07 17:00
FAB116305A-03,INSTALL DOOR FRAME BY SECAI - FAB116305A HANDED OVER ON 07/07,Complete,Elevator Hall 20 - 1F -SUE-FAB116305,,,,,,,,2025-07-17 08:00,2025-08-20 17:00,2025-07-17 08:00,2025-10-20 17:00
FAB116305A-04,INSTALL DOOR & HARDWARE - FAB116305A,Active,Elevator Hall 20 - 1F -SUE-FAB116305,,,,,,,,2025-10-27 08:00,2025-10-31 17:00,2025-10-27 08:00,
FAB116305A-05,PAINT & PROTECT DOORS & FRAMES - FAB116305A,Not Started,Elevator Hall 20 - 1F -SUE-FAB116305,,,,,,,,2026-02-16 08:00,2026-02-19 15:00,,
FAB116305B-01,IMPACT - INSTALL/REWORK DRYWALL FRAMING AROUND DOORS - FAB116305B,Complete,Elevator Hall 20 - 1F -SUE-FAB116305,,,,,,,,2025-10-08 08:00,2025-10-16 17:00,2025-03-12 08:00,2025-03-21 16:00
FAB116305B-03,INSTALL DOOR FRAMES - FAB116305B,Complete,Elevator Hall 20 - 1F -SUE-FAB116305,,,,,,,,2025-09-19 13:00,2025-09-22 12:00,2025-03-21 00:00,2025-03-21 16:00
FAB116305B-04,INSTALL DOOR & HARDWARE - FAB116305B,Not Started,Elevator Hall 20 - 1F -SUE-FAB116305,,,,,,,,2025-11-28 08:00,2025-12-04 17:00,,
FAB116305B-05,PAINT & PROTECT DOORS & FRAMES - FAB116305B,Not Started,Elevator Hall 20 - 1F -SUE-FAB116305,,,,,,,,2026-02-16 08:00,2026-02-19 15:00,,
FAB116305C-04,INSTALL DOOR & HARDWARE - FAB116305C,Active,Elevator Hall 20 - 1F -SUE-FAB116305,,,,,,,,2025-10-07 08:00,2025-10-13 17:00,2025-10-07 08:00,
FAB116305C-05,PAINT & PROTECT DOORS & FRAMES - FAB116305C,Not Started,Elevator Hall 20 - 1F -SUE-FAB116305,,,,,,,,2026-02-16 08:00,2026-02-19 15:00,,
FAB116305C-11,IMPACT - PROCUREMENT - Reordered doors (Wall Thickness and Door Swing Design Changes),Complete,Elevator Hall 20 - 1F -SUE-FAB116305,,,,,,,,2025-06-09 08:00,2025-08-04 17:00,2025-06-09 08:00,2025-07-14 17:00
FAB116306C-04,INSTALL DOOR & HARDWARE - FAB116306C,Active,Elevator Hall 20 - 1F -SUE-FAB116305,,,,,,,,2025-10-01 08:00,2025-10-07 17:00,2025-10-01 08:00,
FAB116306C-05,PAINT & PROTECT DOORS & FRAMES - FAB116306C,Not Started,Elevator Hall 20 - 1F -SUE-FAB116305,,,,,,,,2026-02-16 08:00,2026-02-19 15:00,,
FAB116306B-03,SECAI DOOR ROUGH IN/SECURITY - FAB116306B,Not Started,Elevator Hall 20 - 1F -SUE-FAB116305,,,,,,,,2025-12-29 08:00,2025-12-30 17:00,,
FAB116306B-04,DOOR INSTALL - FAB116306B (OHC),Not Started,Elevator Hall 20 - 1F -SUE-FAB116305,,,,,,,,2025-12-31 08:00,2026-01-01 17:00,,
FAB116306C-25,DOOR FRAME HANDED OVER TO SECAI ON 07/07 - FAB116306C,Complete,Elevator Hall 20 - 1F -SUE-FAB116305,,,,,,,,2025-07-07 08:00,2025-07-07 17:00,2025-07-07 08:00,2025-07-07 17:00
FAB116306C-03,INSTALL DOOR FRAME BY SECAI - FAB116306C HANDED OVER ON 07/07,Complete,Elevator Hall 20 - 1F -SUE-FAB116305,,,,,,,,2025-07-09 08:00,2025-07-22 17:00,2025-07-09 08:00,2025-09-09 08:00
ZX-7420,SECAI TURNOVER FOR ACELERATION - Complete Drywall & Inspect - Elevator Hall #20 - 1F-1FAB-EL20,Complete,Elevator 20 - 1F -SUE-FAB1-EL20,,,,,,,,2025-05-05 08:00,2025-05-16 17:00,2025-05-05 08:00,2025-06-05 17:00
ZX-6760,Complete Drywall & Inspect - Elevator Mech Rm #20 - 1F-FAB116302,Complete,Elevator Mech.Rm 20 - 1F -SUE-FAB116302,,,,,,,,2025-07-11 08:00,2025-07-24 17:00,2025-05-26 08:00,2025-06-02 16:00
FAB116302A-01,IMPACT - INSTALL/REWORK DRYWALL FRAMING AROUND DOORS - FAB116302A - HANDED OVER TO SECAI ON 08/20,Complete,Elevator Mech.Rm 20 - 1F -SUE-FAB116302,,,,,,,,2025-10-06 08:00,2025-10-14 17:00,2025-08-20 13:00,2025-08-20 17:00
FAB116302A-03,INSTALL DOOR FRAME BY SECAI - FAB116302A - HANDED OVER TO SECAI ON 08/20,Complete,Elevator Mech.Rm 20 - 1F -SUE-FAB116302,,,,,,,,2025-10-15 08:00,2025-10-15 17:00,2025-08-20 08:00,2025-08-20 17:00
FAB116302A-04,INSTALL DOOR & HARDWARE - FAB116302A,Active,Elevator Mech.Rm 20 - 1F -SUE-FAB116302,,,,,,,,2025-08-27 08:00,2025-09-02 17:00,2025-08-27 08:00,
FAB116302A-05,PAINT & PROTECT DOORS & FRAMES - FAB116302A,Not Started,Elevator Mech.Rm 20 - 1F -SUE-FAB116302,,,,,,,,2026-02-16 08:00,2026-02-17 17:00,,
ZX-6910,SECAI TURNOVER FOR ACELERATION - Drywall & Inspect - Airlock 20-1F-FAB116301 - BAKER/DESCOPE,Complete,Air Lock 20 - 1F -SUE-FAB116301,,,,,,,,2025-07-30 08:00,2025-07-30 08:00,2025-06-03 08:00,2025-06-04 16:00
FAB116301A-03,INSTALL DOOR FRAMES - FAB116301A,Complete,Air Lock 20 - 1F -SUE-FAB116301,,,,,,,,2025-08-28 13:00,2025-08-29 12:00,2025-04-22 00:00,2025-04-22 16:00
FAB116301A-04,INSTALL DOOR & HARDWARE - FAB116301A,Active,Air Lock 20 - 1F -SUE-FAB116301,,,,,,,,2025-09-19 08:00,2025-09-25 17:00,2025-09-19 08:00,
FAB116301A-05,PAINT & PROTECT DOORS & FRAMES - FAB116301A,Not Started,Air Lock 20 - 1F -SUE-FAB116301,,,,,,,,2026-02-16 08:00,2026-02-19 15:00,,
FAB116301B-04,INSTALL DOOR & HARDWARE - FAB116301B,Not Started,Air Lock 20 - 1F -SUE-FAB116301,,,,,,,,2025-11-28 08:00,2025-12-04 17:00,,
FAB116301B-05,PAINT & PROTECT DOORS & FRAMES - FAB116301B,Not Started,Air Lock 20 - 1F -SUE-FAB116301,,,,,,,,2026-02-16 08:00,2026-02-19 15:00,,
FAB116301C-04,INSTALL DOOR & HARDWARE - FAB116301C,Active,Air Lock 20 - 1F -SUE-FAB116301,,,,,,,,2025-10-22 08:00,2025-10-28 17:00,2025-10-22 08:00,
FAB116301C-05,PAINT & PROTECT DOORS & FRAMES - FAB116301C,Not Started,Air Lock 20 - 1F -SUE-FAB116301,,,,,,,,2026-02-16 08:00,2026-02-19 15:00,,
ZX-7210,SECAI TURNOVER FOR ACELERATION - Drywall & Inspect - Exit Passageway 20-1F-FAB116307,Complete,Exit Passageway 20 - 1F -SUE-FAB116307,,,,,,,,2025-06-10 08:00,2025-06-10 08:00,2025-06-10 08:00,2025-06-10 08:00
FAB116307A-01,INSTALL DOOR FRAMES BY SECAI - FAB116307A,Complete,Exit Passageway 20 - 1F -SUE-FAB116307,,,,,,,,2025-10-15 08:00,2025-10-15 17:00,2025-10-15 08:00,2025-10-15 17:00
FAB116307A-04,INSTALL DOOR & HARDWARE - FAB116307A,Active,Exit Passageway 20 - 1F -SUE-FAB116307,,,,,,,,2025-10-24 08:00,2025-10-30 17:00,2025-10-24 08:00,
FAB116307A-05,PAINT & PROTECT DOORS & FRAMES - FAB116307A,Not Started,Exit Passageway 20 - 1F -SUE-FAB116307,,,,,,,,2026-02-16 08:00,2026-02-19 15:00,,
FAB116307B-03,INSTALL DOOR FRAMES - FAB116307B,Complete,Exit Passageway 20 - 1F -SUE-FAB116307,,,,,,,,2025-06-20 08:00,2025-06-20 17:00,2025-05-14 08:00,2025-05-14 16:00
FAB116307B-04,INSTALL DOOR & HARDWARE - FAB116307B,Active,Exit Passageway 20 - 1F -SUE-FAB116307,,,,,,,,2025-08-13 08:00,2025-08-19 17:00,2025-08-13 08:00,
FAB116307B-05,PAINT & PROTECT DOORS & FRAMES - FAB116307B,Not Started,Exit Passageway 20 - 1F -SUE-FAB116307,,,,,,,,2026-02-16 08:00,2026-02-16 17:00,,
FAB116307B-07,DOOR FRAME PAINT & 1ST COAT - FAB116307B,Complete,Exit Passageway 20 - 1F -SUE-FAB116307,,,,,,,,2025-08-19 08:00,2025-08-25 17:00,2025-08-11 08:00,2025-08-11 17:00
ZX-7510,Complete Drywall & Inspect - IT/Security 20-1F-TR-FAB116315,Complete,IT/Security 20 - 1F -SUE-TR-FAB116315,,,,,,,,2025-09-08 08:00,2025-09-12 17:00,2025-09-08 08:00,2025-09-12 17:00
TR-FAB116315A-01,IMPACT - INSTALL/REWORK DRYWALL FRAMING AROUND DOORS - TR - FAB116315A,Complete,IT/Security 20 - 1F -SUE-TR-FAB116315,,,,,,,,2025-07-25 08:00,2025-08-04 17:00,2025-07-25 08:00,2025-08-04 17:00
TR-FAB116315A-03,INSTALL DOOR FRAMES - TR - FAB116315A,Complete,IT/Security 20 - 1F -SUE-TR-FAB116315,,,,,,,,2025-08-04 08:00,2025-08-04 17:00,2025-08-05 08:00,2025-08-05 17:00
TR-FAB116315A-04,INSTALL DOOR & HARDWARE - TR - FAB116315A,Active,IT/Security 20 - 1F -SUE-TR-FAB116315,,,,,,,,2025-11-10 08:00,2025-11-14 17:00,2025-11-10 08:00,
TR-FAB116315A-05,PAINT & PROTECT DOORS & FRAMES - TR - FAB116315A,Not Started,IT/Security 20 - 1F -SUE-TR-FAB116315,,,,,,,,2026-02-16 08:00,2026-02-19 15:00,,
ZX-6730,Complete Drywall & Inspect - Fire Alarm 20-1F-FAB116312,Complete,Fire Alarm 20 - 1F -SUE-FAB116312,,,,,,,,2025-09-09 08:00,2025-09-15 17:00,2025-09-09 08:00,2025-09-15 17:00
FAB116312A-01,IMPACT - INSTALL/REWORK DRYWALL FRAMING AROUND DOORS - FAB116312A,Complete,Fire Alarm 20 - 1F -SUE-FAB116312,,,,,,,,2025-04-22 08:00,2025-04-30 17:00,2025-04-22 08:00,2025-04-30 17:00
FAB116312A-03,INSTALL DOOR FRAMES - FAB116312A,Complete,Fire Alarm 20 - 1F -SUE-FAB116312,,,,,,,,2025-08-26 08:00,2025-08-26 17:00,2025-04-30 00:00,2025-04-30 16:00
FAB116312A-04,INSTALL DOOR & HARDWARE - FAB116312A,Active,Fire Alarm 20 - 1F -SUE-FAB116312,,,,,,,,2025-04-30 08:00,2025-05-06 17:00,2025-04-30 08:00,
FAB116312A-05,PAINT & PROTECT DOORS & FRAMES - FAB116312A,Not Started,Fire Alarm 20 - 1F -SUE-FAB116312,,,,,,,,2026-02-16 08:00,2026-02-19 15:00,,
ZX-6970,Complete Drywall & Inspect - Duct Shaft Vestibule - 1F-SUE-FAB116310,Complete,Duct Shaft Vestibule - 1F -SUE-FAB116310,,,,,,,,2025-09-01 08:00,2025-09-05 17:00,2025-09-01 08:00,2025-09-05 17:00
FAB116310A-03,IMPACT - INSTALL DOOR FRAMES - FAB116310A,Complete,Duct Shaft Vestibule - 1F -SUE-FAB116310,,,,,,,,2025-05-09 08:00,2025-05-12 17:00,2025-05-09 08:00,2025-05-09 17:00
FAB116310A-04,INSTALL DOOR & HARDWARE - FAB116310A,Active,Duct Shaft Vestibule - 1F -SUE-FAB116310,,,,,,,,2025-08-27 08:00,2025-09-02 17:00,2025-08-27 08:00,
FAB116310A-05,PAINT & PROTECT DOORS & FRAMES - FAB116310A,Not Started,Duct Shaft Vestibule - 1F -SUE-FAB116310,,,,,,,,2026-02-16 08:00,2026-02-17 17:00,,
ZX-7270,Complete Drywall & Inspect - Duct Shaft - 1F-SUE-FAB116401,Complete,Duct Shaft - 1F -SUE-FAB116401,,,,,,,,2025-09-01 08:00,2025-09-05 17:00,2025-09-01 08:00,2025-09-05 17:00
FAB116401A-01,IMPACT - INSTALL/REWORK DRYWALL FRAMING AROUND DOORS - FAB116401A,Complete,Duct Shaft - 1F -SUE-FAB116401,,,,,,,,2025-03-25 08:00,2025-04-02 17:00,2025-03-25 08:00,2025-04-02 17:00
FAB116401A-03,INSTALL DOOR FRAMES - FAB116401A,Complete,Duct Shaft - 1F -SUE-FAB116401,,,,,,,,2025-08-18 13:00,2025-08-19 12:00,2025-04-02 00:00,2025-04-02 16:00
FAB116401A-04,INSTALL DOOR & HARDWARE - FAB116401A,Active,Duct Shaft - 1F -SUE-FAB116401,,,,,,,,2025-08-22 08:00,2025-08-28 17:00,2025-08-22 08:00,
FAB116401A-05,PAINT & PROTECT DOORS & FRAMES - FAB116401A,Not Started,Duct Shaft - 1F -SUE-FAB116401,,,,,,,,2026-02-16 08:00,2026-02-17 17:00,,
FAB116401B-01,IMPACT - INSTALL/REWORK DRYWALL FRAMING AROUND DOORS - FAB116401B,Complete,Duct Shaft - 1F -SUE-FAB116401,,,,,,,,2025-08-15 08:00,2025-08-15 08:00,2025-08-15 08:00,2025-08-15 08:00
FAB116401B-03,INSTALL DOOR FRAME BY SECAI - FAB116401B,Active,Duct Shaft - 1F -SUE-FAB116401,,,,,,,,2025-08-15 08:00,2025-08-15 17:00,2025-08-15 08:00,
FAB116401B-04,INSTALL DOOR & HARDWARE - FAB116401B,Not Started,Duct Shaft - 1F -SUE-FAB116401,,,,,,,,2025-12-01 08:00,2025-12-05 17:00,,
FAB116401B-05,PAINT & PROTECT DOORS & FRAMES - FAB116401B,Not Started,Duct Shaft - 1F -SUE-FAB116401,,,,,,,,2026-02-16 08:00,2026-02-19 15:00,,
FAB116401B-11,IMPACT - SECAI - DIRECTIVE TO HOLD FRAME INSTALLATION,Complete,Duct Shaft - 1F -SUE-FAB116401,,,,,,,,2025-08-15 08:00,2025-08-15 08:00,2025-08-15 08:00,2025-08-15 08:00
FAB116408A-01,IMPACT - INSTALL/REWORK DRYWALL FRAMING AROUND DOORS - FAB116408A,Complete,Duct Shaft - 1F -SUE-FAB116401,,,,,,,,2025-03-25 08:00,2025-04-02 17:00,2025-03-25 08:00,2025-04-02 17:00
FAB116408A-03,INSTALL DOOR FRAMES - FAB116408A,Complete,Duct Shaft - 1F -SUE-FAB116401,,,,,,,,2025-04-02 08:00,2025-04-02 17:00,2025-04-02 08:00,2025-04-02 17:00
FAB116408A-04,INSTALL DOOR & HARDWARE - FAB116408A,Not Started,Duct Shaft - 1F -SUE-FAB116401,,,,,,,,2025-11-21 08:00,2025-11-27 17:00,,
FAB116408A-05,PAINT & PROTECT DOORS & FRAMES -  FAB116408A,Not Started,Duct Shaft - 1F -SUE-FAB116401,,,,,,,,2026-02-16 08:00,2026-02-19 15:00,,
ZX-7570,Complete Drywall & Inspect - Mechanical Rm 3-1F-SUE-FAB116308,Complete,Mechanical Rm 3 - 1F -SUE-FAB116308,,,,,,,,2024-09-25 08:00,2024-10-01 17:00,2024-09-25 08:00,2024-10-01 17:00
FAB116308A-01,IMPACT - INSTALL/REWORK DRYWALL FRAMING AROUND DOORS - FAB116308A,Complete,Mechanical Rm 3 - 1F -SUE-FAB116308,,,,,,,,2025-08-12 08:00,2025-08-12 17:00,2025-08-12 08:00,2025-08-12 17:00
FAB116308A-04,INSTALL DOOR & HARDWARE - FAB116308A,Active,Mechanical Rm 3 - 1F -SUE-FAB116308,,,,,,,,2025-08-22 08:00,2025-08-28 17:00,2025-08-22 08:00,
FAB116308A-05,PAINT & PROTECT DOORS & FRAMES - FAB116308A,Not Started,Mechanical Rm 3 - 1F -SUE-FAB116308,,,,,,,,2026-02-16 08:00,2026-02-19 15:00,,
FAB116308B-03,SECAI - INSTALL DOOR FRAMES - FAB116308B TO HAND OVER 07/07,Complete,Mechanical Rm 3 - 1F -SUE-FAB116308,,,,,,,,2025-07-09 08:00,2025-07-22 17:00,2025-07-09 08:00,2025-09-15 17:00
FAB116308B-04,INSTALL DOOR & HARDWARE - FAB116308B,Active,Mechanical Rm 3 - 1F -SUE-FAB116308,,,,,,,,2025-10-08 08:00,2025-10-14 17:00,2025-10-08 08:00,
FAB116308B-05,PAINT & PROTECT DOORS & FRAMES - FAB116308B,Not Started,Mechanical Rm 3 - 1F -SUE-FAB116308,,,,,,,,2026-02-16 08:00,2026-02-19 15:00,,
FAB116308C-04,INSTALL DOOR & HARDWARE - FAB116308C,Not Started,Mechanical Rm 3 - 1F -SUE-FAB116308,,,,,,,,2025-11-24 08:00,2025-11-28 17:00,,
FAB116308C-05,PAINT & PROTECT DOORS & FRAMES - FAB116308C,Not Started,Mechanical Rm 3 - 1F -SUE-FAB116308,,,,,,,,2026-02-16 08:00,2026-02-19 15:00,,
FAB116308D-03,INSTALL DOOR FRAMES - FAB116308D,Complete,Mechanical Rm 3 - 1F -SUE-FAB116308,,,,,,,,2025-07-10 08:00,2025-07-10 17:00,2025-06-19 08:00,2025-06-19 16:00
FAB116308D-04,INSTALL DOOR & HARDWARE - FAB116308D,Active,Mechanical Rm 3 - 1F -SUE-FAB116308,,,,,,,,2025-08-27 08:00,2025-09-02 17:00,2025-08-27 08:00,
FAB116308D-05,PAINT & PROTECT DOORS & FRAMES - FAB116308D,Not Started,Mechanical Rm 3 - 1F -SUE-FAB116308,,,,,,,,2026-02-16 08:00,2026-02-19 17:00,,
FAB116308E-04,INSTALL DOOR & HARDWARE - FAB116308E,Not Started,Mechanical Rm 3 - 1F -SUE-FAB116308,,,,,,,,2025-11-28 08:00,2025-12-04 17:00,,
FAB116308E-05,PAINT & PROTECT DOORS & FRAMES - FAB116308E,Not Started,Mechanical Rm 3 - 1F -SUE-FAB116308,,,,,,,,2026-02-16 08:00,2026-02-19 15:00,,
FAB116308G-03,INSTALL DOOR FRAMES - FAB116308G,Complete,Mechanical Rm 3 - 1F -SUE-FAB116308,,,,,,,,2025-06-19 08:00,2025-06-19 17:00,2025-06-19 08:00,2025-06-19 17:00
FAB116308G-04,INSTALL DOOR & HARDWARE - FAB116308G,Active,Mechanical Rm 3 - 1F -SUE-FAB116308,,,,,,,,2025-08-27 08:00,2025-09-02 17:00,2025-08-27 08:00,
FAB116308G-05,PAINT & PROTECT DOORS & FRAMES - FAB116308G,Not Started,Mechanical Rm 3 - 1F -SUE-FAB116308,,,,,,,,2026-02-16 08:00,2026-02-19 15:00,,
FAB116308H-02,DOOR FRAME HANDED OVER TO SECAI ON 07/10 - FAB116308H,Complete,Mechanical Rm 3 - 1F -SUE-FAB116308,,,,,,,,2025-07-10 08:00,2025-07-10 17:00,2025-07-10 08:00,2025-07-10 17:00
FAB116308H-03,INSTALL DOOR FRAME BY SECAI - FAB116308H HANDED OVER ON 07/10,Complete,Mechanical Rm 3 - 1F -SUE-FAB116308,,,,,,,,2025-07-07 08:00,2025-08-08 17:00,2025-07-10 08:00,2025-10-03 17:00
FAB116308H-04,INSTALL DOOR & HARDWARE - FAB116308H,Active,Mechanical Rm 3 - 1F -SUE-FAB116308,,,,,,,,2025-10-15 08:00,2025-10-21 17:00,2025-10-15 08:00,
FAB116308H-05,PAINT & PROTECT DOORS & FRAMES - FAB116308H,Not Started,Mechanical Rm 3 - 1F -SUE-FAB116308,,,,,,,,2026-02-16 08:00,2026-02-19 15:00,,
FAB116308J-01,IMPACT - INSTALL/REWORK DRYWALL FRAMING AROUND DOORS - FAB116308J,Complete,Mechanical Rm 3 - 1F -SUE-FAB116308,,,,,,,,2025-08-11 08:00,2025-08-19 17:00,2025-08-11 08:00,2025-08-19 17:00
FAB116308J-03,INSTALL DOOR FRAMES - FAB116308J,Complete,Mechanical Rm 3 - 1F -SUE-FAB116308,,,,,,,,2025-08-19 08:00,2025-08-19 17:00,2025-08-19 08:00,2025-08-19 17:00
FAB116308J-04,INSTALL DOOR & HARDWARE - FAB116308J,Active,Mechanical Rm 3 - 1F -SUE-FAB116308,,,,,,,,2025-10-15 08:00,2025-10-21 17:00,2025-10-15 08:00,
FAB116308J-05,PAINT & PROTECT DOORS & FRAMES - FAB116308J,Not Started,Mechanical Rm 3 - 1F -SUE-FAB116308,,,,,,,,2026-02-16 08:00,2026-02-19 15:00,,
FAB116308J-11,IMPACT - PROCUREMENT - REORDERED DOORS (JAMB DEPTH ISSUE),Complete,Mechanical Rm 3 - 1F -SUE-FAB116308,,,,,,,,2025-06-20 08:00,2025-08-14 17:00,2025-06-20 08:00,2025-06-30 17:00
FAB116308D-07,DOOR FRAME PAINT & 1ST COAT - FAB116308D,Complete,Mechanical Rm 3 - 1F -SUE-FAB116308,,,,,,,,2025-08-27 08:00,2025-08-29 17:00,2025-08-26 08:00,2025-08-26 17:00
FAB116308G-07,DOOR FRAME PAINT & 1ST COAT - FAB116308G,Complete,Mechanical Rm 3 - 1F -SUE-FAB116308,,,,,,,,2025-07-28 08:00,2025-07-30 17:00,2025-07-28 08:00,2025-07-30 17:00
FAB116308C-03,INSTALL DOOR FRAMES - FAB116308C,Complete,Mechanical Rm 3 - 1F -SUE-FAB116308,,,,,,,,2025-08-06 08:00,2025-08-06 17:00,2025-08-06 08:00,2025-08-06 17:00
FAB116308E-03,INSTALL DOOR FRAMES - FAB116308E,Complete,Mechanical Rm 3 - 1F -SUE-FAB116308,,,,,,,,2025-08-11 08:00,2025-08-11 17:00,2025-08-06 08:00,2025-08-06 17:00
FAB116308B-13,DOOR FRAME HANDED OVER TO SECAI ON 07/07- FAB116308B,Complete,Mechanical Rm 3 - 1F -SUE-FAB116308,,,,,,,,2025-07-07 08:00,2025-07-07 17:00,2025-07-07 08:00,2025-07-07 16:00
ZX-6700,SECAI TURNOVER FOR ACELERATION - Complete Drywall & Inspect - Fire Riser Rm 4-1F-SUE-FAB116309,Complete,Fire Riser Rm 4 - 1F -SUE-FAB116309,,,,,,,,2025-07-07 08:00,2025-07-11 17:00,2025-07-07 08:00,2025-07-07 17:00
FAB116309A-03,INSTALL DOOR FRAMES - FAB116309A,Complete,Fire Riser Rm 4 - 1F -SUE-FAB116309,,,,,,,,2025-06-20 08:00,2025-06-20 17:00,2025-06-12 08:00,2025-06-12 16:00
FAB116309A-04,INSTALL DOOR & HARDWARE - FAB116309A,Active,Fire Riser Rm 4 - 1F -SUE-FAB116309,,,,,,,,2025-08-08 08:00,2025-08-14 17:00,2025-08-08 08:00,
FAB116309A-05,PAINT & PROTECT DOORS & FRAMES - FAB116309A,Not Started,Fire Riser Rm 4 - 1F -SUE-FAB116309,,,,,,,,2026-02-16 08:00,2026-02-17 17:00,,
FAB116309A-07,DOOR FRAME PAINT & 1ST COAT - FAB116309A,Complete,Fire Riser Rm 4 - 1F -SUE-FAB116309,,,,,,,,2025-08-05 08:00,2025-08-07 17:00,2025-08-05 08:00,2025-08-07 17:00
ZX-6880,Complete Drywall & Inspect - Toilet (W)-1-1F-SUE-FAB116402 WALL THIKNESS ISSUE (NON RATED WALLS),Complete,Toilet (W) 1 - 1F -SUE-FAB116402,,,,,,,,2025-06-10 08:00,2025-06-18 17:00,2025-06-10 08:00,2025-08-26 17:00
FAB116402A-03,INSTALL DOOR FRAMES - FAB116402A,Complete,Toilet (W) 1 - 1F -SUE-FAB116402,,,,,,,,2025-09-19 08:00,2025-09-19 17:00,2025-09-20 08:00,2025-09-20 17:00
FAB116402A-04,INSTALL DOOR & HARDWARE - FAB116402A,Active,Toilet (W) 1 - 1F -SUE-FAB116402,,,,,,,,2025-10-31 08:00,2025-11-06 17:00,2025-10-31 08:00,
FAB116402A-05,PAINT & PROTECT DOORS & FRAMES - FAB116402A,Not Started,Toilet (W) 1 - 1F -SUE-FAB116402,,,,,,,,2026-02-16 08:00,2026-02-19 15:00,,
ZX-7180,Complete Drywall & Inspect - Toilet(M)-1-1F-SUE-FAB116404 WALL THIKNESS ISSUE (NON RATED WALLS),Complete,Toilet(M) 1 - 1F -SUE-FAB116404,,,,,,,,2025-06-27 08:00,2025-07-07 17:00,2025-06-27 08:00,2025-08-26 08:00
FAB116404A-01,IMPACT - INSTALL/REWORK DRYWALL FRAMING AROUND DOORS - FAB116404A,Complete,Toilet(M) 1 - 1F -SUE-FAB116404,,,,,,,,2025-08-01 08:00,2025-08-11 17:00,2025-08-01 08:00,2025-08-08 17:00
FAB116404A-03,INSTALL DOOR FRAMES - FAB116404A,Complete,Toilet(M) 1 - 1F -SUE-FAB116404,,,,,,,,2025-08-08 08:00,2025-08-08 17:00,2025-08-09 08:00,2025-08-09 17:00
FAB116404A-04,INSTALL DOOR & HARDWARE - FAB116404A,Active,Toilet(M) 1 - 1F -SUE-FAB116404,,,,,,,,2025-09-08 08:00,2025-09-12 17:00,2025-09-08 08:00,
FAB116404A-05,PAINT & PROTECT DOORS & FRAMES - FAB116404A,Not Started,Toilet(M) 1 - 1F -SUE-FAB116404,,,,,,,,2026-02-16 08:00,2026-02-19 15:00,,
ZX-7480,Complete Drywall & Inspect - Toilet Vestibule - 1-1F-SUE-FAB116403 WALL THIKNESS ISSUE NON RATED WALLS,Complete,Toilet Vestibule 1 - 1F -SUE-FAB116403,,,,,,,,2025-08-11 08:00,2025-08-19 17:00,2025-08-11 08:00,2025-09-22 17:00
FAB116403A-03,INSTALL DOOR FRAMES - FAB116403A,Complete,Toilet Vestibule 1 - 1F -SUE-FAB116403,,,,,,,,2025-06-20 08:00,2025-06-20 17:00,2025-06-09 08:00,2025-06-09 16:00
FAB116403A-07,DOOR FRAME PAINT & 1ST COAT - FAB116403A,Complete,Toilet Vestibule 1 - 1F -SUE-FAB116403,,,,,,,,2025-08-27 08:00,2025-08-29 17:00,2025-08-27 08:00,2025-08-29 17:00
FAB116403A-04,INSTALL DOOR & HARDWARE - FAB116403A,Active,Toilet Vestibule 1 - 1F -SUE-FAB116403,,,,,,,,2025-09-02 08:00,2025-09-08 17:00,2025-09-02 08:00,
FAB116403A-05,PAINT & PROTECT DOORS & FRAMES - FAB116403A,Not Started,Toilet Vestibule 1 - 1F -SUE-FAB116403,,,,,,,,2026-02-16 08:00,2026-02-19 15:00,,
ZX-7030,Complete Drywall & Inspect - Janitor Rm 1-1F-SUE-FAB116405,Complete,Janitor Rm 1 - 1F -SUE-FAB116405,,,,,,,,2025-08-27 08:00,2025-08-28 17:00,2025-08-27 08:00,2025-08-28 17:00
FAB116405A-01,IMPACT - INSTALL/REWORK DRYWALL FRAMING AROUND DOORS - FAB116405A,Complete,Janitor Rm 1 - 1F -SUE-FAB116405,,,,,,,,2025-08-11 08:00,2025-08-19 17:00,2025-08-11 08:00,2025-08-12 17:00
FAB116405A-03,INSTALL DOOR FRAMES - FAB116405A,Complete,Janitor Rm 1 - 1F -SUE-FAB116405,,,,,,,,2025-08-12 08:00,2025-08-12 17:00,2025-08-12 08:00,2025-08-12 17:00
FAB116405A-04,INSTALL DOOR & HARDWARE - FAB116405A,Active,Janitor Rm 1 - 1F -SUE-FAB116405,,,,,,,,2025-10-14 08:00,2025-10-20 17:00,2025-10-14 08:00,
FAB116405A-05,PAINT & PROTECT DOORS & FRAMES - FAB116405A,Not Started,Janitor Rm 1 - 1F -SUE-FAB116405,,,,,,,,2026-02-16 08:00,2026-02-19 15:00,,
ZX-7330,Complete Drywall & Inspect CEILING - Maint Rm 1-1F-SUE-FAB116406,Complete,Maint Rm 1 - 1F -SUE-FAB116406,,,,,,,,2025-08-22 08:00,2025-08-28 17:00,2025-08-22 08:00,2025-08-28 17:00
FAB116406A-01,IMPACT - INSTALL/REWORK DRYWALL FRAMING AROUND DOORS - FAB116406A,Complete,Maint Rm 1 - 1F -SUE-FAB116406,,,,,,,,2025-03-17 08:00,2025-03-25 17:00,2025-03-17 08:00,2025-03-25 17:00
FAB116406A-03,INSTALL DOOR FRAMES - FAB116406A,Complete,Maint Rm 1 - 1F -SUE-FAB116406,,,,,,,,2025-09-19 13:00,2025-09-22 12:00,2025-03-25 00:00,2025-03-25 16:00
FAB116406A-04,INSTALL DOOR & HARDWARE - FAB116406A,Not Started,Maint Rm 1 - 1F -SUE-FAB116406,,,,,,,,2025-11-28 08:00,2025-12-04 17:00,,
FAB116406A-05,PAINT & PROTECT DOORS & FRAMES -  FAB116406A,Not Started,Maint Rm 1 - 1F -SUE-FAB116406,,,,,,,,2026-02-16 08:00,2026-02-19 15:00,,
ZX-7630,SECAI TURNOVER FOR ACELERATION - Drywall & Inspect - Exit Passageway 19-1F-FAB116407 - BAKER/DESCOPE,Complete,Exit Passageway 19 - 1F -SUE-FAB116407,,,,,,,,2025-09-24 10:00,2025-09-24 10:00,2025-06-10 10:00,2025-06-10 10:00
FAB116407A-03,INSTALL DOOR FRAMES - FAB116407A,Complete,Exit Passageway 19 - 1F -SUE-FAB116407,,,,,,,,2025-10-21 13:00,2025-10-22 12:00,2025-04-02 00:00,2025-04-02 16:00
FAB116407A-04,INSTALL DOOR & HARDWARE - FAB116407A,Active,Exit Passageway 19 - 1F -SUE-FAB116407,,,,,,,,2025-09-24 08:00,2025-09-30 17:00,2025-09-24 08:00,
FAB116407A-05,PAINT & PROTECT DOORS & FRAMES -  FAB116407A,Not Started,Exit Passageway 19 - 1F -SUE-FAB116407,,,,,,,,2026-02-16 08:00,2026-02-19 15:00,,
FAB116407B-03,INSTALL DOOR FRAMES - FAB116407B,Complete,Exit Passageway 19 - 1F -SUE-FAB116407,,,,,,,,2025-10-21 13:00,2025-10-22 12:00,2025-04-02 00:00,2025-04-02 16:00
FAB116407B-04,INSTALL DOOR & HARDWARE - FAB116407B,Active,Exit Passageway 19 - 1F -SUE-FAB116407,,,,,,,,2025-10-14 08:00,2025-10-20 17:00,2025-10-14 08:00,
FAB116407B-05,PAINT & PROTECT DOORS & FRAMES -  FAB116407B,Not Started,Exit Passageway 19 - 1F -SUE-FAB116407,,,,,,,,2026-02-16 08:00,2026-02-19 15:00,,
FAB116414A-04,INSTALL DOOR & HARDWARE - FAB116414A,Active,Exit Passageway 19 - 1F -SUE-FAB116407,,,,,,,,2025-09-19 08:00,2025-09-25 17:00,2025-09-19 08:00,
FAB116414A-05,PAINT & PROTECT DOORS & FRAMES -  FAB116414A,Not Started,Exit Passageway 19 - 1F -SUE-FAB116407,,,,,,,,2026-02-16 08:00,2026-02-19 15:00,,
FAB116414B-04,INSTALL DOOR & HARDWARE - FAB116414B,Active,Exit Passageway 19 - 1F -SUE-FAB116407,,,,,,,,2025-11-12 08:00,2025-11-18 17:00,2025-11-12 08:00,
FAB116414B-05,PAINT & PROTECT DOORS & FRAMES -  FAB116414B,Not Started,Exit Passageway 19 - 1F -SUE-FAB116407,,,,,,,,2026-02-16 08:00,2026-02-19 15:00,,
ZX-7150,SECAI TURNOVER FOR ACELERATION - Complete Drywall & Inspect - Fire Riser Rm 5-1F-SUE-FAB116507,Complete,Fire Riser Rm 5 - 1F -SUE-FAB116507,,,,,,,,2025-07-07 08:00,2025-07-11 17:00,2025-07-07 08:00,2025-07-07 17:00
FAB116507A-03,INSTALL DOOR FRAMES - FAB116507A,Complete,Fire Riser Rm 5 - 1F -SUE-FAB116507,,,,,,,,2025-09-05 13:00,2025-09-08 12:00,2025-03-14 00:00,2025-03-14 16:00
FAB116507A-04,INSTALL DOOR & HARDWARE - FAB116507A,Active,Fire Riser Rm 5 - 1F -SUE-FAB116507,,,,,,,,2025-08-12 08:00,2025-08-18 17:00,2025-08-12 08:00,
FAB116507A-05,PAINT & PROTECT DOORS & FRAMES -  FAB116507A,Not Started,Fire Riser Rm 5 - 1F -SUE-FAB116507,,,,,,,,2026-02-16 08:00,2026-02-17 17:00,,
FAB116507A-07,DOOR FRAME PAINT & 1ST COAT - FAB116507A,Complete,Fire Riser Rm 5 - 1F -SUE-FAB116507,,,,,,,,2025-08-06 08:00,2025-08-08 17:00,2025-08-06 08:00,2025-08-08 17:00
ZX-7450,Complete Drywall & Inspect - Wafer I/O -1F-SUE-FAB116501,Complete,Wafer I/O - 1F -SUE-FAB116501,,,,,,,,2025-08-01 08:00,2025-08-07 17:00,2025-08-01 08:00,2025-08-07 17:00
FAB116414C-01,IMPACT - INSTALL/REWORK DRYWALL FRAMING AROUND DOORS - FAB116414C,Complete,Wafer I/O - 1F -SUE-FAB116501,,,,,,,,2025-04-01 08:00,2025-04-09 17:00,2025-04-01 08:00,2025-04-07 17:00
FAB116414C-03,INSTALL DOOR FRAMES - FAB116414C,Complete,Wafer I/O - 1F -SUE-FAB116501,,,,,,,,2025-04-07 08:00,2025-04-07 17:00,2025-04-07 08:00,2025-04-07 17:00
FAB116414C-04,INSTALL DOOR & HARDWARE - FAB116414C,Active,Wafer I/O - 1F -SUE-FAB116501,,,,,,,,2025-09-25 08:00,2025-10-01 17:00,2025-09-25 08:00,
FAB116414C-05,PAINT & PROTECT DOORS & FRAMES - FAB116414C,Not Started,Wafer I/O - 1F -SUE-FAB116501,,,,,,,,2026-02-16 08:00,2026-02-19 15:00,,
FAB116501A-01,DOOR ASSEMBLY - FAB116501A,Complete,Wafer I/O - 1F -SUE-FAB116501,,,,,,,,2025-10-29 08:00,2025-10-30 17:00,2025-10-29 08:00,2025-10-30 17:00
FAB116501A-02,DOOR PACKAGE INSTALL - FAB116501A,Complete,Wafer I/O - 1F -SUE-FAB116501,,,,,,,,2025-10-29 08:00,2025-10-30 17:00,2025-10-29 08:00,2025-10-30 17:00
ZX-6940,Complete Drywall & Inspect - Duct Shaft - 1F-SUE-FAB116413,Complete,Duct Shaft - 1F -SUE-FAB116413,,,,,,,,2025-08-29 08:00,2025-09-04 17:00,2025-08-29 08:00,2025-09-04 17:00
FAB116413A-01,IMPACT - INSTALL/REWORK DRYWALL FRAMING AROUND DOORS - FAB116413A,Complete,Duct Shaft - 1F -SUE-FAB116413,,,,,,,,2025-09-26 08:00,2025-09-26 17:00,2025-09-26 08:00,2025-09-26 17:00
FAB116413A-03,INSTALL DOOR FRAMES - FAB116413A,Complete,Duct Shaft - 1F -SUE-FAB116413,,,,,,,,2025-09-26 08:00,2025-09-26 17:00,2025-09-27 08:00,2025-09-27 17:00
FAB116413A-04,INSTALL DOOR & HARDWARE - FAB116413A,Not Started,Duct Shaft - 1F -SUE-FAB116413,,,,,,,,2025-11-28 08:00,2025-12-04 17:00,,
FAB116413A-05,PAINT & PROTECT DOORS & FRAMES -  FAB116413A,Not Started,Duct Shaft - 1F -SUE-FAB116413,,,,,,,,2026-02-16 08:00,2026-02-19 15:00,,
FAB116412A-01,IMPACT - INSTALL/REWORK DRYWALL FRAMING AROUND DOORS - FAB116412A,Complete,Duct Shaft - 1F -SUE-FAB116413,,,,,,,,2025-03-24 08:00,2025-04-01 17:00,2025-03-24 08:00,2025-04-01 17:00
FAB116412A-03,INSTALL DOOR FRAMES - FAB116412A,Complete,Duct Shaft - 1F -SUE-FAB116413,,,,,,,,2025-04-01 08:00,2025-04-01 17:00,2025-04-01 08:00,2025-04-01 17:00
FAB116412A-04,INSTALL DOOR & HARDWARE - FAB116412A,Active,Duct Shaft - 1F -SUE-FAB116413,,,,,,,,2025-07-10 08:00,2025-07-16 17:00,2025-07-10 08:00,
FAB116412A-05,PAINT & PROTECT DOORS & FRAMES -  FAB116412A,Not Started,Duct Shaft - 1F -SUE-FAB116413,,,,,,,,2026-02-16 08:00,2026-02-16 17:00,,
ZX-7240,Complete Drywall & Inspect - Elevator #19-1F-1FAB-EL19,Complete,Elevator 19 - 1F -SUE-FAB1-EL19,,,,,,,,2025-05-16 08:00,2025-05-29 17:00,2025-05-16 08:00,2025-06-26 16:00
ZX-7540,Complete Drywall & Inspect - Elevator Mech Rm #19 - FAB116526,Complete,Elevator Mech.Rm 19 - 1F -SUE-FAB116526,,,,,,,,2025-06-20 08:00,2025-07-03 17:00,2025-06-13 08:00,2025-09-03 17:00
FAB116526A-03,INSTALL DOOR FRAMES - FAB116526A,Complete,Elevator Mech.Rm 19 - 1F -SUE-FAB116526,,,,,,,,2025-10-20 13:00,2025-10-21 12:00,2025-10-20 13:00,2025-10-21 12:00
FAB116526A-04,INSTALL DOOR & HARDWARE - FAB116526A,Active,Elevator Mech.Rm 19 - 1F -SUE-FAB116526,,,,,,,,2025-11-14 08:00,2025-11-20 17:00,2025-11-14 08:00,
FAB116526A-05,PAINT & PROTECT DOORS & FRAMES -  FAB116526A,Not Started,Elevator Mech.Rm 19 - 1F -SUE-FAB116526,,,,,,,,2026-02-16 08:00,2026-02-19 15:00,,
ZX-7090,Complete Drywall & Inspect - PR Airlock Vestibule - 1F-SUE-FAB116520,Complete,PR Air Lock Vestibule - 1F -SUE-FAB116520,,,,,,,,2025-08-28 08:00,2025-09-03 17:00,2025-08-28 08:00,2025-09-04 17:00
FAB116520A-01,INSTALL DOOR FRAMES - FAB116520A,Complete,PR Air Lock Vestibule - 1F -SUE-FAB116520,,,,,,,,2025-10-21 08:00,2025-10-21 17:00,2025-10-21 08:00,2025-10-21 17:00
FAB116520A-04,INSTALL DOOR & HARDWARE - FAB116520A,Not Started,PR Air Lock Vestibule - 1F -SUE-FAB116520,,,,,,,,2025-11-21 08:00,2025-11-27 17:00,,
FAB116520A-05,PAINT & PROTECT DOORS & FRAMES -  FAB116520A,Not Started,PR Air Lock Vestibule - 1F -SUE-FAB116520,,,,,,,,2026-02-16 08:00,2026-02-19 15:00,,
ZX-7390,SECAI TOOK OVER FOR ACCELERATION - Drywall & Inspect - PR Airlock-1F-SUE-FAB116519,Complete,PR Air Lock - 1F -SUE-FAB116519,,,,,,,,2025-10-01 08:00,2025-10-07 17:00,2025-10-07 08:00,2025-10-07 17:00
FAB116519A-03,INSTALL DOOR FRAMES - FAB116519A,Complete,PR Air Lock - 1F -SUE-FAB116519,,,,,,,,2025-04-09 08:00,2025-04-10 17:00,2025-04-09 08:00,2025-04-11 17:00
FAB116519A-04,INSTALL DOOR & HARDWARE - FAB116519A,Active,PR Air Lock - 1F -SUE-FAB116519,,,,,,,,2025-11-05 08:00,2025-11-11 17:00,2025-11-05 08:00,
FAB116519A-05,PAINT & PROTECT DOORS & FRAMES -  FAB116519A,Not Started,PR Air Lock - 1F -SUE-FAB116519,,,,,,,,2026-02-16 08:00,2026-02-19 15:00,,
FAB116519B-01,DOOR ASSEMBLY - FAB116519B,Not Started,PR Air Lock - 1F -SUE-FAB116519,,,,,,,,2025-11-21 08:00,2025-11-24 17:00,,
FAB116519B-02,DOOR PACKAGE INSTALL - FAB116519B,Not Started,PR Air Lock - 1F -SUE-FAB116519,,,,,,,,2025-11-21 08:00,2025-11-24 17:00,,
FAB116519D-07,DOOR INSTALL - FAB116519D (OHC),Not Started,PR Air Lock - 1F -SUE-FAB116519,,,,,,,,2025-12-05 08:00,2025-12-08 17:00,,
ZX-7690,Complete Drywall & Inspect - Duct Shaft - 1F-SUE-FAB116518,Complete,Duct Shaft - 1F -SUE-FAB116518,,,,,,,,2025-09-22 08:00,2025-09-24 17:00,2025-09-22 08:00,2025-09-24 17:00
FAB116518A-01,INSTALL/REWORK DRYWALL FRAMING AROUND DOORS - FAB116518A,Complete,Duct Shaft - 1F -SUE-FAB116518,,,,,,,,2025-06-16 08:00,2025-06-24 17:00,2025-06-16 08:00,2025-06-24 17:00
FAB116518A-03,INSTALL DOOR FRAMES - FAB116518A,Complete,Duct Shaft - 1F -SUE-FAB116518,,,,,,,,2025-06-25 08:00,2025-06-25 17:00,2025-06-25 08:00,2025-06-25 17:00
FAB116518A-04,INSTALL DOOR & HARDWARE - FAB116518A,Active,Duct Shaft - 1F -SUE-FAB116518,,,,,,,,2025-09-24 08:00,2025-09-30 17:00,2025-09-24 08:00,
FAB116518A-05,PAINT & PROTECT DOORS & FRAMES -  FAB116518A,Not Started,Duct Shaft - 1F -SUE-FAB116518,,,,,,,,2026-02-16 08:00,2026-02-19 15:00,,
ZX-7060,Complete Drywall & Inspect - PR Room-1F-SUE-FAB116509,Complete,PR Room - 1F -SUE-FAB116509,,,,,,,,2025-08-11 08:00,2025-08-15 17:00,2025-08-11 08:00,2025-08-15 17:00
FAB116509A-03,INSTALL DOOR FRAMES - FAB116509A,Complete,PR Room - 1F -SUE-FAB116509,,,,,,,,2025-08-12 08:00,2025-08-12 17:00,2025-08-12 08:00,2025-08-12 17:00
FAB116509A-04,INSTALL DOOR & HARDWARE - FAB116509A,Active,PR Room - 1F -SUE-FAB116509,,,,,,,,2025-10-21 08:00,2025-10-27 17:00,2025-10-21 08:00,
FAB116509A-05,PAINT & PROTECT DOORS & FRAMES -  FAB116509A,Not Started,PR Room - 1F -SUE-FAB116509,,,,,,,,2026-02-16 08:00,2026-02-19 15:00,,
FAB116509B-02,INSTALL DOOR FRAMES - FAB116509B,Complete,PR Room - 1F -SUE-FAB116509,,,,,,,,2025-06-20 08:00,2025-06-20 17:00,2025-03-19 08:00,2025-03-19 16:00
FAB116509B-04,INSTALL DOOR & HARDWARE - FAB116509B,Active,PR Room - 1F -SUE-FAB116509,,,,,,,,2025-10-01 08:00,2025-10-07 17:00,2025-10-01 08:00,
FAB116509B-05,PAINT & PROTECT DOORS & FRAMES -  FAB116509B,Not Started,PR Room - 1F -SUE-FAB116509,,,,,,,,2026-02-16 08:00,2026-02-19 15:00,,
FAB116509F-03,INSTALL DOOR FRAMES - FAB116509F,Complete,PR Room - 1F -SUE-FAB116509,,,,,,,,2025-10-28 08:00,2025-10-28 17:00,2025-10-28 08:00,2025-10-28 17:00
FAB116509F-04,INSTALL DOOR & HARDWARE - FAB116509F,Active,PR Room - 1F -SUE-FAB116509,,,,,,,,2025-10-29 08:00,2025-11-04 17:00,2025-10-29 08:00,
FAB116509F-05,PAINT & PROTECT DOORS & FRAMES -  FAB116509F,Not Started,PR Room - 1F -SUE-FAB116509,,,,,,,,2026-02-16 08:00,2026-02-19 15:00,,
FAB116509C-03,INSTALL DOOR FRAMES - FAB116509C,Not Started,PR Room - 1F -SUE-FAB116509,,,,,,,,2025-11-21 08:00,2025-11-21 17:00,,
FAB116509C-04,INSTALL DOOR & HARDWARE - FAB116509C,Not Started,PR Room - 1F -SUE-FAB116509,,,,,,,,2025-11-24 08:00,2025-11-28 17:00,,
FAB116509C-05,PAINT & PROTECT DOORS & FRAMES -  FAB116509C,Not Started,PR Room - 1F -SUE-FAB116509,,,,,,,,2026-02-16 08:00,2026-02-19 15:00,,
FAB116523B-01,DOOR ASSEMBLY - FAB116523B,Not Started,PR Vestibule - 1F -SUE-FAB116523,,,,,,,,2025-12-01 08:00,2025-12-02 17:00,,
FAB116523B-02,DOOR PACKAGE INSTALL - FAB116523B,Not Started,PR Vestibule - 1F -SUE-FAB116523,,,,,,,,2025-12-01 08:00,2025-12-02 17:00,,
ZX-7300,Complete Drywall & Inspect - UPW MCC Rm-1F-SUE-FAB116521,Complete,UPW MCC Rm - 1F -SUE-FAB116521,,,,,,,,2025-08-01 08:00,2025-08-07 17:00,2025-08-01 08:00,2025-08-07 17:00
FAB116521A-01,IMPACT - INSTALL/REWORK DRYWALL FRAMING AROUND DOORS - FAB116521A,Complete,UPW MCC Rm - 1F -SUE-FAB116521,,,,,,,,2025-09-01 08:00,2025-09-02 17:00,2025-09-01 08:00,2025-09-02 17:00
FAB116521A-03,INSTALL DOOR FRAMES - FAB116521A,Complete,UPW MCC Rm - 1F -SUE-FAB116521,,,,,,,,2025-09-02 08:00,2025-09-02 17:00,2025-09-02 08:00,2025-09-02 17:00
FAB116521A-04,INSTALL DOOR & HARDWARE - FAB116521A,Active,UPW MCC Rm - 1F -SUE-FAB116521,,,,,,,,2025-10-07 08:00,2025-10-13 17:00,2025-10-07 08:00,
FAB116521A-05,PAINT & PROTECT DOORS & FRAMES -  FAB116521A,Not Started,UPW MCC Rm - 1F -SUE-FAB116521,,,,,,,,2026-02-16 08:00,2026-02-19 15:00,,
ZX-7600,Complete Drywall & Inspect - Duct Shaft - 1F-SUE-FAB116516,Complete,Duct Shaft - 1F -SUE-FAB116516,,,,,,,,2025-09-01 08:00,2025-09-05 17:00,2025-09-01 08:00,2025-09-05 17:00
FAB116516A-03,INSTALL DOOR FRAMES - FAB116516A,Complete,Duct Shaft - 1F -SUE-FAB116516,,,,,,,,2025-11-12 08:00,2025-11-12 17:00,2025-11-12 08:00,2025-11-12 17:00
FAB116516A-04,INSTALL DOOR & HARDWARE - FAB116516A,Active,Duct Shaft - 1F -SUE-FAB116516,,,,,,,,2025-11-12 08:00,2025-11-18 17:00,2025-11-12 08:00,
FAB116516A-05,PAINT & PROTECT DOORS & FRAMES -  FAB116516A,Not Started,Duct Shaft - 1F -SUE-FAB116516,,,,,,,,2026-02-16 08:00,2026-02-19 15:00,,
ZX-7810,Complete Drywall & Inspect - Elevator Mech Rm #18 - FAB116514 MK MARLOW,Complete,Elevator Mech. Rm - 1F -SUE18-FAB116514,,,,,,,,2025-06-20 08:00,2025-07-03 17:00,2025-06-13 08:00,2025-09-03 17:00
FAB116514A-04,INSTALL DOOR & HARDWARE - FAB116514A,Not Started,Elevator Mech. Rm - 1F -SUE18-FAB116514,,,,,,,,2025-12-02 08:00,2025-12-08 17:00,,
FAB116514A-05,PAINT & PROTECT DOORS & FRAMES -  FAB116514A,Not Started,Elevator Mech. Rm - 1F -SUE18-FAB116514,,,,,,,,2026-02-16 08:00,2026-02-19 15:00,,
FAB116514A-03,INSTALL DOOR FRAMES - FAB116514A,Not Started,Elevator Mech. Rm - 1F -SUE18-FAB116514,,,,,,,,2025-11-28 08:00,2025-12-01 17:00,,
ZX-7840,Complete Drywall & Inspect - Elevator #18 - 1F-1FAB-EL18,Complete,Elevator 18 - 1F -SUE-FAB1-EL18,,,,,,,,2025-06-10 08:00,2025-06-18 17:00,2025-06-10 08:00,2025-06-26 16:00
ZX-8140,Complete Drywall & Inspect - Fire Alarm Rm 18-1F-FAB116527,Complete,Fire Alarm Rm 18 - 1F -SUE-FAB116527,,,,,,,,2025-08-20 08:00,2025-08-26 17:00,2025-08-20 08:00,2025-08-26 17:00
FAB116527A-01,IMPACT - INSTALL/REWORK DRYWALL FRAMING AROUND DOORS - FAB116527A,Complete,Fire Alarm Rm 18 - 1F -SUE-FAB116527,,,,,,,,2025-10-03 08:00,2025-10-07 17:00,2025-10-03 08:00,2025-10-07 17:00
FAB116527A-03,INSTALL DOOR FRAMES - FAB116527A,Complete,Fire Alarm Rm 18 - 1F -SUE-FAB116527,,,,,,,,2025-10-07 08:00,2025-10-07 17:00,2025-10-07 08:00,2025-10-07 17:00
FAB116527A-04,INSTALL DOOR & HARDWARE - FAB116527A,Active,Fire Alarm Rm 18 - 1F -SUE-FAB116527,,,,,,,,2025-10-08 08:00,2025-10-14 17:00,2025-10-08 08:00,
FAB116527A-05,PAINT & PROTECT DOORS & FRAMES -  FAB116527A,Not Started,Fire Alarm Rm 18 - 1F -SUE-FAB116527,,,,,,,,2026-02-16 08:00,2026-02-19 15:00,,
ZX-8440,SECAI TOOK OVER FOR ACCELERATION - Complete Drywall & Inspect - Elevator Hall 18-1F-FAB116512,Complete,Elevator Hall 18 - 1F -SUE-FAB116512,,,,,,,,2025-08-20 08:00,2025-08-26 17:00,2025-06-27 08:00,2025-06-27 17:00
FAB116512C-01,IMPACT - INSTALL/REWORK DRYWALL FRAMING AROUND DOORS - FAB116512C HANDED OVER TO SECAI ON 08/20,Complete,Elevator Hall 18 - 1F -SUE-FAB116512,,,,,,,,2025-08-20 08:00,2025-08-21 17:00,2025-08-20 08:00,2025-08-20 17:00
FAB116512C-03,INSTALL DOOR FRAME BY SECAI - FAB116512C HANDED OVER TO SECAI ON 08/20,Complete,Elevator Hall 18 - 1F -SUE-FAB116512,,,,,,,,2025-08-20 08:00,2025-08-20 17:00,2025-08-20 08:00,2025-09-06 17:00
FAB116512C-04,INSTALL DOOR & HARDWARE - FAB116512C,Active,Elevator Hall 18 - 1F -SUE-FAB116512,,,,,,,,2025-10-30 08:00,2025-11-05 17:00,2025-10-30 08:00,
FAB116512C-05,PAINT & PROTECT DOORS & FRAMES -  FAB116512C,Not Started,Elevator Hall 18 - 1F -SUE-FAB116512,,,,,,,,2026-02-16 08:00,2026-02-19 17:00,,
ZX-7780,SECAI TURNOVER FOR ACELERATION - Drywall & Inspect - Airlock 18-1F-FAB116513 - BAKER/DESCOPE,Complete,Air Lock 18 - 1F -SUE-FAB116513,,,,,,,,2025-08-27 08:00,2025-09-09 17:00,2025-05-19 08:00,2025-06-02 16:00
FAB116513F-04,INSTALL DOOR & HARDWARE - FAB116513F,Not Started,Air Lock 18 - 1F -SUE-FAB116513,,,,,,,,2025-12-01 08:00,2025-12-05 17:00,,
FAB116513F-05,PAINT & PROTECT DOORS & FRAMES -  FAB116513F,Not Started,Air Lock 18 - 1F -SUE-FAB116513,,,,,,,,2026-02-16 08:00,2026-02-19 15:00,,
FAB116513H-04,INSTALL DOOR & HARDWARE - FAB116513H,Not Started,Air Lock 18 - 1F -SUE-FAB116513,,,,,,,,2025-11-28 08:00,2025-12-04 17:00,,
FAB116513H-05,PAINT & PROTECT DOORS & FRAMES -  FAB116513H,Not Started,Air Lock 18 - 1F -SUE-FAB116513,,,,,,,,2026-02-16 08:00,2026-02-19 15:00,,
FAB116513C-04,INSTALL DOOR & HARDWARE - FAB116513C,Active,Air Lock 18 - 1F -SUE-FAB116513,,,,,,,,2025-10-29 08:00,2025-11-04 17:00,2025-10-29 08:00,
FAB116513C-05,PAINT & PROTECT DOORS & FRAMES -  FAB116513C,Not Started,Air Lock 18 - 1F -SUE-FAB116513,,,,,,,,2026-02-16 08:00,2026-02-19 17:00,,
FAB116513D-04,INSTALL DOOR & HARDWARE - FAB116513D,Not Started,Air Lock 18 - 1F -SUE-FAB116513,,,,,,,,2025-12-01 08:00,2025-12-05 17:00,,
FAB116513D-05,PAINT & PROTECT DOORS & FRAMES -  FAB116513D,Not Started,Air Lock 18 - 1F -SUE-FAB116513,,,,,,,,2026-02-16 08:00,2026-02-19 17:00,,
FAB116513E-04,INSTALL DOOR & HARDWARE - FAB116513E,Active,Air Lock 18 - 1F -SUE-FAB116513,,,,,,,,2025-10-14 08:00,2025-10-20 17:00,2025-10-14 08:00,
FAB116513E-05,PAINT & PROTECT DOORS & FRAMES -  FAB116513E,Not Started,Air Lock 18 - 1F -SUE-FAB116513,,,,,,,,2026-02-16 08:00,2026-02-19 17:00,,
FAB116513G-04,INSTALL DOOR & HARDWARE - FAB116513G,Active,Air Lock 18 - 1F -SUE-FAB116513,,,,,,,,2025-10-08 08:00,2025-10-14 17:00,2025-10-08 08:00,
FAB116513G-05,PAINT & PROTECT DOORS & FRAMES -  FAB116513G,Not Started,Air Lock 18 - 1F -SUE-FAB116513,,,,,,,,2026-02-16 08:00,2026-02-19 17:00,,
FAB116513E-11,IMPACT - PROCUREMENT - Reordered doors (Wall Thickness and Door Swing Design Changes) FAB116513E/F/G,Complete,Air Lock 18 - 1F -SUE-FAB116513,,,,,,,,2025-07-10 08:00,2025-09-16 15:00,2025-06-09 08:00,2025-07-14 15:00
FAB116513F-03,INSTALL DOOR FRAME BY SECAI - FAB116513F HANDED OVER ON 08/20,Active,Air Lock 18 - 1F -SUE-FAB116513,,,,,,,,2025-08-20 08:00,2025-08-20 17:00,2025-08-20 08:00,
FAB116513C-03,INSTALL DOOR FRAME - FAB116513C,Complete,Air Lock 18 - 1F -SUE-FAB116513,,,,,,,,2025-10-28 08:00,2025-10-28 17:00,2025-10-28 08:00,2025-10-28 17:00
FAB116513D-03,INSTALL DOOR FRAME BY SECAI - FAB116513D HANDED OVER TO SECAI ON 08/20,Active,Air Lock 18 - 1F -SUE-FAB116513,,,,,,,,2025-08-20 08:00,2025-08-20 17:00,2025-08-20 08:00,
FAB116513E-03,INSTALL DOOR FRAME BY SECAI - FAB116513E HANDED OVER TO SECAI ON 07/17,Complete,Air Lock 18 - 1F -SUE-FAB116513,,,,,,,,2025-07-17 08:00,2025-08-20 17:00,2025-07-17 08:00,2025-09-22 08:00
FAB116513G-03,INSTALL DOOR FRAME BY SECAI - FAB116513G HANDED OVER TO SECAI ON 07/17,Complete,Air Lock 18 - 1F -SUE-FAB116513,,,,,,,,2025-07-17 08:00,2025-08-20 17:00,2025-07-17 08:00,2025-09-08 08:00
ZX-7930,SECAI TURNOVER FOR ACELERATION - Drywall & Inspect - Exit Passageway 18-1F-FAB116511 BAKER/DESCOPE,Complete,Exit Passageway 18 - 1F -SUE-FAB116511,,,,,,,,2025-08-12 08:00,2025-08-25 17:00,2025-06-10 08:00,2025-06-10 16:00
FAB116511A-03,INSTALL DOOR FRAMES - FAB116511A,Complete,Exit Passageway 18 - 1F -SUE-FAB116511,,,,,,,,2025-08-25 13:00,2025-08-26 12:00,2025-05-21 00:00,2025-05-21 16:00
FAB116511A-04,INSTALL DOOR & HARDWARE - FAB116511A,Not Started,Exit Passageway 18 - 1F -SUE-FAB116511,,,,,,,,2025-11-21 08:00,2025-11-27 17:00,,
FAB116511A-05,PAINT & PROTECT DOORS & FRAMES -  FAB116511A,Not Started,Exit Passageway 18 - 1F -SUE-FAB116511,,,,,,,,2026-02-16 08:00,2026-02-19 15:00,,
FAB116511B-01,IMPACT - INSTALL/REWORK DRYWALL FRAMING AROUND DOORS - FAB116511B BAKER/DESCOPE,Complete,Exit Passageway 18 - 1F -SUE-FAB116511,,,,,,,,2025-06-10 08:00,2025-06-10 17:00,2025-06-10 08:00,2025-06-10 16:00
FAB116511B-03,INSTALL DOOR FRAMES - FAB116511B,Complete,Exit Passageway 18 - 1F -SUE-FAB116511,,,,,,,,2025-07-28 08:00,2025-07-28 17:00,2025-07-28 08:00,2025-07-28 17:00
FAB116511B-04,INSTALL DOOR & HARDWARE - FAB116511B,Active,Exit Passageway 18 - 1F -SUE-FAB116511,,,,,,,,2025-10-01 08:00,2025-10-07 17:00,2025-10-01 08:00,
FAB116511B-05,PAINT & PROTECT DOORS & FRAMES -  FAB116511B,Not Started,Exit Passageway 18 - 1F -SUE-FAB116511,,,,,,,,2026-02-16 08:00,2026-02-19 15:00,,
FAB116511G-03,INSTALL DOOR FRAMES - FAB116511G,Complete,Exit Passageway 18 - 1F -SUE-FAB116511,,,,,,,,2025-08-04 08:00,2025-08-04 17:00,2025-08-04 08:00,2025-08-04 17:00
FAB116511G-04,INSTALL DOOR & HARDWARE - FAB116511G,Not Started,Exit Passageway 18 - 1F -SUE-FAB116511,,,,,,,,2025-11-21 08:00,2025-11-27 17:00,,
FAB116511G-05,PAINT & PROTECT DOORS & FRAMES -  FAB116511G,Not Started,Exit Passageway 18 - 1F -SUE-FAB116511,,,,,,,,2026-02-16 08:00,2026-02-19 15:00,,
FAB116511B-11,IMPACT - PROCUREMENT - Reordered doors (Wall Thickness and Door Swing Design Changes),Complete,Exit Passageway 18 - 1F -SUE-FAB116511,,,,,,,,2025-06-09 08:00,2025-08-04 17:00,2025-06-09 08:00,2025-07-14 17:00
FAB1165110B-04,DOOR INSTALL - FAB1165110B (OHC),Not Started,Exit Passageway 18 - 1F -SUE-FAB116511,,,,,,,,2025-12-12 08:00,2025-12-15 17:00,,
ZX-8230,Complete Drywall & Inspect - D-G/33-1F,Complete,D-G/33 - 1F -FAB,,,,,,,,2025-05-28 08:00,2025-06-10 17:00,2025-05-23 08:00,2025-05-28 16:00
ZX-16530,IMPACT - Complete Drywall & Inspect - D-G/33-1F N&b APPROVAL,Complete,D-G/33 - 1F -FAB,,,,,,,,2025-05-05 08:00,2025-05-16 17:00,2025-05-05 08:00,2025-05-22 16:00
ZX-8530,SECAI TURNOVER FOR ACELERATION - Drywall & Inspect - Bunker Rm 14-1F-FAB114404 BAKER/DESCOPE,Complete,Bunker Rm 14 - 1F -FAB-FAB114404,,,,,,,,2025-06-10 08:00,2025-06-10 08:00,2025-06-10 08:00,2025-06-10 08:00
FAB114404A-01,IMPACT - INSTALL/REWORK DRYWALL FRAMING AROUND DOORS - FAB114404A,Complete,Bunker Rm 14 - 1F -FAB-FAB114404,,,,,,,,2025-06-10 08:00,2025-06-10 08:00,2025-03-17 08:00,2025-03-24 08:00
FAB114404A-03,INSTALL DOOR FRAMES - FAB114404A,Complete,Bunker Rm 14 - 1F -FAB-FAB114404,,,,,,,,2025-09-11 13:00,2025-09-12 12:00,2025-03-24 00:00,2025-03-24 16:00
FAB114404A-04,INSTALL DOOR & HARDWARE - FAB114404A,Not Started,Bunker Rm 14 - 1F -FAB-FAB114404,,,,,,,,2025-12-05 08:00,2025-12-11 17:00,,
FAB114404A-05,PAINT & PROTECT DOORS & FRAMES - FAB114404A,Not Started,Bunker Rm 14 - 1F -FAB-FAB114404,,,,,,,,2026-02-16 08:00,2026-02-19 15:00,,
FAB114404B-01,IMPACT - INSTALL/REWORK DRYWALL FRAMING AROUND DOORS - FAB114404B,Complete,Bunker Rm 14 - 1F -FAB-FAB114404,,,,,,,,2025-06-10 08:00,2025-06-10 08:00,2025-03-03 08:00,2025-03-11 08:00
FAB114404B-03,INSTALL DOOR FRAMES - FAB114404B,Complete,Bunker Rm 14 - 1F -FAB-FAB114404,,,,,,,,2025-09-11 13:00,2025-09-12 12:00,2025-03-11 00:00,2025-03-11 16:00
FAB114404B-04,INSTALL DOOR & HARDWARE - FAB114404B,Active,Bunker Rm 14 - 1F -FAB-FAB114404,,,,,,,,2025-11-07 08:00,2025-11-13 17:00,2025-11-07 08:00,
FAB114404B-05,PAINT & PROTECT DOORS & FRAMES - FAB114404B,Not Started,Bunker Rm 14 - 1F -FAB-FAB114404,,,,,,,,2026-02-16 08:00,2026-02-19 15:00,,
ZX-7750,SECAI TURNOVER FOR ACELERATION - Drywall & Inspect - Bunker Rm 13-FAB114403 BAKER/DESCOPE,Complete,Bunker Rm 13 - 1F -FAB-FAB114403,,,,,,,,2025-08-28 08:00,2025-08-28 08:00,2025-06-10 08:00,2025-06-10 08:00
FAB114403A-01,IMPACT - INSTALL/REWORK DRYWALL FRAMING AROUND DOORS - FAB114403A,Complete,Bunker Rm 13 - 1F -FAB-FAB114403,,,,,,,,2025-06-10 08:00,2025-06-10 08:00,2025-03-03 08:00,2025-03-12 08:00
FAB114403A-03,INSTALL DOOR FRAMES - FAB114403A,Complete,Bunker Rm 13 - 1F -FAB-FAB114403,,,,,,,,2025-09-10 13:00,2025-09-11 12:00,2025-03-12 00:00,2025-03-12 08:00
FAB114403A-04,INSTALL DOOR & HARDWARE - FAB114403A,Active,Bunker Rm 13 - 1F -FAB-FAB114403,,,,,,,,2025-11-06 08:00,2025-11-12 17:00,2025-11-06 08:00,
FAB114403A-05,PAINT & PROTECT DOORS & FRAMES - FAB114403A,Not Started,Bunker Rm 13 - 1F -FAB-FAB114403,,,,,,,,2026-02-16 08:00,2026-02-19 15:00,,
FAB114403B-01,IMPACT - INSTALL/REWORK DRYWALL FRAMING AROUND DOORS - FAB114403B,Complete,Bunker Rm 13 - 1F -FAB-FAB114403,,,,,,,,2025-06-10 08:00,2025-06-10 08:00,2025-03-05 08:00,2025-03-14 08:00
FAB114403B-03,INSTALL DOOR FRAMES - FAB114403B,Complete,Bunker Rm 13 - 1F -FAB-FAB114403,,,,,,,,2025-09-10 13:00,2025-09-11 12:00,2025-03-14 00:00,2025-03-14 16:00
FAB114403B-04,DOOR INSTALL - FAB114403B,Complete,Bunker Rm 13 - 1F -FAB-FAB114403,,,,,,,,2025-09-25 08:00,2025-09-25 17:00,2025-09-25 08:00,2025-09-25 17:00
FAB114403B-05,PAINT & PROTECT DOORS & FRAMES - FAB114403B,Complete,Bunker Rm 13 - 1F -FAB-FAB114403,,,,,,,,2025-09-23 08:00,2025-09-26 15:00,2025-09-23 08:00,2025-09-26 15:00
FAB114403B-06,INSTALL DOOR HARDWARE - FAB114403B,Not Started,Bunker Rm 13 - 1F -FAB-FAB114403,,,,,,,,2025-11-21 08:00,2025-11-26 15:00,,
ZX-7990,SECAI TURNOVER FOR ACELERATION - Drywall & Inspect - Bunker Rm 12-FAB114402 BAKER/DESCOPE,Complete,Bunker Rm 12 -1F -FAB-FAB114402,,,,,,,,2025-08-15 08:00,2025-08-15 08:00,2025-06-10 08:00,2025-06-10 08:00
FAB114402A-01,IMPACT - INSTALL/REWORK DRYWALL FRAMING AROUND DOORS BY SECAI - FAB114402A BAKER/DESCOPE,Complete,Bunker Rm 12 -1F -FAB-FAB114402,,,,,,,,2025-06-10 08:00,2025-06-10 08:00,2025-06-10 08:00,2025-06-10 08:00
FAB114402A-03,INSTALL DOOR FRAMES - FAB114402A,Complete,Bunker Rm 12 -1F -FAB-FAB114402,,,,,,,,2025-06-10 08:00,2025-06-10 08:00,2025-06-17 08:00,2025-06-17 08:00
FAB114402A-04,INSTALL DOOR & HARDWARE - FAB114402A,Active,Bunker Rm 12 -1F -FAB-FAB114402,,,,,,,,2025-10-29 08:00,2025-11-04 17:00,2025-10-29 08:00,
FAB114402A-05,PAINT & PROTECT DOORS & FRAMES - FAB114402A,Not Started,Bunker Rm 12 -1F -FAB-FAB114402,,,,,,,,2026-02-16 08:00,2026-02-19 15:00,,
FAB114402B-01,IMPACT - INSTALL/REWORK DRYWALL FRAMING AROUND DOORS - FAB114402B,Complete,Bunker Rm 12 -1F -FAB-FAB114402,,,,,,,,2025-06-10 08:00,2025-06-10 08:00,2025-03-04 08:00,2025-03-12 08:00
FAB114402B-03,INSTALL DOOR FRAMES - FAB114402B,Complete,Bunker Rm 12 -1F -FAB-FAB114402,,,,,,,,2025-09-16 13:00,2025-09-17 12:00,2025-03-12 00:00,2025-03-12 16:00
FAB114402B-04,INSTALL DOOR & HARDWARE - FAB114402B,Active,Bunker Rm 12 -1F -FAB-FAB114402,,,,,,,,2025-09-25 08:00,2025-10-01 17:00,2025-09-25 08:00,
FAB114402B-05,PAINT & PROTECT DOORS & FRAMES - FAB114402B,Not Started,Bunker Rm 12 -1F -FAB-FAB114402,,,,,,,,2026-02-16 08:00,2026-02-19 15:00,,
FAB114402A-11,IMPACT - SECAI - MEP CONDUIT BLOCKING FRAME INSTALLATION,Complete,Bunker Rm 12 -1F -FAB-FAB114402,,,,,,,,2025-06-20 08:00,2025-06-30 10:00,2025-05-19 08:00,2025-06-13 10:00
ZX-8290,SECAI TURNOVER FOR ACELERATION - Drywall & Inspect - Bunker Rm 11-FAB114203 BAKER/DESCOPE,Complete,Bunker Rm 11- 1F -FAB-FAB114203,,,,,,,,2025-08-28 08:00,2025-08-28 08:00,2025-06-10 08:00,2025-06-10 08:00
FAB114203A-01,IMPACT - INSTALL/REWORK DRYWALL FRAMING AROUND DOORS - FAB114203A,Complete,Bunker Rm 11- 1F -FAB-FAB114203,,,,,,,,2025-06-10 08:00,2025-06-10 08:00,2025-03-04 08:00,2025-03-13 08:00
FAB114203A-03,INSTALL DOOR FRAMES - FAB114203A,Complete,Bunker Rm 11- 1F -FAB-FAB114203,,,,,,,,2025-09-19 13:00,2025-09-22 12:00,2025-03-13 00:00,2025-03-13 16:00
FAB114203A-04,INSTALL DOOR & HARDWARE - FAB114203A,Active,Bunker Rm 11- 1F -FAB-FAB114203,,,,,,,,2025-11-07 08:00,2025-11-13 17:00,2025-11-07 08:00,
FAB114203A-05,PAINT & PROTECT DOORS & FRAMES - FAB114203A,Not Started,Bunker Rm 11- 1F -FAB-FAB114203,,,,,,,,2026-02-16 08:00,2026-02-19 15:00,,
FAB114203B-01,IMPACT - INSTALL/REWORK DRYWALL FRAMING AROUND DOORS - FAB114203B,Complete,Bunker Rm 11- 1F -FAB-FAB114203,,,,,,,,2025-06-10 08:00,2025-06-10 08:00,2025-03-04 08:00,2025-06-13 08:00
FAB114203B-03,INSTALL DOOR FRAMES - FAB114203B,Complete,Bunker Rm 11- 1F -FAB-FAB114203,,,,,,,,2025-09-19 13:00,2025-09-22 12:00,2025-03-13 00:00,2025-03-13 16:00
FAB114203B-04,INSTALL DOOR & HARDWARE - FAB114203B,Active,Bunker Rm 11- 1F -FAB-FAB114203,,,,,,,,2025-07-29 08:00,2025-08-04 17:00,2025-07-29 08:00,
FAB114203B-05,PAINT & PROTECT DOORS & FRAMES - FAB114203B,Not Started,Bunker Rm 11- 1F -FAB-FAB114203,,,,,,,,2026-02-16 08:00,2026-02-17 17:00,,
ZX-8590,SECAI TURNOVER FOR ACELERATION - Drywall & Inspect - Bunker Rm 10-FAB114155 BAKER/DESCOPE,Complete,Bunker Rm 10- 1F -FAB-FAB114155,,,,,,,,2025-09-05 08:00,2025-09-18 17:00,2025-06-10 08:00,2025-06-10 16:00
FAB114155A-01,IMPACT - INSTALL/REWORK DRYWALL FRAMING AROUND DOORS BY SECAI - FAB114155A,Complete,Bunker Rm 10- 1F -FAB-FAB114155,,,,,,,,2025-09-23 08:00,2025-10-01 17:00,2025-03-05 08:00,2025-03-13 16:00
FAB114155A-03,INSTALL DOOR FRAMES - FAB114155A,Complete,Bunker Rm 10- 1F -FAB-FAB114155,,,,,,,,2025-09-16 13:00,2025-09-17 12:00,2025-03-13 00:00,2025-03-13 08:00
FAB114155A-04,INSTALL DOOR & HARDWARE - FAB114155A,Active,Bunker Rm 10- 1F -FAB-FAB114155,,,,,,,,2025-09-12 08:00,2025-09-18 17:00,2025-09-12 08:00,
FAB114155A-05,PAINT & PROTECT DOORS & FRAMES - FAB114155A,Not Started,Bunker Rm 10- 1F -FAB-FAB114155,,,,,,,,2026-02-16 08:00,2026-02-19 15:00,,
FAB114155B-01,IMPACT - INSTALL/REWORK DRYWALL FRAMING AROUND DOORS BY SECAI - FAB114155B,Complete,Bunker Rm 10- 1F -FAB-FAB114155,,,,,,,,2025-09-23 08:00,2025-10-01 17:00,2025-03-18 08:00,2025-03-26 16:00
FAB114155B-03,INSTALL DOOR FRAMES - FAB114155B,Complete,Bunker Rm 10- 1F -FAB-FAB114155,,,,,,,,2025-09-16 13:00,2025-09-17 12:00,2025-03-26 00:00,2025-03-26 16:00
FAB114155B-04,INSTALL DOOR & HARDWARE - FAB114155B,Active,Bunker Rm 10- 1F -FAB-FAB114155,,,,,,,,2025-10-13 08:00,2025-10-17 17:00,2025-10-13 08:00,
FAB114155B-05,PAINT & PROTECT DOORS & FRAMES - FAB114155B,Not Started,Bunker Rm 10- 1F -FAB-FAB114155,,,,,,,,2026-02-16 08:00,2026-02-19 15:00,,
ZX-7720,SECAI TURNOVER FOR ACELERATION - Drywall & Inspect - Bunker Rm 9-FAB114154 BAKER/DESCOPE,Complete,Bunker Rm 9 - 1F -FAB-FAB114154,,,,,,,,2025-08-29 08:00,2025-08-29 08:00,2025-06-10 08:00,2025-06-10 08:00
FAB114154A-01,IMPACT - INSTALL/REWORK DRYWALL FRAMING AROUND DOORS - FAB114154A,Complete,Bunker Rm 9 - 1F -FAB-FAB114154,,,,,,,,2025-03-04 08:00,2025-03-04 08:00,2025-03-04 08:00,2025-03-11 17:00
FAB114154A-03,INSTALL DOOR FRAMES - FAB114154A,Complete,Bunker Rm 9 - 1F -FAB-FAB114154,,,,,,,,2025-03-11 08:00,2025-03-11 08:00,2025-03-11 08:00,2025-03-11 08:00
FAB114154A-04,INSTALL DOOR & HARDWARE - FAB114154A,Active,Bunker Rm 9 - 1F -FAB-FAB114154,,,,,,,,2025-08-22 08:00,2025-08-28 17:00,2025-08-22 08:00,
FAB114154A-05,PAINT & PROTECT DOORS & FRAMES - FAB114154A,Not Started,Bunker Rm 9 - 1F -FAB-FAB114154,,,,,,,,2026-02-16 08:00,2026-02-17 17:00,,
FAB114154B-01,IMPACT - INSTALL/REWORK DRYWALL FRAMING AROUND DOORS - FAB114154B,Complete,Bunker Rm 9 - 1F -FAB-FAB114154,,,,,,,,2025-03-03 08:00,2025-03-03 08:00,2025-03-04 08:00,2025-03-11 17:00
FAB114154B-03,INSTALL DOOR FRAMES - FAB114154B,Complete,Bunker Rm 9 - 1F -FAB-FAB114154,,,,,,,,2025-06-10 08:00,2025-06-10 08:00,2025-03-11 08:00,2025-03-11 08:00
FAB114154B-04,INSTALL DOOR & HARDWARE - FAB114154B,Active,Bunker Rm 9 - 1F -FAB-FAB114154,,,,,,,,2025-10-21 08:00,2025-10-27 17:00,2025-10-21 08:00,
FAB114154B-05,PAINT & PROTECT DOORS & FRAMES - FAB114154B,Not Started,Bunker Rm 9 - 1F -FAB-FAB114154,,,,,,,,2026-02-16 08:00,2026-02-19 15:00,,
ZX-7900,SECAI TURNOVER FOR ACELERATION - Drywall & Inspect - Bunker Rm 8-FAB114153 BAKER/DESCOPE,Complete,Bunker Rm 8 - 1F -FAB-FAB114153,,,,,,,,2025-06-10 08:00,2025-06-10 08:00,2025-06-10 08:00,2025-06-10 08:00
FAB114153A-01,IMPACT - INSTALL/REWORK DRYWALL FRAMING AROUND DOORS BY SECAI - FAB114153A,Complete,Bunker Rm 8 - 1F -FAB-FAB114153,,,,,,,,2025-06-10 08:00,2025-06-10 08:00,2025-03-03 08:00,2025-03-11 08:00
FAB114153A-03,INSTALL DOOR FRAMES - FAB114153A,Complete,Bunker Rm 8 - 1F -FAB-FAB114153,,,,,,,,2025-10-16 13:00,2025-10-17 12:00,2025-03-11 00:00,2025-03-11 16:00
FAB114153A-04,INSTALL DOOR & HARDWARE - FAB114153A,Active,Bunker Rm 8 - 1F -FAB-FAB114153,,,,,,,,2025-11-07 08:00,2025-11-13 17:00,2025-11-07 08:00,
FAB114153A-05,PAINT & PROTECT DOORS & FRAMES - FAB114153A,Not Started,Bunker Rm 8 - 1F -FAB-FAB114153,,,,,,,,2026-02-16 08:00,2026-02-19 15:00,,
FAB114153B-01,IMPACT - INSTALL/REWORK DRYWALL FRAMING AROUND DOORS BY SECAI - FAB114153B,Complete,Bunker Rm 8 - 1F -FAB-FAB114153,,,,,,,,2025-06-10 08:00,2025-06-10 08:00,2025-03-25 08:00,2025-03-25 08:00
FAB114153B-03,INSTALL DOOR FRAMES - FAB114153B,Complete,Bunker Rm 8 - 1F -FAB-FAB114153,,,,,,,,2025-10-16 13:00,2025-10-17 12:00,2025-03-25 00:00,2025-03-25 16:00
FAB114153B-04,INSTALL DOOR & HARDWARE - FAB114153B,Active,Bunker Rm 8 - 1F -FAB-FAB114153,,,,,,,,2025-08-22 08:00,2025-08-28 17:00,2025-08-22 08:00,
FAB114153B-05,PAINT & PROTECT DOORS & FRAMES - FAB114153B,Not Started,Bunker Rm 8 - 1F -FAB-FAB114153,,,,,,,,2026-02-16 08:00,2026-02-17 17:00,,
ZX-8200,SECAI TURNOVER FOR ACELERATION - Drywall & Inspect - Bunker Rm 7-FAB114152 BAKER/DESCOPE,Complete,Bunker Rm 7 - 1F -FAB-FAB114152,,,,,,,,2025-06-10 08:00,2025-06-10 08:00,2025-06-10 08:00,2025-06-10 08:00
FAB114152A-01,IMPACT - INSTALL/REWORK DRYWALL FRAMING AROUND DOORS - FAB114152A,Complete,Bunker Rm 7 - 1F -FAB-FAB114152,,,,,,,,2025-06-10 08:00,2025-06-10 08:00,2025-03-11 08:00,2025-03-20 08:00
FAB114152A-03,INSTALL DOOR FRAMES - FAB114152A,Complete,Bunker Rm 7 - 1F -FAB-FAB114152,,,,,,,,2025-09-17 13:00,2025-09-18 12:00,2025-03-20 00:00,2025-03-20 16:00
FAB114152A-04,INSTALL DOOR & HARDWARE - FAB114152A,Active,Bunker Rm 7 - 1F -FAB-FAB114152,,,,,,,,2025-09-12 08:00,2025-09-18 17:00,2025-11-07 08:00,
FAB114152A-05,PAINT & PROTECT DOORS & FRAMES - FAB114152A,Not Started,Bunker Rm 7 - 1F -FAB-FAB114152,,,,,,,,2026-02-16 08:00,2026-02-19 15:00,,
FAB114152B-01,IMPACT - INSTALL/REWORK DRYWALL FRAMING AROUND DOORS - FAB114152B,Complete,Bunker Rm 7 - 1F -FAB-FAB114152,,,,,,,,2025-06-10 08:00,2025-06-10 08:00,2025-03-11 08:00,2025-03-20 08:00
FAB114152B-03,INSTALL DOOR FRAMES - FAB114152B,Complete,Bunker Rm 7 - 1F -FAB-FAB114152,,,,,,,,2025-09-17 13:00,2025-09-18 12:00,2025-03-20 00:00,2025-03-20 16:00
FAB114152B-04,INSTALL DOOR & HARDWARE - FAB114152B,Not Started,Bunker Rm 7 - 1F -FAB-FAB114152,,,,,,,,2025-11-21 08:00,2025-11-27 17:00,,
FAB114152B-05,PAINT & PROTECT DOORS & FRAMES - FAB114152B,Not Started,Bunker Rm 7 - 1F -FAB-FAB114152,,,,,,,,2026-02-16 08:00,2026-02-19 15:00,,
ZX-8500,Complete Drywall & Inspect - D-G/3-1F MK MARLOW,Complete,D-G/3 - 1F - FIZ,,,,,,,,2025-09-04 08:00,2025-09-04 08:00,2025-09-04 08:00,2025-09-04 08:00
ZX-8050,Complete Drywall & Inspect - G.3-J/3-1F MK MARLOW,Complete,G.3-J/3 - 1F - FIZ,,,,,,,,2025-08-04 08:00,2025-08-15 17:00,2025-08-04 08:00,2025-08-15 17:00
ZX-8350,Complete Drywall & Inspect - PCS Monitoring Rm-1F-FAB112155 NON RATED WALLS,Complete,PCS Monitoring Rm - 1F - FAB-FAB112155,,,,,,,,2024-08-19 08:00,2024-08-30 17:00,2024-08-19 08:00,2024-08-30 16:00
FAB112155A-25,DOOR FRAME HANDED OVER TO SECAI 08/14 - FAB112155A,Complete,PCS Monitoring Rm - 1F - FAB-FAB112155,,,,,,,,2025-08-05 08:00,2025-08-13 17:00,2025-08-14 08:00,2025-08-14 16:00
FAB112155A-35,INSTALL DOOR FRAME BY SECAI - FAB112155A HANDED OVER 08/14,Complete,PCS Monitoring Rm - 1F - FAB-FAB112155,,,,,,,,2025-09-18 08:00,2025-09-24 17:00,2025-08-15 08:00,2025-08-22 17:00
FAB112155A-04,INSTALL DOOR & HARDWARE - FAB112155A,Active,PCS Monitoring Rm - 1F - FAB-FAB112155,,,,,,,,2025-09-24 08:00,2025-09-30 17:00,2025-09-24 08:00,
FAB112155A-05,PAINT & PROTECT DOORS & FRAMES - FAB112155A,Not Started,PCS Monitoring Rm - 1F - FAB-FAB112155,,,,,,,,2026-02-16 08:00,2026-02-19 15:00,,
FAB112155B-01,IMPACT - REWORK DRYWALL FOR/AND INSTALL DOOR FRAMES - FAB112155B,Complete,PCS Monitoring Rm - 1F - FAB-FAB112155,,,,,,,,2025-08-05 08:00,2025-08-13 17:00,2025-03-10 08:00,2025-03-19 16:00
FAB112155B-03,INSTALL DOOR FRAMES - FAB112155B,Complete,PCS Monitoring Rm - 1F - FAB-FAB112155,,,,,,,,2025-09-22 13:00,2025-09-23 12:00,2025-03-19 00:00,2025-03-19 16:00
FAB112155B-04,INSTALL DOOR & HARDWARE - FAB112155B,Not Started,PCS Monitoring Rm - 1F - FAB-FAB112155,,,,,,,,2025-11-21 08:00,2025-11-27 17:00,,
FAB112155B-05,PAINT & PROTECT DOORS & FRAMES - FAB112155B,Not Started,PCS Monitoring Rm - 1F - FAB-FAB112155,,,,,,,,2026-02-16 08:00,2026-02-19 15:00,,
ZX-8650,SECAI TURNOVER FOR ACELERATION - Drywall & Inspect - PCS Cleaning Rm-1F-FAB112157 BAKER/DESCOPE,Complete,PCS Cleaning Rm - 1F -FAB-FAB112157,,,,,,,,2025-09-19 08:00,2025-10-02 17:00,2025-06-27 08:00,2025-06-27 16:00
ZX-7870,Complete Drywall & Inspect - Manufacturing Storage 1-1F-FAB112157 NON RATED WALLS,Complete,Manufacturing Storage 1 - 1F -FAB-FAB112157,,,,,,,,2025-10-02 08:00,2025-10-15 17:00,2024-08-19 08:00,2024-08-30 16:00
ZX-8170,SECAI TURNOVER FOR ACELERATION - Complete Drywall & Inspect - MCC Rm 1-1F-FAB112159,Complete,MCC Rm 1 - 1F -FAB-FAB112159,,,,,,,,2025-06-27 08:00,2025-07-10 17:00,2025-06-27 08:00,2025-06-27 17:00
FAB112159A-01,IMPACT - INSTALL/REWORK DRYWALL FRAMING AROUND DOORS - FAB112159A,Complete,MCC Rm 1 - 1F -FAB-FAB112159,,,,,,,,2025-09-24 08:00,2025-09-24 17:00,2025-09-24 08:00,2025-09-24 17:00
FAB112159A-03,INSTALL DOOR FRAMES - FAB112159A,Complete,MCC Rm 1 - 1F -FAB-FAB112159,,,,,,,,2025-09-24 08:00,2025-09-24 17:00,2025-09-24 08:00,2025-09-24 17:00
FAB112159A-04,INSTALL DOOR & HARDWARE - FAB112159A,Active,MCC Rm 1 - 1F -FAB-FAB112159,,,,,,,,2025-10-31 08:00,2025-11-06 17:00,2025-10-31 08:00,
FAB112159A-05,PAINT & PROTECT DOORS & FRAMES - FAB112159A,Not Started,MCC Rm 1 - 1F -FAB-FAB112159,,,,,,,,2026-02-16 08:00,2026-02-19 15:00,,
FAB112159B-01,IMPACT - INSTALL/REWORK DRYWALL FRAMING AROUND DOORS - FAB112159B,Complete,MCC Rm 1 - 1F -FAB-FAB112159,,,,,,,,2025-03-19 08:00,2025-03-27 17:00,2025-03-19 08:00,2025-03-27 17:00
FAB112159B-03,INSTALL DOOR FRAMES - FAB112159B,Complete,MCC Rm 1 - 1F -FAB-FAB112159,,,,,,,,2025-08-04 13:00,2025-08-05 12:00,2025-03-27 00:00,2025-03-27 08:00
FAB112159B-04,INSTALL DOOR & HARDWARE - FAB112159B,Active,MCC Rm 1 - 1F -FAB-FAB112159,,,,,,,,2025-09-25 08:00,2025-10-01 17:00,2025-09-25 08:00,
FAB112159B-05,PAINT & PROTECT DOORS & FRAMES - FAB112159B,Not Started,MCC Rm 1 - 1F -FAB-FAB112159,,,,,,,,2026-02-16 08:00,2026-02-19 15:00,,
ZX-8470,SECAI TURNOVER FOR ACELERATION - Complete Drywall & Inspect - I/O Rm 1-1F-FAB112160,Complete,I/O Rm 1 - 1F -FAB-FAB112160,,,,,,,,2025-06-27 08:00,2025-07-10 17:00,2025-06-27 08:00,2025-06-27 17:00
FAB112160A-01,IMPACT - INSTALL/REWORK DRYWALL FRAMING AROUND DOORS - FAB112160A,Complete,I/O Rm 1 - 1F -FAB-FAB112160,,,,,,,,2025-04-07 08:00,2025-04-15 17:00,2025-04-07 08:00,2025-04-15 17:00
FAB112160A-03,INSTALL DOOR FRAMES FAB112160A,Complete,I/O Rm 1 - 1F -FAB-FAB112160,,,,,,,,2025-08-07 13:00,2025-08-08 12:00,2025-04-15 00:00,2025-04-15 16:00
FAB112160A-04,INSTALL DOOR & HARDWARE - FAB112160A,Active,I/O Rm 1 - 1F -FAB-FAB112160,,,,,,,,2025-09-24 08:00,2025-09-30 17:00,2025-09-24 08:00,
FAB112160A-05,PAINT & PROTECT DOORS & FRAMES - FAB112160A,Not Started,I/O Rm 1 - 1F -FAB-FAB112160,,,,,,,,2026-02-16 08:00,2026-02-19 15:00,,
ZX-7960,Complete Drywall & Inspect - I/O Rm 2-1F-FAB112202 NON RATED WALLS,Complete,I/O Rm 2 - 1F -FAB-FAB112202,,,,,,,,2025-08-29 08:00,2025-09-11 17:00,2024-05-20 08:00,2024-05-27 16:00
FAB112202A-03,INSTALL DOOR FRAMES - FAB112202A P-1,Complete,I/O Rm 2 - 1F -FAB-FAB112202,,,,,,,,2025-07-03 08:00,2025-07-03 17:00,2025-07-03 08:00,2025-07-03 16:00
FAB112202A-04,INSTALL DOOR & HARDWARE - FAB112202A - P1,Active,I/O Rm 2 - 1F -FAB-FAB112202,,,,,,,,2025-07-08 08:00,2025-07-14 17:00,2025-07-08 08:00,
FAB112202A-05,PAINT & PROTECT DOORS & FRAMES - FAB112202A,Not Started,I/O Rm 2 - 1F -FAB-FAB112202,,,,,,,,2026-02-16 08:00,2026-02-19 15:00,,
ZX-8260,SECAI TURNOVER FOR ACELERATION - Drywall & Inspect - Bunker Rm 1-1F-FAB112203 BAKER/DESCOPE,Complete,Bunker Rm 1 - 1F -FAB-FAB112203,,,,,,,,2025-08-25 08:00,2025-08-25 08:00,2025-06-10 08:00,2025-06-10 08:00
FAB112203A-01,IMPACT - INSTALL/REWORK DRYWALL FRAMING AROUND DOORS - FAB112203A,Complete,Bunker Rm 1 - 1F -FAB-FAB112203,,,,,,,,2025-06-10 08:00,2025-06-10 08:00,2025-03-01 08:00,2025-03-10 08:00
FAB112203A-03,INSTALL DOOR FRAMES - FAB112203A,Complete,Bunker Rm 1 - 1F -FAB-FAB112203,,,,,,,,2025-09-23 13:00,2025-09-24 12:00,2025-03-10 00:00,2025-03-10 16:00
FAB112203A-04,INSTALL DOOR & HARDWARE - FAB112203A,Active,Bunker Rm 1 - 1F -FAB-FAB112203,,,,,,,,2025-10-03 08:00,2025-10-09 17:00,2025-10-03 08:00,
FAB112203A-05,PAINT & PROTECT DOORS & FRAMES - FAB112203A,Not Started,Bunker Rm 1 - 1F -FAB-FAB112203,,,,,,,,2026-02-16 08:00,2026-02-19 15:00,,
FAB112203B-01,IMPACT - INSTALL/REWORK DRYWALL FRAMING AROUND DOORS - FAB112203B,Complete,Bunker Rm 1 - 1F -FAB-FAB112203,,,,,,,,2025-06-10 08:00,2025-06-10 08:00,2025-03-01 08:00,2025-03-10 08:00
FAB112203B-03,INSTALL DOOR FRAMES - FAB112203B,Complete,Bunker Rm 1 - 1F -FAB-FAB112203,,,,,,,,2025-09-23 13:00,2025-09-24 12:00,2025-03-10 00:00,2025-03-10 16:00
FAB112203B-04,INSTALL DOOR & HARDWARE - FAB112203B,Active,Bunker Rm 1 - 1F -FAB-FAB112203,,,,,,,,2025-08-21 08:00,2025-08-27 17:00,2025-08-21 08:00,
FAB112203B-05,PAINT & PROTECT DOORS & FRAMES - FAB112203B,Not Started,Bunker Rm 1 - 1F -FAB-FAB112203,,,,,,,,2026-02-16 08:00,2026-02-19 17:00,,
ZX-8560,SECAI TURNOVER FOR ACELERATION - Drywall & Inspect - Bunker Rm 2-1F-FAB112205 BAKER/DESCOPE,Complete,Bunker Rm 2 - 1F -FAB-FAB112205,,,,,,,,2025-06-10 08:00,2025-06-10 08:00,2025-06-10 08:00,2025-06-10 08:00
FAB112205A-01,IMPACT - INSTALL/REWORK DRYWALL FRAMING AROUND DOORS BY SECAI - FAB112205A BAKER/DESCOPE,Complete,Bunker Rm 2 - 1F -FAB-FAB112205,,,,,,,,2025-06-10 08:00,2025-06-10 08:00,2025-03-17 08:00,2025-03-24 08:00
FAB112205A-03,INSTALL DOOR FRAMES - FAB112205A,Complete,Bunker Rm 2 - 1F -FAB-FAB112205,,,,,,,,2025-09-08 13:00,2025-09-09 12:00,2025-03-24 00:00,2025-03-24 16:00
FAB112205A-04,INSTALL DOOR & HARDWARE - FAB112205A,Active,Bunker Rm 2 - 1F -FAB-FAB112205,,,,,,,,2025-09-29 08:00,2025-10-03 17:00,2025-09-29 08:00,
FAB112205A-05,PAINT & PROTECT DOORS & FRAMES - FAB112205A,Not Started,Bunker Rm 2 - 1F -FAB-FAB112205,,,,,,,,2026-02-16 08:00,2026-02-17 17:00,,
FAB112205B-01,IMPACT - INSTALL/REWORK DRYWALL FRAMING AROUND DOORS - FAB112205B,Complete,Bunker Rm 2 - 1F -FAB-FAB112205,,,,,,,,2025-06-10 08:00,2025-06-10 08:00,2025-03-17 08:00,2025-03-24 08:00
FAB112205B-03,INSTALL DOOR FRAMES - FAB112205B,Complete,Bunker Rm 2 - 1F -FAB-FAB112205,,,,,,,,2025-09-08 13:00,2025-09-09 12:00,2025-03-24 00:00,2025-03-24 16:00
FAB112205B-04,INSTALL DOOR & HARDWARE - FAB112205B,Active,Bunker Rm 2 - 1F -FAB-FAB112205,,,,,,,,2025-10-03 08:00,2025-10-09 17:00,2025-10-03 08:00,
FAB112205B-05,PAINT & PROTECT DOORS & FRAMES - FAB112205B,Not Started,Bunker Rm 2 - 1F -FAB-FAB112205,,,,,,,,2026-02-16 08:00,2026-02-19 15:00,,
ZX-8410,Complete Drywall & Inspect - Bunker Rm 3-1F-FAB112302 BAKER/DESCOPE,Complete,Bunker Rm 3 -1F -FAB-FAB112302,,,,,,,,2025-06-10 08:00,2025-06-10 08:00,2025-06-10 08:00,2025-06-10 08:00
FAB112302A-01,IMPACT - INSTALL/REWORK DRYWALL FRAMING AROUND DOORS - FAB112302A,Complete,Bunker Rm 3 -1F -FAB-FAB112302,,,,,,,,2025-06-10 08:00,2025-06-10 08:00,2025-03-04 08:00,2025-03-13 08:00
FAB112302A-03,INSTALL DOOR FRAMES - FAB112302A,Complete,Bunker Rm 3 -1F -FAB-FAB112302,,,,,,,,2025-09-19 13:00,2025-09-22 12:00,2025-03-13 00:00,2025-03-13 16:00
FAB112302A-04,INSTALL DOOR & HARDWARE - FAB112302A,Active,Bunker Rm 3 -1F -FAB-FAB112302,,,,,,,,2025-10-13 08:00,2025-10-17 17:00,2025-10-13 08:00,
FAB112302A-05,PAINT & PROTECT DOORS & FRAMES - FAB112302A,Not Started,Bunker Rm 3 -1F -FAB-FAB112302,,,,,,,,2026-02-16 08:00,2026-02-19 15:00,,
FAB112302B-01,IMPACT - INSTALL/REWORK DRYWALL FRAMING AROUND DOORS - FAB112302B,Complete,Bunker Rm 3 -1F -FAB-FAB112302,,,,,,,,2025-06-10 08:00,2025-06-10 08:00,2025-03-20 08:00,2025-03-20 08:00
FAB112302B-03,INSTALL DOOR FRAMES - FAB112302B,Complete,Bunker Rm 3 -1F -FAB-FAB112302,,,,,,,,2025-09-19 13:00,2025-09-22 12:00,2025-03-20 00:00,2025-03-20 16:00
FAB112302B-04,INSTALL DOOR & HARDWARE - FAB112302B,Active,Bunker Rm 3 -1F -FAB-FAB112302,,,,,,,,2025-08-21 08:00,2025-08-27 17:00,2025-08-21 08:00,
FAB112302B-05,PAINT & PROTECT DOORS & FRAMES - FAB112302B,Not Started,Bunker Rm 3 -1F -FAB-FAB112302,,,,,,,,2026-02-16 08:00,2026-02-19 15:00,,
ZX-8710,SECAI TURNOVER FOR ACELERATION - Drywall & Inspect - Bunker Rm 4-1F-FAB112303 BAKER/DESCOPE,Complete,Bunker Rm 4 - 1F -FAB-FAB112303,,,,,,,,2025-06-10 08:00,2025-06-10 08:00,2025-06-10 08:00,2025-06-10 08:00
FAB112303A-01,IMPACT - INSTALL/REWORK DRYWALL FRAMING AROUND DOORS BY SECAI - FAB112303A,Complete,Bunker Rm 4 - 1F -FAB-FAB112303,,,,,,,,2025-03-17 08:00,2025-03-17 08:00,2025-03-17 08:00,2025-03-27 17:00
FAB112303A-03,INSTALL DOOR FRAMES - FAB112303A,Complete,Bunker Rm 4 - 1F -FAB-FAB112303,,,,,,,,2025-09-04 13:00,2025-09-05 12:00,2025-03-27 00:00,2025-03-27 16:00
FAB112303A-04,INSTALL DOOR & HARDWARE - FAB112303A,Active,Bunker Rm 4 - 1F -FAB-FAB112303,,,,,,,,2025-11-03 08:00,2025-11-07 17:00,2025-11-03 08:00,
FAB112303A-05,PAINT & PROTECT DOORS & FRAMES - FAB112303A,Not Started,Bunker Rm 4 - 1F -FAB-FAB112303,,,,,,,,2026-02-16 08:00,2026-02-19 15:00,,
FAB112303B-01,IMPACT - INSTALL/REWORK DRYWALL FRAMING AROUND DOORS BY SECAI - FAB112303B,Complete,Bunker Rm 4 - 1F -FAB-FAB112303,,,,,,,,2025-06-10 08:00,2025-06-10 08:00,2025-03-11 08:00,2025-03-20 08:00
FAB112303B-03,INSTALL DOOR FRAMES - FAB112303B,Complete,Bunker Rm 4 - 1F -FAB-FAB112303,,,,,,,,2025-09-04 13:00,2025-09-05 12:00,2025-03-20 00:00,2025-03-20 16:00
FAB112303B-04,INSTALL DOOR & HARDWARE - FAB112303B,Active,Bunker Rm 4 - 1F -FAB-FAB112303,,,,,,,,2025-11-03 08:00,2025-11-07 17:00,2025-11-03 08:00,
FAB112303B-05,PAINT & PROTECT DOORS & FRAMES - FAB112303B,Not Started,Bunker Rm 4 - 1F -FAB-FAB112303,,,,,,,,2026-02-16 08:00,2026-02-19 15:00,,
ZX-8080,SECAI TURNOVER FOR ACELERATION - Drywall & Inspect - Bunker Rm 5-1F-FAB112305 BAKER/DESCOPE,Complete,Bunker Rm 5 - 1F -FAB-FAB112305,,,,,,,,2025-06-10 08:00,2025-06-10 08:00,2025-06-10 08:00,2025-06-10 08:00
FAB112305A-01,IMPACT - INSTALL/REWORK DRYWALL FRAMING AROUND DOORS - FAB112305A,Complete,Bunker Rm 5 - 1F -FAB-FAB112305,,,,,,,,2025-06-10 08:00,2025-06-18 17:00,2025-03-03 08:00,2025-03-11 08:00
FAB112305A-03,INSTALL DOOR FRAMES - FAB112305A,Complete,Bunker Rm 5 - 1F -FAB-FAB112305,,,,,,,,2025-09-15 13:00,2025-09-16 12:00,2025-03-11 00:00,2025-03-11 16:00
FAB112305A-04,INSTALL DOOR & HARDWARE - FAB112305A,Active,Bunker Rm 5 - 1F -FAB-FAB112305,,,,,,,,2025-09-24 08:00,2025-09-30 17:00,2025-09-24 08:00,
FAB112305A-05,PAINT & PROTECT DOORS & FRAMES - FAB112305A,Not Started,Bunker Rm 5 - 1F -FAB-FAB112305,,,,,,,,2026-02-16 08:00,2026-02-19 15:00,,
FAB112305B-01,IMPACT - INSTALL/REWORK DRYWALL FRAMING AROUND DOORS - FAB112305B,Complete,Bunker Rm 5 - 1F -FAB-FAB112305,,,,,,,,2025-10-01 08:00,2025-10-01 17:00,2025-10-01 08:00,2025-10-01 17:00
FAB112305B-03,INSTALL DOOR FRAMES - FAB112305B,Complete,Bunker Rm 5 - 1F -FAB-FAB112305,,,,,,,,2025-10-01 08:00,2025-10-01 17:00,2025-10-01 08:00,2025-10-01 17:00
FAB112305B-04,INSTALL DOOR & HARDWARE - FAB112305B,Not Started,Bunker Rm 5 - 1F -FAB-FAB112305,,,,,,,,2025-11-21 08:00,2025-11-27 17:00,,
FAB112305B-05,PAINT & PROTECT DOORS & FRAMES - FAB112305B,Not Started,Bunker Rm 5 - 1F -FAB-FAB112305,,,,,,,,2026-02-16 08:00,2026-02-19 15:00,,
ZX-8680,Complete Drywall & Inspect - I/O Rm 3-1F-FAB112408,Complete,I/O Rm 3 - 1F -FAB-FAB112408,,,,,,,,2025-08-08 08:00,2025-08-21 17:00,2024-03-11 08:00,2024-03-22 16:00
FAB112408A-01,IMPACT - OPEN DRYWALL TO/AND INSTALL DOOR FRAME BY SECAI - FAB112408A,Complete,I/O Rm 3 - 1F -FAB-FAB112408,,,,,,,,2025-08-26 08:00,2025-09-03 17:00,2025-06-27 08:00,2025-06-27 16:00
FAB112408A-03,INSTALL DOOR FRAMES - FAB112408A,Complete,I/O Rm 3 - 1F -FAB-FAB112408,,,,,,,,2025-09-05 08:00,2025-09-05 17:00,2025-06-27 08:00,2025-06-27 16:00
FAB112408A-04,INSTALL DOOR & HARDWARE - FAB112408A,Active,I/O Rm 3 - 1F -FAB-FAB112408,,,,,,,,2025-09-02 08:00,2025-09-08 17:00,2025-09-02 08:00,
FAB112408A-05,PAINT & PROTECT DOORS & FRAMES - FAB112408A,Not Started,I/O Rm 3 - 1F -FAB-FAB112408,,,,,,,,2026-02-16 08:00,2026-02-19 15:00,,
ZX-8020,SECAI TURNOVER FOR ACELERATION - Complete Drywall & Inspect - MCC Rm 2-1F-FAB112407,Complete,MCC Rm 2 - 1F -FAB-FAB112407,,,,,,,,2025-06-27 08:00,2025-07-10 17:00,2025-06-27 08:00,2025-06-27 17:00
FAB112407A-25,DOOR FRAME HANDED OVER TO SECAI 08/13 - FAB112407A,Complete,MCC Rm 2 - 1F -FAB-FAB112407,,,,,,,,2025-08-13 08:00,2025-08-13 17:00,2025-08-13 08:00,2025-08-13 17:00
FAB112407A-03,INSTALL DOOR FRAME BY SECAI - FAB112407A HANDED OVER 08/13,Complete,MCC Rm 2 - 1F -FAB-FAB112407,,,,,,,,2025-08-13 08:00,2025-08-19 17:00,2025-08-13 08:00,2025-08-21 17:00
FAB112407A-04,INSTALL DOOR & HARDWARE - FAB112407A,Active,MCC Rm 2 - 1F -FAB-FAB112407,,,,,,,,2025-10-29 08:00,2025-11-04 17:00,2025-10-29 08:00,
FAB112407A-05,PAINT & PROTECT DOORS & FRAMES - FAB112407A,Not Started,MCC Rm 2 - 1F -FAB-FAB112407,,,,,,,,2026-02-16 08:00,2026-02-19 15:00,,
FAB112407B-01,IMPACT - INSTALL/REWORK DRYWALL FRAMING AROUND DOORS - FAB112407B,Complete,MCC Rm 2 - 1F -FAB-FAB112407,,,,,,,,2025-04-07 08:00,2025-04-15 17:00,2025-04-07 08:00,2025-04-15 17:00
FAB112407B-03,INSTALL DOOR FRAMES - FAB112407B,Complete,MCC Rm 2 - 1F -FAB-FAB112407,,,,,,,,2025-08-18 13:00,2025-08-19 12:00,2025-04-15 00:00,2025-04-15 16:00
FAB112407B-04,INSTALL DOOR & HARDWARE - FAB112407B,Active,MCC Rm 2 - 1F -FAB-FAB112407,,,,,,,,2025-09-25 08:00,2025-10-01 17:00,2025-09-25 08:00,
FAB112407B-05,PAINT & PROTECT DOORS & FRAMES - FAB112407B,Not Started,MCC Rm 2 - 1F -FAB-FAB112407,,,,,,,,2026-02-16 08:00,2026-02-19 15:00,,
ZX-8320,Complete Drywall & Inspect - Manufacturing Storage 5-1F-FAB112410 NON RATED WALLS,Complete,Manufacturing Storage 5 - 1F -FAB-FAB112410,,,,,,,,2024-08-05 08:00,2024-08-16 17:00,2024-08-05 08:00,2024-08-16 16:00
ZX-8620,SECAI TURNOVER FOR ACELERATION - Drywall & Inspect - Bunker Rm 6-1F-FAB112403 BAKER/DESCOPE,Complete,Bunker Rm 6 - 1F -FAB-FAB112403,,,,,,,,2025-06-10 08:00,2025-06-10 08:00,2025-06-10 08:00,2025-06-10 08:00
FAB112403A-01,IMPACT - INSTALL/REWORK DRYWALL FRAMING AROUND DOORS - FAB112403A,Complete,Bunker Rm 6 - 1F -FAB-FAB112403,,,,,,,,2025-06-10 08:00,2025-06-10 08:00,2025-03-11 08:00,2025-03-20 08:00
FAB112403A-03,INSTALL DOOR FRAMES - FAB112403A,Complete,Bunker Rm 6 - 1F -FAB-FAB112403,,,,,,,,2025-09-29 13:00,2025-09-30 12:00,2025-03-20 00:00,2025-03-20 16:00
FAB112403A-04,INSTALL DOOR & HARDWARE - FAB112403A,Active,Bunker Rm 6 - 1F -FAB-FAB112403,,,,,,,,2025-08-22 08:00,2025-08-28 17:00,2025-08-22 08:00,
FAB112403A-05,PAINT & PROTECT DOORS & FRAMES - FAB112403A,Not Started,Bunker Rm 6 - 1F -FAB-FAB112403,,,,,,,,2026-02-16 08:00,2026-02-17 17:00,,
FAB112403B-01,IMPACT - INSTALL/REWORK DRYWALL FRAMING AROUND DOORS - FAB112403B,Complete,Bunker Rm 6 - 1F -FAB-FAB112403,,,,,,,,2025-06-10 08:00,2025-06-10 08:00,2025-05-01 08:00,2025-05-09 08:00
FAB112403B-03,INSTALL DOOR FRAMES - FAB112403B,Complete,Bunker Rm 6 - 1F -FAB-FAB112403,,,,,,,,2025-09-29 13:00,2025-09-30 12:00,2025-05-08 00:00,2025-05-09 16:00
FAB112403B-04,INSTALL DOOR & HARDWARE - FAB112403B,Active,Bunker Rm 6 - 1F -FAB-FAB112403,,,,,,,,2025-08-21 08:00,2025-08-27 17:00,2025-08-21 08:00,
FAB112403B-05,PAINT & PROTECT DOORS & FRAMES - FAB112403B,Not Started,Bunker Rm 6 - 1F -FAB-FAB112403,,,,,,,,2026-02-16 08:00,2026-02-17 17:00,,
ZX-8830,SECAI TURNOVER FOR ACELERATION - Complete Drywall & Inspect - I/O Rm 4-1F-FAB112404,Complete,I/O Rm 4 -1F -FAB-FAB112404,,,,,,,,2025-06-27 08:00,2025-07-10 17:00,2025-06-27 08:00,2025-06-27 17:00
FAB112404A-01,IMPACT - INSTALL/REWORK DRYWALL FRAMING AROUND DOORS - FAB112404A,Complete,I/O Rm 4 -1F -FAB-FAB112404,,,,,,,,2025-03-07 08:00,2025-03-17 17:00,2025-03-07 08:00,2025-03-17 17:00
FAB112404A-03,INSTALL DOOR FRAMES - FAB112404A,Complete,I/O Rm 4 -1F -FAB-FAB112404,,,,,,,,2025-08-22 13:00,2025-08-25 12:00,2025-03-17 00:00,2025-03-17 16:00
FAB112404A-04,INSTALL DOOR & HARDWARE - FAB112404A,Active,I/O Rm 4 -1F -FAB-FAB112404,,,,,,,,2025-07-08 08:00,2025-07-14 17:00,2025-07-08 08:00,
FAB112404A-05,PAINT & PROTECT DOORS & FRAMES - FAB112404A,Not Started,I/O Rm 4 -1F -FAB-FAB112404,,,,,,,,2026-02-16 08:00,2026-02-17 17:00,,
FAB112404B-01,IMPACT - INSTALL/REWORK DRYWALL FRAMING AROUND DOORS - FAB112404B,Complete,I/O Rm 4 -1F -FAB-FAB112404,,,,,,,,2025-09-03 08:00,2025-09-04 17:00,2025-09-03 08:00,2025-09-04 17:00
FAB112404B-03,INSTALL DOOR FRAMES - FAB112404B,Complete,I/O Rm 4 -1F -FAB-FAB112404,,,,,,,,2025-09-05 08:00,2025-09-05 17:00,2025-09-05 08:00,2025-09-05 17:00
FAB112404B-04,INSTALL DOOR & HARDWARE - FAB112404B,Active,I/O Rm 4 -1F -FAB-FAB112404,,,,,,,,2025-09-15 08:00,2025-09-19 17:00,2025-09-15 08:00,
FAB112404B-05,PAINT & PROTECT DOORS & FRAMES - FAB112404B,Not Started,I/O Rm 4 -1F -FAB-FAB112404,,,,,,,,2026-02-16 08:00,2026-02-19 15:00,,
ZX-8860,Complete Drywall & Inspect - G.3-J/33-1F,Complete,G.3-J/33- 1F - FAB,,,,,,,,2025-06-27 08:00,2025-07-10 17:00,2025-05-27 08:00,2025-06-09 16:00
ZX-16560,IMPACT - Complete Drywall & Inspect - G.3-J/33-1F N&B APPROVAL,Complete,G.3-J/33- 1F - FAB,,,,,,,,2025-05-05 08:00,2025-05-16 17:00,2025-05-05 08:00,2025-05-15 16:00
ZX-9160,SECAI TURNOVER FOR ACELERATION - Drywall & Inspect - Exit Passageway 5-1F-FAB110506 BAKER/DESCOPE,Complete,Exit Passageway 5 - 1F -SUW-FAB110506,,,,,,,,2025-05-28 08:00,2025-06-16 17:00,2025-05-22 08:00,2025-05-22 16:00
ZX-17490,IMPACT - SECAI DENIAL OF ACCEL COST FOR BERG - Drywall & Inspect - Exit Passageway 5-1F-FAB110506,Complete,Exit Passageway 5 - 1F -SUW-FAB110506,,,,,,,,2025-05-13 08:00,2025-05-30 17:00,2025-05-05 08:00,2025-05-22 16:00
FAB110506A-03,INSTALL DOOR FRAMES - FAB110506A,Complete,Exit Passageway 5 - 1F -SUW-FAB110506,,,,,,,,2025-08-08 08:00,2025-08-08 17:00,2025-08-08 08:00,2025-08-08 17:00
FAB110506A-04,INSTALL DOOR & HARDWARE - FAB110506A,Active,Exit Passageway 5 - 1F -SUW-FAB110506,,,,,,,,2025-11-06 08:00,2025-11-12 17:00,2025-11-06 08:00,
FAB110506A-05,PAINT & PROTECT DOORS & FRAMES - FAB110506A,Not Started,Exit Passageway 5 - 1F -SUW-FAB110506,,,,,,,,2026-02-16 08:00,2026-02-19 15:00,,
FAB110506B-03,INSTALL DOOR FRAMES - FAB110506B,Complete,Exit Passageway 5 - 1F -SUW-FAB110506,,,,,,,,2025-07-17 08:00,2025-07-17 17:00,2025-05-23 08:00,2025-05-23 08:00
FAB110506B-04,DOOR INSTALL - FAB110506B,Complete,Exit Passageway 5 - 1F -SUW-FAB110506,,,,,,,,2025-10-02 08:00,2025-10-02 17:00,2025-10-02 08:00,2025-10-02 17:00
FAB110506B-05,PAINT & PROTECT DOORS & FRAMES - FAB110506B,Complete,Exit Passageway 5 - 1F -SUW-FAB110506,,,,,,,,2025-10-08 08:00,2025-10-13 15:00,2025-10-08 08:00,2025-10-12 15:00
FAB110506B-06,INSTALL DOOR HARDWARE - FAB110506B,Complete,Exit Passageway 5 - 1F -SUW-FAB110506,,,,,,,,2025-10-23 08:00,2025-10-28 15:00,2025-10-23 08:00,2025-10-28 15:00
FAB110506C-03,INSTALL DOOR FRAMES - FAB110506C,Complete,Exit Passageway 5 - 1F -SUW-FAB110506,,,,,,,,2025-06-05 13:00,2025-06-06 12:00,2025-03-18 00:00,2025-03-18 16:00
FAB110506C-04,INSTALL DOOR & HARDWARE - FAB110506C,Active,Exit Passageway 5 - 1F -SUW-FAB110506,,,,,,,,2025-06-17 08:00,2025-06-23 17:00,2025-06-17 08:00,
FAB110506C-05,PAINT & PROTECT DOORS & FRAMES - FAB110506C,Not Started,Exit Passageway 5 - 1F -SUW-FAB110506,,,,,,,,2026-02-16 08:00,2026-02-16 17:00,,
FAB110506D-03,INSTALL DOOR FRAMES - FAB110506D,Complete,Exit Passageway 5 - 1F -SUW-FAB110506,,,,,,,,2025-06-05 13:00,2025-06-06 12:00,2025-03-31 00:00,2025-03-31 16:00
FAB110506D-04,INSTALL DOOR & HARDWARE - FAB110506D,Active,Exit Passageway 5 - 1F -SUW-FAB110506,,,,,,,,2025-06-17 08:00,2025-06-23 17:00,2025-06-17 08:00,
FAB110506D-05,PAINT & PROTECT DOORS & FRAMES - FAB110506D,Not Started,Exit Passageway 5 - 1F -SUW-FAB110506,,,,,,,,2026-02-16 08:00,2026-02-16 17:00,,
FAB110506E-03,INSTALL DOOR FRAMES - FAB110506E,Complete,Exit Passageway 5 - 1F -SUW-FAB110506,,,,,,,,2025-06-06 08:00,2025-06-19 17:00,2025-06-03 08:00,2025-06-03 16:00
FAB110506E-04,INSTALL DOOR & HARDWARE - FAB110506E,Active,Exit Passageway 5 - 1F -SUW-FAB110506,,,,,,,,2025-10-22 08:00,2025-10-28 17:00,2025-10-22 08:00,
FAB110506E-05,PAINT & PROTECT DOORS & FRAMES - FAB110506E,Not Started,Exit Passageway 5 - 1F -SUW-FAB110506,,,,,,,,2026-02-16 08:00,2026-02-19 15:00,,
FAB110506B-07,DOOR FRAME PAINT & 1ST COAT - FAB110506B,Complete,Exit Passageway 5 - 1F -SUW-FAB110506,,,,,,,,2025-10-01 08:00,2025-10-01 08:00,2025-10-01 08:00,2025-10-01 08:00
ZX-8800,SECAI TURNOVER FOR ACELERATION - Drywall & Inspect - Elevator Hall #05 - 1F-FAB110507,Complete,Elevator Hall 5 - 1F -SUW-FAB110507,,,,,,,,2025-06-27 08:00,2025-07-10 17:00,2025-06-27 08:00,2025-06-27 16:00
FAB110507A-03A,INSTALL DOOR FRAMES - FAB110507A,Complete,Elevator Hall 5 - 1F -SUW-FAB110507,,,,,,,,2025-10-27 13:00,2025-10-28 12:00,2025-10-27 13:00,2025-10-28 12:00
FAB110507A-03,INSTALL DOOR FRAMES - FAB110507A,Complete,Elevator Hall 5 - 1F -SUW-FAB110507,,,,,,,,2025-08-19 08:00,2025-08-19 17:00,2025-08-19 08:00,2025-08-19 17:00
FAB110507A-05,PAINT & PROTECT DOORS & FRAMES - FAB110507A,Not Started,Elevator Hall 5 - 1F -SUW-FAB110507,,,,,,,,2026-02-16 08:00,2026-02-19 15:00,,
FAB110507B-01,SECAI TURNOVER FOR ACELERATION - INSTALL/REWORK DRYWALL FRAMING AROUND DOORS - FAB110507B,Complete,Elevator Hall 5 - 1F -SUW-FAB110507,,,,,,,,2025-07-25 08:00,2025-08-04 17:00,2025-06-27 08:00,2025-06-27 16:00
FAB110507B-03,SECAI TURNOVER FOR ACELERATION - INSTALL FRAME & DRYWALL AROUND DOORS - FAB110507B,Complete,Elevator Hall 5 - 1F -SUW-FAB110507,,,,,,,,2025-08-01 08:00,2025-08-01 17:00,2025-08-01 08:00,2025-08-01 17:00
FAB110507B-04,INSTALL DOOR & HARDWARE - FAB110507B,Active,Elevator Hall 5 - 1F -SUW-FAB110507,,,,,,,,2025-10-15 08:00,2025-10-21 17:00,2025-10-15 08:00,
FAB110507B-05,PAINT & PROTECT DOORS & FRAMES - FAB110507B,Not Started,Elevator Hall 5 - 1F -SUW-FAB110507,,,,,,,,2026-02-16 08:00,2026-02-19 15:00,,
FAB110508C-04,INSTALL DOOR & HARDWARE - FAB110508C,Not Started,Elevator Hall 5 - 1F -SUW-FAB110507,,,,,,,,2025-12-16 08:00,2025-12-22 17:00,,
ZX-8950,Complete Drywall & Inspect - Elevator Mech Rm #05 - 1F-FAB110504 MK MARLOW,Complete,Elevator Mech. Rm 5 - 1F -SUW-FAB110504,,,,,,,,2025-08-07 08:00,2025-08-15 17:00,2025-08-07 08:00,2025-08-15 17:00
FAB110504A-01,IMPACT - INSTALL/REWORK DRYWALL FRAMING AROUND DOORS - FAB110504A,Complete,Elevator Mech. Rm 5 - 1F -SUW-FAB110504,,,,,,,,2025-10-14 08:00,2025-10-20 17:00,2025-10-14 08:00,2025-10-20 17:00
FAB110504A-03,INSTALL DOOR FRAMES - FAB110504A,Complete,Elevator Mech. Rm 5 - 1F -SUW-FAB110504,,,,,,,,2025-10-21 08:00,2025-10-21 17:00,2025-10-21 08:00,2025-10-21 17:00
FAB110504A-04,INSTALL DOOR & HARDWARE - FAB110504A,Active,Elevator Mech. Rm 5 - 1F -SUW-FAB110504,,,,,,,,2025-10-22 08:00,2025-10-28 17:00,2025-10-22 08:00,
FAB110504A-05,PAINT & PROTECT DOORS & FRAMES - FAB110504A,Not Started,Elevator Mech. Rm 5 - 1F -SUW-FAB110504,,,,,,,,2026-02-16 08:00,2026-02-19 15:00,,
ZX-9250,SECAI TOOK OVER FOR ACCELERATION - Drywall & Inspect - Elevator #05 - 1F-1FAB-EL5,Complete,Elevator 5 - 1F -SUW-FAB1-EL05,,,,,,,,2025-10-02 08:00,2025-10-03 17:00,2025-10-03 08:00,2025-10-03 17:00
ZX-9550,SECAI TURNOVER FOR ACELERATION - Drywall & Inspect - S.GCS Storage Rm-1F-SUW-FAB110509 BAKER/DESCOPE,Complete,S.GCS Storage Rm - 1F -SUW-FAB110509,,,,,,,,2025-06-25 08:00,2025-07-08 17:00,2025-06-17 08:00,2025-06-27 16:00
FAB110509A-03,INSTALL DOOR FRAMES - FAB110509A,Complete,S.GCS Storage Rm - 1F -SUW-FAB110509,,,,,,,,2025-07-31 08:00,2025-07-31 17:00,2025-07-31 08:00,2025-07-31 17:00
FAB110509A-07,DOOR FRAME PAINT & 1ST COAT - FAB110509A,Complete,S.GCS Storage Rm - 1F -SUW-FAB110509,,,,,,,,2025-08-25 08:00,2025-08-27 17:00,2025-08-25 08:00,2025-08-27 17:00
FAB110509A-04,DOOR INSTALL - FAB110509A,Complete,S.GCS Storage Rm - 1F -SUW-FAB110509,,,,,,,,2025-08-29 08:00,2025-08-29 17:00,2025-08-29 08:00,2025-08-29 17:00
FAB110509A-05,PAINT & PROTECT DOORS & FRAMES - FAB110509A,Complete,S.GCS Storage Rm - 1F -SUW-FAB110509,,,,,,,,2025-10-15 08:00,2025-10-20 15:00,2025-10-15 08:00,2025-10-20 15:00
FAB110509A-06,INSTALL DOOR HARDWARE - FAB110509A,Not Started,S.GCS Storage Rm - 1F -SUW-FAB110509,,,,,,,,2025-11-21 08:00,2025-11-26 15:00,,
FAB110509B-03,INSTALL DOOR FRAMES - FAB110509B,Complete,S.GCS Storage Rm - 1F -SUW-FAB110509,,,,,,,,2025-07-14 13:00,2025-07-15 12:00,2025-04-10 00:00,2025-04-10 16:00
FAB110509B-04,INSTALL DOOR & HARDWARE - FAB110509B,Active,S.GCS Storage Rm - 1F -SUW-FAB110509,,,,,,,,2025-09-03 08:00,2025-09-09 17:00,2025-09-03 08:00,
FAB110509B-05,PAINT & PROTECT DOORS & FRAMES - FAB110509B,Not Started,S.GCS Storage Rm - 1F -SUW-FAB110509,,,,,,,,2026-02-16 08:00,2026-02-19 15:00,,
FAB110509A-09,IMPACT DOOR FRAME REMEDIATION - FAB110509A,Complete,S.GCS Storage Rm - 1F -SUW-FAB110509,,,,,,,,2025-08-20 08:00,2025-08-20 17:00,2025-07-30 08:00,2025-07-30 17:00
ZX-8770,Complete Drywall & Inspect - Fire Riser Rm 2-1F-SUW-FAB110510,Complete,Fire Riser Rm 2 - 1F -SUW-FAB110510,,,,,,,,2025-08-15 08:00,2025-08-25 17:00,2025-08-08 08:00,2025-08-22 17:00
FAB110510A-02,INSTALL DOOR FRAMES - FAB110510A,Complete,Fire Riser Rm 2 - 1F -SUW-FAB110510,,,,,,,,2025-08-05 08:00,2025-08-05 17:00,2025-08-05 08:00,2025-08-05 17:00
FAB110510A-07,DOOR FRAME PAINT & 1ST COAT - FAB110510A,Complete,Fire Riser Rm 2 - 1F -SUW-FAB110510,,,,,,,,2025-08-07 08:00,2025-08-13 17:00,2025-08-07 08:00,2025-08-13 17:00
FAB110510A-04,DOOR INSTALL - FAB110510A,Complete,Fire Riser Rm 2 - 1F -SUW-FAB110510,,,,,,,,2025-08-14 08:00,2025-08-14 17:00,2025-08-14 08:00,2025-08-14 17:00
FAB110510A-05,PAINT & PROTECT DOORS & FRAMES - FAB110510A,Complete,Fire Riser Rm 2 - 1F -SUW-FAB110510,,,,,,,,2025-10-15 08:00,2025-10-20 15:00,2025-10-15 08:00,2025-10-20 15:00
FAB110510A-06,INSTALL DOOR HARDWARE - FAB110510A,Not Started,Fire Riser Rm 2 - 1F -SUW-FAB110510,,,,,,,,2025-11-21 08:00,2025-11-26 15:00,,
ZX-9310,Complete Drywall & Inspect - Vestibule - 1F-SUW-FAB110508,Complete,Fire Alarm Rm 5 - 1F -SUW-FAB110508,,,,,,,,2025-05-05 08:00,2025-05-13 17:00,2025-05-05 08:00,2025-05-13 16:00
ZX-9330,Drywall Catch-up inspections - Vestibule - 1F-SUW-FAB110508,Complete,Fire Alarm Rm 5 - 1F -SUW-FAB110508,,,,,,,,2025-07-31 08:00,2025-08-08 17:00,2025-07-31 08:00,2025-08-08 17:00
ZX-17430,Control Drywall & Inspect & Inspect - Vestibule - 1F-SUW-FAB110508,Complete,Fire Alarm Rm 5 - 1F -SUW-FAB110508,,,,,,,,2025-05-27 08:00,2025-05-28 17:00,2025-05-27 08:00,2025-05-28 16:00
FAB110508A-01,IMPACT - INSTALL/REWORK DRYWALL FRAMING AROUND DOORS - FAB110508A,Complete,Fire Alarm Rm 5 - 1F -SUW-FAB110508,,,,,,,,2025-09-02 08:00,2025-09-03 17:00,2025-09-02 08:00,2025-09-03 17:00
FAB110508A-03,INSTALL DOOR FRAMES - FAB110508A,Complete,Fire Alarm Rm 5 - 1F -SUW-FAB110508,,,,,,,,2025-09-04 08:00,2025-09-04 17:00,2025-09-04 08:00,2025-09-04 17:00
FAB110508A-04,DOOR INSTALL - FAB110508A,Complete,Fire Alarm Rm 5 - 1F -SUW-FAB110508,,,,,,,,2025-10-07 08:00,2025-10-07 17:00,2025-10-07 08:00,2025-10-07 17:00
FAB110508A-05,PAINT & PROTECT DOORS & FRAMES - FAB110508A,Complete,Fire Alarm Rm 5 - 1F -SUW-FAB110508,,,,,,,,2025-10-14 15:00,2025-10-20 12:00,2025-10-14 15:00,2025-10-17 15:00
FAB110508A-06,INSTALL DOOR HARDWARE - FAB110508A,Not Started,Fire Alarm Rm 5 - 1F -SUW-FAB110508,,,,,,,,2025-11-21 08:00,2025-11-26 15:00,,
FAB110508A-11,IMPACT - PROCUREMENT - Reordered doors (Wall Thickness and Door Swing Design Changes),Complete,Fire Alarm Rm 5 - 1F -SUW-FAB110508,,,,,,,,2025-06-20 08:00,2025-08-14 17:00,2025-06-20 08:00,2025-07-14 17:00
ZX-17800,IMPACT - SECAI DENIAL OF ACCEL COST FOR BERG - Drywall & Inspect Vestibule - 1F-SUW-FAB110508,Complete,Fire Alarm Rm 5 - 1F -SUW-FAB110508,,,,,,,,2025-05-13 08:00,2025-05-21 17:00,2025-05-13 08:00,2025-06-10 16:00
ZX-9610,Complete Drywall & Inspect - Duct Shaft - 1F-SUW-FAB110516,Complete,Duct Shaft - 1F -SUW-FAB110516,,,,,,,,2025-09-17 08:00,2025-09-18 17:00,2025-09-19 08:00,2025-09-19 17:00
FAB110516A-01,IMPACT - INSTALL/REWORK DRYWALL FRAMING AROUND DOORS - FAB110516A,Complete,Duct Shaft - 1F -SUW-FAB110516,,,,,,,,2025-03-07 08:00,2025-03-17 17:00,2025-03-07 08:00,2025-03-17 17:00
FAB110516A-03,INSTALL DOOR FRAMES - FAB110516A,Complete,Duct Shaft - 1F -SUW-FAB110516,,,,,,,,2025-10-03 13:00,2025-10-06 12:00,2025-03-17 00:00,2025-03-17 16:00
FAB110516A-04,INSTALL DOOR & HARDWARE - FAB110516A,Active,Duct Shaft - 1F -SUW-FAB110516,,,,,,,,2025-09-29 08:00,2025-10-03 17:00,2025-09-27 08:00,
FAB110516A-05,PAINT & PROTECT DOORS & FRAMES - FAB110516A,Not Started,Duct Shaft - 1F -SUW-FAB110516,,,,,,,,2026-02-16 08:00,2026-02-19 15:00,,
ZX-8740,Complete Drywall & Inspect - Duct Shaft Vestibule - 1F-SUW-FAB110502,Complete,Duct Shaft Vestibule - 1F -SUW-FAB110502,,,,,,,,2025-06-10 08:00,2025-06-18 17:00,2025-06-10 08:00,2025-10-13 08:00
ZX-17440,IMPACT - SECAI DENIAL OF ACCEL COST FOR BERG - Complete Drywall & Inspect - Duct Shaft Vestibule - 1F-SUW-FAB110502,Complete,Duct Shaft Vestibule - 1F -SUW-FAB110502,,,,,,,,2025-05-05 08:00,2025-05-13 17:00,2025-05-05 08:00,2025-06-10 16:00
FAB110502A-03,INSTALL DOOR FRAMES - FAB110502A,Complete,Duct Shaft Vestibule - 1F -SUW-FAB110502,,,,,,,,2025-06-19 13:00,2025-06-20 12:00,2025-03-26 00:00,2025-03-26 16:00
FAB110502A-04,INSTALL DOOR & HARDWARE - FAB110502A,Not Started,Duct Shaft Vestibule - 1F -SUW-FAB110502,,,,,,,,2025-11-28 08:00,2025-12-04 17:00,,
FAB110502A-05,PAINT & PROTECT DOORS & FRAMES - FAB110502A,Not Started,Duct Shaft Vestibule - 1F -SUW-FAB110502,,,,,,,,2026-02-16 08:00,2026-02-19 15:00,,
FAB110502B-03,INSTALL DOOR FRAMES - FAB110502B,Complete,Duct Shaft Vestibule - 1F -SUW-FAB110502,,,,,,,,2025-06-19 13:00,2025-06-20 12:00,2025-04-08 00:00,2025-04-08 16:00
FAB110502B-04,INSTALL DOOR & HARDWARE - FAB110502B,Active,Duct Shaft Vestibule - 1F -SUW-FAB110502,,,,,,,,2025-10-15 08:00,2025-10-21 17:00,2025-10-15 08:00,
FAB110502B-05,PAINT & PROTECT DOORS & FRAMES - FAB110502B,Not Started,Duct Shaft Vestibule - 1F -SUW-FAB110502,,,,,,,,2026-02-16 08:00,2026-02-19 15:00,,
ZX-8920,Complete Drywall & Inspect - Duct Shaft - 1F-SUW-FAB110503,Complete,Duct Shaft - 1F -SUW-FAB110503,,,,,,,,2025-08-14 08:00,2025-08-27 17:00,2025-08-14 08:00,2025-08-18 17:00
FAB110503B-01,IMPACT - INSTALL/REWORK DRYWALL FRAMING AROUND DOORS - FAB110503B,Complete,Duct Shaft - 1F -SUW-FAB110503,,,,,,,,2025-09-16 08:00,2025-09-17 17:00,2025-09-16 08:00,2025-09-17 17:00
FAB110503B-03,INSTALL DOOR FRAMES - FAB110503B,Complete,Duct Shaft - 1F -SUW-FAB110503,,,,,,,,2025-09-19 08:00,2025-09-19 17:00,2025-09-19 08:00,2025-09-19 17:00
FAB110503B-04,INSTALL DOOR & HARDWARE - FAB110503B,Not Started,Duct Shaft - 1F -SUW-FAB110503,,,,,,,,2025-11-21 08:00,2025-11-27 17:00,,
FAB110503B-05,PAINT & PROTECT DOORS & FRAMES - FAB110503B,Not Started,Duct Shaft - 1F -SUW-FAB110503,,,,,,,,2026-02-16 08:00,2026-02-19 15:00,,
ZX-9220,Complete Drywall & Inspect - Rated Chase West - 1F-SUW-FAB110513 - 7/14 DESIGN CHANGE TAKE ON OVER BY SECAI,Complete,Rated Chase West - 1F - SUW-FAB110513,,,,,,,,2025-09-23 08:00,2025-10-06 17:00,2025-07-07 08:00,2025-07-09 17:00
FAB110513A-01,IMPACT - INSTALL/REWORK DRYWALL FRAMING AROUND DOORS - FAB110513A,Complete,Rated Chase West - 1F - SUW-FAB110513,,,,,,,,2025-10-09 08:00,2025-10-17 17:00,2025-07-14 08:00,2025-07-14 17:00
FAB110513A-03,INSTALL DOOR FRAMES - FAB110513A,Not Started,Rated Chase West - 1F - SUW-FAB110513,,,,,,,,2025-11-21 08:00,2025-11-21 17:00,,
FAB110513A-04,INSTALL DOOR & HARDWARE - FAB110513A,Not Started,Rated Chase West - 1F - SUW-FAB110513,,,,,,,,2025-11-24 08:00,2025-11-28 17:00,,
FAB110513A-05,PAINT & PROTECT DOORS & FRAMES - FAB110513A,Not Started,Rated Chase West - 1F - SUW-FAB110513,,,,,,,,2026-02-16 08:00,2026-02-19 15:00,,
ZX-9520,IMPACT - SECAI DENIAL OF ACCEL COST FOR BERG - Drywall & Inspect - Duct Shaft Vestibule - 1F-SUW-FAB110123,Complete,Duct Shaft Vestibule - 1F -SUW-FAB110123,,,,,,,,2025-05-05 08:00,2025-05-13 17:00,2025-05-05 08:00,2025-06-10 16:00
ZX-17450,Complete Drywall & Inspect - Duct Shaft Vestibule - 1F-SUW-FAB110123,Complete,Duct Shaft Vestibule - 1F -SUW-FAB110123,,,,,,,,2025-06-20 08:00,2025-06-30 17:00,2025-06-20 08:00,2025-07-03 16:00
FAB110123A-01,IMPACT - INSTALL/REWORK DRYWALL FRAMING AROUND DOORS - FAB110123A,Complete,Duct Shaft Vestibule - 1F -SUW-FAB110123,,,,,,,,2025-08-11 08:00,2025-08-19 17:00,2025-07-15 08:00,2025-07-16 17:00
FAB110123A-03,INSTALL DOOR FRAMES - FAB110123A,Complete,Duct Shaft Vestibule - 1F -SUW-FAB110123,,,,,,,,2025-08-21 08:00,2025-08-21 17:00,2025-07-21 08:00,2025-07-21 17:00
FAB110123A-04,INSTALL DOOR & HARDWARE - FAB110123A,Active,Duct Shaft Vestibule - 1F -SUW-FAB110123,,,,,,,,2025-07-25 08:00,2025-07-31 17:00,2025-07-25 08:00,
FAB110123A-05,PAINT & PROTECT DOORS & FRAMES - FAB110123A,Not Started,Duct Shaft Vestibule - 1F -SUW-FAB110123,,,,,,,,2026-02-16 08:00,2026-02-16 17:00,,
FAB110123B-01,INSTALL DOOR FRAMES - FAB110123B,Complete,Duct Shaft Vestibule - 1F -SUW-FAB110123,,,,,,,,2025-09-08 08:00,2025-09-16 17:00,2025-07-16 08:00,2025-07-21 17:00
FAB110123B-04,INSTALL DOOR & HARDWARE - FAB110123B,Active,Duct Shaft Vestibule - 1F -SUW-FAB110123,,,,,,,,2025-09-09 08:00,2025-09-15 17:00,2025-09-09 08:00,
FAB110123B-05,PAINT & PROTECT DOORS & FRAMES - FAB110123B,Not Started,Duct Shaft Vestibule - 1F -SUW-FAB110123,,,,,,,,2026-02-16 08:00,2026-02-19 15:00,,
FAB110123A-11,IMPACT - PROCUREMENT - Reordered doors (Wall Thickness and Door Swing Design Changes),Complete,Duct Shaft Vestibule - 1F -SUW-FAB110123,,,,,,,,2025-06-20 08:00,2025-08-28 17:00,2025-06-20 08:00,2025-07-14 17:00
FAB110123B-11,IMPACT - PROCUREMENT - Reordered doors (Wall Thickness and Door Swing Design Changes),Complete,Duct Shaft Vestibule - 1F -SUW-FAB110123,,,,,,,,2025-06-20 08:00,2025-08-28 17:00,2025-06-20 08:00,2025-07-14 17:00
ZX-9070,SECAI TURNOVER FOR ACELERATION - Drywall & Inspect - Exit Passageway 4-1F-FAB110402 BAKER/DESCOPE,Complete,Exit Passageway 4 - 1F -SUW-FAB110402,,,,,,,,2025-05-28 08:00,2025-06-10 17:00,2025-05-22 08:00,2025-05-22 16:00
ZX-17460,IMPACT - SECAI DENIAL OF ACCEL COST FOR BERG - Complete Drywall & Inspect - Exit Passageway 4-1F-FAB110402,Complete,Exit Passageway 4 - 1F -SUW-FAB110402,,,,,,,,2025-05-05 08:00,2025-05-16 17:00,2025-05-05 08:00,2025-05-22 16:00
FAB110402A-05,PAINT & PROTECT DOORS & FRAMES - FAB110402A,Complete,Exit Passageway 4 - 1F -SUW-FAB110402,,,,,,,,2025-10-15 08:00,2025-10-20 17:00,2025-10-15 08:00,2025-10-20 17:00
FAB110402A-06,INSTALL DOOR HARDWARE - FAB110402A,Not Started,Exit Passageway 4 - 1F -SUW-FAB110402,,,,,,,,2025-11-21 08:00,2025-11-26 15:00,,
FAB110402C-04,INSTALL DOOR & HARDWARE - FAB110402C,Active,Exit Passageway 4 - 1F -SUW-FAB110402,,,,,,,,2025-10-06 08:00,2025-10-10 17:00,2025-10-06 08:00,
FAB110402C-05,PAINT & PROTECT DOORS & FRAMES - FAB110402C,Not Started,Exit Passageway 4 - 1F -SUW-FAB110402,,,,,,,,2026-02-16 08:00,2026-02-19 15:00,,
FAB110402C-6,IMPACT - SECAI DIRECTIVE HOLD FRAME - FAB110402C - UNTIL 6/20,Complete,Exit Passageway 4 - 1F -SUW-FAB110402,,,,,,,,2025-06-06 08:00,2025-06-06 17:00,2025-05-05 08:00,2025-09-19 17:00
FAB110402A-04,DOOR INSTALL - FAB110402A,Complete,Exit Passageway 4 - 1F -SUW-FAB110402,,,,,,,,2025-08-19 08:00,2025-08-19 17:00,2025-08-19 08:00,2025-08-19 17:00
FAB110402A-02,INSTALL DOOR FRAMES - FAB110402A,Complete,Exit Passageway 4 - 1F -SUW-FAB110402,,,,,,,,2025-07-02 08:00,2025-07-02 17:00,2025-07-02 08:00,2025-07-02 16:00
FAB110402A-07,DOOR FRAME PAINT & 1ST COAT - FAB110402A,Complete,Exit Passageway 4 - 1F -SUW-FAB110402,,,,,,,,2025-07-25 08:00,2025-07-29 17:00,2025-07-25 08:00,2025-07-29 17:00
ZX-9370,Complete Drywall & Inspect - Duct Shaft - 1F-SUW-FAB110306,Complete,Duct Shaft - 1F -SUW-FAB110306,,,,,,,,2025-08-04 08:00,2025-08-15 17:00,2025-08-04 08:00,2025-08-15 17:00
FAB110306A-03,INSTALL DOOR FRAMES - FAB110306A,Complete,Duct Shaft - 1F -SUW-FAB110306,,,,,,,,2025-08-25 08:00,2025-08-25 17:00,2025-07-22 08:00,2025-07-23 16:00
FAB110306A-04,INSTALL DOOR & HARDWARE - FAB110306A,Active,Duct Shaft - 1F -SUW-FAB110306,,,,,,,,2025-07-24 08:00,2025-07-30 17:00,2025-07-24 08:00,
FAB110306A-05,PAINT & PROTECT DOORS & FRAMES - FAB110306A,Not Started,Duct Shaft - 1F -SUW-FAB110306,,,,,,,,2026-02-16 08:00,2026-02-16 17:00,,
FAB110306A-11,IMPACT - PROCUREMENT - Reordered doors (Wall Thickness and Door Swing Design Changes),Complete,Duct Shaft - 1F -SUW-FAB110306,,,,,,,,2025-06-09 08:00,2025-07-21 17:00,2025-06-09 08:00,2025-07-14 17:00
FAB110514A-04,INSTALL DOOR & HARDWARE - FAB110514A,Active,Duct Shaft - 1F -SUW-FAB110306,,,,,,,,2025-08-19 08:00,2025-08-25 17:00,2025-08-19 08:00,
FAB110514A-05,PAINT & PROTECT DOORS & FRAMES - FAB110514A,Not Started,Duct Shaft - 1F -SUW-FAB110306,,,,,,,,2026-02-16 08:00,2026-02-16 17:00,,
FAB110514B-04,INSTALL DOOR & HARDWARE - FAB110514B,Active,Duct Shaft - 1F -SUW-FAB110306,,,,,,,,2025-08-19 08:00,2025-08-25 17:00,2025-08-19 08:00,
FAB110514B-05,PAINT & PROTECT DOORS & FRAMES - FAB110514B,Not Started,Duct Shaft - 1F -SUW-FAB110306,,,,,,,,2026-02-16 08:00,2026-02-19 15:00,,
ZX-9670,Catchup - Complete Drywall & Inspect - GCS Training Rm-1F-SUW-FAB110401,Complete,GCS Training Rm - 1F -SUW-FAB110401,,,,,,,,2025-08-08 08:00,2025-08-18 17:00,2025-08-04 08:00,2025-08-08 17:00
FAB110401A-03,INSTALL DOOR FRAMES - FAB110401A,Complete,GCS Training Rm - 1F -SUW-FAB110401,,,,,,,,2025-06-20 08:00,2025-06-20 17:00,2025-05-20 08:00,2025-05-20 08:00
FAB110401A-04,DOOR INSTALL - FAB110401A,Complete,GCS Training Rm - 1F -SUW-FAB110401,,,,,,,,2025-09-17 08:00,2025-09-17 17:00,2025-09-17 08:00,2025-09-17 17:00
FAB110401A-05,PAINT & PROTECT DOORS & FRAMES - FAB110401A,Complete,GCS Training Rm - 1F -SUW-FAB110401,,,,,,,,2025-10-08 08:00,2025-10-13 15:00,2025-10-08 08:00,2025-10-12 15:00
FAB110401A-06,INSTALL DOOR HARDWARE - FAB110401A,Not Started,GCS Training Rm - 1F -SUW-FAB110401,,,,,,,,2025-11-21 08:00,2025-11-26 15:00,,
FAB110401B-03,INSTALL DOOR FRAMES - FAB110401B,Complete,GCS Training Rm - 1F -SUW-FAB110401,,,,,,,,2025-06-20 08:00,2025-06-20 17:00,2025-05-21 08:00,2025-05-21 16:00
FAB110401B-04,INSTALL DOOR & HARDWARE - FAB110401B,Active,GCS Training Rm - 1F -SUW-FAB110401,,,,,,,,2025-08-29 08:00,2025-09-04 17:00,2025-08-29 08:00,
FAB110401B-05,PAINT & PROTECT DOORS & FRAMES - FAB110401B,Not Started,GCS Training Rm - 1F -SUW-FAB110401,,,,,,,,2026-02-16 08:00,2026-02-19 15:00,,
FAB110401C-01,INSTALL DOOR FRAME BY SECAI - FAB110401C HANDED OVER 06/27,Complete,GCS Training Rm - 1F -SUW-FAB110401,,,,,,,,2025-06-27 08:00,2025-07-10 17:00,2025-06-28 08:00,2025-08-12 17:00
FAB110401C-04,INSTALL DOOR & HARDWARE - FAB110401C,Active,GCS Training Rm - 1F -SUW-FAB110401,,,,,,,,2025-09-25 08:00,2025-10-01 17:00,2025-09-25 08:00,
FAB110401C-05,PAINT & PROTECT DOORS & FRAMES - FAB110401C,Not Started,GCS Training Rm - 1F -SUW-FAB110401,,,,,,,,2026-02-16 08:00,2026-02-19 15:00,,
FAB110401A-07,DOOR FRAME PAINT & 1ST COAT - FAB110401A,Complete,GCS Training Rm - 1F -SUW-FAB110401,,,,,,,,2025-07-25 08:00,2025-07-29 17:00,2025-07-25 08:00,2025-07-29 17:00
FAB110401B-07,DOOR FRAME PAINT & 1ST COAT - FAB110401B,Complete,GCS Training Rm - 1F -SUW-FAB110401,,,,,,,,2025-08-25 08:00,2025-08-27 17:00,2025-08-25 08:00,2025-08-27 17:00
FAB110401C-13,DOOR FRAME HANDED OVER TO SECAI ON 06/27 - FAB110401C,Complete,GCS Training Rm - 1F -SUW-FAB110401,,,,,,,,2025-07-03 08:00,2025-07-03 17:00,2025-06-27 08:00,2025-06-27 16:00
ZX-8890,Complete Drywall & Inspect - H2 Purifier Analyzer Rm-1F-SUW-FAB110309,Complete,H2 Purifier Analyzer Rm - 1F -SUW-FAB110309,,,,,,,,2025-06-16 08:00,2025-06-17 17:00,2025-05-12 08:00,2025-05-22 16:00
ZX-16580,IMPACT - Complete Drywall & Inspect - H2 Purifier Analyzer Rm-1F-SUW-FAB110309 SECAI DENIAL OF ACCEL COST FOR BERG,Complete,H2 Purifier Analyzer Rm - 1F -SUW-FAB110309,,,,,,,,2025-05-05 08:00,2025-05-13 17:00,2025-05-05 08:00,2025-05-09 16:00
FAB110309A-03,INSTALL DOOR FRAMES - FAB110309A,Complete,H2 Purifier Analyzer Rm - 1F -SUW-FAB110309,,,,,,,,2025-06-25 13:00,2025-06-26 12:00,2025-04-08 00:00,2025-04-08 12:00
FAB110309A-04,DOOR INSTALL - FAB110309A,Complete,H2 Purifier Analyzer Rm - 1F -SUW-FAB110309,,,,,,,,2025-08-14 08:00,2025-08-14 17:00,2025-08-14 08:00,2025-08-14 17:00
FAB110309A-05,PAINT & PROTECT DOORS & FRAMES - FAB110309A,Complete,H2 Purifier Analyzer Rm - 1F -SUW-FAB110309,,,,,,,,2025-10-14 08:00,2025-10-17 15:00,2025-10-14 08:00,2025-10-16 15:00
FAB110309A-06,INSTALL DOOR HARDWARE - FAB110309A,Not Started,H2 Purifier Analyzer Rm - 1F -SUW-FAB110309,,,,,,,,2025-11-21 08:00,2025-11-26 15:00,,
ZX-9190,Complete Drywall & Inspect - H2 Purifier Rm-1F-SUW-FAB110307,Complete,H2 Purifier Rm - 1F -SUW-FAB110307,,,,,,,,2025-05-05 08:00,2025-05-13 17:00,2025-05-05 08:00,2025-05-13 16:00
FAB110307A-03,INSTALL DOOR FRAMES - FAB110307A,Complete,H2 Purifier Rm - 1F -SUW-FAB110307,,,,,,,,2025-08-05 08:00,2025-08-05 17:00,2025-08-05 08:00,2025-08-05 17:00
FAB110307A-07,DOOR FRAME PAINT & 1ST COAT - FAB110307A,Complete,H2 Purifier Rm - 1F -SUW-FAB110307,,,,,,,,2025-08-07 08:00,2025-08-11 17:00,2025-08-07 08:00,2025-08-11 17:00
FAB110307A-04,INSTALL DOOR & HARDWARE - FAB110307A,Active,H2 Purifier Rm - 1F -SUW-FAB110307,,,,,,,,2025-08-29 08:00,2025-09-04 17:00,2025-08-29 08:00,
FAB110307A-05,PAINT & PROTECT DOORS & FRAMES - FAB110307A,Not Started,H2 Purifier Rm - 1F -SUW-FAB110307,,,,,,,,2026-02-16 08:00,2026-02-19 15:00,,
FAB110307A-09,IMPACT DOOR FRAME REMEDIATION - FAB110307A,Complete,H2 Purifier Rm - 1F -SUW-FAB110307,,,,,,,,2025-08-04 08:00,2025-08-04 17:00,2025-08-04 08:00,2025-08-04 17:00
ZX-9490,Complete Drywall & Inspect - Fire Alarm Rm 3-1F-FAB110312,Complete,Fire Alarm Rm 3 - 1F -SUW-FAB110312,,,,,,,,2025-08-19 08:00,2025-08-22 17:00,2025-08-19 08:00,2025-08-22 17:00
FAB110312A-03,INSTALL DOOR FRAMES - FAB110312A,Complete,Fire Alarm Rm 3 - 1F -SUW-FAB110312,,,,,,,,2025-08-18 13:00,2025-08-19 12:00,2024-07-09 00:00,2024-07-10 12:00
FAB110312A-04,INSTALL DOOR & HARDWARE - FAB110312A,Active,Fire Alarm Rm 3 - 1F -SUW-FAB110312,,,,,,,,2025-08-14 08:00,2025-08-20 17:00,2025-08-14 08:00,
FAB110312A-05,PAINT & PROTECT DOORS & FRAMES - FAB110312A,Not Started,Fire Alarm Rm 3 - 1F -SUW-FAB110312,,,,,,,,2026-02-16 08:00,2026-02-16 17:00,,
ZX-8980,Complete Drywall & Inspect - Equip Platform-1F-SUW-FAB110308,Complete,Equip Platform - 1F -SUW-FAB110308,,,,,,,,2025-09-01 08:00,2025-09-02 17:00,2025-09-01 08:00,2025-09-02 17:00
FAB110308A-03,INSTALL DOOR FRAMES - FAB110308A,Complete,Equip Platform - 1F -SUW-FAB110308,,,,,,,,2025-08-08 08:00,2025-08-08 17:00,2025-08-08 08:00,2025-08-08 17:00
FAB110308A-04,DOOR INSTALL - FAB110308A,Complete,Equip Platform - 1F -SUW-FAB110308,,,,,,,,2025-10-10 08:00,2025-10-10 17:00,2025-10-10 08:00,2025-10-10 17:00
FAB110308A-05,PAINT & PROTECT DOORS & FRAMES - FAB110308A,Complete,Equip Platform - 1F -SUW-FAB110308,,,,,,,,2025-10-14 08:00,2025-10-17 15:00,2025-10-14 08:00,2025-10-17 15:00
FAB110308A-06,INSTALL DOOR HARDWARE - FAB110308A,Not Started,Equip Platform - 1F -SUW-FAB110308,,,,,,,,2025-11-21 08:00,2025-11-26 15:00,,
FAB110308A-07,DOOR FRAME PAINT & 1ST COAT - FAB110308A,Complete,Equip Platform - 1F -SUW-FAB110308,,,,,,,,2025-10-06 08:00,2025-10-08 17:00,2025-10-06 08:00,2025-10-08 17:00
FAB110308A-09,IMPACT DOOR FRAME REMEDIATION  - FAB110308A,Complete,Equip Platform - 1F -SUW-FAB110308,,,,,,,,2025-08-20 08:00,2025-08-20 17:00,2025-08-06 08:00,2025-08-06 17:00
ZX-9280,Complete Drywall & Inspect - MCC Rm-1F-SUW-FAB110314,Complete,MCC Rm - 1F -SUW-FAB110314,,,,,,,,2025-05-13 08:00,2025-05-15 17:00,2025-05-13 08:00,2025-05-15 16:00
FAB110314A-03,INSTALL DOOR FRAMES - FAB110314A,Complete,MCC Rm - 1F -SUW-FAB110314,,,,,,,,2025-06-20 13:00,2025-06-23 12:00,2025-04-14 00:00,2025-04-14 12:00
FAB110314A-04,INSTALL DOOR & HARDWARE - FAB110314A,Active,MCC Rm - 1F -SUW-FAB110314,,,,,,,,2025-09-17 08:00,2025-09-23 17:00,2025-09-17 08:00,
FAB110314A-05,PAINT & PROTECT DOORS & FRAMES - FAB110314A,Not Started,MCC Rm - 1F -SUW-FAB110314,,,,,,,,2026-02-16 08:00,2026-02-19 15:00,,
FAB110314B-01,IMPACT - INSTALL/REWORK DRYWALL FRAMING AROUND DOORS - FAB110314B,Complete,MCC Rm - 1F -SUW-FAB110314,,,,,,,,2025-09-16 08:00,2025-09-17 17:00,2025-09-16 08:00,2025-09-17 17:00
FAB110314B-03,INSTALL DOOR FRAMES - FAB110314B,Complete,MCC Rm - 1F -SUW-FAB110314,,,,,,,,2025-09-17 08:00,2025-09-17 17:00,2025-09-17 08:00,2025-09-17 17:00
FAB110314B-04,INSTALL DOOR & HARDWARE - FAB110314B,Active,MCC Rm - 1F -SUW-FAB110314,,,,,,,,2025-09-24 08:00,2025-09-30 17:00,2025-09-24 08:00,
FAB110314B-05,PAINT & PROTECT DOORS & FRAMES - FAB110314B,Not Started,MCC Rm - 1F -SUW-FAB110314,,,,,,,,2026-02-16 08:00,2026-02-19 15:00,,
ZX-9580,Complete Drywall & Inspect - I/O Rm-1F-SUW-FAB110313,Complete,I/O Rm - 1F -SUW-FAB110313,,,,,,,,2025-08-14 08:00,2025-08-22 17:00,2025-08-14 08:00,2025-08-22 17:00
FAB110313A-01,IMPACT - INSTALL/REWORK DRYWALL FRAMING AROUND DOORS - FAB110313A,Complete,I/O Rm - 1F -SUW-FAB110313,,,,,,,,2025-09-01 08:00,2025-09-01 17:00,2025-09-01 08:00,2025-09-01 17:00
FAB110313A-03,INSTALL DOOR FRAMES - FAB110313A,Complete,I/O Rm - 1F -SUW-FAB110313,,,,,,,,2025-09-03 08:00,2025-09-03 17:00,2025-09-03 08:00,2025-09-03 17:00
FAB110313A-04,DOOR INSTALL - FAB110313A,Complete,I/O Rm - 1F -SUW-FAB110313,,,,,,,,2025-09-17 08:00,2025-09-17 17:00,2025-09-17 08:00,2025-09-17 17:00
FAB110313A-05,PAINT & PROTECT DOORS & FRAMES - FAB110313A,Complete,I/O Rm - 1F -SUW-FAB110313,,,,,,,,2025-10-14 08:00,2025-10-17 15:00,2025-10-14 08:00,2025-10-17 15:00
FAB110313A-06,INSTALL DOOR HARDWARE - FAB110313A,Not Started,I/O Rm - 1F -SUW-FAB110313,,,,,,,,2025-11-21 08:00,2025-11-26 15:00,,
FAB110313B-03,INSTALL DOOR FRAMES - FAB110313B,Complete,I/O Rm - 1F -SUW-FAB110313,,,,,,,,2025-10-17 08:00,2025-10-17 17:00,2025-10-17 08:00,2025-10-17 17:00
FAB110313B-04,INSTALL DOOR & HARDWARE - FAB110313B,Active,I/O Rm - 1F -SUW-FAB110313,,,,,,,,2025-10-20 08:00,2025-10-24 17:00,2025-10-20 08:00,
FAB110313B-05,PAINT & PROTECT DOORS & FRAMES - FAB110313B,Not Started,I/O Rm - 1F -SUW-FAB110313,,,,,,,,2026-02-16 08:00,2026-02-19 15:00,,
ZX-9130,Complete Drywall & Inspect - IT/Security Rm-1F-SUW-FAB110311,Complete,IT/Security Rm - 1F -SUW-FAB110311,,,,,,,,2025-09-01 08:00,2025-09-09 17:00,2025-07-31 08:00,2025-08-01 17:00
TR-FAB110311A-03,INSTALL DOOR FRAMES - TR - FAB110311A,Complete,IT/Security Rm - 1F -SUW-FAB110311,,,,,,,,2025-07-15 13:00,2025-07-16 12:00,2024-05-22 00:00,2024-05-23 12:00
TR-FAB110311A-04,INSTALL DOOR & HARDWARE - TR - FAB110311A,Active,IT/Security Rm - 1F -SUW-FAB110311,,,,,,,,2025-09-03 08:00,2025-09-09 17:00,2025-09-03 08:00,
TR-FAB110311A-05,PAINT & PROTECT DOORS & FRAMES -  TR - FAB110311A,Not Started,IT/Security Rm - 1F -SUW-FAB110311,,,,,,,,2026-02-16 08:00,2026-02-17 17:00,,
ZX-9730,SECAI TURNOVER FOR ACELERATION - Drywall & Inspect - Exit Passageway 3-1F-FAB110305 BAKER/DESCOPE,Complete,Exit Passageway 3 - 1F -SUW-FAB110305,,,,,,,,2025-05-13 08:00,2025-05-13 08:00,2025-05-05 08:00,2025-05-05 08:00
FAB110305B-02,INSTALL DOOR FRAMES BY SECAI - FAB110305B,Complete,Exit Passageway 3 - 1F -SUW-FAB110305,,,,,,,,2025-07-02 13:00,2025-07-03 12:00,2025-07-02 12:00,2025-07-02 12:00
FAB110305B-04,DOOR INSTALL - FAB110305B,Complete,Exit Passageway 3 - 1F -SUW-FAB110305,,,,,,,,2025-08-18 08:00,2025-08-18 17:00,2025-08-18 08:00,2025-08-18 17:00
FAB110305A-01,INSTALL/REWORK DRYWALL FRAMING AROUND DOORS - FAB110305A,Complete,Exit Passageway 3 - 1F -SUW-FAB110305,,,,,,,,2025-10-06 08:00,2025-10-14 17:00,2025-10-06 08:00,2025-10-14 17:00
FAB110305A-03,INSTALL DOOR FRAMES - FAB110305A,Complete,Exit Passageway 3 - 1F -SUW-FAB110305,,,,,,,,2025-10-15 08:00,2025-10-15 17:00,2025-10-15 08:00,2025-10-15 17:00
FAB110305A-04,INSTALL DOOR & HARDWARE - FAB110305A,Active,Exit Passageway 3 - 1F -SUW-FAB110305,,,,,,,,2025-10-30 08:00,2025-11-05 17:00,2025-10-30 08:00,
FAB110305A-05,PAINT & PROTECT DOORS & FRAMES - FAB110305A,Not Started,Exit Passageway 3 - 1F -SUW-FAB110305,,,,,,,,2026-02-16 08:00,2026-02-19 15:00,,
FAB110305B-07,DOOR FRAME PAINT & 1ST COAT - FAB110305B,Complete,Exit Passageway 3 - 1F -SUW-FAB110305,,,,,,,,2025-07-25 08:00,2025-07-29 17:00,2025-07-25 08:00,2025-07-29 17:00
FAB110305B-05,PAINT & PROTECT DOORS & FRAMES - FAB110305B,Complete,Exit Passageway 3 - 1F -SUW-FAB110305,,,,,,,,2025-10-15 08:00,2025-10-20 17:00,2025-10-15 08:00,2025-10-20 17:00
FAB110305B-06,INSTALL DOOR HARDWARE - FAB110305B,Not Started,Exit Passageway 3 - 1F -SUW-FAB110305,,,,,,,,2025-11-21 08:00,2025-11-26 15:00,,
ZX-9100,SECAI TURNOVER FOR ACELERATION - Drywall & Inspect - Airlock 3-1F-FAB110304 BAKER/DESCOPE,Complete,Air Lock 3 - 1F -SUW-FAB110304,,,,,,,,2025-05-28 08:00,2025-06-06 17:00,2025-05-22 08:00,2025-05-22 16:00
ZX-17400,IMPACT - SECAI DENIAL OF ACCEL COST FOR BERG - Drywall & Inspect - Airlock 3-1F-FAB110304,Complete,Air Lock 3 - 1F -SUW-FAB110304,,,,,,,,2025-05-05 08:00,2025-05-14 17:00,2025-05-05 08:00,2025-05-22 08:00
FAB110304A-03,INSTALL DOOR FRAME BY SECAI - FAB110304A HANDED OVER TO SECAI 07/18,Complete,Air Lock 3 - 1F -SUW-FAB110304,,,,,,,,2025-07-18 08:00,2025-07-31 17:00,2025-07-21 08:00,2025-10-14 08:00
FAB110304C-03,INSTALL DOOR FRAMES - FAB110304C,Complete,Air Lock 3 - 1F -SUW-FAB110304,,,,,,,,2025-06-20 13:00,2025-06-23 12:00,2025-04-11 00:00,2025-04-11 12:00
FAB110304D-03,INSTALL DOOR FRAMES - FAB110304D,Complete,Air Lock 3 - 1F -SUW-FAB110304,,,,,,,,2025-06-06 13:00,2025-06-09 12:00,2025-04-03 00:00,2025-04-03 12:00
FAB110304E-03,INSTALL DOOR FRAMES - FAB110304E,Complete,Air Lock 3 - 1F -SUW-FAB110304,,,,,,,,2025-06-06 13:00,2025-06-09 12:00,2025-04-10 00:00,2025-04-10 12:00
FAB110304A-04,INSTALL DOOR & HARDWARE - FAB110304A,Not Started,Air Lock 3 - 1F -SUW-FAB110304,,,,,,,,2025-11-28 08:00,2025-12-04 17:00,,
FAB110304B-03,INSTALL DOOR FRAMES - FAB110304B (REMOVED DURING DRYWALL REMEDIATION),Complete,Air Lock 3 - 1F -SUW-FAB110304,,,,,,,,2025-10-15 08:00,2025-10-15 17:00,2025-10-15 08:00,2025-10-15 17:00
FAB110304B-04,INSTALL DOOR & HARDWARE - FAB110304B,Active,Air Lock 3 - 1F -SUW-FAB110304,,,,,,,,2025-10-30 08:00,2025-11-05 17:00,2025-10-30 08:00,
FAB110304C-04,INSTALL DOOR & HARDWARE - FAB110304C,Not Started,Air Lock 3 - 1F -SUW-FAB110304,,,,,,,,2025-11-28 08:00,2025-12-04 17:00,,
FAB110304D-04,INSTALL DOOR & HARDWARE - FAB110304D,Active,Air Lock 3 - 1F -SUW-FAB110304,,,,,,,,2025-11-11 08:00,2025-11-17 17:00,2025-11-11 08:00,
FAB110304E-04,INSTALL DOOR & HARDWARE - FAB110304E,Not Started,Air Lock 3 - 1F -SUW-FAB110304,,,,,,,,2025-11-28 08:00,2025-12-04 17:00,,
FAB110304C-16,IMPACT - SECAI TRADE DAMAGED DOOR FRAMES - REWORK - REPAIR FRAME - FAB110304C,Active,Air Lock 3 - 1F -SUW-FAB110304,,,,,,,,2025-06-13 08:00,2025-06-17 17:00,2025-05-27 08:00,
FAB110304A-05,PAINT & PROTECT DOORS & FRAMES - FAB110304A,Not Started,Air Lock 3 - 1F -SUW-FAB110304,,,,,,,,2026-02-16 08:00,2026-02-19 15:00,,
FAB110304B-05,PAINT & PROTECT DOORS & FRAMES - FAB110304B,Not Started,Air Lock 3 - 1F -SUW-FAB110304,,,,,,,,2026-02-16 08:00,2026-02-19 15:00,,
FAB110304C-05,PAINT & PROTECT DOORS & FRAMES - FAB110304C,Not Started,Air Lock 3 - 1F -SUW-FAB110304,,,,,,,,2026-02-16 08:00,2026-02-19 15:00,,
FAB110304D-05,PAINT & PROTECT DOORS & FRAMES - FAB110304D,Not Started,Air Lock 3 - 1F -SUW-FAB110304,,,,,,,,2026-02-16 08:00,2026-02-19 15:00,,
FAB110304E-05,PAINT & PROTECT DOORS & FRAMES - FAB110304E,Not Started,Air Lock 3 - 1F -SUW-FAB110304,,,,,,,,2026-02-16 08:00,2026-02-19 15:00,,
ZX-9400,Complete Drywall & Inspect - Elevator Hall #03 - 1F-FAB110302,Complete,Elevator Hall 3 - 1F -SUW-FAB110302,,,,,,,,2025-05-28 08:00,2025-06-10 17:00,2025-05-28 08:00,2025-06-12 16:00
ZX-17410,IMPACT - SECAI DENIAL OF ACCEL COST FOR BERG Drywall & Inspect - Elevator Hall 3-1F-FAB110302,Complete,Elevator Hall 3 - 1F -SUW-FAB110302,,,,,,,,2025-05-05 08:00,2025-05-16 17:00,2025-05-05 08:00,2025-06-10 16:00
FAB110301C-03,SECAI - INSTALL DOOR FRAMES - FAB110301C,Complete,Elevator Hall 3 - 1F -SUW-FAB110302,,,,,,,,2025-06-20 08:00,2025-06-20 17:00,2025-05-08 08:00,2025-05-08 16:00
FAB110301C-04,DOOR INSTALL - FAB110301C,Complete,Elevator Hall 3 - 1F -SUW-FAB110302,,,,,,,,2025-05-22 08:00,2025-05-22 17:00,2025-05-22 08:00,2025-05-22 17:00
FAB110301C-05,PAINT & PROTECT DOORS & FRAMES - FAB110301C,Active,Elevator Hall 3 - 1F -SUW-FAB110302,,,,,,,,2025-10-14 08:00,2025-10-17 15:00,2025-10-14 08:00,
FAB110301C-06,INSTALL DOOR HARDWARE - FAB110301C,Not Started,Elevator Hall 3 - 1F -SUW-FAB110302,,,,,,,,2025-11-26 15:00,2025-12-02 12:00,,
ZX-18760,SECAI TURNOVER FOR ACELERATION - NORTH WALL Drywall & Inspect - Elevator Hall #03 - 1F-FAB110302 AXIOS/DESCOPE,Complete,Elevator Hall 3 - 1F -SUW-FAB110302,,,,,,,,2025-05-28 08:00,2025-06-10 17:00,2025-06-12 08:00,2025-06-12 16:00
FAB110301B-04,INSTALL DOOR & HARDWARE - FAB110301B,Not Started,Elevator Hall 3 - 1F -SUW-FAB110302,,,,,,,,2025-12-10 08:00,2025-12-16 17:00,,
ZX-9700,Complete Drywall & Inspect - Elvator Mech Rm-1F-FAB110303,Complete,Elvator Mech Rm #3 - 1F -SUW-FAB110303,,,,,,,,2025-06-10 08:00,2025-06-18 17:00,2025-06-10 08:00,2025-06-13 16:00
ZX-16570,IMPACT - Complete Drywall & Inspect - Elvator Mech Rm-1F-FAB110303 - SECAI DENIAL OF ACCEL COST FOR BERG,Complete,Elvator Mech Rm #3 - 1F -SUW-FAB110303,,,,,,,,2025-05-05 08:00,2025-05-13 17:00,2025-05-05 08:00,2025-05-27 16:00
FAB110303A-03,INSTALL DOOR FRAMES - FAB110303A,Complete,Elvator Mech Rm #3 - 1F -SUW-FAB110303,,,,,,,,2024-10-24 08:00,2024-10-24 17:00,2024-10-24 08:00,2024-10-24 17:00
FAB110303A-04,INSTALL DOOR & HARDWARE - FAB110303A,Active,Elvator Mech Rm #3 - 1F -SUW-FAB110303,,,,,,,,2024-10-24 08:00,2024-10-30 17:00,2024-10-24 08:00,
FAB110303A-05,PAINT & PROTECT DOORS & FRAMES - FAB110303A,Not Started,Elvator Mech Rm #3 - 1F -SUW-FAB110303,,,,,,,,2026-02-16 08:00,2026-02-19 15:00,,
ZX-9040,Complete Drywall & Inspect - Elevator #03 - 1F-1FAB-EL3,Complete,Elevator 3 - 1F -SUW-FAB1-EL03,,,,,,,,2025-05-05 08:00,2025-05-13 17:00,2025-05-05 08:00,2025-05-13 16:00
ZX-9340,Complete Drywall & Inspect - Duct Shaft - 1F-SUW-FAB110206,Complete,Duct Shaft - 1F -SUW-FAB110206,,,,,,,,2025-08-27 08:00,2025-09-11 17:00,2025-08-15 08:00,2025-10-27 08:00
FAB110206A-04,INSTALL DOOR & HARDWARE - FAB110206A,Active,Duct Shaft - 1F -SUW-FAB110206,,,,,,,,2025-10-03 08:00,2025-10-09 17:00,2025-10-03 08:00,
FAB110206A-05,PAINT & PROTECT DOORS & FRAMES - FAB110206A,Not Started,Duct Shaft - 1F -SUW-FAB110206,,,,,,,,2026-02-16 08:00,2026-02-19 15:00,,
FAB110206B-04,INSTALL DOOR & HARDWARE - FAB110206B,Active,Duct Shaft - 1F -SUW-FAB110206,,,,,,,,2025-08-18 08:00,2025-08-22 17:00,2025-08-18 08:00,
FAB110206B-05,PAINT & PROTECT DOORS & FRAMES - FAB110206B,Not Started,Duct Shaft - 1F -SUW-FAB110206,,,,,,,,2026-02-16 08:00,2026-02-19 15:00,,
FAB110206A-11,IMPACT - PROCUREMENT - Reordered doors (Wall Thickness and Door Swing Design Changes),Complete,Duct Shaft - 1F -SUW-FAB110206,,,,,,,,2025-07-10 08:00,2025-08-21 17:00,2025-06-09 08:00,2025-07-14 17:00
FAB110206B-11,IMPACT - PROCUREMENT - Reordered doors (Wall Thickness and Door Swing Design Changes),Complete,Duct Shaft - 1F -SUW-FAB110206,,,,,,,,2025-06-09 08:00,2025-07-21 17:00,2025-06-09 08:00,2025-07-14 17:00
FAB110122A-01,IMPACT - INSTALL/REWORK DRYWALL FRAMING AROUND DOORS - FAB110122A,Complete,Duct Shaft - 1F -SUW-FAB110206,,,,,,,,2025-07-25 08:00,2025-08-04 17:00,2025-07-08 13:00,2025-07-16 17:00
FAB110122A-03,INSTALL DOOR FRAMES - FAB110122A,Complete,Duct Shaft - 1F -SUW-FAB110206,,,,,,,,2025-08-06 08:00,2025-08-06 17:00,2025-07-23 08:00,2025-07-23 17:00
FAB110122A-04,INSTALL DOOR & HARDWARE - FAB110122A,Active,Duct Shaft - 1F -SUW-FAB110206,,,,,,,,2025-07-25 08:00,2025-07-31 17:00,2025-07-25 08:00,
FAB110122A-05,PAINT & PROTECT DOORS & FRAMES - FAB110122A,Not Started,Duct Shaft - 1F -SUW-FAB110206,,,,,,,,2026-02-16 08:00,2026-02-19 15:00,,
ZX-9760,SECAI TURNOVER FOR ACELERATION - Drywall & Inspect - SOUTH PIT - BAKER/DESCOPE,Complete,SOUTH/NORTH PIT - 1F - SUW,,,,,,,,2025-05-07 13:00,2025-05-16 12:00,2025-05-07 12:00,2025-06-10 12:00
ZX-9880,SECAI TURNOVER FOR ACELERATION - Drywall & Inspect - Exit Passageway 2-1F-FAB110211 BAKER/DESCOPE,Complete,Exit Passageway 2 - 1F -FAB110211,,,,,,,,2025-05-19 13:00,2025-05-19 13:00,2025-05-06 12:00,2025-05-06 12:00
FAB110211A-03,INSTALL DOOR FRAMES - FAB110211A,Complete,Exit Passageway 2 - 1F -FAB110211,,,,,,,,2025-06-24 08:00,2025-06-24 17:00,2025-06-18 08:00,2025-06-18 16:00
FAB110211A-04,DOOR INSTALL - FAB110211A,Complete,Exit Passageway 2 - 1F -FAB110211,,,,,,,,2025-08-05 08:00,2025-08-05 17:00,2025-08-05 08:00,2025-08-05 17:00
FAB110211B-03,INSTALL DOOR FRAME BY SECAI - FAB110211B HANDED OVER 06/27,Complete,Exit Passageway 2 - 1F -FAB110211,,,,,,,,2025-07-03 08:00,2025-07-16 17:00,2025-06-28 08:00,2025-09-19 17:00
FAB110211B-04,INSTALL DOOR & HARDWARE - FAB110211B,Active,Exit Passageway 2 - 1F -FAB110211,,,,,,,,2025-09-29 08:00,2025-10-03 17:00,2025-09-29 08:00,
FAB110211B-31,PROCUREMENT - RE-ORDER FRAME - FAB110211B,Complete,Exit Passageway 2 - 1F -FAB110211,,,,,,,,2025-06-20 08:00,2025-08-07 17:00,2025-06-20 08:00,2025-06-27 17:00
FAB110211A-05,PAINT & PROTECT DOORS & FRAMES - FAB110211A,Complete,Exit Passageway 2 - 1F -FAB110211,,,,,,,,2025-10-08 08:00,2025-10-13 17:00,2025-10-08 08:00,2025-10-12 17:00
FAB110211A-06,INSTALL DOOR HARDWARE - FAB110211A,Not Started,Exit Passageway 2 - 1F -FAB110211,,,,,,,,2025-11-21 08:00,2025-11-26 15:00,,
FAB110211A-07,DOOR FRAME PAINT & 1ST COAT - FAB110211A,Complete,Exit Passageway 2 - 1F -FAB110211,,,,,,,,2025-07-25 08:00,2025-07-30 17:00,2025-07-25 08:00,2025-07-29 17:00
FAB110211A-02,SECAI ROUGH IN FRAME - FAB110211A,Complete,Exit Passageway 2 - 1F -FAB110211,,,,,,,,2025-06-23 08:00,2025-06-23 17:00,2025-06-18 08:00,2025-06-18 16:00
FAB110211B-05,PAINT & PROTECT DOORS & FRAMES - FAB110211B,Not Started,Exit Passageway 2 - 1F -FAB110211,,,,,,,,2026-02-16 08:00,2026-02-19 17:00,,
FAB110211B-25,DOOR FRAME HANDED OVER TO SECAI ON 06/27 - FAB110211B,Complete,Exit Passageway 2 - 1F -FAB110211,,,,,,,,2025-06-27 08:00,2025-06-27 17:00,2025-06-27 08:00,2025-06-27 16:00
ZX-9910,Complete Drywall & Inspect - Elevator Mech Rm #02 - 1F-FAB110205,Complete,Elevator Mech. Rm 2 - 1F -SUW-FAB110205,,,,,,,,2025-08-11 08:00,2025-08-22 17:00,2025-08-11 08:00,2025-08-15 17:00
FAB110205A-03,INSTALL DOOR FRAMES - FAB110205A,Complete,Elevator Mech. Rm 2 - 1F -SUW-FAB110205,,,,,,,,2025-09-19 08:00,2025-09-19 17:00,2025-09-19 08:00,2025-09-19 17:00
FAB110205A-04,INSTALL DOOR & HARDWARE - FAB110205A,Active,Elevator Mech. Rm 2 - 1F -SUW-FAB110205,,,,,,,,2025-09-19 08:00,2025-09-25 17:00,2025-09-19 08:00,
FAB110205A-05,PAINT & PROTECT DOORS & FRAMES - FAB110205A,Not Started,Elevator Mech. Rm 2 - 1F -SUW-FAB110205,,,,,,,,2026-02-16 08:00,2026-02-19 15:00,,
ZX-10210,Complete - Drywall & Inspect - Fire Riser Rm - 1F-SUW-FAB110212 - Catchup inspection pending,Complete,Fire Riser Rm - 1F -SUW-FAB110212,,,,,,,,2025-08-19 08:00,2025-08-21 11:00,2025-08-12 08:00,2025-08-22 17:00
FAB110212A-03,INSTALL DOOR FRAMES - FAB110212A,Complete,Fire Riser Rm - 1F -SUW-FAB110212,,,,,,,,2025-06-20 08:00,2025-06-20 17:00,2025-06-20 08:00,2025-06-20 16:00
FAB110212A-04,DOOR INSTALL - FAB110212A,Complete,Fire Riser Rm - 1F -SUW-FAB110212,,,,,,,,2025-08-05 08:00,2025-08-05 17:00,2025-08-01 08:00,2025-08-01 17:00
FAB110212A-05,PAINT & PROTECT DOORS & FRAMES - FAB110212A,Complete,Fire Riser Rm - 1F -SUW-FAB110212,,,,,,,,2025-10-08 08:00,2025-10-13 17:00,2025-10-08 08:00,2025-10-12 17:00
FAB110212A-06,INSTALL DOOR HARDWARE - FAB110212A,Not Started,Fire Riser Rm - 1F -SUW-FAB110212,,,,,,,,2025-11-21 08:00,2025-11-26 15:00,,
FAB110212A-07,DOOR FRAME PAINT & 1ST COAT - FAB110212A,Complete,Fire Riser Rm - 1F -SUW-FAB110212,,,,,,,,2025-07-23 08:00,2025-07-28 17:00,2025-07-23 08:00,2025-07-28 17:00
ZX-10510,Complete Drywall & Inspect - Toilet Corridor-1F-SUW-FAB110213,Complete,Toilet Corridor - 1F -SUW-FAB110213,,,,,,,,2025-09-22 08:00,2025-10-03 17:00,2025-07-18 08:00,2025-07-24 11:00
FAB110213A-03,INSTALL DOOR FRAMES - FAB110213A,Complete,Toilet Corridor - 1F -SUW-FAB110213,,,,,,,,2025-06-26 08:00,2025-06-26 17:00,2025-06-13 08:00,2025-06-13 16:00
FAB110213A-04,DOOR INSTALL - FAB110213A,Complete,Toilet Corridor - 1F -SUW-FAB110213,,,,,,,,2025-08-06 08:00,2025-08-06 17:00,2025-08-05 08:00,2025-08-05 17:00
FAB110213A-05,PAINT & PROTECT DOORS & FRAMES - FAB110213A,Complete,Toilet Corridor - 1F -SUW-FAB110213,,,,,,,,2025-10-14 08:00,2025-10-15 17:00,2025-10-14 08:00,2025-10-16 17:00
FAB110213A-06,INSTALL DOOR HARDWARE - FAB110213A,Not Started,Toilet Corridor - 1F -SUW-FAB110213,,,,,,,,2025-11-21 08:00,2025-11-26 15:00,,
FAB110213A-07,DOOR FRAME PAINT & 1ST COAT - FAB110213A,Complete,Toilet Corridor - 1F -SUW-FAB110213,,,,,,,,2025-07-23 08:00,2025-07-28 17:00,2025-07-23 08:00,2025-07-29 17:00
ZX-9850,Complete Drywall & Inspect - Toilet (M) 2-1F-SUW-FAB110202,Complete,Toilet (M) 2 - 1F -SUW-FAB110202,,,,,,,,2025-08-04 08:00,2025-08-15 17:00,2025-07-07 08:00,2025-08-05 17:00
FAB110202B-01,IMPACT - INSTALL/REWORK DRYWALL FRAMING AROUND DOORS - FAB110202B,Complete,Toilet (M) 2 - 1F -SUW-FAB110202,,,,,,,,2025-08-11 08:00,2025-08-19 17:00,2025-08-11 08:00,2025-08-19 17:00
FAB110202B-03,INSTALL DOOR FRAMES - FAB110202B,Complete,Toilet (M) 2 - 1F -SUW-FAB110202,,,,,,,,2025-08-19 08:00,2025-08-19 17:00,2025-08-19 08:00,2025-08-19 17:00
FAB110202B-04,INSTALL DOOR & HARDWARE - FAB110202B,Active,Toilet (M) 2 - 1F -SUW-FAB110202,,,,,,,,2025-10-13 08:00,2025-10-17 17:00,2025-10-13 08:00,
FAB110202B-05,PAINT & PROTECT DOORS & FRAMES - FAB110202B,Not Started,Toilet (M) 2 - 1F -SUW-FAB110202,,,,,,,,2026-02-16 08:00,2026-02-17 17:00,,
ZX-17910,IMPACT - MEP - Complete Drywall & Inspect - Toilet (M) 2-1F-SUW-FAB110202,Complete,Toilet (M) 2 - 1F -SUW-FAB110202,,,,,,,,2025-06-20 08:00,2025-07-03 17:00,2025-05-06 08:00,2025-05-28 16:00
ZX-18980,IMPACT - SECAI REMOVED DRYWALL - Toilet (M) 2-1F-SUW-FAB110202,Complete,Toilet (M) 2 - 1F -SUW-FAB110202,,,,,,,,2025-06-27 08:00,2025-07-17 17:00,2025-06-27 08:00,2025-07-22 17:00
ZX-10000,Complete Drywall & Inspect - Toilet (W) 2-1F-SUW-FAB110203 NON RATED WALLS,Complete,Toilet (W) 2 - 1F -SUW-FAB110203,,,,,,,,2025-06-10 08:00,2025-06-23 17:00,2025-06-10 08:00,2025-06-19 16:00
FAB110203A-01,IMPACT - INSTALL/REWORK DRYWALL FRAMING AROUND DOORS - FAB110203A,Complete,Toilet (W) 2 - 1F -SUW-FAB110203,,,,,,,,2025-08-11 08:00,2025-08-19 17:00,2025-08-11 08:00,2025-08-19 17:00
FAB110203A-03,INSTALL DOOR FRAMES - FAB110203A,Complete,Toilet (W) 2 - 1F -SUW-FAB110203,,,,,,,,2025-08-19 08:00,2025-08-19 17:00,2025-08-19 08:00,2025-08-19 17:00
FAB110203A-04,INSTALL DOOR & HARDWARE - FAB110203A,Not Started,Toilet (W) 2 - 1F -SUW-FAB110203,,,,,,,,2025-11-28 08:00,2025-12-04 17:00,,
FAB110203A-05,PAINT & PROTECT DOORS & FRAMES - FAB110203A,Not Started,Toilet (W) 2 - 1F -SUW-FAB110203,,,,,,,,2026-02-16 08:00,2026-02-19 15:00,,
ZX-17900,IMPACT - MEP - Complete Drywall & Inspect - Toilet (W) 2-1F-SUW-FAB110203,Complete,Toilet (W) 2 - 1F -SUW-FAB110203,,,,,,,,2025-05-30 08:00,2025-06-12 17:00,2025-05-06 08:00,2025-05-23 16:00
ZX-10300,Complete Drywall & Inspect - Maint Rm 2-1F-SUW-FAB110201,Complete,Maint Rm 2 - 1F -SUW-FAB110201,,,,,,,,2025-10-06 08:00,2025-10-07 17:00,2025-10-06 08:00,2025-10-07 17:00
ZX-10600,Complete Drywall & Inspect - Gas Purifier Analyzer Rm-1F-SUW-FAB110207,Complete,Gas Purifier Analyzer Rm - 1F -SUW-FAB110207,,,,,,,,2025-07-09 08:00,2025-07-22 17:00,2025-07-03 08:00,2025-07-07 16:00
FAB110207A-01,IMPACT - INSTALL/REWORK DRYWALL FRAMING AROUND DOORS - FAB110207A,Complete,Gas Purifier Analyzer Rm - 1F -SUW-FAB110207,,,,,,,,2025-08-29 08:00,2025-09-01 17:00,2025-08-29 08:00,2025-09-01 17:00
FAB110207A-03,INSTALL DOOR FRAMES - FAB110207A,Complete,Gas Purifier Analyzer Rm - 1F -SUW-FAB110207,,,,,,,,2025-09-02 08:00,2025-09-02 17:00,2025-09-02 08:00,2025-09-02 17:00
FAB110207A-04,INSTALL DOOR & HARDWARE - FAB110207A,Active,Gas Purifier Analyzer Rm - 1F -SUW-FAB110207,,,,,,,,2025-09-03 08:00,2025-09-09 17:00,2025-09-03 08:00,
FAB110207A-05,PAINT & PROTECT DOORS & FRAMES - FAB110207A,Not Started,Gas Purifier Analyzer Rm - 1F -SUW-FAB110207,,,,,,,,2026-02-16 08:00,2026-02-19 15:00,,
FAB110207B-01,IMPACT - INSTALL/REWORK DRYWALL FRAMING AROUND DOORS - FAB110207B,Complete,Gas Purifier Analyzer Rm - 1F -SUW-FAB110207,,,,,,,,2025-08-29 08:00,2025-09-01 17:00,2025-08-29 08:00,2025-09-01 17:00
FAB110207B-03,INSTALL DOOR FRAMES - FAB110207B,Complete,Gas Purifier Analyzer Rm - 1F -SUW-FAB110207,,,,,,,,2025-09-02 08:00,2025-09-02 17:00,2025-09-02 08:00,2025-09-02 17:00
FAB110207B-04,INSTALL DOOR & HARDWARE - FAB110207B,Active,Gas Purifier Analyzer Rm - 1F -SUW-FAB110207,,,,,,,,2025-09-03 08:00,2025-09-09 17:00,2025-09-03 08:00,
FAB110207B-05,PAINT & PROTECT DOORS & FRAMES - FAB110207B,Not Started,Gas Purifier Analyzer Rm - 1F -SUW-FAB110207,,,,,,,,2026-02-16 08:00,2026-02-19 15:00,,
FAB110207C-03,INSTALL DOOR FRAMES - FAB110207C,Complete,Gas Purifier Analyzer Rm - 1F -SUW-FAB110207,,,,,,,,2025-09-02 08:00,2025-09-02 17:00,2025-09-02 08:00,2025-09-02 17:00
FAB110207C-04,INSTALL DOOR & HARDWARE - FAB110207C,Active,Gas Purifier Analyzer Rm - 1F -SUW-FAB110207,,,,,,,,2025-09-03 08:00,2025-09-09 17:00,2025-09-03 08:00,
FAB110207C-05,PAINT & PROTECT DOORS & FRAMES - FAB110207C,Not Started,Gas Purifier Analyzer Rm - 1F -SUW-FAB110207,,,,,,,,2026-02-16 08:00,2026-02-19 15:00,,
ZX-9820,Complete Drywall & Inspect - Gas Purifier Rm-1F-SUW-FAB110204 NON RATED WALLS,Complete,Gas Purifier Rm - 1F -SUW-FAB110204,,,,,,,,2025-05-07 13:00,2025-05-21 12:00,2025-05-07 12:00,2025-05-14 16:00
FAB110204A-03,INSTALL DOOR FRAMES - FAB110204A,Complete,Gas Purifier Rm - 1F -SUW-FAB110204,,,,,,,,2025-07-11 08:00,2025-07-11 17:00,2025-07-11 08:00,2025-07-11 17:00
FAB110204A-04,INSTALL DOOR & HARDWARE - FAB110204A,Active,Gas Purifier Rm - 1F -SUW-FAB110204,,,,,,,,2025-07-11 08:00,2025-07-17 17:00,2025-07-11 08:00,
FAB110204A-05,PAINT & PROTECT DOORS & FRAMES - FAB110204A,Not Started,Gas Purifier Rm - 1F -SUW-FAB110204,,,,,,,,2026-02-16 08:00,2026-02-19 15:00,,
FAB110204B-03,INSTALL DOOR FRAMES - FAB110204B - P1,Complete,Gas Purifier Rm - 1F -SUW-FAB110204,,,,,,,,2025-07-01 08:00,2025-07-01 17:00,2025-07-01 08:00,2025-07-01 16:00
FAB110204B-04,DOOR INSTALL - FAB110204B - P1,Complete,Gas Purifier Rm - 1F -SUW-FAB110204,,,,,,,,2025-09-03 08:00,2025-09-03 17:00,2025-09-03 08:00,2025-09-03 17:00
FAB110204B-05,PAINT & PROTECT DOORS & FRAMES - FAB110204B,Complete,Gas Purifier Rm - 1F -SUW-FAB110204,,,,,,,,2025-10-15 08:00,2025-10-20 15:00,2025-10-15 08:00,2025-10-20 15:00
FAB110204B-06,INSTALL DOOR HARDWARE - FAB110204B,Not Started,Gas Purifier Rm - 1F -SUW-FAB110204,,,,,,,,2025-11-21 08:00,2025-11-26 15:00,,
FAB110204C-03,INSTALL DOOR FRAMES - FAB110204C,Complete,Gas Purifier Rm - 1F -SUW-FAB110204,,,,,,,,2025-08-08 08:00,2025-08-08 17:00,2025-08-08 08:00,2025-08-08 17:00
FAB110204C-04,INSTALL DOOR & HARDWARE - FAB110204C,Active,Gas Purifier Rm - 1F -SUW-FAB110204,,,,,,,,2025-09-02 08:00,2025-09-08 17:00,2025-09-02 08:00,
FAB110204C-05,PAINT & PROTECT DOORS & FRAMES - FAB110204C,Not Started,Gas Purifier Rm - 1F -SUW-FAB110204,,,,,,,,2026-02-16 08:00,2026-02-19 15:00,,
FAB110204B-07,PREP DOOR - FAB110204B,Complete,Gas Purifier Rm - 1F -SUW-FAB110204,,,,,,,,2025-06-18 08:00,2025-06-24 17:00,2025-06-11 08:00,2025-06-18 16:00
FAB110204C-07,DOOR PREP - FAB110204C,Complete,Gas Purifier Rm - 1F -SUW-FAB110204,,,,,,,,2025-08-11 08:00,2025-08-15 17:00,2025-08-11 08:00,2025-08-15 17:00
FAB110204B-80,IMPACT SECAI TEMP DOOR - FAB110204B,Complete,Gas Purifier Rm - 1F -SUW-FAB110204,,,,,,,,2025-06-20 08:00,2025-06-27 17:00,2025-06-20 08:00,2025-07-01 16:00
FAB110204B-20,DOOR FRAME GROUT - FAB110204B - P1 (INCLUDE MOBILIZATION AND CURE TIME),Complete,Gas Purifier Rm - 1F -SUW-FAB110204,,,,,,,,2025-07-07 08:00,2025-07-14 17:00,2025-07-14 08:00,2025-07-14 17:00
ZX-10060,Complete Drywall & Inspect - Duct Shaft Vestibule - 1F-SUW-FAB110109,Complete,Duct Shaft Vestibule - 1F -SUW-FAB110109,,,,,,,,2025-08-19 08:00,2025-09-11 12:00,2025-08-11 08:00,2025-08-18 12:00
FAB110109A-03,INSTALL DOOR FRAMES - FAB110109A,Complete,Duct Shaft Vestibule - 1F -SUW-FAB110109,,,,,,,,2025-07-03 08:00,2025-07-03 17:00,2025-04-11 00:00,2025-04-11 16:00
FAB110109A-04,INSTALL DOOR & HARDWARE - FAB110109A,Not Started,Duct Shaft Vestibule - 1F -SUW-FAB110109,,,,,,,,2025-11-21 08:00,2025-11-27 17:00,,
FAB110109A-05,PAINT & PROTECT DOORS & FRAMES - FAB110109A,Not Started,Duct Shaft Vestibule - 1F -SUW-FAB110109,,,,,,,,2026-02-16 08:00,2026-02-19 15:00,,
FAB110109B-01,IMPACT - INSTALL/REWORK DRYWALL FRAMING AROUND DOORS - FAB110109B DOOR FRAME HANDED OVER TO SECAI,Complete,Duct Shaft Vestibule - 1F -SUW-FAB110109,,,,,,,,2025-07-17 13:00,2025-07-18 12:00,2025-07-17 13:00,2025-07-18 12:00
FAB110109B-13,DOOR FRAME HANDED OVER TO SECAI 07/17 - FAB110109B,Complete,Duct Shaft Vestibule - 1F -SUW-FAB110109,,,,,,,,2025-07-17 13:00,2025-07-18 12:00,2025-07-17 13:00,2025-07-18 12:00
FAB110109B-03,INSTALL DOOR FRAME BY SECAI - FAB110109B HANDED OVER 07/17,Complete,Duct Shaft Vestibule - 1F -SUW-FAB110109,,,,,,,,2025-07-17 13:00,2025-08-07 12:00,2025-07-17 13:00,2025-07-18 12:00
FAB110109B-04,DOOR INSTALL - FAB110109B,Complete,Duct Shaft Vestibule - 1F -SUW-FAB110109,,,,,,,,2025-08-13 08:00,2025-08-13 17:00,2025-08-13 08:00,2025-08-13 17:00
FAB110109B-05,PAINT & PROTECT DOORS & FRAMES - FAB110109B,Complete,Duct Shaft Vestibule - 1F -SUW-FAB110109,,,,,,,,2025-10-14 08:00,2025-10-17 15:00,2025-10-14 08:00,2025-10-17 15:00
FAB110109B-06,INSTALL DOOR HARDWARE - FAB110109B,Not Started,Duct Shaft Vestibule - 1F -SUW-FAB110109,,,,,,,,2025-11-21 08:00,2025-11-26 15:00,,
FAB110109B-11,IMPACT - PROCUREMENT - Reordered doors (Wall Thickness and Door Swing Design Changes),Complete,Duct Shaft Vestibule - 1F -SUW-FAB110109,,,,,,,,2025-06-20 08:00,2025-08-28 17:00,2025-06-20 08:00,2025-07-14 17:00
ZX-10360,Complete Drywall & Inspect - Duct Shaft - 1F-SUW-FAB110112,Complete,Duct Shaft - 1F -SUW-FAB110112,,,,,,,,2025-09-02 08:00,2025-09-17 17:00,2025-08-15 08:00,2025-08-18 17:00
ZX-17500,IMPACT - BERG ALLOCATION - Drywall & Inspect - Duct Shaft - 1F-SUW-FAB110112,Complete,Duct Shaft - 1F -SUW-FAB110112,,,,,,,,2025-05-13 08:00,2025-05-28 17:00,2025-05-05 08:00,2025-05-27 16:00
ZX-10660,Complete Drywall & Inspect - Duct Shaft Vestibule - 1F-SUW-FAB110108,Complete,Duct Shaft Vestibule - 1F -SUW-FAB110108,,,,,,,,2025-05-27 08:00,2025-06-11 17:00,2025-05-27 08:00,2025-06-20 16:00
FAB110108A-03,INSTALL DOOR FRAMES - FAB110108A,Complete,Duct Shaft Vestibule - 1F -SUW-FAB110108,,,,,,,,2025-06-25 13:00,2025-06-26 12:00,2025-05-07 00:00,2025-05-09 10:00
FAB110108A-04,INSTALL DOOR & HARDWARE - FAB110108A,Not Started,Duct Shaft Vestibule - 1F -SUW-FAB110108,,,,,,,,2025-11-21 08:00,2025-11-27 17:00,,
FAB110108A-05,PAINT & PROTECT DOORS & FRAMES - FAB110108A,Not Started,Duct Shaft Vestibule - 1F -SUW-FAB110108,,,,,,,,2026-02-16 08:00,2026-02-19 15:00,,
ZX-18790,IMPACT - AFTER FINISHED THE DRYWALL SECAI MEP MADE HOLES -Duct Shaft Vestibule - 1F-SUW-FAB110108,Complete,Duct Shaft Vestibule - 1F -SUW-FAB110108,,,,,,,,2025-05-27 08:00,2025-05-27 17:00,2025-06-23 08:00,2025-06-23 16:00
ZX-9790,SECAI TURNOVER FOR ACELERATION - Drywall & Inspect - Exit Passageway 1-1F-FAB110111 BAKER/DESCOPE,Complete,Exit Passageway 1 - 1F -SUW-FAB110111,,,,,,,,2025-05-27 08:00,2025-06-13 17:00,2025-05-22 08:00,2025-05-22 16:00
FAB110111A-01,INSTALL DOOR FRAMES - FAB110111A,Complete,Exit Passageway 1 - 1F -SUW-FAB110111,,,,,,,,2025-06-20 08:00,2025-06-20 17:00,2025-06-24 08:00,2025-06-24 16:00
FAB110111A-04,INSTALL DOOR - FAB110111A,Complete,Exit Passageway 1 - 1F -SUW-FAB110111,,,,,,,,2025-09-17 08:00,2025-09-17 17:00,2025-09-17 08:00,2025-09-17 17:00
FAB110111B-03,INSTALL DOOR FRAMES - FAB110111B SECAI REMOVED DURING DRYWALL REMEDIATION WORK,Complete,Exit Passageway 1 - 1F -SUW-FAB110111,,,,,,,,2025-07-17 08:00,2025-07-25 17:00,2025-06-10 08:00,2025-06-10 16:00
FAB110111B-04,INSTALL DOOR & HARDWARE - FAB110111B,Active,Exit Passageway 1 - 1F -SUW-FAB110111,,,,,,,,2025-10-15 08:00,2025-10-21 17:00,2025-10-15 08:00,
FAB110111A-05,PAINT & PROTECT DOORS & FRAMES - FAB110111A,Complete,Exit Passageway 1 - 1F -SUW-FAB110111,,,,,,,,2025-09-22 08:00,2025-09-25 15:00,2025-09-22 08:00,2025-09-25 15:00
FAB110111A-07,DOOR FRAME PAINT & 1ST COAT - FAB110111A,Complete,Exit Passageway 1 - 1F -SUW-FAB110111,,,,,,,,2025-09-11 08:00,2025-09-15 17:00,2025-09-11 08:00,2025-09-15 17:00
FAB110111A-90,DOOR FRAME GROUT - FAB110111A (INCLUDES MOBILIZATION AND CURE TIME),Complete,Exit Passageway 1 - 1F -SUW-FAB110111,,,,,,,,2025-07-14 08:00,2025-07-14 17:00,2025-07-14 08:00,2025-07-14 17:00
FAB110111B-05,PAINT & PROTECT DOORS & FRAMES - FAB110111B,Not Started,Exit Passageway 1 - 1F -SUW-FAB110111,,,,,,,,2026-02-16 08:00,2026-02-20 17:00,,
ZX-9970,SECAI TURNOVER FOR ACELERATION - Drywall & Inspect - Airlock 1-1F-FAB110110 BAKER/DESCOPE,Complete,Air Lock 1 - 1F -SUW-FAB110110,,,,,,,,2025-05-29 08:00,2025-06-06 17:00,2025-05-22 08:00,2025-05-22 16:00
FAB110110A-03,INSTALL DOOR FRAMES - FAB110110A,Complete,Air Lock 1 - 1F -SUW-FAB110110,,,,,,,,2025-06-16 08:00,2025-06-16 17:00,2025-06-16 08:00,2025-06-16 17:00
FAB110110C-03,INSTALL DOOR FRAMES - FAB110110C,Complete,Air Lock 1 - 1F -SUW-FAB110110,,,,,,,,2025-06-23 13:00,2025-06-24 12:00,2025-03-20 12:00,2025-03-20 12:00
FAB110110D-03,INSTALL DOOR FRAMES - FAB110110D,Complete,Air Lock 1 - 1F -SUW-FAB110110,,,,,,,,2025-06-23 13:00,2025-06-24 12:00,2025-04-04 00:00,2025-04-04 12:00
FAB110110E-03,INSTALL DOOR FRAMES - FAB110110E,Complete,Air Lock 1 - 1F -SUW-FAB110110,,,,,,,,2025-06-23 13:00,2025-06-24 12:00,2025-05-08 00:00,2025-05-08 12:00
FAB110110A-04,INSTALL DOOR & HARDWARE - FAB110110A,Active,Air Lock 1 - 1F -SUW-FAB110110,,,,,,,,2025-08-29 08:00,2025-09-04 17:00,2025-08-29 08:00,
FAB110110B-03,INSTALL DOOR FRAME BY SECAI - FAB110110B,Complete,Air Lock 1 - 1F -SUW-FAB110110,,,,,,,,2025-08-27 08:00,2025-08-27 17:00,2025-08-12 08:00,2025-08-12 17:00
FAB110110B-04,INSTALL DOOR & HARDWARE - FAB110110B,Active,Air Lock 1 - 1F -SUW-FAB110110,,,,,,,,2025-10-08 08:00,2025-10-14 17:00,2025-10-08 08:00,
FAB110110C-04,INSTALL DOOR & HARDWARE - FAB110110C,Active,Air Lock 1 - 1F -SUW-FAB110110,,,,,,,,2025-10-03 08:00,2025-10-09 17:00,2025-10-03 08:00,
FAB110110D-04,INSTALL DOOR & HARDWARE - FAB110110D,Active,Air Lock 1 - 1F -SUW-FAB110110,,,,,,,,2025-09-09 08:00,2025-09-15 17:00,2025-09-09 08:00,
FAB110110E-04,INSTALL DOOR & HARDWARE - FAB110110E,Active,Air Lock 1 - 1F -SUW-FAB110110,,,,,,,,2025-09-05 08:00,2025-09-11 17:00,2025-09-05 08:00,
FAB110110A-05,PAINT & PROTECT DOORS & FRAMES - FAB110110A,Not Started,Air Lock 1 - 1F -SUW-FAB110110,,,,,,,,2026-02-16 08:00,2026-02-19 17:00,,
FAB110110B-05,PAINT & PROTECT DOORS & FRAMES - FAB110110B,Not Started,Air Lock 1 - 1F -SUW-FAB110110,,,,,,,,2026-02-16 08:00,2026-02-19 17:00,,
FAB110110C-05,PAINT & PROTECT DOORS & FRAMES - FAB110110C,Not Started,Air Lock 1 - 1F -SUW-FAB110110,,,,,,,,2026-02-16 08:00,2026-02-19 17:00,,
FAB110110D-05,PAINT & PROTECT DOORS & FRAMES - FAB110110D,Not Started,Air Lock 1 - 1F -SUW-FAB110110,,,,,,,,2026-02-16 08:00,2026-02-19 17:00,,
FAB110110E-05,PAINT & PROTECT DOORS & FRAMES - FAB110110E,Not Started,Air Lock 1 - 1F -SUW-FAB110110,,,,,,,,2026-02-16 08:00,2026-02-19 17:00,,
ZX-10270,SECAI TURNOVER FOR ACELERATION - Drywall & Inspect - Elevator Hall #01 - 1F-FAB110113 BAKER/DESCOPE,Complete,Elevator Hall 1 - 1F -SUW-FAB110113,,,,,,,,2025-06-10 08:00,2025-06-10 08:00,2025-06-10 08:00,2025-06-10 08:00
FAB110113A-01,IMPACT - INSTALL/REWORK DRYWALL FRAMING AROUND DOORS - FAB110113A,Complete,Elevator Hall 1 - 1F -SUW-FAB110113,,,,,,,,2025-07-08 08:00,2025-07-16 17:00,2025-07-08 08:00,2025-07-08 17:00
FAB110113A-03,INSTALL DOOR FRAMES - FAB110113A,Complete,Elevator Hall 1 - 1F -SUW-FAB110113,,,,,,,,2025-07-08 08:00,2025-07-08 17:00,2025-07-08 08:00,2025-07-08 17:00
FAB110113A-04,INSTALL DOOR & HARDWARE - FAB110113A,Active,Elevator Hall 1 - 1F -SUW-FAB110113,,,,,,,,2025-07-08 08:00,2025-07-14 17:00,2025-07-08 08:00,
FAB110113A-05,PAINT & PROTECT DOORS & FRAMES - FAB110113A,Not Started,Elevator Hall 1 - 1F -SUW-FAB110113,,,,,,,,2026-02-16 08:00,2026-02-19 15:00,,
FAB110113A-11,IMPACT - PROCUREMENT - REORDERED DOORS (JAMB DEPTH ISSUE),Complete,Elevator Hall 1 - 1F -SUW-FAB110113,,,,,,,,2025-06-09 08:00,2025-08-12 17:00,2025-06-09 08:00,2025-07-07 17:00
FAB110114B-04,DOOR INSTALL - FAB110114B,Complete,Elevator Hall 1 - 1F -SUW-FAB110113,,,,,,,,2025-09-05 08:00,2025-09-05 17:00,2025-09-05 00:00,2025-09-05 00:00
FAB110114B-05,PAINT & PROTECT DOORS & FRAMES - FAB110114B,Complete,Elevator Hall 1 - 1F -SUW-FAB110113,,,,,,,,2025-10-14 08:00,2025-10-17 15:00,2025-10-14 08:00,2025-10-16 15:00
FAB110114B-06,INSTALL DOOR HARDWARE - FAB110114B,Not Started,Elevator Hall 1 - 1F -SUW-FAB110113,,,,,,,,2025-11-21 08:00,2025-11-26 15:00,,
FAB110114A-50,IMPACT - TRAPS AND TEMP DOOR TO BE REMOVED - FAB110114A,Active,Elevator Hall 1 - 1F -SUW-FAB110113,,,,,,,,2025-07-03 08:00,2025-07-29 17:00,2025-07-03 07:00,
FAB110114A-04,INSTALL DOOR & HARDWARE - FAB110114A,Not Started,Elevator Hall 1 - 1F -SUW-FAB110113,,,,,,,,2025-11-25 08:00,2025-12-01 17:00,,
ZX-10570,Complete Drywall & Inspect - Toilet Corridor-1F-SUW-FAB110116,Complete,Toilet Corridor - 1F -SUW-FAB110116,,,,,,,,2025-06-26 08:00,2025-07-15 17:00,2025-06-10 08:00,2025-07-21 17:00
FAB110116A-01,INSTALL DOOR FRAMES - FAB110116A,Complete,Toilet Corridor - 1F -SUW-FAB110116,,,,,,,,2025-06-16 08:00,2025-06-16 17:00,2025-06-16 08:00,2025-06-16 16:00
FAB110116A-04,INSTALL DOOR & HARDWARE - FAB110116A,Active,Toilet Corridor - 1F -SUW-FAB110116,,,,,,,,2025-10-10 08:00,2025-10-16 17:00,2025-10-10 08:00,
FAB110116A-05,PAINT & PROTECT DOORS & FRAMES - FAB110116A,Not Started,Toilet Corridor - 1F -SUW-FAB110116,,,,,,,,2026-02-16 08:00,2026-02-19 15:00,,
FAB110116A-07,DOOR FRAME PAINT & 1ST COAT - FAB110116A,Complete,Toilet Corridor - 1F -SUW-FAB110116,,,,,,,,2025-07-25 08:00,2025-07-29 17:00,2025-07-25 08:00,2025-07-29 17:00
ZX-18920,IMPACT - SECAI REMOVED DRYWALL - Toilet Corridor-1F-SUW-FAB110116,Complete,Toilet Corridor - 1F -SUW-FAB110116,,,,,,,,2025-06-23 08:00,2025-07-11 17:00,2025-06-23 08:00,2025-07-04 17:00
FAB110116A-90,DOOR FRAME GROUT - FAB110116A (INCLUDE MOBILIZATION AND CURE TIME),Complete,Toilet Corridor - 1F -SUW-FAB110116,,,,,,,,2025-07-17 08:00,2025-07-17 17:00,2025-07-17 08:00,2025-07-17 17:00
ZX-10120,Complete Drywall & Inspect - Janitor Rm 1-1F-SUW-FAB110119,Complete,Janitor Rm 1 - 1F -SUW-FAB110119,,,,,,,,2025-08-19 08:00,2025-08-26 17:00,2025-08-18 08:00,2025-08-27 08:00
FAB110119A-01,IMPACT - INSTALL/REWORK DRYWALL FRAMING AROUND DOORS - FAB110119A,Complete,Janitor Rm 1 - 1F -SUW-FAB110119,,,,,,,,2025-08-26 08:00,2025-08-27 17:00,2025-08-26 08:00,2025-08-27 17:00
FAB110119A-03,INSTALL DOOR FRAMES - FAB110119A,Complete,Janitor Rm 1 - 1F -SUW-FAB110119,,,,,,,,2025-08-28 08:00,2025-08-28 17:00,2025-08-28 08:00,2025-08-28 17:00
FAB110119A-04,DOOR INSTALL - FAB110119A,Complete,Janitor Rm 1 - 1F -SUW-FAB110119,,,,,,,,2025-09-18 08:00,2025-09-18 17:00,2025-09-18 08:00,2025-09-18 17:00
FAB110119A-05,PAINT & PROTECT DOORS & FRAMES - FAB110119A,Complete,Janitor Rm 1 - 1F -SUW-FAB110119,,,,,,,,2025-10-14 08:00,2025-10-17 15:00,2025-10-14 08:00,2025-10-17 15:00
FAB110119A-06,INSTALL DOOR HARDWARE - FAB110119A,Not Started,Janitor Rm 1 - 1F -SUW-FAB110119,,,,,,,,2025-11-21 08:00,2025-11-26 15:00,,
ZX-10420,Complete Drywall & Inspect - Maint. Rm-1F-SUW-FAB110120,Complete,Maint. Rm - 1F -SUW-FAB110120,,,,,,,,2025-08-01 08:00,2025-08-11 17:00,2025-08-01 08:00,2025-08-13 17:00
FAB110120A-01,IMPACT - INSTALL/REWORK DRYWALL FRAMING AROUND DOORS - FAB110120A,Complete,Maint. Rm - 1F -SUW-FAB110120,,,,,,,,2025-08-12 08:00,2025-08-20 17:00,2025-08-12 08:00,2025-08-20 17:00
FAB110120A-03,INSTALL DOOR FRAMES - FAB110120A,Complete,Maint. Rm - 1F -SUW-FAB110120,,,,,,,,2025-08-20 08:00,2025-08-20 17:00,2025-08-20 08:00,2025-08-20 17:00
FAB110120A-04,DOOR INSTALL - FAB110120A,Complete,Maint. Rm - 1F -SUW-FAB110120,,,,,,,,2025-09-18 08:00,2025-09-18 17:00,2025-09-18 08:00,2025-09-18 17:00
FAB110120A-05,PAINT & PROTECT DOORS & FRAMES - FAB110120A,Complete,Maint. Rm - 1F -SUW-FAB110120,,,,,,,,2025-10-14 08:00,2025-10-17 15:00,2025-10-14 08:00,2025-10-17 15:00
FAB110120A-06,INSTALL DOOR HARDWARE - FAB110120A,Not Started,Maint. Rm - 1F -SUW-FAB110120,,,,,,,,2025-11-21 08:00,2025-11-26 15:00,,
ZX-10720,Complete Drywall & Inspect - Duct Shaft - 1F-SUW-FAB110101,Complete,Duct Shaft - 1F -SUW-FAB110101,,,,,,,,2025-08-12 08:00,2025-08-27 17:00,2025-08-12 08:00,2025-08-26 17:00
FAB110101A-04,INSTALL DOOR & HARDWARE - FAB110101A,Active,Duct Shaft - 1F -SUW-FAB110101,,,,,,,,2025-08-14 08:00,2025-08-20 17:00,2025-08-14 08:00,
FAB110101A-05,PAINT & PROTECT DOORS & FRAMES - FAB110101A,Not Started,Duct Shaft - 1F -SUW-FAB110101,,,,,,,,2026-02-16 08:00,2026-02-19 15:00,,
FAB110101A-08,IMPACT - SECAI - DIRECTIVE TO HOLD FRAME INSTALLATION,Complete,Duct Shaft - 1F -SUW-FAB110101,,,,,,,,2025-06-13 08:00,2025-06-23 10:00,2025-06-13 08:00,2025-07-21 17:00
FAB110101A-03,INSTALL DOOR FRAMES - FAB110101A,Complete,Duct Shaft - 1F -SUW-FAB110101,,,,,,,,2025-07-25 08:00,2025-07-25 17:00,2025-07-23 08:00,2025-07-23 17:00
FAB110101A-07,DOOR FRAME PAINT & 1ST COAT - FAB110101A,Complete,Duct Shaft - 1F -SUW-FAB110101,,,,,,,,2025-08-19 08:00,2025-08-21 17:00,2025-08-13 08:00,2025-08-13 17:00
ZX-9940,Complete Drywall & Inspect - Toilet (M) 1-1F-SUW-FAB110118 NON RATED WALLS,Complete,Toilet (M) 1 - 1F -SUW-FAB110118,,,,,,,,2025-06-20 08:00,2025-07-03 17:00,2025-06-13 08:00,2025-06-20 16:00
FAB110118A-01,IMPACT - INSTALL/REWORK DRYWALL FRAMING AROUND DOORS - FAB110118A,Complete,Toilet (M) 1 - 1F -SUW-FAB110118,,,,,,,,2025-08-01 08:00,2025-08-11 17:00,2025-08-01 08:00,2025-08-09 17:00
FAB110118A-03,INSTALL DOOR FRAMES - FAB110118A,Complete,Toilet (M) 1 - 1F -SUW-FAB110118,,,,,,,,2025-08-08 08:00,2025-08-08 17:00,2025-08-09 08:00,2025-08-09 17:00
FAB110118A-04,INSTALL DOOR & HARDWARE - FAB110118A,Active,Toilet (M) 1 - 1F -SUW-FAB110118,,,,,,,,2025-08-19 08:00,2025-08-25 17:00,2025-08-19 08:00,
FAB110118A-05,PAINT & PROTECT DOORS & FRAMES - FAB110118A,Not Started,Toilet (M) 1 - 1F -SUW-FAB110118,,,,,,,,2026-02-16 08:00,2026-02-19 15:00,,
ZX-10240,Complete Drywall & Inspect - Toilet (W) 1-1F-FAB110117,Complete,Toilet (W) 1 -1F -SUW-FAB110117,,,,,,,,2025-06-10 08:00,2025-06-23 17:00,2025-06-10 08:00,2025-07-18 17:00
FAB110117A-01,IMPACT - INSTALL/REWORK DRYWALL FRAMING AROUND DOORS - FAB110117A,Complete,Toilet (W) 1 -1F -SUW-FAB110117,,,,,,,,2025-08-08 08:00,2025-08-08 17:00,2025-08-08 08:00,2025-08-08 17:00
FAB110117A-03,INSTALL DOOR FRAMES - FAB110117A,Complete,Toilet (W) 1 -1F -SUW-FAB110117,,,,,,,,2025-08-08 08:00,2025-08-08 17:00,2025-08-09 08:00,2025-08-09 17:00
FAB110117A-04,INSTALL DOOR & HARDWARE - FAB110117A,Active,Toilet (W) 1 -1F -SUW-FAB110117,,,,,,,,2025-10-10 08:00,2025-10-16 17:00,2025-10-10 08:00,
FAB110117A-05,PAINT & PROTECT DOORS & FRAMES - FAB110117A,Not Started,Toilet (W) 1 -1F -SUW-FAB110117,,,,,,,,2026-02-16 08:00,2026-02-19 15:00,,
ZX-18960,IMPACT - SECAI REMOVED DRYWALL - Toilet (W) 1-1F-FAB110117,Complete,Toilet (W) 1 -1F -SUW-FAB110117,,,,,,,,2025-06-27 08:00,2025-07-17 17:00,2025-06-27 08:00,2025-07-08 17:00
ZX-10540,Complete Drywall & Inspect - Elevator Mech Rm #01 - 1F-FAB110115,Complete,Elevator Mech Rm 1 - 1F -SUW-FAB110115,,,,,,,,2025-05-27 08:00,2025-06-02 17:00,2025-05-22 08:00,2025-05-27 16:00
FAB110115A-03,INSTALL DOOR FRAMES - FAB110115A,Complete,Elevator Mech Rm 1 - 1F -SUW-FAB110115,,,,,,,,2025-10-15 08:00,2025-10-15 17:00,2025-10-15 08:00,2025-10-15 17:00
FAB110115A-04,INSTALL DOOR & HARDWARE - FAB110115A,Active,Elevator Mech Rm 1 - 1F -SUW-FAB110115,,,,,,,,2025-10-24 08:00,2025-10-30 17:00,2025-10-24 08:00,
FAB110115A-05,PAINT & PROTECT DOORS & FRAMES - FAB110115A,Not Started,Elevator Mech Rm 1 - 1F -SUW-FAB110115,,,,,,,,2026-02-16 08:00,2026-02-19 15:00,,
ZX-10030,Complete Drywall & Inspect - Elevator #1B-1F-1FAB-EL1B FRONTS BY MK MARLOW,Complete,Elevator 1B - 1F -SUW-FAB1-EL01B,,,,,,,,2025-06-10 08:00,2025-06-25 17:00,2025-06-10 08:00,2025-07-18 17:00
ZX-17510,IMPACT - DESIGN WALL THCKNESS Drywall & Inspect - Elevator #1B-1F-1FAB-EL1B,Complete,Elevator 1B - 1F -SUW-FAB1-EL01B,,,,,,,,2025-05-07 08:00,2025-05-22 17:00,2025-05-07 08:00,2025-06-10 16:00
ZX-10330,Complete Drywall & Inspect - Elevator #01A - 1F-1FAB-EL1A,Complete,Elevator 1A - 1F -SUW-FAB1-EL01A,,,,,,,,2025-05-05 08:00,2025-05-23 17:00,2025-05-05 08:00,2025-05-30 16:00
ZX-10630,Complete Drywall & Inspect - Elevator Mech Rm #01A - 1F-FAB110102,Complete,Elevator Mech. Rm 1A - 1F -SUW-FAB110102,,,,,,,,2025-06-13 08:00,2025-06-19 17:00,2025-06-13 08:00,2025-06-16 16:00
FAB110102A-03,INSTALL DOOR FRAMES - FAB110102A,Complete,Elevator Mech. Rm 1A - 1F -SUW-FAB110102,,,,,,,,2025-06-16 13:00,2025-06-17 12:00,2025-03-18 00:00,2025-03-18 08:00
FAB110102A-04,INSTALL DOOR & HARDWARE - FAB110102A,Active,Elevator Mech. Rm 1A - 1F -SUW-FAB110102,,,,,,,,2025-09-25 08:00,2025-10-01 17:00,2025-09-25 08:00,
FAB110102A-05,PAINT & PROTECT DOORS & FRAMES - FAB110102A,Not Started,Elevator Mech. Rm 1A - 1F -SUW-FAB110102,,,,,,,,2026-02-16 08:00,2026-02-19 15:00,,
ZX-10180,Complete Drywall & Inspect-Duct Shaft - 1F-SUW-FAB110103,Complete,Duct Shaft - 1F -SUW-FAB110103,,,,,,,,2025-08-19 08:00,2025-08-22 17:00,2025-08-07 08:00,2025-08-12 17:00
FAB110103A-01,IMPACT - INSTALL/REWORK DRYWALL FRAMING AROUND DOORS - FAB110103A,Complete,Duct Shaft - 1F -SUW-FAB110103,,,,,,,,2025-07-09 08:00,2025-07-17 17:00,2025-07-09 08:00,2025-07-17 17:00
FAB110103A-03,INSTALL DOOR FRAMES - FAB110103A,Complete,Duct Shaft - 1F -SUW-FAB110103,,,,,,,,2025-07-17 08:00,2025-07-17 17:00,2025-07-17 08:00,2025-07-17 17:00
FAB110103A-04,INSTALL DOOR & HARDWARE - FAB110103A,Active,Duct Shaft - 1F -SUW-FAB110103,,,,,,,,2025-09-19 08:00,2025-09-25 17:00,2025-09-19 08:00,
FAB110103A-05,PAINT & PROTECT DOORS & FRAMES - FAB110103A,Not Started,Duct Shaft - 1F -SUW-FAB110103,,,,,,,,2026-02-16 08:00,2026-02-19 15:00,,
FAB110103A-11,IMPACT - PROCUREMENT - Reordered doors (Wall Thickness and Door Swing Design Changes),Complete,Duct Shaft - 1F -SUW-FAB110103,,,,,,,,2025-06-06 08:00,2025-08-14 17:00,2025-05-26 08:00,2025-07-14 17:00
ZX-10480,Complete Drywall & Inspect - Fire Alarm 1-1F-FAB110105,Complete,Fire Alarm 1 - 1F -SUW-FAB110105,,,,,,,,2025-09-30 08:00,2025-10-08 17:00,2025-06-04 16:00,2025-06-11 17:00
ZX-10780,Complete Drywall & Inspect - IT/Security 1-1F-FAB110109,Complete,IT/Security 1 - 1F -SUW-FAB110109,,,,,,,,2025-09-22 08:00,2025-09-30 17:00,2025-04-11 00:00,2025-04-17 17:00
TR-FAB110109A-03,INSTALL DOOR FRAMES - TR - FAB110109A,Complete,IT/Security 1 - 1F -SUW-FAB110109,,,,,,,,2025-08-04 13:00,2025-08-05 12:00,2025-05-07 12:00,2025-05-07 12:00
TR-FAB110109A-04,INSTALL DOOR & HARDWARE - TR - FAB110109A,Active,IT/Security 1 - 1F -SUW-FAB110109,,,,,,,,2025-09-26 08:00,2025-10-02 17:00,2025-09-26 08:00,
TR-FAB110109A-05,PAINT & PROTECT DOORS & FRAMES -  TR - FAB110109A,Not Started,IT/Security 1 - 1F -SUW-FAB110109,,,,,,,,2026-02-16 08:00,2026-02-19 15:00,,
ZX-10150,Complete Drywall & Inspect - Lab Vestibule - 1F-SUW-FAB112101,Complete,Lab Vestibule- 1F -FIZ-FAB112101,,,,,,,,2025-10-13 08:00,2025-10-17 17:00,2025-10-13 08:00,2025-11-04 08:00
FAB112104A-01,DOOR ASSEMBLY - FAB112104A,Not Started,Lab Vestibule- 1F -FIZ-FAB112101,,,,,,,,2025-12-19 08:00,2025-12-22 17:00,,
FAB112104A-02,DOOR PACKAGE INSTALL - FAB112104A,Not Started,Lab Vestibule- 1F -FIZ-FAB112101,,,,,,,,2025-12-22 08:00,2025-12-23 17:00,,
FAB112101A-07,DOOR INSTALL - FAB112101A (OHC),Not Started,Lab Vestibule- 1F -FIZ-FAB112101,,,,,,,,2025-11-21 08:00,2025-11-24 17:00,,
ZX-11410,Complete Drywall & Inspect - Janitor Rm-1F-SUW-FAB110214,Complete,Janitor Rm - 1F -SUW-FAB110214,,,,,,,,2025-10-06 08:00,2025-10-07 17:00,2025-10-06 08:00,2025-10-07 17:00
FAB110214A-01,IMPACT - INSTALL/REWORK DRYWALL FRAMING AROUND DOORS - FAB110214A,Complete,Janitor Rm - 1F -SUW-FAB110214,,,,,,,,2025-10-03 08:00,2025-10-06 17:00,2025-10-03 08:00,2025-10-06 17:00
FAB110214A-03,INSTALL DOOR FRAMES - FAB110214A,Complete,Janitor Rm - 1F -SUW-FAB110214,,,,,,,,2025-10-07 08:00,2025-10-07 17:00,2025-10-07 08:00,2025-10-07 17:00
FAB110214A-04,INSTALL DOOR & HARDWARE - FAB110214A,Active,Janitor Rm - 1F -SUW-FAB110214,,,,,,,,2025-09-09 08:00,2025-09-15 17:00,2025-09-09 08:00,
FAB110214A-05,PAINT & PROTECT DOORS & FRAMES - FAB110214A,Not Started,Janitor Rm - 1F -SUW-FAB110214,,,,,,,,2026-02-16 08:00,2026-02-19 15:00,,
ZX-16090,Complete Drywall & Inspect - Vestibule - 1F-SUW-FAB110515,Complete,Vestibule - 1F -SUW-FAB110515,,,,,,,,2025-06-20 08:00,2025-07-07 17:00,2025-06-16 08:00,2025-06-27 16:00
ZX-16680,Complete Drywall & Inspect - Stair #02 SUW- 1F- FAB1-ST02,Complete,Stair 2 - 1F -SUW-FAB1-ST02,,,,,,,,2025-05-13 08:00,2025-05-26 17:00,2025-05-13 08:00,2025-08-18 08:00
FAB1-ST02A-01,IMPACT - INSTALL/REWORK DRYWALL FRAMING AROUND DOORS - FAB1-ST02A,Complete,Stair 2 - 1F -SUW-FAB1-ST02,,,,,,,,2025-05-01 08:00,2025-05-09 17:00,2025-05-01 08:00,2025-05-06 17:00
FAB1-ST02A-03,INSTALL DOOR FRAMES - FAB1-ST02A,Complete,Stair 2 - 1F -SUW-FAB1-ST02,,,,,,,,2025-05-06 08:00,2025-05-06 17:00,2025-05-06 08:00,2025-05-06 17:00
FAB1-ST02A-04,DOOR INSTALL - FAB1-ST02A,Complete,Stair 2 - 1F -SUW-FAB1-ST02,,,,,,,,2025-09-16 08:00,2025-09-16 17:00,2025-09-16 08:00,2025-09-16 17:00
FAB1-ST02A-05,PAINT & PROTECT DOORS & FRAMES - FAB1-ST02A,Complete,Stair 2 - 1F -SUW-FAB1-ST02,,,,,,,,2025-10-14 08:00,2025-10-17 17:00,2025-10-14 08:00,2025-10-17 17:00
FAB1-ST02A-06,INSTALL DOOR HARDWARE - FAB1-ST02A,Not Started,Stair 2 - 1F -SUW-FAB1-ST02,,,,,,,,2025-11-21 08:00,2025-11-26 17:00,,
ZX-16820,Complete Drywall & Inspect - Stair #03 SUW- 1F- FAB1-ST03,Complete,Stair 3 - 1F -SUW-FAB1-ST03,,,,,,,,2025-05-13 08:00,2025-05-26 17:00,2025-05-13 08:00,2025-10-13 08:00
FAB1-ST03A-01,IMPACT - INSTALL/REWORK DRYWALL FRAMING AROUND DOORS - FAB1-ST03A,Complete,Stair 3 - 1F -SUW-FAB1-ST03,,,,,,,,2025-09-26 08:00,2025-09-29 17:00,2025-09-26 08:00,2025-09-29 17:00
FAB1-ST03A-03,INSTALL DOOR FRAMES - FAB1-ST03A,Complete,Stair 3 - 1F -SUW-FAB1-ST03,,,,,,,,2025-09-29 08:00,2025-09-29 17:00,2025-09-29 08:00,2025-09-29 17:00
FAB1-ST03A-04,INSTALL DOOR & HARDWARE - FAB1-ST03A,Active,Stair 3 - 1F -SUW-FAB1-ST03,,,,,,,,2025-10-13 08:00,2025-10-17 17:00,2025-10-13 08:00,
FAB1-ST03A-05,PAINT & PROTECT DOORS & FRAMES - FAB1-ST03A,Not Started,Stair 3 - 1F -SUW-FAB1-ST03,,,,,,,,2026-02-16 08:00,2026-02-19 17:00,,
ZX-16910,Complete Drywall & Inspect - Stair #20 SUE- 1F- FAB1-ST20,Complete,Stair 20 - 1F -SUE- FAB1-ST20,,,,,,,,2025-05-13 08:00,2025-05-26 17:00,2025-05-13 08:00,2025-09-15 08:00
FAB1-ST20A-01,IMPACT - INSTALL/REWORK DRYWALL FRAMING AROUND DOORS - FAB1-ST20A HANDED OVER TO SECAI ON 09/02,Complete,Stair 20 - 1F -SUE- FAB1-ST20,,,,,,,,2025-09-01 08:00,2025-09-02 17:00,2025-09-02 08:00,2025-09-02 17:00
FAB1-ST20A-03,INSTALL DOOR FRAME BY SECAI - FAB1-ST20A HANDED OVER ON 09/02,Complete,Stair 20 - 1F -SUE- FAB1-ST20,,,,,,,,2025-09-02 08:00,2025-09-02 17:00,2025-09-02 08:00,2025-10-27 17:00
FAB1-ST20A-04,INSTALL DOOR & HARDWARE - FAB1-ST20A,Active,Stair 20 - 1F -SUE- FAB1-ST20,,,,,,,,2025-10-28 08:00,2025-11-03 17:00,2025-10-28 08:00,
FAB1-ST20A-05,PAINT & PROTECT DOORS & FRAMES - FAB1-ST20A,Not Started,Stair 20 - 1F -SUE- FAB1-ST20,,,,,,,,2026-02-16 08:00,2026-02-19 17:00,,
ZX-17050,Complete Drywall & Inspect - Stair #21 SUE- 1F- FAB1-ST20,Complete,Stair 21 - 1F -SUE- FAB1-ST21,,,,,,,,2025-05-13 08:00,2025-05-26 17:00,2025-05-13 08:00,2025-09-15 08:00
FAB1-ST21A-03,INSTALL DOOR FRAMES - FAB1-ST21A,Complete,Stair 21 - 1F -SUE- FAB1-ST21,,,,,,,,2025-11-06 08:00,2025-11-06 17:00,2025-11-06 08:00,2025-11-06 17:00
FAB1-ST21A-04,INSTALL DOOR & HARDWARE - FAB1-ST21A,Active,Stair 21 - 1F -SUE- FAB1-ST21,,,,,,,,2025-11-07 08:00,2025-11-13 17:00,2025-11-07 08:00,
FAB1-ST21A-05,PAINT & PROTECT DOORS & FRAMES - FAB1-ST21A,Not Started,Stair 21 - 1F -SUE- FAB1-ST21,,,,,,,,2026-02-16 08:00,2026-02-19 17:00,,
ZX-17140,Complete Drywall & Inspect - Stair #04 SUW- 1F- FAB1-ST04 - MKMARLOW,Complete,Stair 4 - 1F -SUW-FAB1-ST04,,,,,,,,2025-06-10 08:00,2025-06-23 17:00,2025-06-10 08:00,2025-08-28 17:00
FAB1-ST04A-01,IMPACT - INSTALL/REWORK DRYWALL FRAMING AROUND DOORS - FAB1-ST04A,Complete,Stair 4 - 1F -SUW-FAB1-ST04,,,,,,,,2025-05-23 08:00,2025-06-02 17:00,2025-05-23 08:00,2025-05-27 17:00
FAB1-ST04A-03,INSTALL DOOR FRAMES - FAB1-ST04A,Complete,Stair 4 - 1F -SUW-FAB1-ST04,,,,,,,,2025-05-27 08:00,2025-05-27 17:00,2025-05-27 08:00,2025-05-27 17:00
FAB1-ST04A-04,INSTALL DOOR & HARDWARE - FAB1-ST04A,Active,Stair 4 - 1F -SUW-FAB1-ST04,,,,,,,,2025-09-29 08:00,2025-10-03 17:00,2025-09-29 08:00,
FAB1-ST04A-05,PAINT & PROTECT DOORS & FRAMES - FAB1-ST04A,Not Started,Stair 4 - 1F -SUW-FAB1-ST04,,,,,,,,2026-02-16 08:00,2026-02-19 17:00,,
ZX-17280,SECAI TURNOVER FOR ACELERATION - Drywall & Inspect - Stair #19 SUE- 1F- FAB1-ST19 BAKER/DESCOPE,Complete,Stair 19 - 1F -SUE- FAB1-ST19,,,,,,,,2025-06-10 08:00,2025-06-23 17:00,2025-06-10 08:00,2025-06-10 16:00
FAB1-ST19A-04,INSTALL DOOR & HARDWARE - FAB1-ST19A,Active,Stair 19 - 1F -SUE- FAB1-ST19,,,,,,,,2025-11-07 08:00,2025-11-13 17:00,2025-11-07 08:00,
FAB1-ST19A-05,PAINT & PROTECT DOORS & FRAMES - FAB1-ST19A,Not Started,Stair 19 - 1F -SUE- FAB1-ST19,,,,,,,,2026-02-16 08:00,2026-02-19 17:00,,
ZX-17580,Complete Drywall & Inspect - D-J/33-1F,Complete,D-J/33 - 1F - FAB,,,,,,,,2025-06-10 08:00,2025-06-23 17:00,2025-05-23 08:00,2025-06-04 16:00
ZX-17640,Complete Drywall & Inspect - Duct Shaft Vestibule - 1F-SUW-FAB110514,Complete,Duct Shaft Vestibule - 1F -SUW-FAB110514,,,,,,,,2025-06-10 08:00,2025-06-18 17:00,2025-06-10 08:00,2025-06-19 16:00
ZX-17670,Complete Drywall & Inspect - Duct Shaft Vestibule - 1F-SUW-FAB110310,Complete,Duct Shaft Vestibule - 1F -SUW-FAB110310,,,,,,,,2025-09-02 08:00,2025-09-10 17:00,2025-08-16 08:00,2025-08-18 17:00
ZX-17730,Complete Drywall & Inspect - Duct Shaft Vestibule - 1F-SUW-FAB110122,Complete,Duct Shaft Vestibule - 1F -SUW-FAB110122,,,,,,,,2025-08-15 08:00,2025-08-25 17:00,2025-08-07 08:00,2025-08-25 08:00
ZX-18120,Complete Drywall & Inspect - Stair 18 SUE- 1F- FAB1-ST18,Complete,Stair 18 - 1F -SUE- FAB1-ST18,,,,,,,,2025-09-29 08:00,2025-10-03 17:00,2025-09-29 08:00,2025-10-03 17:00
FAB110204D-03,INSTALL DOOR FRAMES - FAB110204D,Complete,Gas Purifier Rm - 1F -SUW-FAB110204,,,,,,,,2025-06-20 08:00,2025-06-20 17:00,2025-06-20 08:00,2025-06-20 16:00
FAB110204D-04,DOOR INSTALL - FAB110204D,Complete,Gas Purifier Rm - 1F -SUW-FAB110204,,,,,,,,2025-08-05 08:00,2025-08-05 17:00,2025-08-05 08:00,2025-08-05 17:00
FAB110204D-02,SECAI ROUGH IN FRAME - FAB110204D,Complete,Gas Purifier Rm - 1F -SUW-FAB110204,,,,,,,,2025-06-23 08:00,2025-06-23 17:00,2025-06-20 08:00,2025-06-20 16:00
FAB110204D-07,DOOR FRAME PAINT & 1ST COAT - FAB110204D,Complete,Gas Purifier Rm - 1F -SUW-FAB110204,,,,,,,,2025-07-23 08:00,2025-07-29 17:00,2025-07-23 08:00,2025-07-29 17:00
FAB110204D-05,PAINT & PROTECT DOORS & FRAMES - FAB110204D,Complete,Gas Purifier Rm - 1F -SUW-FAB110204,,,,,,,,2025-10-08 08:00,2025-10-13 15:00,2025-10-08 08:00,2025-10-12 15:00
FAB110204D-06,INSTALL DOOR HARDWARE - FAB110204D,Complete,Gas Purifier Rm - 1F -SUW-FAB110204,,,,,,,,2025-10-23 08:00,2025-10-28 15:00,2025-10-23 08:00,2025-10-28 15:00
FAB110208A-03,INSTALL DOOR FRAMES - FAB110208A,Complete,Equip Platform - 1F -SUW-FAB110208,,,,,,,,2025-06-23 08:00,2025-06-23 17:00,2025-06-18 08:00,2025-06-18 16:00
FAB110208A-04,DOOR INSTALL - FAB110208A,Complete,Equip Platform - 1F -SUW-FAB110208,,,,,,,,2025-08-06 08:00,2025-08-06 17:00,2025-08-12 08:00,2025-08-12 17:00
FAB110208A-02,SECAI ROUGH IN FRAME - FAB110208A,Complete,Equip Platform - 1F -SUW-FAB110208,,,,,,,,2025-06-20 08:00,2025-06-20 17:00,2025-06-18 08:00,2025-06-18 16:00
FAB110208A-05,PAINT & PROTECT DOORS & FRAMES - FAB110208A,Complete,Equip Platform - 1F -SUW-FAB110208,,,,,,,,2025-10-14 08:00,2025-10-17 15:00,2025-10-14 08:00,2025-10-16 15:00
FAB110208A-06,INSTALL DOOR HARDWARE - FAB110208A,Complete,Equip Platform - 1F -SUW-FAB110208,,,,,,,,2025-10-20 08:00,2025-10-23 15:00,2025-10-20 08:00,2025-10-23 15:00
FAB110208A-07,DOOR FRAME PAINT & 1ST COAT - FAB110208A,Complete,Equip Platform - 1F -SUW-FAB110208,,,,,,,,2025-08-01 08:00,2025-08-04 17:00,2025-08-01 08:00,2025-08-08 17:00
FAB110208B-04,DOOR INSTALL - FAB110208B (OHC),Not Started,Equip Platform - 1F -SUW-FAB110208,,,,,,,,2025-12-03 08:00,2025-12-04 17:00,,
FAB110501A-03,INSTALL DOOR FRAMES - FAB110501A,Complete,PLATFORM (N/27-27.5) - 1F -SUW-FAB110501,,,,,,,,2025-08-22 08:00,2025-08-22 17:00,2025-08-22 08:00,2025-08-22 17:00
FAB110501A-04,INSTALL DOOR & HARDWARE - FAB110501A,Active,PLATFORM (N/27-27.5) - 1F -SUW-FAB110501,,,,,,,,2025-10-22 08:00,2025-10-28 17:00,2025-10-22 08:00,
FAB110501A--02,SECAI ROUGH IN FRAME - FAB110501A,Complete,PLATFORM (N/27-27.5) - 1F -SUW-FAB110501,,,,,,,,2025-08-22 08:00,2025-08-22 17:00,2025-08-22 08:00,2025-08-22 17:00
FAB110501A-07,DOOR FRAME PAINT & 1ST COAT - FAB110501A,Complete,PLATFORM (N/27-27.5) - 1F -SUW-FAB110501,,,,,,,,2025-09-02 08:00,2025-09-04 17:00,2025-09-02 08:00,2025-09-04 17:00
FAB110501A-05,PAINT & PROTECT DOORS & FRAMES - FAB110501A,Not Started,PLATFORM (N/27-27.5) - 1F -SUW-FAB110501,,,,,,,,2026-02-16 08:00,2026-02-19 15:00,,
FAB110511E-02,INSTALL DOOR FRAMES - FAB110511E,Complete,W-SOLVENT RM (N/27.5-29) - 1F -SUW-FAB110511,,,,,,,,2025-07-09 08:00,2025-07-09 17:00,2025-06-18 08:00,2025-06-19 16:00
FAB110511E-04,DOOR INSTALL - FAB110511E,Complete,W-SOLVENT RM (N/27.5-29) - 1F -SUW-FAB110511,,,,,,,,2025-08-29 08:00,2025-08-29 17:00,2025-08-29 08:00,2025-08-29 17:00
FAB110511E-03,SECAI ROUGH IN FRAME - FAB110511E,Complete,W-SOLVENT RM (N/27.5-29) - 1F -SUW-FAB110511,,,,,,,,2025-07-09 08:00,2025-07-09 17:00,2025-06-17 08:00,2025-06-18 16:00
FAB110511E-05,PAINT & PROTECT DOORS & FRAMES - FAB110511E,Complete,W-SOLVENT RM (N/27.5-29) - 1F -SUW-FAB110511,,,,,,,,2025-10-15 08:00,2025-10-20 15:00,2025-10-15 08:00,2025-10-20 15:00
FAB110511E-06,INSTALL DOOR HARDWARE - FAB110511E,Not Started,W-SOLVENT RM (N/27.5-29) - 1F -SUW-FAB110511,,,,,,,,2025-11-21 08:00,2025-11-26 15:00,,
FAB110511E-07,DOOR FRAME PAINT & 1ST COAT - FAB110511E,Complete,W-SOLVENT RM (N/27.5-29) - 1F -SUW-FAB110511,,,,,,,,2025-08-25 08:00,2025-08-27 17:00,2025-08-25 08:00,2025-08-27 17:00
FAB116104A-03,INSTALL DOOR FRAMES - FAB116104A,Complete,OAC Mechanical RM - 1F -FIZ-FAB116101,,,,,,,,2025-08-07 08:00,2025-08-07 17:00,2025-08-07 08:00,2025-08-07 17:00
FAB116104A-04,INSTALL DOOR & HARDWARE - FAB116104A,Not Started,OAC Mechanical RM - 1F -FIZ-FAB116101,,,,,,,,2026-02-09 08:00,2026-02-13 17:00,,
FAB116104A-02,SECAI ROUGH IN FRAME - FAB116104A,Complete,OAC Mechanical RM - 1F -FIZ-FAB116101,,,,,,,,2025-08-07 08:00,2025-08-07 17:00,2025-08-07 08:00,2025-08-07 17:00
FAB116104A-05,PAINT & PROTECT DOORS & FRAMES - FAB116104A,Not Started,OAC Mechanical RM - 1F -FIZ-FAB116101,,,,,,,,2026-02-16 08:00,2026-02-19 15:00,,
FAB110403A-02,INSTALL DOOR FRAMES - FAB110403A HANDED OVER TO SECAI,Complete,NaOH ACQC (N/23-24.3) - 1F -SUW-FAB110403,,,,,,,,2025-08-22 08:00,2025-08-22 17:00,2025-08-22 08:00,2025-08-22 17:00
FAB110403A-04,DOOR INSTALL - FAB110403A HANDED OVER TO SECAI,Complete,NaOH ACQC (N/23-24.3) - 1F -SUW-FAB110403,,,,,,,,2025-08-22 08:00,2025-08-22 17:00,2025-08-22 08:00,2025-08-22 17:00
FAB110403B-02,INSTALL DOOR FRAMES - FAB110403B HANDED OVER TO SECAI,Complete,NaOH ACQC (N/23-24.3) - 1F -SUW-FAB110403,,,,,,,,2025-08-22 08:00,2025-08-22 17:00,2025-08-22 08:00,2025-08-22 17:00
FAB110403B-04,DOOR INSTALL - FAB110403B HANDED OVER TO SECAI,Complete,NaOH ACQC (N/23-24.3) - 1F -SUW-FAB110403,,,,,,,,2025-08-22 08:00,2025-08-22 17:00,2025-08-22 08:00,2025-08-22 17:00
FAB110403C-02,INSTALL DOOR FRAMES - FAB110403C,Complete,NaOH ACQC (N/23-24.3) - 1F -SUW-FAB110403,,,,,,,,2025-06-13 08:00,2025-06-16 17:00,2025-05-20 08:00,2025-05-20 16:00
FAB110403C-04,DOOR INSTALL - FAB110403C,Complete,NaOH ACQC (N/23-24.3) - 1F -SUW-FAB110403,,,,,,,,2025-07-28 08:00,2025-07-28 17:00,2025-07-28 08:00,2025-07-28 17:00
FAB110403D-02,INSTALL DOOR FRAMES - FAB110403D HANDED OVER TO SECAI,Complete,NaOH ACQC (N/23-24.3) - 1F -SUW-FAB110403,,,,,,,,2025-08-22 08:00,2025-08-22 17:00,2025-08-22 08:00,2025-08-22 17:00
FAB110403D-04,DOOR INSTALL - FAB110403D HANDED OVER TO SECAI,Complete,NaOH ACQC (N/23-24.3) - 1F -SUW-FAB110403,,,,,,,,2025-08-22 08:00,2025-08-22 17:00,2025-08-22 08:00,2025-08-22 17:00
FAB110403C-07,DOOR FRAME PAINT & 1ST COAT - FAB110403C,Complete,NaOH ACQC (N/23-24.3) - 1F -SUW-FAB110403,,,,,,,,2025-07-25 08:00,2025-07-28 17:00,2025-07-28 08:00,2025-07-28 17:00
FAB110403C-05,PAINT & PROTECT DOORS & FRAMES - FAB110403C,Complete,NaOH ACQC (N/23-24.3) - 1F -SUW-FAB110403,,,,,,,,2025-10-14 08:00,2025-10-17 15:00,2025-10-14 08:00,2025-10-16 15:00
FAB110403C-06,INSTALL DOOR HARDWARE - FAB110403C,Complete,NaOH ACQC (N/23-24.3) - 1F -SUW-FAB110403,,,,,,,,2025-10-20 08:00,2025-10-23 15:00,2025-10-20 08:00,2025-10-23 15:00
FAB110404B-03,INSTALL DOOR FRAMES - FAB110404B HANDED OVER TO SECAI,Complete,W-CuS04-ACQC RM (N/24.3-25) - 1F- SUW-FAB110404,,,,,,,,2025-08-22 08:00,2025-08-22 17:00,2025-08-22 08:00,2025-08-22 17:00
FAB110404B-04,DOOR INSTALL - FAB110404B HANDED OVER TO SECAI,Complete,W-CuS04-ACQC RM (N/24.3-25) - 1F- SUW-FAB110404,,,,,,,,2025-08-22 08:00,2025-08-22 17:00,2025-08-22 08:00,2025-08-22 17:00
FAB110404C-03,INSTALL DOOR FRAMES - FAB110404C,Complete,W-CuS04-ACQC RM (N/24.3-25) - 1F- SUW-FAB110404,,,,,,,,2025-06-13 08:00,2025-06-16 17:00,2025-05-20 08:00,2025-05-20 16:00
FAB110404C-04,DOOR INSTALL - FAB110404C,Complete,W-CuS04-ACQC RM (N/24.3-25) - 1F- SUW-FAB110404,,,,,,,,2025-07-28 08:00,2025-07-28 17:00,2025-07-30 08:00,2025-07-30 17:00
FAB110404E-03,INSTALL DOOR FRAMES - FAB110404E HANDED OVER TO SECAI,Complete,W-CuS04-ACQC RM (N/24.3-25) - 1F- SUW-FAB110404,,,,,,,,2025-08-22 08:00,2025-08-22 17:00,2025-08-22 08:00,2025-08-22 17:00
FAB110404E-04,DOOR INSTALL - FAB110404E HANDED OVER TO SECAI,Complete,W-CuS04-ACQC RM (N/24.3-25) - 1F- SUW-FAB110404,,,,,,,,2025-08-22 08:00,2025-08-22 17:00,2025-08-22 08:00,2025-08-22 17:00
FAB110404C-05,PAINT & PROTECT DOORS & FRAMES - FAB110403C,Complete,W-CuS04-ACQC RM (N/24.3-25) - 1F- SUW-FAB110404,,,,,,,,2025-10-14 08:00,2025-10-17 15:00,2025-10-14 08:00,2025-10-16 15:00
FAB110404C-06,INSTALL DOOR HARDWARE - FAB110403C,Complete,W-CuS04-ACQC RM (N/24.3-25) - 1F- SUW-FAB110404,,,,,,,,2025-10-20 08:00,2025-10-23 15:00,2025-10-20 08:00,2025-10-23 15:00
FAB110404C-07,DOOR FRAME PAINT & 1ST COAT - FAB110404C,Complete,W-CuS04-ACQC RM (N/24.3-25) - 1F- SUW-FAB110404,,,,,,,,2025-07-28 08:00,2025-07-30 17:00,2025-07-24 08:00,2025-07-27 08:00
FAB110405B-02,INSTALL DOOR FRAMES - FAB110405B,Complete,PLATFORM (N/25-25.4) - 1F -SUW-FAB110405,,,,,,,,2025-08-29 08:00,2025-08-29 17:00,2025-08-26 08:00,2025-08-26 17:00
FAB110405B-04,DOOR INSTALL - FAB110405B,Complete,PLATFORM (N/25-25.4) - 1F -SUW-FAB110405,,,,,,,,2025-10-10 08:00,2025-10-10 17:00,2025-10-10 08:00,2025-10-10 17:00
FAB110405B-05,PAINT & PROTECT DOORS & FRAMES - FAB110405B,Complete,PLATFORM (N/25-25.4) - 1F -SUW-FAB110405,,,,,,,,2025-10-14 08:00,2025-10-17 15:00,2025-10-14 08:00,2025-10-17 15:00
FAB110405B-06,INSTALL DOOR HARDWARE - FAB110405B,Not Started,PLATFORM (N/25-25.4) - 1F -SUW-FAB110405,,,,,,,,2025-11-21 08:00,2025-11-26 15:00,,
FAB110409A-02,INSTALL DOOR FRAMES - FAB110409A,Complete,W-H3PO4 RM (N/25.4-26.2) - 1F -SUW-FAB110409,,,,,,,,2025-08-07 08:00,2025-08-07 17:00,2025-08-07 08:00,2025-08-07 17:00
FAB110409A-04,DOOR INSTALL - FAB110409A,Complete,W-H3PO4 RM (N/25.4-26.2) - 1F -SUW-FAB110409,,,,,,,,2025-09-05 08:00,2025-09-05 17:00,2025-09-05 08:00,2025-09-05 17:00
FAB110409A-03,SECAI ROUGH IN FRAME - FAB110409A,Complete,W-H3PO4 RM (N/25.4-26.2) - 1F -SUW-FAB110409,,,,,,,,2025-08-07 08:00,2025-08-07 17:00,2025-08-07 08:00,2025-08-07 17:00
FAB110409B-02,INSTALL DOOR FRAMES - FAB110409B HANDED OVER TO SECAI,Complete,W-H3PO4 RM (N/25.4-26.2) - 1F -SUW-FAB110409,,,,,,,,2025-08-22 08:00,2025-08-22 17:00,2025-08-22 08:00,2025-08-22 17:00
FAB110409B-03,SECAI ROUGH IN FRAME - FAB110409B HANDED OVER TO SECAI,Complete,W-H3PO4 RM (N/25.4-26.2) - 1F -SUW-FAB110409,,,,,,,,2025-08-22 08:00,2025-08-22 17:00,2025-08-22 08:00,2025-08-22 17:00
FAB110409E-02,INSTALL DOOR FRAMES - FAB110409E HANDED OVER TO SECAI,Complete,W-H3PO4 RM (N/25.4-26.2) - 1F -SUW-FAB110409,,,,,,,,2025-08-22 08:00,2025-08-22 17:00,2025-08-22 08:00,2025-08-22 17:00
FAB110409E-04,DOOR INSTALL - FAB110409E HANDED OVER TO SECAI,Complete,W-H3PO4 RM (N/25.4-26.2) - 1F -SUW-FAB110409,,,,,,,,2025-08-22 08:00,2025-08-22 17:00,2025-08-22 08:00,2025-08-22 17:00
FAB110409E-03,SECAI ROUGH IN FRAME - FAB110409E HANDED OVER TO SECAI,Complete,W-H3PO4 RM (N/25.4-26.2) - 1F -SUW-FAB110409,,,,,,,,2025-08-22 08:00,2025-08-22 17:00,2025-08-22 08:00,2025-08-22 17:00
FAB110409A-07,DOOR FRAME PAINT & 1ST COAT - FAB110409A,Complete,W-H3PO4 RM (N/25.4-26.2) - 1F -SUW-FAB110409,,,,,,,,2025-09-01 08:00,2025-09-03 17:00,2025-09-01 08:00,2025-09-03 17:00
FAB110409A-05,PAINT & PROTECT DOORS & FRAMES - FAB110409A,Complete,W-H3PO4 RM (N/25.4-26.2) - 1F -SUW-FAB110409,,,,,,,,2025-10-14 08:00,2025-10-17 15:00,2025-10-14 08:00,2025-10-16 15:00
FAB110409A-06,INSTALL DOOR HARDWARE - FAB110409A,Complete,W-H3PO4 RM (N/25.4-26.2) - 1F -SUW-FAB110409,,,,,,,,2025-10-20 08:00,2025-10-23 15:00,2025-10-20 08:00,2025-10-23 15:00
FAB110409C-02,INSTALL DOOR FRAME BY SECAI - FAB110409C HANDED OVER 06/27,Complete,W-H3PO4 RM (N/25.4-26.2) - 1F -SUW-FAB110409,,,,,,,,2025-06-27 08:00,2025-07-10 17:00,2025-06-28 08:00,2025-08-12 17:00
FAB110409C-04,INSTALL DOOR & HARDWARE - FAB110409C,Active,W-H3PO4 RM (N/25.4-26.2) - 1F -SUW-FAB110409,,,,,,,,2025-11-05 08:00,2025-11-11 17:00,2025-11-05 08:00,
FAB110409C-05,PAINT & PROTECT DOORS & FRAMES - FAB110409C,Not Started,W-H3PO4 RM (N/25.4-26.2) - 1F -SUW-FAB110409,,,,,,,,2026-02-16 08:00,2026-02-19 15:00,,
FAB110409D-02,INSTALL DOOR FRAME BY SECAI - FAB110409D HANDED OVER 07/18,Complete,W-H3PO4 RM (N/25.4-26.2) - 1F -SUW-FAB110409,,,,,,,,2025-07-21 08:00,2025-08-01 17:00,2025-07-21 08:00,2025-09-16 08:00
FAB110409D-04,INSTALL DOOR & HARDWARE - FAB110409D,Active,W-H3PO4 RM (N/25.4-26.2) - 1F -SUW-FAB110409,,,,,,,,2025-11-05 08:00,2025-11-11 17:00,2025-11-05 08:00,
FAB110409D-05,PAINT & PROTECT DOORS & FRAMES - FAB110409D,Not Started,W-H3PO4 RM (N/25.4-26.2) - 1F -SUW-FAB110409,,,,,,,,2026-02-16 08:00,2026-02-19 15:00,,
FAB110409C-40,DOOR FRAME HANDED OVER TO SECAI ON 06/27 - FAB110409C,Complete,W-H3PO4 RM (N/25.4-26.2) - 1F -SUW-FAB110409,,,,,,,,2025-06-27 08:00,2025-06-27 17:00,2025-06-27 08:00,2025-06-27 16:00
FAB110409A-90,DOOR FRAME GROUT (RFI1416) - FAB110409A - P1 (INCLUDE MOBILIZATION AND CURE TIME),Complete,W-H3PO4 RM (N/25.4-26.2) - 1F -SUW-FAB110409,,,,,,,,2025-08-08 08:00,2025-08-08 17:00,2025-08-08 08:00,2025-08-08 17:00
FAB110409B-04,DOOR INSTALL - FAB110409B HANDED OVER TO SECAI,Complete,W-H3PO4 RM (N/25.4-26.2) - 1F -SUW-FAB110409,,,,,,,,2025-08-22 08:00,2025-08-22 17:00,2025-08-22 08:00,2025-08-22 17:00
FAB110408A-02,INSTALL DOOR FRAMES - FAB110408A,Complete,W-H2S04 ACQC RM (N/26.2-27) - 1F -SUW-FAB110408,,,,,,,,2025-09-17 08:00,2025-09-17 17:00,2025-09-17 08:00,2025-09-17 17:00
FAB110408A-04,DOOR INSTALL - FAB110408A,Complete,W-H2S04 ACQC RM (N/26.2-27) - 1F -SUW-FAB110408,,,,,,,,2025-09-23 08:00,2025-09-23 17:00,2025-09-23 08:00,2025-09-23 17:00
FAB110408A-03,SECAI ROUGH IN FRAME - FAB110408A,Complete,W-H2S04 ACQC RM (N/26.2-27) - 1F -SUW-FAB110408,,,,,,,,2025-09-17 08:00,2025-09-17 17:00,2025-09-17 08:00,2025-09-17 17:00
FAB110408B-02,INSTALL DOOR FRAMES - FAB110408B HANDED OVER TO SECAI,Complete,W-H2S04 ACQC RM (N/26.2-27) - 1F -SUW-FAB110408,,,,,,,,2025-08-22 08:00,2025-08-22 17:00,2025-08-22 08:00,2025-08-22 17:00
FAB110408B-04,DOOR INSTALL - FAB110408B HANDED OVER TO SECAI,Complete,W-H2S04 ACQC RM (N/26.2-27) - 1F -SUW-FAB110408,,,,,,,,2025-08-22 08:00,2025-08-22 17:00,2025-08-22 08:00,2025-08-22 17:00
FAB110408B-03,SECAI ROUGH IN FRAME - FAB110408B HANDED OVER TO SECAI,Complete,W-H2S04 ACQC RM (N/26.2-27) - 1F -SUW-FAB110408,,,,,,,,2025-08-22 08:00,2025-08-22 17:00,2025-08-22 08:00,2025-08-22 17:00
FAB110408D-02,INSTALL DOOR FRAMES - FAB110408D HANDED OVER TO SECAI,Complete,W-H2S04 ACQC RM (N/26.2-27) - 1F -SUW-FAB110408,,,,,,,,2025-08-22 08:00,2025-08-22 17:00,2025-08-22 08:00,2025-08-22 17:00
FAB110408D-04,DOOR INSTALL - FAB110408D HANDED OVER TO SECAI,Complete,W-H2S04 ACQC RM (N/26.2-27) - 1F -SUW-FAB110408,,,,,,,,2025-08-22 08:00,2025-08-22 17:00,2025-08-22 08:00,2025-08-22 17:00
FAB110408D-03,SECAI ROUGH IN FRAME - FAB110408D HANDED OVER TO SECAI,Complete,W-H2S04 ACQC RM (N/26.2-27) - 1F -SUW-FAB110408,,,,,,,,2025-08-22 08:00,2025-08-22 17:00,2025-08-22 08:00,2025-08-22 17:00
FAB110408A-07,DOOR FRAME PAINT & 1ST COAT - FAB110408A,Complete,W-H2S04 ACQC RM (N/26.2-27) - 1F -SUW-FAB110408,,,,,,,,2025-09-19 08:00,2025-09-23 17:00,2025-09-19 08:00,2025-09-23 17:00
FAB110408A-05,PAINT & PROTECT DOORS & FRAMES - FAB110408A,Complete,W-H2S04 ACQC RM (N/26.2-27) - 1F -SUW-FAB110408,,,,,,,,2025-10-13 08:00,2025-10-16 15:00,2025-10-14 08:00,2025-10-16 15:00
FAB110408A-06,INSTALL DOOR HARDWARE - FAB110408A,Complete,W-H2S04 ACQC RM (N/26.2-27) - 1F -SUW-FAB110408,,,,,,,,2025-10-20 08:00,2025-10-23 15:00,2025-10-20 08:00,2025-10-23 15:00
FAB110408C-02,INSTALL DOOR FRAME BY SECAI - FAB110408C HANDED OVER 06/27,Complete,W-H2S04 ACQC RM (N/26.2-27) - 1F -SUW-FAB110408,,,,,,,,2025-06-27 08:00,2025-07-10 17:00,2025-06-28 08:00,2025-09-13 08:00
FAB110408C-04,INSTALL DOOR & HARDWARE - FAB110408C,Active,W-H2S04 ACQC RM (N/26.2-27) - 1F -SUW-FAB110408,,,,,,,,2025-11-14 08:00,2025-11-20 17:00,2025-11-14 08:00,
FAB110408C-05,PAINT & PROTECT DOORS & FRAMES - FAB110408C,Not Started,W-H2S04 ACQC RM (N/26.2-27) - 1F -SUW-FAB110408,,,,,,,,2026-02-16 08:00,2026-02-19 15:00,,
FAB110408C-13,DOOR FRAME HANDED OVER TO SECAI ON 07/18 - FAB110408C,Complete,W-H2S04 ACQC RM (N/26.2-27) - 1F -SUW-FAB110408,,,,,,,,2025-06-27 08:00,2025-06-27 17:00,2025-06-27 08:00,2025-06-27 17:00
FAB110511B-02,INSTALL DOOR FRAMES - FAB110511B HANDED OVER TO SECAI,Complete,W-SOLVENT RM (N/27.5-29) - 1F -SUW-FAB110511,,,,,,,,2025-08-22 08:00,2025-08-22 17:00,2025-08-22 08:00,2025-08-22 17:00
FAB110511B-04,DOOR INSTALL - FAB110511B HANDED OVER TO SECAI,Complete,W-SOLVENT RM (N/27.5-29) - 1F -SUW-FAB110511,,,,,,,,2025-08-22 08:00,2025-08-22 17:00,2025-08-22 08:00,2025-08-22 17:00
FAB110511B-03,SECAI ROUGH IN FRAME - FAB110511B HANDED OVER TO SECAI,Complete,W-SOLVENT RM (N/27.5-29) - 1F -SUW-FAB110511,,,,,,,,2025-08-22 08:00,2025-08-22 17:00,2025-08-22 08:00,2025-08-22 17:00
FAB110511C-02,INSTALL DOOR FRAMES - FAB110511C HANDED OVER TO SECAI,Complete,W-SOLVENT RM (N/27.5-29) - 1F -SUW-FAB110511,,,,,,,,2025-08-22 08:00,2025-08-22 17:00,2025-08-22 08:00,2025-08-22 17:00
FAB110511C-04,DOOR INSTALL - FAB110511C HANDED OVER TO SECAI,Complete,W-SOLVENT RM (N/27.5-29) - 1F -SUW-FAB110511,,,,,,,,2025-08-22 08:00,2025-08-22 17:00,2025-08-22 08:00,2025-08-22 17:00
FAB110511C-03,SECAI ROUGH IN FRAME - FAB110511C HANDED OVER TO SECAI,Complete,W-SOLVENT RM (N/27.5-29) - 1F -SUW-FAB110511,,,,,,,,2025-08-22 08:00,2025-08-22 17:00,2025-08-22 08:00,2025-08-22 17:00
FAB110511D-02,INSTALL DOOR FRAMES - FAB110511D,Complete,W-SOLVENT RM (N/27.5-29) - 1F -SUW-FAB110511,,,,,,,,2025-06-13 08:00,2025-06-16 17:00,2025-05-23 08:00,2025-05-23 16:00
FAB110511D-04,DOOR INSTALL - FAB110511D,Complete,W-SOLVENT RM (N/27.5-29) - 1F -SUW-FAB110511,,,,,,,,2025-08-29 08:00,2025-08-29 17:00,2025-08-29 08:00,2025-08-29 17:00
FAB110511D-03,SECAI ROUGH IN FRAME - FAB110511D,Complete,W-SOLVENT RM (N/27.5-29) - 1F -SUW-FAB110511,,,,,,,,2025-06-13 08:00,2025-06-13 17:00,2025-05-23 08:00,2025-05-23 16:00
FAB110511D-07,DOOR FRAME PAINT & 1ST COAT - FAB110511D,Complete,W-SOLVENT RM (N/27.5-29) - 1F -SUW-FAB110511,,,,,,,,2025-08-25 08:00,2025-08-27 17:00,2025-08-25 08:00,2025-08-27 17:00
FAB110511D-05,PAINT & PROTECT DOORS & FRAMES - FAB110511D,Complete,W-SOLVENT RM (N/27.5-29) - 1F -SUW-FAB110511,,,,,,,,2025-10-15 08:00,2025-10-20 15:00,2025-10-15 08:00,2025-10-20 15:00
FAB110511D-06,INSTALL DOOR HARDWARE - FAB110511D,Not Started,W-SOLVENT RM (N/27.5-29) - 1F -SUW-FAB110511,,,,,,,,2025-11-21 08:00,2025-11-26 15:00,,
FAB110511A-02,INSTALL DOOR FRAME BY SECAI - FAB110511A HANDED OVER 06/27,Complete,W-SOLVENT RM (N/27.5-29) - 1F -SUW-FAB110511,,,,,,,,2025-06-27 08:00,2025-07-10 17:00,2025-06-28 08:00,2025-08-12 17:00
FAB110511A-04,INSTALL DOOR & HARDWARE - FAB110511A,Active,W-SOLVENT RM (N/27.5-29) - 1F -SUW-FAB110511,,,,,,,,2025-11-04 08:00,2025-11-10 17:00,2025-11-04 08:00,
FAB110511A-05,PAINT & PROTECT DOORS & FRAMES - FAB110511A,Not Started,W-SOLVENT RM (N/27.5-29) - 1F -SUW-FAB110511,,,,,,,,2026-02-16 08:00,2026-02-19 15:00,,
FAB110511A-13,DOOR FRAME HANDED OVER TO SECAI ON 06/27 - FAB110511A,Complete,W-SOLVENT RM (N/27.5-29) - 1F -SUW-FAB110511,,,,,,,,2025-06-27 08:00,2025-06-27 17:00,2025-06-27 08:00,2025-06-27 16:00
ZX-9009,SECAI TURNOVER FOR ACELERATION - Drywall & Inspect - LAB AIRLOCK/SMOCK FAB112103 BAKER/DESCOPE,Complete,LAB AIRLOCK/SMOCK- 1F -FIZ-FAB112103,,,,,,,,2025-05-19 13:00,2025-05-19 13:00,2025-05-06 12:00,2025-05-06 12:00
FAB112103A-02,INSTALL DOOR FRAMES - FAB112103A,Complete,LAB AIRLOCK/SMOCK- 1F -FIZ-FAB112103,,,,,,,,2025-08-08 08:00,2025-08-08 17:00,2025-08-08 08:00,2025-08-08 17:00
FAB112103A-04,INSTALL DOOR & HARDWARE - FAB112103A,Active,LAB AIRLOCK/SMOCK- 1F -FIZ-FAB112103,,,,,,,,2025-08-19 08:00,2025-08-25 17:00,2025-08-19 08:00,
FAB112103A-03,SECAI ROUGH IN FRAME - FAB112103A,Complete,LAB AIRLOCK/SMOCK- 1F -FIZ-FAB112103,,,,,,,,2025-08-08 08:00,2025-08-08 17:00,2025-08-08 08:00,2025-08-08 17:00
FAB112103B-02,INSTALL DOOR FRAMES - FAB112103B,Complete,LAB AIRLOCK/SMOCK- 1F -FIZ-FAB112103,,,,,,,,2025-06-13 08:00,2025-06-16 17:00,2025-05-19 08:00,2025-05-19 16:00
FAB112103B-04,INSTALL DOOR & HARDWARE - FAB112103B,Active,LAB AIRLOCK/SMOCK- 1F -FIZ-FAB112103,,,,,,,,2025-08-12 08:00,2025-08-18 17:00,2025-08-12 08:00,
FAB112103B-03,SECAI ROUGH IN FRAME - FAB112103B,Complete,LAB AIRLOCK/SMOCK- 1F -FIZ-FAB112103,,,,,,,,2025-06-13 08:00,2025-06-13 17:00,2025-05-19 08:00,2025-05-19 16:00
FAB112103B-07,DOOR FRAME PAINT & 1ST COAT - FAB112103B,Complete,LAB AIRLOCK/SMOCK- 1F -FIZ-FAB112103,,,,,,,,2025-08-07 08:00,2025-08-11 17:00,2025-08-07 08:00,2025-08-11 17:00
FAB112103B-05,PAINT & PROTECT DOORS & FRAMES - FAB112103B,Not Started,LAB AIRLOCK/SMOCK- 1F -FIZ-FAB112103,,,,,,,,2026-02-16 08:00,2026-02-19 15:00,,
FAB112103A-05,PAINT & PROTECT DOORS & FRAMES - FAB112103A,Not Started,LAB AIRLOCK/SMOCK- 1F -FIZ-FAB112103,,,,,,,,2026-02-16 08:00,2026-02-19 15:00,,
FAB112103A-90,DOOR FRAME GROUT - FAB112103A (INCLUDE MOBILIZATION AND CURE TIME),Complete,LAB AIRLOCK/SMOCK- 1F -FIZ-FAB112103,,,,,,,,2025-08-19 08:00,2025-08-19 17:00,2025-08-15 08:00,2025-08-15 17:00
FAB112103C-01,DOOR ASSEMBLY - FAB112103C,Not Started,LAB AIRLOCK/SMOCK- 1F -FIZ-FAB112103,,,,,,,,2025-12-01 08:00,2025-12-02 17:00,,
FAB112103C-02,DOOR PACKAGE INSTALL - FAB112103C,Not Started,LAB AIRLOCK/SMOCK- 1F -FIZ-FAB112103,,,,,,,,2025-12-02 08:00,2025-12-03 17:00,,
FAB112103D-01,DOOR ASSEMBLY - FAB112103D,Complete,LAB AIRLOCK/SMOCK- 1F -FIZ-FAB112103,,,,,,,,2025-10-15 08:00,2025-10-16 17:00,2025-10-15 08:00,2025-10-16 17:00
FAB112103D-02,DOOR PACKAGE INSTALL - FAB112103D,Complete,LAB AIRLOCK/SMOCK- 1F -FIZ-FAB112103,,,,,,,,2025-10-15 08:00,2025-10-16 17:00,2025-10-15 08:00,2025-10-16 17:00
FAB112103B-15,IMPACT - FRAME DAMAGED BY SECAI'S TRADE - FAB112103B,Complete,LAB AIRLOCK/SMOCK- 1F -FIZ-FAB112103,,,,,,,,2025-06-27 08:00,2025-07-10 17:00,2025-06-27 08:00,2025-08-05 17:00
FAB116410A-02,INSTALL DOOR FRAMES - FAB116410A,Complete,Wafer I/O Vestibule (A/27-28.3) - 1F -SUE-FAB116504,,,,,,,,2025-08-01 08:00,2025-08-01 17:00,2025-08-01 08:00,2025-08-01 17:00
FAB116410A-04,INSTALL DOOR & HARDWARE - FAB116410A,Active,Wafer I/O Vestibule (A/27-28.3) - 1F -SUE-FAB116504,,,,,,,,2025-08-26 08:00,2025-09-01 17:00,2025-08-26 08:00,
FAB116410A-03,SECAI ROUGH IN FRAME - FAB116410A,Complete,Wafer I/O Vestibule (A/27-28.3) - 1F -SUE-FAB116504,,,,,,,,2025-08-01 08:00,2025-08-01 17:00,2025-08-01 08:00,2025-08-01 17:00
FAB116410B-02,INSTALL DOOR FRAMES - FAB116410B,Complete,Wafer I/O Vestibule (A/27-28.3) - 1F -SUE-FAB116504,,,,,,,,2025-07-09 08:00,2025-07-09 17:00,2025-06-20 08:00,2025-06-20 16:00
FAB116410B-04,INSTALL DOOR & HARDWARE - FAB116410B,Active,Wafer I/O Vestibule (A/27-28.3) - 1F -SUE-FAB116504,,,,,,,,2025-08-13 08:00,2025-08-19 17:00,2025-08-13 08:00,
FAB116410B-03,SECAI ROUGH IN FRAME - FAB116410B,Complete,Wafer I/O Vestibule (A/27-28.3) - 1F -SUE-FAB116504,,,,,,,,2025-07-08 08:00,2025-07-08 17:00,2025-06-20 08:00,2025-06-20 16:00
FAB116410B-07,DOOR FRAME PAINT & 1ST COAT - FAB116410B,Complete,Wafer I/O Vestibule (A/27-28.3) - 1F -SUE-FAB116504,,,,,,,,2025-08-08 08:00,2025-08-12 17:00,2025-08-08 08:00,2025-08-12 17:00
FAB116410B-05,PAINT & PROTECT DOORS & FRAMES -  FAB116410B,Not Started,Wafer I/O Vestibule (A/27-28.3) - 1F -SUE-FAB116504,,,,,,,,2026-02-16 08:00,2026-02-19 15:00,,
FAB116410A-07,DOOR FRAME PAINT & 1ST COAT - FAB116410A,Complete,Wafer I/O Vestibule (A/27-28.3) - 1F -SUE-FAB116504,,,,,,,,2025-08-21 08:00,2025-08-25 17:00,2025-08-21 08:00,2025-08-25 08:00
FAB116410A-05,PAINT & PROTECT DOORS & FRAMES -  FAB116410A,Not Started,Wafer I/O Vestibule (A/27-28.3) - 1F -SUE-FAB116504,,,,,,,,2026-02-16 08:00,2026-02-19 15:00,,
FAB116504A-01,DOOR ASSEMBLY - FAB116504A,Complete,Wafer I/O Vestibule (A/27-28.3) - 1F -SUE-FAB116504,,,,,,,,2025-10-29 08:00,2025-10-30 17:00,2025-10-29 08:00,2025-10-30 17:00
FAB116504A-02,DOOR PACKAGE INSTALL - FAB116504A,Complete,Wafer I/O Vestibule (A/27-28.3) - 1F -SUE-FAB116504,,,,,,,,2025-10-29 08:00,2025-10-30 17:00,2025-10-29 08:00,2025-10-30 17:00
FAB116504B-01,DOOR ASSEMBLY - FAB116504B,Complete,Wafer I/O Vestibule (A/27-28.3) - 1F -SUE-FAB116504,,,,,,,,2025-10-29 08:00,2025-10-30 17:00,2025-10-29 08:00,2025-10-30 17:00
FAB116504B-02,DOOR PACKAGE INSTALL - FAB116504B,Complete,Wafer I/O Vestibule (A/27-28.3) - 1F -SUE-FAB116504,,,,,,,,2025-10-29 08:00,2025-10-30 17:00,2025-10-29 08:00,2025-10-30 17:00
FAB116504F-01,DOOR ASSEMBLY - FAB116504F,Complete,Wafer I/O Vestibule (A/27-28.3) - 1F -SUE-FAB116504,,,,,,,,2025-10-29 08:00,2025-10-30 17:00,2025-10-29 08:00,2025-10-30 17:00
FAB116504F-02,DOOR PACKAGE INSTALL - FAB116504F,Complete,Wafer I/O Vestibule (A/27-28.3) - 1F -SUE-FAB116504,,,,,,,,2025-10-29 08:00,2025-10-30 17:00,2025-10-29 08:00,2025-10-30 17:00
FAB116509D-02,INSTALL DOOR FRAMES - FAB116509D,Complete,PR Vestibule - 1F -SUE-FAB116523,,,,,,,,2025-06-13 08:00,2025-06-16 17:00,2025-05-17 08:00,2025-05-17 16:00
FAB116509D-04,INSTALL DOOR & HARDWARE - FAB116509D,Not Started,PR Vestibule - 1F -SUE-FAB116523,,,,,,,,2025-11-25 08:00,2025-12-01 17:00,,
FAB116509D-03,SECAI ROUGH IN FRAME - FAB116509D,Complete,PR Vestibule - 1F -SUE-FAB116523,,,,,,,,2025-06-13 08:00,2025-06-13 17:00,2025-05-17 08:00,2025-05-17 16:00
FAB116509E-02,INSTALL DOOR FRAMES - FAB116509E,Complete,PR Vestibule - 1F -SUE-FAB116523,,,,,,,,2025-08-11 08:00,2025-08-11 17:00,2025-08-13 08:00,2025-08-13 17:00
FAB116509E-04,INSTALL DOOR & HARDWARE - FAB116509E,Not Started,PR Vestibule - 1F -SUE-FAB116523,,,,,,,,2025-11-21 08:00,2025-11-27 17:00,,
FAB116509D-05,PAINT & PROTECT DOORS & FRAMES -  FAB116509D,Not Started,PR Vestibule - 1F -SUE-FAB116523,,,,,,,,2026-02-16 08:00,2026-02-19 15:00,,
FAB116509E-05,PAINT & PROTECT DOORS & FRAMES -  FAB116509E,Not Started,PR Vestibule - 1F -SUE-FAB116523,,,,,,,,2026-02-16 08:00,2026-02-19 15:00,,
FAB116509E-09,IMPACT DOOR FRAME REMEDIATION - FAB116509E,Complete,PR Vestibule - 1F -SUE-FAB116523,,,,,,,,2025-08-08 08:00,2025-08-08 17:00,2025-08-08 08:00,2025-08-08 17:00
FAB116509D-50,IMPACT - FRAME DAMAGED BY SECAI'S TRADE - FAB116509D,Not Started,PR Vestibule - 1F -SUE-FAB116523,,,,,,,,2025-11-21 08:00,2025-11-24 17:00,,
FAB114107C-13,DOOR FRAME HANDED OVER TO SECAI ON 06/27 - FAB114107C - P1,Complete,FA Lab-7 - 1F -FIZ-FAB114107,,,,,,,,2025-07-03 08:00,2025-07-03 17:00,2025-06-27 08:00,2025-06-27 16:00
FAB114107C-03,INSTALL DOOR FRAME BY SECAI - FAB114107C - P1 HANDED OVER 06/27,Complete,FA Lab-7 - 1F -FIZ-FAB114107,,,,,,,,2025-07-03 08:00,2025-07-16 17:00,2025-06-28 08:00,2025-09-06 08:00
FAB114107C-04,INSTALL DOOR & HARDWARE - FAB114107C - P1,Active,FA Lab-7 - 1F -FIZ-FAB114107,,,,,,,,2025-10-30 08:00,2025-11-05 17:00,2025-10-30 08:00,
FAB114107C-05,PAINT & PROTECT DOORS & FRAMES - FAB114107C,Not Started,FA Lab-7 - 1F -FIZ-FAB114107,,,,,,,,2026-02-16 08:00,2026-02-19 15:00,,
FAB114107B-01,IMPACT - INSTALL/REWORK DRYWALL FRAMING AROUND DOORS - FAB114107B,Complete,FA Lab-7 - 1F -FIZ-FAB114107,,,,,,,,2025-06-27 08:00,2025-06-27 17:00,2025-03-21 08:00,2025-03-21 16:00
FAB114107B-03,INSTALL DOOR FRAMES - FAB114107B,Complete,FA Lab-7 - 1F -FIZ-FAB114107,,,,,,,,2025-03-21 08:00,2025-03-21 17:00,2025-03-21 08:00,2025-03-21 17:00
FAB114107B-04,INSTALL DOOR & HARDWARE - FAB114107B,Active,FA Lab-7 - 1F -FIZ-FAB114107,,,,,,,,2025-08-29 08:00,2025-09-04 17:00,2025-08-29 08:00,
FAB114107B-05,PAINT & PROTECT DOORS & FRAMES - FAB114107B,Not Started,FA Lab-7 - 1F -FIZ-FAB114107,,,,,,,,2026-02-16 08:00,2026-02-19 15:00,,
FAB112102A-01,DOOR ASSEMBLY - FAB112102A,Not Started,Lab Stock - 1F -FIZ-FAB112102,,,,,,,,2025-12-11 08:00,2025-12-12 17:00,,
FAB112102A-02,DOOR PACKAGE INSTALL - FAB112102A,Not Started,Lab Stock - 1F -FIZ-FAB112102,,,,,,,,2025-12-12 08:00,2025-12-15 17:00,,
FAB112105A-01,DOOR ASSEMBLY - FAB112105A,Not Started,Tem Lab-1 - 1F -FIZ-FAB112105,,,,,,,,2025-12-01 08:00,2025-12-02 17:00,,
FAB112105A-02,DOOR PACKAGE INSTALL - FAB112105A,Not Started,Tem Lab-1 - 1F -FIZ-FAB112105,,,,,,,,2025-12-02 08:00,2025-12-03 17:00,,
FAB112108A-01,DOOR ASSEMBLY - FAB112108A,Complete,Tem Lab-2 - 1F -FIZ-FAB112108,,,,,,,,2025-10-13 08:00,2025-10-14 17:00,2025-10-13 08:00,2025-10-14 17:00
FAB112108A-02,DOOR PACKAGE INSTALL - FAB112108A,Complete,Tem Lab-2 - 1F -FIZ-FAB112108,,,,,,,,2025-10-13 08:00,2025-10-14 17:00,2025-10-13 08:00,2025-10-14 17:00
FAB112109A-01,DOOR ASSEMBLY - FAB112109A,Complete,Tem Lab-3 - 1F -FIZ-FAB112109,,,,,,,,2025-10-13 08:00,2025-10-14 17:00,2025-10-13 08:00,2025-10-14 17:00
FAB112109A-02,DOOR PACKAGE INSTALL - FAB112109A,Complete,Tem Lab-3 - 1F -FIZ-FAB112109,,,,,,,,2025-10-13 08:00,2025-10-14 17:00,2025-10-13 08:00,2025-10-14 17:00
FAB112110A-01,DOOR ASSEMBLY - FAB112110A,Complete,Tem Lab-4 - 1F -FIZ-FAB112110,,,,,,,,2025-10-13 08:00,2025-10-14 17:00,2025-10-13 08:00,2025-10-14 17:00
FAB112110A-02,DOOR PACKAGE INSTALL - FAB112110A,Complete,Tem Lab-4 - 1F -FIZ-FAB112110,,,,,,,,2025-10-13 08:00,2025-10-14 17:00,2025-10-13 08:00,2025-10-14 17:00
FAB112111A-01,DOOR ASSEMBLY - FAB112111A,Complete,Tem Lab-5 - 1F -FIZ-FAB112111,,,,,,,,2025-10-10 08:00,2025-10-13 17:00,2025-10-10 08:00,2025-10-13 17:00
FAB112111A-02,DOOR PACKAGE INSTALL - FAB112111A,Complete,Tem Lab-5 - 1F -FIZ-FAB112111,,,,,,,,2025-10-10 08:00,2025-10-13 17:00,2025-10-10 08:00,2025-10-13 17:00
FAB112112A-01,DOOR ASSEMBLY - FAB112112A,Complete,Tem Lab-6 - 1F -FIZ-FAB112112,,,,,,,,2025-10-10 08:00,2025-10-13 17:00,2025-10-10 08:00,2025-10-13 17:00
FAB112112A-02,DOOR PACKAGE INSTALL - FAB112112A,Complete,Tem Lab-6 - 1F -FIZ-FAB112112,,,,,,,,2025-10-10 08:00,2025-10-13 17:00,2025-10-10 08:00,2025-10-13 17:00
FAB112113A-01,DOOR ASSEMBLY - FAB112113A,Complete,Tem Lab-7 - 1F -FIZ-FAB112113,,,,,,,,2025-10-10 08:00,2025-10-13 17:00,2025-10-10 08:00,2025-10-13 17:00
FAB112113A-02,DOOR PACKAGE INSTALL - FAB112113A,Complete,Tem Lab-7 - 1F -FIZ-FAB112113,,,,,,,,2025-10-10 08:00,2025-10-13 17:00,2025-10-10 08:00,2025-10-13 17:00
FAB112114A-01,DOOR ASSEMBLY - FAB112114A,Complete,Tem Lab-8 - 1F -FIZ-FAB112114,,,,,,,,2025-09-29 08:00,2025-09-30 17:00,2025-09-29 08:00,2025-09-30 17:00
FAB112114A-02,DOOR PACKAGE INSTALL - FAB112114A,Complete,Tem Lab-8 - 1F -FIZ-FAB112114,,,,,,,,2025-09-30 08:00,2025-10-01 17:00,2025-09-30 08:00,2025-10-01 17:00
FAB112119A-01,DOOR ASSEMBLY - FAB112119A,Complete,Tem Lab-9 - 1F -FIZ-FAB112119,,,,,,,,2025-09-29 08:00,2025-09-30 17:00,2025-09-29 08:00,2025-09-30 17:00
FAB112119A-02,DOOR PACKAGE INSTALL - FAB112119A,Complete,Tem Lab-9 - 1F -FIZ-FAB112119,,,,,,,,2025-09-30 08:00,2025-10-01 17:00,2025-09-30 08:00,2025-10-01 17:00
FAB112120A-01,DOOR ASSEMBLY - FAB112120A,Complete,Tem Lab-10 - 1F -FIZ-FAB112120,,,,,,,,2025-09-29 08:00,2025-09-30 17:00,2025-09-29 08:00,2025-09-30 17:00
FAB112120A-02,DOOR PACKAGE INSTALL - FAB112120A,Complete,Tem Lab-10 - 1F -FIZ-FAB112120,,,,,,,,2025-09-30 08:00,2025-10-01 17:00,2025-09-30 08:00,2025-10-01 17:00
FAB112121A-01,DOOR ASSEMBLY - FAB112121A,Complete,Tem Lab-11 - 1F -FIZ-FAB112121,,,,,,,,2025-09-19 08:00,2025-09-22 17:00,2025-09-19 08:00,2025-09-22 17:00
FAB112121A-02,DOOR PACKAGE INSTALL - FAB112121A,Complete,Tem Lab-11 - 1F -FIZ-FAB112121,,,,,,,,2025-09-22 08:00,2025-09-23 17:00,2025-09-22 08:00,2025-09-23 17:00
FAB112122A-01,DOOR ASSEMBLY - FAB112122A,Complete,Tem Lab-12 - 1F -FIZ-FAB112122,,,,,,,,2025-09-19 08:00,2025-09-22 17:00,2025-09-19 08:00,2025-09-22 17:00
FAB112122A-02,DOOR PACKAGE INSTALL - FAB112122A,Complete,Tem Lab-12 - 1F -FIZ-FAB112122,,,,,,,,2025-09-22 08:00,2025-09-23 17:00,2025-09-22 08:00,2025-09-23 17:00
FAB112123A-01,DOOR ASSEMBLY - FAB112123A,Complete,Tem Lab13 - 1F -FIZ-FAB112123,,,,,,,,2025-09-19 08:00,2025-09-22 17:00,2025-09-19 08:00,2025-09-22 17:00
FAB112123A-02,DOOR PACKAGE INSTALL - FAB112123A,Complete,Tem Lab13 - 1F -FIZ-FAB112123,,,,,,,,2025-09-22 08:00,2025-09-23 17:00,2025-09-22 08:00,2025-09-23 17:00
FAB114102A-01,DOOR ASSEMBLY - FAB114102A,Complete,FA Lab-2 - 1F -FIZ-FAB114102,,,,,,,,2025-10-14 08:00,2025-10-15 17:00,2025-10-14 08:00,2025-10-15 17:00
FAB114102A-02,DOOR PACKAGE INSTALL - FAB114102A,Complete,FA Lab-2 - 1F -FIZ-FAB114102,,,,,,,,2025-10-14 08:00,2025-10-15 17:00,2025-10-14 08:00,2025-10-15 17:00
FAB114103A-01,DOOR ASSEMBLY - FAB114103A,Complete,FA Lab-3 - 1F -FIZ-FAB114103,,,,,,,,2025-10-14 08:00,2025-10-15 17:00,2025-10-14 08:00,2025-10-15 17:00
FAB114103A-02,DOOR PACKAGE INSTALL - FAB114103A,Complete,FA Lab-3 - 1F -FIZ-FAB114103,,,,,,,,2025-10-14 08:00,2025-10-15 17:00,2025-10-14 08:00,2025-10-15 17:00
FAB114105A-01,DOOR ASSEMBLY - FAB114105A,Complete,FA Lab-5 - 1F -FIZ-FAB114105,,,,,,,,2025-10-14 08:00,2025-10-15 17:00,2025-10-14 08:00,2025-10-15 17:00
FAB114105A-02,DOOR PACKAGE INSTALL - FAB114105A,Complete,FA Lab-5 - 1F -FIZ-FAB114105,,,,,,,,2025-10-14 08:00,2025-10-15 17:00,2025-10-14 08:00,2025-10-15 17:00
FAB114106A-01,DOOR ASSEMBLY - FAB114106A,Complete,FA Lab-6 - 1F -FIZ-FAB114106,,,,,,,,2025-10-14 08:00,2025-10-15 17:00,2025-10-14 08:00,2025-10-15 17:00
FAB114106A-02,DOOR PACKAGE INSTALL - FAB114106A,Complete,FA Lab-6 - 1F -FIZ-FAB114106,,,,,,,,2025-10-14 08:00,2025-10-15 17:00,2025-10-14 08:00,2025-10-15 17:00
FAB116513H-03,INSTALL DOOR FRAMES - FAB116513H,Complete,Air Lock 18 - 1F -SUE-FAB116513,,,,,,,,2025-06-25 08:00,2025-06-25 17:00,2025-06-25 08:00,2025-06-25 17:00
FAB116103A-03,INSTALL DOOR FRAMES - FAB116103A,Not Started,Elevator Mech. Rm 22 - 1F -SUE-FAB116103,,,,,,,,2025-11-28 08:00,2025-11-28 17:00,,
FAB110114B-03,INSTALL DOOR FRAMES - FAB110114B,Complete,Elevator Hall 1 - 1F -SUW-FAB110113,,,,,,,,2025-08-04 08:00,2025-08-04 17:00,2025-08-04 08:00,2025-08-04 17:00
FAB110514B-03,INSTALL DOOR FRAMES - FAB110514B,Complete,Duct Shaft - 1F -SUW-FAB110306,,,,,,,,2025-06-06 08:00,2025-06-06 17:00,2025-06-03 08:00,2025-06-03 15:00
FAB126106A-14,IMPACT - DOOR FRAME PROCUREMENT- FAB126106A,Complete,Vestibule 22 - 2F -SUE-FAB126106,,,,,,,,2025-06-09 08:00,2025-07-25 17:00,2025-06-09 08:00,2025-09-29 08:00
FAB116527A-14,IMPACT - DOOR FRAME PROCUREMENT- FAB116527A,Complete,Fire Alarm Rm 18 - 1F -SUE-FAB116527,,,,,,,,2025-06-09 08:00,2025-07-25 17:00,2025-06-09 08:00,2025-10-03 08:00
FAB1-ST19A-03,INSTALL DOOR FRAMES - FAB1-ST19A,Complete,Stair 19 - 1F -SUE- FAB1-ST19,,,,,,,,2025-05-05 08:00,2025-05-05 17:00,2025-05-09 08:00,2025-05-09 17:00
FAB116414B-03,INSTALL DOOR FRAMES - FAB116414B,Complete,Exit Passageway 19 - 1F -SUE-FAB116407,,,,,,,,2025-04-07 08:00,2025-04-07 17:00,2025-04-07 08:00,2025-04-07 17:00
FAB116414A-03,INSTALL DOOR FRAMES - FAB116414A,Complete,Exit Passageway 19 - 1F -SUE-FAB116407,,,,,,,,2025-04-07 08:00,2025-04-07 17:00,2025-04-07 08:00,2025-04-07 17:00
FAB130502A-03,INSTALL DOOR FRAMES - FAB130502A,Complete,Duct Shaft - 3F -SUW-FAB130502,,,,,,,,2025-01-20 08:00,2025-01-20 17:00,2025-01-20 08:00,2025-01-20 17:00
FAB130502B-03,INSTALL DOOR FRAMES - FAB130502B,Not Started,Duct Shaft - 3F -SUW-FAB130502,,,,,,,,2025-11-24 08:00,2025-11-24 17:00,,
FAB130111A-03,INSTALL DOOR FRAMES - FAB130111A (MOCK-UP),Complete,Vestibule 1 - 3F -SUW-FAB130111,,,,,,,,2025-01-08 08:00,2025-01-08 17:00,2025-01-08 08:00,2025-01-08 17:00
FAB130111A-04,DOOR INSTALL - FAB130111A (MOCK-UP),Complete,Vestibule 1 - 3F -SUW-FAB130111,,,,,,,,2025-01-13 08:00,2025-01-17 17:00,2025-01-13 08:00,2025-01-13 17:00
FAB130111A-05,PAINT & PROTECT DOORS & FRAMES -  FAB130111A (MOCK-UP),Complete,Vestibule 1 - 3F -SUW-FAB130111,,,,,,,,2025-01-14 08:00,2025-01-17 15:00,2025-01-14 08:00,2025-01-17 15:00
FAB112103A-07,DOOR FRAME PAINT & 1ST COAT - FAB112103A,Complete,LAB AIRLOCK/SMOCK- 1F -FIZ-FAB112103,,,,,,,,2025-08-20 08:00,2025-08-22 17:00,2025-08-18 08:00,2025-08-18 17:00
FAB136311B-6,RUST REMEDIATION - DOOR FRAMES - FAB136311B,Complete,Elevator Hall 20 - 3F -SUE-FAB136311,,,,,,,,2025-09-22 08:00,2025-09-24 17:00,2025-09-22 08:00,2025-09-24 17:00
FAB130310C-40,RUST REMEDIATION - DOOR FRAMES - FAB130310C,Complete,Elevator Hall 3 - 3F -SUW-FAB130310,,,,,,,,2025-07-17 08:00,2025-07-25 17:00,2025-07-17 08:00,2025-07-25 17:00
FAB110204D-90,DOOR FRAME GROUT - FAB110204D - P1 (INCLUDE MOBILIZATION AND CURE TIME),Complete,Gas Purifier Rm - 1F -SUW-FAB110204,,,,,,,,2025-07-16 08:00,2025-07-16 17:00,2025-07-11 08:00,2025-07-11 17:00
FAB110212A-90,DOOR FRAME GROUT - FAB110212A - P1 (INCLUDE MOBILIZATION AND CURE TIME),Complete,Fire Riser Rm - 1F -SUW-FAB110212,,,,,,,,2025-07-07 08:00,2025-07-07 17:00,2025-07-11 08:00,2025-07-11 08:00
FAB112103B-90,DOOR FRAME GROUT - FAB112103B (INCLUDE MOBILIZATION AND CURE TIME),Complete,LAB AIRLOCK/SMOCK- 1F -FIZ-FAB112103,,,,,,,,2025-08-06 08:00,2025-08-06 17:00,2025-08-06 08:00,2025-08-06 17:00
FAB110213A-90,DOOR FRAME GROUT - FAB110213A - P1 (INCLUDE MOBILIZATION AND CURE TIME),Complete,Toilet Corridor - 1F -SUW-FAB110213,,,,,,,,2025-07-15 08:00,2025-07-15 17:00,2025-07-15 08:00,2025-07-15 17:00
FAB110211A-90,DOOR FRAME GROUT - FAB110211A - P1 (INCLUDE MOBILIZATION AND CURE TIME),Complete,Exit Passageway 2 - 1F -FAB110211,,,,,,,,2025-07-16 08:00,2025-07-16 17:00,2025-07-15 08:00,2025-07-15 17:00
FAB110208A-90,DOOR FRAME GROUT - FAB110208A - P1 (INCLUDE MOBILIZATION AND CURE TIME),Complete,Equip Platform - 1F -SUW-FAB110208,,,,,,,,2025-07-21 08:00,2025-07-21 17:00,2025-07-21 08:00,2025-07-21 17:00
FAB110403C-90,DOOR FRAME GROUT - FAB110403C - P1 (INCLUDE MOBILIZATION AND CURE TIME),Complete,NaOH ACQC (N/23-24.3) - 1F -SUW-FAB110403,,,,,,,,2025-07-25 08:00,2025-07-25 17:00,2025-07-24 00:00,2025-07-24 00:00
FAB110404C-90,DOOR FRAME GROUT - FAB110404C - P1 (INCLUDE MOBILIZATION AND CURE TIME),Complete,W-CuS04-ACQC RM (N/24.3-25) - 1F- SUW-FAB110404,,,,,,,,2025-07-25 08:00,2025-07-25 17:00,2025-07-21 08:00,2025-07-21 17:00
FAB110405B-07,DOOR FRAME PAINT & 1ST COAT - FAB110405B,Complete,PLATFORM (N/25-25.4) - 1F -SUW-FAB110405,,,,,,,,2025-09-22 08:00,2025-09-24 17:00,2025-09-22 08:00,2025-09-24 17:00
FAB110405B-90,DOOR FRAME GROUT - FAB110405B - P1 (INCLUDE MOBILIZATION AND CURE TIME),Complete,PLATFORM (N/25-25.4) - 1F -SUW-FAB110405,,,,,,,,2025-09-12 08:00,2025-09-12 17:00,2025-09-12 08:00,2025-09-12 17:00
FAB110408A-90,DOOR FRAME GROUT (RFI1416) - FAB110408A - P1 (INCLUDE MOBILIZATION AND CURE TIME),Complete,W-H2S04 ACQC RM (N/26.2-27) - 1F -SUW-FAB110408,,,,,,,,2025-09-18 08:00,2025-09-18 17:00,2025-09-18 08:00,2025-09-18 17:00
FAB110501A-90,DOOR FRAME GROUT (RFI1416) - FAB110501A - P1 (INCLUDE MOBILIZATION AND CURE TIME),Complete,PLATFORM (N/27-27.5) - 1F -SUW-FAB110501,,,,,,,,2025-08-25 08:00,2025-08-25 17:00,2025-08-25 08:00,2025-08-25 17:00
FAB110511D-90,DOOR FRAME GROUT (RFI1416) - FAB110511D - P1 (INCLUDE MOBILIZATION AND CURE TIME),Complete,W-SOLVENT RM (N/27.5-29) - 1F -SUW-FAB110511,,,,,,,,2025-07-17 08:00,2025-07-17 17:00,2025-07-17 08:00,2025-07-17 17:00
FAB110511E-90,DOOR FRAME GROUT (RFI1416) - FAB110511E - P1 (INCLUDE MOBILIZATION AND CURE TIME),Complete,W-SOLVENT RM (N/27.5-29) - 1F -SUW-FAB110511,,,,,,,,2025-08-04 08:00,2025-08-04 17:00,2025-08-04 08:00,2025-08-04 17:00
FAB116509D-90,DOOR FRAME GROUT (RFI1416) - FAB116509D - P1 (INCLUDE MOBILIZATION AND CURE TIME),Complete,PR Vestibule - 1F -SUE-FAB116523,,,,,,,,2025-08-05 08:00,2025-08-05 17:00,2025-08-05 08:00,2025-08-05 17:00
FAB116509E-90,DOOR FRAME GROUT (RFI1416) - FAB116509E - P1 (INCLUDE MOBILIZATION AND CURE TIME),Complete,PR Vestibule - 1F -SUE-FAB116523,,,,,,,,2025-08-15 08:00,2025-08-15 17:00,2025-08-15 08:00,2025-08-15 17:00
FAB116511A-90,DOOR FRAME GROUT (RFI1416) - FAB116511A - P1 (INCLUDE MOBILIZATION AND CURE TIME),Complete,Exit Passageway 18 - 1F -SUE-FAB116511,,,,,,,,2025-08-04 08:00,2025-08-04 17:00,2025-08-04 08:00,2025-08-04 17:00
FAB116511G-90,DOOR FRAME GROUT (RFI1416) - FAB116511G - P1 (INCLUDE MOBILIZATION AND CURE TIME),Complete,Exit Passageway 18 - 1F -SUE-FAB116511,,,,,,,,2025-08-05 08:00,2025-08-05 17:00,2025-08-05 08:00,2025-08-05 17:00
FAB116308C-90,DOOR FRAME GROUT (RFI1416) - FAB116308C - P1 (INCLUDE MOBILIZATION AND CURE TIME),Not Started,Mechanical Rm 3 - 1F -SUE-FAB116308,,,,,,,,2025-11-21 08:00,2025-11-21 17:00,,
FAB116308E-90,DOOR FRAME GROUT (RFI1416) - FAB116308E - P1 (INCLUDE MOBILIZATION AND CURE TIME),Not Started,Mechanical Rm 3 - 1F -SUE-FAB116308,,,,,,,,2025-11-21 08:00,2025-11-21 17:00,,
FAB116308D-90,DOOR FRAME GROUT (RFI1416) - FAB116308D - P1 (INCLUDE MOBILIZATION AND CURE TIME),Complete,Mechanical Rm 3 - 1F -SUE-FAB116308,,,,,,,,2025-08-25 08:00,2025-08-26 17:00,2025-08-25 08:00,2025-08-25 17:00
FAB116308G-90,DOOR FRAME GROUT (RFI1416) - FAB116308G - P1 (INCLUDE MOBILIZATION AND CURE TIME),Complete,Mechanical Rm 3 - 1F -SUE-FAB116308,,,,,,,,2025-07-25 08:00,2025-07-25 17:00,2025-07-23 08:00,2025-07-23 17:00
FAB116106B-90,DOOR FRAME GROUT (RFI1416) - FAB116106B - P1 (INCLUDE MOBILIZATION AND CURE TIME),Complete,Exit Passageway 22 - 1F -SUE-FAB116106,,,,,,,,2025-06-16 08:00,2025-06-16 17:00,2025-06-16 08:00,2025-06-16 17:00
FAB116101B-90,DOOR FRAME GROUT (RFI1416) - FAB116101B - P1 (INCLUDE MOBILIZATION AND CURE TIME),Not Started,OAC Mechanical RM - 1F -FIZ-FAB116101,,,,,,,,2025-12-01 08:00,2025-12-01 17:00,,
FAB116201A-90,DOOR FRAME GROUT (RFI1416) - FAB116201A - P1 (INCLUDE MOBILIZATION AND CURE TIME),Complete,Mechanical Rm1 - 1F -SUE-FAB116201,,,,,,,,2025-08-12 08:00,2025-08-12 17:00,2025-08-12 08:00,2025-08-12 17:00
FAB116201D-07,DOOR FRAME PAINT & 1ST COAT - FAB116201D,Complete,Mechanical Rm1 - 1F -SUE-FAB116201,,,,,,,,2025-08-25 08:00,2025-08-27 17:00,2025-08-25 08:00,2025-08-27 17:00
FAB116201D-90,DOOR FRAME GROUT (RFI1416) - FAB116201D - P1 (INCLUDE MOBILIZATION AND CURE TIME),Complete,Mechanical Rm1 - 1F -SUE-FAB116201,,,,,,,,2025-07-22 08:00,2025-07-22 17:00,2025-07-22 08:00,2025-07-22 17:00
FAB116202B-90,DOOR FRAME GROUT (RFI1416) - FAB116202B - P1 (INCLUDE MOBILIZATION AND CURE TIME),Complete,Exit Passageway 21 - 1F -SUE-FAB116202,,,,,,,,2025-08-25 08:00,2025-08-25 17:00,2025-08-25 08:00,2025-08-25 17:00
FAB116304A-90,DOOR FRAME GROUT (RFI1416) - FAB116304A - P1 (INCLUDE MOBILIZATION AND CURE TIME),Complete,CV Room - 1F -SUE-FAB116304,,,,,,,,2025-08-15 08:00,2025-08-15 17:00,2025-08-15 08:00,2025-08-15 17:00
FAB116304B-90,DOOR FRAME GROUT (RFI1416) - FAB116304B - P1 (INCLUDE MOBILIZATION AND CURE TIME),Complete,CV Room - 1F -SUE-FAB116304,,,,,,,,2025-07-25 08:00,2025-07-25 17:00,2025-07-23 08:00,2025-07-23 17:00
FAB116403A-90,DOOR FRAME GROUT (RFI1416) - FAB116403A - P1 (INCLUDE MOBILIZATION AND CURE TIME),Complete,Toilet Vestibule 1 - 1F -SUE-FAB116403,,,,,,,,2025-06-12 08:00,2025-06-12 17:00,2025-06-12 08:00,2025-06-12 17:00
FAB116509B-90,DOOR FRAME GROUT (RFI1416) - FAB116509B - P1 (INCLUDE MOBILIZATION AND CURE TIME),Complete,PR Room - 1F -SUE-FAB116509,,,,,,,,2025-03-20 08:00,2025-03-20 17:00,2025-03-20 08:00,2025-03-20 17:00
FAB116509A-90,DOOR FRAME GROUT (RFI1416) - FAB116509A - P1 (INCLUDE MOBILIZATION AND CURE TIME),Complete,PR Room - 1F -SUE-FAB116509,,,,,,,,2025-08-15 08:00,2025-08-15 17:00,2025-08-15 08:00,2025-08-15 17:00
FAB110509A-90,DOOR FRAME GROUT (RFI1416) - FAB110509A - P1 (INCLUDE MOBILIZATION AND CURE TIME),Complete,S.GCS Storage Rm - 1F -SUW-FAB110509,,,,,,,,2025-08-04 08:00,2025-08-04 17:00,2025-08-04 08:00,2025-08-04 17:00
FAB110510A-90,DOOR FRAME GROUT (RFI1416) - FAB110510A - P1 (INCLUDE MOBILIZATION AND CURE TIME),Complete,Fire Riser Rm 2 - 1F -SUW-FAB110510,,,,,,,,2025-08-06 08:00,2025-08-06 17:00,2025-08-06 08:00,2025-08-06 17:00
FAB110402A-90,DOOR FRAME GROUT (RFI1416) - FAB110402A - P1 (INCLUDE MOBILIZATION AND CURE TIME),Complete,Exit Passageway 4 - 1F -SUW-FAB110402,,,,,,,,2025-07-17 08:00,2025-07-17 17:00,2025-07-17 08:00,2025-07-17 17:00
FAB110401A-90,DOOR FRAME GROUT (RFI1416) - FAB110401A - P1 (INCLUDE MOBILIZATION AND CURE TIME),Complete,GCS Training Rm - 1F -SUW-FAB110401,,,,,,,,2025-07-17 08:00,2025-07-17 17:00,2025-07-17 08:00,2025-07-17 17:00
FAB110401B-90,DOOR FRAME GROUT (RFI1416) - FAB110401B - P1 (INCLUDE MOBILIZATION AND CURE TIME),Complete,GCS Training Rm - 1F -SUW-FAB110401,,,,,,,,2025-07-17 08:00,2025-07-17 17:00,2025-07-18 08:00,2025-07-18 17:00
FAB110307A-90,DOOR FRAME GROUT (RFI1416) - FAB110307A - P1 (INCLUDE MOBILIZATION AND CURE TIME),Complete,H2 Purifier Rm - 1F -SUW-FAB110307,,,,,,,,2025-08-06 08:00,2025-08-06 17:00,2025-08-06 08:00,2025-08-06 17:00
FAB110308A-90,DOOR FRAME GROUT (RFI1416) - FAB110308A - P1 (INCLUDE MOBILIZATION AND CURE TIME),Complete,Equip Platform - 1F -SUW-FAB110308,,,,,,,,2025-08-21 08:00,2025-08-21 17:00,2025-08-15 08:00,2025-08-15 17:00
FAB110305B-90,DOOR FRAME GROUT (RFI1416) - FAB110305B - P1 (INCLUDE MOBILIZATION AND CURE TIME),Complete,Exit Passageway 3 - 1F -SUW-FAB110305,,,,,,,,2025-07-17 08:00,2025-07-17 17:00,2025-07-17 08:00,2025-07-17 17:00
FAB110101A-90,DOOR FRAME GROUT (RFI1416) - FAB110101A - P1 (INCLUDE MOBILIZATION AND CURE TIME),Complete,Duct Shaft - 1F -SUW-FAB110101,,,,,,,,2025-08-06 08:00,2025-08-06 17:00,2025-08-06 08:00,2025-08-06 17:00
FAB116104A-90,DOOR FRAME GROUT (RFI1416) - FAB116104A - P1 (INCLUDE MOBILIZATION AND CURE TIME),Complete,OAC Mechanical RM - 1F -FIZ-FAB116101,,,,,,,,2025-08-18 08:00,2025-08-18 17:00,2025-08-18 08:00,2025-08-18 17:00
FAB116410A-90,DOOR FRAME GROUT (RFI1416) - FAB116410A - P1 (INCLUDE MOBILIZATION AND CURE TIME),Complete,Wafer I/O Vestibule (A/27-28.3) - 1F -SUE-FAB116504,,,,,,,,2025-08-05 08:00,2025-08-05 17:00,2025-08-05 08:00,2025-08-05 17:00
FAB116410B-90,DOOR FRAME GROUT (RFI1416) - FAB116410B - P1 (INCLUDE MOBILIZATION AND CURE TIME),Complete,Wafer I/O Vestibule (A/27-28.3) - 1F -SUE-FAB116504,,,,,,,,2025-08-05 08:00,2025-08-05 17:00,2025-08-05 08:00,2025-08-05 17:00
FAB116107A-90,DOOR FRAME GROUT (RFI1416) - FAB116107A - P1 (INCLUDE MOBILIZATION AND CURE TIME),Complete,Fire Riser Rm 3 - 1F -SUE-FAB116107,,,,,,,,2025-08-05 08:00,2025-08-05 17:00,2025-08-05 08:00,2025-08-05 17:00
FAB116203B-90,DOOR FRAME GROUT (RFI1416) - FAB116203B - P1 (INCLUDE MOBILIZATION AND CURE TIME),Complete,Mechanical Rm 2 - 1F -SUE-FAB116203,,,,,,,,2025-07-22 08:00,2025-07-22 17:00,2025-07-22 08:00,2025-07-22 17:00
FAB116203C-90,DOOR FRAME GROUT (RFI1416) - FAB116203C - P1 (INCLUDE MOBILIZATION AND CURE TIME),Complete,Mechanical Rm 2 - 1F -SUE-FAB116203,,,,,,,,2025-08-11 08:00,2025-08-11 17:00,2025-08-11 08:00,2025-08-11 17:00
FAB110506B-90,DOOR FRAME GROUT (RFI1416) - FAB110506B - P1 (INCLUDE MOBILIZATION AND CURE TIME),Complete,Exit Passageway 5 - 1F -SUW-FAB110506,,,,,,,,2025-08-04 08:00,2025-08-04 17:00,2025-08-04 08:00,2025-08-04 17:00
FAB116307B-90,DOOR FRAME GROUT (RFI1416) - FAB116307B - P1 (INCLUDE MOBILIZATION AND CURE TIME),Complete,Exit Passageway 20 - 1F -SUE-FAB116307,,,,,,,,2025-07-25 08:00,2025-07-25 17:00,2025-07-23 08:00,2025-07-23 17:00
FAB116309A-90,DOOR FRAME GROUT (RFI1416) - FAB116309A - P1 (INCLUDE MOBILIZATION AND CURE TIME),Complete,Fire Riser Rm 4 - 1F -SUE-FAB116309,,,,,,,,2025-08-04 08:00,2025-08-04 17:00,2025-08-04 08:00,2025-08-04 17:00
FAB116507A-90,DOOR FRAME GROUT (RFI1416) - FAB116507A - P1 (INCLUDE MOBILIZATION AND CURE TIME),Complete,Fire Riser Rm 5 - 1F -SUE-FAB116507,,,,,,,,2025-08-05 08:00,2025-08-05 17:00,2025-08-05 08:00,2025-08-05 17:00
FAB146105A-90,DOOR FRAME GROUT (RFI1416) - FAB146105A - P1 (INCLUDE MOBILIZATION AND CURE TIME),Not Started,Elevator Hall 22 - 4F -SUE-FAB146105,,,,,,,,2025-12-11 08:00,2025-12-11 17:00,,
FAB146109B-90,DOOR FRAME GROUT (RFI1416) - FAB146109B - P1 (INCLUDE MOBILIZATION AND CURE TIME),Not Started,Elevator Hall 22 - 4F -SUE-FAB146105,,,,,,,,2025-12-11 08:00,2025-12-11 17:00,,
FAB146109C-90,DOOR FRAME GROUT (RFI1416) - FAB146109C - P1 (INCLUDE MOBILIZATION AND CURE TIME),Not Started,Elevator Hall 22 - 4F -SUE-FAB146105,,,,,,,,2025-12-11 08:00,2025-12-11 17:00,,
FAB146110B-90,DOOR FRAME GROUT (RFI1416) - FAB146110B - P1 (INCLUDE MOBILIZATION AND CURE TIME),Not Started,Elevator Hall 22 - 4F -SUE-FAB146105,,,,,,,,2025-12-11 08:00,2025-12-11 17:00,,
FAB146303A-90,DOOR FRAME GROUT (RFI1416) - FAB146303A - P1 (INCLUDE MOBILIZATION AND CURE TIME),Not Started,4F-Vestibule @ ST20 - 4F -SUE-FAB146303,,,,,,,,2025-12-12 08:00,2025-12-12 17:00,,
FAB146507A-90,DOOR FRAME GROUT (RFI1416) - FAB146507A - P1 (INCLUDE MOBILIZATION AND CURE TIME),Complete,Elevator Hall 18 - 4F -SUE-FAB146507,,,,,,,,2025-07-25 08:00,2025-07-25 17:00,2025-07-25 08:00,2025-07-25 17:00
FAB146507B-90,DOOR FRAME GROUT (RFI1416) - FAB146507B - P1 (INCLUDE MOBILIZATION AND CURE TIME),Not Started,Elevator Hall 18 - 4F -SUE-FAB146507,,,,,,,,2025-12-02 08:00,2025-12-02 17:00,,
FAB146503A-90,DOOR FRAME GROUT (RFI1416) - FAB146503A - P1 (INCLUDE MOBILIZATION AND CURE TIME),Not Started,MCC Rm 2 - 4F -SUE-FAB146503,,,,,,,,2025-12-11 08:00,2025-12-11 17:00,,
FAB140508A-90,DOOR FRAME GROUT (RFI1416) - FAB140508A - P1 (INCLUDE MOBILIZATION AND CURE TIME),Not Started,Elevator Hall 5 - 4F -SUW-FAB140508,,,,,,,,2025-12-02 08:00,2025-12-02 17:00,,
FAB140508B-90,DOOR FRAME GROUT (RFI1416) - FAB140508B - P1 (INCLUDE MOBILIZATION AND CURE TIME),Complete,Elevator Hall 5 - 4F -SUW-FAB140508,,,,,,,,2025-07-14 08:00,2025-07-14 17:00,2025-07-14 08:00,2025-07-14 17:00
FAB140509B-90,DOOR FRAME GROUT (RFI1416) - FAB140509B - P1 (INCLUDE MOBILIZATION AND CURE TIME),Not Started,MCC Rm 2 - 4F -SUW-FAB140509,,,,,,,,2025-12-11 08:00,2025-12-11 17:00,,
FAB140303A-90,DOOR FRAME GROUT (RFI1416) - FAB140303A - P1 (INCLUDE MOBILIZATION AND CURE TIME),Not Started,Vestibule 3 - 4F -SUW-FAB140303,,,,,,,,2025-12-11 08:00,2025-12-11 17:00,,
FAB140301A-90,DOOR FRAME GROUT (RFI1416) - FAB140301A - P1 (INCLUDE MOBILIZATION AND CURE TIME),Not Started,Voc CTR Rm - 4F -SUW-FAB140301,,,,,,,,2025-12-11 08:00,2025-12-11 17:00,,
FAB140101A-90,DOOR FRAME GROUT (RFI1416) - FAB140101A - P1 (INCLUDE MOBILIZATION AND CURE TIME),Not Started,Elevator Hall 1 - 4F -SUW-FAB140101,,,,,,,,2025-12-11 08:00,2025-12-11 17:00,,
FAB140101B-90,DOOR FRAME GROUT (RFI1416) - FAB140101B - P1 (INCLUDE MOBILIZATION AND CURE TIME),Not Started,Elevator Hall 1 - 4F -SUW-FAB140101,,,,,,,,2025-12-11 08:00,2025-12-11 17:00,,
FAB140601C-90,DOOR FRAME GROUT (RFI1416) - FAB140601C - P1 (INCLUDE MOBILIZATION AND CURE TIME),Not Started,Elevator Hall 1 - 4F -SUW-FAB140101,,,,,,,,2025-12-11 08:00,2025-12-11 17:00,,
FAB140601B-90,DOOR FRAME GROUT (RFI1416) - FAB140601B - P1 (INCLUDE MOBILIZATION AND CURE TIME),Not Started,Elevator Hall 1 - 4F -SUW-FAB140101,,,,,,,,2025-12-11 08:00,2025-12-11 17:00,,
FAB140106B-90,DOOR FRAME GROUT (RFI1416) - FAB140106B - P1 (INCLUDE MOBILIZATION AND CURE TIME),Not Started,MCC Rm - 4F -SUW-FAB140106,,,,,,,,2025-12-11 08:00,2025-12-11 17:00,,
FAB145101C-90,DOOR FRAME GROUT (RFI1416) - FAB145101C - P1 (INCLUDE MOBILIZATION AND CURE TIME),Complete,TRUSS AREA VESTIBULE - 4F -FIZ-FAB142102 (LVL 4G),,,,,,,,2025-07-01 08:00,2025-07-01 17:00,2025-07-01 08:00,2025-07-01 17:00
FAB166101A-90,DOOR FRAME GROUT (RFI1416) - FAB166101A - P1 (INCLUDE MOBILIZATION AND CURE TIME),Not Started,Mechanical Penthouse - 6F - FIZ-FAB166101,,,,,,,,2025-12-11 08:00,2025-12-11 17:00,,
FAB120506A-90,DOOR FRAME GROUT (RFI1416) - FAB120506A - P1 (INCLUDE MOBILIZATION AND CURE TIME),Complete,GCS Storage - 2F -SUW-FAB120506,,,,,,,,2025-10-10 08:00,2025-10-10 17:00,2025-10-10 08:00,2025-10-10 17:00
FAB120506B-90,DOOR FRAME GROUT (RFI1416) - FAB120506B - P1 (INCLUDE MOBILIZATION AND CURE TIME),Complete,GCS Storage - 2F -SUW-FAB120506,,,,,,,,2025-10-10 08:00,2025-10-10 17:00,2025-10-10 08:00,2025-10-10 17:00
FAB120506C-90,DOOR FRAME GROUT (RFI1416) - FAB120506C - P1 (INCLUDE MOBILIZATION AND CURE TIME),Complete,GCS Storage - 2F -SUW-FAB120506,,,,,,,,2025-10-10 08:00,2025-10-10 17:00,2025-10-10 08:00,2025-10-10 17:00
FAB120507A-90,DOOR FRAME GROUT (RFI1416) - FAB120507A - P1 (INCLUDE MOBILIZATION AND CURE TIME),Complete,Utility Rm - 2F -SUW-FAB120507,,,,,,,,2025-11-12 08:00,2025-11-12 17:00,2025-11-12 08:00,2025-11-12 17:00
FAB120507B-90,DOOR FRAME GROUT (RFI1416) - FAB120507B - P1 (INCLUDE MOBILIZATION AND CURE TIME),Not Started,Utility Rm - 2F -SUW-FAB120507,,,,,,,,2025-12-02 08:00,2025-12-02 17:00,,
FAB126507A-01,IMPACT - INSTALL/REWORK DRYWALL FRAMING AROUND DOORS - FAB126507A,Complete,Duct Shaft - 2F -SUE-FAB126507,,,,,,,,2025-02-13 08:00,2025-02-21 17:00,2025-02-26 08:00,2025-03-06 17:00
FAB126507A-03,INSTALL DOOR FRAMES - FAB126507A,Complete,Duct Shaft - 2F -SUE-FAB126507,,,,,,,,2025-08-18 13:00,2025-08-19 12:00,2025-03-06 00:00,2025-03-06 16:00
FAB126507A-04,INSTALL DOOR & HARDWARE - FAB126507A,Active,Duct Shaft - 2F -SUE-FAB126507,,,,,,,,2025-05-08 08:00,2025-05-14 17:00,2025-05-08 08:00,
FAB126507A-05,PAINT & PROTECT DOORS & FRAMES -  FAB120507C,Not Started,Duct Shaft - 2F -SUE-FAB126507,,,,,,,,2026-02-16 08:00,2026-02-19 15:00,,
FAB122104A-01,IMPACT - INSTALL/REWORK DRYWALL FRAMING AROUND DOORS - FAB122104A,Complete,Pedestrian Walkway - 2F -FIZ-FAB122105,,,,,,,,2025-05-01 08:00,2025-05-09 17:00,2025-03-04 08:00,2025-03-13 08:00
FAB122104A-03,INSTALL DOOR FRAMES - FAB122104A,Complete,Pedestrian Walkway - 2F -FIZ-FAB122105,,,,,,,,2025-08-26 08:00,2025-08-26 17:00,2025-03-13 00:00,2025-03-13 16:00
FAB122104A-04,INSTALL DOOR & HARDWARE - FAB122104A,Not Started,Pedestrian Walkway - 2F -FIZ-FAB122105,,,,,,,,2025-11-21 08:00,2025-11-27 17:00,,
FAB122104A-05,PAINT & PROTECT DOORS & FRAMES -  FAB122104A,Not Started,Pedestrian Walkway - 2F -FIZ-FAB122105,,,,,,,,2026-02-16 08:00,2026-02-19 15:00,,
FAB110515A-01,IMPACT - INSTALL/REWORK DRYWALL FRAMING AROUND DOORS - FAB110515A,Complete,Vestibule - 1F -SUW-FAB110515,,,,,,,,2025-03-10 08:00,2025-03-18 17:00,2025-03-10 08:00,2025-03-18 17:00
FAB110515A-03,INSTALL DOOR FRAMES - FAB110515A,Complete,Vestibule - 1F -SUW-FAB110515,,,,,,,,2025-05-06 08:00,2025-05-06 17:00,2025-03-18 08:00,2025-03-18 17:00
FAB110515A-04,DOOR INSTALL - FAB110515A,Complete,Vestibule - 1F -SUW-FAB110515,,,,,,,,2025-08-20 08:00,2025-08-20 17:00,2025-08-20 08:00,2025-08-20 17:00
FAB110515A-05,PAINT & PROTECT DOORS & FRAMES - FAB110515A,Complete,Vestibule - 1F -SUW-FAB110515,,,,,,,,2025-10-14 08:00,2025-10-17 17:00,2025-10-14 08:00,2025-10-17 17:00
FAB110515A-06,INSTALL DOOR HARDWARE - FAB110515A,Not Started,Vestibule - 1F -SUW-FAB110515,,,,,,,,2025-11-21 08:00,2025-11-26 17:00,,
FAB110112A-03,INSTALL DOOR FRAMES - FAB110112A,Complete,Duct Shaft Vestibule - 1F -SUW-FAB110108,,,,,,,,2025-06-05 13:00,2025-06-06 12:00,2025-04-10 00:00,2025-04-10 16:00
FAB110112A-04,INSTALL DOOR & HARDWARE - FAB110112A,Active,Duct Shaft Vestibule - 1F -SUW-FAB110108,,,,,,,,2025-07-08 08:00,2025-07-14 17:00,2025-07-08 08:00,
FAB110112A-05,PAINT & PROTECT DOORS & FRAMES - FAB110112A,Not Started,Duct Shaft Vestibule - 1F -SUW-FAB110108,,,,,,,,2026-02-16 08:00,2026-02-19 15:00,,
FAB126510A-01,IMPACT - INSTALL/REWORK DRYWALL FRAMING AROUND DOORS - FAB126510A,Complete,Duct Shaft - 2F -SUE-FAB126510,,,,,,,,2025-02-13 08:00,2025-02-21 17:00,2025-04-28 08:00,2025-05-06 17:00
FAB126510A-03,INSTALL DOOR FRAMES - FAB126510A,Complete,Duct Shaft - 2F -SUE-FAB126510,,,,,,,,2025-08-18 13:00,2025-08-19 12:00,2025-05-06 00:00,2025-05-06 16:00
FAB126510A-04,INSTALL DOOR & HARDWARE - FAB126510A,Not Started,Duct Shaft - 2F -SUE-FAB126510,,,,,,,,2025-11-21 08:00,2025-11-27 17:00,,
FAB126510A-05,PAINT & PROTECT DOORS & FRAMES -  FAB126510A,Not Started,Duct Shaft - 2F -SUE-FAB126510,,,,,,,,2026-02-16 08:00,2026-02-19 15:00,,
FAB110310A-01,IMPACT - INSTALL/REWORK DRYWALL FRAMING AROUND DOORS - FAB110310A,Complete,Duct Shaft Vestibule - 1F -SUW-FAB110310,,,,,,,,2025-05-23 08:00,2025-06-02 17:00,2025-05-26 08:00,2025-06-03 17:00
FAB110310A-03,INSTALL DOOR FRAMES - FAB110310A,Complete,Duct Shaft Vestibule - 1F -SUW-FAB110310,,,,,,,,2025-05-27 08:00,2025-05-27 17:00,2025-06-03 08:00,2025-06-03 17:00
FAB110310A-04,INSTALL DOOR & HARDWARE - FAB110310A,Active,Duct Shaft Vestibule - 1F -SUW-FAB110310,,,,,,,,2025-09-08 08:00,2025-09-12 17:00,2025-09-08 08:00,
FAB110310A-05,PAINT & PROTECT DOORS & FRAMES - FAB110310A,Not Started,Duct Shaft Vestibule - 1F -SUW-FAB110310,,,,,,,,2026-02-16 08:00,2026-02-19 17:00,,
FAB132101C-01,IMPACT - INSTALL/REWORK DRYWALL FRAMING AROUND DOORS - FAB132101C,Complete,Unassigned - 3F - FIZ-FAB134102,,,,,,,,2025-05-29 08:00,2025-06-06 17:00,2025-05-29 08:00,2025-06-06 17:00
FAB132101C-03,INSTALL DOOR FRAMES - FAB132101C,Complete,Unassigned - 3F - FIZ-FAB134102,,,,,,,,2025-06-06 08:00,2025-06-06 17:00,2025-06-06 08:00,2025-06-06 17:00
FAB132101C-04,INSTALL DOOR & HARDWARE - FAB132101C,Active,Unassigned - 3F - FIZ-FAB134102,,,,,,,,2025-11-18 08:00,2025-11-24 17:00,2025-11-18 08:00,
FAB132101C-05,PAINT & PROTECT DOORS & FRAMES - FAB132101C,Not Started,Unassigned - 3F - FIZ-FAB134102,,,,,,,,2026-02-16 08:00,2026-02-19 17:00,,
FAB146109A-01,IMPACT - INSTALL/REWORK DRYWALL FRAMING AROUND DOORS - FAB146109A,Complete,Elevator Hall 22 - 4F -SUE-FAB146105,,,,,,,,2025-07-01 08:00,2025-07-09 17:00,2025-07-01 08:00,2025-07-09 17:00
FAB146109A-03,INSTALL DOOR FRAMES - FAB146109A,Complete,Elevator Hall 22 - 4F -SUE-FAB146105,,,,,,,,2025-07-09 08:00,2025-07-09 17:00,2025-07-09 08:00,2025-07-09 17:00
FAB146109A-04,INSTALL DOOR & HARDWARE - FAB146109A,Active,Elevator Hall 22 - 4F -SUE-FAB146105,,,,,,,,2025-11-10 08:00,2025-11-14 17:00,2025-11-10 08:00,
FAB146109A-05,PAINT & PROTECT DOORS & FRAMES - FAB146109A,Not Started,Elevator Hall 22 - 4F -SUE-FAB146105,,,,,,,,2026-02-16 08:00,2026-02-19 15:00,,
FAB120108A-03,INSTALL DOOR FRAME BY SECAI - FAB120108A HANDED OVER ON 06/27,Active,Air Lock 1 - 2F -SUW-FAB120108,,,,,,,,2025-06-27 08:00,2025-07-31 17:00,2025-06-27 08:00,
FAB120108E-03,INSTALL DOOR FRAME BY SECAI - FAB120108E HANDED OVER ON 08/29,Active,Air Lock 1 - 2F -SUW-FAB120108,,,,,,,,2025-08-29 08:00,2025-08-29 17:00,2025-08-29 08:00,
FAB120303C-03,INSTALL DOOR FRAMES - FAB120303C,Complete,Air Lock 3 - 2F -SUW-FAB120303,,,,,,,,2025-08-22 08:00,2025-08-22 17:00,2025-07-21 08:00,2025-07-21 17:00
FAB120503B-03,INSTALL DOOR FRAME BY SECAI - FAB120503B HANDED OVER ON 08/29,Active,Air lock 5 - 2F -SUW-FAB120503,,,,,,,,2025-08-29 08:00,2025-08-29 17:00,2025-08-29 08:00,
FAB120503E-03,INSTALL DOOR FRAMES - FAB120503E,Complete,Air lock 5 - 2F -SUW-FAB120503,,,,,,,,2025-08-01 08:00,2025-08-01 17:00,2025-08-01 08:00,2025-08-01 17:00
FAB136505B-03,INSTALL DOOR FRAMES - FAB136505B,Complete,Vestibule 18 - 3F -SUE-FAB136505,,,,,,,,2025-05-27 08:00,2025-06-04 17:00,2025-01-16 08:00,2025-01-16 16:00
FAB116308A-03,INSTALL DOOR FRAMES - FAB116308A,Complete,Mechanical Rm 3 - 1F -SUE-FAB116308,,,,,,,,2025-08-21 08:00,2025-08-21 17:00,2025-08-21 08:00,2025-08-21 17:00
FAB110304A-60,FRAME HANDED OVER TO SECAI 07/18 - FAB110304A,Complete,Air Lock 3 - 1F -SUW-FAB110304,,,,,,,,2025-07-18 08:00,2025-07-18 17:00,2025-07-18 08:00,2025-07-18 17:00
FAB110409D-40,DOOR FRAME HANDED OVER TO SEC AI 07/18- FAB110409D,Complete,W-H3PO4 RM (N/25.4-26.2) - 1F -SUW-FAB110409,,,,,,,,2025-07-18 08:00,2025-07-18 17:00,2025-07-18 08:00,2025-07-18 17:00
FAB116301B-25,DOOR FRAME HANDED OVER TO SECAI 07/18 - FAB116301B,Complete,Air Lock 20 - 1F -SUE-FAB116301,,,,,,,,2025-07-18 08:00,2025-07-18 17:00,2025-07-18 08:00,2025-07-18 17:00
FAB116301B-03,INSTALL DOOR FRAME BY SECAI - FAB116301B HANDED OVER 07/18,Complete,Air Lock 20 - 1F -SUE-FAB116301,,,,,,,,2025-07-18 08:00,2025-07-18 17:00,2025-07-18 08:00,2025-09-22 17:00
MS.OOS.5440,SECAI - DRYWALL & DOORS - IMPACTS - START - ReMob Out of Seq Remaining completion list,Complete,Remobilization and Out-of-Sequence Completion List - DD07-10-2025,Key Milestones,Key Milestones,Milestones,,SECAI,Key Milestones,PROJECT MILESTONES,2024-12-02 07:00,2024-12-02 07:00,2024-12-02 07:00,2024-12-02 07:00
FAB110514A--03,INSTALL DOOR FRAMES - FAB110514A,Complete,Duct Shaft - 1F -SUW-FAB110306,,,,,,,,2025-06-04 08:00,2025-06-04 17:00,2025-06-04 08:00,2025-06-04 17:00
FAB110122A-21,DOOR PREP - FAB110122A,Complete,Duct Shaft - 1F -SUW-FAB110206,,,,,,,,2025-08-07 08:00,2025-08-13 17:00,2025-07-24 08:00,2025-07-25 17:00
FAB110206A-21,DOOR PREP - FAB110206A,Complete,Duct Shaft - 1F -SUW-FAB110206,,,,,,,,2025-07-25 08:00,2025-07-30 15:00,2025-07-24 08:00,2025-07-29 17:00
FAB110306A-21,DOOR PREP - FAB110306A,Complete,Duct Shaft - 1F -SUW-FAB110306,,,,,,,,2025-07-25 08:00,2025-07-30 17:00,2025-07-24 08:00,2025-07-24 17:00
A2020,IMPACT - SECAI MEP TRADE DAMAGE - DOOR FRAME RE-ALIGNMENT - notice sent,Complete,Remobilization and Out-of-Sequence Completion List - DD07-10-2025,,,,,,,,2025-06-20 08:00,2025-07-21 17:00,2025-06-20 08:00,2025-09-01 17:00
FAB110206A-03,INSTALL DOOR FRAMES - FAB110206A,Complete,Duct Shaft - 1F -SUW-FAB110206,,,,,,,,2025-07-23 08:00,2025-07-23 17:00,2025-07-23 08:00,2025-07-23 17:00
FAB110206B-03,INSTALL DOOR FRAMES - FAB110206B,Complete,Duct Shaft - 1F -SUW-FAB110206,,,,,,,,2025-07-29 08:00,2025-07-29 17:00,2025-07-29 08:00,2025-07-29 17:00
FAB110206B-21,DOOR PREP - FAB110206B,Complete,Duct Shaft - 1F -SUW-FAB110206,,,,,,,,2025-07-30 08:00,2025-08-12 17:00,2025-07-30 08:00,2025-08-18 08:00
ZX-19925,Complete Drywall & Inspect - Duct Shaft - 3F-FAB130104,Complete,Duct Shaft - 3F -SUW-FAB130104,,,,,,,,2025-09-05 08:00,2025-09-08 17:00,2025-09-05 08:00,2025-09-08 17:00
FAB130104A-01,IMPACT - INSTALL/REWORK DRYWALL FRAMING AROUND DOORS - FAB130104A,Complete,Duct Shaft - 3F -SUW-FAB130104,,,,,,,,2025-09-22 10:00,2025-10-01 10:00,2025-01-09 10:00,2025-01-20 10:00
FAB130104A-03,INSTALL DOOR FRAMES - FAB130104A,Complete,Duct Shaft - 3F -SUW-FAB130104,,,,,,,,2025-07-23 13:00,2025-07-24 12:00,2025-01-20 00:00,2025-01-20 12:00
FAB130104A-04,INSTALL DOOR & HARDWARE - FAB130104A,Not Started,Duct Shaft - 3F -SUW-FAB130104,,,,,,,,2025-11-21 08:00,2025-11-27 17:00,,
FAB130104A-05,PAINT & PROTECT DOORS & FRAMES - FAB130104A,Not Started,Duct Shaft - 3F -SUW-FAB130104,,,,,,,,2026-02-16 08:00,2026-02-19 15:00,,
ZX-19955,Complete Drywall & Inspect -TQR LAB - 3F-FAB132102,Complete,TQR LAB - 3F -FIZ-FAB132102,,,,,,,,2025-09-05 08:00,2025-09-08 17:00,2025-09-05 08:00,2025-09-08 17:00
FAB132102C-01,IMPACT - INSTALL/REWORK DRYWALL FRAMING AROUND DOORS - FAB132102C,Complete,TQR LAB - 3F -FIZ-FAB132102,,,,,,,,2025-05-29 08:00,2025-06-06 17:00,2025-01-10 08:00,2025-01-20 17:00
FAB132102C-03,INSTALL DOOR FRAMES - FAB132102C,Complete,TQR LAB - 3F -FIZ-FAB132102,,,,,,,,2025-06-06 08:00,2025-06-06 17:00,2025-01-20 08:00,2025-01-20 17:00
FAB132102C-04,INSTALL DOOR & HARDWARE - FAB132102C,Not Started,TQR LAB - 3F -FIZ-FAB132102,,,,,,,,2025-11-21 08:00,2025-11-27 17:00,,
FAB132102A-03,INSTALL DOOR FRAMES - FAB132102A,Not Started,TQR LAB - 3F -FIZ-FAB132102,,,,,,,,2025-11-28 08:00,2025-11-28 17:00,,
FAB132102A-04,INSTALL DOOR & HARDWARE - FAB132102A,Not Started,TQR LAB - 3F -FIZ-FAB132102,,,,,,,,2025-12-01 08:00,2025-12-05 17:00,,
FAB132102A-05,PAINT & PROTECT DOORS & FRAMES -  FAB132102A,Not Started,TQR LAB - 3F -FIZ-FAB132102,,,,,,,,2026-02-16 08:00,2026-02-19 17:00,,
ZX-19985,Complete Drywall & Inspect -TQR LAB Airlock - 3F-FAB132103,Complete,TQR LAB AIR LOCK - 3F -FIZ-FAB132103,,,,,,,,2025-09-05 08:00,2025-09-08 17:00,2025-09-05 08:00,2025-09-08 17:00
FAB132101D-01,IMPACT - INSTALL/REWORK DRYWALL FRAMING AROUND DOORS - FAB132101D,Complete,TQR LAB AIR LOCK - 3F -FIZ-FAB132103,,,,,,,,2025-05-29 08:00,2025-06-06 17:00,2025-06-09 08:00,2025-06-17 17:00
FAB132101D-03,INSTALL DOOR FRAMES - FAB132101D,Complete,TQR LAB AIR LOCK - 3F -FIZ-FAB132103,,,,,,,,2025-06-17 08:00,2025-06-17 17:00,2025-06-17 08:00,2025-06-17 17:00
FAB132101D-04,INSTALL DOOR & HARDWARE - FAB132101D,Not Started,TQR LAB AIR LOCK - 3F -FIZ-FAB132103,,,,,,,,2025-11-21 08:00,2025-11-27 17:00,,
FAB132101D-05,PAINT & PROTECT DOORS & FRAMES -  FAB132101D,Not Started,TQR LAB AIR LOCK - 3F -FIZ-FAB132103,,,,,,,,2026-02-16 08:00,2026-02-19 17:00,,
FAB132103A-01,IMPACT - INSTALL/REWORK DRYWALL FRAMING AROUND DOORS - FAB132103A,Complete,TQR LAB AIR LOCK - 3F -FIZ-FAB132103,,,,,,,,2025-09-03 08:00,2025-09-04 17:00,2025-09-03 08:00,2025-09-04 17:00
FAB132103A-03,INSTALL DOOR FRAMES - FAB132103A,Complete,TQR LAB AIR LOCK - 3F -FIZ-FAB132103,,,,,,,,2025-09-05 08:00,2025-09-05 17:00,2025-09-05 08:00,2025-09-05 17:00
FAB132103A-04,INSTALL DOOR & HARDWARE - FAB132103A,Not Started,TQR LAB AIR LOCK - 3F -FIZ-FAB132103,,,,,,,,2025-11-21 08:00,2025-11-27 17:00,,
FAB132103A-05,PAINT & PROTECT DOORS & FRAMES - FAB132103A,Not Started,TQR LAB AIR LOCK - 3F -FIZ-FAB132103,,,,,,,,2026-02-16 08:00,2026-02-19 17:00,,
ZX-20015,"SECAI TURNOVER FOR ACELERATION - Drywall, CJ & FC + Inspect - Stair #50 SUW- 1F- FAB1-ST50 BAKER/DESCOPE",Complete,Stair 50 - 1F -SUW-FAB1-ST50,,,,,,,,2025-06-10 08:00,2025-06-23 17:00,2025-06-10 08:00,2025-06-10 16:00
FAB1-ST50A-04,INSTALL DOOR & HARDWARE - FAB1-ST50A,Active,Stair 50 - 1F -SUW-FAB1-ST50,,,,,,,,2025-10-17 08:00,2025-10-23 17:00,2025-10-17 08:00,
FAB1-ST50A-05,PAINT & PROTECT DOORS & FRAMES - FAB1-ST50A,Not Started,Stair 50 - 1F -SUW-FAB1-ST50,,,,,,,,2026-02-16 08:00,2026-02-19 17:00,,
FAB1-ST50A-03,INSTALL DOOR FRAMES - FAB1-ST50A,Complete,Stair 50 - 1F -SUW-FAB1-ST50,,,,,,,,2025-09-25 08:00,2025-09-25 17:00,2025-09-25 08:00,2025-09-25 17:00
ZX-20055,"SECAI TURNOVER FOR ACELERATION - Drywall, CJ & FC + Inspect - Stair #50 SUW- 2F- FAB1-ST50 BAKER/DESCOPE",Complete,Stair 50 - 2F-SUW-FAB1-ST50,,,,,,,,2025-07-17 08:00,2025-07-30 17:00,2025-06-06 08:00,2025-06-06 16:00
FAB1-ST50B-03,INSTALL DOOR FRAMES - FAB1-ST50B,Complete,Stair 50 - 2F-SUW-FAB1-ST50,,,,,,,,2025-10-03 08:00,2025-10-03 17:00,2025-10-03 08:00,2025-10-03 17:00
FAB1-ST50B-05,PAINT & PROTECT DOORS & FRAMES - FAB1-ST50B,Not Started,Stair 50 - 2F-SUW-FAB1-ST50,,,,,,,,2026-02-16 08:00,2026-02-19 17:00,,
ZX-20085,"SECAI TURNOVER FOR ACELERATION - Drywall, CJ & FC + Inspect - Stair #50 SUW - 3F FAB1-ST50 BAKER/DESCOPE",Complete,Stair 50 - 3F-SUW-FAB1-ST50,,,,,,,,2025-06-10 08:00,2025-06-23 17:00,2025-06-10 08:00,2025-06-10 16:00
FAB1-ST50F-04,INSTALL DOOR & HARDWARE - FAB1-ST50F,Not Started,Stair 50 - 3F-SUW-FAB1-ST50,,,,,,,,2025-11-21 08:00,2025-11-27 17:00,,
FAB1-ST50F-05,PAINT & PROTECT DOORS & FRAMES - FAB1-ST50F,Not Started,Stair 50 - 3F-SUW-FAB1-ST50,,,,,,,,2026-02-16 08:00,2026-02-19 17:00,,
FAB1-ST19B-03,INSTALL DOOR FRAME BY SECAI- FAB1-ST19B HANDED OVER ON 08/29,Complete,Stair #19 - 2F -SUE-FAB1-ST19,,,,,,,,2025-08-29 08:00,2025-08-29 17:00,2025-08-29 08:00,2025-09-16 17:00
FAB1-ST50B-04,INSTALL DOOR & HARDWARE - FAB1-ST50B,Active,Stair 50 - 2F-SUW-FAB1-ST50,,,,,,,,2025-10-16 08:00,2025-10-22 17:00,2025-10-16 08:00,
FAB1-ST50C-03,INSTALL DOOR FRAMES - FAB1-ST50C,Complete,Stair 50 - 2F-SUW-FAB1-ST50,,,,,,,,2025-03-28 08:00,2025-03-28 17:00,2025-03-28 08:00,2025-03-28 17:00
FAB1-ST50C-05,PAINT & PROTECT DOORS & FRAMES - FAB1-ST50C,Not Started,Stair 50 - 2F-SUW-FAB1-ST50,,,,,,,,2026-02-16 08:00,2026-02-19 17:00,,
FAB1-ST50C-04,INSTALL DOOR & HARDWARE - FAB1-ST50C,Active,Stair 50 - 2F-SUW-FAB1-ST50,,,,,,,,2025-11-14 08:00,2025-11-20 17:00,2025-11-14 08:00,
FAB110115A-00,IMPACT - DOOR FRAME PROCUREMENT- RE-ORDERED - FAB110115A,Complete,Elevator Mech Rm 1 - 1F -SUW-FAB110115,,,,,,,,2025-08-18 08:00,2025-09-25 17:00,2025-08-18 08:00,2025-10-10 17:00
FAB116513E-25,DOOR FRAME HANDED OVER TO SECAI ON 07/17- FAB116513E,Complete,Air Lock 18 - 1F -SUE-FAB116513,,,,,,,,2025-07-17 08:00,2025-07-17 17:00,2025-07-17 08:00,2025-07-17 17:00
FAB116513G-25,DOOR FRAME HANDED OVER TO SECAI ON 07/17 - FAB116513G,Complete,Air Lock 18 - 1F -SUE-FAB116513,,,,,,,,2025-07-17 08:00,2025-07-17 17:00,2025-07-17 08:00,2025-07-17 17:00
ZX-20135,Complete Drywall & Inspect - Thermohygrostat Rm - 2F-FAB122104,Complete,Thermohygrostat Rm - 2F -FIZ-FAB122104,,,,,,,,2025-07-07 08:00,2025-07-18 17:00,2025-07-07 08:00,2025-07-17 17:00
ZX-20175,"ELEVATOR FRONT Complete Drywall, Fire Caulk and Inspect - Elevator #19 - 3F-FAB1-EL19",Complete,Elevator 19 - 3F -SUE-FAB1-EL19,,,,,,,,2025-09-05 08:00,2025-09-05 08:00,2025-09-05 08:00,2025-09-05 08:00
ZX-20235,SECAI TOOK OVER ACCELERATION - Remaining CEILING Drywall & Inspect - Pedestrian Walkway - 2F-FAB122105,Complete,Pedestrian Walkway - 2F -FIZ-FAB122105,,,,,,,,2025-11-06 08:00,2025-11-12 17:00,2025-11-06 08:00,2025-11-06 17:00
FAB1-ST50F-03,INSTALL DOOR FRAMES - FAB1-ST50F,Complete,Stair 50 - 3F-SUW-FAB1-ST50,,,,,,,,2025-10-28 08:00,2025-10-28 17:00,2025-10-28 08:00,2025-10-28 17:00
FAB122104B-03,INSTALL DOOR FRAMES - FAB122104B,Complete,Thermohygrostat Rm - 2F -FIZ-FAB122104,,,,,,,,2025-11-13 08:00,2025-11-13 17:00,2025-11-13 08:00,2025-11-13 17:00
FAB122104B-04,INSTALL DOOR & HARDWARE - FAB122104B,Not Started,Thermohygrostat Rm - 2F -FIZ-FAB122104,,,,,,,,2025-11-21 08:00,2025-11-27 17:00,,
FAB122104B-05,PAINT & PROTECT DOORS & FRAMES -  FAB122104B,Not Started,Thermohygrostat Rm - 2F -FIZ-FAB122104,,,,,,,,2026-02-16 08:00,2026-02-19 15:00,,
FAB122103B-03,INSTALL DOOR FRAMES - FAB122103B,Not Started,Thermohygrostat Rm - 2F -FIZ-FAB122103,,,,,,,,2025-11-21 08:00,2025-11-21 17:00,,
FAB122103B-04,INSTALL DOOR & HARDWARE - FAB122103B,Not Started,Thermohygrostat Rm - 2F -FIZ-FAB122103,,,,,,,,2025-11-24 08:00,2025-11-28 17:00,,
FAB122103B-05,PAINT & PROTECT DOORS & FRAMES -  FAB122103B,Not Started,Thermohygrostat Rm - 2F -FIZ-FAB122103,,,,,,,,2026-02-16 08:00,2026-02-19 15:00,,
ZX-20285,Complete Drywall & Inspect - Duct Shaft Vestibule - 1F-SUE-FAB116412,Complete,Duct Shaft Vestibule - 1F -SUE-FAB116412,,,,,,,,2025-09-23 08:00,2025-09-29 17:00,2025-09-23 08:00,2025-09-29 17:00
FAB116412B-01,IMPACT - INSTALL/REWORK DRYWALL FRAMING AROUND DOORS - FAB116412B,Complete,Duct Shaft Vestibule - 1F -SUE-FAB116412,,,,,,,,2025-03-10 08:00,2025-03-18 17:00,2025-03-10 08:00,2025-03-18 17:00
FAB116412B-03,INSTALL DOOR FRAMES - FAB116412B,Complete,Duct Shaft Vestibule - 1F -SUE-FAB116412,,,,,,,,2025-03-18 08:00,2025-03-18 17:00,2025-03-18 08:00,2025-03-18 17:00
FAB116412B-04,INSTALL DOOR & HARDWARE - FAB116412B,Active,Duct Shaft Vestibule - 1F -SUE-FAB116412,,,,,,,,2025-10-06 08:00,2025-10-10 17:00,2025-10-06 08:00,
FAB116412B-05,PAINT & PROTECT DOORS & FRAMES - FAB116412B,Not Started,Duct Shaft Vestibule - 1F -SUE-FAB116412,,,,,,,,2026-02-16 08:00,2026-02-19 15:00,,
FAB112158B-03,INSTALL DOOR FRAMES - FAB112158B,Complete,Slurry Stock - 1F -FAB-FAB112158,,,,,,,,2025-03-19 08:00,2025-03-19 17:00,2025-03-19 08:00,2025-03-19 17:00
FAB112158B-04,INSTALL DOOR & HARDWARE - FAB112158B,Active,Slurry Stock - 1F -FAB-FAB112158,,,,,,,,2025-11-03 08:00,2025-11-07 17:00,2025-11-03 08:00,
FAB112158B-05,PAINT & PROTECT DOORS & FRAMES - FAB112158B,Not Started,Slurry Stock - 1F -FAB-FAB112158,,,,,,,,2026-02-16 08:00,2026-02-19 15:00,,
FAB1-ST50E-04,INSTALL DOOR & HARDWARE - FAB1-ST50E,Not Started,Stair 50 - 3F-SUW-FAB1-ST50,,,,,,,,2025-11-21 08:00,2025-11-27 17:00,,
FAB1-ST50E-05,PAINT & PROTECT DOORS & FRAMES - FAB1-ST50E,Not Started,Stair 50 - 3F-SUW-FAB1-ST50,,,,,,,,2026-02-16 08:00,2026-02-19 17:00,,
FAB1-ST50E-03,INSTALL DOOR FRAMES - FAB1-ST50E,Complete,Stair 50 - 3F-SUW-FAB1-ST50,,,,,,,,2025-02-13 08:00,2025-02-13 17:00,2025-02-13 08:00,2025-02-13 17:00
ZX-20325,"SECAI TURNOVER FOR ACELERATION - Drywall, CJ & FC + Inspect-SO - 2F-SUE-FAB122156",Complete,Slurry Office-  2F -FAB-FAB122156,,,,,,,,2025-06-27 08:00,2025-07-10 17:00,2025-06-27 08:00,2025-06-27 17:00
FAB122156B-03,INSTALL DOOR FRAMES - FAB122156B,Complete,Slurry Office-  2F -FAB-FAB122156,,,,,,,,2025-04-11 08:00,2025-04-11 17:00,2025-04-11 08:00,2025-04-11 17:00
FAB122156B-04,INSTALL DOOR & HARDWARE - FAB122156B,Active,Slurry Office-  2F -FAB-FAB122156,,,,,,,,2025-11-11 08:00,2025-11-17 17:00,2025-11-11 08:00,
FAB122156B-05,PAINT & PROTECT DOORS & FRAMES -  FAB122156B,Not Started,Slurry Office-  2F -FAB-FAB122156,,,,,,,,2026-02-16 08:00,2026-02-19 15:00,,
FAB1-ST01B-01,IMPACT - INSTALL/REWORK DRYWALL FRAMING AROUND DOORS - FAB1-ST01B,Complete,Stair 1 - 2F -SUW-FAB1-ST01,,,,,,,,2025-05-08 08:00,2025-05-16 17:00,2025-05-08 08:00,2025-05-16 17:00
FAB1-ST01B-03,INSTALL DOOR FRAMES - FAB1-ST01B,Complete,Stair 1 - 2F -SUW-FAB1-ST01,,,,,,,,2025-05-16 13:00,2025-05-19 12:00,2025-05-16 13:00,2025-05-19 12:00
FAB1-ST01B-04,INSTALL DOOR & HARDWARE - FAB1-ST01B,Active,Stair 1 - 2F -SUW-FAB1-ST01,,,,,,,,2025-11-05 08:00,2025-11-11 17:00,2025-11-05 08:00,
FAB1-ST01B-05,PAINT & PROTECT DOORS & FRAMES - FAB1-ST01B,Not Started,Stair 1 - 2F -SUW-FAB1-ST01,,,,,,,,2026-02-16 08:00,2026-02-19 15:00,,
FAB1-ST01A-03,INSTALL DOOR FRAMES - FAB1-ST01A,Complete,Stair 1 - 1F -SUW-FAB1-ST01,,,,,,,,2025-05-05 08:00,2025-05-05 17:00,2025-05-05 08:00,2025-05-05 17:00
FAB1-ST01A-04,INSTALL DOOR & HARDWARE - FAB1-ST01A,Active,Stair 1 - 1F -SUW-FAB1-ST01,,,,,,,,2025-09-18 08:00,2025-09-24 17:00,2025-09-18 08:00,
FAB1-ST01A-05,PAINT & PROTECT DOORS & FRAMES - FAB1-ST01A,Not Started,Stair 1 - 1F -SUW-FAB1-ST01,,,,,,,,2026-02-16 08:00,2026-02-20 17:00,,
FAB1-ST01D-04,INSTALL DOOR & HARDWARE - FAB1-ST01D,Not Started,Elevator Hall 1 - 4F -SUW-FAB140101,,,,,,,,2025-11-21 08:00,2025-11-27 17:00,,
FAB1-ST01D-03,INSTALL DOOR FRAMES - FAB1-ST01D,Complete,Elevator Hall 1 - 4F -SUW-FAB140101,,,,,,,,2025-10-21 08:00,2025-10-21 17:00,2025-10-21 08:00,2025-10-21 17:00
FAB1-ST01D-05,PAINT & PROTECT DOORS & FRAMES - FAB1-ST01D,Not Started,Elevator Hall 1 - 4F -SUW-FAB140101,,,,,,,,2026-02-16 08:00,2026-02-19 15:00,,
FAB130117Q-03,INSTALL DOOR FRAMES - FAB130117Q,Complete,FA Lab - 3F -SUW-FAB130117,,,,,,,,2025-07-07 08:00,2025-07-07 17:00,2025-07-07 08:00,2025-07-07 17:00
FAB130117Q-04,INSTALL DOOR & HARDWARE - FAB130117Q,Not Started,FA Lab - 3F -SUW-FAB130117,,,,,,,,2025-11-21 08:00,2025-11-27 17:00,,
FAB130117Q-05,PAINT & PROTECT DOORS & FRAMES - FAB130117Q,Not Started,FA Lab - 3F -SUW-FAB130117,,,,,,,,2026-02-16 08:00,2026-02-19 17:00,,
FAB134105D-60,DOOR FRAME HANDED OVER TO SECAI 07/18 - FAB134105D,Complete,S/L Entrance - 3F -FIZ-FAB134105,,,,,,,,2025-07-17 13:00,2025-07-18 12:00,2025-07-17 13:00,2025-07-18 12:00
FAB134105D-03,INSTALL DOOR FRAME BY SECAI - FAB134105D HANDED OVER 07/18,Complete,S/L Entrance - 3F -FIZ-FAB134105,,,,,,,,2025-07-17 13:00,2025-08-07 12:00,2025-07-18 13:00,2025-08-12 08:00
FAB134105D-04,INSTALL DOOR & HARDWARE - FAB134105D,Active,S/L Entrance - 3F -FIZ-FAB134105,,,,,,,,2025-08-12 08:00,2025-08-18 17:00,2025-08-12 08:00,
FAB134105D-05,PAINT & PROTECT DOORS & FRAMES - FAB134105D,Not Started,S/L Entrance - 3F -FIZ-FAB134105,,,,,,,,2026-02-16 08:00,2026-02-19 15:00,,
FAB110404A-03,INSTALL DOOR FRAME BY SECAI HANDED OVER 07/18 - FAB110404A,Complete,W-CuS04-ACQC RM (N/24.3-25) - 1F- SUW-FAB110404,,,,,,,,2025-07-18 13:00,2025-08-22 12:00,2025-07-18 13:00,2025-09-11 17:00
FAB110404A-04,INSTALL DOOR & HARDWARE - FAB110404A,Active,W-CuS04-ACQC RM (N/24.3-25) - 1F- SUW-FAB110404,,,,,,,,2025-11-06 08:00,2025-11-12 17:00,2025-11-06 08:00,
FAB110404A-05,PAINT & PROTECT DOORS & FRAMES - FAB110404A,Not Started,W-CuS04-ACQC RM (N/24.3-25) - 1F- SUW-FAB110404,,,,,,,,2026-02-16 08:00,2026-02-19 15:00,,
FAB110404A-60,DOOR FRAME HANDED OVER TO SECAI ON 07/18 - FAB110404A,Complete,W-CuS04-ACQC RM (N/24.3-25) - 1F- SUW-FAB110404,,,,,,,,2025-07-17 13:00,2025-07-18 12:00,2025-07-17 13:00,2025-07-18 12:00
FAB110404D-03,INSTALL DOOR FRAME BY SECAI HANDED OVER 07/18 - FAB110404D,Complete,W-CuS04-ACQC RM (N/24.3-25) - 1F- SUW-FAB110404,,,,,,,,2025-07-18 13:00,2025-08-22 12:00,2025-07-18 13:00,2025-09-11 17:00
FAB110404D-04,INSTALL DOOR & HARDWARE - FAB110404D,Not Started,W-CuS04-ACQC RM (N/24.3-25) - 1F- SUW-FAB110404,,,,,,,,2025-11-28 08:00,2025-12-04 17:00,,
FAB110404D-05,PAINT & PROTECT DOORS & FRAMES - FAB110404D,Not Started,W-CuS04-ACQC RM (N/24.3-25) - 1F- SUW-FAB110404,,,,,,,,2026-02-16 08:00,2026-02-19 15:00,,
FAB110404D-60,DOOR FRAME HANDED OVER TO SECAI ON 07/18 - FAB110404D,Complete,W-CuS04-ACQC RM (N/24.3-25) - 1F- SUW-FAB110404,,,,,,,,2025-07-17 13:00,2025-07-18 12:00,2025-07-17 13:00,2025-07-18 12:00
FAB116104A-100,IMPACT SECAI TEMP POWER PREVENTING FRAME INSTALL- FAB116104A,Complete,OAC Mechanical RM - 1F -FIZ-FAB116101,,,,,,,,2025-06-02 08:00,2025-07-11 17:00,2025-06-02 08:00,2025-08-06 17:00
FAB120507A-100,IMPACT - SECAI RFI 11447 MISSING VERTICAL CLADING STEEL FOR DOOR JAMB - FAB120507A,Complete,Utility Rm - 2F -SUW-FAB120507,,,,,,,,2025-07-01 08:00,2025-08-04 17:00,2025-07-01 08:00,2025-11-10 17:00
ZX-20355,Complete Drywall & Inspect - Pedestrian Walkway-1F-FAB112104 - MKMARLOW,Complete,Pedestrian Walkway - 1F -FIZ-FAB112104,,,,,,,,2025-08-25 08:00,2025-09-05 17:00,2025-08-25 08:00,2025-09-22 08:00
FAB112158A-03,INSTALL DOOR FRAME BY SECAI - FAB112158A HANDED OVER ON 08/13,Complete,Slurry Stock - 1F -FAB-FAB112158,,,,,,,,2025-08-26 08:00,2025-09-15 17:00,2025-08-14 08:00,2025-08-22 17:00
FAB112158A-04,INSTALL DOOR & HARDWARE - FAB112158A,Active,Slurry Stock - 1F -FAB-FAB112158,,,,,,,,2025-09-10 08:00,2025-09-16 17:00,2025-09-10 08:00,
FAB112158A-05,PAINT & PROTECT DOORS & FRAMES - FAB112158A,Not Started,Slurry Stock - 1F -FAB-FAB112158,,,,,,,,2026-02-16 08:00,2026-02-19 15:00,,
FAB112158A-35,DOOR FRAME HANDED OVER TO SECAI 08/13 - FAB112158A,Complete,Slurry Stock - 1F -FAB-FAB112158,,,,,,,,2025-08-13 08:00,2025-08-13 17:00,2025-08-13 08:00,2025-08-13 17:00
ZX-20405,SECAI TOOK OVER FOR ACCELERATION - Complete Drywall & Inspect - Hall #19 - 3F-SUE-FAB136408,Complete,Hall 19 - 3F -SUE-FAB136408,,,,,,,,2025-10-16 08:00,2025-10-22 17:00,2025-10-22 08:00,2025-10-22 17:00
FAB112158C-03,INSTALL DOOR FRAME BY SECAI - FAB112158C HANDED OVER ON 08/13,Complete,Slurry Stock - 1F -FAB-FAB112158,,,,,,,,2025-08-26 08:00,2025-09-15 17:00,2025-08-14 08:00,2025-08-20 17:00
FAB112158C-04,INSTALL DOOR & HARDWARE - FAB112158C,Active,Slurry Stock - 1F -FAB-FAB112158,,,,,,,,2025-10-29 08:00,2025-11-04 17:00,2025-10-29 08:00,
FAB112158C-05,PAINT & PROTECT DOORS & FRAMES - FAB112158C,Not Started,Slurry Stock - 1F -FAB-FAB112158,,,,,,,,2026-02-16 08:00,2026-02-19 15:00,,
FAB112158C-35,DOOR FRAME HANDED OVER TO SECAI 08/13 - FAB112158C,Complete,Slurry Stock - 1F -FAB-FAB112158,,,,,,,,2025-08-13 08:00,2025-08-13 17:00,2025-08-13 08:00,2025-08-13 17:00
FAB1-ST19D-04,INSTALL DOOR & HARDWARE - FAB1-ST19D,Not Started,Stair 19 - 3F -SUE-FAB1-ST19,,,,,,,,2025-12-12 08:00,2025-12-18 17:00,,
FAB1-ST19D-05,PAINT & PROTECT DOORS & FRAMES - FAB1-ST19D,Not Started,Stair 19 - 3F -SUE-FAB1-ST19,,,,,,,,2026-02-16 08:00,2026-02-19 17:00,,
FAB1-ST19D-03,INSTALL DOOR FRAME BY SECAI - FAB1-ST19D,Not Started,Stair 19 - 3F -SUE-FAB1-ST19,,,,,,,,2025-11-28 08:00,2025-12-11 17:00,,
FAB1-ST19C-03,INSTALL DOOR FRAMES - FAB1-ST19C,Complete,Stair 19 - 3F -SUE-FAB1-ST19,,,,,,,,2025-10-31 08:00,2025-10-31 17:00,2025-10-31 08:00,2025-10-31 17:00
FAB1-ST19D-25,DOOR FRAME HANDED OVER TO SECAI 08/13 - FAB1-ST19D,Complete,Stair 19 - 3F -SUE-FAB1-ST19,,,,,,,,2025-08-13 08:00,2025-08-13 17:00,2025-08-13 08:00,2025-08-13 17:00
CN.SWB3.6311,IMPACT - RFI 1789 DOOR OPENING SIZE IN DWGS NOT MATCHING APPROVED SUBMITTAL - N25 - N29 - WASTE DISCHARGE CABINET,Complete,CONSTRUCTION,,SUWN-3 - 24-27,EXTERIOR SKIN,,,,,2025-06-23 07:00,2025-07-10 17:00,2025-06-17 07:00,2025-06-25 17:00
CN.SWB3.6321,IMPACT - PATRIOT WORKING OFF OF DRB11 - C&B REFABRICATION OF DOORS - LEAD TIME 8WEEKS - N25 - N29,Complete,CONSTRUCTION,,SUWN-3 - 24-27,EXTERIOR SKIN,,,,,2025-06-23 07:00,2025-07-10 17:00,2025-06-27 07:00,2025-07-23 17:00
CN.SWB3.6331,IMPACT - IOCC 1541 SUBMITTED AND APPROVAL FOR REPLACING CABINET DOORS - LEAD TIME 8 WEEKS - N25 - N29,Complete,CONSTRUCTION,,SUWN-3 - 24-27,EXTERIOR SKIN,,,,,2025-06-23 07:00,2025-07-10 17:00,2025-07-24 07:00,2025-08-07 11:21
CN.SWB3.6341,IMPACT - IOCC 1541 SECAI REJECTED - HANDOVER DOOR FRAMES TO SECAI - N25 - N29,Complete,CONSTRUCTION,,SUWN-3 - 24-27,EXTERIOR SKIN,,,,,2025-06-23 07:00,2025-07-10 17:00,2025-08-07 07:21,2025-08-18 17:00
INT.P1.DH&HW.1330,EXTERIOR OHC DOOR - RFI 10731 - BENT PLATE OVERHANG ON INTERIOR CLADDING - HSS ADDED STEEL,Complete,PRE CONSTRUCTION,Support Building Overall,Doors & Hardware - OVERHEAD,DOORS & HARDWARE OVERHEAD,,,DOORS & HARDWARE - OVERHEAD,AMBER CARO,2023-11-27 07:00,2023-12-16 15:00,2025-05-30 07:00,2025-06-11 11:00
INT.P1.DH&HW.1340,EXTERIOR OHC DOOR - PRICING AND WAITING ON SECAI DIRECTION - HSS ADDED STEEL,Complete,PRE CONSTRUCTION,Support Building Overall,Doors & Hardware - OVERHEAD,DOORS & HARDWARE OVERHEAD,,,DOORS & HARDWARE - OVERHEAD,AMBER CARO,2023-11-27 07:00,2023-12-16 15:00,2025-06-12 07:00,2025-07-14 11:00
INT.P1.DH&HW.1350,EXTERIOR OHC DOOR - SECAI / VELTRI TOOKOVER SCOPE - HSS ADDED STEEL,Active,PRE CONSTRUCTION,Support Building Overall,Doors & Hardware - OVERHEAD,DOORS & HARDWARE OVERHEAD,,,DOORS & HARDWARE - OVERHEAD,AMBER CARO,2023-11-27 07:00,2023-12-16 15:00,2025-07-15 07:00,
ZX-20455,SECAI TOOK OVER FOR ACCELERATION - Drywall & Inspect - Elevator #01 - 1F-FAB1-EL01,Complete,Elevator 1 - 1F -SUW-FAB1-EL01,,,,,,,,2025-09-19 08:00,2025-10-01 17:00,2025-09-19 08:00,2025-09-19 17:00
ZX-20515,Complete Drywall & Inspect - Stair #05 - 1F-FAB1-ST05,Complete,Stair 5 - 1F -SUW-FAB1-ST05,,,,,,,,2025-05-28 08:00,2025-06-16 17:00,2025-05-22 08:00,2025-09-02 17:00
ZX-20635,SECAI TOOK OVER FOR ACCELERATION - Complete Drywall & Inspect - Stair 22-1F-1FAB-ST22,Complete,Stair 22 - 1F -SUE-FAB1-ST22,,,,,,,,2025-06-24 08:00,2025-06-30 17:00,2025-06-27 08:00,2025-06-27 17:00
ZX-20665,Complete Drywall & Inspect - Duct Shaft Vestibule - 1F-SUE-FAB116408,Complete,Duct Shaft Vestibule - 1F -SUE-FAB116408,,,,,,,,2025-09-01 08:00,2025-09-05 17:00,2025-09-01 08:00,2025-09-05 17:00
ZX-20785,Complete Drywall & Inspect - Manufacturing Storage 1-1F-SUE-FAB116522,Complete,Manufacturing Storage 1 - 1F -SUE-FAB116522,,,,,,,,2025-08-01 08:00,2025-08-07 17:00,2025-08-01 08:00,2025-08-07 17:00
ZX-20815,SECAI TOOK OVER FOR ACCELERATION - Drywall & Inspect - Stair #01 - SUW - 2F - FAB1-ST01,Complete,Stair 1 - 2F -SUW-FAB1-ST01,,,,,,,,2025-05-16 08:00,2025-05-29 17:00,2025-05-16 08:00,2025-06-19 17:00
ZX-20845,SECAI TOOK OVER FOR ACCELERATION - Complete Drywall & Inspect - Stair 22 - 2F-SUE-FAB1-ST22,Complete,Stair 22 - 2F -SUE-FAB1-ST22,,,,,,,,2025-08-01 08:00,2025-08-14 17:00,2025-06-27 08:00,2025-06-27 17:00
ZX-20875,SECAI TOOK OVER FOR ACCELERATION - Complete Drywall & Inspect - Stair #01 - 3F-SUW-FAB1-ST01,Complete,Stair 1 - 3F -SUW-FAB1-ST01,,,,,,,,2025-06-17 08:00,2025-06-27 17:00,2025-06-27 08:00,2025-06-27 17:00
ZX-20905,Complete Drywall & Inspect - Sub Clean Rm - 3F-SUW-FAB130206,Complete,SUB Clean Rm - 3F -SUW-FAB130206,,,,,,,,2025-09-10 08:00,2025-09-15 17:00,2025-09-10 08:00,2025-09-15 17:00
ZX-20935,Complete Drywall & Inspect - Clean Vestibule - 3F-SUW-FAB130318,Complete,Clean Vestibule - 3F -SUW-FAB130318,,,,,,,,2025-09-10 08:00,2025-09-15 17:00,2025-09-10 08:00,2025-09-15 17:00
ZX-20965,SECAI TOOK OVER FOR ACCELERATION - Complete Drywall & Inspect - Stair 22 - 3F-SUE-FAB1-ST22,Complete,Stair 22 - 3F -SUE-FAB1-ST22,,,,,,,,2025-07-28 08:00,2025-07-30 17:00,2025-06-27 08:00,2025-06-27 17:00
INT.DH.2600,IMPACT - SECAI directive to hold up doors until 5/25 - LVL 3- FAB136401A Handed over to SECAI,Complete,CONSTRUCTION,,Doors & Hardware - INTERIOR,DOORS & HARDWARE INTERIOR,"Int. Doors Filter 1, 2, 3",DOORS AND HARDWARE,,,2025-01-13 07:00,2025-04-25 17:00,2025-04-15 07:00,2025-05-30 07:00
ZX-20995,Complete Drywall & Inspect - Duct Shaft - L4 - SUW-FAB140102,Complete,Duct Shaft - 4F -SUW-FAB140102,,,,,,,,2025-09-04 08:00,2025-09-08 17:00,2025-09-04 08:00,2025-09-08 17:00
ZX-21025,SECAI TOOK OVER FOR ACCELERATION - Complete Drywall & Inspect - Stair #01 - 4F-SUW-FAB1-ST01,Complete,Stair 1 - 4F -SUW-FAB1-ST01,,,,,,,,2025-06-25 08:00,2025-06-27 17:00,2025-06-27 08:00,2025-06-27 17:00
ZX-21055,Complete Drywall & Inspect - Stair #05 - 4F-SUW-FAB1-ST05,Complete,Stair 5 - 4F -SUW-FAB1-ST05,,,,,,,,2025-07-09 08:00,2025-07-29 17:00,2025-06-23 08:00,2025-06-30 16:00
ZX-21085,Complete Drywall & Inspect - Duct Shaft - 4F-SUE-FAB146109,Complete,Duct Shaft - 4F - SUE-FAB146109,,,,,,,,2025-07-09 08:00,2025-07-29 17:00,2025-06-23 08:00,2025-06-30 16:00
ZX-21115,Complete Drywall & Inspect - Stair 22 - 4F-SUE-FAB1-ST22,Complete,Stair 22 - 4F - SUE-FAB1-ST22,,,,,,,,2025-07-09 08:00,2025-07-29 17:00,2025-06-23 08:00,2025-06-30 16:00
ZX-21145,Complete Drywall & Inspect - Duct Shaft - 4F-SUE-FAB146504,Complete,Duct Shaft - 4F - SUE-FAB146504,,,,,,,,2025-07-09 08:00,2025-07-29 17:00,2025-06-23 08:00,2025-06-30 16:00
ZX-21175,Complete Drywall & Inspect - Stair 18 - 4F-SUE-FAB1-ST18,Complete,Stair 18 - 4F - SUE-FAB1-ST18,,,,,,,,2025-07-09 08:00,2025-07-29 17:00,2025-06-23 08:00,2025-06-30 16:00
FAB110301B-03,INSTALL DOOR FRAMES - FAB110301B,Not Started,Elevator Hall 3 - 1F -SUW-FAB110302,,,,,,,,2025-12-08 08:00,2025-12-09 17:00,,
FAB110301B-05,PAINT & PROTECT DOORS & FRAMES - FAB110301B,Not Started,Elevator Hall 3 - 1F -SUW-FAB110302,,,,,,,,2026-02-16 08:00,2026-02-17 17:00,,
FAB110508C-03,INSTALL DOOR FRAMES - FAB110508C,Not Started,Elevator Hall 5 - 1F -SUW-FAB110507,,,,,,,,2025-12-12 08:00,2025-12-15 17:00,,
FAB110508C-05,PAINT & PROTECT DOORS & FRAMES - FAB110508C,Not Started,Elevator Hall 5 - 1F -SUW-FAB110507,,,,,,,,2026-02-16 08:00,2026-02-17 17:00,,
FAB110114A-03,INSTALL DOOR FRAMES - FAB110114A,Not Started,Elevator Hall 1 - 1F -SUW-FAB110113,,,,,,,,2025-11-21 08:00,2025-11-24 17:00,,
FAB110114A-05,PAINT & PROTECT DOORS & FRAMES - FAB110114A,Not Started,Elevator Hall 1 - 1F -SUW-FAB110113,,,,,,,,2026-02-16 08:00,2026-02-17 17:00,,
CN.SWA4.7520,IMPACT - MKM FRAMING & SHEATHING COLD FRAME & INSULATION - GL 19-20 - A LINE - TRESTLE INFILL,Complete,CONSTRUCTION,,SUEN-1 - 19-22,EXTERIOR SKIN,,KOVACH,INSULATED METAL PANELS,,2025-10-27 07:00,2025-11-07 17:00,2025-10-27 07:00,2025-11-05 17:00
CN.AB.AR.8760,IMPACT - SECAI PLACED TOUCHUP ON HOLD (trade damage worry) - SHAFT & DOOR FRONTS - ELEVATOR 01B,Complete,SWA - 5,West Support Building,FIZ 2 / SUWS 5  (GL6-1) - GL J - N - DATA CENTER 1,,ELEVATOR,W&W,TBD Architectural Finishes,,2025-08-25 07:00,2025-09-04 17:00,2025-08-02 07:00,2025-08-12 13:00
FAB112103E-03,INSTALL DOOR FRAMES - FAB112103E,Complete,LAB AIRLOCK/SMOCK- 1F -FIZ-FAB112103,,,,,,,,2025-08-07 08:00,2025-08-07 17:00,2025-08-20 00:00,2025-08-20 17:00
FAB130117A-03,INSTALL DOOR FRAMES - FAB130117A,Complete,FA Lab - 3F -SUW-FAB130117,,,,,,,,2025-08-21 08:00,2025-08-21 17:00,2025-08-21 08:00,2025-08-21 17:00
FAB112156A-04,INSTALL DOOR & HARDWARE - FAB112156A,Active,PCS Monitoring Rm - 1F - FAB-FAB112155,,,,,,,,2025-11-06 08:00,2025-11-12 17:00,2025-11-06 08:00,
FAB130206D-03,INSTALL DOOR FRAMES - FAB130206D,Complete,SUB Clean Rm. Airlock - 3F -SUW-FAB130315,,,,,,,,2025-05-30 08:00,2025-05-30 17:00,2025-05-30 08:00,2025-05-30 17:00
FAB130206D-04,INSTALL DOOR & HARDWARE - FAB130206D,Active,SUB Clean Rm. Airlock - 3F -SUW-FAB130315,,,,,,,,2025-09-25 08:00,2025-10-01 17:00,2025-09-25 08:00,
FAB130206D-05,PAINT & PROTECT DOORS & FRAMES -  FAB130206D,Not Started,SUB Clean Rm. Airlock - 3F -SUW-FAB130315,,,,,,,,2026-02-16 08:00,2026-02-19 15:00,,
FAB134105B-03,INSTALL DOOR FRAMES - FAB134105B,Complete,S/L Entrance - 3F -FIZ-FAB134105,,,,,,,,2025-08-11 13:00,2025-08-12 12:00,2025-08-01 13:00,2025-08-12 12:00
FAB134105B-04,INSTALL DOOR & HARDWARE - FAB134105B,Active,S/L Entrance - 3F -FIZ-FAB134105,,,,,,,,2025-08-15 08:00,2025-08-21 17:00,2025-08-15 08:00,
FAB134105B-05,PAINT & PROTECT DOORS & FRAMES - FAB134105B,Not Started,S/L Entrance - 3F -FIZ-FAB134105,,,,,,,,2026-02-16 08:00,2026-02-19 15:00,,
FAB1-ST05A-01,IMPACT - INSTALL/REWORK DRYWALL FRAMING AROUND DOORS - FAB1-ST05A,Complete,Stair 5 - 1F -SUW-FAB1-ST05,,,,,,,,2025-08-07 08:00,2025-08-08 17:00,2025-08-07 08:00,2025-08-08 17:00
FAB1-ST05A-03,INSTALL DOOR FRAMES - FAB1-ST05A,Complete,Stair 5 - 1F -SUW-FAB1-ST05,,,,,,,,2025-08-11 08:00,2025-08-11 17:00,2025-08-11 08:00,2025-08-11 17:00
FAB1-ST05A-04,INSTALL DOOR & HARDWARE - FAB1-ST05A,Active,Stair 5 - 1F -SUW-FAB1-ST05,,,,,,,,2025-10-17 08:00,2025-10-23 17:00,2025-10-17 08:00,
FAB1-ST05A-05,PAINT & PROTECT DOORS & FRAMES - FAB1-ST05A,Not Started,Stair 5 - 1F -SUW-FAB1-ST05,,,,,,,,2026-02-16 08:00,2026-02-19 15:00,,
FAB1-ST18B-01,IMPACT - INSTALL/REWORK DRYWALL FRAMING AROUND DOORS - FAB1-ST18B,Complete,Stair 18 - 2F -SUE-FAB1-ST18,,,,,,,,2025-08-01 08:00,2025-08-04 17:00,2025-08-01 08:00,2025-08-04 17:00
FAB1-ST18B-03,INSTALL DOOR FRAMES - FAB1-ST18B,Complete,Stair 18 - 2F -SUE-FAB1-ST18,,,,,,,,2025-08-04 08:00,2025-08-04 17:00,2025-08-04 08:00,2025-08-04 17:00
FAB1-ST18B-04,INSTALL DOOR & HARDWARE - FAB1-ST18B,Active,Stair 18 - 2F -SUE-FAB1-ST18,,,,,,,,2025-11-07 08:00,2025-11-13 17:00,2025-11-07 08:00,
FAB1-ST18B-05,PAINT & PROTECT DOORS & FRAMES - FAB1-ST18B,Not Started,Stair 18 - 2F -SUE-FAB1-ST18,,,,,,,,2026-02-16 08:00,2026-02-19 15:00,,
FAB110111B-40,IMPACT - DOOR FRAME PROCUREMENT- RE-ORDERED - FAB110111B,Complete,Exit Passageway 1 - 1F -SUW-FAB110111,,,,,,,,2025-08-18 08:00,2025-09-25 17:00,2025-08-18 08:00,2025-10-10 17:00
FAB110111B-02A,NEW INSTALL DOOR FRAMES - FAB110111B,Complete,Exit Passageway 1 - 1F -SUW-FAB110111,,,,,,,,2025-10-14 08:00,2025-10-14 17:00,2025-10-14 08:00,2025-10-14 17:00
FAB110206A-31,IMPACT - SECAI MEP CORDS IMPEDING DOOR INSTALLATION - FAB110206A,Complete,Duct Shaft - 1F -SUW-FAB110206,,,,,,,,2025-07-25 08:00,2025-07-30 15:00,2025-07-24 08:00,2025-10-02 17:00
FAB110308A-100,IMPACT - FRAME CANNOT BE COATED DUE SECAI TEMPORARY AC DUCTS AND ELEC CORDS RUNNING TROUGH OPENING - FAB110308A,Complete,Equip Platform - 1F -SUW-FAB110308,,,,,,,,2025-08-15 08:00,2025-08-19 17:00,2025-08-15 08:00,2025-10-03 17:00
FAB110314B-65,IMPACT - SECAI PANEL CEILING ANGLE PREVENTING WALL OPENING FOR DOOR FRAME INSTALLATION - FAB110314B,Complete,MCC Rm - 1F -SUW-FAB110314,,,,,,,,2025-08-29 08:00,2025-09-18 17:00,2025-08-29 08:00,2025-09-15 17:00
FAB110304E-65,IMPACT - SECAI SCAFFOLD IMPEDING DOOR INSTALLATION - FAB110304E,Active,Air Lock 3 - 1F -SUW-FAB110304,,,,,,,,2025-08-25 08:00,2025-09-12 17:00,2025-08-25 08:00,
FAB110403A/B/D-80,"DOOR FAMES, HARDWARE AND DOORS HANDED OVER TO SECAI - FAB110403A/B/D",Complete,NaOH ACQC (N/23-24.3) - 1F -SUW-FAB110403,,,,,,,,2025-08-22 08:00,2025-08-22 17:00,2025-08-22 08:00,2025-08-22 17:00
FAB110304B-65,IMPACT - DOOR FRAME PROCUREMENT- RE-ORDERED - FAB110304B,Complete,Air Lock 3 - 1F -SUW-FAB110304,,,,,,,,2025-08-18 08:00,2025-09-25 17:00,2025-08-18 08:00,2025-10-10 17:00
FAB110401C-55,IMPACT - SECAI FRAME INSTALLED BACKWARDS-NEEDS TO BE FIXED - FAB110401C,Complete,GCS Training Rm - 1F -SUW-FAB110401,,,,,,,,2025-08-01 08:00,2025-08-14 17:00,2025-08-18 08:00,2025-09-19 17:00
FAB110404B/E-80,"DOOR FAMES, HARDWARE AND DOORS HANDED OVER TO SECAI - FAB110404B/E",Complete,W-CuS04-ACQC RM (N/24.3-25) - 1F- SUW-FAB110404,,,,,,,,2025-08-22 08:00,2025-08-22 17:00,2025-08-22 08:00,2025-08-22 17:00
FAB110409B/E-80,"DOOR FAMES, HARDWARE AND DOORS HANDED OVER TO SECAI - FAB110409B/E",Complete,W-H3PO4 RM (N/25.4-26.2) - 1F -SUW-FAB110409,,,,,,,,2025-08-22 08:00,2025-08-22 17:00,2025-08-22 08:00,2025-08-22 17:00
FAB110408B/D-80,"DOOR FAMES, HARDWARE AND DOORS HANDED OVER TO SECAI - FAB110408B/D",Complete,W-H2S04 ACQC RM (N/26.2-27) - 1F -SUW-FAB110408,,,,,,,,2025-08-22 08:00,2025-08-22 17:00,2025-08-22 08:00,2025-08-22 17:00
FAB110409C-50,RE-ALIGN DOOR FRAME BY SECAI - FAB110409C (INSTALLED WRONGLY),Complete,W-H3PO4 RM (N/25.4-26.2) - 1F -SUW-FAB110409,,,,,,,,2025-08-12 08:00,2025-08-25 17:00,2025-08-12 08:00,2025-11-04 17:00
FAB110511B/C-90,"DOOR FAMES, HARDWARE AND DOORS HANDED OVER TO SECAI - FAB110511B/C",Complete,W-SOLVENT RM (N/27.5-29) - 1F -SUW-FAB110511,,,,,,,,2025-08-22 08:00,2025-08-22 17:00,2025-08-22 08:00,2025-08-22 17:00
FAB110511A-23,IMPACT - SECAI NEEDS TO RE-ALING DOOR FRAMES - FAB110511A,Complete,W-SOLVENT RM (N/27.5-29) - 1F -SUW-FAB110511,,,,,,,,2025-08-12 08:00,2025-08-25 17:00,2025-08-12 08:00,2025-11-03 17:00
FAB110511A-33,IMPACT - SECAI BARRICADE AND SCAFFOLD INTERFERING WITH DOOR INSTALLATION - FAB110511A,Complete,W-SOLVENT RM (N/27.5-29) - 1F -SUW-FAB110511,,,,,,,,2025-08-18 08:00,2025-08-29 17:00,2025-08-18 08:00,2025-11-03 17:00
CN.BB51.ST.3572,INTERIOR FRAMING DRYWALL FIRECAULK VESTIBULE 5 3RD LAYER - GL 33 LVL 3 - 4 - STAIR 5 - K-L,Complete,CONSTRUCTION,,GRIDLINE 33,GL 33 STAIR 5 (WEST),STAIR 5 (WEST) - K-L,BERG,,,2025-10-13 07:00,2025-10-20 17:00,2025-10-13 07:00,2025-11-06 17:00
CN.BB51.ST.3582,TAPE & FLOAT & SANDING INTERIOR DRYWALL & SANDING - GL 33 - STAIR 5 - K-L(),Complete,CONSTRUCTION,,GRIDLINE 33,GL 33 STAIR 5 (WEST),STAIR 5 (WEST) - K-L,CHERRY COATING,,,2025-09-08 07:00,2025-09-12 17:00,2025-09-08 07:00,2025-09-22 07:00
FAB110502B-60,IMPACT - SECAI (AXIOS) SCAFFOLD AND ELECTRICAL CORDS BLOCKING DOOR INSTALLATION - FAB110502B,Complete,Duct Shaft Vestibule - 1F -SUW-FAB110502,,,,,,,,2025-08-18 08:00,2025-08-29 17:00,2025-08-18 08:00,2025-10-10 17:00
FAB110502A-60,IMPACT - DOOR FRAME HIT BY A SCISSOR LIFT-REPAIR IS REQUIRED - FAB110502A,Active,Duct Shaft Vestibule - 1F -SUW-FAB110502,,,,,,,,2025-08-18 08:00,2025-08-29 17:00,2025-08-18 08:00,
FAB112155A-45,IMPACT - SECAI SCAFFOLD BLOKING DOOR INSTALLATION - FAB112155A,Complete,PCS Monitoring Rm - 1F - FAB-FAB112155,,,,,,,,2025-08-18 08:00,2025-08-29 17:00,2025-08-18 08:00,2025-09-23 08:00
FAB112203A-60,IMPACT - SECAI PIPE HANGING IN DOOR SWING PATH PREVENTING DOOR INSTALLATION - FAB112203A,Complete,Bunker Rm 1 - 1F -FAB-FAB112203,,,,,,,,2025-08-18 08:00,2025-08-29 17:00,2025-08-18 08:00,2025-10-02 17:00
CN.BB51.ST.3622,GDA - RE-INSTALL EXPANSION JOINT- LEVEL 4 - DUE TO SECAI  ADJUSTMENT OF FRAME AND SHEATHING - GL 33 - STAIR 18 - C-D,Complete,CONSTRUCTION,,GRIDLINE 33,GL 33 STAIR 18 (EAST),STAIR 18 (EAST) - C-D,WATER PROOFING GL33,,,2025-08-20 07:00,2025-08-22 17:00,2025-08-22 07:00,2025-10-07 17:00
FAB114107D-01,IMPACT - INSTALL/REWORK DRYWALL FRAMING AROUND DOORS - FAB114107D,Complete,FA Lab-7 - 1F -FIZ-FAB114107,,,,,,,,2025-10-10 08:00,2025-10-13 17:00,2025-10-10 08:00,2025-10-13 17:00
FAB114107D-03,INSTALL DOOR FRAMES - FAB114107D,Complete,FA Lab-7 - 1F -FIZ-FAB114107,,,,,,,,2025-10-14 08:00,2025-10-14 17:00,2025-10-14 08:00,2025-10-14 17:00
FAB114107D-04,INSTALL DOOR & HARDWARE - FAB114107D,Not Started,FA Lab-7 - 1F -FIZ-FAB114107,,,,,,,,2025-11-21 08:00,2025-11-27 17:00,,
FAB114107D-05,PAINT & PROTECT DOORS & FRAMES - FAB114107D,Not Started,FA Lab-7 - 1F -FIZ-FAB114107,,,,,,,,2026-02-16 08:00,2026-02-19 15:00,,
FAB114107D-60,IMPACT - Clean Room Panel needs to be removed to install DOOR FRAMES - FAB114107D,Complete,FA Lab-7 - 1F -FIZ-FAB114107,,,,,,,,2025-08-25 08:00,2025-08-29 17:00,2025-08-25 08:00,2025-10-10 08:00
FAB114154B-60,IMPACT - SECAI SCAFFOLD IMPEDING DOOR INSTALLATION - FAB114154B,Complete,Bunker Rm 9 - 1F -FAB-FAB114154,,,,,,,,2025-08-25 08:00,2025-08-29 17:00,2025-08-25 08:00,2025-10-20 17:00
FAB114155A-60,IMPACT - SECAI SCAFFOLD IMPEDING DOOR INSTALLATION - FAB114155A,Complete,Bunker Rm 10- 1F -FAB-FAB114155,,,,,,,,2025-08-25 08:00,2025-08-29 17:00,2025-08-25 08:00,2025-09-11 17:00
FAB114155B-60,IMPACT - SECAI SCAFFOLD IMPEDING DOOR INSTALLATION - FAB114155B,Complete,Bunker Rm 10- 1F -FAB-FAB114155,,,,,,,,2025-08-25 08:00,2025-08-29 17:00,2025-08-25 08:00,2025-10-10 17:00
FAB114402A-60,IMPACT - SECAI SCAFFOLD IMPEDING DOOR INSTALLATION - FAB114402A,Complete,Bunker Rm 12 -1F -FAB-FAB114402,,,,,,,,2025-08-22 08:00,2025-08-28 17:00,2025-08-22 08:00,2025-10-28 08:00
FAB114402B-60,IMPACT - SECAI SCAFFOLD IMPEDING DOOR INSTALLATION - FAB1144026,Complete,Bunker Rm 12 -1F -FAB-FAB114402,,,,,,,,2025-08-22 08:00,2025-08-28 17:00,2025-08-22 08:00,2025-09-24 08:00
FAB114403A-60,IMPACT - SECAI MEP CONDUIT AND MODULE BEAM INDOOR SWING PATH IMPEDING DOOR INSTALLATION - FAB114402A,Complete,Bunker Rm 13 - 1F -FAB-FAB114403,,,,,,,,2025-08-22 08:00,2025-08-28 17:00,2025-08-22 08:00,2025-11-05 08:00
FAB114403B-60,IMPACT - SECAI SCAFFOLD IMPEDING DOOR INSTALLATION - FAB114403B,Complete,Bunker Rm 13 - 1F -FAB-FAB114403,,,,,,,,2025-08-22 08:00,2025-08-28 17:00,2025-08-22 08:00,2025-09-24 08:00
FAB116520A-60,IMPACT - SECAI SCAFFOLD IMPEDING FRAME AND DOOR INSTALLATION - FAB116520A,Complete,PR Air Lock Vestibule - 1F -SUE-FAB116520,,,,,,,,2025-08-25 08:00,2025-08-29 17:00,2025-08-25 08:00,2025-10-10 08:00
FAB116112A-60,IMPACT - SECAI SCAFFOLD AND MEP CORDS IMPEDING DOOR INSTALLATION - FAB116112A,Complete,Duct Shaft Vestibule - 1F -SUE-FAB116112,,,,,,,,2025-08-22 08:00,2025-08-28 17:00,2025-08-22 08:00,2025-09-26 08:00
FAB116109A-60,IMPACT - SECAI MEP CORDS IMPEDING DOOR INSTALLATION - FAB116109A,Complete,Duct Shaft - 1F -SUE-FAB116109,,,,,,,,2025-08-22 08:00,2025-08-28 17:00,2025-08-22 08:00,2025-10-13 08:00
FAB116202D-60,IMPACT - SECAI SCAFFOLD IMPEDING DOOR INSTALLATION - FAB116202D,Complete,Exit Passageway 21 - 1F -SUE-FAB116202,,,,,,,,2025-08-25 08:00,2025-08-29 17:00,2025-08-25 08:00,2025-10-03 08:00
FAB116414B-60,IMPACT - SECAI (AXIOS) SCAFFOLD IMPEDING DOOR INSTALLATION - FAB116414B,Complete,Exit Passageway 19 - 1F -SUE-FAB116407,,,,,,,,2025-08-25 08:00,2025-08-29 17:00,2025-08-25 08:00,2025-11-11 08:00
FAB116414C-60,IMPACT - SECAI SCAFFOLD IMPEDING DOOR INSTALLATION - FAB116414C,Complete,Wafer I/O - 1F -SUE-FAB116501,,,,,,,,2025-08-25 08:00,2025-08-29 17:00,2025-08-25 08:00,2025-09-24 08:00
FAB116412B-60,IMPACT - SECAI SCAFFOLD IMPEDING DOOR INSTALLATION - FAB116412B,Complete,Duct Shaft Vestibule - 1F -SUE-FAB116412,,,,,,,,2025-08-25 08:00,2025-08-29 17:00,2025-08-25 08:00,2025-10-03 08:00
FAB116406A-60,IMPACT - SECAI SCAFFOLD IMPEDING DOOR INSTALLATION - FAB116406A,Active,Maint Rm 1 - 1F -SUE-FAB116406,,,,,,,,2025-08-25 08:00,2025-08-29 17:00,2025-08-25 08:00,
FAB110502A-70,IMPACT - SECAI (AXIOS) SCAFFOLD AND ELECTRICAL CORDS BLOCKING DOOR INSTALLATION - FAB110502A,Active,Duct Shaft Vestibule - 1F -SUW-FAB110502,,,,,,,,2025-08-18 08:00,2025-08-29 17:00,2025-08-18 08:00,
FAB110305A-60,IMPACT - DOOR FRAME REMOVED DURING WALL REMEDIATION (RE-ORDERED) - FAB110305A,Complete,Exit Passageway 3 - 1F -SUW-FAB110305,,,,,,,,2025-08-20 08:00,2025-09-30 17:00,2025-08-20 08:00,2025-10-10 08:00
FAB116301C-70,IMPACT - DOOR FRAME REMOVED DURING WALL REMEDIATION (RE-ORDERED) - FAB116301C,Complete,Air Lock 20 - 1F -SUE-FAB116301,,,,,,,,2025-08-20 08:00,2025-09-30 17:00,2025-08-20 08:00,2025-10-14 17:00
FAB116301C-03,INSTALL DOOR FRAMES - FAB116301C,Complete,Air Lock 20 - 1F -SUE-FAB116301,,,,,,,,2025-10-15 08:00,2025-10-15 17:00,2025-10-15 08:00,2025-10-15 17:00
FAB116307A-60,IMPACT - DOOR FRAME REMOVED DURING WALL REMEDIATION (RE-ORDERED) - FAB116307A,Complete,Exit Passageway 20 - 1F -SUE-FAB116307,,,,,,,,2025-08-20 08:00,2025-09-30 17:00,2025-08-20 08:00,2025-10-10 17:00
FAB116520A-70,IMPACT - DOOR FRAME REMOVED DURING WALL REMEDIATION (RE-ORDERED) - FAB116520A,Complete,PR Air Lock Vestibule - 1F -SUE-FAB116520,,,,,,,,2025-08-20 08:00,2025-09-30 17:00,2025-08-20 08:00,2025-10-10 17:00
FAB124102A-60,IMPACT - DOOR FRAME REMOVED DURING WALL REMEDIATION (RE-ORDERED) - FAB124102A,Complete,Battery Rm - 2F -FIZ-FAB124102,,,,,,,,2025-08-20 08:00,2025-09-30 17:00,2025-08-20 08:00,2025-10-10 17:00
FAB116308E-60,IMPACT - SECAI ELECTRIC CORD RUNNING TROUGH OPENING IMPEDING DOOR INSTALLATION - FAB116308E,Active,Mechanical Rm 3 - 1F -SUE-FAB116308,,,,,,,,2025-08-25 08:00,2025-08-29 17:00,2025-08-25 08:00,
FAB116407B-60,IMPACT - SECAI MEP CORD IMPEDING DOOR INSTALLATION - FAB116407B,Complete,Exit Passageway 19 - 1F -SUE-FAB116407,,,,,,,,2025-08-25 08:00,2025-08-29 17:00,2025-08-25 08:00,2025-10-10 08:00
FAB116407A-60,IMPACT - SECAI MEP CORD IMPEDING DOOR INSTALLATION - FAB116407A,Complete,Exit Passageway 19 - 1F -SUE-FAB116407,,,,,,,,2025-08-25 08:00,2025-08-29 17:00,2025-08-25 08:00,2025-09-23 08:00
FAB116519A-60,IMPACT - SECAI MEP CORDS IMPEDING DOOR INSTALLATION - FAB116519A,Complete,PR Air Lock - 1F -SUE-FAB116519,,,,,,,,2025-08-25 08:00,2025-08-29 17:00,2025-08-25 08:00,2025-11-03 17:00
FAB116518A-60,IMPACT - SECAI SCAFFOLD IMPEDING DOOR INSTALLATION - FAB116518A,Complete,Duct Shaft - 1F -SUE-FAB116518,,,,,,,,2025-08-25 08:00,2025-08-29 17:00,2025-08-25 08:00,2025-09-23 08:00
FAB116513H-60,IMPACT - SECAI SCAFFOLD AND AC DUCTS IMPEDING DOOR INSTALLATION - FAB116513H,Active,Air Lock 18 - 1F -SUE-FAB116513,,,,,,,,2025-08-25 08:00,2025-08-29 17:00,2025-08-25 08:00,
FAB116514A-60,IMPACT - SECAI LIGHT SWITCH LOCATED WITHIN OPENING IMPEDING DOOR FRAME INSTALLATION - FAB116514A,Active,Elevator Mech. Rm - 1F -SUE18-FAB116514,,,,,,,,2025-08-25 08:00,2025-08-29 17:00,2025-08-25 08:00,
FAB120103A-60,IMPACT - SECAI A/C TEMP DUCTS AND ELECTRICAL CORDS IMPEDING DOOR FRAME INSTALLATION - FAB120103A,Complete,Thermohygrostat Rm - 2F -FIZ-FAB120103,,,,,,,,2025-08-25 08:00,2025-08-29 17:00,2025-08-25 08:00,2025-09-24 17:00
FAB120108B-60,IMPACT - SECAI SCAFFOLD IMPEDING DOOR INSTALLATION - FAB120108B,Complete,Air Lock 1 - 2F -SUW-FAB120108,,,,,,,,2025-08-25 08:00,2025-08-29 17:00,2025-08-25 08:00,2025-10-24 08:00
FAB120401F-60,IMPACT - SECAI SCAFFOLD BLOCKING TRANSPORTATION OF DOOR FRAMES - FAB120401F - DOOR FRAME HANDED OVER TO SECAI ON 10/14,Complete,Electrical Rm - 2F -SUW-FAB120401,,,,,,,,2025-08-25 08:00,2025-08-29 17:00,2025-08-25 08:00,2025-10-14 17:00
FAB120113A-60,IMPACT - SECAI SCAFFOLD BLOCKING TRANSPORTATION OF DOOR FRAMES - FAB120113A,Active,Elevator Hall 1 - 2F -SUW-FAB120113,,,,,,,,2025-08-25 08:00,2025-08-29 17:00,2025-08-25 08:00,
FAB120108D-60,IMPACT - SECAI SCAFFOLD BLOCKING TRANSPORTATION OF DOOR FRAMES - FAB120108D - DOOR FRAME HANDED OVER TO SECAI ON 10/03,Complete,Air Lock 1 - 2F -SUW-FAB120108,,,,,,,,2025-08-25 08:00,2025-08-29 17:00,2025-08-25 08:00,2025-10-01 08:00
FAB120315A-60,IMPACT - SECAI TEMP VENT RUNNING TROUGH OPENING IMPEDING DOOR INSTALLATION - FAB120315A,Active,Battery Rm 1- 2F -SUW-FAB120315,,,,,,,,2025-08-25 08:00,2025-08-29 17:00,2025-08-25 08:00,
FAB120314B-60,IMPACT - SECAI TEMP VENT RUNNING THROUGH OPENING IMPEDING DOOR INSTALLATION - FAB120314B,Active,Battery Rm 2 - 2F -SUW-FAB120314,,,,,,,,2025-08-25 08:00,2025-08-29 17:00,2025-08-25 08:00,
FAB120314A-60,IMPACT - SECAI TEMP VENT RUNNING THROUGH OPENING IMPEDING DOOR INSTALLATION - FAB120314A,Active,Battery Rm 2 - 2F -SUW-FAB120314,,,,,,,,2025-08-25 08:00,2025-08-29 17:00,2025-08-25 08:00,
FAB120507A-60,IMPACT - SECAI SCAFFOLD IMPEDING DOOR FRAME INSTALLATION- FAB120507A,Complete,Utility Rm - 2F -SUW-FAB120507,,,,,,,,2025-08-25 08:00,2025-08-25 08:00,2025-08-25 08:00,2025-10-27 17:00
FAB120303F-60,IMPACT - SECAI SCAFFOLD IMPEDING DOOR FRAME INSTALLATION - FAB120303F,Complete,Electrical Rm - 2F -SUW-FAB120401,,,,,,,,2025-08-25 08:00,2025-08-29 17:00,2025-08-25 08:00,2025-11-05 08:00
FAB120501A-60,IMPACT - SECAI TEMP AC DUCTS AND ELEC CONDUITS IMPEDING DOOR INSTALLATION- FAB120501A,Active,Battery Rm 3 - 2F -SUW-FAB120501,,,,,,,,2025-08-25 08:00,2025-08-29 17:00,2025-08-25 08:00,
FAB120503D-60,IMPACT - SECAI SCAFFOLD BLOCKING OPENING IMPEDING FRAME INSTALLATION - FAB120503D,Active,Air lock 5 - 2F -SUW-FAB120503,,,,,,,,2025-08-25 08:00,2025-08-29 17:00,2025-08-25 08:00,
FAB120503B-60,IMPACT - SECAI SCAFFOLD BLOCKING DOOR FRAME TRANSPORTATION - FAB120503,Active,Air lock 5 - 2F -SUW-FAB120503,,,,,,,,2025-08-25 08:00,2025-08-29 17:00,2025-08-25 08:00,
FAB120505A-60,IMPACT - SECAI SCAFFOLD BLOCKING DOOR FRAME TRANSPORTATION - FAB120505A,Active,Elevator Hall 5 - 2F -SUW-FAB120505,,,,,,,,2025-08-25 08:00,2025-08-29 17:00,2025-08-25 08:00,
FAB126402A-60,IMPACT - SECAI SCAFFOLDS IMPEDING DOOR INSTALLATION - FAB126402A,Complete,Clean Vestibule 19 - 2F -SUE-FAB126402,,,,,,,,2025-08-25 08:00,2025-08-29 17:00,2025-08-25 08:00,2025-11-12 08:00
FAB126401A-60,IMPACT - SECAI SCAFFOLDS IMPEDING DOOR INSTALLATION - FAB126401A,Complete,Duct Shaft - 2F -SUE-FAB126401,,,,,,,,2025-08-25 08:00,2025-08-29 17:00,2025-08-25 08:00,2025-11-12 08:00
FAB126110A-60,IMPACT - SECAI SCAFFOLDS IMPEDING DOOR INSTALLATION - FAB126110A,Complete,Duct Shaft - 2F -SUE-FAB126403,,,,,,,,2025-08-25 08:00,2025-08-29 17:00,2025-08-25 08:00,2025-11-12 08:00
FAB1-ST19B-60,IMPACT - SECAI SCAFFOLDS IMPEDING DOOR FRAME INSTALLATION - FAB1-ST19B,Complete,Stair #19 - 2F -SUE-FAB1-ST19,,,,,,,,2025-08-25 08:00,2025-08-29 17:00,2025-08-25 08:00,2025-08-29 08:00
FAB126509A-60,IMPACT - SECAI SCAFFOLDS IMPEDING DOOR INSTALLATION - FAB126509A,Complete,PR Lifter Rm - 2F -SUE-FAB126509,,,,,,,,2025-08-25 08:00,2025-08-29 17:00,2025-08-25 08:00,2025-09-26 08:00
FAB126507B-60,IMPACT - SECAI TEMP VENT IMPEDING FRAME AND DOOR INSTALLATION - FAB126507B,Complete,Duct Shaft - 2F -SUE-FAB126507,,,,,,,,2025-08-25 08:00,2025-08-29 17:00,2025-08-25 08:00,2025-11-17 08:00
FAB130402B-60,IMPACT - SECAI SCAFFOLD AND TEMP VENT IMPEDING DOOR INSTALLATION- FAB130402B,Active,Electrical Rm - 3F -SUW-FAB130402,,,,,,,,2025-08-25 08:00,2025-08-29 17:00,2025-08-25 08:00,
FAB136302E-60,IMPACT - SECAI SCAFFOLD IMPEDING DOOR INSTALLATION - FAB136302E,Complete,Electrical Rm - 3F -SUE-FAB136302,,,,,,,,2025-08-25 08:00,2025-08-29 17:00,2025-08-25 08:00,2025-11-17 17:00
FAB136311A-60,IMPACT - SECAI TEMP VENT IMPEDING DOOR FRAME INSTALLATION - FAB136311A,Complete,Elevator Hall 20 - 3F -SUE-FAB136311,,,,,,,,2025-08-25 08:00,2025-08-29 17:00,2025-08-25 08:00,2025-10-17 08:00
FAB136311BB-60,IMPACT - SECAI TEMP VENT IMPEDING DOOR FRAME INSTALLATION - FAB136311B,Complete,Elevator Hall 20 - 3F -SUE-FAB136311,,,,,,,,2025-08-25 08:00,2025-08-29 17:00,2025-08-25 08:00,2025-09-26 08:00
FAB13K6401A-04,INSTALL DOOR & HARDWARE - FAB13K6401A,Not Started,Clean Vestibule 19-1 - 3F -SUE-FAB13K6401,,,,,,,,2025-12-01 08:00,2025-12-05 17:00,,
FAB13K6401A-05,PAINT & PROTECT DOORS & FRAMES - FAB13K6401A,Not Started,Clean Vestibule 19-1 - 3F -SUE-FAB13K6401,,,,,,,,2026-02-16 08:00,2026-02-19 15:00,,
FAB13K6401A-03,INSTALL DOOR FRAMES - FAB13K6401A,Not Started,Clean Vestibule 19-1 - 3F -SUE-FAB13K6401,,,,,,,,2025-11-28 08:00,2025-11-28 17:00,,
FAB13K6402A-04,INSTALL DOOR & HARDWARE - FAB13K6402A,Not Started,Clean Vestibule 19-2 - 3F -SUE-FAB13K6402,,,,,,,,2025-12-01 08:00,2025-12-05 17:00,,
FAB13K6402A-05,PAINT & PROTECT DOORS & FRAMES - FAB13K6402A,Not Started,Clean Vestibule 19-2 - 3F -SUE-FAB13K6402,,,,,,,,2026-02-16 08:00,2026-02-19 15:00,,
FAB13K6402A-03,INSTALL DOOR FRAMES - FAB13K6402A,Not Started,Clean Vestibule 19-2 - 3F -SUE-FAB13K6402,,,,,,,,2025-11-28 08:00,2025-11-28 17:00,,
FAB13K6401A-60,IMPACT - SECAI SCAFFOLD IMPEDING FRAME AND DOOR INSTALLATION - FAB13K6401A,Active,Clean Vestibule 19-1 - 3F -SUE-FAB13K6401,,,,,,,,2025-05-23 08:00,2025-05-29 17:00,2025-05-23 08:00,
FAB13K6401B-04,INSTALL DOOR & HARDWARE - FAB13K6401B,Not Started,Clean Vestibule 19-1 - 3F -SUE-FAB13K6401,,,,,,,,2025-12-01 08:00,2025-12-05 17:00,,
FAB13K6401B-05,PAINT & PROTECT DOORS & FRAMES - FAB13K6401B,Not Started,Clean Vestibule 19-1 - 3F -SUE-FAB13K6401,,,,,,,,2026-02-16 08:00,2026-02-19 15:00,,
FAB13K6401B-03,INSTALL DOOR FRAMES - FAB13K6401B,Not Started,Clean Vestibule 19-1 - 3F -SUE-FAB13K6401,,,,,,,,2025-11-28 08:00,2025-11-28 17:00,,
FAB13K6401B-60,IMPACT - SECAI SCAFFOLD IMPEDING FRAME AND DOOR INSTALLATION - FAB13K6401B,Active,Clean Vestibule 19-1 - 3F -SUE-FAB13K6401,,,,,,,,2025-05-23 08:00,2025-05-29 17:00,2025-05-23 08:00,
FAB13K6402A-60,IMPACT - SECAI SCAFFOLD IMPEDING FRAME AND DOOR INSTALLATION - FAB13K6402A,Active,Clean Vestibule 19-2 - 3F -SUE-FAB13K6402,,,,,,,,2025-05-23 08:00,2025-05-29 17:00,2025-05-23 08:00,
FAB1-ST19D-60,IMPACT - SECAI SCAFFOLD IMPEDING FRAME AND DOOR INSTALLATION - FAB1-ST19D,Active,Stair 19 - 3F -SUE-FAB1-ST19,,,,,,,,2025-05-23 08:00,2025-05-29 17:00,2025-05-23 08:00,
FAB110110B-25,DOOR FRAME HANDED OVER TO SECAI ON 07/18 - FAB110110B,Complete,Air Lock 1 - 1F -SUW-FAB110110,,,,,,,,2025-07-18 08:00,2025-07-18 17:00,2025-07-18 08:00,2025-07-18 17:00
FAB112156A-03,INSTALL DOOR FRAME BY SECAI - FAB112156A,Complete,PCS Monitoring Rm - 1F - FAB-FAB112155,,,,,,,,2025-08-14 08:00,2025-08-14 17:00,2025-08-14 08:00,2025-08-20 17:00
FAB112156A-25,DOOR FRAME HANDED OVER TO SECAI 08/14 - FAB112156A,Complete,PCS Monitoring Rm - 1F - FAB-FAB112155,,,,,,,,2025-08-05 08:00,2025-08-13 17:00,2025-08-14 08:00,2025-08-14 16:00
FAB116111A-25,DOOR FRAME HANDED OVER TO SECAI ON 08/29 - FAB116111A,Complete,Air Lock 22 - 1F -SUE-FAB116111,,,,,,,,2025-08-29 08:00,2025-08-29 17:00,2025-08-29 08:00,2025-08-29 08:00
FAB116116A-25,DOOR FRAME HANDED OVER TO SECAI ON 08/20 - FAB116116A,Complete,Fire Alarm 22 - 1F -FAB116116,,,,,,,,2025-08-20 08:00,2025-08-20 17:00,2025-08-20 08:00,2025-08-20 17:00
FAB116302A-25,DOOR FRAME HANDED OVER TO SECAI ON 08/20 - FAB116302A,Complete,Elevator Mech.Rm 20 - 1F -SUE-FAB116302,,,,,,,,2025-10-15 08:00,2025-10-15 17:00,2025-08-20 08:00,2025-08-20 17:00
FAB116305C-03,INSTALL DOOR FRAME BY SECAI - FAB116305C HANDED OVER ON 08/20,Complete,Elevator Hall 20 - 1F -SUE-FAB116305,,,,,,,,2025-08-20 08:00,2025-08-20 17:00,2025-08-20 08:00,2025-08-25 17:00
FAB116305C-25,DOOR FRAME HANDED OVER TO SECAI - FAB116305C,Complete,Elevator Hall 20 - 1F -SUE-FAB116305,,,,,,,,2025-08-20 08:00,2025-08-20 17:00,2025-08-20 08:00,2025-08-20 17:00
FAB116512C-25,DOOR FRAME HANDED OVER TO SECAI ON 08/20 - FAB116512C,Complete,Elevator Hall 18 - 1F -SUE-FAB116512,,,,,,,,2025-08-20 08:00,2025-08-20 17:00,2025-08-20 08:00,2025-08-20 17:00
FAB116513D-25,DOOR FRAME HANDED OVER TO SECAI ON 08/20 - FAB116513D,Complete,Air Lock 18 - 1F -SUE-FAB116513,,,,,,,,2025-08-20 08:00,2025-08-20 17:00,2025-08-20 08:00,2025-08-20 17:00
FAB116513F-25,DOOR FRAME HANDED OVER TO SECAI ON 08/20 - FAB116513F,Complete,Air Lock 18 - 1F -SUE-FAB116513,,,,,,,,2025-08-20 08:00,2025-08-20 17:00,2025-08-20 08:00,2025-08-20 17:00
FAB116522A-04,INSTALL DOOR & HARDWARE - FAB116522A,Active,Manufacturing Storage 1 - 1F -SUE-FAB116522,,,,,,,,2025-10-03 08:00,2025-10-09 17:00,2025-10-03 08:00,
FAB116522A-05,PAINT & PROTECT DOORS & FRAMES - FAB116522A,Not Started,Manufacturing Storage 1 - 1F -SUE-FAB116522,,,,,,,,2026-02-16 08:00,2026-02-19 17:00,,
FAB116522A-03,INSTALL DOOR FRAME BY SECAI - FAB116522A HANDED OVER TO SECAI ON 08/20,Complete,Manufacturing Storage 1 - 1F -SUE-FAB116522,,,,,,,,2025-08-20 08:00,2025-08-20 17:00,2025-08-20 08:00,2025-09-05 17:00
FAB116522A-25,DOOR FRAME HANDED OVER TO SECAI ON 08/20- FAB116522A,Complete,Manufacturing Storage 1 - 1F -SUE-FAB116522,,,,,,,,2025-08-20 08:00,2025-08-20 17:00,2025-08-20 08:00,2025-08-20 17:00
FAB120113A-25,DOOR FRAME HANDED OVER TO SECAI ON 09/05 - FAB120113A,Complete,Elevator Hall 1 - 2F -SUW-FAB120113,,,,,,,,2025-09-05 08:00,2025-09-05 17:00,2025-09-05 08:00,2025-09-05 17:00
FAB120303F-25,DOOR FRAME HANDED OVER TO SECAI ON 08/29 - FAB120303F,Complete,Electrical Rm - 2F -SUW-FAB120401,,,,,,,,2025-08-29 08:00,2025-08-29 17:00,2025-08-29 08:00,2025-08-29 17:00
FAB120401B-03,INSTALL DOOR FRAME BY SECAI - FAB120401B HANDED OVER ON 08/29,Active,Electrical Rm - 2F -SUW-FAB120401,,,,,,,,2025-08-29 10:00,2025-09-01 10:00,2025-08-29 10:00,
FAB120401B-25,DOOR FRAME HANDED OVER TO SECAI ON 08/29 - FAB120401B,Complete,Electrical Rm - 2F -SUW-FAB120401,,,,,,,,2025-08-29 10:00,2025-09-01 10:00,2025-08-29 10:00,2025-08-29 10:00
FAB120503B-70,DOOR FRAME HANDED OVER TO SECAI ON 08/29 - FAB120503B,Complete,Air lock 5 - 2F -SUW-FAB120503,,,,,,,,2025-08-29 08:00,2025-08-29 17:00,2025-08-29 08:00,2025-08-29 17:00
FAB120503D-70,DOOR FRAME HANDED OVER TO SECAI ON 08/29 - FAB120503D,Complete,Air lock 5 - 2F -SUW-FAB120503,,,,,,,,2025-08-29 08:00,2025-08-29 17:00,2025-08-29 08:00,2025-08-29 17:00
ZX-21495,"SECAI TURNOVER FOR ACELERATION - Drywall, CJ & FC + Inspect-Corridor - 2F-SUE-FAB122153",Complete,Corridor-  2F -FAB-FAB122153,,,,,,,,2025-06-27 08:00,2025-07-10 17:00,2025-06-27 08:00,2025-06-27 17:00
FAB122153A-03,INSTALL DOOR FRAMES - FAB122153A HANDED OVER ON 08/29,Complete,Corridor-  2F -FAB-FAB122153,,,,,,,,2025-08-29 08:00,2025-08-29 17:00,2025-08-29 08:00,2025-11-13 17:00
FAB122153A-04,INSTALL DOOR & HARDWARE - FAB122153A,Active,Corridor-  2F -FAB-FAB122153,,,,,,,,2025-11-14 08:00,2025-11-20 17:00,2025-11-14 08:00,
FAB122153A-05,PAINT & PROTECT DOORS & FRAMES - FAB122153A,Not Started,Corridor-  2F -FAB-FAB122153,,,,,,,,2026-02-16 08:00,2026-02-19 15:00,,
FAB122153A-25,DOOR FRAME HANDED OVER TO SECAI ON 08/29 - FAB122153A,Complete,Corridor-  2F -FAB-FAB122153,,,,,,,,2025-08-29 08:00,2025-08-29 17:00,2025-08-29 08:00,2025-08-29 17:00
ZX-21505,"SECAI TURNOVER FOR ACELERATION - Drywall, CJ & FC + Inspect-EBS - 2F-SUE-FAB122155",Complete,Empty Bottle Storage-  2F -FAB-FAB122155,,,,,,,,2025-06-27 08:00,2025-07-10 17:00,2025-06-27 08:00,2025-06-27 17:00
FAB122155A-03,INSTALL DOOR FRAMES - FAB122155A HANDED OVER ON 08/08,Complete,Empty Bottle Storage-  2F -FAB-FAB122155,,,,,,,,2025-08-08 08:00,2025-08-08 17:00,2025-08-08 08:00,2025-10-27 08:00
FAB122155A-04,INSTALL DOOR & HARDWARE - FAB122155A,Not Started,Empty Bottle Storage-  2F -FAB-FAB122155,,,,,,,,2025-11-21 08:00,2025-11-27 17:00,,
FAB122155A-05,PAINT & PROTECT DOORS & FRAMES - FAB122155A,Not Started,Empty Bottle Storage-  2F -FAB-FAB122155,,,,,,,,2026-02-16 08:00,2026-02-19 15:00,,
FAB122155A-25,DOOR FRAME HANDED OVER TO SECAI ON 08/08 - FAB122155A,Complete,Empty Bottle Storage-  2F -FAB-FAB122155,,,,,,,,2025-08-08 08:00,2025-08-08 17:00,2025-08-08 08:00,2025-08-08 17:00
FAB122156A-03,INSTALL DOOR FRAMES - FAB122156A HANDED OVER ON 08/08,Complete,Slurry Office-  2F -FAB-FAB122156,,,,,,,,2025-08-08 08:00,2025-08-08 17:00,2025-08-08 08:00,2025-08-29 17:00
FAB122156A-04,INSTALL DOOR & HARDWARE - FAB122156A,Not Started,Slurry Office-  2F -FAB-FAB122156,,,,,,,,2025-11-21 08:00,2025-11-27 17:00,,
FAB122156A-05,PAINT & PROTECT DOORS & FRAMES - FAB122156A,Not Started,Slurry Office-  2F -FAB-FAB122156,,,,,,,,2026-02-16 08:00,2026-02-19 15:00,,
FAB122156A-25,DOOR FRAME HANDED OVER TO SECAI ON 08/08 - FAB122156A,Complete,Slurry Office-  2F -FAB-FAB122156,,,,,,,,2025-08-08 08:00,2025-08-08 17:00,2025-08-08 08:00,2025-08-08 17:00
ZX-21515,"SECAI TURNOVER FOR ACELERATION - Drywall, CJ & FC + Inspect-Slurry - 2F-SUE-FAB122157",Complete,Slurry-  2F -FAB-FAB122157,,,,,,,,2025-06-27 08:00,2025-07-10 17:00,2025-06-27 08:00,2025-06-27 17:00
FAB122157B-03,INSTALL DOOR FRAMES - FAB122157B HANDED OVER ON 06/27,Complete,Slurry-  2F -FAB-FAB122157,,,,,,,,2025-08-29 08:00,2025-08-29 17:00,2025-06-27 08:00,2025-11-13 17:00
FAB122157B-04,INSTALL DOOR & HARDWARE - FAB122157B,Active,Slurry-  2F -FAB-FAB122157,,,,,,,,2025-11-14 08:00,2025-11-20 17:00,2025-11-14 08:00,
FAB122157B-05,PAINT & PROTECT DOORS & FRAMES - FAB122157B,Not Started,Slurry-  2F -FAB-FAB122157,,,,,,,,2026-02-16 08:00,2026-02-19 15:00,,
FAB122157B-25,DOOR FRAME HANDED OVER TO SECAI ON 06/27 - FAB122157B,Complete,Slurry-  2F -FAB-FAB122157,,,,,,,,2025-06-27 08:00,2025-06-27 17:00,2025-06-27 08:00,2025-06-27 17:00
FAB126107A-25,DOOR FRAME HANDED OVER TO SECAI ON 08/29 - FAB126107A,Complete,Air Lock 22 - 2F -SUE-FAB126107,,,,,,,,2025-08-29 08:00,2025-08-29 17:00,2025-08-29 08:00,2025-08-29 17:00
FAB126506E-25,DOOR FRAME HANDED OVER TO SECAI ON 08/29 - FAB126506E,Complete,Air Lock 18 - 2F -SUE-FAB126506,,,,,,,,2025-08-29 08:00,2025-08-29 17:00,2025-08-29 08:00,2025-08-29 17:00
FAB134105B-6,DOOR FRAME HANDED OVER TO SECAI ON 08/01 - FAB134105B,Complete,S/L Entrance - 3F -FIZ-FAB134105,,,,,,,,2025-08-01 13:00,2025-08-04 12:00,2025-07-31 13:00,2025-08-01 12:00
FAB1-ST01C-03,INSTALL DOOR FRAMES - FAB1-ST01C,Complete,Stair 1 - 3F -SUW-FAB1-ST01,,,,,,,,2025-05-29 08:00,2025-05-29 17:00,2025-05-29 08:00,2025-05-29 17:00
FAB1-ST01C-04,INSTALL DOOR & HARDWARE - FAB1-ST01C,Active,Stair 1 - 3F -SUW-FAB1-ST01,,,,,,,,2025-11-11 08:00,2025-11-17 17:00,2025-11-11 08:00,
FAB1-ST01C-05,PAINT & PROTECT DOORS & FRAMES - FAB1-ST01C,Not Started,Stair 1 - 3F -SUW-FAB1-ST01,,,,,,,,2026-02-16 08:00,2026-02-20 17:00,,
FAB1-ST18A-03,INSTALL DOOR FRAMES - FAB1-ST18A,Complete,Stair 18 - 1F -SUE- FAB1-ST18,,,,,,,,2025-09-09 08:00,2025-09-09 17:00,2025-09-09 08:00,2025-09-09 17:00
FAB1-ST18A-04,INSTALL DOOR & HARDWARE - FAB1-ST18A,Active,Stair 18 - 1F -SUE- FAB1-ST18,,,,,,,,2025-10-28 08:00,2025-11-03 17:00,2025-10-28 08:00,
FAB1-ST18A-05,PAINT & PROTECT DOORS & FRAMES - FAB1-ST18A,Not Started,Stair 18 - 1F -SUE- FAB1-ST18,,,,,,,,2026-02-16 08:00,2026-02-20 17:00,,
FAB1-ST18C-03,INSTALL DOOR FRAMES - FAB1-ST18C,Not Started,Stair 18 - 3F -SUE-FAB1-ST18,,,,,,,,2025-11-21 08:00,2025-11-21 17:00,,
FAB1-ST18C-04,INSTALL DOOR & HARDWARE - FAB1-ST18C,Not Started,Stair 18 - 3F -SUE-FAB1-ST18,,,,,,,,2025-11-24 08:00,2025-11-28 17:00,,
FAB1-ST18C-05,PAINT & PROTECT DOORS & FRAMES - FAB1-ST18C,Not Started,Stair 18 - 3F -SUE-FAB1-ST18,,,,,,,,2026-02-16 08:00,2026-02-20 17:00,,
FAB1-ST19B-25,DOOR FRAME HANDED OVER TO SECAI ON 08/29 - FAB1-ST19B,Complete,Stair #19 - 2F -SUE-FAB1-ST19,,,,,,,,2025-08-29 08:00,2025-08-29 17:00,2025-08-29 08:00,2025-08-29 17:00
FAB1-ST20A-25,DOOR FRAME HANDED OVER TO SECAI ON 09/02 - FAB1-ST20A,Complete,Stair 20 - 1F -SUE- FAB1-ST20,,,,,,,,2025-09-02 08:00,2025-09-02 17:00,2025-09-02 08:00,2025-09-02 17:00
FAB1-ST22A-03,INSTALL DOOR FRAME BY SECAI - FAB1-ST22A HANDED OVER TO SECAI ON 08/20,Complete,Stair 22 - 1F -SUE-FAB1-ST22,,,,,,,,2025-08-20 08:00,2025-08-20 17:00,2025-08-20 08:00,2025-11-06 08:00
FAB1-ST22A-04,INSTALL DOOR & HARDWARE - FAB1-ST22A,Active,Stair 22 - 1F -SUE-FAB1-ST22,,,,,,,,2025-11-07 08:00,2025-11-13 17:00,2025-11-07 08:00,
FAB1-ST22A-05,PAINT & PROTECT DOORS & FRAMES - FAB1-ST22A,Not Started,Stair 22 - 1F -SUE-FAB1-ST22,,,,,,,,2026-02-16 08:00,2026-02-19 17:00,,
FAB1-ST22A-25,DOOR FRAME HANDED OVER TO SECAI ON 08/20 - FAB1-ST22A,Complete,Stair 22 - 1F -SUE-FAB1-ST22,,,,,,,,2025-08-20 08:00,2025-08-20 17:00,2025-08-20 08:00,2025-08-20 17:00
FAB136302C-21,DOOR FRAME HANDED OVER TO SECAI ON 08/29 - FAB136302C,Complete,Electrical Rm - 3F -SUE-FAB136302,,,,,,,,2025-08-29 08:00,2025-08-29 17:00,2025-08-29 08:00,2025-08-29 17:00
FAB126506B-6,DOOR FRAME HANDED OVER TO SECAI ON 08/29 - FAB126506B,Complete,Air Lock 18 - 2F -SUE-FAB126506,,,,,,,,2025-08-29 08:00,2025-08-29 17:00,2025-08-29 08:00,2025-08-29 17:00
FAB126502C-40,DOOR FRAME HANDED OVER TO SECAI ON 08/29 - FAB126502C,Complete,Electrical Rm - 2F -SUE-FAB126502,,,,,,,,2025-08-29 08:00,2025-08-29 17:00,2025-08-29 08:00,2025-08-29 17:00
FAB136302A-40,DOOR FRAME HANDED OVER TO SECAI ON 08/29 - FAB136302A,Complete,Electrical Rm - 3F -SUE-FAB136302,,,,,,,,2025-08-29 08:00,2025-08-29 17:00,2025-08-29 08:00,2025-08-29 17:00
FAB136302G-40,DOOR FRAME HANDED OVER TO SECAI ON 08/29 - FAB136302G,Complete,Electrical Rm - 3F -SUE-FAB136302,,,,,,,,2025-08-29 08:00,2025-08-29 17:00,2025-08-29 08:00,2025-08-29 17:00
ZX-21585,Complete Drywall & Inspect - Stair #05 - 2F-FAB1-ST05,Complete,Stair 5 - 2F -SUW-FAB1-ST05,,,,,,,,2025-05-28 08:00,2025-06-16 17:00,2025-05-22 08:00,2025-09-02 17:00
FAB1-ST05B-01,IMPACT - INSTALL/REWORK DRYWALL FRAMING AROUND DOORS - FAB1-ST05B,Complete,Stair 5 - 2F -SUW-FAB1-ST05,,,,,,,,2025-09-11 08:00,2025-09-12 17:00,2025-09-11 08:00,2025-09-12 17:00
FAB1-ST05B-03,INSTALL DOOR FRAMES - FAB1-ST05B,Complete,Stair 5 - 2F -SUW-FAB1-ST05,,,,,,,,2025-09-12 08:00,2025-09-12 17:00,2025-09-12 08:00,2025-09-12 17:00
FAB1-ST05B-04,INSTALL DOOR & HARDWARE - FAB1-ST05B,Active,Stair 5 - 2F -SUW-FAB1-ST05,,,,,,,,2025-11-05 08:00,2025-11-11 17:00,2025-11-05 08:00,
FAB1-ST05B-05,PAINT & PROTECT DOORS & FRAMES - FAB1-ST05B,Not Started,Stair 5 - 2F -SUW-FAB1-ST05,,,,,,,,2026-02-16 08:00,2026-02-19 15:00,,
ZX-21615,Complete Drywall & Inspect - Stair #05 - 3F-FAB1-ST05,Complete,Stair 5 - 3F -SUW-FAB1-ST05,,,,,,,,2025-05-28 08:00,2025-06-16 17:00,2025-05-22 08:00,2025-09-02 17:00
FAB1-ST05C-01,IMPACT - INSTALL/REWORK DRYWALL FRAMING AROUND DOORS - FAB1-ST05C,Complete,Stair 5 - 3F -SUW-FAB1-ST05,,,,,,,,2025-09-09 08:00,2025-09-10 17:00,2025-09-09 08:00,2025-09-10 17:00
FAB1-ST05C-03,INSTALL DOOR FRAMES - FAB1-ST05C,Complete,Stair 5 - 3F -SUW-FAB1-ST05,,,,,,,,2025-09-10 08:00,2025-09-10 17:00,2025-09-10 08:00,2025-09-10 17:00
FAB1-ST05C-04,INSTALL DOOR & HARDWARE - FAB1-ST05C,Not Started,Stair 5 - 3F -SUW-FAB1-ST05,,,,,,,,2025-11-21 08:00,2025-11-27 17:00,,
FAB1-ST05C-05,PAINT & PROTECT DOORS & FRAMES - FAB1-ST05C,Not Started,Stair 5 - 3F -SUW-FAB1-ST05,,,,,,,,2026-02-16 08:00,2026-02-19 15:00,,
FAB1-ST05D-01,IMPACT - INSTALL/REWORK DRYWALL FRAMING AROUND DOORS - FAB1-ST05D,Complete,Stair 5 - 4F -SUW-FAB1-ST05,,,,,,,,2025-09-15 08:00,2025-09-16 17:00,2025-09-15 08:00,2025-09-16 17:00
FAB1-ST05D-03,INSTALL DOOR FRAMES - FAB1-ST05DD,Complete,Stair 5 - 4F -SUW-FAB1-ST05,,,,,,,,2025-09-16 08:00,2025-09-16 17:00,2025-09-16 08:00,2025-09-16 17:00
FAB1-ST05D-04,INSTALL DOOR & HARDWARE - FAB1-ST05D,Not Started,Stair 5 - 4F -SUW-FAB1-ST05,,,,,,,,2025-11-21 08:00,2025-11-27 17:00,,
FAB1-ST05D-05,PAINT & PROTECT DOORS & FRAMES - FAB1-ST05D,Not Started,Stair 5 - 4F -SUW-FAB1-ST05,,,,,,,,2026-02-16 08:00,2026-02-19 15:00,,
TR-FAB116112A-21,DOOR FRAME HANDED OVER TO SECAI ON 09/05 - TR - FAB116112A,Complete,IT/Security 22 - 1F -TR-SUE-FAB116112,,,,,,,,2025-09-05 08:00,2025-09-05 17:00,2025-09-05 08:00,2025-09-05 17:00
FAB122155B-03,INSTALL DOOR FRAMES - FAB122155B HANDED OVER ON 08/08,Complete,Empty Bottle Storage-  2F -FAB-FAB122155,,,,,,,,2025-08-08 08:00,2025-08-08 17:00,2025-08-08 08:00,2025-08-29 17:00
FAB122155B-04,INSTALL DOOR & HARDWARE - FAB122155B,Not Started,Empty Bottle Storage-  2F -FAB-FAB122155,,,,,,,,2025-11-21 08:00,2025-11-27 17:00,,
FAB122155B-05,PAINT & PROTECT DOORS & FRAMES - FAB122155B,Not Started,Empty Bottle Storage-  2F -FAB-FAB122155,,,,,,,,2026-02-16 08:00,2026-02-19 15:00,,
FAB122155B-25,DOOR FRAME HANDED OVER TO SECAI ON 08/08 - FAB122155B,Complete,Empty Bottle Storage-  2F -FAB-FAB122155,,,,,,,,2025-08-08 08:00,2025-08-08 17:00,2025-08-08 08:00,2025-08-08 17:00
FAB122157A-03,INSTALL DOOR FRAMES - FAB122157A HANDED OVER ON 08/08,Active,Slurry-  2F -FAB-FAB122157,,,,,,,,2025-08-08 08:00,2025-08-08 17:00,2025-08-08 08:00,
FAB122157A-04,INSTALL DOOR & HARDWARE - FAB122157A,Not Started,Slurry-  2F -FAB-FAB122157,,,,,,,,2025-12-01 08:00,2025-12-05 17:00,,
FAB122157A-05,PAINT & PROTECT DOORS & FRAMES - FAB122157A,Not Started,Slurry-  2F -FAB-FAB122157,,,,,,,,2026-02-16 08:00,2026-02-19 15:00,,
FAB122157A-25,DOOR FRAME HANDED OVER TO SECAI ON 08/08 - FAB122157A,Complete,Slurry-  2F -FAB-FAB122157,,,,,,,,2025-08-08 08:00,2025-08-08 17:00,2025-08-08 08:00,2025-08-08 17:00
FAB1U1301A-03,INSTALL DOOR FRAME BY SECAI - FAB1U1301A HANDED OVER 09/05,Complete,SOUTH/NORTH PIT - 1F - SUW,,,,,,,,2025-09-05 08:00,2025-09-18 17:00,2025-09-05 08:00,2025-09-19 17:00
FAB1U1301A-04,INSTALL DOOR & HARDWARE - FAB1U1301A,Active,SOUTH/NORTH PIT - 1F - SUW,,,,,,,,2025-10-17 08:00,2025-10-23 17:00,2025-10-17 08:00,
FAB1U1301A-05,PAINT & PROTECT DOORS & FRAMES -  FAB1U1301A,Not Started,SOUTH/NORTH PIT - 1F - SUW,,,,,,,,2026-02-16 08:00,2026-02-19 17:00,,
FAB1U1301A-25,DOOR FRAME HANDED OVER TO SECAI ON 09/05 - FAB1U1301A,Complete,SOUTH/NORTH PIT - 1F - SUW,,,,,,,,2025-09-05 08:00,2025-09-05 17:00,2025-09-05 08:00,2025-09-05 17:00
FAB1U1404A-03,INSTALL DOOR FRAME BY SECAI - FAB1U1404A HANDED OVER 07/08,Complete,SOUTH/NORTH PIT - 1F - SUW,,,,,,,,2025-07-08 08:00,2025-07-21 17:00,2025-07-08 08:00,2025-09-17 17:00
FAB1U1404A-04,INSTALL DOOR & HARDWARE - FAB1U1404A,Not Started,SOUTH/NORTH PIT - 1F - SUW,,,,,,,,2025-11-21 08:00,2025-11-27 17:00,,
FAB1U1404A-05,PAINT & PROTECT DOORS & FRAMES -  FAB1U1404A,Not Started,SOUTH/NORTH PIT - 1F - SUW,,,,,,,,2026-02-16 08:00,2026-02-19 17:00,,
FAB1U1404A-25,DOOR FRAME HANDED OVER TO SECAI ON 07/08 - FAB1U1404A,Complete,SOUTH/NORTH PIT - 1F - SUW,,,,,,,,2025-07-08 08:00,2025-07-08 17:00,2025-07-08 08:00,2025-07-08 17:00
FAB1U1406A-03,INSTALL DOOR FRAME BY SECAI - FAB1U1406A HANDED OVER 08/08,Complete,SOUTH/NORTH PIT - 1F - SUW,,,,,,,,2025-08-08 08:00,2025-08-21 17:00,2025-08-08 08:00,2025-08-27 17:00
FAB1U1406A-04,INSTALL DOOR & HARDWARE - FAB1U1406A,Active,SOUTH/NORTH PIT - 1F - SUW,,,,,,,,2025-10-31 08:00,2025-11-06 17:00,2025-10-31 08:00,
FAB1U1406A-05,PAINT & PROTECT DOORS & FRAMES -  FAB1U1406A,Not Started,SOUTH/NORTH PIT - 1F - SUW,,,,,,,,2026-02-16 08:00,2026-02-19 17:00,,
FAB1U1406A-25,DOOR FRAME HANDED OVER TO SECAI ON 08/08 - FAB1U1406A,Complete,SOUTH/NORTH PIT - 1F - SUW,,,,,,,,2025-08-08 08:00,2025-08-08 17:00,2025-08-08 08:00,2025-08-08 17:00
FAB1U1407A-03,INSTALL DOOR FRAME BY SECAI - FAB1U1407A HANDED OVER 07/08,Complete,SOUTH/NORTH PIT - 1F - SUW,,,,,,,,2025-07-08 08:00,2025-07-21 17:00,2025-07-08 08:00,2025-11-12 17:00
FAB1U1407A-04,INSTALL DOOR & HARDWARE - FAB1U1407A,Active,SOUTH/NORTH PIT - 1F - SUW,,,,,,,,2025-11-13 08:00,2025-11-19 17:00,2025-11-13 08:00,
FAB1U1407A-05,PAINT & PROTECT DOORS & FRAMES -  FAB1U1407A,Not Started,SOUTH/NORTH PIT - 1F - SUW,,,,,,,,2026-02-16 08:00,2026-02-19 17:00,,
FAB1U1407A-25,DOOR FRAME HANDED OVER TO SECAI ON 07/08 - FAB1U1407A,Complete,SOUTH/NORTH PIT - 1F - SUW,,,,,,,,2025-07-08 08:00,2025-07-08 17:00,2025-07-08 08:00,2025-07-08 17:00
FAB1U1502A-03,INSTALL DOOR FRAME BY SECAI - FAB1U1502A HANDED OVER 07/18,Complete,SOUTH/NORTH PIT - 1F - SUW,,,,,,,,2025-07-18 08:00,2025-07-31 17:00,2025-07-18 08:00,2025-10-03 17:00
FAB1U1502A-04,INSTALL DOOR & HARDWARE - FAB1U1502A,Active,SOUTH/NORTH PIT - 1F - SUW,,,,,,,,2025-11-14 08:00,2025-11-20 17:00,2025-11-14 08:00,
FAB1U1502A-05,PAINT & PROTECT DOORS & FRAMES -  FAB1U1502A,Not Started,SOUTH/NORTH PIT - 1F - SUW,,,,,,,,2026-02-16 08:00,2026-02-19 17:00,,
FAB1U1502A-25,DOOR FRAME HANDED OVER TO SECAI ON 07/18 - FAB1U1502A,Complete,SOUTH/NORTH PIT - 1F - SUW,,,,,,,,2025-07-18 08:00,2025-07-18 17:00,2025-07-18 08:00,2025-07-18 17:00
FAB1U1503A-03,INSTALL DOOR FRAME BY SECAI - FAB1U1503A HANDED OVER 07/08,Complete,SOUTH/NORTH PIT - 1F - SUW,,,,,,,,2025-07-08 08:00,2025-07-21 17:00,2025-07-08 08:00,2025-10-27 17:00
FAB1U1503A-04,INSTALL DOOR & HARDWARE - FAB1U1503A,Active,SOUTH/NORTH PIT - 1F - SUW,,,,,,,,2025-10-28 08:00,2025-11-03 17:00,2025-10-28 08:00,
FAB1U1503A-05,PAINT & PROTECT DOORS & FRAMES -  FAB1U1503A,Not Started,SOUTH/NORTH PIT - 1F - SUW,,,,,,,,2026-02-16 08:00,2026-02-19 17:00,,
FAB1U1503A-25,DOOR FRAME HANDED OVER TO SECAI ON 07/08 - FAB1U1503A,Complete,SOUTH/NORTH PIT - 1F - SUW,,,,,,,,2025-07-08 08:00,2025-07-08 17:00,2025-07-08 08:00,2025-07-08 17:00
CN.SWA1.10080,"IMPACT - SECAI DIRECTION HOLD CUT SLAB, EDGE ARMOUR & LVL 1 FRAMING AND DRYWALL - ELEVATOR 5 - SECAI TO TAKE OVER",Active,SWA - 1,West Support Building,SUWS-1 - 18-15,,ELEVATOR,W&W,DRYWALL,JAMES LIVELY,2025-07-25 07:00,2025-10-20 17:00,2025-07-25 07:00,
CN.BB51.ST.3662,TAPE & FLOAT SANDING INTERIOR DRYWALL & SANDING - VESTIBULE 18 - GL 33 - STAIR 18 - C-D (),Active,CONSTRUCTION,,GRIDLINE 33,GL 33 STAIR 18 (EAST),STAIR 18 (EAST) - C-D,CHERRY COATING,,,2025-10-06 07:00,2025-10-10 17:00,2025-10-06 07:00,
FAB116104A-08,IMPACT - TEMP UTILITY LINE RUNNING TROUGH THE DOOR OPENING - FAB116104A,Active,OAC Mechanical RM - 1F -FIZ-FAB116101,,,,,,,,2025-06-13 08:00,2025-07-03 17:00,2025-06-13 08:00,
FAB110507A-70,IMPACT - SECAI REMOVED FRAME AND DOOR - FAB110507A REINSTALLATION BY SECAI,Complete,Elevator Hall 5 - 1F -SUW-FAB110507,,,,,,,,2025-09-01 08:00,2025-09-19 17:00,2025-09-01 08:00,2025-10-27 17:00
FAB116401B-60,DOOR FRAME HANDED OVER TO SECAI ON 08/15 - FAB116401B,Complete,Duct Shaft - 1F -SUE-FAB116401,,,,,,,,2025-08-15 08:00,2025-08-15 17:00,2025-08-15 08:00,2025-08-15 17:00
FAB110102A-60,IMPACT - SECAI SCAFFOLD BLOCKING DOOR INSTALL - FAB110102A,Complete,Elevator Mech. Rm 1A - 1F -SUW-FAB110102,,,,,,,,2025-09-25 08:00,2025-10-01 17:00,2025-08-22 08:00,2025-09-24 17:00
FAB110103A-21,IMPACT SECAI SCAFFOLD BLOCKING DOOR INSTALL - FAB110103A,Complete,Duct Shaft - 1F -SUW-FAB110103,,,,,,,,2025-09-19 08:00,2025-09-25 17:00,2025-08-22 08:00,2025-09-12 17:00
FAB110110B-35,IMPACT - SECAI SCAFFOLD BLOCKING DOOR INSTALL- FAB110110B,Complete,Air Lock 1 - 1F -SUW-FAB110110,,,,,,,,2025-10-02 08:00,2025-10-08 17:00,2025-09-15 08:00,2025-09-30 17:00
FAB110110C-35,IMPACT - SECAI SCAFFOLD BLOCKING DOOR INSTALL- FAB110110C,Complete,Air Lock 1 - 1F -SUW-FAB110110,,,,,,,,2025-10-02 08:00,2025-10-08 17:00,2025-09-15 08:00,2025-09-30 17:00
FAB110202B-35,IMPACT - SECAI EXTERIOR TRENCH BLOCKING DOOR INSTALL - FAB110202B,Complete,Toilet (M) 2 - 1F -SUW-FAB110202,,,,,,,,2025-09-16 08:00,2025-09-22 17:00,2025-09-16 08:00,2025-10-03 08:00
FAB110203A-35,IMPACT - SECAI EXTERIOR TRENCH BLOCKING DOOR INSTALL - FAB110203A,Active,Toilet (W) 2 - 1F -SUW-FAB110203,,,,,,,,2025-09-16 08:00,2025-09-22 17:00,2025-09-16 08:00,
FAB110214A-35,IMPACT - SECAI EXTERIOR TRENCH BLOCKING DOOR INSTALL - FAB110214A,Complete,Janitor Rm - 1F -SUW-FAB110214,,,,,,,,2025-09-16 08:00,2025-09-22 17:00,2025-09-16 08:00,2025-10-02 17:00
FAB110506B-35,IMPACT - SECAI EXTERIOR TRENCH BLOCKING DOOR INSTALL - FAB110506B,Complete,Exit Passageway 5 - 1F -SUW-FAB110506,,,,,,,,2025-09-16 08:00,2025-09-22 17:00,2025-09-16 08:00,2025-09-30 17:00
FAB120304A-35,IMPACT - SECAI TEMP ROUGH IN IMPEDING DOOR INSTALLATION - FAB120304A,Complete,Vestibule 3 - 2F -SUW-FAB120304,,,,,,,,2025-02-20 08:00,2025-02-26 17:00,2025-02-20 08:00,2025-09-22 17:00
FAB110402C-02,INSTALL DOOR FRAMES - FAB110402C,Complete,Exit Passageway 4 - 1F -SUW-FAB110402,,,,,,,,2025-09-30 08:00,2025-09-30 17:00,2025-09-30 08:00,2025-09-30 17:00
FAB1-ST04D-01,IMPACT - INSTALL/REWORK DRYWALL FRAMING AROUND DOORS - FAB1-ST04D,Complete,Stair 4 - 3F-SUW-FAB1-ST04,,,,,,,,2025-09-26 08:00,2025-09-29 17:00,2025-09-26 08:00,2025-09-29 17:00
FAB1-ST04D-03,INSTALL DOOR FRAMES - FAB1-ST04D,Complete,Stair 4 - 3F-SUW-FAB1-ST04,,,,,,,,2025-09-29 08:00,2025-09-29 17:00,2025-09-29 08:00,2025-09-29 17:00
FAB1-ST04D-04,INSTALL DOOR & HARDWARE - FAB1-ST04D,Not Started,Stair 4 - 3F-SUW-FAB1-ST04,,,,,,,,2025-11-21 08:00,2025-11-27 17:00,,
FAB1-ST04D-05,PAINT & PROTECT DOORS & FRAMES - FAB1-ST04D,Not Started,Stair 4 - 3F-SUW-FAB1-ST04,,,,,,,,2026-02-16 08:00,2026-02-19 17:00,,
ZX-21645,IMPACT - SECAI MEP SCAFFOLD IMPACTING DRYWALL COMPLETION - Vestibule 5 - 2F-FAB120504 - MKM,Complete,Vestibule 5 - 2F -SUW-FAB120504,,,,,,,,2025-09-29 08:00,2025-10-03 17:00,2025-09-29 08:00,2025-10-30 17:00
FAB110401C-43,IMPACT - SECAI BARRICADE AND SCAFFOLD INTERFERING WITH DOOR INSTALLATION - FAB110401C,Active,GCS Training Rm - 1F -SUW-FAB110401,,,,,,,,2025-08-18 08:00,2025-08-29 17:00,2025-08-18 08:00,
CN.SWA4.7600,IMPACT - MKM FRAMING & SHEATHING COLD FRAME & INSULATION - N30-31 TRESTLE B INFILL - INTERIOR,Complete,CONSTRUCTION,,SUWN-5 - 30-33,EXTERIOR SKIN,,KOVACH,INSULATED METAL PANELS,,2025-10-21 07:00,2025-10-24 17:00,2025-10-10 07:00,2025-10-17 10:00
CN.ST.3700,CHERRY - PRIME & FINISH PAINT INTERIOR DRYWALL - Vestibules 5 - Level 3- 4 - GL 33 - STAIR 5 - K-L(),Not Started,CONSTRUCTION,,GRIDLINE 33,GL 33 STAIR 5 (WEST),STAIR 5 (WEST) - K-L,CHERRY COATING,,,2025-11-24 07:00,2025-12-02 17:00,,
ZX-21665,IMPACT - SECAI MEP SCAFFOLD & TEMP POWER - Drywall & Inspect - Duct Shaft - 2F-SUW-FAB120101,Active,Duct Shaft - 2F -SUW-FAB120101,,,,,,,,2025-09-25 08:00,2025-10-15 17:00,2025-09-25 08:00,
ZX-21685,IMPACT - SECAI MEP PIPES - Drywall & Inspect - PR Lifter Vestibule - 2F-FAB126511,Active,PR Lifter Vestibule - 2F -SUE-FAB126511,,,,,,,,2025-10-03 08:00,2025-10-16 17:00,2025-10-03 08:00,
ZX-21695,IMPACT - SECAI MEP SCAFFOLD - Drywall & Inspect - Hall #19 - 3F-SUE-FAB136408 - SECAI TOOK OVER FOR ACCELERATION,Complete,Hall 19 - 3F -SUE-FAB136408,,,,,,,,2025-05-05 08:00,2025-05-16 17:00,2025-05-05 08:00,2025-10-22 17:00
FAB112103E-02,SECAI ROUGH IN FRAME - FAB112103E,Complete,LAB AIRLOCK/SMOCK- 1F -FIZ-FAB112103,,,,,,,,2025-08-07 08:00,2025-08-07 17:00,2025-08-20 00:00,2025-08-20 17:00
FAB112103E-05,PAINT & PROTECT DOORS & FRAMES - FAB112103E,Not Started,LAB AIRLOCK/SMOCK- 1F -FIZ-FAB112103,,,,,,,,2026-02-16 08:00,2026-02-19 17:00,,
FAB112103E-04,INSTALL DOOR & HARDWARE - FAB112103E,Active,LAB AIRLOCK/SMOCK- 1F -FIZ-FAB112103,,,,,,,,2025-10-03 08:00,2025-10-09 17:00,2025-10-03 08:00,
IMPACT3 - constraint,IMPACT - PRICING FOR IOCC - RFI 1779/1781/1835 DOOR THRESHOLD AND WP - SHOP DWG - ALL LEVEL 4 EXTERIOR DOORS,Active,Remobilization and Out-of-Sequence Completion List - DD07-10-2025,,,,,,,,2025-09-23 08:00,2025-10-06 17:00,2025-09-23 08:00,
IMPACT4 - constraint,IMPACT - IOCC APPROVAL - RFI 1779/1781/1835 DOOR THRESHOLD AND WP - SHOP DWG - ALL LEVEL 4 EXTERIOR DOORS,Not Started,Remobilization and Out-of-Sequence Completion List - DD07-10-2025,,,,,,,,2025-11-26 08:00,2025-12-09 17:00,,
IMPACT5 - constraint,IMPACT - RFI SECAI-FAB-A-10843 - Hollow Metal Doors - Clean Room Paint System Confirmation,Active,Remobilization and Out-of-Sequence Completion List - DD07-10-2025,,,,,,,,2025-05-14 08:00,2025-06-03 17:00,2025-05-14 08:00,
FAB120504D-03,INSTALL DOOR FRAMES - FAB120504D,Complete,Vestibule 5 - 2F -SUW-FAB120504,,,,,,,,2025-10-13 08:00,2025-10-13 17:00,2025-10-13 08:00,2025-10-13 17:00
CN.ST.36861,IMPACT - SECAI /VELTRI SCAFFOLD ON LVL 4 Cladding & Drywall connection - VESTIBULE 18 ENTRY WALL- GL 33 - STAIR 18 - C-D,Not Started,CONSTRUCTION,,GRIDLINE 33,GL 33 STAIR 18 (EAST),STAIR 18 (EAST) - C-D,WATER PROOFING GL33,,,2025-11-21 07:00,2025-11-25 17:00,,
FAB120401F-70,DOOR FRAME HANDED OVER TO SECAI ON 10/14 - FAB120401F,Complete,Electrical Rm - 2F -SUW-FAB120401,,,,,,,,2025-10-14 08:00,2025-10-14 17:00,2025-10-14 08:00,2025-10-14 17:00
FAB136502B-70,DOOR FRAME HANDED OVER TO SECAI ON 10/01 - FAB136502B,Complete,Wafer I/O Entrance - 3F -SUE-FAB136501,,,,,,,,2025-10-01 08:00,2025-10-01 17:00,2025-10-01 08:00,2025-10-01 17:00
FAB110304B-75,IMPACT - SECAI SCAFFOLD IMPEDING DOOR INSTALLATION - FAB110304B,Complete,Air Lock 3 - 1F -SUW-FAB110304,,,,,,,,2025-10-15 08:00,2025-10-28 17:00,2025-10-16 08:00,2025-10-29 17:00
FAB110404D-70,IMPACT - SECAI SCAFFOLD IMPEDING DOOR INSTALLATION AND SECAI MISSING DRYWALL COMPLETION - FAB110404D,Active,W-CuS04-ACQC RM (N/24.3-25) - 1F- SUW-FAB110404,,,,,,,,2025-09-16 08:00,2025-09-29 17:00,2025-09-16 08:00,
FAB110404A-70,IMPACT - SECAI BARRICADE AND SECAI MISSING DRYWALL COMPLETION - FAB110404A,Complete,W-CuS04-ACQC RM (N/24.3-25) - 1F- SUW-FAB110404,,,,,,,,2025-09-16 08:00,2025-09-29 17:00,2025-09-16 08:00,2025-11-05 17:00
FAB110409D-50,IMPACT - SECAI BARRICDE AND SECAI MISSING DRYWALL COMPLETION - FAB110409D,Complete,W-H3PO4 RM (N/25.4-26.2) - 1F -SUW-FAB110409,,,,,,,,2025-09-16 08:00,2025-09-29 17:00,2025-09-16 08:00,2025-11-04 17:00
FAB110408C-23,IMPACT - SECAI TO REALING FRAME AND DRYWALL COMPLETION - FAB110408C,Complete,W-H2S04 ACQC RM (N/26.2-27) - 1F -SUW-FAB110408,,,,,,,,2025-09-16 08:00,2025-09-29 17:00,2025-09-16 08:00,2025-11-13 17:00
FAB116413A-21,IMPACT - SECAI DUCTWORK IN DOOR SWING PATH - FAB116413A,Active,Duct Shaft - 1F -SUE-FAB116413,,,,,,,,2025-09-25 08:00,2025-10-08 17:00,2025-09-29 08:00,
FAB116301B-35,IMPACT - SECAI DUCT CLASH WITH DOOR SWING- FAB116301B,Active,Air Lock 20 - 1F -SUE-FAB116301,,,,,,,,2025-09-26 08:00,2025-10-09 17:00,2025-09-26 08:00,
FAB126505A-60,IMPACT- SECAI REMOVED FRAME AWAITING REINSTALLATION BY SECAI - FAB126505A,Active,Vestibule 18 - 2F -SUE-FAB126505,,,,,,,,2025-08-12 08:00,2025-08-25 17:00,2025-08-12 08:00,
FAB112156A-05,PAINT & PROTECT DOORS & FRAMES - FAB112156A,Not Started,PCS Monitoring Rm - 1F - FAB-FAB112155,,,,,,,,2026-02-16 08:00,2026-02-16 17:00,,
ZX-21755,IMPACT - SECAI DEMO DRYWALL - Duct Shaft - 2F-SUE-FAB126401,Active,Duct Shaft - 2F -SUE-FAB126401,,,,,,,,2025-10-01 08:00,2025-10-21 17:00,2025-10-01 08:00,
FAB130117A-04,INSTALL DOOR & HARDWARE - FAB130117A,Not Started,FA Lab - 3F -SUW-FAB130117,,,,,,,,2025-11-21 08:00,2025-11-27 17:00,,
FAB130117A-4,PAINT & PROTEC DOORS & FRAMES - FAB130117A,Not Started,FA Lab - 3F -SUW-FAB130117,,,,,,,,2026-02-16 08:00,2026-02-19 17:00,,
FAB132102C-05,PAINT & PROTECT DOORS & FRAMES- FAB132102C,Not Started,TQR LAB - 3F -FIZ-FAB132102,,,,,,,,2026-02-16 08:00,2026-02-19 17:00,,
FAB110111A-100,INSTALL DOOR HARDWARE - FAB110111A,Not Started,Exit Passageway 1 - 1F -SUW-FAB110111,,,,,,,,2025-11-21 08:00,2025-11-26 17:00,,
FAB110507A-04,DOOR INSTALL - FAB110507A,Complete,Elevator Hall 5 - 1F -SUW-FAB110507,,,,,,,,2025-08-19 08:00,2025-08-19 17:00,2025-08-19 08:00,2025-08-19 17:00
FAB110507A-04A,INSTALL DOOR & HARDWARE - FAB110507A,Active,Elevator Hall 5 - 1F -SUW-FAB110507,,,,,,,,2025-11-05 08:00,2025-11-11 17:00,2025-11-05 08:00,
FAB1-ST22D-03,INSTALL DOOR FRAME - FAB1-ST22D,Complete,Stair 22 - 4F - SUE-FAB1-ST22,,,,,,,,2025-10-22 08:00,2025-10-22 17:00,2025-10-22 08:00,2025-10-22 17:00
FAB1-ST22D-04,INSTALL DOOR & HARDWARE - FAB1-ST22D,Not Started,Stair 22 - 4F - SUE-FAB1-ST22,,,,,,,,2025-11-21 08:00,2025-11-27 17:00,,
FAB1-ST22D-05,PAINT & PROTECT DOORS & FRAMES -  FAB1-ST22D,Not Started,Stair 22 - 4F - SUE-FAB1-ST22,,,,,,,,2026-02-16 08:00,2026-02-19 15:00,,
FAB120303D-21,FRAME HANDED OVER TO SECAI ON 08/15 - FAB120303D,Complete,Air Lock 3 - 2F -SUW-FAB120303,,,,,,,,2025-08-15 08:00,2025-08-15 17:00,2025-08-15 08:00,2025-08-15 17:00
FAB1-MS.PAINT,DOOR PAINT PENDING BUILDING CONDITION AND SECAI DIRECTION,Active,Remobilization and Out-of-Sequence Completion List - DD07-10-2025,,,,,,,,2025-10-27 08:00,2026-01-30 17:00,2025-10-27 08:00,
FAB130111A-06,INSTALL DOOR HARDWARE - FAB130111A,Not Started,Vestibule 1 - 3F -SUW-FAB130111,,,,,,,,2025-11-21 08:00,2025-11-26 17:00,,
CN.SWA5..6270,SECAI DRYWALL PATCHING ONGOING - STAIR #50 - 29/L - ALL LEVELS(),Complete,SWA - 5,West Support Building,SUWN-4 - 27-30,INTERIOR STAIR TOWER - STAIR #50 - DE-SCOPED,,,INSULATED METAL PANELS,JAMES LIVELY,2025-10-31 07:00,2025-11-04 17:00,2025-10-30 07:00,2025-10-31 17:00
FAB130111C-70,IMPACT - SECAI FRAME REINSTALL - FAB130111C,Active,Vestibule 1 - 3F -SUW-FAB130111,,,,,,,,2025-07-25 08:00,2025-08-07 17:00,2025-07-25 08:00,
CN.SWA5..6280,IMPACT - SECAI DRYWALL PATCH & FINISH - STAIR #20 - 19/D - ALL LEVELS,Complete,SWA - 5,West Support Building,SUES-1 - 19-16,INTERIOR STAIR TOWER - STAIR #20,,,INSULATED METAL PANELS,JAMES LIVELY,2025-10-13 07:00,2025-10-20 17:00,2025-09-16 07:00,2025-11-03 17:00
FAB130402E-70,IMPACT - SECAI TEMP DOOR & DRYWALL REMOVAL - HEADER/GOAL POST INSTALL - PATRIOT - FAB130402E - M/19,Active,Electrical Rm - 3F -SUW-FAB130402,,INTERIOR STAIRS,L3 / Waffle Slab Level,,PATRIOT,,,2025-10-29 08:00,2025-11-04 17:00,2025-10-29 08:00,
FAB136504C-70,IMPACT - SECAI DRYWALL REMOVAL - HEADER/GOAL POST INSTALL - PATRIOT - FAB136504C - C/32,Not Started,Elevator Hall 18 - 3F -SUE-FAB136504,,INTERIOR STAIRS,L3 / Waffle Slab Level,,,,,2025-11-21 08:00,2025-11-27 17:00,,
FAB130501A-60,IMPACT - SECAI TEMP DOOR & DRYWALL REMOVAL - FAB130501A - M/27,Complete,Battery Rm - 3F -SUW-FAB130501,,INTERIOR STAIRS,L3 / Waffle Slab Level,,,,,2025-10-27 08:00,2025-10-31 17:00,2025-10-27 08:00,2025-11-14 08:00
EJ-0039,Complete Frame EJ gap (scaffold needed) - Duct Shaft - 2F-SUW-FAB120112,Active,Duct Shaft - 2F -SUW-FAB120112,,,,,,,,2025-10-31 08:00,2025-11-18 17:00,2025-10-31 08:00,
EJ-0122,IMPACT - SECAI FINISH DRYWALL (NO WALL FRAMED)- VEJ D/25 - Clean Vestibule #19 - 3F-FAB136406,Active,Clean Vestibule 19 - 3F -SUE-FAB136406,,,,,,,,2025-09-29 08:00,2025-10-03 17:00,2025-09-29 08:00,
FAB126506C-50,DOOR FRAME HANDED OVER TO SECAI ON 10/27 - FAB126506C,Complete,Air Lock 18 - 2F -SUE-FAB126506,,,,,,,,2025-10-27 08:00,2025-10-27 17:00,2025-10-27 08:00,2025-10-27 17:00
FAB126311B-50,IMPACT - SECAI SCAFFOLD BLOCKING DOOR SWING - FAB126311B,Complete,Air Lock 20 - 2F -SUE-FAB126311,,,,,,,,2025-09-18 08:00,2025-10-08 17:00,2025-09-18 08:00,2025-11-13 17:00
FAB116106B-50,IMPACT - SECAI TRADES WORKING AT OPENING IMPEDING DOOR INSTALL - FAB116106B,Active,Exit Passageway 22 - 1F -SUE-FAB116106,,,,,,,,2025-10-23 08:00,2025-11-12 17:00,2025-10-23 08:00,
FAB1-ST20C-50,IMPACT - SECAI SCAFFOLD IMPEDING DOOR INSTALL - FAB1-ST20C,Complete,Stair 20 - 3F -SUE-FAB1-ST20,,,,,,,,2025-10-29 08:00,2025-11-18 17:00,2025-10-29 08:00,2025-11-17 17:00
FAB116111A-50,IMPACT - SECAI SCAFFOLD IMPEDING DOOR INSTALL - FAB116111A,Active,Air Lock 22 - 1F -SUE-FAB116111,,,,,,,,2025-10-29 08:00,2025-11-18 17:00,2025-10-29 08:00,
FAB114404A-50,IMPACT - SECAI SCAFFOLD IMPEDING DOOR INSTALL - FAB114404A,Active,Bunker Rm 14 - 1F -FAB-FAB114404,,,,,,,,2025-10-29 08:00,2025-11-18 17:00,2025-10-29 08:00,
FAB126107B-50,IMPACT - SECAI SCAFFOLD IMPEDING DOOR INSTALL - FAB126107B,Complete,Air Lock 22 - 2F -SUE-FAB126107,,,,,,,,2025-10-29 08:00,2025-11-18 17:00,2025-10-29 08:00,2025-10-30 17:00
FAB126506B-50,IMPACT - SECAI SCAFFOLD IMPEDING DOOR INSTALL - FAB126506B,Active,Air Lock 18 - 2F -SUE-FAB126506,,,,,,,,2025-10-29 08:00,2025-11-18 17:00,2025-10-29 08:00,
FAB130311A-50,IMPACT - SECAI MATERIAL AND SCAFFOLD IMPEDING DOOR INSTALL - FAB130311A,Active,NaOH Transfer Rm - 3F -SUW-FAB130311,,,,,,,,2025-10-29 08:00,2025-11-18 17:00,2025-10-29 08:00,
FAB1U1407A-50,IMPACT - SECAI CORDS IMPEDING DOOR INSTALL - FAB1U1407A,Complete,SOUTH/NORTH PIT - 1F - SUW,,,,,,,,2025-11-03 08:00,2025-11-21 17:00,2025-11-03 08:00,2025-11-12 17:00
FAB116305B-50,IMPACT - FRAME CONSTANTLY HIT DUE HEAY TRAFFIC - FAB116305B,Active,Elevator Hall 20 - 1F -SUE-FAB116305,,,,,,,,2025-11-12 08:00,2025-11-18 17:00,2025-11-12 08:00,
FAB1-ST03B-50,IMPACT - SECAI SCAFFOLD IMPEDING DOOR INSTALL - FAB1-ST03B,Active,Stair 3 - 2F -SUW-FAB1-ST03,,,,,,,,2025-11-06 08:00,2025-11-19 17:00,2025-11-06 08:00,
FAB1-ST03C-50,IMPACT - SECAI SCAFFOLD IMPEDING DOOR INSTALL - FAB1-ST03C,Active,Stair 3 - 3F- SUW-FAB1-ST03,,,,,,,,2025-11-06 08:00,2025-11-19 17:00,2025-11-06 08:00,
FAB116204B-06,INSTALL DOOR HARDWARE - FAB116204B,Not Started,Duct Shaft - 1F -SUE-FAB116204,,,,,,,,2026-02-19 15:00,2026-02-25 15:00,,
CN.SWA5..6320,INSTALL DOOR FRAMES - STAIR #19 - 26/D - ALL LEVELS,Active,SWA - 5,West Support Building,SUEN-3 - 25-28,INTERIOR STAIR TOWER - STAIR #19 (CLEAN ROOM) - DE-SCOPED,,,INSULATED METAL PANELS,JAMES LIVELY,2025-05-29 07:00,2025-06-03 17:00,2025-05-29 07:00,
CN.SWA5..6330,INSTALL - DOOR/HARDWARE/PAINT - STAIR #19 - 26/D - ALL LEVELS,Active,SWA - 5,West Support Building,SUEN-3 - 25-28,INTERIOR STAIR TOWER - STAIR #19 (CLEAN ROOM) - DE-SCOPED,,,INSULATED METAL PANELS,JAMES LIVELY,2025-11-07 07:00,2025-11-10 17:00,2025-11-07 07:00,
CN.SWA5..6340,INSTALL DOOR FRAMES - STAIR #1 - 5/L - ALL LEVELS,Complete,SWA - 5,West Support Building,SUEN-3 - 25-28,INTERIOR STAIR TOWER - STAIR #1 - DE-SCOPED,,,INSULATED METAL PANELS,JAMES LIVELY,2025-05-29 07:00,2025-06-03 17:00,2025-05-29 07:00,2025-10-21 17:00
CN.SWA5..6350,INSTALL - DOOR/HARDWARE/PAINT - STAIR #1 - 5/L - ALL LEVELS,Active,SWA - 5,West Support Building,SUEN-3 - 25-28,INTERIOR STAIR TOWER - STAIR #1 - DE-SCOPED,,,INSULATED METAL PANELS,JAMES LIVELY,2025-11-07 07:00,2025-11-10 17:00,2025-09-18 07:00,
CN.SWA5..6360,INSTALL DOOR FRAMES - STAIR #22 - 6/D - ALL LEVELS,Active,SWA - 5,West Support Building,SUEN-3 - 25-28,INTERIOR STAIR TOWER - STAIR #22 - DE-SCOPED,,,INSULATED METAL PANELS,JAMES LIVELY,2025-05-29 07:00,2025-06-03 17:00,2025-10-22 07:00,
CN.SWA5..6370,INSTALL - DOOR/HARDWARE/PAINT - STAIR #22 - 6/D - ALL LEVELS,Active,SWA - 5,West Support Building,SUEN-3 - 25-28,INTERIOR STAIR TOWER - STAIR #22 - DE-SCOPED,,,INSULATED METAL PANELS,JAMES LIVELY,2025-11-07 07:00,2025-11-10 17:00,2025-11-07 07:00,
CN.SWA5..6380,INSTALL DOOR FRAMES - STAIR #50 - 29/L - ALL LEVELS,Complete,SWA - 5,West Support Building,SUEN-3 - 25-28,INTERIOR STAIR TOWER - STAIR #50 - DE-SCOPED,,,INSULATED METAL PANELS,JAMES LIVELY,2025-05-29 07:00,2025-06-03 17:00,2025-02-13 07:00,2025-10-28 17:00
CN.SWA5..6390,INSTALL - DOOR/HARDWARE/PAINT - STAIR #50 - 29/L - ALL LEVELS,Active,SWA - 5,West Support Building,SUEN-3 - 25-28,INTERIOR STAIR TOWER - STAIR #50 - DE-SCOPED,,,INSULATED METAL PANELS,JAMES LIVELY,2025-11-07 07:00,2025-11-10 17:00,2025-10-02 07:00,
FAB1-DI-001,INSTALL DOOR & HARDWARE (419 OF 622),Active,Remobilization and Out-of-Sequence Completion List - DD07-10-2025,,,,,,,,2025-11-17 08:00,2025-11-21 17:00,2025-11-17 08:00,
FAB1-DI-002,INSTALL DOOR & HARDWARE (448 OF 622),Not Started,Remobilization and Out-of-Sequence Completion List - DD07-10-2025,,,,,,,,2025-11-24 08:00,2025-11-28 17:00,,
FAB1-DI-003,INSTALL DOOR & HARDWARE (477 OF 622),Not Started,Remobilization and Out-of-Sequence Completion List - DD07-10-2025,,,,,,,,2025-12-01 08:00,2025-12-05 17:00,,
FAB1-DI-004,INSTALL DOOR & HARDWARE (506 OF 622),Not Started,Remobilization and Out-of-Sequence Completion List - DD07-10-2025,,,,,,,,2025-12-08 08:00,2025-12-12 17:00,,
FAB1-DI-005,INSTALL DOOR & HARDWARE (535 OF 622),Not Started,Remobilization and Out-of-Sequence Completion List - DD07-10-2025,,,,,,,,2025-12-15 08:00,2025-12-19 17:00,,
FAB1-DI-006,INSTALL DOOR & HARDWARE (564 OF 622),Not Started,Remobilization and Out-of-Sequence Completion List - DD07-10-2025,,,,,,,,2025-12-22 08:00,2025-12-26 17:00,,
FAB1-DI-007,INSTALL DOOR & HARDWARE (593 OF 622),Not Started,Remobilization and Out-of-Sequence Completion List - DD07-10-2025,,,,,,,,2025-12-29 08:00,2026-01-02 17:00,,
FAB1-DI-008,INSTALL DOOR & HARDWARE (622 OF 622),Not Started,Remobilization and Out-of-Sequence Completion List - DD07-10-2025,,,,,,,,2026-01-05 08:00,2026-01-09 17:00,,
FAB1-DP-001,PAINT & PROTECT DOORS & FRAMES (50 OF 622),Not Started,Remobilization and Out-of-Sequence Completion List - DD07-10-2025,,,,,,,,2026-02-16 08:00,2026-02-20 17:00,,
FAB1-DP-002,PAINT & PROTECT DOORS & FRAMES (100 OF 622),Not Started,Remobilization and Out-of-Sequence Completion List - DD07-10-2025,,,,,,,,2026-02-23 08:00,2026-02-27 17:00,,
FAB1-DP-003,PAINT & PROTECT DOORS & FRAMES (150 OF 622),Not Started,Remobilization and Out-of-Sequence Completion List - DD07-10-2025,,,,,,,,2026-03-02 08:00,2026-03-06 17:00,,
FAB1-DP-004,PAINT & PROTECT DOORS & FRAMES (200 OF 622),Not Started,Remobilization and Out-of-Sequence Completion List - DD07-10-2025,,,,,,,,2026-03-09 08:00,2026-03-13 17:00,,
FAB1-DP-005,PAINT & PROTECT DOORS & FRAMES (250 OF 622),Not Started,Remobilization and Out-of-Sequence Completion List - DD07-10-2025,,,,,,,,2026-03-16 08:00,2026-03-20 17:00,,
FAB1-DP-006,PAINT & PROTECT DOORS & FRAMES (300 OF 622),Not Started,Remobilization and Out-of-Sequence Completion List - DD07-10-2025,,,,,,,,2026-03-23 08:00,2026-03-27 17:00,,
FAB1-DP-007,PAINT & PROTECT DOORS & FRAMES (350 OF 622),Not Started,Remobilization and Out-of-Sequence Completion List - DD07-10-2025,,,,,,,,2026-03-30 08:00,2026-04-03 17:00,,
FAB1-DP-008,PAINT & PROTECT DOORS & FRAMES (400 OF 622),Not Started,Remobilization and Out-of-Sequence Completion List - DD07-10-2025,,,,,,,,2026-04-06 08:00,2026-04-10 17:00,,
FAB1-DP-009,PAINT & PROTECT DOORS & FRAMES (450 OF 622),Not Started,Remobilization and Out-of-Sequence Completion List - DD07-10-2025,,,,,,,,2026-04-13 08:00,2026-04-17 17:00,,
FAB1-DP-010,PAINT & PROTECT DOORS & FRAMES (500 OF 622),Not Started,Remobilization and Out-of-Sequence Completion List - DD07-10-2025,,,,,,,,2026-04-20 08:00,2026-04-24 17:00,,
FAB1-DP-011,PAINT & PROTECT DOORS & FRAMES (550 OF 622),Not Started,Remobilization and Out-of-Sequence Completion List - DD07-10-2025,,,,,,,,2026-04-27 08:00,2026-05-01 17:00,,
FAB1-DP-012,PAINT & PROTECT DOORS & FRAMES (600 OF 622),Not Started,Remobilization and Out-of-Sequence Completion List - DD07-10-2025,,,,,,,,2026-05-04 08:00,2026-05-08 17:00,,
FAB1-DP-013,PAINT & PROTECT DOORS & FRAMES (622 OF 622),Not Started,Remobilization and Out-of-Sequence Completion List - DD07-10-2025,,,,,,,,2026-05-11 08:00,2026-05-15 17:00,,
FAB1-ST18D-03,INSTALL DOOR FRAMES - FAB1-ST18D,Complete,Stair 18 - 4F - SUE-FAB1-ST18,,,,,,,,2025-09-23 08:00,2025-09-23 17:00,2025-09-23 08:00,2025-09-23 17:00
FAB1-ST18D-04,INSTALL DOOR & HARDWARE - FAB1-ST18D,Active,Stair 18 - 4F - SUE-FAB1-ST18,,,,,,,,2025-11-18 08:00,2025-11-24 17:00,2025-11-18 08:00,
FAB1-ST18D-05,PAINT & PROTECT DOORS & FRAMES - FAB1-ST18D,Not Started,Stair 18 - 4F - SUE-FAB1-ST18,,,,,,,,2026-02-16 08:00,2026-02-20 17:00,,
