Task Code,Task Description,Status,WBS,Building,Area,Level,Room,Subcontractor,Trade,Responsible Person,Planned Start,Planned Finish,Actual Start,Actual Finish
CN.SEB55050,Drywall Clips & AMTS Installs Support Beams - SEB2- GL 22-25 - L4 - D LINE,Complete,CONSTRUCTION,,SUEN-2 - 22-25,L4 - SUP Roof - FAB Roof,DS/AD INTERIORS,,TBD Architectural Finishes,,2024-03-23 08:00,2024-03-30 10:00,2024-03-11 00:00,2024-03-21 00:00
CN.SWB5.7140,FINISH DRYWALL & WATERPROOFING & CMP - GL 33 - L1-L2 - LEAVEOUT AREA - E-E.2,Complete,CONSTRUCTION,,GRIDLINE 33,GL 33- LEAVEOUTS,GL33 EXTERIOR AREA (FAB EAST) - D-G,BERG,,,2025-06-24 07:00,2025-07-29 17:00,2025-06-16 07:00,2025-07-15 17:00
CN.SWB5.7330,BERG - FINISH DRYWALL & WATERPROOFING & CMP - GL 33 - L1-L2 - LOADING DECK LEAVEOUT AREA - G-G.2,Complete,CONSTRUCTION,,GRIDLINE 33,GL 33- LEAVEOUTS,GL33 EXTERIOR AREA (FAB WEST) - G-K,BERG,,,2024-12-09 07:00,2024-12-23 17:00,2024-11-13 07:00,2025-07-28 17:00
CN.SWB5.7610,FINISH DRYWALL & WATERPROOFING &CMP - GL 33 - L1-L2 - LOADING DECK LEAVEOUT AREA - H.5-J,Complete,CONSTRUCTION,,GRIDLINE 33,GL 33- LEAVEOUTS,GL33 EXTERIOR AREA (FAB WEST) - G-K,BERG,,,2024-12-12 07:00,2025-01-14 17:00,2024-12-12 07:00,2025-07-22 17:00
CN.BB51.ST.2010,HANG EXTERIOR FRAMING & DRYWALL (1-LAYERS) - GL 33 - STAIR 5 - K-L(2 SHIFTS),Complete,CONSTRUCTION,,GRIDLINE 33,GL 33 STAIR 5 (WEST),STAIR 5 (WEST) - K-L,BERG,,,2024-11-21 07:00,2024-11-27 17:00,2024-11-21 07:00,2025-01-31 17:00
CN.BB51.ST.2080,INSTALL & INSPECT  INTERIOR DRYWALL VESTIBULE 5 3RD LAYER - GL 33 UPTO LVL 2 - STAIR 5 - K-L,Complete,CONSTRUCTION,,GRIDLINE 33,GL 33 STAIR 5 (WEST),STAIR 5 (WEST) - K-L,BERG,,,2025-08-19 07:00,2025-09-09 17:00,2025-08-14 07:00,2025-08-25 17:00
CN.BB51.ST.2070,CHERRY - PRIME & FINISH PAINT INTERIOR DRYWALL - Vestibules 5 - Level 1 & 2 - GL 33 - STAIR 5 - K-L(),Not Started,CONSTRUCTION,,GRIDLINE 33,GL 33 STAIR 5 (WEST),STAIR 5 (WEST) - K-L,CHERRY COATING,,,2025-11-24 07:00,2025-12-02 17:00,,
CN.BB51.ST.2050,BERG - INSTALL DOOR FRAMES - GL 33 - STAIR 5 - K-L - demo drywall and Install PART OF FRAMING,Complete,CONSTRUCTION,,GRIDLINE 33,GL 33 STAIR 5 (WEST),STAIR 5 (WEST) - K-L,BERG,,,2025-09-04 07:00,2025-09-11 17:00,2025-08-11 07:00,2025-09-16 17:00
CN.BB51.ST.2370,HANG EXTERIOR DRYWALL (1-LAYERS) - GL 33 - STAIR 18 - C-D (),Complete,CONSTRUCTION,,GRIDLINE 33,GL 33 STAIR 18 (EAST),STAIR 18 (EAST) - C-D,BERG,,,2025-02-10 07:00,2025-02-14 17:00,2025-02-10 07:00,2025-07-18 17:00
CN.BB51.ST.2420,INSTALL & INSPECT DRYWALL STAIR 18 INTERIOR SHAFT (2HR)(3HR) - GL 33 - STAIR 18 - C-D (),Complete,CONSTRUCTION,,GRIDLINE 33,GL 33 STAIR 18 (EAST),STAIR 18 (EAST) - C-D,BERG,,,2025-08-19 07:00,2025-09-16 17:00,2025-08-14 07:00,2025-10-02 17:00
CN.BB51.ST.2450,TAPE & FLOAT SANDING INTERIOR SHAFT DRYWALL & SANDING - - GL 33 - STAIR 18 - C-D (),Complete,CONSTRUCTION,,GRIDLINE 33,GL 33 STAIR 18 (EAST),STAIR 18 (EAST) - C-D,CHERRY COATING,,,2025-10-06 07:00,2025-10-10 17:00,2025-10-03 07:00,2025-10-23 17:00
CN.BB51.ST.2480,CHERRY - PRIME & FINISH PAINT INTERIOR DRYWALL - Vestibule and remaining - GL 33 - STAIR 18 - C-D (),Not Started,CONSTRUCTION,,GRIDLINE 33,GL 33 STAIR 18 (EAST),STAIR 18 (EAST) - C-D,CHERRY COATING,,,2025-12-11 07:00,2025-12-19 17:00,,
CN.BB51.ST.2520,INSTALL & INSPECT  INTERIOR DRYWALL & FIRECAULK - VESTIBULE 18 - 3RD LAYER - GL 33 LVL 3 - 4  - STAIR 18 - C-D,Complete,CONSTRUCTION,,GRIDLINE 33,GL 33 STAIR 18 (EAST),STAIR 18 (EAST) - C-D,,,,2025-09-02 07:00,2025-09-10 17:00,2025-09-02 07:00,2025-11-06 17:00
CN.BB51.ST.1670,IMPACT - SECAI DIRECTS FRAMING AND DRYWALL TO STOP FOR ACCESS - GL 33 - L2 - B-C,Complete,CONSTRUCTION,,GRIDLINE 33,L2 - SubFab Level,GL33 EXTERIOR AREA (SUE) - A-C,SECAI,,,2024-04-15 07:00,2024-06-20 17:00,2024-02-12 07:00,2024-07-31 17:00
CN.SEA4.1181,REMEDY - DEMO DRYWALL (INT) - SEA4 - GL 9-6 - D LINE - L2,Complete,CONSTRUCTION,,SUES-4 - 9-6,L2 - SubFab Level,DS/AD INTERIORS,SECAI,,,2024-07-01 07:00,2024-07-08 17:00,2024-07-01 07:00,2024-07-12 17:00
FIZ.WEST.2481,IMPACT [S12] - DEMO DRYWALL & FIREPROOFING FOR STRUCTURAL STEEL - GL 1-3 - J-L - L2-L4,Complete,CONSTRUCTION,,FIZ 2 / SUWS 5  (GL6-1) - GL J - N - DATA CENTER 1,L4 - SUP Roof - FAB Roof,,BERG,,,2024-05-31 07:00,2024-06-07 17:00,2024-05-16 07:00,2024-06-24 17:00
FIZ.WEST.2491,IMPACT [S12] - REINSTALL DRYWALL & FIREPROOFING - GL 1-3 - J-L - L2-L4,Complete,CONSTRUCTION,,FIZ 2 / SUWS 5  (GL6-1) - GL J - N - DATA CENTER 1,L4 - SUP Roof - FAB Roof,,BERG,,,2024-07-17 07:00,2024-07-23 17:00,2024-07-03 07:00,2024-07-12 17:00
FIZ.WEST.2521,IMPACT [S12] - DEMO DRYWALL & FIREPROOFING FOR STRUCTURAL STEEL - GL 1-3 - C-E - L2-L4,Complete,CONSTRUCTION,,SUES-5 - 6-1 - FIZ - GL A -E,L4 - SUP Roof - FAB Roof,,BERG,,,2024-05-31 07:00,2024-06-07 17:00,2024-05-16 07:00,2024-06-20 17:00
FIZ.WEST.2531,IMPACT [S12] - REINSTALL DRYWALL & FIREPROOFING - GL 1-3 - C-E - L2-L4,Complete,CONSTRUCTION,,SUES-5 - 6-1 - FIZ - GL A -E,L4 - SUP Roof - FAB Roof,,BERG,,,2024-07-01 07:00,2024-07-09 17:00,2024-06-24 07:00,2024-07-07 17:00
CN.SEA2.1181,IMPACT - DRYWALL DEMO PER SECAI DIRECTION SEA2 GL 16-13 - L3 - D LINE,Complete,CONSTRUCTION,,SUES-2 - 16-13,L3 / Waffle Slab Level,,,,,2024-04-22 07:00,2024-04-25 17:00,2024-04-22 07:00,2024-05-01 17:00
CN.SWB5.2400,CCD 248 - ISSUE & APPROVAL OF CCD FOR TEMP DRYWALL ENCLOSURE - SE PENTHOUSE,Complete,CONSTRUCTION,,SOUTH EAST PENTHOUSE,L4 - SUP Roof - FAB Roof,,,,,2024-05-17 07:00,2024-05-23 17:00,2024-05-08 07:00,2024-05-17 17:00
CN.SWB5.2410,CCD 248 - FRAME & HANG TEMP DRYWALL ENCLOSURE - GL5 & A-LINE - SE PENTHOUSE,Complete,CONSTRUCTION,,SOUTH EAST PENTHOUSE,L4 - SUP Roof - FAB Roof,,,,,2024-05-24 07:00,2024-06-10 17:00,2024-05-22 07:00,2024-05-30 17:00
CN.SWA5.DS.3020,REMEDY - FRAME & DRYWALL (INT) - SWA5 - GL 6-3 - K LINE - L2,Complete,CONSTRUCTION,,FIZ 2 / SUWS 5  (GL6-1) - GL J - N - DATA CENTER 1,L2 - SubFab Level,DS/AD INTERIORS,SECAI,,,2024-07-17 07:00,2024-08-06 17:00,2024-07-17 07:00,2024-08-07 17:00
CN.SEB1.7550,HANG DRYWALL (1 SIDE) - BATHROOM - GL 19-22 - C-A - L1,Complete,CONSTRUCTION,,SUEN-1 - 19-22,L1 - Fndn Slab,BATHROOM,,,,2025-06-10 07:00,2025-06-10 17:00,2025-06-10 07:00,2025-08-25 17:00
CN.SEB1.7570,HANG DRYWALL (2ND SIDE) - BATHROOM - GL 19-22 - C-A - L1,Complete,CONSTRUCTION,,SUEN-1 - 19-22,L1 - Fndn Slab,BATHROOM,,,,2025-08-25 07:00,2025-08-28 17:00,2025-08-25 07:00,2025-09-04 17:00
CN.SWA5.1990,REMAINING HANG DRYWALL (1 SIDE) - BATHROOM - GL 3 - M-N - L1,Complete,CONSTRUCTION,,FIZ 2 / SUWS 5  (GL6-1) - GL J - N - DATA CENTER 1,L1 - Fndn Slab,BATHROOM,,,,2025-08-14 07:00,2025-08-19 17:00,2025-05-29 07:00,2025-06-06 17:00
CN.SWA5.9320,HANG DRYWALL (2ND SIDE) - BATHROOM - GL 3 - M-N - L1,Complete,CONSTRUCTION,,FIZ 2 / SUWS 5  (GL6-1) - GL J - N - DATA CENTER 1,L1 - Fndn Slab,BATHROOM,,,,2025-05-07 07:00,2025-05-12 17:00,2025-05-07 07:00,2025-07-18 17:00
CN.SWA5.9330,TAPE & FINISH DRYWALL - BATHROOM - GL 3 - M-N - L1,Complete,CONSTRUCTION,,FIZ 2 / SUWS 5  (GL6-1) - GL J - N - DATA CENTER 1,L1 - Fndn Slab,BATHROOM,,,,2025-07-21 07:00,2025-07-23 17:00,2025-07-21 07:00,2025-07-23 17:00
CN.SEB1.9420,TAPE & FINISH DRYWALL - BATHROOM - GL 19-22 - C-A - L1,Complete,CONSTRUCTION,,SUEN-1 - 19-22,L1 - Fndn Slab,BATHROOM,,,,2025-09-04 07:00,2025-09-08 17:00,2025-09-04 07:00,2025-09-08 17:00
CN.SWA3.9270,HANG DRYWALL (1 SIDE) - BATHROOM - GL 11-12 - L-N - L1,Complete,CONSTRUCTION,,SUWS-3 - 12-9,L1 - Fndn Slab,BATHROOM,,,,2024-11-11 07:00,2024-11-15 17:00,2024-08-01 07:00,2024-08-09 07:00
CN.SWA3.9290,HANG DRYWALL (2ND SIDE) - BATHROOM - GL 11-12 - L-N - L1,Complete,CONSTRUCTION,,SUWS-3 - 12-9,L1 - Fndn Slab,BATHROOM,,,,2024-11-15 07:00,2024-11-21 17:00,2024-08-12 07:00,2024-08-15 07:00
CN.SWA3.9300,"REMAINING DRYWALL , TAPE & FINISH DRYWALL - BATHROOM - GL 11-12 - L-N - L1",Complete,CONSTRUCTION,,SUWS-3 - 12-9,L1 - Fndn Slab,BATHROOM,,,,2025-07-21 07:00,2025-07-22 17:00,2025-07-21 07:00,2025-08-05 17:00
CN.SWA1.1492,HANG DRYWALL (1 SIDE) - BATHROOM - GL 15-18 - K-N - L3,Complete,CONSTRUCTION,,SUWS-1 - 18-15,L3 / Waffle Slab Level,BATHROOM,,,,2025-05-05 07:00,2025-05-16 17:00,2025-05-05 07:00,2025-05-16 17:00
CN.SWA1.1512,HANG DRYWALL (2ND SIDE) - BATHROOM - GL 15-18 - K-N - L3,Complete,CONSTRUCTION,,SUWS-1 - 18-15,L3 / Waffle Slab Level,BATHROOM,,,,2025-07-23 07:00,2025-07-28 17:00,2025-05-05 07:00,2025-06-07 17:00
CN.SWA1.9450,TAPE & FINISH DRYWALL - BATHROOM - GL 15-18 - K-N - L3,Complete,CONSTRUCTION,,SUWS-1 - 18-15,L3 / Waffle Slab Level,BATHROOM,,,,2025-06-13 07:00,2025-06-13 17:00,2025-06-13 07:00,2025-06-13 17:00
CN.SWB5.6980,IMPACT - REPAIR CONCRETE CURB TO FINISH DRYWALL - GL 33 - L1 - A-C,Complete,CONSTRUCTION,,GRIDLINE 33,L1 - Fndn Slab,GL33 EXTERIOR AREA (SUE) - A-C,,,,2024-09-20 07:00,2024-09-26 17:00,2024-08-12 07:00,2024-08-14 17:00
CN.SWB5.6340,IMPACT - REPAIR CONCRETE CURB TO FINISH DRYWALL - GL 33 - L1 - G-K,Complete,CONSTRUCTION,,GRIDLINE 33,L1 - Fndn Slab,GL33 EXTERIOR AREA (FAB WEST) - G-K,,,,2024-11-15 07:00,2024-11-21 17:00,2024-08-28 07:00,2024-08-29 17:00
CN.SWB34600,IMPACT - TARPS BLOCKING THE DRYWALL INSTALL - SWB-3- ELECTRICAL ROOM - GL 29-30 L,Complete,CONSTRUCTION,,SUWN-3 - 24-27,L3 / Waffle Slab Level,ELECTRIC RM 1,,,,2024-07-11 07:00,2024-07-16 17:00,2024-07-11 07:00,2024-08-01 17:00
CN.SWB5.9520,IMPACT -TEMP DUCT IN THE WAY IN THE ROOM TO FINISH DRYWALL - SWB-5 - L2 - FIRE ALARM 22 GL 5-6 A-B,Complete,CONSTRUCTION,,SUES-5 - 6-1 - FIZ - GL A -E,L2 - SubFab Level,FIRE ALARM ,,,,2024-07-18 07:00,2024-07-23 17:00,2024-07-18 07:00,2025-10-03 17:00
CN.SWB5.9560,IMPACT - EAST WALL REDESIGN TO SHAFT WALL / PROVIDE SCAFFOLDING - DRYWALL - SWB-5 - L2 - FIRE ALARM 20 GL 5-6 A-B,Complete,CONSTRUCTION,,SUES-1 - 19-16,L2 - SubFab Level,FIRE ALARM ,,,,2024-08-01 07:00,2024-08-06 17:00,2024-08-01 07:00,2024-08-10 17:00
CN.AB.AR.7110,FRAMING & DRYWALL - CV ROOM EXIT PASS WAY 20 - SEA1 - GL 18-19 - C-A - L1 - SECAI TOOK OVER FOR ACCELERATION,Complete,CONSTRUCTION,,SUES-1 - 19-16,L1 - Fndn Slab,CV ROOM,,,,2025-10-13 07:00,2025-10-22 17:00,2025-06-27 07:00,2025-06-27 17:00
CN.AB.AR.7120,REMAINING FRAMING & DRYWALL - IT/SECURITY 20 - SEA1 - GL 18-19 - C-A - L1,Complete,CONSTRUCTION,,SUES-1 - 19-16,L1 - Fndn Slab,IT/SECURITY,,,,2024-07-26 07:00,2024-08-01 17:00,2024-07-24 07:00,2024-08-01 17:00
CN.AB.AR.7130,FRAMING & DRYWALL - SWB-1- MCC RM - GL 18-21 K-N,Complete,CONSTRUCTION,,SUWN-1 - 18-21,L1 - Fndn Slab,MCC RM 1,,,,2024-08-12 07:00,2024-08-16 17:00,2024-08-10 07:00,2024-10-11 10:00
CN.AB.AR.7150,REMAINING DRYWALL & FINISHES - SWB-1- FIRE ALARM 3 - GL 19-20 K-N - L1,Complete,CONSTRUCTION,,SUWN-1 - 18-21,L1 - Fndn Slab,FIRE ALARM ,,,,2024-08-09 07:00,2024-08-22 17:00,2024-07-24 07:00,2024-08-02 17:00
CN.AB.AR.4930,REMAINING DRYWALL & FINISHES  - FIRE ALARM 20  - SEA1 - GL 19-16 - C-A - L3,Complete,CONSTRUCTION,,SUES-1 - 19-16,L3 / Waffle Slab Level,FIRE ALARM ,,,,2024-07-25 07:00,2024-07-30 17:00,2024-07-25 07:00,2024-08-01 17:00
CN.AB.AR.7160,REMAINING DRYWALL & FINISHES  - IT/SECURITY  20  - SEA1 - GL 19-16 - C-A - L3,Complete,CONSTRUCTION,,SUES-1 - 19-16,L3 / Waffle Slab Level,IT/SECURITY,,,,2024-08-09 07:00,2024-08-15 17:00,2024-07-25 07:00,2024-08-05 17:00
CN.SEA5.9850,REMAINING FRAME & DRYWALL - IT/SECURITY 22 - SEA5 FIZ - GL 6-1 - L1(PENDING DRYWALL REMEDY),Complete,CONSTRUCTION,,SUES-5 - 6-1 - FIZ - GL A -E,L1 - Fndn Slab,IT/SECURITY,,,,2024-08-27 07:00,2024-09-04 17:00,2024-08-08 07:00,2024-08-13 17:00
CN.SEA5.10305,REMAINING FRAME & DRYWALL - IT/ SECURITY 1 - GL 3-6 - L1 - K LINE,Complete,CONSTRUCTION,,FIZ 2 / SUWS 5  (GL6-1) - GL J - N - DATA CENTER 1,L1 - Fndn Slab,IT/SECURITY,,,,2024-08-05 07:00,2024-08-12 17:00,2024-08-05 07:00,2024-08-10 17:00
CN.SEA5.1352,REMAINING DRYWALL & FINISHES - IT/SECURITY 22 -SEA5 FIZ - GL 4-5 - L2,Complete,CONSTRUCTION,,SUES-5 - 6-1 - FIZ - GL A -E,L2 - SubFab Level,IT/SECURITY,,,,2024-07-29 07:00,2024-08-02 17:00,2024-07-25 07:00,2024-08-05 17:00
CN.SWA5.L3.220,REMAINING DRYWALL & FINISHES - IT/SECURITY 1 -SWA5 - GL 3-4 - L3,Complete,CONSTRUCTION,,FIZ 2 / SUWS 5  (GL6-1) - GL J - N - DATA CENTER 1,L3 / Waffle Slab Level,IT/SECURITY,,,,2025-04-14 07:00,2025-04-17 17:00,2025-04-14 07:00,2025-04-17 17:00
CN.SWB5.9700,FINISH DRYWALL - GL 33 - L1-L3 - A-B- (PLATFORM AREA),Complete,CONSTRUCTION,,GRIDLINE 33,,GL33 EXTERIOR AREA (SUE) - A-C,SECAI,,,2025-01-06 07:00,2025-02-07 17:00,2025-01-04 07:00,2025-01-20 17:00
CN.SWB5.9730,BERG - FINISH DRYWALL & WATERPROOFING- LEAVEOUT FOR HOIST - GL 33 - L1-L3 - L-M LINE,Complete,CONSTRUCTION,,GRIDLINE 33,GL 33- LEAVEOUTS,GL33 EXTERIOR AREA (SUW) - L-N,BERG,,,2025-01-13 07:00,2025-02-14 17:00,2025-01-13 07:00,2025-07-22 12:00
CN.SWB5.9750,BERG - FINISH DRYWALL & WATERPROOFING - LEAVEOUT FOR SUPER DECK - GL 33 - L1-L3 - L-M LINE,Complete,CONSTRUCTION,,GRIDLINE 33,GL 33- LEAVEOUTS,GL33 EXTERIOR AREA (SUW) - L-N,BERG,,,2025-01-06 07:00,2025-01-30 17:00,2025-01-13 07:00,2025-07-23 12:00
CN.SWB5.8940,REMAINING DRYWALL & FINISHES - FIREALARM 22 - SE PENTHOUSE - GL 3-5 C-D,Complete,CONSTRUCTION,,SOUTH EAST PENTHOUSE,L4 - SUP Roof - FAB Roof,FIRE ALARM ,,,,2024-07-24 07:00,2024-07-29 17:00,2024-07-24 07:00,2024-08-02 17:00
CN.SWB5.2650,REMAINING DRYWALL & FINISHES - FIREALARM 1-SW PENTHOUSE,Complete,CONSTRUCTION,,SOUTH WEST PENTHOUSE,L4 - SUP Roof - FAB Roof,FIRE ALARM ,,,,2024-09-06 07:00,2024-09-12 17:00,2024-08-05 07:00,2024-08-12 17:00
CN.SWA5..2820,REMAINING FRAMING AND 1ST LAYER DRYWALL EXTERIOR - STAIR #20 - 19/D - ALL LEVELS,Complete,CONSTRUCTION,,SUES-1 - 19-16,INTERIOR STAIR TOWER - STAIR #20,,,,,2024-11-05 07:00,2024-11-08 17:00,2024-11-05 07:00,2025-10-09 17:00
CN.SEB3R.3900,REMAINING DRYWALL & FINISHES  - WAFER I/O - SEB3 - GL 25-28 - C-A - L1,Complete,CONSTRUCTION,,SUEN-3 - 25-28,L1 - Fndn Slab,WAFER I/O RM,,,,2024-10-25 07:00,2024-10-29 17:00,2024-08-24 07:00,2024-08-30 17:00
CN.SEB4.3900,"REMAINING FRAMING & DRYWALL, TAPE & FINISH - SEB4 - GL 28-31 - L1 C-A PR RM(PATCH UPTO 12' REQ BY SECAI )",Complete,CONSTRUCTION,,SUEN-4 - 28-31,L1 - Fndn Slab,PR RM,,,,2024-11-01 07:00,2024-11-07 17:00,2024-11-01 07:00,2025-10-03 17:00
CN.AB.AR.3230,"REMAINING FRAMNING, DRYWALL & FINISHES - H2 PURIFER ROOM GL 18-21 K-N",Complete,CONSTRUCTION,,SUWN-1 - 18-21,L1 - Fndn Slab,H2 PURIFIER RM,,,,2024-11-07 07:00,2024-11-12 17:00,2024-11-07 07:00,2024-11-11 17:00
CN.SWA5..3180,REMAINING EXTERIOR FRAMING AND 1ST LAYER DRYWALL - STAIR #21 - 13/D - ALL LEVELS(2 SHIFTS /DAY),Complete,CONSTRUCTION,,SUES-3 - 13-9,INTERIOR STAIR TOWER - STAIR #21 (CLEAN ROOM),,,,,2024-11-16 07:00,2024-11-19 17:00,2024-11-13 07:00,2025-03-03 17:00
CN.SWA5..3280,SECAI - INSTALL INTERIOR DRYWALL - STAIR #22 - 6/D - ALL LEVELS[/DAY],Complete,CONSTRUCTION,,SUES-5 - 6-1 - FIZ - GL A -E,INTERIOR STAIR TOWER - STAIR #22 - DE-SCOPED,,,,,2025-08-16 07:00,2025-08-16 17:00,2025-08-16 07:00,2025-08-16 17:00
CN.SWA5..3350,FRAMING AND 1ST LAYER EXTERIOR DRYWALL & inspect - STAIR #2 - 11/L - ALL LEVELS,Complete,CONSTRUCTION,,SUWS-3 - 12-9,INTERIOR STAIR TOWER - STAIR #2 (CLEAN ROOM),,,,,2024-11-02 07:00,2024-11-07 17:00,2024-10-28 07:00,2024-11-19 07:00
CN.SWA5..3400,REMAINING FRAMING AND 1ST LAYER DRYWALL EXTERIOR & INSPECT - STAIR #3 - 18/L - ALL LEVELS,Complete,CONSTRUCTION,,SUWN-1 - 18-21,INTERIOR STAIR TOWER - STAIR #3,,,,,2024-11-08 07:00,2024-11-12 17:00,2024-11-08 07:00,2025-10-03 17:00
CN.SWA5..3450,REMAINING FRAMING AND 1st DRYWALL EXTERIOR install & INSPECT - STAIR #4 - 23/L - ALL LEVELS [/DAY],Complete,CONSTRUCTION,,SUWN-2 - 21-24,INTERIOR STAIR TOWER - STAIR #4 (CLEAN ROOM),,,,,2025-06-26 07:00,2025-07-01 17:00,2025-04-29 07:00,2025-05-05 17:00
CN.SEA5.10520,IMPACT - COMPLETE REMAINING DRYWALL LEAVEOUTS FOR FIREPROOFING - ELEVATOR 22,Complete,CONSTRUCTION,,SUES-5 - 6-1 - FIZ - GL A -E,,ELEVATOR,,,,2024-09-16 07:00,2024-09-24 17:00,2024-08-22 07:00,2024-08-27 17:00
CN.SEA5.10530,IMPACT - APACHE DEMO DRYWALL & SCRAPE FIREPROOFING SFRM-1 - ELEVATOR 22 - ALL LEVELS,Complete,CONSTRUCTION,,SUES-5 - 6-1 - FIZ - GL A -E,,ELEVATOR,,,,2024-08-26 07:00,2024-09-05 17:00,2024-08-12 07:00,2024-08-15 17:00
CN.SEA5.10560,COMPLETE MECHANICAL ROOM DRYWALL / TAPE & FLOAT - ELEVATOR 22,Complete,CONSTRUCTION,,SUES-5 - 6-1 - FIZ - GL A -E,,ELEVATOR,,,,2024-08-26 07:00,2024-09-05 17:00,2024-08-12 07:00,2024-08-27 17:00
CN.SEB5.9190,IMPACT - COMPLETE DRYWALL AT FIREPROOFING LEAVEOUTS - ELEVATOR 18,Complete,CONSTRUCTION,,SUEN-5 - 31-33,,ELEVATOR,BAKER,,,2024-09-24 07:00,2024-10-03 17:00,2024-09-19 07:00,2024-09-25 17:00
CN.SWA5..3650,DEMO DRYWALL FOR SANDBLASTING - STAIR #20 - 19/D - ALL LEVELS,Complete,CONSTRUCTION,,SUES-1 - 19-16,INTERIOR STAIR TOWER - STAIR #20,,,,,2024-09-06 07:00,2024-09-06 17:00,2024-08-31 07:00,2024-09-02 17:00
CN.SWA5..3660,DEMO DRYWALL FOR SANDBLASTING - STAIR #21 - 13/D - ALL LEVELS,Complete,CONSTRUCTION,,SUES-3 - 13-9,INTERIOR STAIR TOWER - STAIR #21 (CLEAN ROOM),,,,,2024-09-06 07:00,2024-09-06 17:00,2024-09-03 07:00,2024-09-03 17:00
CN.SWA5.9570,IMPACT - COORDINATE & COMPLETE DRYWALL DEMO FOR STUB COLUMN REPAIR - GL 3 - L-N - L2,Complete,CONSTRUCTION,,FIZ 2 / SUWS 5  (GL6-1) - GL J - N - DATA CENTER 1,L2 - SubFab Level,,BAKER,,,2024-08-29 07:00,2024-09-04 17:00,2024-08-08 07:00,2024-08-20 17:00
CN.SEB5.9210,INSTALL FRAMING/DRYWALL/TAPE+FLOAT - MECHANICAL ROOM - ELEVATOR 18 (MK MARLOW),Complete,CONSTRUCTION,,SUEN-5 - 31-33,,ELEVATOR,BAKER,,,2024-09-13 07:00,2024-10-03 17:00,2024-08-12 07:00,2024-08-23 17:00
CN.SEB5.9230,IMPACT - REMDIATE DRYWALL & CEILING DAMAGED DUE TO WATER INTRUCTION - MECHANICAL ROOM - ELEVATOR 18,Complete,CONSTRUCTION,,SUEN-5 - 31-33,,ELEVATOR,BAKER,,,2024-09-23 07:00,2024-10-15 17:00,2024-09-18 07:00,2024-10-03 17:00
CN.SEA5.10640,"FRAMING, DRYWALL, FIRE CAULKING - SHAFT LINER AND FRONTS- ELEVATOR 22 - 7 per front",Complete,CONSTRUCTION,,SUES-5 - 6-1 - FIZ - GL A -E,,ELEVATOR,,,,2025-07-23 07:00,2025-09-17 17:00,2025-07-11 07:00,2025-08-18 08:00
CN.SWB5.10070,FRAMING AND DRYWALL AT FIREPROOFING LEAVEOUT - LVL 4 - ELEVATOR 5,Complete,CONSTRUCTION,,SUWN-5 - 30-33,,ELEVATOR,BAKER,,,2024-10-21 07:00,2024-10-29 17:00,2024-10-21 07:00,2024-10-24 17:00
CN.SWB5.10130,"COMPLETE REMAINING FRAMING, DRYWALL, FIRE CAULKING - DOOR FRONTS - ELEVATOR 5 - LVL1 SECAI TOOK OVER",Complete,CONSTRUCTION,,SUWN-5 - 30-33,,ELEVATOR,BAKER,,,2025-09-04 07:00,2025-09-24 17:00,2025-08-26 07:00,2025-09-29 07:00
CN.AB.AR.7620,INSTALL FRAMING/DRYWALL/TAPE+FLOAT - MECHANICAL ROOM - ELEVATOR 01,Complete,CONSTRUCTION,,FIZ 2 / SUWS 5  (GL6-1) - GL J - N - DATA CENTER 1,,ELEVATOR,BAKER,,,2025-06-30 07:00,2025-06-30 17:00,2025-06-30 07:00,2025-06-30 17:00
CN.AB.AR.7730,INSTALL FRAMING/DRYWALL/TAPE+FLOAT - MECHANICAL ROOM - ELEVATOR 01A,Complete,CONSTRUCTION,,FIZ 2 / SUWS 5  (GL6-1) - GL J - N - DATA CENTER 1,,ELEVATOR,BAKER,,,2025-01-06 07:00,2025-01-24 17:00,2025-01-06 07:00,2025-02-15 17:00
CN.SWA5..3880,REMOVE CONTAINMENT & SCAFFOLDING MODIFICATION FOR DRYWALL - STAIR #4 - 23/L - ALL LEVELS,Complete,CONSTRUCTION,,SUWN-2 - 21-24,INTERIOR STAIR TOWER - STAIR #4 (CLEAN ROOM),,,,,2025-06-21 07:00,2025-06-25 17:00,2025-04-19 07:00,2025-04-28 17:00
STAIR.1370,"IMPACT - NEED RAISED ACCESS FLOOR TO BE COMPLETE - FIZ - LEVEL 02 #46, #56, #57-57/56 Completed. Pending drywall for 46",Complete,CONSTRUCTION,,INTERIOR STAIRS,L2 - SubFab Level,FIZ,,,,2024-09-20 07:00,2024-09-26 17:00,2024-06-11 07:00,2025-08-08 17:00
CN.SWB5.10230,FRAMING AND DRYWALL AT FIREPROOFING LEAVEOUT - LVL 4 - ELEVATOR 18,Complete,CONSTRUCTION,,SUWN-5 - 30-33,,ELEVATOR,BAKER,,,2024-10-25 07:00,2024-11-04 17:00,2024-10-25 07:00,2024-11-01 17:00
CN.SWA5..4120,INSTALL- 2ND LAYER EXTERIOR DRYWALL & inspect - STAIR #2 - 11/L - ALL LEVELS,Complete,CONSTRUCTION,,SUWS-3 - 12-9,INTERIOR STAIR TOWER - STAIR #2 (CLEAN ROOM),,,,,2024-11-12 07:00,2024-11-22 17:00,2024-11-20 07:00,2024-12-02 16:00
CN.SWA5..4240,INSPECT - EXTERIOR 1ST LAYER DRYWALL - STAIR #21 - 13/D - ALL LEVELS,Complete,CONSTRUCTION,,SUES-3 - 13-9,INTERIOR STAIR TOWER - STAIR #21 (CLEAN ROOM),,,,,2024-11-18 07:00,2024-11-18 17:00,2024-11-18 07:00,2025-04-07 17:00
CN.SWA5..4250,INSTALL -  EXTERIOR 2ND  LAYER DRYWALL & INSPECT - STAIR #21 - 13/D - ALL LEVELS,Complete,CONSTRUCTION,,SUES-3 - 13-9,INTERIOR STAIR TOWER - STAIR #21 (CLEAN ROOM),,,,,2024-12-02 07:00,2024-12-04 17:00,2024-12-02 00:00,2025-05-05 17:00
CN.SWA5..4350,INSPECT - 1ST LAYER DRYWALL EXTERIOR & inspect  - STAIR #20 - 19/D - ALL LEVELS,Complete,CONSTRUCTION,,SUES-1 - 19-16,INTERIOR STAIR TOWER - STAIR #20,,,,,2024-12-05 07:00,2024-12-05 17:00,2024-11-11 07:00,2025-09-30 17:00
CN.SWA5..4360,INSTALL - 2ND  LAYER DRYWALL EXTERIOR & inspect - STAIR #20 - 19/D - ALL LEVELS,Complete,CONSTRUCTION,,SUES-1 - 19-16,INTERIOR STAIR TOWER - STAIR #20,,,,,2024-11-20 07:00,2024-11-23 17:00,2024-11-20 07:00,2025-10-07 17:00
CN.SWA5..4460,INSTALL - 2ND  LAYER DRYWALL EXTERIOR & INSPECT - STAIR #3 - 18/L - ALL LEVELS,Complete,CONSTRUCTION,,SUWN-1 - 18-21,INTERIOR STAIR TOWER - STAIR #3,,,,,2024-11-21 07:00,2024-11-27 17:00,2024-11-25 07:00,2025-10-10 17:00
CN.SWA5..4670,INSTALL - 2ND LAYER DRYWALL EXTERIOR & inspect  - STAIR #4 - 23/L - ALL LEVELS [/DAY],Complete,CONSTRUCTION,,SUWN-2 - 21-24,INTERIOR STAIR TOWER - STAIR #4 (CLEAN ROOM),,,,,2025-07-02 07:00,2025-07-08 17:00,2025-05-20 07:00,2025-05-30 17:00
CN.SWA5..4840,INSTALL - 2ND LAYER DRYWALL EXTERIOR & inspect  - STAIR #19 - 23/L - ALL LEVELS(),Complete,CONSTRUCTION,,SUEN-3 - 25-28,INTERIOR STAIR TOWER - STAIR #19 (CLEAN ROOM) - DE-SCOPED,,,,,2025-09-03 07:00,2025-09-08 17:00,2025-06-27 07:00,2025-06-27 17:00
CN.SWA5..5210,SECAI - INSTALL INTERIOR DRYWALL - STAIR #1 - 5/L - ALL LEVELS - SECAI TOOK OVER FOR ACCELRATION,Complete,CONSTRUCTION,,FIZ 2 / SUWS 5  (GL6-1) - GL J - N - DATA CENTER 1,INTERIOR STAIR TOWER - STAIR #1 - DE-SCOPED,,,,,2025-06-27 07:00,2025-06-27 17:00,2025-06-27 07:00,2025-06-27 17:00
CN.SWA5..5220,INSTALL- REMAINING DRYWALL EXTERIOR - STAIR #1 - LVL 4 - SECAI TOOK OVER FOR ACCELRATION,Complete,CONSTRUCTION,,FIZ 2 / SUWS 5  (GL6-1) - GL J - N - DATA CENTER 1,INTERIOR STAIR TOWER - STAIR #1 - DE-SCOPED,,,,,2025-06-24 07:00,2025-06-27 17:00,2025-06-27 07:00,2025-06-27 17:00
CN.SWA5..5230,INSPECT - REMAINING DRYWALL EXTERIOR - STAIR #1 - LVL 4 - SECAI TOOK OVER FOR ACCELRATION,Complete,CONSTRUCTION,,FIZ 2 / SUWS 5  (GL6-1) - GL J - N - DATA CENTER 1,INTERIOR STAIR TOWER - STAIR #1 - DE-SCOPED,,,,,2025-06-27 07:00,2025-06-27 17:00,2025-06-27 07:00,2025-06-27 17:00
CN.SWA5..5370,INSTALL - REMAINING DRYWALL EXTERIOR - STAIR #22 -  LVL 4,Complete,CONSTRUCTION,,SUES-5 - 6-1 - FIZ - GL A -E,INTERIOR STAIR TOWER - STAIR #22 - DE-SCOPED,,,,,2025-08-18 07:00,2025-08-18 17:00,2025-08-18 07:00,2025-08-18 17:00
CN.SWA5..5380,INSPECT - REMAINING DRYWALL EXTERIOR  - STAIR #22 - LVL 4,Complete,CONSTRUCTION,,SUES-5 - 6-1 - FIZ - GL A -E,INTERIOR STAIR TOWER - STAIR #22 - DE-SCOPED,,,,,2025-08-13 07:00,2025-08-13 17:00,2025-08-13 07:00,2025-08-13 17:00
CN.BB51.ST.2892,INSPECT -  EXTERIOR FRAMING &  DRYWALL (1-LAYERS) - GL 33 - STAIR 5 - K-L,Complete,CONSTRUCTION,,GRIDLINE 33,GL 33 STAIR 5 (WEST),STAIR 5 (WEST) - K-L,BERG,,,2025-02-03 07:00,2025-02-03 17:00,2025-02-01 07:00,2025-02-01 17:00
CN.BB51.ST.2942,SCAFFOLDING MODIFICATION FOR DRYWALL & HANDRAIL INSTALL - GL 33 - STAIR 5 - K-L(2 SHIFTS),Complete,CONSTRUCTION,,GRIDLINE 33,GL 33 STAIR 5 (WEST),STAIR 5 (WEST) - K-L,BERG,,,2024-10-31 07:00,2024-11-08 17:00,2024-10-30 07:00,2024-11-05 17:00
CN.BB51.ST.2992,INSTALL & INSPECT -  DRYWALL - STAIR 5 INTERIOR SHAFT 2nd-3rd layer - GL 33 - STAIR 5 - K-L(),Complete,CONSTRUCTION,,GRIDLINE 33,GL 33 STAIR 5 (WEST),STAIR 5 (WEST) - K-L,BERG,,,2025-08-14 07:00,2025-09-04 17:00,2025-08-14 07:00,2025-09-04 17:00
CN.BB51.ST.3052,BERG - EXTERIOR DRYWALL & INSPECT - GL 33 - STAIR 18 - C-C.5,Complete,CONSTRUCTION,,GRIDLINE 33,GL 33 STAIR 18 (EAST),STAIR 18 (EAST) - C-D,BERG,,,2025-08-01 07:00,2025-08-05 17:00,2025-07-16 07:00,2025-08-14 07:00
CN.SWB5.10500,IMPACT - FRAMING AND DRYWALL DAMAGE BY SECAI - LVL 2 - ELEVATOR 18,Complete,CONSTRUCTION,,SUWN-5 - 30-33,,ELEVATOR,BAKER,,,2024-10-01 07:00,2024-10-01 17:00,2024-10-01 07:00,2025-01-03 17:00
CN.SWB5.10620,REMAINING DRYWALL & FINISHES - DUCTSHAFTS/SE PENTHOUSE,Complete,CONSTRUCTION,,SOUTH EAST PENTHOUSE,L4 - SUP Roof - FAB Roof,,,,,2024-11-22 07:00,2024-11-27 17:00,2024-11-22 07:00,2025-01-06 17:00
CN.AB.AR.7880,FINISH DRYWALL AND FINISHES GL 12 - GL 12-15 - L-N - L1(need scaffold) - SECAI TOOK OVER ACCELERATION,Complete,CONSTRUCTION,,SUWS-2 - 15-12,L1 - Fndn Slab,WASTE WATER TANK RM,,,,2025-06-10 07:00,2025-06-10 07:00,2025-06-10 07:00,2025-06-10 07:00
CN.SWB4.6820,REMAINING FRAMING & DRYWALL - GL M-N/30,Complete,CONSTRUCTION,,SUWN-4 - 27-30,L2 - SubFab Level,BATT RM 3,,,,2025-09-02 07:00,2025-09-05 17:00,2025-09-02 07:00,2025-09-05 17:00
CN.SWA5.R.1180,INSTALL - ALL REMAINING FRAMING &  DRYWALLS - SUW - LEVEL 1,Active,CONSTRUCTION,,Support Building - West,L1 - Fndn Slab,,,,,2025-08-25 07:00,2025-10-06 17:00,2025-05-05 07:00,
CN.SWA5.9610,INSTALL- ALL REMAINING FRAMING & DRYWALL - SUW - LEVEL 2,Active,CONSTRUCTION,,Support Building - West,L2 - SubFab Level,,,,,2025-07-14 07:00,2025-08-22 17:00,2025-05-05 07:00,
CN.AB.AR.7960,INSTALL -  ALL REMAINING FRAMING &  DRYWALL - SUE - LEVEL3,Active,CONSTRUCTION,,Support Building - East,L3 / Waffle Slab Level,,,,,2024-12-16 07:00,2024-12-20 17:00,2024-12-09 17:00,
CN.SWA5.L3.290,INSTALL- ALL REMAINING FRAMING & DRYWALL - SUW- LEVEL 3,Complete,CONSTRUCTION,,Support Building - West,L3 / Waffle Slab Level,,,,,2024-12-16 07:00,2025-02-06 17:00,2024-12-09 07:00,2025-06-06 17:00
CN.AB.AR.7260,INSTALL - ALL REMAINING FRAMING & DRYWALL - SUE - LEVEL 1,Active,CONSTRUCTION,,Support Building - East,L1 - Fndn Slab,,,,,2025-08-01 07:00,2025-09-12 17:00,2025-05-05 07:00,
CN.SWB5.9530,INSTALL - ALL REMAINING FRAMING & DRYWALL - SUE - LEVEL 2,Active,CONSTRUCTION,,Support Building - East,L2 - SubFab Level,,,,,2025-07-03 07:00,2025-07-31 17:00,2025-04-07 07:00,
CN.SWB5.6990,INSTALL STUDD FRAMING FOR DRYWALL - STAIR #50 - (DESCOPE),Complete,CONSTRUCTION,,SUWN-4 - 27-30,INTERIOR STAIR TOWER - STAIR #50 - DE-SCOPED,,,,,2024-11-04 07:00,2024-11-19 17:00,2024-11-04 07:00,2025-06-27 17:00
CN.SEB1.10500,CEILING FRAMING & DRYWALL - BATHROOM - GL 19-22 - C-A - L1,Complete,CONSTRUCTION,,SUEN-1 - 19-22,L1 - Fndn Slab,BATHROOM,,,,2025-06-10 07:00,2025-06-16 17:00,2025-06-10 07:00,2025-09-04 17:00
CN.SWA5.9630,CEILING FRAMING & DRYWALL - BATHROOM - GL 3 - M-N - L1,Complete,CONSTRUCTION,,FIZ 2 / SUWS 5  (GL6-1) - GL J - N - DATA CENTER 1,L1 - Fndn Slab,BATHROOM,,,,2025-06-18 07:00,2025-06-24 17:00,2025-06-18 07:00,2025-07-18 17:00
STAIR.2620,IMPACT - IOCC FOR DRYWALL DEMO & DEMO DRYWALL STAIR #64 - SUW - 18-K - LEVEL 04,Complete,CONSTRUCTION,,INTERIOR STAIRS,L4 - SUP Roof - FAB Roof,SUW - SUPPORT WEST,,,,2025-01-29 07:00,2025-02-05 17:00,2025-01-29 07:00,2025-02-14 17:00
CN.SWB1..4620,FRAMING & DRYWALL - H2SO4 & NAOH TRANSFER - GL 18-21 K-N - L3,Complete,CONSTRUCTION,,SUWN-1 - 18-21,L3 / Waffle Slab Level,H2O4 & NAOH ,,,,2025-08-25 07:00,2025-08-26 17:00,2025-08-25 07:00,2025-08-26 17:00
CN.SWA5..5860,IMPACT - NCR#0268 - DRYWALL REWORK NEEDED - STAIR #2 & STAIR #3 - 18/L - ALL LEVELS,Complete,CONSTRUCTION,,SUWN-1 - 18-21,INTERIOR STAIR TOWER - STAIR #3,,,,,2025-03-24 07:00,2025-03-27 17:00,2025-04-07 07:00,2025-06-18 17:00
CN.SWA5..5870,IMPACT - NCR#0267 Drywall rework Needed - Interior STAIR 21 & STAIR #20 - 19/D - ALL LEVELS,Complete,CONSTRUCTION,,SUES-1 - 19-16,INTERIOR STAIR TOWER - STAIR #20,,,,,2024-11-20 07:00,2024-11-23 17:00,2025-04-02 07:00,2025-06-18 17:00
CN.BB51.ST.3342,INSTALL & INSPECT FRAMING/DRYWALL 1 LAYER EXTERIOR WALLS/EXPANSION JOINT - GL 33/34 - STAIR 5 - K-L,Complete,CONSTRUCTION,,GRIDLINE 33,GL 33 STAIR 5 (WEST),STAIR 5 (WEST) - K-L,BERG,,,2025-06-23 07:00,2025-07-08 17:00,2025-06-12 07:00,2025-06-25 17:00
CN.BB51.ST.3362,INSTALL & INSPECT INTERIOR DRYWALL CEILING 1ST-2ND LAYER  - GL 33 - STAIR 5 - K-L,Complete,CONSTRUCTION,,GRIDLINE 33,GL 33 STAIR 5 (WEST),STAIR 5 (WEST) - K-L,BERG,,,2025-09-09 07:00,2025-09-12 17:00,2025-09-04 07:00,2025-09-05 17:00
CN.BB51.ST.3392,INSTALL & INSPECT INTERIOR DRYWALL CEILING 1ST-2ND LAYER - GL 33 - STAIR 18 - C-D (),Complete,CONSTRUCTION,,GRIDLINE 33,GL 33 STAIR 18 (EAST),STAIR 18 (EAST) - C-D,BERG,,,2025-10-10 07:00,2025-10-22 17:00,2025-10-10 07:00,2025-10-13 17:00
FIZ.WEST.1101,PARAPET WALL FRP & FRAME DRYWALL - ROOF - SWA - L3 - J-G GL 1-3,Complete,Area FIZ1 (West Inner),Data Center (Gridlines 1-3),FIZ1 (West Inner) GL J-G - DATA CENTER 2,L4 - SUP Roof - FAB Roof,,,DRYWALL,FIZ DATA CENTER,2023-12-01 07:00,2023-12-04 17:00,2023-12-01 07:00,2023-12-05 11:00
CN.FIZ1.1050,INSIDE TAPE & FINISH DRYWALL FIZ1 - L2 (Moisture Resistant Paperless) - DATA CTR 2 .,Complete,Area FIZ1 (West Inner),West Support Building,FIZ1 (West Inner) GL J-G - DATA CENTER 2,L2 - SubFab Level,DATA CENTER 2,,DRYWALL,FIZ DATA CENTER,2023-08-03 15:00,2023-08-08 13:00,2023-07-26 15:00,2023-07-29 15:00
CN.FIZ1.1040,DRYWALL 2 SIDE FIZ1 - L2 - DATA CTR 2 .,Complete,Area FIZ1 (West Inner),West Support Building,FIZ1 (West Inner) GL J-G - DATA CENTER 2,L2 - SubFab Level,DATA CENTER 2,,DRYWALL,FIZ DATA CENTER,2023-08-02 09:00,2023-08-06 09:00,2023-07-25 09:00,2023-07-28 11:00
CN.FIZ1.1030,DRYWALL & INSULATION (1 side) (INT) FIZ1 - L2 - DATA CTR 2 .,Complete,Area FIZ1 (West Inner),West Support Building,FIZ1 (West Inner) GL J-G - DATA CENTER 2,L2 - SubFab Level,DATA CENTER 2,,DRYWALL,FIZ DATA CENTER,2023-07-28 15:00,2023-08-02 13:00,2023-07-24 15:00,2023-07-28 15:00
CN.FIZ1.1850,TAPE & FINISH DRYWALL - FA LAB1 - SWA  - FIZ1 - L1 - GL 1-3 J-G,Complete,Area FIZ1 (West Inner),West Support Building,FIZ1 (West Inner) GL J-G - DATA CENTER 2,L1 - Fndn Slab,FA/TEM LAB,,DRYWALL,FIZ DATA CENTER,2023-11-17 07:00,2023-11-20 17:00,2023-11-17 07:00,2023-11-18 11:00
CN.FIZ1.1840,DRYWALL 2 SIDE - FA LAB1 - SWA - FIZ1 - L1 - GL 1-3 J-G,Complete,Area FIZ1 (West Inner),West Support Building,FIZ1 (West Inner) GL J-G - DATA CENTER 2,L1 - Fndn Slab,FA/TEM LAB,,DRYWALL,FIZ DATA CENTER,2023-11-14 13:00,2023-11-19 13:00,2023-11-14 13:00,2023-11-16 17:00
CN.FIZ1.1830,DRYWALL & INSULATION (1 side) (INT) - - L1,Complete,Area FIZ1 (West Inner),West Support Building,FIZ1 (West Inner) GL J-G - DATA CENTER 2,L1 - Fndn Slab,FA/TEM LAB,,DRYWALL,FIZ DATA CENTER,2023-10-05 07:00,2023-10-09 15:00,2023-10-05 07:00,2023-10-12 11:00
CN.FIZ1.1950,TAPE & FINISH DRYWALL FIZ1 - SWA  - L3 GL 1-3 J-G - FIZ,Complete,Area FIZ1 (West Inner),West Support Building,FIZ1 (West Inner) GL J-G - DATA CENTER 2,L3 / Waffle Slab Level,FIZ,,DRYWALL,FIZ DATA CENTER,2024-01-22 07:00,2024-01-24 11:00,2024-01-02 07:00,2024-01-10 16:00
CN.FIZ1.1940,DRYWALL 2 SIDE FIZ1 - L3 GL 1-3 - FIZ,Complete,Area FIZ1 (West Inner),West Support Building,FIZ1 (West Inner) GL J-G - DATA CENTER 2,L3 / Waffle Slab Level,FIZ,,DRYWALL,FIZ DATA CENTER,2023-10-16 15:00,2023-10-19 09:00,2023-10-13 15:00,2023-10-16 17:00
CN.FIZ1.1930,DRYWALL & INSULATION (1 side) (INT) - FIZ1 - L3 GL 1-3 - FIZ,Complete,Area FIZ1 (West Inner),West Support Building,FIZ1 (West Inner) GL J-G - DATA CENTER 2,L3 / Waffle Slab Level,FIZ,,DRYWALL,FIZ DATA CENTER,2023-10-16 07:00,2023-10-18 12:00,2023-10-12 07:00,2023-10-14 16:00
CN.FIZ1.2020,DRYWALL OUTSIDE TAPE & FINISH DRYWALL FIZ1 - L2 GL 1-3(Moisture Resistant Paperless) - DATA CTR 2 .,Complete,Area FIZ1 (West Inner),West Support Building,FIZ1 (West Inner) GL J-G - DATA CENTER 2,L2 - SubFab Level,DATA CENTER 2,,DRYWALL,FIZ DATA CENTER,2023-08-08 11:00,2023-08-14 09:00,2023-08-08 11:00,2023-08-19 16:00
CN.FIZ1.4360,IMPACT - INSTALL/REWORK DRYWALL FRAMING AROUND DOORS - SUE - 62 - GL 8-15 & A-E - L3,Complete,Area FIZ1 (West Inner),West Support Building,SUE - 62 - GL 8-15 & A -E,L3 / Waffle Slab Level,FIZ,FINISH PAINT,TBD Architectural Finishes,FIZ DATA CENTER,2025-02-04 07:00,2025-02-10 17:00,2025-01-13 07:00,2025-06-16 10:00
CN.FIZ1.4370,IMPACT - INSTALL/REWORK DRYWALL FRAMING AROUND DOORS - SUE - 61 - GL 1-8 & A-E - L3,Complete,Area FIZ1 (West Inner),West Support Building,SUE - 61 - GL 1-8 & A -E,L3 / Waffle Slab Level,FIZ,FINISH PAINT,TBD Architectural Finishes,FIZ DATA CENTER,2025-02-06 07:00,2025-02-12 17:00,2025-01-14 07:00,2025-06-02 17:00
CN.FIZ1.4350,IMPACT - INSTALL/REWORK DRYWALL FRAMING AROUND DOORS - SUE - 63 - GL 15-21 & A-E - L3,Complete,Area FIZ1 (West Inner),West Support Building,SUE - 63 - GL 15-21 & A -E,L3 / Waffle Slab Level,FIZ,FINISH PAINT,TBD Architectural Finishes,FIZ DATA CENTER,2025-02-03 07:00,2025-02-07 17:00,2025-01-10 07:00,2025-06-25 17:00
CN.FIZ1.4340,IMPACT - INSTALL/REWORK DRYWALL FRAMING AROUND DOORS - SUE - 64 - GL 21-27 & A-E - L3,Complete,Area FIZ1 (West Inner),West Support Building,SUE - 64 - GL 22-27 & A -E,L3 / Waffle Slab Level,FIZ,FINISH PAINT,TBD Architectural Finishes,FIZ DATA CENTER,2025-01-30 07:00,2025-02-05 17:00,2025-01-09 07:00,2025-06-12 17:00
CN.FIZ1.4320,IMPACT - INSTALL/REWORK DRYWALL FRAMING AROUND DOORS - SUE - 66 - GL 33-40 & A-E - L3,Complete,Area FIZ1 (West Inner),West Support Building,SUE - 65 - GL 31-33 & A -E,L3 / Waffle Slab Level,FIZ,FINISH PAINT,TBD Architectural Finishes,FIZ DATA CENTER,2025-01-27 07:00,2025-01-31 17:00,2025-01-06 07:00,2025-06-02 17:00
CN.FIZ1.4380,IMPACT - INSTALL/REWORK DRYWALL FRAMING AROUND DOORS - SUW - 01 - GL 1-8 & J-N - L3,Complete,Area FIZ1 (West Inner),West Support Building,SUW - 01 - GL 1-5 & J-N,L3 / Waffle Slab Level,FIZ,FINISH PAINT,TBD Architectural Finishes,FIZ DATA CENTER,2025-02-10 07:00,2025-02-14 17:00,2025-01-15 07:00,2025-06-19 17:00
CN.FIZ1.4390,IMPACT - INSTALL/REWORK DRYWALL FRAMING AROUND DOORS - SUW - 02 - GL 8-15 & J-N - L3,Complete,Area FIZ1 (West Inner),West Support Building,SUW - 02 - GL 5-11 & J-N,L3 / Waffle Slab Level,,FINISH PAINT,TBD Architectural Finishes,FIZ DATA CENTER,2025-02-11 07:00,2025-02-17 17:00,2025-01-16 07:00,2025-06-17 17:00
CN.FIZ1.4400,IMPACT - INSTALL/REWORK DRYWALL FRAMING AROUND DOORS - SUW - 03 - GL 15-21 & J-N - L3,Complete,Area FIZ1 (West Inner),West Support Building,SUW - 03 - GL 11-20 & J-N,L3 / Waffle Slab Level,,FINISH PAINT,TBD Architectural Finishes,FIZ DATA CENTER,2025-02-13 07:00,2025-02-19 17:00,2025-01-17 07:00,2025-05-30 17:00
CN.FIZ1.4410,IMPACT - INSTALL/REWORK DRYWALL FRAMING AROUND DOORS - SUW - 04 - GL 21-27 & J-N - L3,Complete,Area FIZ1 (West Inner),West Support Building,SUW - 04 - GL 21-23 & J-N,L3 / Waffle Slab Level,,FINISH PAINT,TBD Architectural Finishes,FIZ DATA CENTER,2025-02-17 07:00,2025-02-21 17:00,2025-01-20 07:00,2025-06-06 17:00
CN.FIZ1.4420,IMPACT - INSTALL/REWORK DRYWALL FRAMING AROUND DOORS - SUW - 05 - GL 27-33 & J-N - L3,Complete,Area FIZ1 (West Inner),West Support Building,SUW - 05 - GL 23-30 & J-N,L3 / Waffle Slab Level,,FINISH PAINT,TBD Architectural Finishes,FIZ DATA CENTER,2025-02-18 07:00,2025-02-24 17:00,2025-01-22 07:00,2025-05-28 17:00
FIZ.EAST.1101,PARAPET WALL FRP & FRAME DRYWALL - ROOF - FIZ3 - SEA - L4 GL 1-3 - E-G,Complete,Area FIZ3 (East Inner),,FIZ3 (East Inner) GL G-E,L4 - SUP Roof - FAB Roof,,,TBD Architectural Finishes,,2024-01-24 16:00,2024-01-28 16:00,2024-01-10 16:00,2024-01-18 11:00
CN.FIZ3.1050,TAPE & FINISH DRYWALL -  FA LAB-2 - FIZ3 - SEA - L1 - GL 1-3 - E-G,Complete,Area FIZ3 (East Inner),West Support Building,FIZ3 (East Inner) GL G-E,L1 - Fndn Slab,FA/TEM LAB,,DRYWALL,FIZ DATA CENTER,2023-12-16 08:00,2023-12-20 08:00,2023-12-11 08:00,2023-12-13 11:00
CN.FIZ3.1040,DRYWALL 2 SIDE - FA LAB-2 - FIZ3 - SEA - L1 - GL 1-3 - E-G,Complete,Area FIZ3 (East Inner),West Support Building,FIZ3 (East Inner) GL G-E,L1 - Fndn Slab,FA/TEM LAB,,DRYWALL,FIZ DATA CENTER,2023-11-14 08:00,2023-11-19 08:00,2023-11-14 08:00,2023-11-17 11:00
CN.FIZ3.1030,DRYWALL & INSULATION (1 side) (INT) - FA LAB-2 - FIZ3 - L1,Complete,Area FIZ3 (East Inner),West Support Building,FIZ3 (East Inner) GL G-E,L1 - Fndn Slab,FA/TEM LAB,,DRYWALL,FIZ DATA CENTER,2023-10-16 07:00,2023-10-20 15:00,2023-10-16 07:00,2023-10-20 16:00
CN.AB.AR.5900,TAPE & FINISH DRYWALL - FIZ3 - SEA - L2 GL 1-3 - E-G - DATA CENTER 2 & ELECTRICAL ROOM 1,Complete,Area FIZ3 (East Inner),West Support Building,FIZ3 (East Inner) GL G-E,L2 - SubFab Level,BATT. RM 1,,DRYWALL,FIZ DATA CENTER,2023-10-16 07:00,2023-10-19 17:00,2023-10-16 07:00,2023-10-20 17:00
CN.AB.AR.5890,DRYWALL 2 SIDE - FIZ3 - SEA - L2 GL 1-3 - E-G - DATA CENTER 2 & ELECTRICAL ROOM 1,Complete,Area FIZ3 (East Inner),West Support Building,FIZ3 (East Inner) GL G-E,L2 - SubFab Level,BATT. RM 1,,DRYWALL,FIZ DATA CENTER,2023-10-09 07:00,2023-10-12 17:00,2023-09-30 08:00,2023-10-06 09:00
CN.AB.AR.5880,DRYWALL & INSULATION (1 side) (INT) - FIZ3 - SEA - L2 GL 1-3 - E-G - DATA CENTER 2 & ELECTRICAL ROOM 1,Complete,Area FIZ3 (East Inner),West Support Building,FIZ3 (East Inner) GL G-E,L2 - SubFab Level,BATT. RM 1,,DRYWALL,FIZ DATA CENTER,2023-09-22 09:00,2023-09-26 17:00,2023-09-20 09:00,2023-09-23 09:00
CN.FIZ1.2060,TAPE & FINISH DRYWALL - FIZ3 - GL 1-3 - E-G - L3,Complete,Area FIZ3 (East Inner),West Support Building,FIZ3 (East Inner) GL G-E,L3 / Waffle Slab Level,FIZ,CHERRY COATING,DRYWALL,FIZ DATA CENTER,2024-09-23 07:00,2024-09-26 17:00,2024-09-02 07:00,2024-10-03 17:00
CN.FIZ1.2050,DRYWALL 1 SIDE FIZ3 - SEA - L3 GL 1-3 - E-G,Complete,Area FIZ3 (East Inner),West Support Building,FIZ3 (East Inner) GL G-E,L3 / Waffle Slab Level,FIZ,,DRYWALL,FIZ DATA CENTER,2024-01-22 07:00,2024-01-24 11:00,2024-01-08 07:00,2024-01-31 17:00
CN.FIZ1.2040,DRYWALL & INSULATION (1 side) (INT) - FIZ3 - SEA - L3 GL 1-3 - E-G,Complete,Area FIZ3 (East Inner),West Support Building,FIZ3 (East Inner) GL G-E,L3 / Waffle Slab Level,FIZ,,DRYWALL,FIZ DATA CENTER,2023-12-11 07:00,2023-12-14 11:00,2023-12-11 07:00,2023-12-14 11:00
FIZ.EAST.2291,IMPACT - RFI XXXX - PARAPET WALL FRP & FRAME DRYWALL - ROOF - FIZ3 - SEA - L4 GL 1-3 - E-G,Complete,Area FIZ3 (East Inner),,FIZ3 (East Inner) GL G-E,L4 - SUP Roof - FAB Roof,,,TBD Architectural Finishes,,2024-01-24 16:00,2024-01-28 16:00,2024-01-18 16:00,2024-03-12 11:00
FIZ.EAST.2301,REMAINING PARAPET WALL FRP & FRAME DRYWALL - ROOF - FIZ3 - SEA - L4 GL 1-3 - E-G,Complete,Area FIZ3 (East Inner),,FIZ3 (East Inner) GL G-E,L4 - SUP Roof - FAB Roof,,,TBD Architectural Finishes,,2024-03-12 07:00,2024-03-19 17:00,2024-03-12 07:00,2024-03-15 11:00
CN.FIZ1.2130,IMPACT - CCD 271 - REMEDIATION DRYWALL - SUPERSEDED BY 324 MK MARLOW CCD,Complete,Area FIZ3 (East Inner),West Support Building,Gypsum,FRAMING/ DRYWALL GYPSUM,FIZ,BERG,DRYWALL,FIZ DATA CENTER,2024-04-08 07:00,2024-04-15 17:00,2024-04-08 07:00,2024-05-20 17:00
CN.FIZ1.2150,DEMO DRYWALL - INSTALL GOAL POSTS - VIP TOUR/ TQR LAB - GL 2 - H-G - L3,Complete,Area FIZ3 (East Inner),West Support Building,FIZ3 (East Inner) GL G-E,L3 / Waffle Slab Level,FIZ,CHERRY COATING,DRYWALL,FIZ DATA CENTER,2024-08-19 07:00,2024-08-28 17:00,2024-07-10 07:00,2024-07-20 17:00
CN.AB1.4990,METAL STUD FRAMING DRYWALL (2hr) - BUNKER RM 1 & 2 (With 12' Opening for Trussels and Modules),Complete,Area A-1,East Support Building,A1 - Area 6 (Gridlines 18-15),L1 - Fndn Slab,BUNKER ROOM,BERG,DRYWALL,AMBER CARO,2023-08-03 09:00,2023-08-07 17:00,2023-08-03 09:00,2023-08-28 16:00
CN.AB1.5210,METAL STUD FRAMING DRYWALL AND FINISHES - CLOSING THE OPENING,Complete,Area A-1,,A1 - Area 6 (Gridlines 18-15),L1 - Fndn Slab,BUNKER ROOM,BERG,DRYWALL,,2024-05-06 07:00,2024-05-13 17:00,2024-05-06 07:00,2024-05-09 17:00
CN.AB1.ST.1830,COLUMN WRAP FRAMING AND DRYWALL - UPTO 8 FEET,Complete,Area A-1,,A1 - Area 6 (Gridlines 18-15),L3 / Waffle Slab Level,,,DRYWALL,,2024-03-12 12:00,2024-03-20 12:00,2024-01-17 12:00,2024-01-21 15:00
CN.AB1.ST.1880,COLUMN WRAP FRAMING AND DRYWALL - G LINE - ABOVE 8 FEET,Complete,Area A-1,,A1 - Area 6 (Gridlines 18-15),L3 / Waffle Slab Level,,BERG,DRYWALL,,2025-10-24 07:00,2025-10-30 17:00,2024-01-22 07:00,2025-03-07 17:00
CN.AB11000,METAL STUD FRAMING DRYWALL (2hr) - IO RM 2 GL 15-12 (With 12' Opening for Trussels and Modules),Complete,Area A-2,East Support Building,A2 - Area 5 (Gridlines 15-12),L1 - Fndn Slab,BUNKER ROOM,BERG,DRYWALL,AMBER CARO,2023-08-28 07:00,2023-09-02 15:00,2023-08-25 11:00,2023-08-29 17:00
CN.AB11030,METAL STUD FRAMING DRYWALL AND FINISHES - CLOSING THE OPENING - A2 - GL 15-12 - L1,Complete,Area A-2,,A2 - Area 5 (Gridlines 15-12),L1 - Fndn Slab,BUNKER ROOM,BERG,DRYWALL,,2024-05-06 07:00,2024-05-13 17:00,2024-05-06 07:00,2024-05-09 17:00
CN.AB2.ST.1171,COLUMN WRAP FRAMING AND DRYWALL - UPTO 8 FEET - A2 - GL 15-12 - L3,Complete,Area A-2,,A2 - Area 5 (Gridlines 15-12),L3 / Waffle Slab Level,,,DRYWALL,,2024-01-22 07:00,2024-01-25 17:00,2024-01-16 07:00,2024-01-20 17:00
CN.AB2.ST.1173,CLOUMN WRAP FRAMING AND DRYWALL - ABOVE 8 FEET - A2 - GL 15-12 - L3,Complete,Area A-2,,A2 - Area 5 (Gridlines 15-12),L3 / Waffle Slab Level,,BERG,DRYWALL,,2024-04-01 07:00,2024-04-05 17:00,2024-04-01 07:00,2024-04-05 17:00
CN.AB1.5050,METAL STUD FRAMING DRYWALL (2hr) - BUNKER RM 7-11 GL 12-9(With 12' Opening for Trussels and Modules),Complete,Area A-3,East Support Building,A3 - Area 4 (Gridlines 12-9),L1 - Fndn Slab,BUNKER ROOM,BERG,DRYWALL,AMBER CARO,2023-09-30 09:00,2023-10-12 09:00,2023-09-30 09:00,2023-10-06 14:00
CN.AB1.A1410,METAL STUD FRAMING DRYWALL AND FINISHES - CLOSING THE OPENING- BUNKER RM 7-11 GL 12-9,Complete,Area A-3,,A3 - Area 4 (Gridlines 12-9),L1 - Fndn Slab,BUNKER ROOM,BERG,DRYWALL,,2024-05-06 07:00,2024-05-13 17:00,2024-05-06 07:00,2024-05-09 17:00
CN.AB1.ST.1890,COLUMN WRAP FRAMING AND DRYWALL - G LINE - UPTO 8 FEET,Complete,Area A-3,,A3 - Area 4 (Gridlines 12-9),L3 / Waffle Slab Level,,,DRYWALL,,2025-10-24 07:00,2025-10-27 17:00,2024-01-22 07:00,2025-03-07 17:00
CN.AB3.ST.1310,COLUMN WRAP FRAMING AND DRYWALL - G LINE - ABOVE 8 FEET - A4 - GL 12-9 - L3,Complete,Area A-3,,A3 - Area 4 (Gridlines 12-9),L3 / Waffle Slab Level,,BERG,DRYWALL,,2025-10-31 07:00,2025-11-06 17:00,2024-01-22 07:00,2025-03-07 17:00
CN.AB1.5080,METAL STUD FRAMING DRYWALL (2hr) - IO RM 1 GL 9-6,Complete,Area A-4,East Support Building,A4 - Area 3 (Gridlines 9-6),L1 - Fndn Slab,BUNKER ROOM,BERG,DRYWALL,AMBER CARO,2023-08-03 09:00,2023-08-07 17:00,2023-08-03 09:00,2023-08-26 16:00
A1430,METAL STUD FRAMING DRYWALL AND FINISHES - CLOSING THE OPENING,Complete,Area A-4,,A4 - Area 3 (Gridlines 9-6),L1 - Fndn Slab,BUNKER ROOM,BERG,DRYWALL,,2024-05-06 07:00,2024-05-13 17:00,2024-05-06 07:00,2024-05-10 17:00
CN.AB1.ST.1900,COLUMN WRAP FRAMING AND DRYWALL - G LINE- UPTO 8 FEET - A4 - GL 9-6 - L3,Complete,Area A-4,,A4 - Area 3 (Gridlines 9-6),L3 / Waffle Slab Level,,BERG,DRYWALL,,2025-10-24 07:00,2025-10-30 17:00,2024-01-22 07:00,2025-03-07 17:00
CN.AB3.ST.1860,COLUMN WRAP FRAMING AND DRYWALL - G LINE - ABOVE 8 FEET - A4 - GL 9-6 - L3,Complete,Area A-4,,A4 - Area 3 (Gridlines 9-6),L3 / Waffle Slab Level,,BERG,DRYWALL,,2025-10-24 07:00,2025-10-30 17:00,2024-01-22 07:00,2025-03-07 17:00
CN.AB3.ST.1880,COLUMN WRAP FRAMING AND DRYWALL -G LINE- ABOVE 8 FEET - A5 - GL 6-3 - L3,Complete,Area A-5,,A5 - Area 2 (Gridlines 6-3),L3 / Waffle Slab Level,,BERG,DRYWALL,,2025-10-24 07:00,2025-10-30 17:00,2024-01-22 07:00,2025-03-07 17:00
CN.AB1.5110,METAL STUD FRAMING DRYWALL (2hr) - BUNKER RM 3-6 GL 18-21(12' Header Left out for SECAI MEP ),Complete,Area B-1,East Support Building,B1 - Area 8 (Gridlines 18-21),L1 - Fndn Slab,BUNKER ROOM,BERG,DRYWALL,AMBER CARO,2023-08-03 09:00,2023-08-15 11:00,2023-08-03 09:00,2023-08-22 13:00
A1450,METAL STUD FRAMING DRYWALL AND FINISHES - CLOSING THE OPENING,Complete,Area B-1,,B1 - Area 8 (Gridlines 18-21),L1 - Fndn Slab,BUNKER ROOM,BERG,DRYWALL,,2024-05-06 07:00,2024-05-13 17:00,2024-05-06 07:00,2024-05-09 17:00
CN.AB1.ST.1920,COLUMN WRAP FRAMING AND DRYWALL -G LINE - UPTO 8 FEET - B1 - GL 18-21 - L3,Complete,Area B-1,,B1 - Area 8 (Gridlines 18-21),L3 / Waffle Slab Level,,BERG,DRYWALL,,2025-10-24 07:00,2025-10-30 17:00,2024-01-22 07:00,2025-03-07 17:00
CN.AB3.ST.1900,COLUMN WRAP FRAMING AND DRYWALL - G LINE - ABOVE 8 FEET - B1 - GL 18-21 - L3,Complete,Area B-1,,B1 - Area 8 (Gridlines 18-21),L3 / Waffle Slab Level,,BERG,DRYWALL,,2025-10-24 07:00,2025-10-30 17:00,2024-01-22 07:00,2025-03-07 17:00
CN.AB1.5140,METAL STUD FRAMING DRYWALL (2hr) - BUNKER RM 12-14,Complete,Area B-2,East Support Building,B2 - Area 9 (Gridlines 21-24),L1 - Fndn Slab,BUNKER ROOM,BERG,DRYWALL,AMBER CARO,2023-08-17 07:00,2023-08-24 11:00,2023-08-17 07:00,2023-08-25 13:00
A1470,METAL STUD FRAMING DRYWALL AND FINISHES - CLOSING THE OPENING,Complete,Area B-2,,B2 - Area 9 (Gridlines 21-24),L1 - Fndn Slab,BUNKER ROOM,BERG,DRYWALL,,2024-05-06 07:00,2024-05-13 17:00,2024-05-06 07:00,2024-05-10 17:00
CN.AB1.ST.1930,COLUMN WRAP FRAMING AND DRYWALL - G LINE - UPTO 8 FEET - B2 - GL 21-24 - L3,Complete,Area B-2,,B2 - Area 9 (Gridlines 21-24),L3 / Waffle Slab Level,,BERG,DRYWALL,,2025-10-31 07:00,2025-11-06 17:00,2024-01-22 07:00,2025-03-07 17:00
CN.AB3.ST.1920,COLUMN WRAP FRAMING AND DRYWALL - G LINE - ABOVE 8 FEET - B2 - GL 21-24 - L3,Complete,Area B-2,,B2 - Area 9 (Gridlines 21-24),L3 / Waffle Slab Level,,BERG,DRYWALL,,2025-10-24 07:00,2025-10-30 17:00,2024-01-22 07:00,2025-03-07 17:00
CN.AB1.5170,METAL STUD FRAMING DRYWALL (2hr) - IO RM 3 & 4 GL 24-27(12' Header left out for SECAI MEP),Complete,Area B-3,East Support Building,B3 - Area 10 (Gridlines 24-27),L1 - Fndn Slab,BUNKER ROOM,BERG,DRYWALL,AMBER CARO,2023-08-17 07:00,2023-08-21 15:00,2023-08-17 07:00,2023-08-28 11:00
CN.AB1.5190,REMAINING 2ND LAYER DRYWALL - IO RM 3&4 - B3 - GL 24-27 - L1,Complete,Area B-3,East Support Building,B3 - Area 10 (Gridlines 24-27),L1 - Fndn Slab,BUNKER ROOM,FINISH PAINT,DRYWALL,AMBER CARO,2024-11-21 07:00,2024-11-22 17:00,2024-11-21 07:00,2024-11-25 17:00
A1490,METAL STUD FRAMING DRYWALL AND FINISHES - CLOSING THE OPENING,Complete,Area B-3,,B3 - Area 10 (Gridlines 24-27),L1 - Fndn Slab,BUNKER ROOM,BERG,DRYWALL,,2024-05-06 07:00,2024-05-13 17:00,2024-05-06 07:00,2024-05-10 17:00
CN.AB1.ST.1940,COLUMN WRAP FRAMING AND DRYWALL - F LINE - UPTO 8 FEET,Complete,Area B-3,,B3 - Area 10 (Gridlines 24-27),L3 / Waffle Slab Level,,,DRYWALL,,2024-01-22 07:00,2024-01-25 17:00,2024-01-15 07:00,2024-01-19 17:00
CN.AB3.ST.1940,COLUMN WRAP FRAMING AND DRYWALL - G LINE - UPTO 8 FEET - B3 - GL 23-27 - L3,Complete,Area B-3,,B3 - Area 10 (Gridlines 24-27),L3 / Waffle Slab Level,,BERG,DRYWALL,,2025-10-24 07:00,2025-10-30 17:00,2024-01-22 07:00,2025-03-07 17:00
CN.AB1.ST.2070,COLUMN WRAP FRAMING AND DRYWALL - F LINE - ABOVE 8 FEET - B3 - GL 23-27 - L3,Complete,Area B-3,,B3 - Area 10 (Gridlines 24-27),L3 / Waffle Slab Level,,BERG,DRYWALL,,2025-11-07 07:00,2025-11-12 17:00,2024-01-22 07:00,2025-03-07 17:00
CN.AB3.ST.2280,COLUMN WRAP FRAMING AND DRYWALL - G LINE - ABOVE 8 FEET - B3 - GL 23-27 - L3,Complete,Area B-3,,B3 - Area 10 (Gridlines 24-27),L3 / Waffle Slab Level,,BERG,DRYWALL,,2025-10-24 07:00,2025-10-30 17:00,2024-01-22 07:00,2025-03-07 17:00
CN.AB1.ST.1950,COLUMN WRAP FRAMING AND DRYWALL - G LINE - UPTO 8 FEET - B4 - GL 27-30 - L3,Complete,Area B-4,,B4 - Area 11 (Gridlines 27-30),L3 / Waffle Slab Level,,BERG,DRYWALL,,2025-10-24 07:00,2025-10-30 17:00,2024-01-22 07:00,2025-03-07 17:00
CN.AB3.ST.1960,COLUMN WRAP FRAMING AND DRYWALL - G LINE - ABOVE 8 FEET - B4 - GL 27-30 - L3,Complete,Area B-4,,B4 - Area 11 (Gridlines 27-30),L3 / Waffle Slab Level,,BERG,DRYWALL,,2025-10-24 07:00,2025-10-30 17:00,2024-01-22 07:00,2025-03-07 17:00
CN.AB1.ST.2080,COLUMN WRAP FRAMING AND DRYWALL - F LINE UP TO 8 FEET - B4 - GL 27-30 - L3,Complete,Area B-4,,B4 - Area 11 (Gridlines 27-30),L3 / Waffle Slab Level,,BERG,DRYWALL,,2025-10-24 07:00,2025-10-30 17:00,2024-01-22 07:00,2025-03-07 17:00
CN.AB3.ST.2290,COLUMN WRAP FRAMING AND DRYWALL - F LINE - ABOVE 8 FEET - B4 - GL 27-30 - L3,Complete,Area B-4,,B4 - Area 11 (Gridlines 27-30),L3 / Waffle Slab Level,,BERG,DRYWALL,,2025-10-24 07:00,2025-10-30 17:00,2024-01-22 07:00,2025-03-07 17:00
CN.AB1.ST.1960,COLUMN WRAP FRAMING AND DRYWALL - G LINE - UPTO 8 FEET,Complete,Area B-5,,B5 - Area 12 (Gridlines 30-33),L3 / Waffle Slab Level,,,DRYWALL,,2024-01-22 07:00,2024-01-25 17:00,2024-01-13 07:00,2024-01-18 17:00
CN.AB3.ST.1980,COLUMN WRAP FRAMING AND DRYWALL - G LINE - ABOVE 8 FEET - B5 - GL 30-33 - L3,Complete,Area B-5,,B5 - Area 12 (Gridlines 30-33),L3 / Waffle Slab Level,,BERG,TBD Architectural Finishes,,2025-10-24 07:00,2025-10-30 17:00,2024-01-22 07:00,2025-03-07 17:00
CN.SWB5.6230,HANG INTEROR DRYWALL (3-LAYERS) - GL 33 - L1 - D-G,Complete,Area B-5,West Support Building,GRIDLINE 33,L1 - Fndn Slab,GL33 EXTERIOR AREA (FAB EAST) - D-G,,DRYWALL,JAMES LIVELY,2024-02-12 07:00,2024-02-23 13:00,2024-01-04 14:00,2024-01-12 17:00
CN.SWB5.6250,HANG EXTERIOR DRYWALL (3-LAYERS) - GL 33 - L1 - E-G,Complete,Area B-5,West Support Building,GRIDLINE 33,L1 - Fndn Slab,GL33 EXTERIOR AREA (FAB EAST) - D-G,BERG,DRYWALL,JAMES LIVELY,2024-05-13 07:00,2024-05-28 17:00,2024-05-01 07:00,2024-06-14 17:00
CN.SWB5.6270,HANG INTEROR DRYWALL (3-LAYERS) - GL 33 - L1 - G-K,Complete,Area B-5,West Support Building,GRIDLINE 33,L1 - Fndn Slab,GL33 EXTERIOR AREA (FAB WEST) - G-K,,DRYWALL,JAMES LIVELY,2024-02-22 07:00,2024-03-04 17:00,2024-01-04 14:00,2024-01-12 17:00
CN.SWB5.6280,HANG EXTERIOR DRYWALL (3-LAYERS) - GL 33 - L1 - G-K,Complete,Area B-5,West Support Building,GRIDLINE 33,L1 - Fndn Slab,GL33 EXTERIOR AREA (FAB WEST) - G-K,BERG,DRYWALL,JAMES LIVELY,2024-09-20 07:00,2024-09-27 17:00,2024-09-16 07:00,2024-10-05 17:00
CN.BB51.ST.1170,HANG INTEROR DRYWALL (3-LAYERS) - GL 33 - L2 - D-G,Complete,Area B-5,North Areas (Team B -Gridlines 17-33),GRIDLINE 33,L2 - SubFab Level,GL33 EXTERIOR AREA (FAB EAST) - D-G,,DRYWALL,AMBER CARO,2023-11-20 07:00,2023-12-01 11:00,2023-11-08 07:00,2023-11-14 15:00
CN.BB51.ST.1180,HANG INTEROR DRYWALL (3-LAYERS) - GL 33 - L2 - G-K,Complete,Area B-5,North Areas (Team B -Gridlines 17-33),GRIDLINE 33,L2 - SubFab Level,GL33 EXTERIOR AREA (FAB WEST) - G-K,,DRYWALL,AMBER CARO,2024-01-29 07:00,2024-02-07 09:00,2024-01-12 14:00,2024-01-19 13:00
CN.BB51.ST.1210,HANG EXTERIOR DRYWALL (3-LAYERS) - GL 33 - L2 - D-G,Complete,Area B-5,North Areas (Team B -Gridlines 17-33),GRIDLINE 33,L2 - SubFab Level,GL33 EXTERIOR AREA (FAB EAST) - D-G,,DRYWALL,AMBER CARO,2024-01-26 15:00,2024-02-02 13:00,2024-01-06 15:00,2024-01-13 17:00
CN.BB51.ST.1220,HANG EXTERIOR DRYWALL (3-LAYERS) - GL 33 - L2 - G-H,Complete,Area B-5,North Areas (Team B -Gridlines 17-33),GRIDLINE 33,L2 - SubFab Level,GL33 EXTERIOR AREA (FAB WEST) - G-K,,DRYWALL,AMBER CARO,2024-02-12 07:00,2024-02-20 11:00,2024-02-08 14:00,2024-02-15 12:00
CN.AB3.ST.2040,HANG INTEROR DRYWALL (3-LAYERS) - GL 33 - L3 - D-G,Complete,Area B-5,,GRIDLINE 33,L3 / Waffle Slab Level,GL33 EXTERIOR AREA (FAB EAST) - D-G,,DRYWALL,,2024-03-11 07:00,2024-03-28 13:00,2024-01-29 00:00,2024-02-09 00:00
CN.AB3.ST.2060,HANG EXTERIOR DRYWALL (3-LAYERS) - GL 33 - L3 - D-G,Complete,Area B-5,,GRIDLINE 33,L3 / Waffle Slab Level,GL33 EXTERIOR AREA (FAB EAST) - D-G,,DRYWALL,,2024-04-04 11:00,2024-04-19 17:00,2024-02-22 07:00,2024-04-13 17:00
CN.AB3.ST.2080,HANG INTEROR DRYWALL (3-LAYERS) - GL 33 - L3 - G-H,Complete,Area B-5,,GRIDLINE 33,L3 / Waffle Slab Level,GL33 EXTERIOR AREA (FAB WEST) - G-K,,DRYWALL,,2024-03-11 07:00,2024-03-28 13:00,2024-02-26 00:00,2024-03-08 00:00
CN.AB3.ST.2100,HANG EXTERIOR DRYWALL (3-LAYERS) - GL 33 - L3 - G-K,Complete,Area B-5,,GRIDLINE 33,L3 / Waffle Slab Level,GL33 EXTERIOR AREA (FAB WEST) - G-K,BERG,DRYWALL,,2024-09-09 07:00,2024-09-27 17:00,2024-04-22 07:00,2024-05-04 17:00
CN.BB5.ST.1260,HANG EXTERIOR DRYWALL (3-LAYERS) - GL 33 - L4 - D-G,Complete,Area B-5,North Areas (Team B -Gridlines 17-33),GRIDLINE 33,L4 - SUP Roof - FAB Roof,GL33 EXTERIOR AREA (FAB EAST) - D-G,BERG,DRYWALL,JAMES LEE,2024-05-03 07:00,2024-05-21 17:00,2024-04-12 07:00,2024-05-24 17:00
CN.BB5.ST.1280,HANG INTERIOR DRYWALL (3-LAYERS) - GL 33 - L4 - D-G,Complete,Area B-5,North Areas (Team B -Gridlines 17-33),GRIDLINE 33,L4 - SUP Roof - FAB Roof,GL33 EXTERIOR AREA (FAB EAST) - D-G,BERG,DRYWALL,JAMES LEE,2024-07-29 07:00,2024-08-13 17:00,2024-07-29 07:00,2024-08-08 17:00
CN.BB5.ST.1300,HANG INTEROR DRYWALL (3-LAYERS) - GL 33 - L4 - G-K,Complete,Area B-5,North Areas (Team B -Gridlines 17-33),GRIDLINE 33,L4 - SUP Roof - FAB Roof,GL33 EXTERIOR AREA (FAB WEST) - G-K,BERG,DRYWALL,JAMES LEE,2024-05-13 07:00,2024-05-31 17:00,2024-04-30 07:00,2024-06-20 17:00
CN.BB5.ST.1320,HANG EXTERIOR DRYWALL (3-LAYERS) - GL 33 - L4 - G-K,Complete,Area B-5,North Areas (Team B -Gridlines 17-33),GRIDLINE 33,L4 - SUP Roof - FAB Roof,GL33 EXTERIOR AREA (FAB WEST) - G-K,BERG,DRYWALL,JAMES LEE,2024-09-20 07:00,2024-10-08 17:00,2024-08-28 07:00,2024-09-10 17:00
CN.AB1.ST.2090,COLUMN WRAP FRAMING AND DRYWALL - F LINE - UP TO 8 FEET - B5 - GL 30-33 - L3,Complete,Area B-5,,B5 - Area 12 (Gridlines 30-33),L3 / Waffle Slab Level,,BERG,DRYWALL,,2025-10-24 07:00,2025-10-30 17:00,2024-01-22 07:00,2025-03-07 17:00
CN.AB3.ST.2300,COLUMN WRAP FRAMING AND DRYWALL - F LINE - ABOVE 8 FEET - B5 - GL 30-33 - L3,Complete,Area B-5,,B5 - Area 12 (Gridlines 30-33),L3 / Waffle Slab Level,,BERG,TBD Architectural Finishes,,2025-10-24 07:00,2025-10-30 17:00,2024-01-22 07:00,2025-03-07 17:00
CN.SWB5.6680,HANG INTEROR DRYWALL (3-LAYERS) - GL 33 - L1 - A-B,Complete,Area B-5,West Support Building,GRIDLINE 33,L1 - Fndn Slab,GL33 EXTERIOR AREA (SUE) - A-C,BERG,DRYWALL,JAMES LIVELY,2024-03-18 07:00,2024-03-28 17:00,2024-03-18 00:00,2024-03-29 14:00
CN.SWB5.6690,HANG INTEROR DRYWALL (3-LAYERS) - GL 33 - L1 - L-M,Complete,Area B-5,West Support Building,GRIDLINE 33,L1 - Fndn Slab,GL33 EXTERIOR AREA (SUW) - L-N,,DRYWALL,JAMES LIVELY,2024-03-22 07:00,2024-03-27 17:00,2024-03-19 00:00,2024-03-30 00:00
CN.SWB5.6720,BERG - HANG EXTERIOR DRYWALL (3-LAYERS) - GL 33 - L1 - B-C,Complete,Area B-5,West Support Building,GRIDLINE 33,L1 - Fndn Slab,GL33 EXTERIOR AREA (SUE) - A-C,BERG,DRYWALL,JAMES LIVELY,2025-06-24 11:00,2025-07-02 11:00,2025-06-20 11:00,2025-08-15 17:00
CN.BB51.ST.1440,HANG EXTERIOR DRYWALL (3-LAYERS) - GL 33 - L2 - A-B,Complete,Area B-5,North Areas (Team B -Gridlines 17-33),GRIDLINE 33,L2 - SubFab Level,GL33 EXTERIOR AREA (SUE) - A-C,BERG,DRYWALL,AMBER CARO,2025-06-24 11:00,2025-07-02 11:00,2025-05-28 08:24,2025-06-03 13:00
CN.BB51.ST.1450,HANG EXTERIOR DRYWALL (3-LAYERS) - GL 33 - K-L.5 LVL 4-6,Complete,Area B-5,North Areas (Team B -Gridlines 17-33),GRIDLINE 33,L2 - SubFab Level,GL33 EXTERIOR AREA (SUW) - L-N,BERG,DRYWALL,AMBER CARO,2024-09-06 07:00,2024-09-17 17:00,2024-07-29 14:07,2025-06-09 13:00
CN.BB51.ST.1500,HANG INTEROR DRYWALL (3-LAYERS) - GL 33 - L2 - A-B,Complete,Area B-5,North Areas (Team B -Gridlines 17-33),GRIDLINE 33,L2 - SubFab Level,GL33 EXTERIOR AREA (SUE) - A-C,,DRYWALL,AMBER CARO,2024-02-26 07:00,2024-03-05 11:00,2024-02-26 07:00,2024-03-08 00:00
CN.BB51.ST.1510,HANG INTEROR DRYWALL (3-LAYERS) - GL 33 - L2 - L-N,Complete,Area B-5,North Areas (Team B -Gridlines 17-33),GRIDLINE 33,L2 - SubFab Level,GL33 EXTERIOR AREA (SUW) - L-N,,DRYWALL,AMBER CARO,2024-03-11 07:00,2024-03-25 11:00,2024-03-04 08:00,2024-03-22 00:00
CN.AB3.ST.2360,HANG EXTERIOR DRYWALL (3-LAYERS) - GL 33 - L3 - K-N,Complete,Area B-5,,GRIDLINE 33,L3 / Waffle Slab Level,GL33 EXTERIOR AREA (SUW) - L-N,BERG,DRYWALL,,2025-08-06 07:00,2025-08-13 17:00,2025-07-24 12:29,2025-08-04 17:00
CN.AB3.ST.2410,HANG INTEROR DRYWALL (3-LAYERS) - GL 33 - L3 - A-B,Complete,Area B-5,,GRIDLINE 33,L3 / Waffle Slab Level,GL33 EXTERIOR AREA (SUE) - A-C,,DRYWALL,,2024-03-26 13:00,2024-04-11 09:00,2024-02-26 00:00,2024-03-07 00:00
CN.AB3.ST.2420,HANG INTEROR DRYWALL (3-LAYERS) - GL 33 - L3 - L-M,Complete,Area B-5,,GRIDLINE 33,L3 / Waffle Slab Level,GL33 EXTERIOR AREA (SUW) - L-N,BERG,DRYWALL,,2024-04-22 07:00,2024-04-29 17:00,2024-04-13 07:00,2024-04-18 17:00
CN.SWB5.6930,HANG INTEROR DRYWALL (3-LAYERS) - GL 33 - L1 - B-C,Complete,Area B-5,West Support Building,GRIDLINE 33,L1 - Fndn Slab,GL33 EXTERIOR AREA (SUE) - A-C,BERG,DRYWALL,JAMES LIVELY,2024-04-15 07:00,2024-04-22 17:00,2024-04-08 07:00,2024-04-13 17:00
CN.SWB5.6940,HANG INTEROR DRYWALL (3-LAYERS) - GL 33 - L1 - M-N,Complete,Area B-5,West Support Building,GRIDLINE 33,L1 - Fndn Slab,GL33 EXTERIOR AREA (SUW) - L-N,,DRYWALL,JAMES LIVELY,2024-03-22 07:00,2024-03-27 09:00,2024-03-19 00:00,2024-03-30 00:00
CN.BB51.ST.1630,HANG INTEROR DRYWALL (3-LAYERS) - GL 33 - L2 - B-C,Complete,Area B-5,North Areas (Team B -Gridlines 17-33),GRIDLINE 33,L2 - SubFab Level,GL33 EXTERIOR AREA (SUE) - A-C,BERG,DRYWALL,AMBER CARO,2024-03-01 07:00,2024-03-07 17:00,2024-03-01 07:00,2024-03-06 17:00
CN.BB51.ST.1650,HANG EXTERIOR DRYWALL (3-LAYERS) - GL 33 - L2 - H-K,Complete,Area B-5,North Areas (Team B -Gridlines 17-33),GRIDLINE 33,L2 - SubFab Level,GL33 EXTERIOR AREA (FAB WEST) - G-K,BERG,DRYWALL,AMBER CARO,2024-02-05 07:00,2024-02-14 17:00,2024-02-01 07:00,2024-03-04 17:00
CN.AB3.ST.2500,HANG INTEROR DRYWALL (3-LAYERS) - GL 33 - L3 - B-C,Complete,Area B-5,,GRIDLINE 33,L3 / Waffle Slab Level,GL33 EXTERIOR AREA (SUE) - A-C,BERG,DRYWALL,,2024-04-25 07:00,2024-05-14 17:00,2024-04-13 07:00,2024-04-25 17:00
CN.AB3.ST.2520,REMAINING HANG INTEROR DRYWALL (3-LAYERS) - GL 33 - L3 - H-K,Complete,Area B-5,,GRIDLINE 33,L3 / Waffle Slab Level,GL33 EXTERIOR AREA (FAB WEST) - G-K,BERG,DRYWALL,,2024-05-07 07:00,2024-05-16 17:00,2024-04-06 07:00,2024-04-10 17:00
CN.AB3.ST.2540,HANG INTEROR DRYWALL (3-LAYERS) - GL 33 - L3 - N-M,Complete,Area B-5,,GRIDLINE 33,L3 / Waffle Slab Level,GL33 EXTERIOR AREA (SUW) - L-N,,DRYWALL,,2024-04-15 07:00,2024-04-19 15:00,2024-03-15 00:00,2024-03-18 00:00
CN.SWB5.9350,IMPACT - REPAIR CONCRETE CURB TO FINISH DRYWALL - GL 33 - L1 - L-N,Complete,Area B-5,West Support Building,GRIDLINE 33,L1 - Fndn Slab,GL33 EXTERIOR AREA (SUW) - L-N,BERG,DRYWALL,JAMES LIVELY,2024-08-01 07:00,2024-08-06 17:00,2024-08-01 07:00,2024-08-05 17:00
CN.SWB5.11000,IMPACT - RFI #1769 for GL 33 - L-N level 1 is holding drywall and CMP completion,Complete,Area B-5,West Support Building,GRIDLINE 33,L1 - Fndn Slab,GL33 EXTERIOR AREA (SUW) - L-N,BERG,DRYWALL,JAMES LIVELY,2025-06-23 07:00,2025-07-03 17:00,2025-06-23 07:00,2025-06-30 17:00
CN.AB.AR.1110,TAPE & FINISH DRYWALL - SWA--L1-MCC/IO- GL 18-15 K-N  - SECAI TOOK OVER FOR ACCELERATION,Complete,SWA - 1,West Support Building,SUWS-1 - 18-15,L1 - Fndn Slab,MCC/IO,CHERRY COATING,DRYWALL,AMBER CARO,2025-06-04 07:00,2025-06-10 17:00,2025-06-10 07:00,2025-06-10 17:00
CN.AB.AR.4440,DRYWALL 2 SIDE - SWA-1 - L1-WASTE WATER TANK RM NORTH - GL 18-15 K-N - SECAI TOOK OVER FOR ACCELERATION,Complete,SWA - 1,West Support Building,SUWS-1 - 18-15,L1 - Fndn Slab,MCC/IO,BERG,DRYWALL,AMBER CARO,2024-03-22 07:00,2024-03-27 17:00,2024-03-11 07:00,2025-06-10 17:00
CN.AB.AR.4450,DRYWALL & INSULATION (1 side) (INT) - SWA-1 - L1 WASTE WATER TANK RM NORTH- GL 17 K-N - SECAI TOOK OVER FORACCELERATION,Complete,SWA - 1,West Support Building,SUWS-1 - 18-15,L1 - Fndn Slab,MCC/IO,BERG,DRYWALL,AMBER CARO,2024-03-11 07:00,2024-03-19 17:00,2024-03-01 07:00,2025-06-10 17:00
CN.AB.AR.5610,TAPE & FINISH DRYWALL - SWA-1 - L2- BATTERY ROOM 1- GL 18-15 K-N,Complete,SWA - 1,West Support Building,SUWS-1 - 18-15,L2 - SubFab Level,BATT. RM 1,,DRYWALL,AMBER CARO,2024-01-02 09:00,2024-01-07 08:00,2024-01-02 07:00,2024-01-07 10:00
CN.AB.AR.5600,DRYWALL 2 SIDE - SWA-1 - L2- BATTERY ROOM 1- GL 18-15 K-N,Complete,SWA - 1,West Support Building,SUWS-1 - 18-15,L2 - SubFab Level,BATT. RM 1,,DRYWALL,AMBER CARO,2023-12-12 10:00,2023-12-17 10:00,2023-12-12 10:00,2023-12-17 13:00
CN.AB.AR.5590,DRYWALL & INSULATION (1 side) (INT) - SWA-1 - L2- BATTERY ROOM 1- GL 18-15 K-N,Complete,SWA - 1,West Support Building,SUWS-1 - 18-15,L2 - SubFab Level,BATT. RM 1,,DRYWALL,AMBER CARO,2023-11-10 12:00,2023-11-14 12:00,2023-11-09 12:00,2023-11-14 10:00
CN.AB.AR.5710,TAPE & FINISH DRYWALL - SWA-1 - L3 - SUB CLEAN ROOM NORTH- GL 18-15 K-N,Complete,SWA - 1,West Support Building,SUWS-1 - 18-15,L3 / Waffle Slab Level,SUB CLEAN RM,CHERRY COATING,DRYWALL,AMBER CARO,2025-06-09 07:00,2025-06-13 17:00,2025-06-09 07:00,2025-06-13 17:00
CN.AB.AR.5700,DRYWALL 2 SIDE - SWA-1 - L3 - SUB CLEAN ROOM NORTH- GL 18-15 K-N,Complete,SWA - 1,West Support Building,SUWS-1 - 18-15,L3 / Waffle Slab Level,SUB CLEAN RM,BERG,DRYWALL,AMBER CARO,2025-06-02 07:00,2025-06-06 17:00,2025-06-02 07:00,2025-06-06 17:00
CN.AB.AR.5690,DRYWALL & INSULATION (1 side) (INT) - SWA-1 - L3 - SUB CLEAN ROOM NORTH- GL 18-15 K-N,Complete,SWA - 1,West Support Building,SUWS-1 - 18-15,L3 / Waffle Slab Level,SUB CLEAN RM,BERG,DRYWALL,AMBER CARO,2024-05-09 07:00,2024-05-16 17:00,2024-05-09 07:00,2024-05-14 17:00
CN.AB.AR.5810,TAPE & FINISH DRYWALL - SWA-1 - L2- BATTERY ROOM 2- GL 18-15 K-N,Complete,SWA - 1,West Support Building,SUWS-1 - 18-15,L2 - SubFab Level,BATT. RM 2,,DRYWALL,AMBER CARO,2024-01-02 09:00,2024-01-07 08:00,2024-01-02 07:00,2024-01-07 10:00
CN.AB.AR.5800,DRYWALL 2 SIDE - SWA-1 - L2- BATTERY ROOM 2- GL 18-15 K-N,Complete,SWA - 1,West Support Building,SUWS-1 - 18-15,L2 - SubFab Level,BATT. RM 2,,DRYWALL,AMBER CARO,2023-12-11 07:00,2023-12-15 17:00,2023-12-11 07:00,2023-12-15 17:00
CN.AB.AR.5790,DRYWALL & INSULATION (1 side) (INT) - SWA-1 - L2- BATTERY ROOM 2- GL 18-15 J-N,Complete,SWA - 1,West Support Building,SUWS-1 - 18-15,L2 - SubFab Level,BATT. RM 2,,DRYWALL,AMBER CARO,2023-11-16 07:00,2023-11-19 17:00,2023-11-14 07:00,2023-11-18 11:00
CN.SWA1.1352,TAPE & FINISH DRYWALL- SWA1- GL 18-15  - K LINE  -  L1,Complete,SWA - 1,West Support Building,SUWS-1 - 18-15,L1 - Fndn Slab,DS/AD INTERIORS,,DRYWALL,FIZ DATA CENTER,2024-03-20 11:00,2024-03-26 11:00,2024-03-11 00:00,2024-03-18 00:00
CN.SWA1.1382,PRIMER & PAINT DRYWALL - GL 18-15 - K LINE - L1,Complete,SWA - 1,West Support Building,SUWS-1 - 18-15,L1 - Fndn Slab,DS/AD INTERIORS,FINISH PAINT,TBD Architectural Finishes,FIZ DATA CENTER,2024-10-21 07:00,2024-10-24 17:00,2024-10-19 07:00,2024-10-22 17:00
CN.SWA1.1322,DRYWALL 2 SIDE - SWA1- GL 18-15 - K LINE - L1,Complete,SWA - 1,West Support Building,SUWS-1 - 18-15,L1 - Fndn Slab,DS/AD INTERIORS,,DRYWALL,FIZ DATA CENTER,2024-03-09 08:00,2024-03-17 08:00,2024-03-03 00:00,2024-03-08 00:00
CN.SWA1.1292,DRYWALL & INSULATION (1 side) (INT)- SWA1- GL 18-15 - K LINE - L1,Complete,SWA - 1,West Support Building,SUWS-1 - 18-15,L1 - Fndn Slab,DS/AD INTERIORS,,DRYWALL,FIZ DATA CENTER,2023-12-11 07:00,2023-12-16 15:00,2023-12-11 07:00,2023-12-19 09:00
CN.SWA1.1362,REMEDY - TAPE & FINISH DRYWALL- SWA1- GL 18-15 K LINE L2,Complete,SWA - 1,West Support Building,SUWS-1 - 18-15,L2 - SubFab Level,DS/AD INTERIORS,CHERRY COATING,DRYWALL,FIZ DATA CENTER,2024-08-12 07:00,2024-08-15 17:00,2024-08-10 07:00,2024-08-13 17:00
CN.SWA1.1332,REMEDY - FRAME & DRYWALL - SWA1- GL 18-15 K LINE L2,Complete,SWA - 1,West Support Building,SUWS-1 - 18-15,L2 - SubFab Level,DS/AD INTERIORS,BERG,DRYWALL,FIZ DATA CENTER,2024-07-18 07:00,2024-08-08 17:00,2024-07-17 07:00,2024-08-03 17:00
CN.SWA1.1302,DRYWALL & INSULATION (1 side) (INT) - SWA1- GL 18-15 K LINE - L2,Complete,SWA - 1,West Support Building,SUWS-1 - 18-15,L2 - SubFab Level,DS/AD INTERIORS,,DRYWALL,FIZ DATA CENTER,2024-01-08 09:00,2024-01-14 17:00,2024-01-08 07:00,2024-01-12 15:00
CN.SWA1.1212,TEMP WALLS Framing and Drywall- SWA1- GL 18-15 - L2- GL 18-15 K-N,Complete,SWA - 1,,SUWS-1 - 18-15,L2 - SubFab Level,BATT. RM 1,,DRYWALL,,2024-02-19 07:00,2024-02-23 17:00,2024-02-19 07:00,2024-02-23 17:00
CN.SWA1.1222,TEMP WALLS Framing and Drywall- SWA1- GL 18-15 -  L2- GL 18-15 K-N,Complete,SWA - 1,,SUWS-1 - 18-15,L2 - SubFab Level,BATT. RM 2,,DRYWALL,,2024-01-02 09:00,2024-01-07 08:00,2024-01-16 07:00,2024-01-23 10:00
CN.SWA1.1402,TAPE & FINISH DRYWALL - SWA1- GL 18-15 K LINE  -  L3,Complete,SWA - 1,West Support Building,SUWS-1 - 18-15,L3 / Waffle Slab Level,DS/AD INTERIORS,CHERRY COATING,DRYWALL,FIZ DATA CENTER,2024-08-02 07:00,2024-08-08 17:00,2024-07-15 07:00,2024-07-20 17:00
CN.SWA1.1372,DRYWALL 2 SIDE- SWA1- GL 18-15 K LINE - L3,Complete,SWA - 1,West Support Building,SUWS-1 - 18-15,L3 / Waffle Slab Level,DS/AD INTERIORS,BERG,DRYWALL,FIZ DATA CENTER,2024-05-23 07:00,2024-05-30 17:00,2024-05-23 07:00,2024-06-20 17:00
CN.SWA1.1342,DRYWALL & INSULATION (1 side) (INT)- SWA1- GL 18-15 K LINE - L3,Complete,SWA - 1,West Support Building,SUWS-1 - 18-15,L3 / Waffle Slab Level,DS/AD INTERIORS,BERG,DRYWALL,FIZ DATA CENTER,2024-04-15 09:00,2024-04-19 09:00,2024-04-10 09:00,2024-04-19 17:00
CN.SWA1.1232,FRAMING & DRYWALL - ELEVATOR 03 - SWB-1 - ALL LEVELS GL 19-16 (3 sides only),Complete,SWA - 1,West Support Building,SUWS-1 - 18-15,,ELEVATOR,BERG,DRYWALL,JAMES LIVELY,2024-07-17 07:00,2024-08-16 17:00,2024-07-17 07:00,2024-08-14 17:00
CN.SWA1.6480,Drywall Clips & AMTS Installs Support Beams - SWA-1 L4 GL 18-15 - K LINE,Complete,SWA - 1,West Support Building,SUWS-1 - 18-15,L4 - SUP Roof - FAB Roof,DS/AD INTERIORS,SECAI,Fireproofing,HOON WOO,2024-03-25 07:00,2024-04-01 10:00,2024-03-20 07:00,2024-04-05 17:00
CN.SWA1.6610,REMAINING DRYWALL & INSULATION (1 side) (INT)- SWA1- GL 18-15 - K LINE - L1,Complete,SWA - 1,West Support Building,SUWS-1 - 18-15,L1 - Fndn Slab,DS/AD INTERIORS,,DRYWALL,FIZ DATA CENTER,2023-12-11 07:00,2023-12-16 15:00,2023-12-11 07:00,2023-12-19 09:00
CN.SWA1.9580,IMPACT - APACHE DEMO DRYWALL & SCRAPE FIREPROOFING SFRM-1 - ELEVATOR 03 - ALL LEVELS,Complete,SWA - 1,West Support Building,SUWS-1 - 18-15,,ELEVATOR,W&W,Steel Erection,JAMES LIVELY,2024-09-03 07:00,2024-09-13 17:00,2024-08-09 07:00,2024-08-13 17:00
CN.SWA1.9630,IMPACT - COMPLETE REMAINING DRYWALL LEAVEOUTS FOR FIREPROOFING - ELEVATOR 03,Complete,SWA - 1,West Support Building,SUWS-1 - 18-15,,ELEVATOR,W&W,Steel Erection,JAMES LIVELY,2024-09-23 07:00,2024-10-01 17:00,2024-08-21 07:00,2024-08-27 17:00
CN.SWA1.9650,COMPLETE MECHANICAL ROOM FRAMING / DRYWALL / TAPE & FLOAT + CEILING - ELEVATOR 03,Complete,SWA - 1,West Support Building,SUWS-1 - 18-15,,ELEVATOR,W&W,Steel Erection,JAMES LIVELY,2024-08-02 07:00,2024-09-04 17:00,2024-08-01 07:00,2024-08-23 17:00
CN.SWA1.9690,"COMPLETE REMAINING FRAMING, DRYWALL, FIRE CAULKING - INTERIOR SHAFT & DOOR FRONTS - ELEVATOR 03",Complete,SWA - 1,West Support Building,SUWS-1 - 18-15,,ELEVATOR,W&W,Steel Erection,JAMES LIVELY,2025-02-26 07:00,2025-03-21 17:00,2025-02-26 07:00,2025-03-24 17:00
CN.SWA1.9730,"COMPLETE FRAMING, DRYWALL, FIRE CAULKING - DOOR FRONTS - ELEVATOR 03",Complete,SWA - 1,West Support Building,SUWS-1 - 18-15,,ELEVATOR,W&W,Steel Erection,JAMES LIVELY,2025-04-21 07:00,2025-05-09 17:00,2025-03-18 12:00,2025-03-25 17:00
CN.SWA1.10030,IMPACT - PATRIOT BENT PLATE FIX - FINISH DRYWALL AND PARAPET - GL 17-18 - L LINE (DS AREA) [VOC ROOM],Complete,SWA - 1,West Support Building,SUWS-1 - 18-15,EXTERIOR SKIN,,KOVACH,INSULATED METAL PANELS,JAMES LIVELY,2025-01-14 07:00,2025-01-20 17:00,2025-01-14 07:00,2025-01-22 17:00
CN.AB.AR.8370,FINISH DRYWALL & FINISHES - AIRLOCK 3 - GL 17-19 - L-M - L3,Complete,SWA - 1,West Support Building,SUWS-1 - 18-15,L3 / Waffle Slab Level,AIRLOCKS & VESTABLES,BERNCO,TBD Architectural Finishes,JAMES LEE,2025-01-23 07:00,2025-01-27 17:00,2025-01-23 07:00,2025-02-01 17:00
CN.AB.AR.8380,FINISH DRYWALL & FINISHES - CLEAN VESTIBULE 4 - GL 17-19 - L-M - L3,Complete,SWA - 1,West Support Building,SUWN-2 - 21-24,L3 / Waffle Slab Level,AIRLOCKS & VESTABLES,BERNCO,TBD Architectural Finishes,JAMES LEE,2025-02-04 07:00,2025-02-12 17:00,2025-02-04 07:00,2025-02-19 17:00
CN.AB.AR.8460,FINISH DRYWALL & FINISHES - VESTIBULE 3 - GL 17-19 - L-M - L3,Complete,SWA - 1,West Support Building,SUWS-1 - 18-15,L3 / Waffle Slab Level,AIRLOCKS & VESTABLES,BERNCO,TBD Architectural Finishes,JAMES LEE,2025-02-05 07:00,2025-02-13 17:00,2025-02-05 07:00,2025-09-08 17:00
CN.AB.AR.8520,FINISH DRYWALL & FINISHES - CLEAN VESTIBULE 4 - K/23 - L2,Complete,SWA - 1,West Support Building,SUWN-2 - 21-24,L2 - SubFab Level,AIRLOCKS & VESTABLES,BERNCO,TBD Architectural Finishes,JAMES LEE,2025-08-04 07:00,2025-08-05 17:00,2025-08-04 07:00,2025-08-15 17:00
CN.AB.AR.8530,FINISH DRYWALL & FINISHES - CLEAN VESTIBULE 19 - D/25-29 - L2,Not Started,SWA - 1,West Support Building,SUEN-3 - 25-28,L2 - SubFab Level,AIRLOCKS & VESTABLES,BERNCO,TBD Architectural Finishes,JAMES LEE,2025-11-21 07:00,2025-11-24 17:00,,
CN.AB.AR.8540,FINISH DRYWALL & FINISHES - CLEAN VESTIBULE 21 - D/13 - L2,Complete,SWA - 1,West Support Building,SUEN-1 - 19-22,L2 - SubFab Level,AIRLOCKS & VESTABLES,BERNCO,TBD Architectural Finishes,JAMES LEE,2025-07-24 07:00,2025-07-25 17:00,2025-07-24 07:00,2025-07-25 17:00
CN.AB.AR.8620,IMPACT - SECAI ADDS OPENING IMPENDING DRYWALL COMPLETION - CLEAN VESTIBULE 4 - GL 17-19 - L-M - L3,Complete,SWA - 1,West Support Building,SUWN-2 - 21-24,L3 / Waffle Slab Level,AIRLOCKS & VESTABLES,BERNCO,TBD Architectural Finishes,JAMES LEE,2025-02-04 07:00,2025-02-12 17:00,2025-01-25 07:00,2025-02-14 17:00
CN.AB.AR.2860,TAPE & FINISH DRYWALL - WASTE WATER TANK RM SOUTH - SWA2 - GL 12-15 - L-N - L1,Complete,SWA - 2,West Support Building,SUWS-2 - 15-12,L1 - Fndn Slab,WASTE WATER TANK RM,CHERRY COATING,DRYWALL,AMBER CARO,2024-06-25 07:00,2024-07-02 17:00,2024-03-25 07:00,2024-04-01 00:00
CN.AB.AR.4460,DRYWALL 2 SIDE - WASTE WATER TANK RM SOUTH - SWA2 - GL 12-15 - L-N - L1,Complete,SWA - 2,West Support Building,SUWS-2 - 15-12,L1 - Fndn Slab,WASTE WATER TANK RM,BERG,DRYWALL,AMBER CARO,2024-03-25 07:00,2024-03-29 17:00,2024-03-23 16:05,2024-03-29 16:05
CN.AB.AR.4470,DRYWALL & INSULATION (1 side) (INT) - SWA-2-L1-WASTE WATER TANK RM SOUTH- GL 12-15 L-N,Complete,SWA - 2,West Support Building,SUWS-2 - 15-12,L1 - Fndn Slab,WASTE WATER TANK RM,,DRYWALL,AMBER CARO,2024-02-01 09:00,2024-02-05 09:00,2024-02-01 09:00,2024-02-05 13:00
CN.AB.AR.5390,TAPE & FINISH DRYWALL - SWA--L2- ELECTRICAL ROOM GL 12-15 L-N,Complete,SWA - 2,West Support Building,SUWS-2 - 15-12,L2 - SubFab Level,ELECTRIC RM 1,,DRYWALL,AMBER CARO,2024-01-30 13:00,2024-02-03 13:00,2024-01-27 13:00,2024-02-02 16:00
CN.AB.AR.5380,DRYWALL 2 SIDE - SWA-2-L2- ELECTRICAL ROOM GL 12-15 L-N,Complete,SWA - 2,West Support Building,SUWS-2 - 15-12,L2 - SubFab Level,ELECTRIC RM 1,,DRYWALL,AMBER CARO,2024-01-30 13:00,2024-02-03 13:00,2024-01-23 13:00,2024-01-27 16:00
CN.AB.AR.5370,DRYWALL & INSULATION (1 side) (INT) - SWA-2-L2- ELECTRICAL ROOM GL 12-15 L-N,Complete,SWA - 2,West Support Building,SUWS-2 - 15-12,L2 - SubFab Level,ELECTRIC RM 1,,DRYWALL,AMBER CARO,2023-12-18 10:00,2023-12-19 16:00,2023-12-18 10:00,2024-01-08 17:00
CN.AB.AR.5500,TAPE & FINISH DRYWALL - SUB CLEAN ROOM - SWA2 - GL 15-12 - L3,Complete,SWA - 2,West Support Building,SUWS-2 - 15-12,L3 / Waffle Slab Level,SUB CLEAN RM,CHERRY COATING,DRYWALL,AMBER CARO,2024-06-03 07:00,2024-06-10 17:00,2024-06-03 07:00,2024-06-08 17:00
CN.AB.AR.5490,DRYWALL 2 SIDE - SUB CLEAN ROOM - SWA2 - GL 15-12 - L3,Complete,SWA - 2,West Support Building,SUWS-2 - 15-12,L3 / Waffle Slab Level,SUB CLEAN RM,BERG,DRYWALL,AMBER CARO,2024-05-23 07:00,2024-05-31 17:00,2024-05-23 07:00,2024-05-28 17:00
CN.AB.AR.5480,DRYWALL & INSULATION (1 side) (INT) - SWA-2-L2 - SUB CLEAN ROOM CENTRAL,Complete,SWA - 2,West Support Building,SUWS-2 - 15-12,L3 / Waffle Slab Level,SUB CLEAN RM,,DRYWALL,AMBER CARO,2024-04-05 15:00,2024-04-15 15:00,2024-03-13 00:00,2024-03-20 00:00
CN.SWA2.1212,TEMP WALLS Framing and Drywall- SWA2- GL 15-12 - L1,Complete,SWA - 2,,SUWS-2 - 15-12,L2 - SubFab Level,ELECTRIC RM 1,,DRYWALL,,2023-12-11 07:00,2023-12-15 17:00,2023-12-11 07:00,2023-12-15 17:00
CN.SWA2.1362,TAPE & FINISH DRYWALL - SWA2 - GL 15-12 - K LINE - L3,Complete,SWA - 2,West Support Building,SUWS-2 - 15-12,L3 / Waffle Slab Level,DS/AD INTERIORS,CHERRY COATING,DRYWALL,FIZ DATA CENTER,2024-05-20 07:00,2024-05-24 17:00,2024-05-20 07:00,2024-05-24 17:00
CN.SWA2.1352,DRYWALL 2 SIDE - SWA2 - GL 15-12 - K LINE - L3,Complete,SWA - 2,West Support Building,SUWS-2 - 15-12,L3 / Waffle Slab Level,DS/AD INTERIORS,BERG,DRYWALL,FIZ DATA CENTER,2024-05-13 07:00,2024-05-17 17:00,2024-05-11 07:00,2024-05-16 17:00
CN.SWA2.1342,DRYWALL & INSULATION (1 side) (INT)- SWA2- GL 12-15 K LINE - L3,Complete,SWA - 2,West Support Building,SUWS-2 - 15-12,L3 / Waffle Slab Level,DS/AD INTERIORS,,DRYWALL,FIZ DATA CENTER,2024-03-29 11:00,2024-04-02 15:00,2024-03-05 11:00,2024-03-11 16:00
CN.SWA2.1292,TAPE & FINISH DRYWALL - SWA2-  GL 12-15 K LINE-  L1,Complete,SWA - 2,West Support Building,SUWS-2 - 15-12,L1 - Fndn Slab,DS/AD INTERIORS,,DRYWALL,FIZ DATA CENTER,2024-03-09 08:00,2024-03-17 08:00,2024-03-01 00:00,2024-03-06 00:00
CN.SWA2.1312,PRIMER & PAINT DRYWALL - GL 12-15 - K LINE - L1,Complete,SWA - 2,West Support Building,SUWS-2 - 15-12,L1 - Fndn Slab,DS/AD INTERIORS,FINISH PAINT,TBD Architectural Finishes,FIZ DATA CENTER,2024-10-21 07:00,2024-10-24 17:00,2024-10-19 07:00,2024-10-22 17:00
CN.SWA2.1272,DRYWALL 2 SIDE - SWA2- GL 12-15 K LINE - L1,Complete,SWA - 2,West Support Building,SUWS-2 - 15-12,L1 - Fndn Slab,DS/AD INTERIORS,,DRYWALL,FIZ DATA CENTER,2024-02-01 07:00,2024-02-04 17:00,2024-02-01 07:00,2024-02-05 11:00
CN.SWA2.1252,DRYWALL & INSULATION (1 side) (INT) - SWA2- GL 12-15 K LINE - L1,Complete,SWA - 2,West Support Building,SUWS-2 - 15-12,L1 - Fndn Slab,DS/AD INTERIORS,,DRYWALL,FIZ DATA CENTER,2024-01-30 13:00,2024-02-04 11:00,2024-01-26 13:00,2024-01-30 16:00
CN.SWA2.1282,REMEDY - TAPE & FINISH DRYWALL - SWA2 - GL 12-15 - K LINE - L2,Complete,SWA - 2,West Support Building,SUWS-2 - 15-12,L2 - SubFab Level,DS/AD INTERIORS,CHERRY COATING,DRYWALL,FIZ DATA CENTER,2024-08-12 07:00,2024-08-15 17:00,2024-08-10 07:00,2024-08-13 17:00
CN.SWA2.1262,REMEDY - FRAME & DRYWALL - SWA2 - GL 9-16 - K LINE - L2,Complete,SWA - 2,West Support Building,SUWS-2 - 15-12,L2 - SubFab Level,DS/AD INTERIORS,BERG,DRYWALL,FIZ DATA CENTER,2024-07-22 07:00,2024-08-12 17:00,2024-07-22 07:00,2024-08-05 17:00
CN.SWA2.1242,DRYWALL & INSULATION (1 side) (INT) - SWA2- GL 12-15 K LINE - L2 DS/AD,Complete,SWA - 2,West Support Building,SUWS-2 - 15-12,L2 - SubFab Level,DS/AD INTERIORS,,DRYWALL,FIZ DATA CENTER,2024-01-17 07:00,2024-01-21 15:00,2024-01-12 15:00,2024-01-14 16:00
CN.SWA2.6520,Drywall Clips & AMTS Installs Support Beams - SWA-1-L4 GL 12-15 K LINE,Complete,SWA - 2,West Support Building,SUWS-2 - 15-12,L4 - SUP Roof - FAB Roof,DS/AD INTERIORS,,Fireproofing,HOON WOO,2024-03-25 07:00,2024-04-01 10:00,2024-03-14 19:00,2024-03-25 17:00
CN.SWA2.6680,REMEDY - DEMO DRYWALL (INT) - SWA2- GL 9-16 K LINE - L2 DS/AD,Complete,SWA - 2,West Support Building,SUWS-2 - 15-12,L2 - SubFab Level,DS/AD INTERIORS,BERG,DRYWALL,FIZ DATA CENTER,2024-07-08 07:00,2024-07-15 15:00,2024-07-08 07:00,2024-07-13 15:00
CN.AB.AR.2950,TAPE & FINISH DRYWALL - GAS PURIFER NORTH - GL 12-9 - L-N - L1,Complete,SWA - 3,West Support Building,SUWS-3 - 12-9,L1 - Fndn Slab,GAS PURIFIER RM,CHERRY COATING,DRYWALL,AMBER CARO,2024-07-15 07:00,2024-07-19 17:00,2024-07-15 07:00,2024-07-19 17:00
CN.AB.AR.4480,DRYWALL 2 SIDE - SWA-3 - L1- GAS PURIFER NORTH GL 12-9 L-N,Complete,SWA - 3,West Support Building,SUWS-3 - 12-9,L1 - Fndn Slab,GAS PURIFIER RM,,DRYWALL,AMBER CARO,2024-02-01 13:00,2024-02-03 09:00,2024-02-01 13:00,2024-02-03 14:00
CN.AB.AR.4490,DRYWALL & INSULATION (1 side) (INT) - SWA-3 - L1- GAS PURIFER NORTH,Complete,SWA - 3,West Support Building,SUWS-3 - 12-9,L1 - Fndn Slab,GAS PURIFIER RM,,DRYWALL,AMBER CARO,2023-08-28 09:00,2023-09-02 09:00,2023-08-28 09:00,2023-09-02 10:00
CN.AB.AR.5210,TAPE & FINISH DRYWALL - SWA-3 - L2- ELECTRICAL ROOM- GL 12-9,Complete,SWA - 3,West Support Building,SUWS-3 - 12-9,L2 - SubFab Level,ELECTRIC RM 1,,DRYWALL,AMBER CARO,2023-12-22 10:00,2024-01-03 15:00,2023-12-22 10:00,2023-12-29 17:00
CN.AB.AR.5200,DRYWALL 2 SIDE - SWA-3 - L2- ELECTRICAL ROOM- GL 12-9 L-N,Complete,SWA - 3,West Support Building,SUWS-3 - 12-9,L2 - SubFab Level,ELECTRIC RM 1,,DRYWALL,AMBER CARO,2023-12-18 07:00,2023-12-21 17:00,2023-12-18 07:00,2023-12-21 17:00
CN.AB.AR.5190,DRYWALL & INSULATION (1 side) (INT) - SWA-3 - L2- ELECTRICAL ROOM,Complete,SWA - 3,West Support Building,SUWS-3 - 12-9,L2 - SubFab Level,ELECTRIC RM 1,,DRYWALL,AMBER CARO,2023-10-24 07:00,2023-10-28 17:00,2023-10-24 07:00,2023-10-27 10:00
CN.AB.AR.5300,TAPE & FINISH DRYWALL - SUB CLEAN ROOM SOUTH - SWA3 - GL 12-9 - L-N - L3,Complete,SWA - 3,West Support Building,SUWS-3 - 12-9,L3 / Waffle Slab Level,SUB CLEAN RM,CHERRY COATING,DRYWALL,AMBER CARO,2024-06-24 07:00,2024-07-01 17:00,2024-06-24 07:00,2025-09-19 17:00
CN.AB.AR.5290,DRYWALL 2 SIDE - SUB CLEAN ROOM SOUTH - SWA3 - GL 12-9 - L-N - L3,Complete,SWA - 3,West Support Building,SUWS-3 - 12-9,L3 / Waffle Slab Level,SUB CLEAN RM,BERG,DRYWALL,AMBER CARO,2024-05-28 07:00,2024-06-04 17:00,2024-05-28 07:00,2025-09-15 17:00
CN.AB.AR.5280,DRYWALL & INSULATION (1 side) (INT) - SWA-3 - L3 - SUB CLEAN ROOM SOUTH- GL 12-9 L-N,Complete,SWA - 3,West Support Building,SUWS-3 - 12-9,L3 / Waffle Slab Level,SUB CLEAN RM,,DRYWALL,AMBER CARO,2024-02-06 11:00,2024-02-12 11:00,2024-02-06 11:00,2024-02-11 14:00
CN.SWA3.1212,DRYWALL 2 SIDE - SWA-3 - L1- GAS PURIFER WEST EXTERIOR WALL TEMP- SWA3- GL 12-9 - L-N,Complete,SWA - 3,,SUWS-3 - 12-9,L1 - Fndn Slab,GAS PURIFIER RM,,DRYWALL,,2023-11-13 07:00,2023-11-17 17:00,2023-11-13 07:00,2023-11-17 17:00
CN.SWA3.1322,TAPE & FINISH DRYWALL - SWA3- GL 12-9 -  L1 - K LINE,Complete,SWA - 3,West Support Building,SUWS-3 - 12-9,L1 - Fndn Slab,DS/AD INTERIORS,,DRYWALL,FIZ DATA CENTER,2024-02-19 07:00,2024-02-23 17:00,2024-02-19 07:00,2024-02-23 17:00
CN.SWA3.1342,PRIMER & PAINT DRYWALL - GL 12-9 - K LINE - L1,Complete,SWA - 3,West Support Building,SUWS-3 - 12-9,L1 - Fndn Slab,DS/AD INTERIORS,FINISH PAINT,TBD Architectural Finishes,FIZ DATA CENTER,2024-10-15 07:00,2024-10-18 17:00,2024-10-15 07:00,2024-10-18 17:00
CN.SWA3.1302,DRYWALL 2 SIDE - SWA3- GL 12-9 - L1 - K LINE,Complete,SWA - 3,West Support Building,SUWS-3 - 12-9,L1 - Fndn Slab,DS/AD INTERIORS,,DRYWALL,FIZ DATA CENTER,2023-12-28 07:00,2024-01-04 12:00,2023-12-28 07:00,2024-01-26 13:00
CN.SWA3.1282,DRYWALL & INSULATION (1 side) (INT) - SWA3- GL 12-9 - L1 - K LINE,Complete,SWA - 3,West Support Building,SUWS-3 - 12-9,L1 - Fndn Slab,DS/AD INTERIORS,,DRYWALL,FIZ DATA CENTER,2023-12-04 12:00,2023-12-10 10:00,2023-12-04 12:00,2023-12-08 13:00
CN.SWA3.1332,REMEDY - TAPE & FINISH DRYWALL - SWA3 - GL 12-9 - K LINE - L2,Complete,SWA - 3,West Support Building,SUWS-3 - 12-9,L2 - SubFab Level,DS/AD INTERIORS,CHERRY COATING,DRYWALL,FIZ DATA CENTER,2024-08-12 07:00,2024-08-15 17:00,2024-08-12 07:00,2024-08-15 17:00
CN.SWA3.1312,REMEDY - FRAME & DRYWALL - SWA3-  GL 12-9 - K LINE - L2,Complete,SWA - 3,West Support Building,SUWS-3 - 12-9,L2 - SubFab Level,DS/AD INTERIORS,BERG,DRYWALL,FIZ DATA CENTER,2024-07-15 07:00,2024-08-02 17:00,2024-07-15 07:00,2024-08-05 17:00
CN.SWA3.1292,DRYWALL & INSULATION (1 side) (INT) - SWA3- GL 12-9 K LINE - L2,Complete,SWA - 3,West Support Building,SUWS-3 - 12-9,L2 - SubFab Level,DS/AD INTERIORS,,DRYWALL,FIZ DATA CENTER,2024-02-22 14:00,2024-02-27 12:00,2023-12-22 14:00,2024-01-25 11:00
CN.AB.AR.6100,TEMP WALLS Framing and Drywall,Complete,SWA - 3,,SUWS-3 - 12-9,L2 - SubFab Level,ELECTRIC RM 1,,DRYWALL,,2023-10-09 08:00,2023-10-13 08:00,2023-10-09 08:00,2023-10-13 16:00
CN.SWA3.1422,TAPE & FINISH DRYWALL - SWA3 - GL 12-9 - K LINE - L3,Complete,SWA - 3,West Support Building,SUWS-3 - 12-9,L3 / Waffle Slab Level,DS/AD INTERIORS,CHERRY COATING,DRYWALL,FIZ DATA CENTER,2024-05-20 07:00,2024-05-24 17:00,2024-05-20 07:00,2024-05-24 17:00
CN.SWA3.1412,DRYWALL 2 SIDE - SWA3 - GL 11.5-9 - K LINE - L3,Complete,SWA - 3,West Support Building,SUWS-3 - 12-9,L3 / Waffle Slab Level,DS/AD INTERIORS,BERG,DRYWALL,FIZ DATA CENTER,2024-05-13 07:00,2024-05-17 17:00,2024-05-13 07:00,2024-05-17 17:00
CN.SWA3.1392,DRYWALL & INSULATION (1 side) (INT) - SWA3- GL 12-9 K LINE- L3,Complete,SWA - 3,West Support Building,SUWS-3 - 12-9,L3 / Waffle Slab Level,DS/AD INTERIORS,,DRYWALL,FIZ DATA CENTER,2024-05-04 07:00,2024-05-07 11:00,2024-03-13 00:00,2024-03-22 16:00
CN.SWA3.1402,INSTALL DRYWALL & FIRE CAULKING (SHAFT LINER) SHAFT - ELEVATOR 2 - SWA3 - GL12-9 - ALL LEVELS,Complete,SWA - 3,West Support Building,SUWS-3 - 12-9,,ELEVATOR,BERG,DRYWALL,,2025-07-11 07:00,2025-08-18 17:00,2025-08-05 07:00,2025-10-31 17:00
CN.SWA3.1790,Drywall Clips & AMTS Installs Support Beams - SWA-3 L4 GL 12-9 K LINE,Complete,SWA - 3,West Support Building,SUWS-3 - 12-9,L4 - SUP Roof - FAB Roof,DS/AD INTERIORS,,Fireproofing,HOON WOO,2024-03-25 07:00,2024-04-03 09:00,2024-03-14 07:00,2024-04-01 17:00
CN.AB.AR.6790,REMAINING DRYWALL 2 SIDE - GAS PURIFER NORTH - GL 12-9 - L-N - L1,Complete,SWA - 3,West Support Building,SUWS-3 - 12-9,L1 - Fndn Slab,GAS PURIFIER RM,BERG,DRYWALL,AMBER CARO,2024-07-05 07:00,2024-07-08 17:00,2024-07-05 07:00,2024-07-10 17:00
CN.AB.AR.6920,IMPACT - REMOVE AND REINSTALL DAMAGED DRYWALL - SWA3 - GL 9 - L-N - L3,Complete,SWA - 3,West Support Building,SUWS-4 - 9-6,L3 / Waffle Slab Level,FA LAB,BERG,DRYWALL,AMBER CARO,2024-05-16 07:00,2024-05-23 17:00,2024-05-16 07:00,2024-07-01 17:00
CN.SWA3.9550,INSTALL FRAMING/DRYWALL/TAPE+FLOAT - MECHANICAL ROOM - ELEVATOR 2,Active,SWA - 3,West Support Building,SUWS-3 - 12-9,,ELEVATOR,W&W,TBD Architectural Finishes,,2024-10-17 07:00,2024-11-27 17:00,2024-10-17 07:00,
CN.SWA3.9570,IMPACT - INSTALL DRYWALL & FIRE CAULKING - DOOR FRONTS - ELEVATOR 2,Complete,SWA - 3,West Support Building,SUWS-3 - 12-9,,ELEVATOR,W&W,DRYWALL,,2025-09-19 07:00,2025-09-23 17:00,2025-09-19 07:00,2025-10-31 17:00
CN.SWA3.9670,PRIMER & PAINT DRYWALL -  GL 3-6 - K LINE - L1,Complete,SWA - 3,West Support Building,SUWS-3 - 12-9,L1 - Fndn Slab,DS/AD INTERIORS,FINISH PAINT,TBD Architectural Finishes,FIZ DATA CENTER,2024-10-15 07:00,2024-10-18 17:00,2024-10-15 07:00,2024-10-18 17:00
CN.SWA3.9690,PRIMER & PAINT DRYWALL -  GL E-G - 3 LINE - L1,Not Started,SWA - 3,West Support Building,SUWS-3 - 12-9,L1 - Fndn Slab,DS/AD INTERIORS,FINISH PAINT,TBD Architectural Finishes,FIZ DATA CENTER,2025-11-21 07:00,2025-11-24 17:00,,
CN.SWA3.9700,PRIMER & PAINT DRYWALL -  GL G-J - 3 LINE - L1,Not Started,SWA - 3,West Support Building,SUWS-3 - 12-9,L1 - Fndn Slab,DS/AD INTERIORS,FINISH PAINT,TBD Architectural Finishes,FIZ DATA CENTER,2025-11-25 07:00,2025-11-26 17:00,,
CN.SWA3.9720,PRIMER & PAINT DRYWALL -  GL 6-9 - K LINE - L1,Complete,SWA - 3,West Support Building,SUWS-3 - 12-9,L1 - Fndn Slab,DS/AD INTERIORS,FINISH PAINT,TBD Architectural Finishes,FIZ DATA CENTER,2024-10-15 07:00,2024-10-18 17:00,2024-10-15 07:00,2024-10-18 17:00
CN.AB.AR.3040,TAPE & FINISH DRYWALL - SWA4 - GL 9-6 - L1 - L-N - GAS PURIFER SOUTH,Complete,SWA - 4,West Support Building,SUWS-4 - 9-6,L1 - Fndn Slab,GAS PURIFIER RM,,DRYWALL,AMBER CARO,2024-01-28 08:00,2024-02-01 08:00,2024-01-28 08:00,2024-02-02 09:00
CN.AB.AR.4500,DRYWALL 2 SIDE - SWA4 - GL 9-6 - L1 - L-N - GAS PURIFER SOUTH,Complete,SWA - 4,West Support Building,SUWS-4 - 9-6,L1 - Fndn Slab,GAS PURIFIER RM,,DRYWALL,AMBER CARO,2024-01-22 09:00,2024-01-26 09:00,2024-01-22 09:00,2024-01-26 09:00
CN.AB.AR.4510,DRYWALL & INSULATION (1 side) (INT) - SWA-4 - L1 - GAS PURIFER SOUTH,Complete,SWA - 4,West Support Building,SUWS-4 - 9-6,L1 - Fndn Slab,GAS PURIFIER RM,,DRYWALL,AMBER CARO,2023-08-21 15:00,2023-08-26 15:00,2023-08-21 15:00,2023-08-26 16:00
CN.AB.AR.5030,TAPE & FINISH DRYWALL - SWA4 - GL 9-6 - L2 - L-N - ELECTRICAL ROOM,Complete,SWA - 4,West Support Building,SUWS-4 - 9-6,L2 - SubFab Level,ELECTRIC RM 1,,DRYWALL,AMBER CARO,2024-01-19 10:00,2024-01-23 10:00,2024-01-19 10:00,2024-01-23 14:00
CN.AB.AR.5020,DRYWALL 2 SIDE - SWA4 - GL 9-6 - L2 - L-N - ELECTRICAL ROOM,Complete,SWA - 4,West Support Building,SUWS-4 - 9-6,L2 - SubFab Level,ELECTRIC RM 1,,DRYWALL,AMBER CARO,2023-12-12 07:00,2023-12-16 17:00,2023-12-12 07:00,2023-12-17 10:00
CN.AB.AR.5010,DRYWALL & INSULATION (1 side) (INT) - SWA-4 - L2 - ELECTRICAL ROOM,Complete,SWA - 4,West Support Building,SUWS-4 - 9-6,L2 - SubFab Level,ELECTRIC RM 1,,DRYWALL,AMBER CARO,2023-10-17 07:00,2023-10-20 17:00,2023-10-17 07:00,2023-10-20 17:00
CN.AB.AR.5120,TAPE & FINISH DRYWALL - FA LAB NORTH - SWA4 - GL 9-3 - L-N - L3,Complete,SWA - 4,West Support Building,SUWS-4 - 9-6,L3 / Waffle Slab Level,FA LAB,CHERRY COATING,DRYWALL,AMBER CARO,2024-05-02 07:00,2024-05-09 17:00,2024-05-02 07:00,2024-05-20 17:00
CN.AB.AR.5110,DRYWALL 2 SIDE - FA LAB NORTH - SWA4 - GL 9-3 - L-N - L3,Complete,SWA - 4,West Support Building,SUWS-4 - 9-6,L3 / Waffle Slab Level,FA LAB,BERG,DRYWALL,AMBER CARO,2024-05-17 07:00,2024-05-24 17:00,2024-04-15 07:00,2024-05-15 17:00
CN.AB.AR.5100,DRYWALL & INSULATION (1 side) (INT) - SWA4 - GL 9-3 - L3 - L-N - FA LAB NORTH,Complete,SWA - 4,West Support Building,SUWS-4 - 9-6,L3 / Waffle Slab Level,FA LAB,,DRYWALL,AMBER CARO,2024-03-12 07:00,2024-03-20 17:00,2024-03-12 07:00,2024-03-18 11:00
CN.SWA4.1312,TAPE & FINISH DRYWALL - SWA4 - GL 9-6 - L1 - K LINE,Complete,SWA - 4,West Support Building,SUWS-4 - 9-6,L1 - Fndn Slab,DS/AD INTERIORS,,DRYWALL,FIZ DATA CENTER,2024-01-05 10:00,2024-01-10 15:00,2024-01-05 07:00,2024-01-26 13:00
CN.SWA4.1292,DRYWALL 2 SIDE - SWA4 - GL 9-6 - L1 - K LINE,Complete,SWA - 4,West Support Building,SUWS-4 - 9-6,L1 - Fndn Slab,DS/AD INTERIORS,,DRYWALL,FIZ DATA CENTER,2023-12-28 07:00,2024-01-04 12:00,2023-12-28 07:00,2024-01-25 13:00
CN.SWA4.1262,DRYWALL & INSULATION (1 side) (INT) - SWA4- GL 9-6 - L1 K LINE,Complete,SWA - 4,West Support Building,SUWS-4 - 9-6,L1 - Fndn Slab,DS/AD INTERIORS,,DRYWALL,FIZ DATA CENTER,2023-12-04 15:00,2023-12-10 13:00,2023-12-04 15:00,2023-12-07 16:00
CN.SWA4.1322,REMEDY - TAPE & FINISH DRYWALL - SWA4 - GL 9-6 - K LINE - L2,Complete,SWA - 4,West Support Building,SUWS-4 - 9-6,L2 - SubFab Level,DS/AD INTERIORS,CHERRY COATING,DRYWALL,FIZ DATA CENTER,2024-08-12 07:00,2024-08-15 17:00,2024-08-12 07:00,2024-08-15 17:00
CN.SWA4.1302,REMEDY - FRAME & DRYWALL - SWA4 - GL 9-6 - K LINE - L2,Complete,SWA - 4,West Support Building,SUWS-4 - 9-6,L2 - SubFab Level,DS/AD INTERIORS,BERG,DRYWALL,FIZ DATA CENTER,2024-07-16 07:00,2024-08-05 17:00,2024-07-16 07:00,2024-08-05 17:00
CN.SWA4.1282,DRYWALL & INSULATION (1 side) (INT) - SWA4 - GL 9-6 - L2 - K LINE,Complete,SWA - 4,West Support Building,SUWS-4 - 9-6,L2 - SubFab Level,DS/AD INTERIORS,,DRYWALL,FIZ DATA CENTER,2023-12-04 11:00,2023-12-10 09:00,2023-12-04 11:00,2023-12-08 12:00
CN.SWA4.1212,TEMP WALLS Framing and Drywall- SWA4- GL 9-6 - L2,Complete,SWA - 4,,SUWS-4 - 9-6,L2 - SubFab Level,ELECTRIC RM 1,,DRYWALL,,2023-10-09 08:00,2023-10-13 08:00,2023-10-09 08:00,2023-10-13 16:00
CN.SWA4.1392,TAPE & FINISH DRYWALL - SWA4 - GL 9-6 - K LINE - L3,Complete,SWA - 4,West Support Building,SUWS-4 - 9-6,L3 / Waffle Slab Level,DS/AD INTERIORS,CHERRY COATING,DRYWALL,FIZ DATA CENTER,2024-05-17 07:00,2024-05-23 17:00,2024-05-17 07:00,2024-05-22 17:00
CN.SWA4.1382,DRYWALL 2 SIDE - SWA4 - GL 9-6 - K LINE - L3,Complete,SWA - 4,West Support Building,SUWS-4 - 9-6,L3 / Waffle Slab Level,DS/AD INTERIORS,BERG,DRYWALL,FIZ DATA CENTER,2024-05-13 07:00,2024-05-17 17:00,2024-05-11 07:00,2024-05-15 17:00
CN.SWA4.1372,DRYWALL & INSULATION (1 side) (INT) - SWA4 - GL 9-6 - L3 - K LINE,Complete,SWA - 4,West Support Building,SUWS-4 - 9-6,L3 / Waffle Slab Level,DS/AD INTERIORS,,DRYWALL,FIZ DATA CENTER,2024-04-29 07:00,2024-05-03 17:00,2024-03-13 00:00,2024-03-18 15:00
CN.SWA4.6370,Drywall Clips & AMTS Installs Support Beams - SWA4 - GL 9-6 - K LINE - L4,Complete,SWA - 4,West Support Building,SUWS-4 - 9-6,L4 - SUP Roof - FAB Roof,DS/AD INTERIORS,,Fireproofing,HOON WOO,2024-03-23 08:00,2024-03-30 10:00,2024-02-26 00:00,2024-03-12 00:00
CN.SWA4.6900,FRAMING & DRYWALL - STAIR 3 - SWA4 - GL 18-21 - L1- L-N(added new detailed activities in stairs),Complete,SWA - 4,West Support Building,SUWN-1 - 18-21,L1 - Fndn Slab,H2 PURIFIER RM,BERG,INSULATED METAL PANELS,JAMES LIVELY,2024-05-28 07:00,2024-06-17 17:00,2024-05-28 07:00,2024-05-28 17:00
CN.SWA4.6950,REMEDY - DEMO DRYWALL  (INT) - SWA4 - GL 9-6 - L2 - K LINE,Complete,SWA - 4,West Support Building,SUWS-4 - 9-6,L2 - SubFab Level,DS/AD INTERIORS,BERG,DRYWALL,FIZ DATA CENTER,2024-07-08 07:00,2024-07-15 15:00,2024-07-08 07:00,2024-07-13 15:00
CN.AB.AR.7370,REMAINING DRYWALL & FINISHES  - SWA4 - GL 9-3 - L-N - L3 - (Impacted Opening by SECAI),Complete,SWA - 4,West Support Building,SUWS-4 - 9-6,L3 / Waffle Slab Level,FA LAB,BERG,DRYWALL,AMBER CARO,2024-05-17 07:00,2024-05-24 17:00,2024-04-15 07:00,2024-09-20 17:00
CN.AB.AR.7900,REMAINING FRAMING & DRYWALL -  SWA4 - GL 9-12  - L-N - L1,Not Started,SWA - 4,West Support Building,SUWS-3 - 12-9,L1 - Fndn Slab,,ALK,TBD Architectural Finishes,AMBER CARO,2025-11-21 07:00,2025-12-02 07:00,,
CN.AB.AR.3110,TAPE & FINISH DRYWALL - SWA5 - GL 6-1 - L2 - L-N DATA CENTER 2 & ELECTRICAL ROOM 1,Complete,SWA - 5,West Support Building,FIZ 2 / SUWS 5  (GL6-1) - GL J - N - DATA CENTER 1,L2 - SubFab Level,ELECTRIC RM 1,,DRYWALL,FIZ DATA CENTER,2024-01-29 07:00,2024-02-01 17:00,2024-01-25 07:00,2024-02-01 09:00
CN.AB.AR.4520,DRYWALL 2 SIDE - SWA5 - GL 6-1 - L2 - L-N DATA CENTER 2 & ELECTRICAL ROOM 1,Complete,SWA - 5,West Support Building,FIZ 2 / SUWS 5  (GL6-1) - GL J - N - DATA CENTER 1,L2 - SubFab Level,ELECTRIC RM 1,,DRYWALL,FIZ DATA CENTER,2024-01-04 07:00,2024-01-09 11:00,2024-01-04 07:00,2024-01-08 11:00
CN.AB.AR.4530,DRYWALL & INSULATION (1 side) (INT) - SWA-5 - L2 GL 1-6- DATA CENTER 2 & ELECTRICAL ROOM 1,Complete,SWA - 5,West Support Building,FIZ 2 / SUWS 5  (GL6-1) - GL J - N - DATA CENTER 1,L2 - SubFab Level,ELECTRIC RM 1,,DRYWALL,FIZ DATA CENTER,2023-10-07 13:00,2023-10-12 11:00,2023-10-07 13:00,2023-10-14 13:00
CN.SWB5.2030,PH1- INSTALL INTERIOR DRYWALL - SW PENTHOUSE,Complete,SWA - 5,East Support Building,SOUTH WEST PENTHOUSE,L4 - SUP Roof - FAB Roof,,BERG,TBD Architectural Finishes,SEAN MONK,2024-06-06 07:00,2024-06-10 17:00,2024-06-06 07:00,2024-08-01 17:00
CN.SWA5.R.1110,TAPE & FINISH DRYWALL - SWA5 - GL 6-1 - L1 - L-N,Complete,SWA - 5,West Support Building,FIZ 2 / SUWS 5  (GL6-1) - GL J - N - DATA CENTER 1,L1 - Fndn Slab,FA/TEM LAB,,DRYWALL,AMBER CARO,2023-12-22 07:00,2024-01-03 12:00,2023-12-22 07:00,2024-01-02 17:00
CN.SWA5.R.4440,DRYWALL 2 SIDE - SWA5 - GL 6-1 - L1 - L-N,Complete,SWA - 5,West Support Building,FIZ 2 / SUWS 5  (GL6-1) - GL J - N - DATA CENTER 1,L1 - Fndn Slab,FA/TEM LAB,,DRYWALL,AMBER CARO,2023-12-18 07:00,2023-12-21 17:00,2023-12-18 07:00,2023-12-21 17:00
CN.SWA5.R.4450,DRYWALL & INSULATION (1 side) (INT) - SWA-5 - L1 GL 1-6,Complete,SWA - 5,West Support Building,FIZ 2 / SUWS 5  (GL6-1) - GL J - N - DATA CENTER 1,L1 - Fndn Slab,FA/TEM LAB,,DRYWALL,AMBER CARO,2023-10-16 07:00,2023-10-19 17:00,2023-10-10 07:00,2023-10-14 17:00
CN.SWA5.DS.2990,REMEDY - TAPE & FINISH DRYWALL - SWA5 - GL 6-1 - K LINE - L2,Complete,SWA - 5,West Support Building,FIZ 2 / SUWS 5  (GL6-1) - GL J - N - DATA CENTER 1,L2 - SubFab Level,DS/AD INTERIORS,CHERRY COATING,DRYWALL,FIZ DATA CENTER,2024-08-23 07:00,2024-08-27 17:00,2024-08-08 07:00,2024-08-10 17:00
CN.SWA5.DS.2970,DRYWALL & INSULATION (1 side) (INT) - SWA5 - GL 6-1 - L2 - K LINE,Complete,SWA - 5,West Support Building,FIZ 2 / SUWS 5  (GL6-1) - GL J - N - DATA CENTER 1,L2 - SubFab Level,DS/AD INTERIORS,,DRYWALL,FIZ DATA CENTER,2023-12-22 09:00,2024-01-04 12:00,2023-12-22 09:00,2024-01-04 17:00
CN.SWA5..1620,"INSTALL FRAMING, DRYWALL & FIRE CAULKING AT FIREPROOFING LEAVEOUTS - INTERIOR SHAFT - ELEVATOR 01",Complete,SWA - 5,West Support Building,FIZ 2 / SUWS 5  (GL6-1) - GL J - N - DATA CENTER 1,,ELEVATOR,BERG,DRYWALL,JAMES LIVELY,2024-10-21 07:00,2024-11-01 17:00,2024-09-30 07:00,2025-02-10 07:00
CN.AB.AR.6150,"INSTALL FRAMING, DRYWALL & FIRE CAULKING - INTERIOR SHAFT - ELEVATOR 01A",Complete,SWA - 5,West Support Building,FIZ 2 / SUWS 5  (GL6-1) - GL J - N - DATA CENTER 1,,ELEVATOR,BERG,DRYWALL,,2024-09-30 07:00,2024-10-25 17:00,2024-09-06 07:00,2025-03-11 17:00
CN.SWA5.L3.150,DRYWALL & INSULATION (1 side) (INT) - SWA5 - GL 6-1 - L3 - K LINE,Complete,SWA - 5,,FIZ 2 / SUWS 5  (GL6-1) - GL J - N - DATA CENTER 1,L3 / Waffle Slab Level,DS/AD INTERIORS,,TBD Architectural Finishes,,2024-04-02 07:00,2024-04-05 17:00,2024-04-02 07:00,2024-04-06 17:00
CN.SWA5.L3.170,DRYWALL 2 SIDE - SWA5 - GL 6-3 - K LINE - L3,Complete,SWA - 5,,FIZ 2 / SUWS 5  (GL6-1) - GL J - N - DATA CENTER 1,L3 / Waffle Slab Level,DS/AD INTERIORS,BERG,TBD Architectural Finishes,,2024-05-28 07:00,2024-06-03 17:00,2024-05-28 07:00,2024-06-07 17:00
CN.SWA5.L3.180,TAPE & FINISH DRYWALL - SWA5 - GL 6-1 - K LINE - L3,Complete,SWA - 5,,FIZ 2 / SUWS 5  (GL6-1) - GL J - N - DATA CENTER 1,L3 / Waffle Slab Level,DS/AD INTERIORS,CHERRY COATING,TBD Architectural Finishes,,2024-06-10 07:00,2024-06-14 17:00,2024-06-10 07:00,2024-06-14 17:00
CN.SWA5.1750,Drywall Clips & AMTS Installs Support Beams - SWA5 - GL 6-1 - K LINE - L4,Complete,SWA - 5,West Support Building,FIZ 2 / SUWS 5  (GL6-1) - GL J - N - DATA CENTER 1,L4 - SUP Roof - FAB Roof,DS/AD INTERIORS,SECAI,Fireproofing,,2024-03-18 07:00,2024-03-28 17:00,2024-03-18 07:00,2024-03-28 17:00
CN.SWA5.L3.270,DEMO DRYWALL - INSTALL GOAL POSTS - ELEVATOR 1 HALLWAY - SWA5 - GL 6-1 - K LINE - L3,Complete,SWA - 5,,FIZ 2 / SUWS 5  (GL6-1) - GL J - N - DATA CENTER 1,L3 / Waffle Slab Level,,CHERRY COATING,TBD Architectural Finishes,,2024-07-31 07:00,2024-08-09 17:00,2024-07-09 07:00,2024-07-19 17:00
CN.SWA5..2010,HANG INTERIOR SIDE DRYWALL 1ST LAYER install & inspect - STAIR #2 - 11/L - ALL LEVELS,Complete,SWA - 5,West Support Building,SUWS-3 - 12-9,INTERIOR STAIR TOWER - STAIR #2 (CLEAN ROOM),,,INSULATED METAL PANELS,JAMES LIVELY,2024-12-11 07:00,2024-12-16 17:00,2024-12-12 07:00,2025-08-18 17:00
CN.SWA5..2020,SECAI - TAPE & FLOAT DRYWALL & CEILING remaining - STAIR #2 - 11/L - ALL LEVELS,Complete,SWA - 5,West Support Building,SUWS-3 - 12-9,INTERIOR STAIR TOWER - STAIR #2 (CLEAN ROOM),,,INSULATED METAL PANELS,JAMES LIVELY,2025-08-19 07:00,2025-08-29 17:00,2025-08-19 07:00,2025-08-29 17:00
CN.SWA5..2150,HANG INTERIOR SIDE 1ST LAYER DRYWALL & INSPECT - STAIR #3 - 18/L - ALL LEVELS,Complete,SWA - 5,West Support Building,SUWN-1 - 18-21,INTERIOR STAIR TOWER - STAIR #3,,,INSULATED METAL PANELS,JAMES LIVELY,2024-11-26 07:00,2024-12-03 17:00,2024-11-26 07:00,2025-10-09 07:00
CN.SWA5..2160,TAPE & FLOAT DRYWALL & CEILING - STAIR #3 - 18/L - ALL LEVELS,Complete,SWA - 5,West Support Building,SUWN-1 - 18-21,INTERIOR STAIR TOWER - STAIR #3,,,INSULATED METAL PANELS,JAMES LIVELY,2025-10-13 07:00,2025-10-23 17:00,2025-10-13 07:00,2025-11-11 17:00
CN.SWA5..2290,INSTALL INTERIOR SIDE 1ST LAYER DRYWALL & INSPECT - STAIR #4 - 23/L - ALL LEVELS [/DAY],Complete,SWA - 5,West Support Building,SUWN-2 - 21-24,INTERIOR STAIR TOWER - STAIR #4 (CLEAN ROOM),,,INSULATED METAL PANELS,JAMES LIVELY,2025-07-09 07:00,2025-07-22 17:00,2025-06-02 07:00,2025-08-23 17:00
CN.SWA5..2300,TAPE & FLOAT DRYWALL & CEILING - STAIR #4 - 23/L - ALL LEVELS (),Complete,SWA - 5,West Support Building,SUWN-2 - 21-24,INTERIOR STAIR TOWER - STAIR #4 (CLEAN ROOM),,,INSULATED METAL PANELS,JAMES LIVELY,2025-09-27 07:00,2025-10-02 17:00,2025-09-23 12:00,2025-09-29 17:00
CN.SWA5..2570,HANG INTERIOR SIDE 1ST LAYER DRYWALL & inspect - STAIR #20 - 19/D - ALL LEVELS,Complete,SWA - 5,West Support Building,SUES-1 - 19-16,INTERIOR STAIR TOWER - STAIR #20,,,INSULATED METAL PANELS,JAMES LIVELY,2025-02-18 07:00,2025-02-22 17:00,2025-02-18 07:00,2025-10-09 17:00
CN.SWA5..2580,TAPE & FLOAT AND SANDING DRYWALL & CEILING - STAIR #20 - 19/D - ALL LEVELS,Complete,SWA - 5,West Support Building,SUES-1 - 19-16,INTERIOR STAIR TOWER - STAIR #20,,,INSULATED METAL PANELS,JAMES LIVELY,2025-10-08 07:00,2025-10-21 17:00,2025-10-08 07:00,2025-11-11 17:00
CN.SWA5..2720,"TAPE & FLOAT DRYWALL & CEILING (N, S & W WALLS COMPLETE)- STAIR #21 - 13/D - ALL LEVELS",Complete,SWA - 5,West Support Building,SUES-3 - 13-9,INTERIOR STAIR TOWER - STAIR #21 (CLEAN ROOM),,,INSULATED METAL PANELS,JAMES LIVELY,2025-08-04 07:00,2025-08-20 17:00,2025-06-09 07:00,2025-06-27 17:00
CN.SWA5..3620,DEMO DRYWALL FOR SANDBLASTING - STAIR #3 - 18/L - ALL LEVELS,Complete,SWA - 5,West Support Building,SUWN-1 - 18-21,INTERIOR STAIR TOWER - STAIR #3,,,INSULATED METAL PANELS,JAMES LIVELY,2024-09-06 07:00,2024-09-06 17:00,2024-08-31 07:00,2024-09-03 17:00
CN.AB.AR.7420,INSTALL FRAMING/DRYWALL/TAPE+FLOAT - MECHANICAL ROOM - ELEVATOR 01B,Complete,SWA - 5,West Support Building,FIZ 2 / SUWS 5  (GL6-1) - GL J - N - DATA CENTER 1,,ELEVATOR,BERG,DRYWALL,,2025-02-03 07:00,2025-02-18 17:00,2025-02-03 07:00,2025-04-25 17:00
CN.AB.AR.7560,"SECAI TOOK OVER 9/17 ONLY L1 - INSTALL REMAINING FRAMING, DRYWALL & FIRE CAULKING - SHAFT & DOOR FRONTS - ELEVATOR 01",Complete,SWA - 5,West Support Building,FIZ 2 / SUWS 5  (GL6-1) - GL J - N - DATA CENTER 1,,ELEVATOR,W&W,TBD Architectural Finishes,,2024-07-08 07:00,2024-07-17 17:00,2024-07-08 07:00,2025-09-19 17:00
CN.AB.AR.7630,"INSTALL FRAMING, DRYWALL & FIRE CAULKING AT FIREPROOFING LEAVEOUTS - INTERIOR SHAFT - ELEVATOR 01A",Complete,SWA - 5,West Support Building,FIZ 2 / SUWS 5  (GL6-1) - GL J - N - DATA CENTER 1,,ELEVATOR,BERG,DRYWALL,,2025-02-17 07:00,2025-02-26 17:00,2025-02-15 07:00,2025-02-15 17:00
CN.AB.AR.7670,"IMPACT - INSTALL REMAINING FRAMING, DRYWALL & FIRE CAULKING - SHAFT & DOOR FRONTS - ELEVATOR 01A",Complete,SWA - 5,West Support Building,FIZ 2 / SUWS 5  (GL6-1) - GL J - N - DATA CENTER 1,,ELEVATOR,W&W,DRYWALL,,2025-06-06 07:00,2025-07-07 17:00,2025-06-06 07:00,2025-07-30 17:00
CN.SWA5..4160,INSTALL - INTERIOR SIDE 2ND LAYED  DRYWALL install & inspect - STAIR #2 - 11/L - ALL LEVELS,Complete,SWA - 5,West Support Building,SUWS-3 - 12-9,INTERIOR STAIR TOWER - STAIR #2 (CLEAN ROOM),,,INSULATED METAL PANELS,JAMES LIVELY,2025-06-09 07:00,2025-06-21 17:00,2025-05-06 07:00,2025-08-18 17:00
CN.SWA5..4380,INSTALL - 1ST LAYER DRYWALL CEILING & INSPECT - STAIR #20 - 19/D - ALL LEVELS,Complete,SWA - 5,West Support Building,SUES-1 - 19-16,INTERIOR STAIR TOWER - STAIR #20,,,INSULATED METAL PANELS,JAMES LIVELY,2025-10-04 07:00,2025-10-11 17:00,2025-09-03 12:00,2025-09-08 14:00
CN.SWA5..4390,HANG INTERIOR SIDE 2ND LAYER DRYWALL & INSPECT - STAIR #20 - 19/D - ALL LEVELS,Complete,SWA - 5,West Support Building,SUES-1 - 19-16,INTERIOR STAIR TOWER - STAIR #20,,,INSULATED METAL PANELS,JAMES LIVELY,2025-04-09 07:00,2025-04-22 17:00,2025-04-03 07:00,2025-10-07 07:00
CN.SWA5..4400,INSTALL - 2ND  LAYER  DRYWALL CEILING & INSPECT - STAIR #20 - 19/D - ALL LEVELS,Complete,SWA - 5,West Support Building,SUES-1 - 19-16,INTERIOR STAIR TOWER - STAIR #20,,,INSULATED METAL PANELS,JAMES LIVELY,2025-10-13 07:00,2025-10-20 17:00,2025-09-09 09:30,2025-09-15 14:00
CN.SWA5..4530,INSTALL 2ND LAYER  DRYWALL CEILING & INSPECT  - STAIR #3 - 18/L - ALL LEVELS,Complete,SWA - 5,West Support Building,SUWN-1 - 18-21,INTERIOR STAIR TOWER - STAIR #3,,,INSULATED METAL PANELS,JAMES LIVELY,2025-10-02 07:00,2025-10-03 17:00,2025-10-02 07:00,2025-10-03 17:00
CN.SWA5..4540,IMPACT - SECAI DRYWALL PATCH & FINISH - STAIR #3 - 18/L - ALL LEVELS,Complete,SWA - 5,West Support Building,SUWN-1 - 18-21,INTERIOR STAIR TOWER - STAIR #3,,,INSULATED METAL PANELS,JAMES LIVELY,2025-10-10 07:00,2025-10-15 17:00,2025-10-10 07:00,2025-11-03 17:00
CN.SWA5..4550,FRAME & 1ST LAYER DRYWALL CEILINGS - INSTALL & INSPECT - STAIR #3 - 18/L - ALL LEVELS,Complete,SWA - 5,West Support Building,SUWN-1 - 18-21,INTERIOR STAIR TOWER - STAIR #3,,,INSULATED METAL PANELS,JAMES LIVELY,2025-09-30 07:00,2025-10-02 17:00,2025-09-30 07:00,2025-10-02 17:00
CN.SWA5..4690,INSTALL - INTERIOR SIDE 2ND LAYER DRYWALL & INSPECT - STAIR #4 - 23/L - ALL LEVELS,Complete,SWA - 5,West Support Building,SUWN-2 - 21-24,INTERIOR STAIR TOWER - STAIR #4 (CLEAN ROOM),,,INSULATED METAL PANELS,JAMES LIVELY,2025-09-06 07:00,2025-09-08 17:00,2025-08-22 07:00,2025-09-22 17:00
CN.SWA5..4700,INSTALL- DRYWALL 1ST LAYER CEILING & INSPECT - STAIR #4 - 23/L - ALL LEVELS [/DAY],Complete,SWA - 5,West Support Building,SUWN-2 - 21-24,INTERIOR STAIR TOWER - STAIR #4 (CLEAN ROOM),,,INSULATED METAL PANELS,JAMES LIVELY,2025-09-09 07:00,2025-09-16 17:00,2025-08-29 07:00,2025-09-15 07:00
CN.SWA5..4710,INSTALL- DRYWALL 2ND LAYER CEILING & INSPECT - STAIR #4 - 23/L - ALL LEVELS,Complete,SWA - 5,West Support Building,SUWN-2 - 21-24,INTERIOR STAIR TOWER - STAIR #4 (CLEAN ROOM),,,INSULATED METAL PANELS,JAMES LIVELY,2025-09-19 07:00,2025-09-26 17:00,2025-09-02 07:00,2025-09-15 16:00
CN.SWA5..5520,SECAI - FRAMING & 1ST LAYER INTERIOR DRYWALL - STAIR #50 - 29/L - ALL LEVELS,Complete,SWA - 5,West Support Building,SUWN-4 - 27-30,INTERIOR STAIR TOWER - STAIR #50 - DE-SCOPED,,,INSULATED METAL PANELS,JAMES LIVELY,2025-08-19 07:00,2025-08-19 17:00,2025-06-27 07:00,2025-06-27 13:00
CN.SWA5..5530,INSTALL- 2ND LAYER DRYWALL EXTERIOR - STAIR #50 - 29/L - ALL LEVELS [/DAY],Complete,SWA - 5,West Support Building,SUWN-4 - 27-30,INTERIOR STAIR TOWER - STAIR #50 - DE-SCOPED,,,INSULATED METAL PANELS,JAMES LIVELY,2025-09-04 07:00,2025-09-08 17:00,2025-06-27 07:00,2025-06-27 13:00
CN.SWA5..5540,INSPECT - 2ND  LAYER DRYWALL EXTERIOR  - STAIR #50 - 29/L - ALL LEVELS,Complete,SWA - 5,West Support Building,SUWN-4 - 27-30,INTERIOR STAIR TOWER - STAIR #50 - DE-SCOPED,,,INSULATED METAL PANELS,JAMES LIVELY,2025-09-09 07:00,2025-09-09 17:00,2025-06-27 07:00,2025-06-27 13:00
CN.SWA5..5900,IMPACT - NCR #268 DRYWALL CJ AND CAULK - STAIR #2 - 11/L - ALL LEVELS,Complete,SWA - 5,West Support Building,SUWS-3 - 12-9,INTERIOR STAIR TOWER - STAIR #2 (CLEAN ROOM),,,INSULATED METAL PANELS,JAMES LIVELY,2024-11-26 07:00,2024-12-03 17:00,2025-04-02 07:00,2025-06-18 07:00
CN.SWA5..6060,IMPACT - NCR #267 DRYWALL CJ and CAULK - STAIR #21 - 13/D - ALL LEVELS,Complete,SWA - 5,West Support Building,SUES-3 - 13-9,INTERIOR STAIR TOWER - STAIR #21 (CLEAN ROOM),,,INSULATED METAL PANELS,JAMES LIVELY,2024-11-12 07:00,2024-11-25 17:00,2025-04-02 07:00,2025-06-18 17:00
CN.SWA5..6130,SECAI -TAPE & FLOAT DRYWALL & CEILING - REMAINING - STAIR #21 - 13/D - ALL LEVELS,Complete,SWA - 5,West Support Building,SUES-3 - 13-9,INTERIOR STAIR TOWER - STAIR #21 (CLEAN ROOM),,,INSULATED METAL PANELS,JAMES LIVELY,2025-08-19 07:00,2025-08-23 17:00,2025-08-19 07:00,2025-08-23 17:00
CN.AB.AR.3180,TAPE & FINISH DRYWALL- H2 PURIFER ROOM GL 18-21 K-N,Complete,SWB - 1,West Support Building,SUWN-1 - 18-21,L1 - Fndn Slab,H2 PURIFIER RM,CHERRY COATING,DRYWALL,AMBER CARO,2024-03-20 07:00,2024-03-27 17:00,2024-03-20 07:00,2024-03-26 17:00
CN.AB.AR.4540,DRYWALL 2 SIDE - SWB-1- H2 PURIFER ROOM GL 18-21 K-N,Complete,SWB - 1,West Support Building,SUWN-1 - 18-21,L1 - Fndn Slab,H2 PURIFIER RM,BERG,DRYWALL,AMBER CARO,2024-03-11 07:00,2024-03-19 17:00,2024-03-03 07:00,2024-03-14 17:00
CN.AB.AR.4550,DRYWALL & INSULATION (1 side) (INT) - SWB-1 - L1 - H2 PURIFER ROOM,Complete,SWB - 1,West Support Building,SUWN-1 - 18-21,L1 - Fndn Slab,H2 PURIFIER RM,,DRYWALL,AMBER CARO,2023-10-16 07:00,2023-10-19 17:00,2023-10-16 07:00,2023-10-20 17:00
CN.SWB1.3180,TAPE & FINISH DRYWALL - SWB-1-L2 - ELECTRICAL ROOM 2 GL 18-21 K-N,Complete,SWB - 1,West Support Building,SUWN-1 - 18-21,L2 - SubFab Level,ELECTRIC RM 2,CHERRY COATING,DRYWALL,AMBER CARO,2024-04-15 07:00,2024-04-19 17:00,2024-04-09 07:00,2024-05-04 17:00
CN.SWB1.4540,DRYWALL 2 SIDE - SWB-1-L2 - ELECTRICAL ROOM 2 GL 18-21 K-N,Complete,SWB - 1,West Support Building,SUWN-1 - 18-21,L2 - SubFab Level,ELECTRIC RM 2,,DRYWALL,AMBER CARO,2024-03-18 07:00,2024-03-22 17:00,2024-03-18 07:00,2024-03-26 17:00
CN.SWB1.4550,DRYWALL & INSULATION (1 side) (INT) - SWB-1 - L2 - ELECTRICAL ROOM 2 GL 18-21 K-N,Complete,SWB - 1,West Support Building,SUWN-1 - 18-21,L2 - SubFab Level,ELECTRIC RM 2,,DRYWALL,AMBER CARO,2024-01-10 07:00,2024-01-14 09:00,2024-01-09 15:00,2024-01-12 17:00
CN.SWB1..3180,TAPE & FINISH DRYWALL - SWB-1 - ELECTRICAL ROOM 1 SOUTH GL 18-21 K-N,Not Started,SWB - 1,West Support Building,SUWN-1 - 18-21,L3 / Waffle Slab Level,ELECTRIC RM 1,CHERRY COATING,DRYWALL,AMBER CARO,2025-12-03 07:00,2025-12-09 17:00,,
CN.SWB1..4540,DRYWALL 2 SIDE - SWB-1 - ELECTRICAL ROOM 1 SOUTH GL 18-21 K-N,Not Started,SWB - 1,West Support Building,SUWN-1 - 18-21,L3 / Waffle Slab Level,ELECTRIC RM 1,BERG,DRYWALL,AMBER CARO,2025-11-24 07:00,2025-12-02 17:00,,
CN.SWB1..4550,DRYWALL & INSULATION (1 side) (INT) - SWB-1 - L3 - ELECTRICAL ROOM 1 SOUTH GL 18-21 K-N,Complete,SWB - 1,West Support Building,SUWN-1 - 18-21,L3 / Waffle Slab Level,ELECTRIC RM 1,BERG,DRYWALL,AMBER CARO,2024-04-01 13:00,2024-04-05 13:00,2024-03-15 07:00,2024-07-02 17:00
CN.SWB1.1302,TAPE & FINISH DRYWALL- SWB1- GL 18-21  - K LINE -  L1,Complete,SWB - 1,West Support Building,SUWN-1 - 18-21,L1 - Fndn Slab,DS/AD INTERIORS,CHERRY COATING,DRYWALL,FIZ DATA CENTER,2024-09-20 07:00,2024-09-27 17:00,2024-08-22 07:00,2024-08-26 17:00
CN.SWB1.1322,PRIMER & PAINT DRYWALL -  GL 18-21 -  K LINE - L1,Complete,SWB - 1,West Support Building,SUWN-1 - 18-21,L1 - Fndn Slab,DS/AD INTERIORS,FINISH PAINT,TBD Architectural Finishes,FIZ DATA CENTER,2024-10-21 07:00,2024-10-24 17:00,2024-10-19 07:00,2024-10-22 17:00
CN.SWB1.1282,DRYWALL 2 SIDE - SWB1- GL 18-21 - K LINE - L1,Complete,SWB - 1,West Support Building,SUWN-1 - 18-21,L1 - Fndn Slab,DS/AD INTERIORS,,DRYWALL,FIZ DATA CENTER,2024-03-09 08:00,2024-03-17 08:00,2024-03-01 00:00,2024-03-18 00:00
CN.SWB1.1252,DRYWALL & INSULATION (1 side) (INT) - SWB1- GL 18-21 - K LINE - L1,Complete,SWB - 1,West Support Building,SUWN-1 - 18-21,L1 - Fndn Slab,DS/AD INTERIORS,,DRYWALL,FIZ DATA CENTER,2023-12-04 07:00,2023-12-09 15:00,2023-12-06 07:00,2023-12-09 16:00
CN.SWB1.1312,REMEDY - TAPE & FINISH DRYWALL- SWB1- GL 18-21 K LINE - L2,Complete,SWB - 1,West Support Building,SUWN-1 - 18-21,L2 - SubFab Level,DS/AD INTERIORS,CHERRY COATING,DRYWALL,FIZ DATA CENTER,2024-08-12 07:00,2024-08-15 17:00,2024-08-10 07:00,2024-08-13 17:00
CN.SWB1.1292,REMEDY - FRAME & DRYWALL - SWB1- GL 18-21 K LINE -  L2,Complete,SWB - 1,West Support Building,SUWN-1 - 18-21,L2 - SubFab Level,DS/AD INTERIORS,BERG,DRYWALL,FIZ DATA CENTER,2024-06-24 07:00,2024-07-05 17:00,2024-06-22 07:00,2024-08-03 17:00
CN.SWB1.1272,DRYWALL & INSULATION (1 side) (INT) - SWB1- GL 18-21 K LINE - L2,Complete,SWB - 1,West Support Building,SUWN-1 - 18-21,L2 - SubFab Level,DS/AD INTERIORS,BERG,DRYWALL,FIZ DATA CENTER,2024-04-15 07:00,2024-04-22 17:00,2024-04-09 07:00,2024-05-07 17:00
CN.SWB1.1212,TEMP WALLS Framing and Drywall- SWB1- GL 18-21 K-N - L2,Complete,SWB - 1,,SUWN-1 - 18-21,L2 - SubFab Level,ELECTRIC RM 2,,DRYWALL,,2024-03-09 08:00,2024-03-17 08:00,2024-02-02 00:00,2024-02-09 00:00
CN.SWB1.1382,TAPE & FINISH DRYWALL  - SWB1- GL 18-21 K LINE -  L3,Complete,SWB - 1,West Support Building,SUWN-1 - 18-21,L3 / Waffle Slab Level,DS/AD INTERIORS,CHERRY COATING,DRYWALL,FIZ DATA CENTER,2024-07-15 07:00,2024-07-18 17:00,2024-07-15 07:00,2024-07-18 17:00
CN.SWB1.1372,DRYWALL 2 SIDE - SWB1- GL 18-21 K LINE - L3,Complete,SWB - 1,West Support Building,SUWN-1 - 18-21,L3 / Waffle Slab Level,DS/AD INTERIORS,BERG,DRYWALL,FIZ DATA CENTER,2024-05-28 07:00,2024-06-03 17:00,2024-05-28 07:00,2024-06-26 17:00
CN.SWB1.1362,DRYWALL & INSULATION (1 side) (INT) - SWB1- GL 18-21 K LINE - L3,Complete,SWB - 1,West Support Building,SUWN-1 - 18-21,L3 / Waffle Slab Level,DS/AD INTERIORS,,DRYWALL,FIZ DATA CENTER,2024-05-18 10:00,2024-05-20 14:00,2024-03-10 00:00,2024-03-14 00:00
CN.SWB1.4920,Drywall Clips & AMTS Installs Support Beams - SWB-1 L4 GL 18 - 21 K LINE,Complete,SWB - 1,West Support Building,SUWN-1 - 18-21,L4 - SUP Roof - FAB Roof,DS/AD INTERIORS,SECAI,Fireproofing,HOON WOO,2024-03-27 07:00,2024-03-29 17:00,2024-03-27 07:00,2024-03-29 17:00
CN.SWB1.5260,REMEDY - DEMO DRYWALL (INT) - SWB1- GL 18-21 K LINE -  L2,Complete,SWB - 1,West Support Building,SUWN-1 - 18-21,L2 - SubFab Level,DS/AD INTERIORS,BERG,DRYWALL,FIZ DATA CENTER,2024-06-10 07:00,2024-06-18 17:00,2024-06-10 07:00,2024-06-17 17:00
CN.SWB1..4590,REMAINING DRYWALL & FINISHES  - SWB-1 - IT/SECURITY 3  GL 17-21 K- N - L3,Complete,SWB - 1,West Support Building,SUWN-1 - 18-21,L3 / Waffle Slab Level,IT/SECURITY,BERG,DRYWALL,AMBER CARO,2025-07-21 07:00,2025-07-25 17:00,2025-07-21 07:00,2025-07-25 17:00
CN.AB.AR.3250,TAPE & FINISH DRYWALL - SWB-2-L2 - ELECTRICAL ROOM 2 GL 21-24 K-N,Complete,SWB - 2,West Support Building,SUWN-2 - 21-24,L2 - SubFab Level,ELECTRIC RM 2,,DRYWALL,AMBER CARO,2024-03-09 08:00,2024-03-12 10:00,2024-03-01 00:00,2024-03-05 00:00
CN.AB.AR.4560,DRYWALL 2 SIDE - SWB-2-L2 - ELECTRICAL ROOM 2 GL 21-24 K-N,Complete,SWB - 2,West Support Building,SUWN-2 - 21-24,L2 - SubFab Level,ELECTRIC RM 2,,DRYWALL,AMBER CARO,2024-01-29 07:00,2024-02-01 09:00,2024-01-26 07:00,2024-02-02 11:00
CN.AB.AR.4570,DRYWALL & INSULATION (1 side) (INT) - SWB-2-L2 - ELECTRICAL ROOM 2 GL 21-24 K-N,Complete,SWB - 2,West Support Building,SUWN-2 - 21-24,L2 - SubFab Level,ELECTRIC RM 2,,DRYWALL,AMBER CARO,2024-01-10 07:00,2024-01-14 09:00,2024-01-09 15:00,2024-01-12 17:00
CN.SWB2.3880,TAPE & FINISH DRYWALL - GCS TRAINING - GL 21-24 - L-M - L1,Complete,SWB - 2,East Support Building,SUWN-2 - 21-24,L1 - Fndn Slab,GCS TRAINING,CHERRY COATING,DRYWALL,AMBER CARO,2025-08-14 07:00,2025-08-14 07:00,2025-08-14 07:00,2025-08-14 07:00
CN.SWB2.4340,DRYWALL 2 SIDE - GCS TRAINING - GL 21-24 - L-M - L1,Complete,SWB - 2,East Support Building,SUWN-2 - 21-24,L1 - Fndn Slab,GCS TRAINING,BERG,DRYWALL,AMBER CARO,2024-03-11 07:00,2024-03-19 17:00,2024-03-01 07:00,2025-08-13 17:00
CN.SWB2.4350,DRYWALL & INSULATION (1 side) (INT) - SWB2 - L1- GCS TRAINING,Complete,SWB - 2,East Support Building,SUWN-2 - 21-24,L1 - Fndn Slab,GCS TRAINING,,DRYWALL,AMBER CARO,2023-09-26 07:00,2023-09-30 17:00,2023-09-26 07:00,2023-09-30 09:00
CN.SWB23880,TAPE & FINISH DRYWALL - SWB2 - L1 - ELECTRICAL ROOM 1 CENTRAL GL 21-24 K-N,Complete,SWB - 2,East Support Building,SUWN-2 - 21-24,L3 / Waffle Slab Level,ELECTRIC RM 1,CHERRY COATING,DRYWALL,AMBER CARO,2024-09-03 07:00,2024-09-06 17:00,2024-09-03 07:00,2024-09-06 17:00
CN.SWB24340,DRYWALL 2 SIDE - SWB2 - L1 - ELECTRICAL ROOM 1 CENTRAL GL 21-24 K-N,Complete,SWB - 2,East Support Building,SUWN-2 - 21-24,L3 / Waffle Slab Level,ELECTRIC RM 1,BERG,DRYWALL,AMBER CARO,2024-08-15 07:00,2024-08-20 17:00,2024-08-15 07:00,2024-08-19 17:00
CN.SWB24350,DRYWALL & INSULATION (1 side) (INT) - SWB2 - L3 - ELECTRICAL ROOM 1 CENTRAL GL 21-24 K-N,Complete,SWB - 2,East Support Building,SUWN-2 - 21-24,L3 / Waffle Slab Level,ELECTRIC RM 1,BERG,DRYWALL,AMBER CARO,2024-03-22 07:00,2024-03-27 09:00,2024-03-04 07:00,2024-08-08 17:00
CN.SWB2.1302,TAPE & FINISH DRYWALL- SWB2- GL 21-24  - K LINE -  L1,Complete,SWB - 2,West Support Building,SUWN-2 - 21-24,L1 - Fndn Slab,DS/AD INTERIORS,,DRYWALL,FIZ DATA CENTER,2024-03-23 08:00,2024-03-27 08:00,2024-03-07 00:00,2024-03-13 00:00
CN.SWB2.1322,PRIMER & PAINT DRYWALL -  GL 21-24  - K LINE -  L1,Complete,SWB - 2,West Support Building,SUWN-2 - 21-24,L1 - Fndn Slab,DS/AD INTERIORS,FINISH PAINT,TBD Architectural Finishes,FIZ DATA CENTER,2024-10-22 07:00,2024-10-25 17:00,2024-10-22 07:00,2024-10-25 17:00
CN.SWB2.1282,DRYWALL 2 SIDE - SWB2- GL 21-24 - K LINE - L1,Complete,SWB - 2,West Support Building,SUWN-2 - 21-24,L1 - Fndn Slab,DS/AD INTERIORS,,DRYWALL,FIZ DATA CENTER,2024-03-09 08:00,2024-03-17 08:00,2024-03-01 00:00,2024-03-06 00:00
CN.SWB2.1262,DRYWALL & INSULATION (1 side) (INT)- SWB2- GL 21-24 - K LINE - L1,Complete,SWB - 2,West Support Building,SUWN-2 - 21-24,L1 - Fndn Slab,DS/AD INTERIORS,,DRYWALL,FIZ DATA CENTER,2023-12-04 15:00,2023-12-10 13:00,2023-12-04 15:00,2023-12-08 16:00
CN.SWB2.1312,REMEDY - TAPE & FINISH DRYWALL - SWB2- GL 21-24 K LINE - L2,Complete,SWB - 2,West Support Building,SUWN-2 - 21-24,L2 - SubFab Level,DS/AD INTERIORS,CHERRY COATING,DRYWALL,FIZ DATA CENTER,2024-08-12 07:00,2024-08-15 17:00,2024-08-08 07:00,2024-08-12 17:00
CN.SWB2.1292,REMEDY - FRAME & DRYWALL - SWB2- GL 21-24 K LINE -  L2,Complete,SWB - 2,West Support Building,SUWN-2 - 21-24,L2 - SubFab Level,DS/AD INTERIORS,BERG,DRYWALL,FIZ DATA CENTER,2024-06-18 07:00,2024-06-28 17:00,2024-06-18 07:00,2024-08-01 17:00
CN.SWB2.1272,DRYWALL & INSULATION (1 side) (INT)- SWB2- GL 21-24 K LINE - L2,Complete,SWB - 2,West Support Building,SUWN-2 - 21-24,L2 - SubFab Level,DS/AD INTERIORS,,DRYWALL,FIZ DATA CENTER,2024-03-09 08:00,2024-03-17 16:00,2024-03-01 00:00,2024-03-12 00:00
CN.SWB2.1212,TEMP WALLS Framing and Drywall- SWB2- GL 21-24 K-N - L2,Complete,SWB - 2,,SUWN-2 - 21-24,L2 - SubFab Level,ELECTRIC RM 2,,DRYWALL,,2024-03-09 08:00,2024-03-17 08:00,2024-02-02 00:00,2024-02-09 00:00
CN.SWB2.1382,TAPE & FINISH DRYWALL - SWB2- GL 21-24 K LINE -  L3,Complete,SWB - 2,West Support Building,SUWN-2 - 21-24,L3 / Waffle Slab Level,DS/AD INTERIORS,CHERRY COATING,DRYWALL,FIZ DATA CENTER,2024-09-23 07:00,2024-09-27 17:00,2024-09-23 07:00,2024-09-27 17:00
CN.SWB2.1372,DRYWALL 2 SIDE- SWB2- GL 21-24 K LINE - L3,Complete,SWB - 2,West Support Building,SUWN-2 - 21-24,L3 / Waffle Slab Level,DS/AD INTERIORS,BERG,DRYWALL,FIZ DATA CENTER,2024-05-13 07:00,2024-05-17 17:00,2024-05-13 07:00,2024-09-24 17:00
CN.SWB2.1362,DRYWALL & INSULATION (1 side) (INT) - SWB2- GL 21-24 K LINE - L3,Complete,SWB - 2,West Support Building,SUWN-2 - 21-24,L3 / Waffle Slab Level,DS/AD INTERIORS,,DRYWALL,FIZ DATA CENTER,2024-04-15 07:00,2024-04-18 17:00,2024-03-11 07:00,2024-03-26 17:00
CN.SWB2.6580,Drywall Clips & AMTS Installs Support Beams - SWB-2 L4 GL 21-24 K LINE,Complete,SWB - 2,West Support Building,SUWN-2 - 21-24,L4 - SUP Roof - FAB Roof,DS/AD INTERIORS,SECAI,Fireproofing,HOON WOO,2024-03-28 07:00,2024-04-11 17:00,2024-03-28 07:00,2024-04-06 17:00
CN.SWB2.6940,REMEDY - DEMO DRYWALL (INT) - SWB2- GL 21-24 K LINE -  L2,Complete,SWB - 2,West Support Building,SUWN-2 - 21-24,L2 - SubFab Level,DS/AD INTERIORS,,DRYWALL,FIZ DATA CENTER,2024-05-31 07:00,2024-06-07 15:00,2024-05-23 07:00,2024-05-28 17:00
CN.AB.AR.3320,TAPE & FINISH DRYWALL - SWB-3- WASTE LIQUOR RMGL 24-27 K-N - SECAI TOOK OVER FOR ACCELERATION,Complete,SWB - 3,West Support Building,SUWN-3 - 24-27,L1 - Fndn Slab,WASTE LIQUOR RM,CHERRY COATING,DRYWALL,AMBER CARO,2025-11-10 07:00,2025-11-14 17:00,2025-06-10 07:00,2025-06-10 17:00
CN.AB.AR.4580,DRYWALL 2 SIDE - SWB-3 - L1- WASTE LIQUOR RMGL 24-27 K-N - SECAI TOOK OVER FOR ACCELERATION,Complete,SWB - 3,West Support Building,SUWN-3 - 24-27,L1 - Fndn Slab,WASTE LIQUOR RM,BERG,DRYWALL,AMBER CARO,2025-11-03 07:00,2025-11-07 17:00,2025-06-10 07:00,2025-06-10 17:00
CN.AB.AR.4590,DRYWALL & INSULATION (1 side) (INT) - SWB-3 - L1- WASTE LIQUOR RMGL 24-27 K-N - SECAI TOOK OVER FOR ACCELERATION,Complete,SWB - 3,West Support Building,SUWN-3 - 24-27,L1 - Fndn Slab,WASTE LIQUOR RM,BERG,DRYWALL,AMBER CARO,2024-03-22 07:00,2024-03-29 13:00,2024-03-09 19:00,2025-06-10 07:00
CN.SWB3.3320,TAPE & FINISH DRYWALL - SWB-3 - ELECTRICAL ROOM 2 GL 24-27 K-N,Complete,SWB - 3,West Support Building,SUWN-3 - 24-27,L2 - SubFab Level,ELECTRIC RM 2,,DRYWALL,AMBER CARO,2024-03-09 08:00,2024-03-12 10:00,2024-02-29 00:00,2024-03-03 00:00
CN.SWB3.4580,DRYWALL 2 SIDE - SWB-3 - ELECTRICAL ROOM 2 GL 24-27 K-N,Complete,SWB - 3,West Support Building,SUWN-3 - 24-27,L2 - SubFab Level,ELECTRIC RM 2,,DRYWALL,AMBER CARO,2024-01-29 07:00,2024-02-01 09:00,2024-01-26 07:00,2024-01-31 11:00
CN.SWB3.4590,DRYWALL & INSULATION (1 side) (INT) - SWB-3 - ELECTRICAL ROOM 2 GL 24-27 K-N,Complete,SWB - 3,West Support Building,SUWN-3 - 24-27,L2 - SubFab Level,ELECTRIC RM 2,,DRYWALL,AMBER CARO,2024-01-10 07:00,2024-01-14 09:00,2024-01-09 15:00,2024-01-12 17:00
CN.SWB33320,TAPE & FINISH DRYWALL - SWB-3- ELECTRICAL ROOM 1 North & BATTERY ROOM 3 GL 24-27 K-N,Complete,SWB - 3,West Support Building,SUWN-3 - 24-27,L3 / Waffle Slab Level,ELECTRIC RM 1,CHERRY COATING,DRYWALL,AMBER CARO,2024-08-12 07:00,2024-08-16 17:00,2024-08-12 07:00,2024-08-16 17:00
CN.SWB34580,DRYWALL 2 SIDE - SWB-3- ELECTRICAL ROOM 1 North & BATTERY ROOM 3 GL 24-27 K-N,Complete,SWB - 3,West Support Building,SUWN-3 - 24-27,L3 / Waffle Slab Level,ELECTRIC RM 1,BERG,DRYWALL,AMBER CARO,2024-08-02 07:00,2024-08-08 17:00,2024-08-02 07:00,2024-08-06 17:00
CN.SWB34590,DRYWALL & INSULATION (1 side) (INT) - SWB-3- ELECTRICAL ROOM 1 North & BATTERY ROOM 3 GL 24-27 K-N,Complete,SWB - 3,West Support Building,SUWN-3 - 24-27,L3 / Waffle Slab Level,ELECTRIC RM 1,,DRYWALL,AMBER CARO,2024-02-05 15:00,2024-02-09 17:00,2024-01-11 15:00,2024-01-15 17:00
CN.SWB3.1292,TAPE & FINISH DRYWALL - SWB2- GL 24-27  - K LINE  -  L1,Complete,SWB - 3,West Support Building,SUWN-3 - 24-27,L1 - Fndn Slab,DS/AD INTERIORS,,DRYWALL,FIZ DATA CENTER,2024-03-09 08:00,2024-03-17 08:00,2024-03-01 00:00,2024-03-11 00:00
CN.SWB3.1322,PRIMER & PAINT DRYWALL - GL 24-27 - K LINE - L1,Complete,SWB - 3,West Support Building,SUWN-3 - 24-27,L1 - Fndn Slab,DS/AD INTERIORS,FINISH PAINT,TBD Architectural Finishes,FIZ DATA CENTER,2024-10-22 07:00,2024-10-25 17:00,2024-10-22 07:00,2024-10-25 17:00
CN.SWB3.1272,DRYWALL 2 SIDE - SWB2-GL 24-27 - K LINE - L1,Complete,SWB - 3,West Support Building,SUWN-3 - 24-27,L1 - Fndn Slab,DS/AD INTERIORS,,DRYWALL,FIZ DATA CENTER,2024-02-02 07:00,2024-02-05 17:00,2024-02-02 07:00,2024-02-06 11:00
CN.SWB3.1252,DRYWALL & INSULATION (1 side) (INT)SWB2- GL 24-27 - K LINE - L1,Complete,SWB - 3,West Support Building,SUWN-3 - 24-27,L1 - Fndn Slab,DS/AD INTERIORS,,DRYWALL,FIZ DATA CENTER,2023-12-04 07:00,2023-12-09 15:00,2023-12-04 07:00,2023-12-08 16:00
CN.SWB3.1302,REMEDY - TAPE & FINISH DRYWALL -SWB2- GL 22-28 K LINE - L2,Complete,SWB - 3,West Support Building,SUWN-3 - 24-27,L2 - SubFab Level,DS/AD INTERIORS,CHERRY COATING,DRYWALL,FIZ DATA CENTER,2024-08-12 07:00,2024-08-15 17:00,2024-08-08 07:00,2024-08-12 17:00
CN.SWB3.1282,REMEDY - FRAME & DRYWALL -SWB2-  GL 22-28 K LINE -  L2,Complete,SWB - 3,West Support Building,SUWN-3 - 24-27,L2 - SubFab Level,DS/AD INTERIORS,BERG,DRYWALL,FIZ DATA CENTER,2024-06-18 07:00,2024-06-28 17:00,2024-06-18 07:00,2024-07-29 17:00
CN.SWB3.1262,REMEDIATION - DRYWALL & INSULATION (1 side) (INT) -SWB2- GL 24-27 K LINE 7 - L2,Complete,SWB - 3,West Support Building,SUWN-3 - 24-27,L2 - SubFab Level,DS/AD INTERIORS,,DRYWALL,FIZ DATA CENTER,2024-03-12 15:00,2024-03-25 13:00,2024-03-12 15:00,2024-03-18 13:00
CN.SWB3.1081,TEMP WALLS Framing and Drywall-SWB2- GL 24-27 K-N - L2,Complete,SWB - 3,,SUWN-3 - 24-27,L2 - SubFab Level,ELECTRIC RM 2,,DRYWALL,,2024-03-12 13:00,2024-03-20 13:00,2024-02-02 00:00,2024-02-12 00:00
CN.SWB3.1372,TAPE & FINISH DRYWALL -SWB2-  GL 24-27 K LINE -  L3,Complete,SWB - 3,West Support Building,SUWN-3 - 24-27,L3 / Waffle Slab Level,DS/AD INTERIORS,CHERRY COATING,DRYWALL,FIZ DATA CENTER,2024-05-02 07:00,2024-05-07 17:00,2024-06-01 07:00,2024-06-04 17:00
CN.SWB3.1362,DRYWALL 2 SIDE -SWB2- GL 24-27 K LINE - L3,Complete,SWB - 3,West Support Building,SUWN-3 - 24-27,L3 / Waffle Slab Level,DS/AD INTERIORS,BERG,DRYWALL,FIZ DATA CENTER,2024-05-13 07:00,2024-05-17 17:00,2024-05-13 07:00,2024-05-28 17:00
CN.SWB3.1352,DRYWALL & INSULATION (1 side) (INT)-SWB2- GL 24-27 K LINE - L3,Complete,SWB - 3,West Support Building,SUWN-3 - 24-27,L3 / Waffle Slab Level,DS/AD INTERIORS,,DRYWALL,FIZ DATA CENTER,2024-04-01 11:00,2024-04-05 11:00,2024-04-01 11:00,2024-04-04 11:00
CN.SWB3.4860,Drywall Clips & AMTS Installs Support Beams - GL 24-27 K LINE - L4,Complete,SWB - 3,West Support Building,SUWN-3 - 24-27,L4 - SUP Roof - FAB Roof,DS/AD INTERIORS,SECAI,TBD Architectural Finishes,FIZ DATA CENTER,2024-03-26 07:00,2024-04-05 17:00,2024-03-26 07:00,2024-04-04 17:00
CN.SWB3.5150,IMPACT - DEMO DRYWALL -SWB2- GL 22-28 K LINE - L2,Complete,SWB - 3,West Support Building,SUWN-3 - 24-27,L2 - SubFab Level,DS/AD INTERIORS,BERG,DRYWALL,FIZ DATA CENTER,2024-05-31 07:00,2024-06-07 17:00,2024-05-23 07:00,2024-05-28 17:00
CN.AB.AR.3390,TAPE & FINISH DRYWALL - SWB-4-L3 - CTR LAB GL 27-30  K-N,Complete,SWB - 4,West Support Building,SUWN-4 - 27-30,L3 / Waffle Slab Level,BATT RM 3,CHERRY COATING,DRYWALL,AMBER CARO,2024-05-02 07:00,2024-05-09 17:00,2024-04-23 07:00,2024-04-27 17:00
CN.AB.AR.4600,DRYWALL 2 SIDE - SWB-4-L3 - CTR LAB GL 27-30 K-N,Complete,SWB - 4,West Support Building,SUWN-4 - 27-30,L3 / Waffle Slab Level,BATT RM 3,BERG,DRYWALL,AMBER CARO,2024-04-16 07:00,2024-04-22 17:00,2024-04-16 07:00,2024-04-20 17:00
CN.AB.AR.4610,DRYWALL & INSULATION (1 side) (INT) - SWB-4-L3 - CTR LAB GL 27-30 K-N,Complete,SWB - 4,West Support Building,SUWN-4 - 27-30,L3 / Waffle Slab Level,BATT RM 3,,DRYWALL,AMBER CARO,2024-03-09 08:00,2024-03-17 08:00,2024-02-29 00:00,2024-03-19 00:00
CN.SWB4R.3180,TAPE & FINISH DRYWALL - SWB-1- WASTE LIQUOR RM GL 27-30  K-N,Complete,SWB - 4,West Support Building,SUWN-4 - 27-30,L1 - Fndn Slab,WASTE LIQUOR RM,CHERRY COATING,DRYWALL,AMBER CARO,2025-09-15 07:00,2025-09-19 17:00,2025-09-15 07:00,2025-09-19 17:00
CN.SWB4R.4540,DRYWALL 2 SIDE - SWB-1- WASTE LIQUOR RM GL 27-30 K-N,Complete,SWB - 4,West Support Building,SUWN-4 - 27-30,L1 - Fndn Slab,WASTE LIQUOR RM,BERG,DRYWALL,AMBER CARO,2025-09-08 07:00,2025-09-12 17:00,2025-09-08 07:00,2025-09-12 17:00
CN.SWB4R.4550,DRYWALL & INSULATION (1 side) (INT) - SWB-1- WASTE LIQUOR RM GL 27-30 K-N - SECAI TOOK OVER FOR ACCELERATION,Complete,SWB - 4,West Support Building,SUWN-4 - 27-30,L1 - Fndn Slab,WASTE LIQUOR RM,BERG,DRYWALL,AMBER CARO,2024-04-01 07:00,2024-04-08 13:00,2024-03-14 07:00,2025-06-27 07:00
CN.SWB4.3180,REMAINING DRYWALL & FINISHES  - SWB-1-L2 - ELECTRICAL ROOM 2 GL 27-30  K-N,Complete,SWB - 4,West Support Building,SUWN-4 - 27-30,L2 - SubFab Level,BATT RM 3,CHERRY COATING,DRYWALL,AMBER CARO,2024-11-04 07:00,2024-11-08 17:00,2024-10-09 07:00,2024-10-18 07:00
CN.SWB4.4540,DRYWALL 2 SIDE - SWB-1-L2 - ELECTRICAL ROOM 2 GL 27-30 K-N,Complete,SWB - 4,West Support Building,SUWN-4 - 27-30,L2 - SubFab Level,BATT RM 3,,DRYWALL,AMBER CARO,2024-01-29 07:00,2024-02-01 09:00,2024-01-29 07:00,2024-02-02 09:00
CN.SWB4.4550,DRYWALL & INSULATION (1 side) (INT) - SWB-4-L2 - ELECTRICAL ROOM 2,Complete,SWB - 4,West Support Building,SUWN-4 - 27-30,L2 - SubFab Level,BATT RM 3,,DRYWALL,AMBER CARO,2023-11-16 07:00,2023-11-19 09:00,2023-11-16 07:00,2023-11-19 12:00
CN.SWB4.1302,TAPE & FINISH DRYWALL -SWB2 -  L1 GL 27-30 - K LINE,Complete,SWB - 4,West Support Building,SUWN-4 - 27-30,L1 - Fndn Slab,DS/AD INTERIORS,,DRYWALL,FIZ DATA CENTER,2024-03-09 08:00,2024-03-17 08:00,2024-02-29 00:00,2024-03-07 00:00
CN.SWB4.1332,PRIMER & PAINT DRYWALL - GL 27-30 - K LINE - L1,Complete,SWB - 4,West Support Building,SUWN-4 - 27-30,L1 - Fndn Slab,DS/AD INTERIORS,FINISH PAINT,TBD Architectural Finishes,FIZ DATA CENTER,2024-10-22 07:00,2024-10-25 17:00,2024-10-22 07:00,2024-10-28 17:00
CN.SWB4.1272,DRYWALL 2 SIDE -SWB2 - L1 GL 27-30 - K LINE,Complete,SWB - 4,West Support Building,SUWN-4 - 27-30,L1 - Fndn Slab,DS/AD INTERIORS,,DRYWALL,FIZ DATA CENTER,2024-02-02 07:00,2024-02-05 17:00,2024-02-02 07:00,2024-02-06 11:00
CN.SWB4.1252,DRYWALL & INSULATION (1 side) (INT)-SWB2 - L1 GL 27-30 - K LINE,Complete,SWB - 4,West Support Building,SUWN-4 - 27-30,L1 - Fndn Slab,DS/AD INTERIORS,,DRYWALL,FIZ DATA CENTER,2023-12-11 07:00,2023-12-16 15:00,2023-12-11 07:00,2023-12-16 16:00
CN.SWB4.1312,REMEDY - TAPE & FINISH DRYWALL SWB2 L2 GL 27-30 K LINE,Complete,SWB - 4,West Support Building,SUWN-4 - 27-30,L2 - SubFab Level,DS/AD INTERIORS,CHERRY COATING,DRYWALL,FIZ DATA CENTER,2024-09-13 07:00,2024-09-17 17:00,2024-08-27 07:00,2024-08-30 17:00
CN.SWB4.1282,REMEDY - FRAME & DRYWALL  SIDE -SWB2  L2 GL 27-30  K LINE,Complete,SWB - 4,West Support Building,SUWN-4 - 27-30,L2 - SubFab Level,DS/AD INTERIORS,BERG,DRYWALL,FIZ DATA CENTER,2024-07-23 07:00,2024-07-26 17:00,2024-07-19 07:00,2024-08-26 17:00
CN.SWB4.1262,REMEDY - DEMO DRYWALL & INSULATION (1 side) (INT) SWB2 - L2 GL 28 - 33 K LINE,Complete,SWB - 4,West Support Building,SUWN-4 - 27-30,L2 - SubFab Level,DS/AD INTERIORS,BERG,DRYWALL,FIZ DATA CENTER,2024-03-18 07:00,2024-03-25 15:00,2024-04-29 07:00,2024-05-09 17:00
CN.SWB4.1372,TAPE & FINISH DRYWALL-SWB2  L3 GL 27-30  K LINE,Complete,SWB - 4,West Support Building,SUWN-4 - 27-30,L3 / Waffle Slab Level,DS/AD INTERIORS,CHERRY COATING,DRYWALL,FIZ DATA CENTER,2024-06-10 07:00,2024-06-14 17:00,2024-06-10 07:00,2024-06-14 17:00
CN.SWB4.1362,DRYWALL 2 SIDE -SWB2 L3 GL 27-30 K LINE,Complete,SWB - 4,West Support Building,SUWN-4 - 27-30,L3 / Waffle Slab Level,DS/AD INTERIORS,BERG,DRYWALL,FIZ DATA CENTER,2024-05-16 07:00,2024-05-21 17:00,2024-05-16 07:00,2024-06-01 17:00
CN.SWB4.1352,DRYWALL & INSULATION (1 side) (INT)-SWB2 L3 GL 27-30 K LINE,Complete,SWB - 4,West Support Building,SUWN-4 - 27-30,L3 / Waffle Slab Level,DS/AD INTERIORS,,DRYWALL,FIZ DATA CENTER,2024-04-05 11:00,2024-04-15 11:00,2024-04-05 11:00,2024-04-09 11:00
CN.SWB4.6440,Drywall Clips & AMTS Installs Support Beams - L4 GL 27-30 K LINE,Complete,SWB - 4,West Support Building,SUWN-4 - 27-30,L4 - SUP Roof - FAB Roof,DS/AD INTERIORS,,TBD Architectural Finishes,FIZ DATA CENTER,2024-04-19 07:00,2024-04-25 17:00,2024-03-30 07:00,2024-04-05 11:00
CN.AB.AR.3460,TAPE & FINISH DRYWALL - SWB-5 - L3 GL 30-33 K-N,Complete,SWB - 5,West Support Building,SUWN-5 - 30-33,L3 / Waffle Slab Level,CRT LAB,CHERRY COATING,DRYWALL,AMBER CARO,2025-08-05 07:00,2025-08-05 17:00,2025-08-05 07:00,2025-08-05 17:00
CN.AB.AR.4620,DRYWALL 2 SIDE - SWB-5 - L3- CRT LAB GL 30-33 K-N,Complete,SWB - 5,West Support Building,SUWN-5 - 30-33,L3 / Waffle Slab Level,CRT LAB,BERG,DRYWALL,AMBER CARO,2024-02-26 07:00,2024-02-27 13:00,2024-02-24 14:00,2024-05-29 17:00
CN.AB.AR.4630,DRYWALL & INSULATION (1 side) (INT) - SWB-5 - L3 GL 30-33 K-N,Complete,SWB - 5,West Support Building,SUWN-5 - 30-33,L3 / Waffle Slab Level,CRT LAB,,DRYWALL,AMBER CARO,2024-02-20 11:00,2024-02-26 11:00,2024-02-20 11:00,2024-04-05 17:00
CN.SWB5.1850,PH1- INSTALL INTERIOR DRYWALL 1ST LAYER - IT SECURITY/ FIRE ALARM ROOM - NW PENTHOUSE,Complete,SWB - 5,East Support Building,NORTH WEST PENTHOUSE,L4 - SUP Roof - FAB Roof,,BERG,DRYWALL,SEAN MONK,2025-02-28 07:00,2025-03-05 17:00,2025-02-10 07:00,2025-05-30 17:00
CN.SWB5.4250,DRYWALL & INSULATION (1 side) - SWB-5 - L1 only - GCS STORAGE GL 30-33 K-N,Complete,SWB - 5,East Support Building,SUWN-5 - 30-33,L1 - Fndn Slab,,,DRYWALL,AMBER CARO,2024-01-30 07:00,2024-02-04 13:00,2024-01-30 07:00,2024-02-05 17:00
CN.SWB53180,TAPE & FINISH DRYWALL - SWB-1-L2 - ELECTRICAL ROOM 2 GL 30-33 K-N,Not Started,SWB - 5,West Support Building,SUWN-5 - 30-33,L2 - SubFab Level,GCS STORAGE,CHERRY COATING,DRYWALL,AMBER CARO,2025-12-02 07:00,2025-12-08 17:00,,
CN.SWB54540,DRYWALL 2 SIDE - SWB-1-L2 - ELECTRICAL ROOM 2 GL 30-33 K-N,Not Started,SWB - 5,West Support Building,SUWN-5 - 30-33,L2 - SubFab Level,GCS STORAGE,BERG,DRYWALL,AMBER CARO,2025-11-21 07:00,2025-12-01 17:00,,
CN.SWB54550,DRYWALL & INSULATION (1 side) (INT) - SWB-5-L2 - ELECTRICAL ROOM 2 GL 30-33 K-N,Complete,SWB - 5,West Support Building,SUWN-5 - 30-33,L2 - SubFab Level,GCS STORAGE,,DRYWALL,AMBER CARO,2023-11-27 07:00,2023-12-01 17:00,2023-11-27 07:00,2023-12-01 17:00
CN.SWB5.1302,TAPE & FINISH DRYWALL -SWB5  L1 GL 30-33  - K LINE,Complete,SWB - 5,West Support Building,SUWN-5 - 30-33,L1 - Fndn Slab,DS/AD INTERIORS,CHERRY COATING,DRYWALL,FIZ DATA CENTER,2024-09-20 07:00,2024-09-27 17:00,2024-03-15 07:00,2024-03-20 17:00
CN.SWB5.1332,PRIMER & PAINT DRYWALL - GL 30-33 - K LINE - L1,Complete,SWB - 5,West Support Building,SUWN-5 - 30-33,L1 - Fndn Slab,DS/AD INTERIORS,FINISH PAINT,TBD Architectural Finishes,FIZ DATA CENTER,2024-10-22 07:00,2024-10-25 17:00,2024-10-22 07:00,2024-10-25 17:00
CN.SWB5.1282,DRYWALL 2 SIDE-SWB5 L1 GL 30-33 - K LINE,Complete,SWB - 5,West Support Building,SUWN-5 - 30-33,L1 - Fndn Slab,DS/AD INTERIORS,,DRYWALL,FIZ DATA CENTER,2024-03-09 08:00,2024-03-17 08:00,2024-03-01 00:00,2024-03-11 13:00
CN.SWB5.1262,DRYWALL & INSULATION (1 side) (INT) - SWB5 L1 GL 30-33 - K LINE,Complete,SWB - 5,West Support Building,SUWN-5 - 30-33,L1 - Fndn Slab,DS/AD INTERIORS,,DRYWALL,FIZ DATA CENTER,2024-01-02 09:00,2024-01-07 16:00,2024-01-02 07:00,2024-01-08 09:00
CN.SWB5.1292,REMEDY - TAPE & FINISH DRYWALL -SWB5 L2 GL 30-33 K LINE,Not Started,SWB - 5,West Support Building,SUWN-5 - 30-33,L2 - SubFab Level,DS/AD INTERIORS,CHERRY COATING,DRYWALL,FIZ DATA CENTER,2025-11-21 07:00,2025-11-21 17:00,,
CN.SWB5.1272,REMEDY - FRAME & DRYWALL 2 SIDE -SWB5  L2 GL 30-33 K LINE,Complete,SWB - 5,West Support Building,SUWN-5 - 30-33,L2 - SubFab Level,DS/AD INTERIORS,BERG,DRYWALL,FIZ DATA CENTER,2024-07-22 07:00,2024-07-25 17:00,2024-07-22 07:00,2024-09-20 17:00
CN.SWB5.1252,REMEDY - DEMO DRYWALL - SWB5  L2 GL 28-33 K LINE [AWAITING SECAI TO RELEASE WORK],Complete,SWB - 5,West Support Building,SUWN-5 - 30-33,L2 - SubFab Level,DS/AD INTERIORS,BERG,DRYWALL,FIZ DATA CENTER,2024-05-31 07:00,2024-06-10 17:00,2024-05-10 07:00,2024-05-21 11:00
CN.SWB5.1372,TAPE & FINISH DRYWALL -SWB5  L3 GL 30-33 K LINE,Complete,SWB - 5,West Support Building,SUWN-5 - 30-33,L3 / Waffle Slab Level,DS/AD INTERIORS,CHERRY COATING,DRYWALL,FIZ DATA CENTER,2024-05-28 07:00,2024-06-03 17:00,2024-05-28 07:00,2024-06-01 17:00
CN.SWB5.1362,DRYWALL 2 SIDE -SWB5 L3 GL 30-33 K LINE,Complete,SWB - 5,West Support Building,SUWN-5 - 30-33,L3 / Waffle Slab Level,DS/AD INTERIORS,BERG,DRYWALL,FIZ DATA CENTER,2024-05-21 07:00,2024-05-28 17:00,2024-05-21 07:00,2024-05-27 17:00
CN.SWB5.1352,DRYWALL & INSULATION (1 side) (INT) - SWB5 L3 GL 30-33 K LINE,Complete,SWB - 5,West Support Building,SUWN-5 - 30-33,L3 / Waffle Slab Level,DS/AD INTERIORS,BERG,DRYWALL,FIZ DATA CENTER,2024-04-24 07:00,2024-04-30 17:00,2024-04-24 07:00,2024-04-29 17:00
CN.SWB5.6520,Drywall Clips & AMTS Installs Support Beams - L4- GL 30-33 L4 K LINE,Complete,SWB - 5,West Support Building,SUWN-5 - 30-33,L4 - SUP Roof - FAB Roof,DS/AD INTERIORS,SECAI,TBD Architectural Finishes,FIZ DATA CENTER,2024-04-01 07:00,2024-04-12 09:00,2024-03-25 07:00,2024-04-08 17:00
CN.SWB5.9490,TAPE & FINISH DRYWALL - SWB-5 - L1 only - GCS STORAGE GL 30-33 K-N - SECAI TOOK OVER FOR ACCELERATION,Complete,SWB - 5,East Support Building,SUWN-5 - 30-33,L1 - Fndn Slab,GCS STORAGE ,CHERRY COATING,DRYWALL,AMBER CARO,2025-06-23 07:00,2025-06-27 17:00,2025-06-27 07:00,2025-06-27 17:00
CN.SWB5.9480,DRYWALL 2 SIDE - SWB-5 - L1 only - GCS STORAGE GL 30-33 K-N - SECAI TOOK OVER FOR ACCELERATION,Complete,SWB - 5,East Support Building,SUWN-5 - 30-33,L1 - Fndn Slab,GCS STORAGE ,BERG,DRYWALL,AMBER CARO,2025-06-27 07:00,2025-06-27 17:00,2025-06-27 07:00,2025-06-27 17:00
CN.SWB5.9470,REMAINING DRYWALL & FINISHES - SWB-5 - L1 - FIRE ALARM 5 - GL 30-33 K-N,Complete,SWB - 5,East Support Building,SUWN-5 - 30-33,L1 - Fndn Slab,FIRE ALARM ,,DRYWALL,AMBER CARO,2024-11-02 07:00,2024-11-08 17:00,2024-10-08 07:00,2024-10-29 17:00
CN.SWB5.9510,REMAINING DRYWALL & FINISHES  - SWB-5 - L2 - FIRE ALARM 22 GL 5-6 A/B,Complete,SWB - 5,East Support Building,SUES-5 - 6-1 - FIZ - GL A -E,L2 - SubFab Level,FIRE ALARM ,,DRYWALL,AMBER CARO,2024-11-03 07:00,2024-11-09 17:00,2024-05-27 07:00,2025-10-13 07:00
CN.SWB5.9550,REMAINING DRYWALL & FINISHES  - SWB-5 - L2 - FIRE ALARM 20 -  GL 30-33 K-N,Complete,SWB - 5,East Support Building,SUES-1 - 19-16,L2 - SubFab Level,FIRE ALARM ,CHERRY COATING,DRYWALL,AMBER CARO,2024-08-28 07:00,2024-09-06 17:00,2024-08-12 07:00,2024-08-19 17:00
CN.SWB5.9580,TAPE & FINISH DRYWALL - SEB-5 - L2 - FIRE ALARM 18 GL 32-33  A-B - B/33 FA room,Not Started,SWB - 5,East Support Building,SUEN-5 - 31-33,L2 - SubFab Level,FIRE ALARM ,CHERRY COATING,DRYWALL,AMBER CARO,2025-11-21 07:00,2025-12-01 17:00,,
CN.SWB5.9570,FRAMING & DRYWALL (1 side) - SEB-5 - L2 - FIRE ALARM 18 GL 32-33 A-B - B/33 FA room,Complete,SWB - 5,East Support Building,SUEN-5 - 31-33,L2 - SubFab Level,FIRE ALARM ,,DRYWALL,AMBER CARO,2025-09-02 07:00,2025-09-02 17:00,2025-09-02 07:00,2025-09-02 17:00
CN.SWB5.9590,REMAINING DRYWALL & FINISHES  - SWB-5 - L2 - FIRE ALARM 1 GL 4-5  K-L,Complete,SWB - 5,East Support Building,FIZ 2 / SUWS 5  (GL6-1) - GL J - N - DATA CENTER 1,L2 - SubFab Level,FIRE ALARM ,,DRYWALL,AMBER CARO,2024-09-10 07:00,2024-09-16 13:00,2024-08-03 07:00,2024-08-07 13:00
CN.SWB5.9630,TAPE & FINISH DRYWALL - SWB-5 - L2 - FIRE ALARM 11 GL 30-31  K-L,Complete,SWB - 5,East Support Building,SUWN-5 - 30-33,L2 - SubFab Level,FIRE ALARM ,CHERRY COATING,DRYWALL,AMBER CARO,2024-09-03 07:00,2024-09-09 17:00,2024-09-03 07:00,2024-09-07 17:00
CN.SWB5.9620,FRAMING & DRYWALL - SWB-5 - L2 - FIRE ALARM 5 GL 30-31 K-L,Complete,SWB - 5,East Support Building,SUWN-5 - 30-33,L2 - SubFab Level,FIRE ALARM ,,DRYWALL,AMBER CARO,2024-08-26 07:00,2024-08-31 17:00,2024-08-26 07:00,2024-08-31 17:00
CN.SWB5.9650,REMAINING DRYWALL & FINISHES  - SWB-5 - L2 - IT/SECURITY  20 -  GL 18-19 K-N,Complete,SWB - 5,East Support Building,SUES-1 - 19-16,L2 - SubFab Level,IT/SECURITY,CHERRY COATING,DRYWALL,AMBER CARO,2024-08-23 07:00,2024-08-29 17:00,2024-08-01 07:00,2024-08-08 17:00
CN.SWB5.9660,REMAINING DRYWALL & FINISHES  - SWB-5 - L2 - IT/SECURITY 1 GL 4-5  K-L,Complete,SWB - 5,East Support Building,FIZ 2 / SUWS 5  (GL6-1) - GL J - N - DATA CENTER 1,L2 - SubFab Level,IT/SECURITY,,DRYWALL,AMBER CARO,2024-08-03 07:00,2024-08-09 13:00,2024-08-03 07:00,2024-08-07 13:00
CN.SWB5.9800,REMAINING DRYWALL & FRAMING - SWB-5 - L2 - PR LIFTER RM 18 GL 32-33 A-B,Not Started,SWB - 5,East Support Building,SUEN-5 - 31-33,L2 - SubFab Level,PR RM,,DRYWALL,AMBER CARO,2025-11-21 07:00,2025-11-21 17:00,,
CN.SWB5.9930,COMPLETE FRAMING/DRYWALL/TAPE+FLOAT - MECHANICAL ROOM - ELEVATOR 5 (MK MARLOW),Complete,SWB - 5,West Support Building,SUWN-5 - 30-33,,ELEVATOR,BERG,DRYWALL,,2024-09-05 07:00,2024-09-24 17:00,2024-08-12 07:00,2024-11-20 17:00
CN.AB.AR.7780,FINISH DRYWALL & FINISHES - AIRLOCK 5 - SWB-5 - L3 GL 30-33 K-N,Complete,SWB - 5,West Support Building,SUWN-5 - 30-33,L3 / Waffle Slab Level,AIRLOCKS & VESTABLES,CHERRY COATING,DRYWALL,AMBER CARO,2025-01-23 07:00,2025-01-30 17:00,2025-01-23 07:00,2025-02-03 17:00
CN.AB.AR.8470,FINISH DRYWALL & FINISHES - VESTIBULE 5 - SWB-5 - L3 GL 30-33 K-N,Complete,SWB - 5,West Support Building,SUWN-5 - 30-33,L3 / Waffle Slab Level,AIRLOCKS & VESTABLES,CHERRY COATING,DRYWALL,AMBER CARO,2025-02-05 07:00,2025-02-13 17:00,2025-02-05 07:00,2025-07-25 17:00
CN.AB.AR.8630,FINISH DRYWALL & FINISHES - ELEVATOR 5 HALLWAY - SWB-5 - L3 - GL 30-33 K-N,Complete,SWB - 5,West Support Building,SUWN-5 - 30-33,L3 / Waffle Slab Level,,BERG,DRYWALL,AMBER CARO,2025-09-08 07:00,2025-09-19 17:00,2025-09-08 07:00,2025-09-19 17:00
CN.SWB5.10840,FRAMING & DRYWALL COLUMN N33 M33 - NW PENTHOUSE,Complete,SWB - 5,East Support Building,NORTH WEST PENTHOUSE,L4 - SUP Roof - FAB Roof,,BERG,DRYWALL,SEAN MONK,2025-07-14 07:00,2025-07-17 17:00,2025-07-14 07:00,2025-07-25 17:00
CN.AB.AR.3530,TAPE & FINISH DRYWALL - MECHANICAL ROOM 3 SOUTH - SEA1 - GL 19-16 - C-A - L1,Complete,SEA - 1,East Support Building,SUES-1 - 19-16,L1 - Fndn Slab,MECH RM 2,CHERRY COATING,DRYWALL,AMBER CARO,2025-10-09 07:00,2025-10-15 17:00,2025-10-09 07:00,2025-10-15 17:00
CN.AB.AR.4240,REMAINING FRAMING & DRYWALL - MECHANICAL ROOM 3 SOUTH - WALK WAY - SEA1 - GL 19-16 - C-A - L1(On Hold until 12/15),Complete,SEA - 1,East Support Building,SUES-1 - 19-16,L1 - Fndn Slab,MECH RM 2,BERG,DRYWALL,AMBER CARO,2024-10-17 07:00,2024-10-24 17:00,2024-10-17 07:00,2025-09-08 07:00
CN.AB.AR.4250,DRYWALL & INSULATION (1 side) - SEA1 - GL 19-16 - L1 - C-A - MECHANICAL ROOM 3 SOUTH,Complete,SEA - 1,East Support Building,SUES-1 - 19-16,L1 - Fndn Slab,MECH RM 2,,DRYWALL,AMBER CARO,2024-01-12 09:00,2024-01-18 12:00,2024-01-12 07:00,2024-01-16 11:00
CN.AB.AR.4750,TAPE & FINISH DRYWALL - ELECTRICAL ROOM 2 - SEA1 - GL 19-16 - C-A - L3,Active,SEA - 1,East Support Building,SUES-1 - 19-16,L3 / Waffle Slab Level,ELECTRIC RM 2,CHERRY COATING,DRYWALL,AMBER CARO,2024-04-23 07:00,2024-04-29 17:00,2024-04-23 07:00,
CN.AB.AR.4740,DRYWALL 2 SIDE - ELECTRICAL ROOM 2 - SEA1 - GL 19-16 - C-A - L3,Complete,SEA - 1,East Support Building,SUES-1 - 19-16,L3 / Waffle Slab Level,ELECTRIC RM 2,BERG,DRYWALL,AMBER CARO,2024-04-15 07:00,2024-04-19 17:00,2024-04-10 07:00,2024-10-28 17:00
CN.AB.AR.4730,DRYWALL & INSULATION (1 side) - SEA1 - GL 19-16 - L3 - C-A - ELECTRICAL ROOM 2,Complete,SEA - 1,East Support Building,SUES-1 - 19-16,L3 / Waffle Slab Level,ELECTRIC RM 2,,DRYWALL,AMBER CARO,2024-01-09 11:00,2024-01-14 15:00,2024-01-09 11:00,2024-01-13 12:00
CN.SEA1.DS.2210,TAPE & FINISH DRYWALLSEA1 - GL 19-16 - L1 - D LINE - DS/AD,Complete,SEA - 1,West Support Building,SUES-1 - 19-16,L1 - Fndn Slab,DS/AD INTERIORS,,DRYWALL,FIZ DATA CENTER,2024-01-26 07:00,2024-01-29 17:00,2023-12-13 07:00,2024-01-31 17:00
CN.SEA1.DS.2220,PRIMER & PAINT DRYWALL -  GL 19-16 - D LINE - L1,Complete,SEA - 1,West Support Building,SUES-1 - 19-16,L1 - Fndn Slab,DS/AD INTERIORS,FINISH PAINT,TBD Architectural Finishes,FIZ DATA CENTER,2024-10-25 07:00,2024-10-29 17:00,2024-10-25 07:00,2024-10-28 17:00
CN.SEA1.DS.2200,DRYWALL 2 SIDE SEA1 - GL 19-16 - L1 - D LINE - DS/AD,Complete,SEA - 1,West Support Building,SUES-1 - 19-16,L1 - Fndn Slab,DS/AD INTERIORS,,DRYWALL,FIZ DATA CENTER,2024-01-22 07:00,2024-01-25 17:00,2023-11-20 07:00,2024-01-31 17:00
CN.SEA1.DS.2190,DRYWALL & INSULATION (1 side) (INT) - SEA1 - GL 19-16 - L1 - D LINE - DS/AD,Complete,SEA - 1,West Support Building,SUES-1 - 19-16,L1 - Fndn Slab,DS/AD INTERIORS,,DRYWALL,FIZ DATA CENTER,2023-11-13 07:00,2023-11-18 15:00,2023-11-13 07:00,2023-11-18 16:00
CN.SEA1.DS.3090,REMEDY - TAPE & FINISH DRYWALL - SEA1 - GL 19-16 - D LINE - L2,Complete,SEA - 1,West Support Building,SUES-1 - 19-16,L2 - SubFab Level,DS/AD INTERIORS,CHERRY COATING,DRYWALL,FIZ DATA CENTER,2024-08-15 07:00,2024-08-19 17:00,2024-08-11 07:00,2024-08-13 17:00
CN.SEA1.DS..3080,REMEDY - FRAME & DRYWALL - SEA1 - GL 19-16 - D LINE - L2,Complete,SEA - 1,West Support Building,SUES-1 - 19-16,L2 - SubFab Level,DS/AD INTERIORS,BERG,DRYWALL,FIZ DATA CENTER,2024-06-24 07:00,2024-07-05 17:00,2024-06-24 07:00,2024-07-02 17:00
CN.SEA1.DS..3070,DRYWALL (1 side) (INT) - SEA1 - GL 19-16 - L2 - D LINE - DS/AD,Complete,SEA - 1,West Support Building,SUES-1 - 19-16,L2 - SubFab Level,DS/AD INTERIORS,,DRYWALL,FIZ DATA CENTER,2024-01-17 07:00,2024-01-21 15:00,2024-02-09 07:00,2024-02-15 16:00
CN.AB.AR.6120,TEMP WALLS Framing and Drywall- SEB1- GL 19-16 - L3 - C-A,Complete,SEA - 1,,SUES-1 - 19-16,L3 / Waffle Slab Level,ELECTRIC RM 2,,DRYWALL,,2023-10-09 08:00,2023-10-13 08:00,2023-10-03 08:00,2023-10-07 16:00
CN.SEA1.DS..4040,TAPE & FINISH DRYWALL - SEA1 - GL 19-16 - D LINE - L3,Complete,SEA - 1,West Support Building,SUES-1 - 19-16,L3 / Waffle Slab Level,DS/AD INTERIORS,CHERRY COATING,DRYWALL,FIZ DATA CENTER,2024-06-13 07:00,2024-06-18 17:00,2024-06-13 07:00,2024-06-20 17:00
CN.SEA1.DS.4030,DRYWALL 2 SIDE - SEA1 - GL 20-16 - D LINE - L3,Complete,SEA - 1,West Support Building,SUES-1 - 19-16,L3 / Waffle Slab Level,DS/AD INTERIORS,BERG,DRYWALL,FIZ DATA CENTER,2024-04-29 07:00,2024-05-03 17:00,2024-04-29 07:00,2024-06-18 17:00
CN.SEA1.DS.4020,DRYWALL & INSULATION (1st layer) (INT) - SEA1 - GL 19-16 - L3 - D LINE - DS/AD,Complete,SEA - 1,West Support Building,SUES-1 - 19-16,L3 / Waffle Slab Level,DS/AD INTERIORS,BERG,DRYWALL,FIZ DATA CENTER,2024-04-22 07:00,2024-04-24 17:00,2024-04-22 07:00,2024-04-29 17:00
CN.SEA1.5360,FRAMING & DRYWALL - ELEVATOR 20 - SEA1 - GL 19-16 - L1 - B-C (3 sides only),Complete,SEA - 1,West Support Building,SUES-1 - 19-16,L1 - Fndn Slab,,,DRYWALL,,2023-11-13 07:00,2023-11-20 11:00,2023-11-10 07:00,2023-11-20 17:00
CN.SEA1.5380,FRAMING & DRYWALL - ELEVATOR 20 - SEA-1 - L3 GL 19-16 - B-C (3 sides only),Complete,SEA - 1,West Support Building,SUES-1 - 19-16,L3 / Waffle Slab Level,,,DRYWALL,,2024-02-29 07:00,2024-03-06 11:00,2024-02-29 07:00,2024-03-07 00:00
CN.SEA1.DS..4050,DRYWALL (1 side) (INT) - SEA1 - GL 19-16 - L2 - D LINE - DS/AD,Complete,SEA - 1,West Support Building,SUES-1 - 19-16,L2 - SubFab Level,DS/AD INTERIORS,,DRYWALL,FIZ DATA CENTER,2024-01-26 15:00,2024-01-31 13:00,2024-01-03 15:00,2024-01-16 17:00
CN.SEA1.DS.4070,REMAINING - DRYWALL 2 SIDE SEA1 - GL 19-16 - L1 - D LINE - DS/AD,Complete,SEA - 1,West Support Building,SUES-1 - 19-16,L1 - Fndn Slab,DS/AD INTERIORS,,DRYWALL,FIZ DATA CENTER,2024-02-12 07:00,2024-02-15 17:00,2024-02-12 07:00,2024-02-15 17:00
CN.SEA1.DS..4060,REMEDY - DEMO DRYWALL (INT) - SEA1 - GL 19-16 - L2 - D LINE - DS/AD,Complete,SEA - 1,West Support Building,SUES-1 - 19-16,L2 - SubFab Level,DS/AD INTERIORS,,DRYWALL,FIZ DATA CENTER,2024-06-03 07:00,2024-06-10 15:00,2024-06-01 07:00,2024-06-06 15:00
CN.SEA1.8985,COMPLETE EXTERIOR DRYWALL - ELEVATOR 20 - SEA1 - GL 19-16 - L1- L3 - B-C (3 sides only),Complete,SEA - 1,West Support Building,SUES-1 - 19-16,,ELEVATOR,BERG,DRYWALL,,2024-08-09 07:00,2024-08-20 17:00,2024-08-02 07:00,2024-08-10 17:00
CN.AB.AR.7020,REMAINING DRYWALL & FINISHES  - FIRE ALARM ROOM 20  - SEA1 - GL 18-19 - C-A - L1,Complete,SEA - 1,East Support Building,SUES-1 - 19-16,L1 - Fndn Slab,FIRE ALARM ,BERG,DRYWALL,AMBER CARO,2024-07-26 07:00,2024-08-01 17:00,2024-07-23 07:00,2024-08-01 17:00
CN.AB.AR.7040,REMAINING DRYWALL & FINISHES - FIRE ALARM 18 - SEA1 - GL 30-31 - C-A - L1,Complete,SEA - 1,East Support Building,SUEN-5 - 31-33,L1 - Fndn Slab,FIRE ALARM ,BERG,DRYWALL,AMBER CARO,2024-08-09 07:00,2024-08-16 17:00,2024-07-24 07:00,2024-08-03 17:00
CN.SEA1.9355,IMPACT - APACHE DEMO DRYWALL & SCRAPE FIREPROOFING SFRM-1 - ELEVATOR 20 - ALL LEVELS,Complete,SEA - 1,West Support Building,SUES-1 - 19-16,,ELEVATOR,,TBD Architectural Finishes,,2024-08-23 07:00,2024-08-30 17:00,2024-08-11 07:00,2024-08-15 17:00
CN.SEA1.9375,DESCOPED - DRYWALL - CATCH-UP INSPECTIONS (INTERIOR SHAFT) & FIRE CAULK - L1&L2 ONLY,Complete,SEA - 1,West Support Building,SUES-1 - 19-16,,ELEVATOR,,TBD Architectural Finishes,,2025-05-12 07:00,2025-05-30 17:00,2025-05-12 07:00,2025-07-03 09:00
CN.SEA1.DS.4080,REMEDY - TAPE & FINISH DRYWALL - SEA1 - GL 15-20 - C LINE - L2,Not Started,SEA - 1,West Support Building,SUES-1 - 19-16,L2 - SubFab Level,DS/AD INTERIORS,CHERRY COATING,DRYWALL,FIZ DATA CENTER,2025-12-08 07:00,2025-12-10 17:00,,
CN.SEA1.DS..4090,REMEDY - FRAME & DRYWALL - SEA1 - GL 15-20 - C LINE - L2,Active,SEA - 1,West Support Building,SUES-1 - 19-16,L2 - SubFab Level,DS/AD INTERIORS,BERG,DRYWALL,FIZ DATA CENTER,2024-10-15 07:00,2024-11-08 17:00,2024-10-07 07:00,
CN.SEA1.9435,COMPLETE MECHANICAL ROOM DRYWALL / TAPE & FLOAT - ELEVATOR 20,Complete,SEA - 1,West Support Building,SUES-1 - 19-16,,ELEVATOR,BERG,DRYWALL,,2024-08-09 07:00,2024-08-27 17:00,2024-08-02 07:00,2024-08-29 17:00
CN.SEA1.10235,IMPACT - REMEDIATION OF MECHANICAL ROOM DRYWALL & CEILING DAMEGED DUE TO WATER INTRUSION - ELEVATOR 20,Complete,SEA - 1,West Support Building,SUES-1 - 19-16,,ELEVATOR,BERG,DRYWALL,,2024-09-27 07:00,2024-10-21 17:00,2024-09-07 07:00,2024-10-01 17:00
CN.SEA1.10295,"COMPLETE REMAINING FRAMING, DRYWALL, FIRE CAULKING - INTERIOR SHAFT & DOOR FRONTS - ELEVATOR 20 - complete 5/9",Complete,SEA - 1,West Support Building,SUES-1 - 19-16,,ELEVATOR,,TBD Architectural Finishes,,2025-04-23 07:00,2025-05-16 17:00,2025-03-10 07:00,2025-04-11 17:00
CN.AB.AR.7830,FINISH DRYWALL & FINISHES - AIRLOCK ROOM 20 - SEA1 - GL 19-16 - C-A - L3,Complete,SEA - 1,East Support Building,SUES-1 - 19-16,L3 / Waffle Slab Level,AIRLOCKS & VESTABLES,FINISH PAINT,TBD Architectural Finishes,JAMES LEE,2025-01-23 07:00,2025-01-29 17:00,2025-01-23 07:00,2025-02-03 17:00
CN.AB.AR.7850,DRYWALL & TAPE & FINISH- E 33 - SEA1 - GL 19-16 - C-A - L3,Not Started,SEA - 1,East Support Building,SUEN-5 - 31-33,L3 / Waffle Slab Level,,CHERRY COATING,DRYWALL,AMBER CARO,2025-11-24 07:00,2025-11-24 07:00,,
CN.AB.AR.7860,IMPACT - E33 CEILING B-B.5 MEP MATERIAL IN WAY OF STUDS - DRYWALL & TAPE & FINISH- E 33 - SEA1 - GL 19-16 - C-A - L3,Active,SEA - 1,East Support Building,SUEN-5 - 31-33,L3 / Waffle Slab Level,,CHERRY COATING,DRYWALL,AMBER CARO,2024-11-18 07:00,2024-11-25 17:00,2024-10-24 07:00,
CN.AB.AR.8390,FINISH DRYWALL - VESTIBULE 21 - L3,Complete,SEA - 1,East Support Building,SUES-3 - 13-9,L3 / Waffle Slab Level,AIRLOCKS & VESTABLES,FINISH PAINT,TBD Architectural Finishes,JAMES LEE,2025-02-04 07:00,2025-02-12 17:00,2025-02-04 07:00,2025-07-21 17:00
CN.AB.AR.8410,FINISH DRYWALL & FINISHES -VESTIUBLE 20 - SEA1 - GL 19-16 - C-A - L3,Complete,SEA - 1,East Support Building,SUES-1 - 19-16,L3 / Waffle Slab Level,AIRLOCKS & VESTABLES,FINISH PAINT,TBD Architectural Finishes,JAMES LEE,2025-09-25 07:00,2025-09-26 17:00,2025-05-13 07:00,2025-09-30 17:00
CN.AB.AR.8420,FINISH DRYWALL -CLEAN VESITUBLE 19 - SEA1 - GL 19-16 - C-A - L3,Active,SEA - 1,East Support Building,SUEN-3 - 25-28,L3 / Waffle Slab Level,AIRLOCKS & VESTABLES,FINISH PAINT,TBD Architectural Finishes,JAMES LEE,2025-02-05 07:00,2025-02-13 17:00,2025-02-05 07:00,
CN.AB.AR.8570,FINISH DRYWALL &_ FINISHES - ELEVTOR HALL 20 - SEA1 - GL 19-16 - C-A - L3,Not Started,SEA - 1,East Support Building,SUES-1 - 19-16,L3 / Waffle Slab Level,ELECTRIC RM 2,CHERRY COATING,DRYWALL,AMBER CARO,2025-11-24 07:00,2025-11-24 07:00,,
CN.SEA1.10415,DRYWALL - DOOR FRONTS - ELEVATOR 20,Complete,SEA - 1,West Support Building,SUES-1 - 19-16,,ELEVATOR,,TBD Architectural Finishes,,2025-04-22 07:00,2025-05-09 17:00,2025-04-22 07:00,2025-05-09 17:00
CN.AB.AR.3600,TAPE & FINISH DRYWALL - MECHANICAL RM-2 - SEA2 - GL 16-13 - C-A - L1,Complete,SEA - 2,West Support Building,SUES-2 - 16-13,L1 - Fndn Slab,MECH RM 2,CHERRY COATING,DRYWALL,AMBER CARO,2024-02-29 11:00,2024-03-06 11:00,2024-02-29 07:00,2024-08-30 17:00
CN.AB.AR.3610,FRAMING & DRYWALL -- SEA2 - GL 13 - C-A - L1- EXIT PASSWAY 21 - SECAI TOOK OVER FOR ACCELERATION,Complete,SEA - 2,West Support Building,SUES-2 - 16-13,L1 - Fndn Slab,MECH RM 2,FINISH PAINT,TBD Architectural Finishes,JAMES LEE,2025-06-27 07:00,2025-07-25 17:00,2025-06-27 07:00,2025-06-27 17:00
CN.AB.AR.4260,DRYWALL 2 SIDE - MECHANICAL RM-2 - SEA2 - GL 16-13 - C-A - L1,Complete,SEA - 2,East Support Building,SUES-2 - 16-13,L1 - Fndn Slab,MECH RM 2,BERG,DRYWALL,AMBER CARO,2024-02-29 07:00,2024-03-05 17:00,2024-02-27 07:00,2024-08-26 17:00
CN.AB.AR.4270,DRYWALL & INSULATION (1 side) (INT) - SEA2 - GL 16-13 - L1 - C-A MECHANICAL RM-2,Complete,SEA - 2,East Support Building,SUES-2 - 16-13,L1 - Fndn Slab,MECH RM 2,,DRYWALL,AMBER CARO,2024-01-23 07:00,2024-01-24 13:00,2024-01-23 07:00,2024-01-26 13:00
CN.SEA2.AR.3600,TAPE & FINISH DRYWALL - SEA2 - GL 16-13 - L3 - C-A - ELECTRICAL ROOM 2,Complete,SEA - 2,West Support Building,SUES-2 - 16-13,L3 / Waffle Slab Level,ELECTRIC RM 2,,DRYWALL,AMBER CARO,2024-03-25 07:00,2024-03-28 09:00,2024-03-25 07:00,2024-03-28 09:00
CN.SEA2.AR.4260,DRYWALL 2 SIDE - SEA2 - GL 16-13 - L3 - C-A - ELECTRICAL ROOM 2,Complete,SEA - 2,East Support Building,SUES-2 - 16-13,L3 / Waffle Slab Level,ELECTRIC RM 2,,DRYWALL,AMBER CARO,2024-03-09 08:00,2024-03-12 10:00,2024-03-01 00:00,2024-03-08 16:00
CN.SEA2.AR.4270,DRYWALL & INSULATION (1 side) (INT) - SEA2 - GL 16-13 - L3 - C-A - ELECTRICAL ROOM 2,Complete,SEA - 2,East Support Building,SUES-2 - 16-13,L3 / Waffle Slab Level,ELECTRIC RM 2,,DRYWALL,AMBER CARO,2024-01-02 09:00,2024-01-06 10:00,2024-01-02 07:00,2024-01-06 10:00
CN.SEA2.1041,TAPE & FINISH DRYWALL - SEA2 - GL 16-13 - L1 -  D LINE,Complete,SEA - 2,West Support Building,SUES-2 - 16-13,L1 - Fndn Slab,DS/AD INTERIORS,,DRYWALL,FIZ DATA CENTER,2024-01-29 07:00,2024-02-01 17:00,2024-01-29 07:00,2024-02-02 17:00
CN.SEA2.1051,PRIMER & PAINT DRYWALL - GL 16-13 - D LINE - L1,Complete,SEA - 2,West Support Building,SUES-2 - 16-13,L1 - Fndn Slab,DS/AD INTERIORS,FINISH PAINT,TBD Architectural Finishes,FIZ DATA CENTER,2024-10-25 07:00,2024-10-29 17:00,2024-10-25 07:00,2024-10-28 17:00
CN.SEA2.1031,DRYWALL 2 SIDE - SEA2 - GL 16-13 - L1 - D LINE,Complete,SEA - 2,West Support Building,SUES-2 - 16-13,L1 - Fndn Slab,DS/AD INTERIORS,,DRYWALL,FIZ DATA CENTER,2024-02-10 08:00,2024-02-14 08:00,2024-01-23 08:00,2024-01-26 11:00
CN.SEA2.1021,DRYWALL & INSULATION (1 side) (INT) - SWA2-GL 16-13- L1 D LINE,Complete,SEA - 2,West Support Building,SUES-2 - 16-13,L1 - Fndn Slab,DS/AD INTERIORS,,DRYWALL,FIZ DATA CENTER,2023-10-16 07:00,2023-10-20 15:00,2023-10-16 07:00,2023-10-21 13:00
CN.SEA2.1101,REMEDY - TAPE & FINISH DRYWALL - SEA2 - GL 16-13 - D LINE - L2,Complete,SEA - 2,West Support Building,SUES-2 - 16-13,L2 - SubFab Level,DS/AD INTERIORS,CHERRY COATING,DRYWALL,FIZ DATA CENTER,2024-08-23 07:00,2024-08-27 17:00,2024-08-07 07:00,2024-08-10 17:00
CN.SEA2.1091,REMEDY - DEMO DRYWALL (INT) - SEA2 - GL 16-13 - L2 - D LINE,Complete,SEA - 2,West Support Building,SUES-2 - 16-13,L2 - SubFab Level,DS/AD INTERIORS,,DRYWALL,FIZ DATA CENTER,2024-06-03 07:00,2024-06-13 09:00,2024-06-01 07:00,2024-06-10 09:00
CN.SEA2.1081,DRYWALL & INSULATION (1 side) (INT) - SEA2 - GL 16-13 - L2 - D LINE,Complete,SEA - 2,West Support Building,SUES-2 - 16-13,L2 - SubFab Level,DS/AD INTERIORS,,DRYWALL,FIZ DATA CENTER,2024-01-22 08:00,2024-01-26 16:00,2024-01-22 08:00,2024-01-26 16:00
CN.SEA2.AR.2040,TEMP WALLS Framing and Drywall- SEB2- GL 16-13 - L3 - C-A,Complete,SEA - 2,,SUES-2 - 16-13,L3 / Waffle Slab Level,ELECTRIC RM 2,,DRYWALL,,2023-10-07 08:00,2023-10-11 08:00,2023-10-07 08:00,2023-10-11 16:00
CN.SEA2.1161,TAPE & FINISH DRYWALL - SEA2 - GL 16-13 - D LINE - L3,Complete,SEA - 2,West Support Building,SUES-2 - 16-13,L3 / Waffle Slab Level,DS/AD INTERIORS,CHERRY COATING,DRYWALL,FIZ DATA CENTER,2024-05-17 07:00,2024-05-23 17:00,2024-05-17 07:00,2024-05-21 17:00
CN.SEA2.1151,DRYWALL 2 SIDE - SEA2 - GL 16-13 - L3 - D LINE,Complete,SEA - 2,West Support Building,SUES-2 - 16-13,L3 / Waffle Slab Level,DS/AD INTERIORS,BERG,DRYWALL,FIZ DATA CENTER,2024-04-30 07:00,2024-05-06 17:00,2024-04-30 07:00,2024-05-03 09:00
CN.SEA2.1141,DRYWALL & INSULATION (1st layer) (INT) - SEA2 - GL 16-13 - L3 - D LINE,Complete,SEA - 2,West Support Building,SUES-2 - 16-13,L3 / Waffle Slab Level,DS/AD INTERIORS,,DRYWALL,FIZ DATA CENTER,2024-02-19 11:00,2024-02-25 09:00,2024-02-19 11:00,2024-02-25 12:00
CN.SEA2.1221,IMPACT DRYWALL DAMAGED BY SECAI D LINE,Complete,SEA - 2,,SUES-2 - 16-13,L1 - Fndn Slab,DS/AD INTERIORS,,DRYWALL,,2023-11-13 08:00,2023-11-18 08:00,2023-11-13 08:00,2023-11-25 16:00
CN.SEA2.1241,DRYWALL & INSULATION (1 side) (INT) - SEA2 - GL 16-13 - L2 - D Line,Complete,SEA - 2,,SUES-2 - 16-13,L2 - SubFab Level,DS/AD INTERIORS,,,,2023-10-24 08:00,2023-10-29 08:00,2023-10-24 08:00,2023-10-28 16:00
CN.SEA2.1251,IMPACT DRYWALL REWORK DUE TO DAMAGE BY SECAI (TIDY),Complete,SEA - 2,,SUES-2 - 16-13,L2 - SubFab Level,DS/AD INTERIORS,,TBD Architectural Finishes,,2023-11-30 07:00,2023-12-03 17:00,2023-11-29 08:00,2023-12-31 13:00
CN.SEA2.6670,REMEDY - FRAME & DRYWALL- SEA2 - GL 16-13 - L2 - D LINE,Complete,SEA - 2,West Support Building,SUES-2 - 16-13,L2 - SubFab Level,DS/AD INTERIORS,BERG,DRYWALL,FIZ DATA CENTER,2024-07-22 07:00,2024-08-12 17:00,2024-07-19 07:00,2024-07-30 17:00
CN.AB.AR.3670,TAPE & FINISH DRYWALL - MECHANICAL ROOM 1 NORTH - SEA3 - GL 13-9 - C-A - L1,Complete,SEA - 3,East Support Building,SUES-3 - 13-9,L1 - Fndn Slab,MECH RM 1,CHERRY COATING,DRYWALL,AMBER CARO,2024-10-21 07:00,2024-10-28 17:00,2024-08-21 07:00,2024-08-27 17:00
CN.AB.AR.4280,DRYWALL 2 SIDE - MECHANICAL ROOM 1 NORTH - SEA3 - GL 13-9 - C-A - L1,Complete,SEA - 3,East Support Building,SUES-3 - 13-9,L1 - Fndn Slab,MECH RM 1,BERG,DRYWALL,AMBER CARO,2024-03-18 07:00,2024-03-22 17:00,2024-03-16 07:00,2024-08-20 17:00
CN.AB.AR.4290,DRYWALL & INSULATION (1 side) (INT) - SEA3 - GL 13-9 - L1 - C-A - MECHANICAL ROOM 1 NORTH,Complete,SEA - 3,East Support Building,SUES-3 - 13-9,L1 - Fndn Slab,MECH RM 1,,DRYWALL,AMBER CARO,2023-12-04 07:00,2023-12-08 17:00,2023-12-04 07:00,2023-12-08 17:00
CN.SEA3.3670,TAPE & FINISH DRYWALL - SEA3 - GL 13-9 - L3 - C-A - ELECTRICAL ROOM 2 & BATTERY ROOM 1,Complete,SEA - 3,East Support Building,SUES-3 - 13-9,L3 / Waffle Slab Level,ELECTRIC RM 2,,DRYWALL,AMBER CARO,2024-03-22 07:00,2024-03-27 09:00,2024-03-21 07:00,2024-03-25 11:00
CN.SEA3.3680,REMAINING DRYWALL & FINISHES  -BATTERY ROOM 1 - SEA3 - GL 13-9 - C-A - L3,Complete,SEA - 3,East Support Building,SUES-3 - 13-9,L3 / Waffle Slab Level,ELECTRIC RM 2,FINISH PAINT,TBD Architectural Finishes,JAMES LEE,2025-09-03 07:00,2025-09-08 17:00,2025-09-03 07:00,2025-09-08 17:00
CN.SEA3.4280,DRYWALL 2 SIDE - SEA3 - GL 13-9 - L3 - C-A - ELECTRICAL ROOM 2 & BATTERY ROOM 1,Complete,SEA - 3,East Support Building,SUES-3 - 13-9,L3 / Waffle Slab Level,ELECTRIC RM 2,,DRYWALL,AMBER CARO,2024-03-09 15:00,2024-03-12 17:00,2024-03-09 15:00,2024-03-14 10:00
CN.SEA3.4290,DRYWALL & INSULATION (1 side) (INT) - SEA-3-L3- ELECTRICAL ROOM 2 & BATTERY ROOM 1,Complete,SEA - 3,East Support Building,SUES-3 - 13-9,L3 / Waffle Slab Level,ELECTRIC RM 2,,DRYWALL,AMBER CARO,2023-10-24 07:00,2023-10-28 09:00,2023-10-24 07:00,2023-10-28 10:00
CN.SEA3.1111,TAPE & FINISH DRYWALL - SEA3 - GL 13-9 - L1 - D LINE,Complete,SEA - 3,West Support Building,SUES-3 - 13-9,L1 - Fndn Slab,DS/AD INTERIORS,,DRYWALL,FIZ DATA CENTER,2024-02-01 13:00,2024-02-05 13:00,2024-02-01 13:00,2024-02-05 17:00
CN.SEA3.1121,PRIMER & PAINT DRYWALL -  GL 13-9 - D LINE - L1,Complete,SEA - 3,West Support Building,SUES-3 - 13-9,L1 - Fndn Slab,DS/AD INTERIORS,FINISH PAINT,TBD Architectural Finishes,FIZ DATA CENTER,2024-10-21 07:00,2024-10-24 17:00,2024-10-21 07:00,2024-10-24 17:00
CN.SEA3.1091,DRYWALL 2 SIDE - SEA3 - GL 13-9 - L1 - D LINE,Complete,SEA - 3,West Support Building,SUES-3 - 13-9,L1 - Fndn Slab,DS/AD INTERIORS,,DRYWALL,FIZ DATA CENTER,2024-01-22 09:00,2024-01-26 09:00,2024-01-22 09:00,2024-01-26 09:00
CN.SEA3.1081,DRYWALL & INSULATION (1 side) (INT) - SEA3 - GL 13-9 - L1 - D LINE,Complete,SEA - 3,West Support Building,SUES-3 - 13-9,L1 - Fndn Slab,DS/AD INTERIORS,,DRYWALL,FIZ DATA CENTER,2023-10-20 11:00,2023-10-27 09:00,2023-10-20 11:00,2023-11-16 11:00
CN.SEA3.5040,TEMP WALLS Framing and Drywall - SEB2- GL 13-9 - L3 - C-A,Complete,SEA - 3,,SUES-3 - 13-9,L3 / Waffle Slab Level,ELECTRIC RM 2,,DRYWALL,,2023-10-09 08:00,2023-10-13 08:00,2023-10-09 08:00,2023-10-13 16:00
CN.SEA3.1161,TAPE & FINISH DRYWALL - SEA3 - GL 13-9 - D LINE - L3,Complete,SEA - 3,West Support Building,SUES-3 - 13-9,L3 / Waffle Slab Level,DS/AD INTERIORS,CHERRY COATING,DRYWALL,FIZ DATA CENTER,2024-06-13 07:00,2024-06-18 17:00,2024-06-13 07:00,2024-08-07 17:00
CN.SEA3.1151,DRYWALL 2 SIDE - SEA3 - GL 13-9 - D LINE - L3,Complete,SEA - 3,West Support Building,SUES-3 - 13-9,L3 / Waffle Slab Level,DS/AD INTERIORS,BERG,DRYWALL,FIZ DATA CENTER,2024-04-24 07:00,2024-04-29 17:00,2024-04-24 07:00,2024-07-30 17:00
CN.SEA3.1141,DRYWALL & INSULATION (1st layer) (INT) - SEA3 - GL 13-9 - L3 - D LINE,Complete,SEA - 3,West Support Building,SUES-3 - 13-9,L3 / Waffle Slab Level,DS/AD INTERIORS,,DRYWALL,FIZ DATA CENTER,2024-03-09 08:00,2024-03-17 16:00,2024-02-29 00:00,2024-03-05 16:00
CN.SEA3.6670,IMPACT - MULTIPLE CABLE TRAY IN THE WAY - DRYWALL 2 SIDE - SEA3 - GL 13-9 - L3 - C-A - ELEC ROOM 2 & BATTERY ROOM 1,Complete,SEA - 3,East Support Building,SUES-3 - 13-9,L3 / Waffle Slab Level,ELECTRIC RM 2,,DRYWALL,AMBER CARO,2024-01-25 09:00,2024-01-28 11:00,2023-11-06 09:00,2024-03-08 15:00
CN.SEA3.7080,DEMO DRYWALL - INSTALL GOAL POSTS - BATTERY ROOM 1 - SEA3 - GL 13-9 - C-A - L3,Complete,SEA - 3,East Support Building,SUES-3 - 13-9,L3 / Waffle Slab Level,ELECTRIC RM 2,FINISH PAINT,TBD Architectural Finishes,JAMES LEE,2024-07-26 07:00,2024-07-31 17:00,2024-07-15 07:00,2024-07-29 17:00
CN.SEA4.3670,TAPE & FINISH DRYWALL - MECHANICAL ROOM 1 SOUTH - SEA4 - GL 9-6 - C-A - L1,Complete,SEA - 4,East Support Building,SUES-4 - 9-6,L1 - Fndn Slab,MECH RM 1,CHERRY COATING,DRYWALL,AMBER CARO,2024-08-19 07:00,2024-08-26 17:00,2024-08-19 07:00,2024-08-30 17:00
CN.SEA4.4280,DRYWALL 2 SIDE - MECHANICAL ROOM 1 SOUTH - SEA4 - GL 9-6 - C-A - L1,Complete,SEA - 4,East Support Building,SUES-4 - 9-6,L1 - Fndn Slab,MECH RM 1,BERG,DRYWALL,AMBER CARO,2024-03-18 07:00,2024-03-22 17:00,2024-03-16 07:00,2024-08-27 17:00
CN.SEA4.4290,DRYWALL & INSULATION (1 side) (INT) - SEA4 - GL 9-6 L1 - C-A - MECHANICAL ROOM 1 SOUTH,Complete,SEA - 4,East Support Building,SUES-4 - 9-6,L1 - Fndn Slab,MECH RM 1,,DRYWALL,AMBER CARO,2023-11-20 07:00,2023-11-27 17:00,2023-11-20 07:00,2023-11-27 17:00
CN.SEA4.4340,TAPE & FINISH DRYWALL - SEA4 - GL 9-6 - L3 - C-A,Complete,SEA - 4,East Support Building,SUES-4 - 9-6,L3 / Waffle Slab Level,ELECTRIC RM 2,,DRYWALL,AMBER CARO,2024-03-17 07:00,2024-03-20 17:00,2024-03-03 00:00,2024-03-08 16:00
CN.SEA4.4350,TAPE & FINISH DRYWALL - SEA4 - GL 9-6 - C-A - L3- ELEVATOR HALL 22,Not Started,SEA - 4,East Support Building,SUES-4 - 9-6,L3 / Waffle Slab Level,ELECTRIC RM 2,FINISH PAINT,TBD Architectural Finishes,JAMES LEE,2025-11-25 07:00,2025-12-03 17:00,,
CN.SEA4.4330,DRYWALL 2 SIDE - SEA4 - GL 9-6 - L3 - C-A,Complete,SEA - 4,East Support Building,SUES-4 - 9-6,L3 / Waffle Slab Level,ELECTRIC RM 2,,DRYWALL,AMBER CARO,2024-03-09 08:00,2024-03-17 08:00,2024-02-28 00:00,2024-03-02 00:00
CN.SEA4.4320,DRYWALL & INSULATION (3=1 side) (INT) - SEA-4-L3,Complete,SEA - 4,East Support Building,SUES-4 - 9-6,L3 / Waffle Slab Level,ELECTRIC RM 2,,DRYWALL,AMBER CARO,2023-10-25 07:30,2023-10-29 17:00,2023-10-25 07:30,2023-10-28 11:00
CN.SEA4.1131,TAPE & FINISH DRYWALL - SEA4 - GL 9-6 L1 - D LINE,Complete,SEA - 4,West Support Building,SUES-4 - 9-6,L1 - Fndn Slab,DS/AD INTERIORS,,DRYWALL,FIZ DATA CENTER,2024-01-22 07:00,2024-01-25 17:00,2024-01-04 07:00,2024-01-06 17:00
CN.SEA4.1151,PRIMER & PAINT DRYWALL -  GL 9-6 - D LINE - L1,Complete,SEA - 4,West Support Building,SUES-4 - 9-6,L1 - Fndn Slab,DS/AD INTERIORS,FINISH PAINT,TBD Architectural Finishes,FIZ DATA CENTER,2024-10-21 07:00,2024-10-24 17:00,2024-10-21 07:00,2024-10-24 17:00
CN.SEA4.1111,DRYWALL 2 SIDE - SEA4 - GL 9-6 L1 - D LINE,Complete,SEA - 4,West Support Building,SUES-4 - 9-6,L1 - Fndn Slab,DS/AD INTERIORS,,DRYWALL,FIZ DATA CENTER,2023-12-04 07:00,2023-12-08 17:00,2023-12-04 07:00,2023-12-11 15:00
CN.SEA4.1081,DRYWALL & INSULATION (1 side) (INT) - SEA4 - GL 9-6 L1 - D LINE,Complete,SEA - 4,West Support Building,SUES-4 - 9-6,L1 - Fndn Slab,DS/AD INTERIORS,,DRYWALL,FIZ DATA CENTER,2023-10-16 07:00,2023-10-20 15:00,2023-10-16 07:00,2023-11-16 11:00
CN.SEA4.1141,REMEDY - TAPE & FINISH DRYWALL - SEA4 - GL 9-6 - D LINE - L2,Complete,SEA - 4,West Support Building,SUES-4 - 9-6,L2 - SubFab Level,DS/AD INTERIORS,CHERRY COATING,DRYWALL,FIZ DATA CENTER,2024-08-23 07:00,2024-08-27 17:00,2024-08-07 07:00,2024-08-10 17:00
CN.SEA4.1121,REMEDY - FRAME & DRYWALL - SEA4 - GL 9-6 - D LINE - L2,Complete,SEA - 4,West Support Building,SUES-4 - 9-6,L2 - SubFab Level,DS/AD INTERIORS,BERG,DRYWALL,FIZ DATA CENTER,2024-07-18 07:00,2024-08-08 17:00,2024-07-18 07:00,2024-08-06 17:00
CN.SEA4.1101,DRYWALL & INSULATION (1 side) (INT) - SEA4 - GL 9-6 L2 - D LINE,Complete,SEA - 4,West Support Building,SUES-4 - 9-6,L2 - SubFab Level,DS/AD INTERIORS,,DRYWALL,FIZ DATA CENTER,2024-01-24 11:00,2024-01-29 09:00,2024-01-18 11:00,2024-01-21 13:00
CN.SEA4.4390,TEMP WALLS Framing and Drywall - SEB2- GL 9-6 - L3 - C-A,Complete,SEA - 4,,SUES-4 - 9-6,L3 / Waffle Slab Level,ELECTRIC RM 2,,DRYWALL,,2023-10-09 08:00,2023-10-13 08:00,2023-10-09 08:00,2023-10-13 16:00
CN.SEA4.1211,TAPE & FINISH DRYWALL - SEA4 - GL 9-6 - D LINE - L3,Complete,SEA - 4,West Support Building,SUES-4 - 9-6,L3 / Waffle Slab Level,DS/AD INTERIORS,CHERRY COATING,DRYWALL,FIZ DATA CENTER,2024-06-13 07:00,2024-06-18 17:00,2024-06-13 07:00,2024-06-20 17:00
CN.SEA4.1201,DRYWALL 2 SIDE - SEA4 - GL 9-6 - D LINE - L3,Complete,SEA - 4,West Support Building,SUES-4 - 9-6,L3 / Waffle Slab Level,DS/AD INTERIORS,BERG,DRYWALL,FIZ DATA CENTER,2024-04-22 07:00,2024-04-25 17:00,2024-04-22 07:00,2024-06-10 17:00
CN.SEA4.1191,DRYWALL & INSULATION (1st layer) (INT) - SEA4 - GL 9-6 - L3 - D LINE,Complete,SEA - 4,West Support Building,SUES-4 - 9-6,L3 / Waffle Slab Level,DS/AD INTERIORS,,DRYWALL,FIZ DATA CENTER,2024-02-29 07:00,2024-03-02 11:00,2024-02-29 07:00,2024-03-02 12:00
CN.SEA4.6290,Drywall Clips & AMTS Installs Support Beams - SEA4 - GL 9-6 - D LINE - L4,Complete,SEA - 4,,SUES-4 - 9-6,L4 - SUP Roof - FAB Roof,DS/AD INTERIORS,,Fireproofing,,2024-03-23 08:00,2024-03-30 10:00,2024-03-01 00:00,2024-03-07 00:00
CN.SEA1.6350,Drywall Clips & AMTS Installs Support Beams - SEA4 - GL 19-16 - D LINE - L4,Complete,SEA - 4,,SUES-1 - 19-16,L4 - SUP Roof - FAB Roof,DS/AD INTERIORS,,Fireproofing,,2024-03-23 08:00,2024-03-30 10:00,2024-03-13 00:00,2024-03-20 00:00
CN.SEA2.6450,Drywall Clips & AMTS Installs Support Beams - SEA4 - GL 16-13 - D LINE - L4,Complete,SEA - 4,,SUES-2 - 16-13,L4 - SUP Roof - FAB Roof,DS/AD INTERIORS,,Fireproofing,,2024-02-19 07:00,2024-02-27 09:00,2024-02-19 07:00,2024-02-24 13:00
CN.SEA3.6560,Drywall Clips & AMTS Installs Support Beams - SEA4 - GL 13-9 - D LINE - L4,Complete,SEA - 4,,SUES-3 - 13-9,L4 - SUP Roof - FAB Roof,DS/AD INTERIORS,,Fireproofing,,2024-03-23 08:00,2024-03-27 08:00,2024-03-11 08:00,2024-03-15 11:00
CN.SEA4.6500,REMAINING TAPE & FINISH DRYWALL - SEA4 - GL 9-6 L1 - D LINE,Complete,SEA - 4,West Support Building,SUES-4 - 9-6,L1 - Fndn Slab,DS/AD INTERIORS,,DRYWALL,FIZ DATA CENTER,2024-01-26 07:00,2024-01-28 11:00,2024-01-26 07:00,2024-01-28 14:00
CN.SEA4.6590,REMEDY - TAPE & FINISH DRYWALL - SEA4 - GL 13-9 - D LINE - L2,Complete,SEA - 4,West Support Building,SUES-3 - 13-9,L2 - SubFab Level,DS/AD INTERIORS,CHERRY COATING,DRYWALL,FIZ DATA CENTER,2024-08-12 07:00,2024-08-15 17:00,2024-08-07 07:00,2024-08-10 17:00
CN.SEA4.6580,REMEDY - FRAME & DRYWALL - SEA4 - GL 13-9 - D LINE - L2,Complete,SEA - 4,West Support Building,SUES-3 - 13-9,L2 - SubFab Level,DS/AD INTERIORS,BERG,DRYWALL,FIZ DATA CENTER,2024-07-26 07:00,2024-08-19 17:00,2024-07-17 07:00,2024-08-06 17:00
CN.SEA4.6570,DRYWALL & INSULATION (1 side) (INT) - SEA4 - GL 13-9 L2 - D LINE,Complete,SEA - 4,West Support Building,SUES-3 - 13-9,L2 - SubFab Level,DS/AD INTERIORS,,DRYWALL,FIZ DATA CENTER,2024-01-24 11:00,2024-01-29 09:00,2024-01-29 11:00,2024-02-02 11:00
CN.SEA4.6610,REMEDY - DEMO DRYWALL (INT) - SEA4 - GL 13-9 L2 - D LINE,Complete,SEA - 4,West Support Building,SUES-3 - 13-9,L2 - SubFab Level,DS/AD INTERIORS,BERG,DRYWALL,FIZ DATA CENTER,2024-07-01 07:00,2024-07-08 17:00,2024-07-01 07:00,2024-07-06 17:00
CN.SEA4.6720,REMEDY - TAPE & FINISH DRYWALL - SEA4 - GL 5-10 - C LINE - L2,Not Started,SEA - 4,West Support Building,SUES-4 - 9-6,L2 - SubFab Level,DS/AD INTERIORS,CHERRY COATING,DRYWALL,FIZ DATA CENTER,2025-12-08 07:00,2025-12-10 17:00,,
CN.SEA4.6710,REMEDY - FRAME & DRYWALL - SEA4 - GL 5-10 - C LINE - L2,Active,SEA - 4,West Support Building,SUES-4 - 9-6,L2 - SubFab Level,DS/AD INTERIORS,BERG,DRYWALL,FIZ DATA CENTER,2024-10-07 07:00,2024-10-31 17:00,2024-10-07 07:00,
CN.SEA4.6740,REMEDY - TAPE & FINISH DRYWALL - SEA4 - GL 10-15 - C LINE - L2,Not Started,SEA - 4,West Support Building,SUES-3 - 13-9,L2 - SubFab Level,DS/AD INTERIORS,CHERRY COATING,DRYWALL,FIZ DATA CENTER,2025-12-08 07:00,2025-12-10 17:00,,
CN.SEA4.6730,REMEDY - FRAME & DRYWALL - SEA4 - GL 10-15 - C LINE - L2,Active,SEA - 4,West Support Building,SUES-3 - 13-9,L2 - SubFab Level,DS/AD INTERIORS,BERG,DRYWALL,FIZ DATA CENTER,2024-08-05 07:00,2024-08-28 17:00,2024-08-05 07:00,
CN.AB.AR.3810,TAPE & FINISH DRYWALL - SEA5 FIZ - GL 6-1 - C-A - L3,Complete,SEA - 5,East Support Building,SUES-5 - 6-1 - FIZ - GL A -E,L3 / Waffle Slab Level,ELECTRIC RM 2,CHERRY COATING,DRYWALL,AMBER CARO,2024-04-30 07:00,2024-05-07 17:00,2024-04-30 07:00,2024-10-01 17:00
CN.AB.AR.4320,DRYWALL 2 SIDE - SEA5 FIZ - GL 6-1 - C-A - L3,Complete,SEA - 5,East Support Building,SUES-5 - 6-1 - FIZ - GL A -E,L3 / Waffle Slab Level,ELECTRIC RM 2,BERG,DRYWALL,AMBER CARO,2024-04-16 07:00,2024-04-22 17:00,2024-04-16 07:00,2024-09-26 17:00
CN.AB.AR.4330,DRYWALL & INSULATION (1 side) (INT) - SEA5 FIZ - GL 6-1 - L3 - C-A,Complete,SEA - 5,East Support Building,SUES-5 - 6-1 - FIZ - GL A -E,L3 / Waffle Slab Level,,,DRYWALL,AMBER CARO,2024-02-01 07:00,2024-02-05 15:00,2024-01-04 07:00,2024-01-14 09:00
CN.SWB5.1630,PH1- INSTALL INTERIOR DRYWALL - NE PENTHOUSE,Complete,SEA - 5,East Support Building,NORTH EAST PENTHOUSE,L4 - SUP Roof - FAB Roof,,BERG,TBD Architectural Finishes,SEAN MONK,2024-06-20 07:00,2024-06-24 17:00,2024-07-20 07:00,2024-08-03 07:00
CN.SEA53530,TAPE & FINISH DRYWALL - SEA5 FIZ - GL 6-1 - L1 - C-A - OAC MECHANICAL RM & I/O ROOM 1,Complete,SEA - 5,East Support Building,SUES-5 - 6-1 - FIZ - GL A -E,L1 - Fndn Slab,OAC MECH RM,,DRYWALL,AMBER CARO,2024-01-22 07:00,2024-01-25 17:00,2024-01-16 07:00,2024-01-21 17:00
CN.SEA53540,FRAMING & DRYWALL - SEA5 - GL 4/ A-B - L1,Complete,SEA - 5,East Support Building,SUES-5 - 6-1 - FIZ - GL A -E,L1 - Fndn Slab,OAC MECH RM,FINISH PAINT,TBD Architectural Finishes,JAMES LEE,2025-06-13 07:00,2025-07-25 17:00,2025-06-13 07:00,2025-09-22 17:00
CN.SEA54240,DRYWALL 2 SIDE - SEA5 FIZ - GL 6-1 - L1 - C-A - OAC MECHANICAL RM & I/O ROOM 1,Complete,SEA - 5,East Support Building,SUES-5 - 6-1 - FIZ - GL A -E,L1 - Fndn Slab,OAC MECH RM,,DRYWALL,AMBER CARO,2023-12-18 07:00,2023-12-21 17:00,2023-12-18 07:00,2023-12-21 17:00
CN.SEA54250,DRYWALL & INSULATION (1 side) - SEA5 FIZ - GL 6-1 - L1 - C-A - OAC MECHANICAL RM & I/O ROOM 1,Complete,SEA - 5,East Support Building,SUES-5 - 6-1 - FIZ - GL A -E,L1 - Fndn Slab,OAC MECH RM,,DRYWALL,AMBER CARO,2023-11-30 07:00,2023-12-04 15:00,2023-11-30 07:00,2023-12-05 11:00
CN.SEA5530,TAPE & FINISH DRYWALL - SEA5 FIZ - GL 6-1 - L2 - C-A - ELECTRICAL ROOM 4,Complete,SEA - 5,East Support Building,SUES-5 - 6-1 - FIZ - GL A -E,L2 - SubFab Level,ELECTRIC RM 4,,DRYWALL,AMBER CARO,2024-01-12 09:00,2024-01-18 12:00,2024-01-12 09:00,2024-01-16 13:00
CN.SEA5240,DRYWALL 2 SIDE - SEA5 FIZ - GL 6-1 - L2 - C-A - ELECTRICAL ROOM 4,Complete,SEA - 5,East Support Building,SUES-5 - 6-1 - FIZ - GL A -E,L2 - SubFab Level,ELECTRIC RM 4,,DRYWALL,AMBER CARO,2024-01-08 09:00,2024-01-14 09:00,2024-01-08 09:00,2024-01-12 09:00
CN.SEA5250,DRYWALL & INSULATION (1 side) - SEA-5 - L2 only - ELECTRICAL ROOM 4,Complete,SEA - 5,East Support Building,SUES-5 - 6-1 - FIZ - GL A -E,L2 - SubFab Level,ELECTRIC RM 4,,DRYWALL,AMBER CARO,2023-11-06 09:00,2023-11-10 17:00,2023-09-19 09:00,2023-09-26 17:00
CN.SEA5.1302,TAPE & FINISH DRYWALL - SEA5 FIZ - GL 6-1 - L1 - D LINE,Complete,SEA - 5,West Support Building,SUES-5 - 6-1 - FIZ - GL A -E,L1 - Fndn Slab,DS/AD INTERIORS,,DRYWALL,FIZ DATA CENTER,2023-12-14 07:00,2023-12-17 17:00,2023-12-14 07:00,2024-01-08 13:00
CN.SEA5.1322,PRIMER & PAINT DRYWALL -  GL 6-3 - D LINE - L1,Complete,SEA - 5,West Support Building,SUES-5 - 6-1 - FIZ - GL A -E,L1 - Fndn Slab,DS/AD INTERIORS,FINISH PAINT,TBD Architectural Finishes,FIZ DATA CENTER,2024-10-21 07:00,2024-10-24 17:00,2024-10-21 07:00,2024-10-24 17:00
CN.SEA5.1282,DRYWALL 2 SIDE - SEA5 FIZ - GL 6-1 - L1 - D LINE,Complete,SEA - 5,West Support Building,SUES-5 - 6-1 - FIZ - GL A -E,L1 - Fndn Slab,DS/AD INTERIORS,,DRYWALL,FIZ DATA CENTER,2023-12-11 07:00,2023-12-15 17:00,2023-12-11 07:00,2023-12-29 13:00
CN.SEA5.1262,DRYWALL & INSULATION (1 side) (INT) - SEA5 FIZ - GL 6-1 - L1 - D LINE,Complete,SEA - 5,West Support Building,SUES-5 - 6-1 - FIZ - GL A -E,L1 - Fndn Slab,DS/AD INTERIORS,,DRYWALL,FIZ DATA CENTER,2023-12-01 15:00,2023-12-07 13:00,2023-12-01 15:00,2023-12-08 09:00
CN.SEA5.1312,REMEDY - TAPE & FINISH DRYWALL - SEA5 FIZ - GL 3-6 - D LINE - L2,Complete,SEA - 5,West Support Building,SUES-5 - 6-1 - FIZ - GL A -E,L2 - SubFab Level,DS/AD INTERIORS,CHERRY COATING,DRYWALL,FIZ DATA CENTER,2024-08-23 07:00,2024-08-27 17:00,2024-08-07 07:00,2024-08-10 17:00
CN.SEA5.1292,REMEDY - FRAME & DRYWALL - SEA5 FIZ - GL 3-6 - D LINE - L2,Complete,SEA - 5,West Support Building,SUES-5 - 6-1 - FIZ - GL A -E,L2 - SubFab Level,DS/AD INTERIORS,BERG,DRYWALL,FIZ DATA CENTER,2024-07-15 07:00,2024-08-02 17:00,2024-07-19 07:00,2024-08-06 17:00
CN.SEA5.1272,DRYWALL (1 side) (INT) - SEA5 FIZ - GL 6-1 - L2 - D LINE,Complete,SEA - 5,West Support Building,SUES-5 - 6-1 - FIZ - GL A -E,L2 - SubFab Level,DS/AD INTERIORS,,DRYWALL,FIZ DATA CENTER,2024-01-26 15:00,2024-01-31 13:00,2024-01-08 15:00,2024-01-15 09:00
CN.SEA5.1382,TAPE & FINISH DRYWALL - SEA5 FIZ - GL 6-3 - D LINE - L3,Complete,SEA - 5,West Support Building,SUES-5 - 6-1 - FIZ - GL A -E,L3 / Waffle Slab Level,DS/AD INTERIORS,CHERRY COATING,DRYWALL,FIZ DATA CENTER,2024-06-13 07:00,2024-06-18 17:00,2024-06-13 07:00,2024-06-25 17:00
CN.SEA5.1372,DRYWALL 2 SIDE - SEA5 FIZ - GL 6-3 - D LINE - L3,Complete,SEA - 5,West Support Building,SUES-5 - 6-1 - FIZ - GL A -E,L3 / Waffle Slab Level,DS/AD INTERIORS,BERG,DRYWALL,FIZ DATA CENTER,2024-04-18 07:00,2024-04-26 17:00,2024-04-18 07:00,2024-06-21 17:00
CN.SEA5.1362,DRYWALL & INSULATION (1st layer) (INT) - SEA5 FIZ - GL 6-1 - L3 - D LINE,Complete,SEA - 5,West Support Building,SUES-5 - 6-1 - FIZ - GL A -E,L3 / Waffle Slab Level,DS/AD INTERIORS,,DRYWALL,FIZ DATA CENTER,2024-02-26 07:00,2024-02-29 17:00,2024-02-24 11:00,2024-02-29 12:00
CN.SEA5.6330,Drywall Clips & AMTS Installs Support Beams - SEA5 - GL 6-3 - L4- D LINE,Complete,SEA - 5,,SUES-5 - 6-1 - FIZ - GL A -E,L4 - SUP Roof - FAB Roof,DS/AD INTERIORS,,Fireproofing,,2024-03-23 08:00,2024-03-30 10:00,2024-03-04 00:00,2024-03-13 00:00
CN.SEA5.6480,REMAINING - TAPE & FINISH DRYWALL - SEA5 FIZ - GL 6-1 - L1 - D LINE,Complete,SEA - 5,West Support Building,SUES-5 - 6-1 - FIZ - GL A -E,L1 - Fndn Slab,DS/AD INTERIORS,,DRYWALL,FIZ DATA CENTER,2024-01-29 07:00,2024-01-31 11:00,2024-01-29 07:00,2024-01-30 11:00
CN.SEA5.6490,REMAINING FRAMING & DRYWALL - ELEVATOR 22 - ALL LEVELS,Complete,SEA - 5,West Support Building,SUES-5 - 6-1 - FIZ - GL A -E,,ELEVATOR,BERG,DRYWALL,,2024-03-25 07:00,2024-04-23 17:00,2024-03-15 07:00,2024-08-11 17:00
CN.SEA5.8980,REMEDY - DEMO DRYWALL (INT)  - SEA5 FIZ - GL 3-6 - L2 - D LINE,Complete,SEA - 5,West Support Building,SUES-5 - 6-1 - FIZ - GL A -E,L2 - SubFab Level,DS/AD INTERIORS,BERG,DRYWALL,FIZ DATA CENTER,2024-07-08 07:00,2024-07-15 15:00,2024-07-08 07:00,2024-07-11 15:00
CN.SEA5.9010,IMPACT - REMEDY - TAPE & FINISH DRYWALL - SEA5 FIZ - GL 6-3 - D LINE - L1,Complete,SEA - 5,West Support Building,SUES-5 - 6-1 - FIZ - GL A -E,L1 - Fndn Slab,DS/AD INTERIORS,CHERRY COATING,DRYWALL,FIZ DATA CENTER,2024-10-21 07:00,2024-10-24 17:00,2024-10-01 07:00,2024-10-07 17:00
CN.SEA5.9000,IMPACT - REMEDY - FRAME & DRYWALL - SEA5 FIZ - GL 6-3 - D LINE - L1,Complete,SEA - 5,West Support Building,SUES-5 - 6-1 - FIZ - GL A -E,L1 - Fndn Slab,DS/AD INTERIORS,BERG,DRYWALL,FIZ DATA CENTER,2024-07-26 07:00,2024-08-19 17:00,2024-07-22 07:00,2024-09-19 17:00
CN.SEA5.8990,IMPACT - REMEDY - DEMO DRYWALL (INT) - GL 6-1 - L1 - D LINE,Complete,SEA - 5,West Support Building,SUES-5 - 6-1 - FIZ - GL A -E,L1 - Fndn Slab,DS/AD INTERIORS,,DRYWALL,FIZ DATA CENTER,2024-05-29 12:00,2024-06-06 12:00,2024-05-16 09:01,2024-05-24 17:00
CN.SEA5.9040,IMPACT - REMEDY - TAPE & FINISH DRYWALL - SEA5- GL 9-6 - D LINE - L1,Complete,SEA - 5,West Support Building,SUES-4 - 9-6,L1 - Fndn Slab,DS/AD INTERIORS,CHERRY COATING,DRYWALL,FIZ DATA CENTER,2024-09-20 07:00,2024-09-24 17:00,2024-09-09 07:00,2024-09-12 17:00
CN.SEA5.9030,IMPACT - REMEDY - FRAME & DRYWALL - SEA5- GL 9-6 - D LINE - L1,Complete,SEA - 5,West Support Building,SUES-4 - 9-6,L1 - Fndn Slab,DS/AD INTERIORS,BERG,DRYWALL,FIZ DATA CENTER,2024-08-16 07:00,2024-08-30 17:00,2024-08-08 07:00,2024-09-07 17:00
CN.SEA5.9020,IMPACT - REMEDY - DEMO DRYWALL (INT) - GL 9-6 - L1 - D LINE,Complete,SEA - 5,West Support Building,SUES-4 - 9-6,L1 - Fndn Slab,DS/AD INTERIORS,,DRYWALL,FIZ DATA CENTER,2024-05-29 12:00,2024-06-06 12:00,2024-05-16 14:02,2024-05-24 17:00
CN.SEA5.9070,IMPACT - REMEDY - TAPE & FINISH DRYWALL - SEA3 - GL 13-9 - D LINE - L1,Complete,SEA - 5,West Support Building,SUES-3 - 13-9,L1 - Fndn Slab,DS/AD INTERIORS,CHERRY COATING,DRYWALL,FIZ DATA CENTER,2024-09-20 07:00,2024-09-24 17:00,2024-09-10 07:00,2024-09-19 17:00
CN.SEA5.9060,IMPACT - REMEDY - FRAME & DRYWALL - SEA3 - GL 13-9 - D LINE - L1,Complete,SEA - 5,West Support Building,SUES-3 - 13-9,L1 - Fndn Slab,DS/AD INTERIORS,BERG,DRYWALL,FIZ DATA CENTER,2024-08-09 07:00,2024-08-26 17:00,2024-08-02 07:00,2024-09-05 17:00
CN.SEA5.9050,IMPACT - REMEDY - DEMO DRYWALL (INT) - GL 13-9 - L1 - D LINE,Complete,SEA - 5,West Support Building,SUES-3 - 13-9,L1 - Fndn Slab,DS/AD INTERIORS,,DRYWALL,FIZ DATA CENTER,2024-06-04 12:00,2024-06-13 12:00,2024-05-23 12:00,2024-06-04 17:00
CN.SEA5.9100,IMPACT - REMEDY - TAPE & FINISH DRYWALL - SEA2 - GL 16-13 - D LINE - L1,Complete,SEA - 5,West Support Building,SUES-2 - 16-13,L1 - Fndn Slab,DS/AD INTERIORS,CHERRY COATING,DRYWALL,FIZ DATA CENTER,2024-09-10 07:00,2024-09-13 17:00,2024-09-10 07:00,2024-09-13 17:00
CN.SEA5.9080,IMPACT - REMEDY - FRAME & DRYWALL - SEA2 - GL 16-13 - D LINE - L1,Complete,SEA - 5,West Support Building,SUES-2 - 16-13,L1 - Fndn Slab,DS/AD INTERIORS,BERG,DRYWALL,FIZ DATA CENTER,2024-07-17 07:00,2024-08-06 17:00,2024-07-17 07:00,2024-08-27 17:00
CN.SEA5.9090,IMPACT - REMEDY - DEMO DRYWALL (INT) - GL 16-13 - L1 - D LINE,Complete,SEA - 5,West Support Building,SUES-2 - 16-13,L1 - Fndn Slab,DS/AD INTERIORS,,DRYWALL,FIZ DATA CENTER,2024-06-04 12:00,2024-06-13 12:00,2024-05-26 10:01,2024-06-04 17:00
CN.SEA5.9130,IMPACT - REMEDY - TAPE & FINISH DRYWALL - SEA3 - GL 19-16 - D LINE - L1,Complete,SEA - 5,West Support Building,SUES-1 - 19-16,L1 - Fndn Slab,DS/AD INTERIORS,CHERRY COATING,DRYWALL,FIZ DATA CENTER,2024-09-09 07:00,2024-09-12 17:00,2024-09-07 07:00,2024-09-10 17:00
CN.SEA5.9110,IMPACT - REMEDY - FRAME & DRYWALL - SEA3 - GL 19-16 - D LINE - L1,Complete,SEA - 5,West Support Building,SUES-1 - 19-16,L1 - Fndn Slab,DS/AD INTERIORS,BERG,DRYWALL,FIZ DATA CENTER,2024-08-09 07:00,2024-08-26 17:00,2024-08-03 07:00,2024-08-27 17:00
CN.SEA5.9120,IMPACT - REMEDY - DEMO DRYWALL (INT) - GL 19-16 - L1 - D LINE,Complete,SEA - 5,West Support Building,SUES-1 - 19-16,L1 - Fndn Slab,DS/AD INTERIORS,,DRYWALL,FIZ DATA CENTER,2024-06-04 12:00,2024-06-13 12:00,2024-05-26 07:00,2024-06-04 17:00
CN.SEA5.9160,IMPACT - REMEDY - TAPE & FINISH DRYWALL - SEA3 - GL 19-22 - D LINE - L1,Complete,SEA - 5,West Support Building,SUEN-1 - 19-22,L1 - Fndn Slab,DS/AD INTERIORS,CHERRY COATING,DRYWALL,FIZ DATA CENTER,2024-09-09 07:00,2024-09-12 17:00,2024-09-07 07:00,2024-09-10 17:00
CN.SEA5.9140,IMPACT - REMEDY - FRAME & DRYWALL - SEA3 - GL 19-22 - D LINE - L1,Complete,SEA - 5,West Support Building,SUEN-1 - 19-22,L1 - Fndn Slab,DS/AD INTERIORS,BERG,DRYWALL,FIZ DATA CENTER,2024-07-17 07:00,2024-08-06 17:00,2024-07-17 07:00,2024-08-27 17:00
CN.SEA5.9150,IMPACT - REMEDY - DEMO DRYWALL (INT) -  GL 19-22 - L1 - D LINE,Complete,SEA - 5,West Support Building,SUEN-1 - 19-22,L1 - Fndn Slab,DS/AD INTERIORS,,DRYWALL,FIZ DATA CENTER,2024-06-03 12:00,2024-06-11 12:00,2024-05-24 08:47,2024-06-02 17:00
CN.SEA5.9190,IMPACT - REMEDY - TAPE & FINISH DRYWALL - SEA3 - GL 22-25 - D LINE - L1,Complete,SEA - 5,West Support Building,SUEN-2 - 22-25,L1 - Fndn Slab,DS/AD INTERIORS,CHERRY COATING,DRYWALL,FIZ DATA CENTER,2024-09-20 07:00,2024-09-24 17:00,2024-09-07 07:00,2024-09-10 17:00
CN.SEA5.9170,IMPACT - REMEDY - FRAME & DRYWALL - SEA3 - GL 22-25 - D LINE - L1,Complete,SEA - 5,West Support Building,SUEN-2 - 22-25,L1 - Fndn Slab,DS/AD INTERIORS,BERG,DRYWALL,FIZ DATA CENTER,2024-07-15 07:00,2024-08-02 17:00,2024-07-15 07:00,2024-08-27 17:00
CN.SEA5.9180,IMPACT - REMEDY - DEMO DRYWALL (INT) -  GL 22-25 - L1 - D LINE,Complete,SEA - 5,West Support Building,SUEN-2 - 22-25,L1 - Fndn Slab,DS/AD INTERIORS,,DRYWALL,FIZ DATA CENTER,2024-06-03 12:00,2024-06-11 12:00,2024-06-03 12:00,2024-06-11 12:00
CN.SEA5.9220,IMPACT - REMEDY - TAPE & FINISH DRYWALL - SEA3 - GL 25-28 - D LINE - L1,Complete,SEA - 5,West Support Building,SUEN-3 - 25-28,L1 - Fndn Slab,DS/AD INTERIORS,CHERRY COATING,DRYWALL,FIZ DATA CENTER,2024-08-26 07:00,2024-08-28 17:00,2024-08-24 07:00,2024-08-27 17:00
CN.SEA5.9200,IMPACT - REMEDY - FRAME & DRYWALL - SEB3 - GL 25-28 - D LINE - L1,Complete,SEA - 5,West Support Building,SUEN-3 - 25-28,L1 - Fndn Slab,DS/AD INTERIORS,BERG,DRYWALL,FIZ DATA CENTER,2024-07-15 07:00,2024-08-02 17:00,2024-07-15 07:00,2024-08-23 17:00
CN.SEA5.9210,IMPACT - REMEDY - DEMO DRYWALL (INT) -  GL 25-28 - L1 - D LINE,Complete,SEA - 5,West Support Building,SUEN-3 - 25-28,L1 - Fndn Slab,DS/AD INTERIORS,,DRYWALL,FIZ DATA CENTER,2024-06-03 12:00,2024-06-11 12:00,2024-06-03 12:00,2024-06-11 16:00
CN.SEA5.9250,IMPACT - REMEDY - TAPE & FINISH DRYWALL - SEA3 - GL 28-31 - D LINE - L1,Complete,SEA - 5,West Support Building,SUEN-4 - 28-31,L1 - Fndn Slab,DS/AD INTERIORS,CHERRY COATING,DRYWALL,FIZ DATA CENTER,2024-08-26 07:00,2024-08-28 17:00,2024-08-24 07:00,2024-08-27 17:00
CN.SEA5.9230,IMPACT - REMEDY - FRAME & DRYWALL - SEA3 - GL 28-31 - D LINE - L1,Complete,SEA - 5,West Support Building,SUEN-4 - 28-31,L1 - Fndn Slab,DS/AD INTERIORS,BERG,DRYWALL,FIZ DATA CENTER,2024-07-16 07:00,2024-08-05 17:00,2024-07-16 07:00,2024-08-23 17:00
CN.SEA5.9240,IMPACT - REMEDY - DEMO DRYWALL (INT) -  GL 28-31 - L1 - D LINE,Complete,SEA - 5,West Support Building,SUEN-4 - 28-31,L1 - Fndn Slab,DS/AD INTERIORS,,DRYWALL,FIZ DATA CENTER,2024-06-03 07:00,2024-06-10 17:00,2024-06-03 07:00,2024-06-10 17:00
CN.SEA5.9280,IMPACT - REMEDY - TAPE & FINISH DRYWALL - SWA3 - GL 31-33 - D LINE - L1,Complete,SEA - 5,West Support Building,SUEN-5 - 31-33,L1 - Fndn Slab,DS/AD INTERIORS,CHERRY COATING,DRYWALL,FIZ DATA CENTER,2024-08-26 07:00,2024-08-28 17:00,2024-08-24 07:00,2024-08-27 17:00
CN.SEA5.9260,IMPACT - REMEDY - FRAME & DRYWALL - SWA3 - GL 31-33 - D LINE - L1,Complete,SEA - 5,West Support Building,SUEN-5 - 31-33,L1 - Fndn Slab,DS/AD INTERIORS,BERG,DRYWALL,FIZ DATA CENTER,2024-07-15 07:00,2024-08-02 17:00,2024-07-15 07:00,2024-08-23 17:00
CN.SEA5.9270,IMPACT - REMEDY - DEMO DRYWALL (INT) -  GL 31-33 - L1 - D LINE,Complete,SEA - 5,West Support Building,SUEN-5 - 31-33,L1 - Fndn Slab,DS/AD INTERIORS,,DRYWALL,FIZ DATA CENTER,2024-06-03 07:00,2024-06-10 17:00,2024-06-03 07:00,2024-06-10 17:00
CN.SEA5.9310,IMPACT - REMEDY - TAPE & FINISH DRYWALL - SUW4 - GL 9-6 - K LINE - L1,Complete,SEA - 5,West Support Building,SUWS-4 - 9-6,L1 - Fndn Slab,DS/AD INTERIORS,CHERRY COATING,DRYWALL,FIZ DATA CENTER,2024-09-12 07:00,2024-09-16 17:00,2024-09-12 07:00,2024-09-13 17:00
CN.SEA5.9300,IMPACT - REMEDY - FRAME & DRYWALL - SUW4 - GL 9-6 - K LINE - L1,Complete,SEA - 5,West Support Building,SUWS-4 - 9-6,L1 - Fndn Slab,DS/AD INTERIORS,BERG,DRYWALL,FIZ DATA CENTER,2024-07-31 07:00,2024-08-23 17:00,2024-07-22 07:00,2024-09-07 17:00
CN.SEA5.9290,IMPACT - REMEDY - DEMO DRYWALL (INT) -  GL 3-6 - L1 - K LINE,Complete,SEA - 5,West Support Building,FIZ 2 / SUWS 5  (GL6-1) - GL J - N - DATA CENTER 1,L1 - Fndn Slab,DS/AD INTERIORS,,DRYWALL,FIZ DATA CENTER,2024-05-28 07:00,2024-06-03 17:00,2024-05-28 07:00,2024-06-03 17:00
CN.SEA5.9340,IMPACT - REMEDY - TAPE & FINISH DRYWALL - SWA3 - GL 12-9 - K LINE - L1,Complete,SEA - 5,West Support Building,SUWS-3 - 12-9,L1 - Fndn Slab,DS/AD INTERIORS,CHERRY COATING,DRYWALL,FIZ DATA CENTER,2024-09-09 07:00,2024-09-12 17:00,2024-09-07 07:00,2024-09-10 17:00
CN.SEA5.9330,IMPACT - REMEDY - FRAME & DRYWALL - SWA3 - GL 12-9 - K LINE - L1,Complete,SEA - 5,West Support Building,SUWS-3 - 12-9,L1 - Fndn Slab,DS/AD INTERIORS,BERG,DRYWALL,FIZ DATA CENTER,2024-08-23 07:00,2024-09-16 17:00,2024-08-12 07:00,2024-09-05 17:00
CN.SEA5.9320,IMPACT - REMEDY - DEMO DRYWALL (INT) - GL 12-9 - L1 - K LINE,Complete,SEA - 5,West Support Building,SUWS-3 - 12-9,L1 - Fndn Slab,DS/AD INTERIORS,,DRYWALL,FIZ DATA CENTER,2024-05-28 07:00,2024-06-03 17:00,2024-05-28 07:00,2024-06-03 17:00
CN.SEA5.9370,IMPACT - REMEDY - TAPE & FINISH DRYWALL - SWA3 - GL 15-12 - K LINE - L1,Complete,SEA - 5,West Support Building,SUWS-2 - 15-12,L1 - Fndn Slab,DS/AD INTERIORS,CHERRY COATING,DRYWALL,FIZ DATA CENTER,2024-09-09 07:00,2024-09-12 17:00,2024-09-07 07:00,2024-09-10 17:00
CN.SEA5.9360,IMPACT - REMEDY - FRAME & DRYWALL - SWA3 - GL 15-12 - K LINE - L1,Complete,SEA - 5,West Support Building,SUWS-2 - 15-12,L1 - Fndn Slab,DS/AD INTERIORS,BERG,DRYWALL,FIZ DATA CENTER,2024-08-23 07:00,2024-08-27 17:00,2024-08-07 07:00,2024-09-05 17:00
CN.SEA5.9350,IMPACT - REMEDY - DEMO DRYWALL (INT) - GL 15-12 - L1 - K LINE,Complete,SEA - 5,West Support Building,SUWS-2 - 15-12,L1 - Fndn Slab,DS/AD INTERIORS,,DRYWALL,FIZ DATA CENTER,2024-05-28 07:00,2024-06-03 17:00,2024-05-28 07:00,2024-06-03 17:00
CN.SEA5.9400,IMPACT - REMEDY - TAPE & FINISH DRYWALL - SWA3 - GL 18-15 - K LINE - L1,Complete,SEA - 5,West Support Building,SUWS-1 - 18-15,L1 - Fndn Slab,DS/AD INTERIORS,CHERRY COATING,DRYWALL,FIZ DATA CENTER,2024-09-20 07:00,2024-09-24 17:00,2024-09-07 07:00,2024-09-10 17:00
CN.SEA5.9390,IMPACT - REMEDY - FRAME & DRYWALL - SWA3 - GL 18-15 - K LINE - L1,Complete,SEA - 5,West Support Building,SUWS-1 - 18-15,L1 - Fndn Slab,DS/AD INTERIORS,BERG,DRYWALL,FIZ DATA CENTER,2024-08-23 07:00,2024-09-12 17:00,2024-08-01 07:00,2024-09-04 17:00
CN.SEA5.9380,IMPACT - REMEDY - DEMO DRYWALL (INT) - GL 18-15 - L1 - K LINE,Complete,SEA - 5,West Support Building,SUWS-1 - 18-15,L1 - Fndn Slab,DS/AD INTERIORS,,DRYWALL,FIZ DATA CENTER,2024-06-04 07:00,2024-06-11 17:00,2024-06-04 07:00,2024-06-11 17:00
CN.SEA5.9430,IMPACT - REMEDY - TAPE & FINISH DRYWALL - SWB3 - GL 18-21 - K LINE - L1,Complete,SEA - 5,West Support Building,SUWN-1 - 18-21,L1 - Fndn Slab,DS/AD INTERIORS,CHERRY COATING,DRYWALL,FIZ DATA CENTER,2024-09-06 07:00,2024-09-10 17:00,2024-08-22 07:00,2024-08-24 17:00
CN.SEA5.9420,IMPACT - REMEDY - FRAME & DRYWALL - SWB3 - GL 18-21 - K LINE - L1,Complete,SEA - 5,West Support Building,SUWN-1 - 18-21,L1 - Fndn Slab,DS/AD INTERIORS,BERG,DRYWALL,FIZ DATA CENTER,2024-07-26 07:00,2024-08-19 17:00,2024-07-24 07:00,2024-08-21 17:00
CN.SEA5.9410,IMPACT - REMEDY - DEMO DRYWALL (INT) - GL 18-21 - L1 - K LINE,Complete,SEA - 5,West Support Building,SUWN-1 - 18-21,L1 - Fndn Slab,DS/AD INTERIORS,,DRYWALL,FIZ DATA CENTER,2024-06-04 07:00,2024-06-11 17:00,2024-06-04 07:00,2024-06-11 17:00
CN.SEA5.9460,IMPACT - REMEDY - TAPE & FINISH DRYWALL - SWB3 - GL 21-24 - K LINE - L1,Complete,SEA - 5,West Support Building,SUWN-2 - 21-24,L1 - Fndn Slab,DS/AD INTERIORS,CHERRY COATING,DRYWALL,FIZ DATA CENTER,2024-08-23 07:00,2024-08-27 17:00,2024-08-20 07:00,2024-08-22 17:00
CN.SEA5.9450,IMPACT - REMEDY - FRAME & DRYWALL - SWB3 - GL 21-24 - K LINE - L1,Complete,SEA - 5,West Support Building,SUWN-2 - 21-24,L1 - Fndn Slab,DS/AD INTERIORS,BERG,DRYWALL,FIZ DATA CENTER,2024-07-16 07:00,2024-08-05 17:00,2024-07-16 07:00,2024-08-19 17:00
CN.SEA5.9440,IMPACT - REMEDY - DEMO DRYWALL (INT) -  GL 21-24 - L1 - K LINE,Complete,SEA - 5,West Support Building,SUWN-2 - 21-24,L1 - Fndn Slab,DS/AD INTERIORS,,DRYWALL,FIZ DATA CENTER,2024-06-04 07:00,2024-06-11 17:00,2024-06-04 07:00,2024-06-11 17:00
CN.SEA5.9490,IMPACT - REMEDY - TAPE & FINISH DRYWALL - SWB3 - GL 24-27 - K LINE - L1,Complete,SEA - 5,West Support Building,SUWN-3 - 24-27,L1 - Fndn Slab,DS/AD INTERIORS,CHERRY COATING,DRYWALL,FIZ DATA CENTER,2024-08-20 07:00,2024-08-23 17:00,2024-08-20 07:00,2024-08-22 17:00
CN.SEA5.9480,IMPACT - REMEDY - FRAME & DRYWALL - SWB3 - GL 24-27 - K LINE - L1,Complete,SEA - 5,West Support Building,SUWN-3 - 24-27,L1 - Fndn Slab,DS/AD INTERIORS,BERG,DRYWALL,FIZ DATA CENTER,2024-07-16 07:00,2024-08-05 17:00,2024-07-16 07:00,2024-08-19 17:00
CN.SEA5.9470,IMPACT - REMEDY - DEMO DRYWALL (INT) -  GL 24-27 - L1 - K LINE,Complete,SEA - 5,West Support Building,SUWN-3 - 24-27,L1 - Fndn Slab,DS/AD INTERIORS,,DRYWALL,FIZ DATA CENTER,2024-06-04 07:00,2024-06-11 17:00,2024-06-04 07:00,2024-06-11 17:00
CN.SEA5.9520,IMPACT - REMEDY - TAPE & FINISH DRYWALL - SWB3 - GL 27-30 - K LINE - L1,Complete,SEA - 5,West Support Building,SUWN-4 - 27-30,L1 - Fndn Slab,DS/AD INTERIORS,CHERRY COATING,DRYWALL,FIZ DATA CENTER,2024-08-19 07:00,2024-08-22 17:00,2024-08-17 07:00,2024-08-21 17:00
CN.SEA5.9510,IMPACT - REMEDY - FRAME & DRYWALL - SWB3 - GL 27-30 - K LINE - L1,Complete,SEA - 5,West Support Building,SUWN-4 - 27-30,L1 - Fndn Slab,DS/AD INTERIORS,BERG,DRYWALL,FIZ DATA CENTER,2024-07-16 07:00,2024-08-05 17:00,2024-07-16 07:00,2024-08-15 17:00
CN.SEA5.9500,IMPACT - REMEDY - DEMO DRYWALL (INT) -  GL 27-30 - L1 - K LINE,Complete,SEA - 5,West Support Building,SUWN-4 - 27-30,L1 - Fndn Slab,DS/AD INTERIORS,,DRYWALL,FIZ DATA CENTER,2024-06-04 07:00,2024-06-11 17:00,2024-06-04 07:00,2024-06-11 17:00
CN.SEA5.9550,IMPACT - REMEDY - TAPE & FINISH DRYWALL - SEA3 - GL 30-33 - K LINE - L1,Complete,SEA - 5,West Support Building,SUWN-5 - 30-33,L1 - Fndn Slab,DS/AD INTERIORS,CHERRY COATING,DRYWALL,FIZ DATA CENTER,2024-08-23 07:00,2024-08-27 17:00,2024-08-17 07:00,2024-08-22 17:00
CN.SEA5.9540,IMPACT - REMEDY - FRAME & DRYWALL - SWB3 - GL 30-33 - K LINE - L1,Complete,SEA - 5,West Support Building,SUWN-5 - 30-33,L1 - Fndn Slab,DS/AD INTERIORS,BERG,DRYWALL,FIZ DATA CENTER,2024-07-18 07:00,2024-08-08 17:00,2024-07-18 07:00,2024-08-15 17:00
CN.SEA5.9530,IMPACT - REMEDY - DEMO DRYWALL (INT) -  GL 30-33 - L1 - K LINE,Complete,SEA - 5,West Support Building,SUWN-5 - 30-33,L1 - Fndn Slab,DS/AD INTERIORS,,DRYWALL,FIZ DATA CENTER,2024-06-04 07:00,2024-06-11 17:00,2024-06-04 07:00,2024-06-11 17:00
CN.SEA5.9580,IMPACT - REMEDY - TAPE & FINISH DRYWALL - SEA5- GL 5-10 - C LINE - L1,Complete,SEA - 5,West Support Building,SUES-4 - 9-6,L1 - Fndn Slab,DS/AD INTERIORS,CHERRY COATING,DRYWALL,FIZ DATA CENTER,2024-09-05 07:00,2024-09-09 17:00,2024-08-16 07:00,2024-08-20 17:00
CN.SEA5.9570,IMPACT - REMEDY - FRAME & DRYWALL - SEA5- GL 5-10 - C LINE - L1,Complete,SEA - 5,West Support Building,SUES-4 - 9-6,L1 - Fndn Slab,DS/AD INTERIORS,BERG,DRYWALL,FIZ DATA CENTER,2024-07-15 07:00,2024-08-02 17:00,2024-07-15 07:00,2024-08-15 17:00
CN.SEA5.9560,IMPACT - REMEDY - CLEAN UP DRYWALL (INT) - GL 5-10 - L1 - C LINE,Complete,SEA - 5,West Support Building,SUES-4 - 9-6,L1 - Fndn Slab,DS/AD INTERIORS,MK MARLOW,DRYWALL,FIZ DATA CENTER,2024-07-08 07:00,2024-07-11 17:00,2024-07-10 07:00,2024-07-13 17:00
CN.SEA5.9610,IMPACT - REMEDY - TAPE & FINISH DRYWALL - SEA5- GL 10-13 - C LINE - L1,Complete,SEA - 5,West Support Building,SUES-3 - 13-9,L1 - Fndn Slab,DS/AD INTERIORS,CHERRY COATING,DRYWALL,FIZ DATA CENTER,2024-08-16 07:00,2024-08-20 17:00,2024-08-16 07:00,2024-08-20 17:00
CN.SEA5.9600,IMPACT - REMEDY - FRAME & DRYWALL - SEA5- GL 10-13 - C LINE - L1,Complete,SEA - 5,West Support Building,SUES-3 - 13-9,L1 - Fndn Slab,DS/AD INTERIORS,BERG,DRYWALL,FIZ DATA CENTER,2024-07-17 07:00,2024-08-06 17:00,2024-07-17 07:00,2024-08-15 17:00
CN.SEA5.9590,IMPACT - REMEDY - CLEAN UP DRYWALL (INT) - GL 10-13 - L1 - C LINE,Complete,SEA - 5,West Support Building,SUES-3 - 13-9,L1 - Fndn Slab,DS/AD INTERIORS,MK MARLOW,DRYWALL,FIZ DATA CENTER,2024-07-11 07:00,2024-07-19 17:00,2024-07-11 07:00,2024-07-15 17:00
CN.SEA5.9640,IMPACT - REMEDY - TAPE & FINISH DRYWALL - SEA5- GL 13-16 - C LINE - L1,Complete,SEA - 5,West Support Building,SUES-2 - 16-13,L1 - Fndn Slab,DS/AD INTERIORS,CHERRY COATING,DRYWALL,FIZ DATA CENTER,2024-09-06 07:00,2024-09-10 17:00,2024-08-27 07:00,2024-08-30 17:00
CN.SEA5.9630,IMPACT - REMEDY - FRAME & DRYWALL - SEA5- GL 13-16 - C LINE - L1,Complete,SEA - 5,West Support Building,SUES-2 - 16-13,L1 - Fndn Slab,DS/AD INTERIORS,BERG,DRYWALL,FIZ DATA CENTER,2024-07-18 07:00,2024-08-08 17:00,2024-07-18 07:00,2024-08-26 17:00
CN.SEA5.9620,IMPACT - REMEDY - CLEAN UP DRYWALL (INT) - GL 13-16 - L1 - C LINE,Complete,SEA - 5,West Support Building,SUES-2 - 16-13,L1 - Fndn Slab,DS/AD INTERIORS,MK MARLOW,DRYWALL,FIZ DATA CENTER,2024-07-11 07:00,2024-07-19 17:00,2024-07-13 07:00,2024-07-17 17:00
CN.SEA5.9670,IMPACT - REMEDY - TAPE & FINISH DRYWALL - SEA5- GL 16-19 - C LINE - L1,Complete,SEA - 5,West Support Building,SUES-1 - 19-16,L1 - Fndn Slab,DS/AD INTERIORS,CHERRY COATING,DRYWALL,FIZ DATA CENTER,2024-08-29 07:00,2024-09-03 17:00,2024-08-29 07:00,2024-11-13 17:00
CN.SEA5.9660,IMPACT - REMEDY - FRAME & DRYWALL - SEA5- GL 16-19 - C LINE - L1,Complete,SEA - 5,West Support Building,SUES-1 - 19-16,L1 - Fndn Slab,DS/AD INTERIORS,BERG,DRYWALL,FIZ DATA CENTER,2024-09-03 07:00,2024-09-26 17:00,2024-07-27 07:00,2024-08-24 17:00
CN.SEA5.9650,IMPACT - REMEDY - CLEAN UP DRYWALL (INT) - GL 16-19 - L1 - C LINE,Complete,SEA - 5,West Support Building,SUES-1 - 19-16,L1 - Fndn Slab,DS/AD INTERIORS,MK MARLOW,DRYWALL,FIZ DATA CENTER,2024-07-15 07:00,2024-07-23 17:00,2024-07-15 07:00,2024-07-18 17:00
CN.SEA5.9700,IMPACT - REMEDY - TAPE & FINISH DRYWALL - SEA5- GL 19-22 - C LINE - L1,Complete,SEA - 5,West Support Building,SUEN-1 - 19-22,L1 - Fndn Slab,DS/AD INTERIORS,CHERRY COATING,DRYWALL,FIZ DATA CENTER,2024-09-06 07:00,2024-09-10 17:00,2024-08-26 07:00,2024-08-28 17:00
CN.SEA5.9690,IMPACT - REMEDY - FRAME & DRYWALL - SEA5- GL 19-22 - C LINE - L1,Complete,SEA - 5,West Support Building,SUEN-1 - 19-22,L1 - Fndn Slab,DS/AD INTERIORS,BERG,DRYWALL,FIZ DATA CENTER,2024-07-18 07:00,2024-08-08 17:00,2024-07-18 07:00,2024-08-24 17:00
CN.SEA5.9680,IMPACT - REMEDY - CLEAN UP DRYWALL (INT) - GL 19-22 - L1 - C LINE,Complete,SEA - 5,West Support Building,SUEN-1 - 19-22,L1 - Fndn Slab,DS/AD INTERIORS,MK MARLOW,DRYWALL,FIZ DATA CENTER,2024-07-11 07:00,2024-07-19 17:00,2024-07-11 07:00,2024-07-15 17:00
CN.SEA5.9730,IMPACT - REMEDY - TAPE & FINISH DRYWALL - SEA5- GL 22-25 - C LINE - L1,Complete,SEA - 5,West Support Building,SUEN-2 - 22-25,L1 - Fndn Slab,DS/AD INTERIORS,CHERRY COATING,DRYWALL,FIZ DATA CENTER,2024-08-26 07:00,2024-08-28 17:00,2024-08-26 07:00,2024-08-28 17:00
CN.SEA5.9720,IMPACT - REMEDY - FRAME & DRYWALL - SEA5- GL 22-25 - C LINE - L1,Complete,SEA - 5,West Support Building,SUEN-2 - 22-25,L1 - Fndn Slab,DS/AD INTERIORS,BERG,DRYWALL,FIZ DATA CENTER,2024-08-27 07:00,2024-09-19 17:00,2024-08-01 07:00,2024-08-24 17:00
CN.SEA5.9710,IMPACT - REMEDY - CLEAN UP DRYWALL (INT) - GL 22-25 - L1 - C LINE,Complete,SEA - 5,West Support Building,SUEN-2 - 22-25,L1 - Fndn Slab,DS/AD INTERIORS,MK MARLOW,DRYWALL,FIZ DATA CENTER,2024-07-11 07:00,2024-07-19 17:00,2024-07-11 07:00,2024-07-29 17:00
CN.SEA5.9760,IMPACT - REMEDY - TAPE & FINISH DRYWALL - 1 LINE - L1- A-N,Complete,SEA - 5,West Support Building,FIZ3 (East Inner) GL G-E,L1 - Fndn Slab,FA/TEM LAB,CHERRY COATING,DRYWALL,FIZ DATA CENTER,2024-08-26 07:00,2024-08-30 17:00,2024-07-31 07:00,2024-08-05 17:00
CN.SEA5.9750,IMPACT - REMEDY - FRAME & DRYWALL - 1 LINE - L1- A-N,Complete,SEA - 5,West Support Building,FIZ3 (East Inner) GL G-E,L1 - Fndn Slab,FA/TEM LAB,BERG,DRYWALL,FIZ DATA CENTER,2024-06-06 07:00,2024-07-18 17:00,2024-06-06 07:00,2024-07-30 17:00
CN.SEA5.9740,IMPACT - REMEDY - DEMO DRYWALL (INT) - 1 LINE - L1 - A-N,Complete,SEA - 5,West Support Building,FIZ3 (East Inner) GL G-E,L1 - Fndn Slab,FA/TEM LAB,,DRYWALL,FIZ DATA CENTER,2024-05-20 07:00,2024-05-26 17:00,2024-05-20 07:00,2024-06-11 17:00
CN.SEA5.9790,IMPACT - REMEDY - TAPE & FINISH DRYWALL - 3 LINE - L1- A-N,Complete,SEA - 5,West Support Building,FIZ3 (East Inner) GL G-E,L1 - Fndn Slab,FA/TEM LAB,CHERRY COATING,DRYWALL,FIZ DATA CENTER,2024-08-09 07:00,2024-08-16 17:00,2024-07-29 07:00,2024-08-05 17:00
CN.SEA5.9780,IMPACT - REMEDY - FRAME & DRYWALL - 3 LINE - L1- A-N,Complete,SEA - 5,West Support Building,FIZ3 (East Inner) GL G-E,L1 - Fndn Slab,FA/TEM LAB,BERG,DRYWALL,FIZ DATA CENTER,2024-06-11 07:00,2024-07-16 17:00,2024-06-11 07:00,2024-07-25 17:00
CN.SEA5.9770,IMPACT - REMEDY - DEMO DRYWALL (INT) - 3 LINE - L1 - A-N,Complete,SEA - 5,West Support Building,FIZ3 (East Inner) GL G-E,L1 - Fndn Slab,FA/TEM LAB,,DRYWALL,FIZ DATA CENTER,2024-05-20 07:00,2024-05-26 17:00,2024-05-20 07:00,2024-05-30 17:00
CN.SEA5.9835,IMPACT - REMEDY - TAPE & FINISH DRYWALL - 1 LINE - L3- A-N,Complete,SEA - 5,West Support Building,FIZ3 (East Inner) GL G-E,L3 / Waffle Slab Level,FA/TEM LAB,CHERRY COATING,DRYWALL,FIZ DATA CENTER,2024-09-27 07:00,2024-10-04 17:00,2024-07-15 07:00,2024-10-03 17:00
CN.SEA5.9821,IMPACT - REMEDY - FRAME & DRYWALL - 1 LINE - L3 - A-N,Complete,SEA - 5,West Support Building,FIZ3 (East Inner) GL G-E,L3 / Waffle Slab Level,FA/TEM LAB,BERG,DRYWALL,FIZ DATA CENTER,2024-06-24 07:00,2024-08-01 17:00,2024-06-24 07:00,2024-09-26 17:00
CN.SEA5.9805,IMPACT - REMEDY - DEMO DRYWALL (INT) - 1 LINE - L3 - A-N,Complete,SEA - 5,West Support Building,FIZ3 (East Inner) GL G-E,L3 / Waffle Slab Level,FA/TEM LAB,MK MARLOW,DRYWALL,FIZ DATA CENTER,2024-06-18 07:00,2024-06-28 17:00,2024-06-18 07:00,2024-08-01 17:00
CN.SEA5.9865,REMEDY - TAPE & FINISH DRYWALL - SEA5 - DATA CENTER 2  - GL G-N - L2 - 1 LINE,Complete,SEA - 5,West Support Building,FIZ1 (West Inner) GL J-G - DATA CENTER 2,L2 - SubFab Level,DATA CENTER 2,CHERRY COATING,DRYWALL,FIZ DATA CENTER,2024-09-26 07:00,2024-10-03 17:00,2024-09-26 07:00,2024-10-01 17:00
CN.SEA5.9855,REMEDY - FRAME & DRYWALL - SEA5 - DATA CENTER 2  - GL G-N - D LINE - 1 LINE,Complete,SEA - 5,West Support Building,FIZ1 (West Inner) GL J-G - DATA CENTER 2,L2 - SubFab Level,DATA CENTER 2,BERG,DRYWALL,FIZ DATA CENTER,2024-09-20 07:00,2024-10-10 17:00,2024-09-17 07:00,2024-09-30 17:00
CN.SEA5.9845,REMEDY - DEMO DAMAGED DRYWALL (INT)  - SEA5 - DATA CENTER 2  - GL G-N - L2 -1 LINE,Complete,SEA - 5,West Support Building,FIZ1 (West Inner) GL J-G - DATA CENTER 2,L2 - SubFab Level,DATA CENTER 2,BERG,DRYWALL,FIZ DATA CENTER,2024-09-20 07:00,2024-09-27 17:00,2024-09-11 07:00,2024-09-16 17:00
CN.SEA5.9895,REMEDY - TAPE & FINISH DRYWALL - SEA5 - DATA CENTER 2  - GL G-N - L2 - 3 LINE,Complete,SEA - 5,West Support Building,FIZ1 (West Inner) GL J-G - DATA CENTER 2,L2 - SubFab Level,DATA CENTER 2,CHERRY COATING,DRYWALL,FIZ DATA CENTER,2025-08-18 07:00,2025-08-22 17:00,2025-08-18 07:00,2025-08-22 17:00
CN.SEA5.9885,REMEDY - FRAME & DRYWALL - SEA5 - DATA CENTER 2  - GL G-N - D LINE - 3 LINE,Complete,SEA - 5,West Support Building,FIZ1 (West Inner) GL J-G - DATA CENTER 2,L2 - SubFab Level,DATA CENTER 2,BERG,DRYWALL,FIZ DATA CENTER,2024-09-26 07:00,2024-10-15 17:00,2024-09-23 07:00,2025-08-22 17:00
CN.SEA5.9875,REMEDY - DEMO DRYWALL (INT)  - SEA5 - DATA CENTER 2  - GL G-N - L2 -3 LINE,Complete,SEA - 5,West Support Building,FIZ1 (West Inner) GL J-G - DATA CENTER 2,L2 - SubFab Level,DATA CENTER 2,BERG,DRYWALL,FIZ DATA CENTER,2024-09-20 07:00,2024-09-27 17:00,2024-09-11 07:00,2024-09-16 17:00
CN.SEA5.10115,IMPACT - REMEDY - DEMO DRYWALL (INT) -  GL 9-6 - L1 - K LINE,Complete,SEA - 5,West Support Building,SUWS-4 - 9-6,L1 - Fndn Slab,DS/AD INTERIORS,,DRYWALL,FIZ DATA CENTER,2024-05-28 07:00,2024-06-03 17:00,2024-05-28 07:00,2024-06-03 17:00
CN.SEA5.10135,IMPACT - REMEDY - TAPE & FINISH DRYWALL - SUW4 - GL 3-6 - K LINE - L1,Complete,SEA - 5,West Support Building,FIZ 2 / SUWS 5  (GL6-1) - GL J - N - DATA CENTER 1,L1 - Fndn Slab,DS/AD INTERIORS,CHERRY COATING,DRYWALL,FIZ DATA CENTER,2024-09-26 07:00,2024-09-30 17:00,2024-09-26 07:00,2024-09-28 17:00
CN.SEA5.10125,IMPACT - REMEDY - FRAME & DRYWALL - SUW4 - GL 3-6 - K LINE - L1,Complete,SEA - 5,West Support Building,FIZ 2 / SUWS 5  (GL6-1) - GL J - N - DATA CENTER 1,L1 - Fndn Slab,DS/AD INTERIORS,BERG,DRYWALL,FIZ DATA CENTER,2024-07-22 07:00,2024-08-12 17:00,2024-07-22 07:00,2024-09-23 17:00
CN.SEA5.10205,IMPACT - REMEDY - DEMO DRYWALL INCOMPLETE 8'' ON THE TOP - GL 5-10 - L1 - K LINE,Complete,SEA - 5,West Support Building,SUWS-4 - 9-6,L1 - Fndn Slab,DS/AD INTERIORS,,DRYWALL,FIZ DATA CENTER,2024-05-28 07:00,2024-06-03 17:00,2024-06-20 07:00,2024-07-30 17:00
CN.SEA5.10255,IMPACT - REMEDY - TAPE & FINISH DRYWALL - SEA5 FIZ - GL 3-5 - C LINE - L1,Complete,SEA - 5,West Support Building,SUES-5 - 6-1 - FIZ - GL A -E,L1 - Fndn Slab,DS/AD INTERIORS,CHERRY COATING,DRYWALL,FIZ DATA CENTER,2024-08-19 07:00,2024-08-22 17:00,2024-08-16 07:00,2024-08-19 07:00
CN.SEA5.10245,IMPACT - REMEDY - FRAME & DRYWALL - SEA5 FIZ - GL 3-5 - C LINE - L1,Complete,SEA - 5,West Support Building,SUES-5 - 6-1 - FIZ - GL A -E,L1 - Fndn Slab,DS/AD INTERIORS,BERG,DRYWALL,FIZ DATA CENTER,2024-07-15 07:00,2024-08-02 17:00,2024-07-15 07:00,2024-08-15 17:00
CN.SEA5.10295,DEMO DRYWALL - INSTALL GOAL POSTS - ELEVATOR 22 - SEA5 - GL 6-1 - L2,Complete,SEA - 5,West Support Building,SUES-5 - 6-1 - FIZ - GL A -E,,ELEVATOR,BERG,DRYWALL,,2024-08-06 07:00,2024-08-09 17:00,2024-08-06 07:00,2024-08-12 17:00
CN.SEA5.10316,IMPACT - REMEDY - DEMOLISH SCAFFODLING & DRYWALL L - 1 LINE - L3 - C-E,Complete,SEA - 5,West Support Building,FIZ3 (East Inner) GL G-E,L3 / Waffle Slab Level,FA/TEM LAB,BERG,DRYWALL,FIZ DATA CENTER,2024-06-24 07:00,2024-08-01 17:00,2024-06-24 07:00,2024-08-01 17:00
CN.SEA5.10780,IMPACT - Scaffold obstruction 2nd layer of drywall - SUE - Level 1 - B/3-4,Complete,SEA - 5,West Support Building,B3 - Area 10 (Gridlines 24-27),L1 - Fndn Slab,BUNKER ROOM,CHERRY COATING,DRYWALL,FIZ DATA CENTER,2024-10-14 07:00,2024-10-21 17:00,2024-08-19 07:00,2024-11-20 17:00
CN.AB.AR.7810,FINISH DRYWALL & FINISHES - AIRLOCK 22,Complete,SEA - 5,East Support Building,SUES-5 - 6-1 - FIZ - GL A -E,L3 / Waffle Slab Level,AIRLOCKS & VESTABLES,CHERRY COATING,DRYWALL,AMBER CARO,2025-02-04 07:00,2025-02-12 17:00,2025-02-04 07:00,2025-08-15 17:00
CN.AB.AR.8400,FINISH DRYWALL & FINISHES - VESTIBULE 22,Complete,SEA - 5,East Support Building,SUES-5 - 6-1 - FIZ - GL A -E,L3 / Waffle Slab Level,AIRLOCKS & VESTABLES,CHERRY COATING,DRYWALL,AMBER CARO,2025-09-25 07:00,2025-09-26 17:00,2025-09-25 07:00,2025-09-26 17:00
CN.AB.AR.3880,TAPE & FINISH DRYWALL - MECHANICAL ROOM 3 CENTRAL - SEB1 - GL 19-22 - C-A - L1,Complete,SEB - 1,East Support Building,SUEN-1 - 19-22,L1 - Fndn Slab,MECH RM 3,CHERRY COATING,DRYWALL,AMBER CARO,2024-06-28 07:00,2024-07-08 17:00,2024-06-28 07:00,2024-07-05 17:00
CN.AB.AR.4340,DRYWALL 2 SIDE - MECHANICAL ROOM 3 CENTRAL - SEB1 - GL 19-22 - C-A - L1,Complete,SEB - 1,East Support Building,SUEN-1 - 19-22,L1 - Fndn Slab,MECH RM 3,BERG,DRYWALL,AMBER CARO,2024-06-17 07:00,2024-06-24 17:00,2024-06-17 07:00,2024-06-22 17:00
CN.AB.AR.4350,DRYWALL & INSULATION (1 side) (INT) - MECHANICAL ROOM 3 CENTRAL - SEB1 - GL 19-22 - C-A - L1,Complete,SEB - 1,East Support Building,SUEN-1 - 19-22,L1 - Fndn Slab,MECH RM 3,BERG,DRYWALL,AMBER CARO,2024-03-22 07:00,2024-03-27 17:00,2024-03-08 07:00,2024-04-09 17:00
CN.SEB1.3810,TAPE & FINISH DRYWALL  - SEB1- GL 19-22 -  L3 - C-A - ELECTRICAL ROOM 2,Complete,SEB - 1,East Support Building,SUEN-1 - 19-22,L3 / Waffle Slab Level,ELECTRIC RM 2,,DRYWALL,AMBER CARO,2024-03-23 08:00,2024-03-27 08:00,2024-03-07 00:00,2024-03-11 00:00
CN.SEB1.4320,DRYWALL 2 SIDE - SEB1- GL 19-22 - L3 - C-A - ELECTRICAL ROOM 2,Complete,SEB - 1,East Support Building,SUEN-1 - 19-22,L3 / Waffle Slab Level,ELECTRIC RM 2,,DRYWALL,AMBER CARO,2024-02-06 13:00,2024-02-11 13:00,2024-02-06 13:00,2024-03-08 16:00
CN.SEB1.4330,DRYWALL & INSULATION (1 side) (INT) - SEB1- GL 19-22 - L3 - C-A- ELECTRICAL ROOM 2,Complete,SEB - 1,East Support Building,SUEN-1 - 19-22,L3 / Waffle Slab Level,ELECTRIC RM 2,,DRYWALL,AMBER CARO,2024-01-04 13:00,2024-01-10 11:00,2024-01-04 13:00,2024-01-08 17:00
CN.SEB1.1121,REMEDY - TAPE & FINISH DRYWALL - SEB1- GL 19-22 -  L2 - D LINE,Complete,SEB - 1,West Support Building,SUEN-1 - 19-22,L2 - SubFab Level,DS/AD INTERIORS,CHERRY COATING,DRYWALL,FIZ DATA CENTER,2024-08-23 07:00,2024-08-27 17:00,2024-08-11 07:00,2024-08-13 17:00
CN.SEB1.1091,DRYWALL 2 SIDE- SEB1- GL 19-22 - L2 - D LINE,Complete,SEB - 1,West Support Building,SUEN-1 - 19-22,L2 - SubFab Level,DS/AD INTERIORS,,DRYWALL,FIZ DATA CENTER,2024-02-26 07:00,2024-03-01 17:00,2024-02-29 07:00,2024-03-01 11:00
CN.SEB1.1061,DRYWALL & INSULATION (1 side) (INT)- SEB1- GL 19-22 - L2 D LINE,Complete,SEB - 1,West Support Building,SUEN-1 - 19-22,L2 - SubFab Level,DS/AD INTERIORS,,DRYWALL,FIZ DATA CENTER,2024-02-12 07:00,2024-02-16 15:00,2024-02-12 07:00,2024-02-16 15:00
CN.SEB1.1001,TEMP WALLS Framing and Drywall - SEB1- GL 19-22 - L3 - C-A,Complete,SEB - 1,,SUEN-1 - 19-22,L3 / Waffle Slab Level,ELECTRIC RM 2,,DRYWALL,,2023-10-13 08:00,2023-10-17 08:00,2023-10-13 08:00,2023-12-26 11:00
CN.SEB1.1201,TAPE & FINISH DRYWALL - SEB1 - GL 19-22 - D LINE - L3,Complete,SEB - 1,West Support Building,SUEN-1 - 19-22,L3 / Waffle Slab Level,DS/AD INTERIORS,CHERRY COATING,DRYWALL,FIZ DATA CENTER,2024-05-28 07:00,2024-06-03 17:00,2024-05-28 07:00,2024-06-01 17:00
CN.SEB1.1191,DRYWALL 2 SIDE - SEB1 - GL 20-22 - D LINE - L3,Complete,SEB - 1,West Support Building,SUEN-1 - 19-22,L3 / Waffle Slab Level,DS/AD INTERIORS,BERG,DRYWALL,FIZ DATA CENTER,2024-05-06 07:00,2024-05-10 17:00,2024-04-26 07:00,2024-05-15 17:00
CN.SEB1.1181,DRYWALL & INSULATION (1st layer) (INT) - SEB1- GL 19-22 - L3 - D LINE,Complete,SEB - 1,West Support Building,SUEN-1 - 19-22,L3 / Waffle Slab Level,DS/AD INTERIORS,,DRYWALL,FIZ DATA CENTER,2024-03-18 07:00,2024-03-20 11:00,2024-03-11 00:00,2024-03-18 00:00
CN.SEB1.1131,TAPE & FINISH DRYWALL - SEB1 - GL 19-22 - D LINE - L1,Complete,SEB - 1,West Support Building,SUEN-1 - 19-22,L1 - Fndn Slab,DS/AD INTERIORS,CHERRY COATING,DRYWALL,FIZ DATA CENTER,2024-04-04 07:00,2024-04-12 17:00,2024-04-04 07:00,2024-04-11 17:00
CN.SEB1.1151,PRIMER & PAINT DRYWALL -  GL 19-22 - D LINE - L1,Complete,SEB - 1,West Support Building,SUEN-1 - 19-22,L1 - Fndn Slab,DS/AD INTERIORS,FINISH PAINT,TBD Architectural Finishes,FIZ DATA CENTER,2024-10-25 07:00,2024-10-29 17:00,2024-10-25 07:00,2024-10-28 17:00
CN.SEB1.1101,DRYWALL 2 SIDE - SEB1 - GL 19-22 - D LINE - L1,Complete,SEB - 1,West Support Building,SUEN-1 - 19-22,L1 - Fndn Slab,DS/AD INTERIORS,BERG,DRYWALL,FIZ DATA CENTER,2024-03-27 07:00,2024-04-02 17:00,2024-03-27 07:00,2024-04-01 17:00
CN.SEB1.1071,DRYWALL & INSULATION (1 side) (INT) - SEB1 - GL 19-22 - L1 D LINE,Complete,SEB - 1,West Support Building,SUEN-1 - 19-22,L1 - Fndn Slab,DS/AD INTERIORS,,DRYWALL,FIZ DATA CENTER,2023-12-01 07:00,2023-12-05 15:00,2023-12-01 07:00,2024-01-04 13:00
CN.SEB1.6260,Drywall Clips & AMTS Installs Support Beams - SEB1- GL 19-22 - D LINE L4,Complete,SEB - 1,,SUEN-1 - 19-22,L4 - SUP Roof - FAB Roof,DS/AD INTERIORS,,Fireproofing,,2024-03-23 08:00,2024-03-30 10:00,2024-03-04 00:00,2024-03-11 00:00
CN.SEB1.7450,REMEDY - TAPE & FINISH DRYWALL - SEB2 - GL 22-25 - D LINE - L2,Complete,SEB - 1,West Support Building,SUEN-2 - 22-25,L2 - SubFab Level,DS/AD INTERIORS,CHERRY COATING,DRYWALL,FIZ DATA CENTER,2024-08-16 07:00,2024-08-20 17:00,2024-08-14 07:00,2024-08-16 17:00
CN.SEB1.7420,REMEDY - FRAME & DRYWALL (INT) - SEB2 - GL 22-25 - D LINE - L2,Complete,SEB - 1,West Support Building,SUEN-2 - 22-25,L2 - SubFab Level,DS/AD INTERIORS,BERG,DRYWALL,FIZ DATA CENTER,2024-06-17 07:00,2024-06-21 17:00,2024-06-17 07:00,2024-08-02 17:00
CN.SEB1.8940,REMEDY - DEMO DRYWALL (INT)- SEB1- GL 19-22 -  L2 - D LINE,Complete,SEB - 1,West Support Building,SUEN-1 - 19-22,L2 - SubFab Level,DS/AD INTERIORS,,DRYWALL,FIZ DATA CENTER,2024-06-03 07:00,2024-06-10 17:00,2024-06-01 07:00,2024-06-06 17:00
CN.SEB1.8950,REMEDY - FRAME & DRYWALL- SEB1- GL 19-22 -  L2 - D LINE,Complete,SEB - 1,West Support Building,SUEN-1 - 19-22,L2 - SubFab Level,DS/AD INTERIORS,BERG,DRYWALL,FIZ DATA CENTER,2024-06-17 07:00,2024-06-27 17:00,2024-06-17 07:00,2024-08-06 17:00
CN.SEB1.10060,REMEDY - TAPE & FINISH DRYWALL - SEB2 - GL 20-25 - C LINE - L2,Not Started,SEB - 1,West Support Building,SUEN-2 - 22-25,L2 - SubFab Level,DS/AD INTERIORS,CHERRY COATING,DRYWALL,FIZ DATA CENTER,2025-12-08 07:00,2025-12-10 17:00,,
CN.SEB1.10050,REMEDY - FRAME & DRYWALL (INT) - SEB2 - GL 20-25 - C LINE - L2,Not Started,SEB - 1,West Support Building,SUEN-2 - 22-25,L2 - SubFab Level,DS/AD INTERIORS,BERG,DRYWALL,FIZ DATA CENTER,2025-12-01 07:00,2025-12-05 17:00,,
CN.AB.AR.3950,TAPE & FINISH DRYWALL - MECHANICAL ROOM 3 NORTH - SEB2 - GL 22-25 - C-A - L1,Complete,SEB - 2,East Support Building,SUEN-2 - 22-25,L1 - Fndn Slab,MECH RM 2,CHERRY COATING,DRYWALL,AMBER CARO,2025-08-11 07:00,2025-08-12 17:00,2025-08-11 07:00,2025-08-22 17:00
CN.AB.AR.4360,DRYWALL 2 SIDE - MECHANICAL ROOM 3 NORTH - SEB2 - GL 22-25 - C-A - L1,Complete,SEB - 2,East Support Building,SUEN-2 - 22-25,L1 - Fndn Slab,MECH RM 2,BERG,DRYWALL,AMBER CARO,2024-11-11 07:00,2024-11-18 17:00,2024-10-18 07:00,2024-10-30 17:00
CN.AB.AR.4370,DRYWALL & INSULATION (1 side) (INT) - MECHANICAL RM 3 NORTH [LEAVEOUT AT A LINE FOR SECAI] - SEB2 - GL 22-25 - C-A - L1,Complete,SEB - 2,East Support Building,SUEN-2 - 22-25,L1 - Fndn Slab,MECH RM 2,BERG,DRYWALL,AMBER CARO,2024-03-18 07:00,2024-03-22 17:00,2024-03-04 07:00,2024-07-01 17:00
CN.SEB23810,TAPE & FINISH DRYWALL - ELECTRICAL ROOM 2 - SEB2 - GL 22-25 - C-A - L3,Complete,SEB - 2,East Support Building,SUEN-2 - 22-25,L3 / Waffle Slab Level,ELECTRIC RM 2,CHERRY COATING,DRYWALL,AMBER CARO,2024-11-11 07:00,2024-11-18 17:00,2024-09-16 07:00,2024-09-23 07:00
CN.SEB24320,DRYWALL 2 SIDE - ELECTRICAL ROOM 2 - SEB2 - GL 22-25 - C-A - L3,Complete,SEB - 2,East Support Building,SUEN-2 - 22-25,L3 / Waffle Slab Level,ELECTRIC RM 2,BERG,DRYWALL,AMBER CARO,2024-11-04 07:00,2024-11-11 17:00,2024-07-29 07:00,2024-09-11 17:00
CN.SEB24330,DRYWALL & INSULATION (1 side) (INT) - SEB2 GL 22-25 - L3 C-A - ELECTRICAL ROOM 2,Complete,SEB - 2,East Support Building,SUEN-2 - 22-25,L3 / Waffle Slab Level,ELECTRIC RM 2,,DRYWALL,AMBER CARO,2024-03-17 07:00,2024-03-20 17:00,2024-03-12 07:00,2024-03-15 11:00
CN.SEB21091,TAPE & FINISH DRYWALL - SEB2 GL 22-25 - L1 D LINE,Complete,SEB - 2,West Support Building,SUEN-2 - 22-25,L1 - Fndn Slab,DS/AD INTERIORS,CHERRY COATING,DRYWALL,FIZ DATA CENTER,2024-09-27 07:00,2024-10-04 17:00,2024-09-07 07:00,2024-09-10 17:00
CN.SEB21101,PRIMER & PAINT DRYWALL -  GL 22-25 - D LINE-L1,Complete,SEB - 2,West Support Building,SUEN-2 - 22-25,L1 - Fndn Slab,DS/AD INTERIORS,FINISH PAINT,TBD Architectural Finishes,FIZ DATA CENTER,2024-10-28 07:00,2024-10-31 17:00,2024-10-28 07:00,2024-10-31 17:00
CN.SEB21081,DRYWALL 2 SIDE - SEB2 GL 22-25 - L1 D LINE,Complete,SEB - 2,West Support Building,SUEN-2 - 22-25,L1 - Fndn Slab,DS/AD INTERIORS,BERG,DRYWALL,FIZ DATA CENTER,2024-09-20 07:00,2024-09-27 17:00,2024-07-15 07:00,2024-08-27 17:00
CN.SEB21071,DRYWALL & INSULATION (1 side) (INT) - SEB2 GL 22-25 - L1 D LINE,Complete,SEB - 2,West Support Building,SUEN-2 - 22-25,L1 - Fndn Slab,DS/AD INTERIORS,,DRYWALL,FIZ DATA CENTER,2023-11-30 15:00,2023-12-05 13:00,2023-11-30 15:00,2023-12-11 11:00
CN.SEB21001,TEMP WALLS Framing and Drywall - SEB2 GL 22-25 - L3 C-A,Complete,SEB - 2,,SUEN-2 - 22-25,L3 / Waffle Slab Level,ELECTRIC RM 2,,DRYWALL,,2023-10-16 08:00,2023-10-20 08:00,2023-10-13 08:00,2024-01-21 11:00
CN.SEB21151,TAPE & FINISH DRYWALL - SEB2 - GL 22-25 - D LINE - L3,Complete,SEB - 2,West Support Building,SUEN-2 - 22-25,L3 / Waffle Slab Level,DS/AD INTERIORS,CHERRY COATING,DRYWALL,FIZ DATA CENTER,2024-05-17 07:00,2024-05-23 17:00,2024-05-17 07:00,2024-05-21 17:00
CN.SEB21141,DRYWALL 2 SIDE - SEB2 - GL 22-25 - D LINE - L3,Complete,SEB - 2,West Support Building,SUEN-2 - 22-25,L3 / Waffle Slab Level,DS/AD INTERIORS,BERG,DRYWALL,FIZ DATA CENTER,2024-05-13 07:00,2024-05-17 17:00,2024-04-29 07:00,2024-05-13 17:00
CN.SEB21131,DRYWALL & INSULATION (1st layer) (INT) - SEB2 GL 22-25 - L3 D LINE,Complete,SEB - 2,West Support Building,SUEN-2 - 22-25,L3 / Waffle Slab Level,DS/AD INTERIORS,,DRYWALL,FIZ DATA CENTER,2024-03-17 07:00,2024-03-19 11:00,2024-03-01 00:00,2024-03-14 00:00
CN.SEB55170,DEMO DRYWALL - INSTALL GOAL POSTS - BATTERY ROOM 2 - SEB2 - GL 22-25 - C-A - L3,Complete,SEB - 2,East Support Building,SUEN-2 - 22-25,L3 / Waffle Slab Level,ELECTRIC RM 2,BERG,DRYWALL,AMBER CARO,2024-08-16 07:00,2024-08-23 17:00,2024-08-05 07:00,2024-08-13 17:00
CN.SEB55390,FINISH DRYWALL & FINISHES - VESTIBULE - 19 - B-C - L3,Not Started,SEB - 2,East Support Building,SUEN-2 - 22-25,L3 / Waffle Slab Level,ELECTRIC RM 2,BERNCO,TBD Architectural Finishes,JAMES LEE,2025-11-21 07:00,2025-11-21 17:00,,
CN.AB.AR.4020,TAPE & FINISH DRYWALL - WAFER I/O RM - SEB3 - GL 25-28 - C-A - L3,Complete,SEB - 3,East Support Building,SUEN-3 - 25-28,L3 / Waffle Slab Level,WAFER I/O RM,CHERRY COATING,DRYWALL,AMBER CARO,2024-05-06 07:00,2024-05-13 17:00,2024-05-06 07:00,2024-08-07 17:00
CN.AB.AR.4380,DRYWALL 2 SIDE - WAFER I/O RM - SEB3 - GL 25-28 - C-A - L3,Complete,SEB - 3,East Support Building,SUEN-3 - 25-28,L3 / Waffle Slab Level,WAFER I/O RM,BERG,DRYWALL,AMBER CARO,2024-04-30 07:00,2024-05-07 17:00,2024-04-30 07:00,2024-08-03 17:00
CN.AB.AR.4390,DRYWALL & INSULATION (1 side) (INT) - SEB3 - GL 25-28 - L3 - C-E - (WAFER I/O RM),Complete,SEB - 3,East Support Building,SUEN-3 - 25-28,L3 / Waffle Slab Level,WAFER I/O RM,BERG,DRYWALL,AMBER CARO,2024-04-01 15:00,2024-04-05 15:00,2024-02-01 07:00,2024-04-17 17:00
CN.SEB3R.3880,TAPE & FINISH DRYWALL - WAFER I/O - SEB3 - GL 25-28 - C-A - L1,Complete,SEB - 3,East Support Building,SUEN-3 - 25-28,L1 - Fndn Slab,WAFER I/O RM,CHERRY COATING,DRYWALL,AMBER CARO,2024-05-02 07:00,2024-05-02 17:00,2024-05-02 07:00,2024-05-07 17:00
CN.SEB3R.4340,DRYWALL 2 SIDE - WAFER I/O - SEB3 - GL 25-28 - C-A - L1,Complete,SEB - 3,East Support Building,SUEN-3 - 25-28,L1 - Fndn Slab,WAFER I/O RM,BERG,DRYWALL,AMBER CARO,2024-04-11 07:00,2024-04-17 17:00,2024-04-11 07:00,2024-04-25 17:00
CN.SEB3R.4350,DRYWALL & INSULATION (1 side) (INT) - WAFER I/O - SEB3 - GL 25-28 - C-A - L1,Complete,SEB - 3,East Support Building,SUEN-3 - 25-28,L1 - Fndn Slab,WAFER I/O RM,BERG,DRYWALL,AMBER CARO,2024-03-11 07:00,2024-03-19 17:00,2024-03-04 07:00,2024-06-01 17:00
CN.SEB3R.4730,TAPE & FINISH DRYWALL - ELECTRICAL ROOM 3 - SEB3 - GL 25-28 - C-A - L2,Complete,SEB - 3,East Support Building,SUEN-3 - 25-28,L2 - SubFab Level,Electric RM 3,CHERRY COATING,DRYWALL,AMBER CARO,2025-07-17 07:00,2025-07-23 17:00,2025-07-17 07:00,2025-07-23 17:00
CN.SEB3R.4720,DRYWALL 2 SIDE - ELECTRICAL ROOM 3 - SEB3 - GL 25-28 - C-A - L2,Complete,SEB - 3,East Support Building,SUEN-3 - 25-28,L2 - SubFab Level,Electric RM 3,BERG,DRYWALL,AMBER CARO,2025-07-10 07:00,2025-07-16 17:00,2025-07-10 07:00,2025-07-16 17:00
CN.SEB3R.4710,DRYWALL & INSULATION (1 side) (INT) - ELECTRICAL ROOM 3 - SEB3 - GL 25-28 - C-A - L2,Complete,SEB - 3,East Support Building,SUEN-3 - 25-28,L2 - SubFab Level,Electric RM 3,BERG,DRYWALL,AMBER CARO,2024-03-26 11:00,2024-04-01 11:00,2024-03-18 07:00,2024-07-15 17:00
CN.SEB31101,PRIMER & PAINT DRYWALL -  GL 25-28 - D LINE- L1,Not Started,SEB - 3,West Support Building,SUEN-3 - 25-28,L1 - Fndn Slab,DS/AD INTERIORS,FINISH PAINT,TBD Architectural Finishes,FIZ DATA CENTER,2025-11-21 07:00,2025-11-21 17:00,,
CN.SEB31041,DRYWALL & INSULATION (1 side) (INT) - SEB3 - GL 25-28 - L1 - D LINE,Complete,SEB - 3,West Support Building,SUEN-3 - 25-28,L1 - Fndn Slab,DS/AD INTERIORS,,DRYWALL,FIZ DATA CENTER,2023-11-30 07:00,2023-12-04 15:00,2023-11-30 07:00,2023-12-29 13:00
CN.SEB31011,REMEDY - DEMO DRYWALL (2hr) - SEB3 - GL 22-25-28 - D LINE - L2,Complete,SEB - 3,West Support Building,SUEN-3 - 25-28,L2 - SubFab Level,DS/AD INTERIORS,BERG,TBD Architectural Finishes,FIZ DATA CENTER,2024-05-31 07:00,2024-06-06 17:00,2024-05-23 07:00,2024-05-28 17:00
CN.SEB31091,REMEDY - TAPE & FINISH DRYWALL - SEB3 - GL 25-28 - D LINE - L2,Complete,SEB - 3,West Support Building,SUEN-3 - 25-28,L2 - SubFab Level,DS/AD INTERIORS,CHERRY COATING,DRYWALL,FIZ DATA CENTER,2024-08-16 07:00,2024-08-20 17:00,2024-08-14 07:00,2024-08-16 17:00
CN.SEB31051,REMEDY - FRAME & DRYWALL (INT) - SEB3 - GL 25-28 - D LINE - L2,Complete,SEB - 3,West Support Building,SUEN-3 - 25-28,L2 - SubFab Level,DS/AD INTERIORS,BERG,DRYWALL,FIZ DATA CENTER,2024-07-23 07:00,2024-07-31 17:00,2024-07-23 07:00,2024-08-12 17:00
CN.SEB31161,TAPE & FINISH DRYWALL - SEB3 - GL 25-28 - L3 - D LINE - L3,Complete,SEB - 3,West Support Building,SUEN-3 - 25-28,L3 / Waffle Slab Level,DS/AD INTERIORS,CHERRY COATING,DRYWALL,FIZ DATA CENTER,2024-06-17 07:00,2024-06-21 17:00,2024-06-05 07:00,2024-06-15 17:00
CN.SEB31151,DRYWALL 2 SIDE - SEB3 - GL 25-28 - L3 - D LINE - L3,Complete,SEB - 3,West Support Building,SUEN-3 - 25-28,L3 / Waffle Slab Level,DS/AD INTERIORS,BERG,DRYWALL,FIZ DATA CENTER,2024-04-18 07:00,2024-04-23 17:00,2024-04-18 07:00,2024-05-13 17:00
CN.SEB31141,DRYWALL & INSULATION (1st layer) (INT) - SEB3 - GL 25-28 - L3 - D LINE,Complete,SEB - 3,West Support Building,SUEN-3 - 25-28,L3 / Waffle Slab Level,DS/AD INTERIORS,,DRYWALL,FIZ DATA CENTER,2024-02-22 11:00,2024-02-24 15:00,2024-02-22 11:00,2024-02-24 16:00
CN.SEB3.6230,Drywall Clips & AMTS Installs Support Beams - SEB3 - GL 25-28 - D LINE - L4E,Complete,SEB - 3,East Support Building,SUEN-3 - 25-28,L4 - SUP Roof - FAB Roof,DS/AD INTERIORS,,Waterproofing - Preferred,JAMES LIVELY,2024-03-23 08:00,2024-03-30 10:00,2024-03-11 00:00,2024-03-21 00:00
CN.SEB3.6800,REMAINING FRAMING AND 1ST LAYER DRYWALL EXTERIOR install & inspect - STAIR #19 - 26/D - ALL LEVELS(),Complete,SEB - 3,East Support Building,SUEN-3 - 25-28,INTERIOR STAIR TOWER - STAIR #19 (CLEAN ROOM) - DE-SCOPED,,BERG,INSULATED METAL PANELS,JAMES LIVELY,2025-08-29 07:00,2025-09-02 17:00,2025-06-27 07:00,2025-06-27 17:00
CN.AB.AR.7360,REMAINING DRYWALL & FINISHES -WAFER I/O RM - SEB3 - GL 25-28 - C-A - L3,Not Started,SEB - 3,East Support Building,SUEN-3 - 25-28,L3 / Waffle Slab Level,WAFER I/O RM,BERG,DRYWALL,AMBER CARO,2025-12-05 07:00,2025-12-11 17:00,,
CN.SEB55400,FINISH REMAINING DRYWALL & FINISHES - SEB3 - GL 25-28 - T/L MAINTAINANCE RM 23 - L2,Not Started,SEB - 3,West Support Building,SUEN-3 - 25-28,L2 - SubFab Level,DS/AD INTERIORS,FINISH PAINT,TBD Architectural Finishes,FIZ DATA CENTER,2025-11-21 07:00,2025-11-21 17:00,,
CN.AB.AR.8600,REMAINING DRYWALL & FINISHES -BATTERY ROOM 2 - SEB3 - GL 25-28 - C-A - L3,Complete,SEB - 3,East Support Building,SUEN-3 - 25-28,L3 / Waffle Slab Level,WAFER I/O RM,BERG,DRYWALL,AMBER CARO,2025-09-03 07:00,2025-09-04 17:00,2025-09-03 07:00,2025-09-04 17:00
CN.AB.AR.4090,TAPE & FINISH DRYWALL - RETICLE RM  - SEB4 - GL 28-31 - C-A  - L3,Complete,SEB - 4,East Support Building,SUEN-4 - 28-31,L3 / Waffle Slab Level,RETICLE RM,CHERRY COATING,DRYWALL,AMBER CARO,2024-08-02 07:00,2024-08-09 17:00,2024-05-01 07:00,2024-12-10 17:00
CN.AB.AR.4400,DRYWALL 2 SIDE - RETICLE RM - SEB4 - GL 28-31 - C-A - L3,Complete,SEB - 4,East Support Building,SUEN-4 - 28-31,L3 / Waffle Slab Level,RETICLE RM,BERG,DRYWALL,AMBER CARO,2024-04-30 07:00,2024-05-10 17:00,2024-04-30 07:00,2024-08-01 17:00
CN.AB.AR.4410,DRYWALL & INSULATION (1 side) (INT) - RETICLE RM - SEB4 - GL 28-31 - C-A - L3,Complete,SEB - 4,East Support Building,SUEN-4 - 28-31,L3 / Waffle Slab Level,RETICLE RM,BERG,DRYWALL,AMBER CARO,2024-04-08 07:00,2024-04-15 17:00,2024-02-01 07:00,2024-07-23 17:00
CN.SEB4.3880,TAPE & FINISH DRYWALL - SEB4 - GL 28-31 - L1 C-A  PR RM,Complete,SEB - 4,East Support Building,SUEN-4 - 28-31,L1 - Fndn Slab,PR RM,,DRYWALL,AMBER CARO,2024-01-26 07:00,2024-01-29 17:00,2024-01-18 07:00,2024-01-20 11:00
CN.SEB4.4340,DRYWALL 2 SIDE - SEB4 - GL 28-31 - L1 C-A PR RM,Complete,SEB - 4,East Support Building,SUEN-4 - 28-31,L1 - Fndn Slab,PR RM,,DRYWALL,AMBER CARO,2024-01-22 07:00,2024-01-25 17:00,2024-01-15 07:00,2024-01-17 17:00
CN.SEB4.4350,DRYWALL & INSULATION (1 side) (INT) - SEB4 - GL 28-31 - L1 C-A PR RM,Complete,SEB - 4,East Support Building,SUEN-4 - 28-31,L1 - Fndn Slab,PR RM,,DRYWALL,AMBER CARO,2024-01-07 10:00,2024-01-13 12:00,2024-01-07 10:00,2024-01-11 11:00
CN.SEB44840,TAPE & FINISH DRYWALL - ELECTRICAL ROOM 3 NORTH - SEB4 - GL 28-31 - C-A - L2,Complete,SEB - 4,East Support Building,SUEN-4 - 28-31,L2 - SubFab Level,Electric RM 3,CHERRY COATING,DRYWALL,AMBER CARO,2025-06-16 07:00,2025-06-20 17:00,2025-06-16 07:00,2025-06-20 17:00
CN.SEB44830,DRYWALL 2 SIDE - ELECTRICAL ROOM 3 NORTH - SEB4 - GL C-D/ 27-30 - C-A - L2,Complete,SEB - 4,East Support Building,SUEN-4 - 28-31,L2 - SubFab Level,Electric RM 3,BERG,DRYWALL,AMBER CARO,2025-06-10 07:00,2025-06-16 17:00,2025-06-10 07:00,2025-06-16 17:00
CN.SEB44820,DRYWALL & INSULATION (1 side) - SEB4 - GL 28-31 - L2 C-A ELECTRICAL ROOM 3 NORTH [LEAVEOUT FOR REMEDITATION],Complete,SEB - 4,East Support Building,SUEN-4 - 28-31,L2 - SubFab Level,Electric RM 3,,DRYWALL,AMBER CARO,2024-03-28 09:00,2024-04-03 09:00,2024-03-18 07:00,2024-04-12 17:00
CN.SEB4.1081,TAPE & FINISH DRYWALL - SEB4 - GL 28-31 - L1 D LINE,Complete,SEB - 4,West Support Building,SUEN-4 - 28-31,L1 - Fndn Slab,DS/AD INTERIORS,,DRYWALL,FIZ DATA CENTER,2024-02-09 08:00,2024-02-13 08:00,2024-02-09 08:00,2024-03-07 00:00
CN.SEB4.1101,PRIMER & PAINT DRYWALL -  GL 28-31 - D LINE - L1,Not Started,SEB - 4,West Support Building,SUEN-4 - 28-31,L1 - Fndn Slab,DS/AD INTERIORS,FINISH PAINT,TBD Architectural Finishes,,2025-11-21 07:00,2025-11-21 17:00,,
CN.SEB4.1061,DRYWALL 2 SIDE- SEB4 - SEB4 - GL 28-31 - L1 D LINE,Complete,SEB - 4,West Support Building,SUEN-4 - 28-31,L1 - Fndn Slab,DS/AD INTERIORS,,DRYWALL,FIZ DATA CENTER,2024-02-08 07:00,2024-02-11 17:00,2024-02-01 07:00,2024-02-03 11:00
CN.SEB4.1041,DRYWALL & INSULATION (1 side) (INT) - SEB4 - GL 28-31 - L1 D LINE(Waiting On Stair Install),Complete,SEB - 4,West Support Building,SUEN-4 - 28-31,L1 - Fndn Slab,DS/AD INTERIORS,,DRYWALL,FIZ DATA CENTER,2023-12-11 07:00,2023-12-14 11:00,2023-12-11 07:00,2023-12-14 11:00
CN.SEB4.1011,REMEDY - DEMO DRYWALL (2hr) - SEB4 - GL 28-31 - D LINE - L2,Complete,SEB - 4,West Support Building,SUEN-4 - 28-31,L2 - SubFab Level,DS/AD INTERIORS,BERG,TBD Architectural Finishes,FIZ DATA CENTER,2024-06-10 07:00,2024-06-18 17:00,2024-05-23 07:00,2024-05-28 17:00
CN.SEB4.1091,REMEDY - TAPE & FINISH DRYWALL - SEB4 - GL 28-31 - D LINE - L2,Complete,SEB - 4,West Support Building,SUEN-4 - 28-31,L2 - SubFab Level,DS/AD INTERIORS,CHERRY COATING,DRYWALL,FIZ DATA CENTER,2024-08-23 07:00,2024-08-27 17:00,2024-08-16 07:00,2024-08-19 17:00
CN.SEB4.1051,REMEDY - FRAME & DRYWALL (INT) - SEB4 - GL 28-31 - D LINE - L2,Complete,SEB - 4,West Support Building,SUEN-4 - 28-31,L2 - SubFab Level,DS/AD INTERIORS,BERG,DRYWALL,FIZ DATA CENTER,2024-07-22 07:00,2024-07-30 17:00,2024-07-22 07:00,2024-08-12 17:00
CN.SEB4.1191,TAPE & FINISH DRYWALL - SEB4 - GL 28-31 - D LINE - L3,Complete,SEB - 4,West Support Building,SUEN-4 - 28-31,L3 / Waffle Slab Level,DS/AD INTERIORS,CHERRY COATING,DRYWALL,FIZ DATA CENTER,2024-06-21 07:00,2024-06-27 17:00,2024-06-21 07:00,2024-06-25 17:00
CN.SEB4.1181,DRYWALL 2 SIDE - SEB4 - GL 28-31 - D LINE - L3,Complete,SEB - 4,West Support Building,SUEN-4 - 28-31,L3 / Waffle Slab Level,DS/AD INTERIORS,BERG,DRYWALL,FIZ DATA CENTER,2024-05-17 07:00,2024-05-23 17:00,2024-04-29 07:00,2024-06-20 17:00
CN.SEB4.1171,DRYWALL & INSULATION (1st layer) (INT) - SEB4 - GL 28-31 - L3 - D LINE,Complete,SEB - 4,West Support Building,SUEN-4 - 28-31,L3 / Waffle Slab Level,DS/AD INTERIORS,,DRYWALL,FIZ DATA CENTER,2024-03-25 08:00,2024-03-29 08:00,2024-03-25 08:00,2024-03-29 09:00
CN.SEB4.1121,INSTALL DRYWALL & FIRE CAULKING (SHAFT LINER) SHAFT - ELEVATOR 19 - ALL LEVELS,Complete,SEB - 4,East Support Building,SUEN-4 - 28-31,,ELEVATOR,BERG,DRYWALL,JAMES LIVELY,2025-01-20 07:00,2025-02-04 17:00,2025-01-20 07:00,2025-08-15 17:00
CN.SEB4.6360,Drywall Clips & AMTS Installs Support Beams - SEB4 - GL 28-31 - D LINE L4,Complete,SEB - 4,,SUEN-4 - 28-31,L4 - SUP Roof - FAB Roof,DS/AD INTERIORS,SECAI,Fireproofing,,2024-03-25 07:00,2024-04-03 09:00,2024-03-16 07:00,2024-03-27 17:00
CN.SEB4.9020,INSTALL FRAMING/DRYWALL/TAPE+FLOAT - ELEVATOR 19 - Lvl 3 only remaining,Active,SEB - 4,East Support Building,SUEN-4 - 28-31,,ELEVATOR,BERG,DRYWALL,JAMES LIVELY,2025-01-20 07:00,2025-02-04 17:00,2024-12-23 07:00,
CN.SEB4.9040,INSTALL DRYWALL & FIRE CAULKING - DOOR FRONTS - ELEVATOR 19,Complete,SEB - 4,East Support Building,SUEN-4 - 28-31,,ELEVATOR,W&W,DRYWALL,JAMES LIVELY,2025-09-18 07:00,2025-10-09 17:00,2025-08-20 07:00,2025-08-29 17:00
CN.SEB4.9100,IMPACT - L2 & L3 DRYWALL LOCATION RFI 1584 - ELEVATOR 19,Complete,SEB - 4,East Support Building,SUEN-4 - 28-31,,ELEVATOR,BERG,DRYWALL,JAMES LIVELY,2024-10-21 07:00,2024-11-08 17:00,2024-10-21 07:00,2024-10-29 17:00
CN.AB.AR.7777,IMPACT - RELOCATE A -LINE DRYWALL - RETICLE RM - SEB4 - GL 28-31 - C-A - L3,Complete,SEB - 4,East Support Building,SUEN-4 - 28-31,L3 / Waffle Slab Level,RETICLE RM,CHERRY COATING,DRYWALL,AMBER CARO,2024-11-25 07:00,2024-12-03 17:00,2024-11-25 07:00,2024-12-07 17:00
CN.SEB55420,IMPACT - SECAI WALL OPENING IMPENDING DRYWALL - ELECTRICAL ROOM 3 NORTH - SEB4 - GL 28-31 - C-A - L2,Complete,SEB - 4,East Support Building,SUEN-4 - 28-31,L2 - SubFab Level,Electric RM 3,BERG,DRYWALL,AMBER CARO,2024-12-03 07:00,2024-12-10 17:00,2025-01-06 07:00,2025-06-16 07:00
CN.AB.AR.4160,TAPE & FINISH DRYWALL - RETICLE ROOM - SEB5 - GL 31-33 - C-A - L3,Complete,SEB - 5,East Support Building,SUEN-5 - 31-33,L3 / Waffle Slab Level,RETICLE RM,CHERRY COATING,DRYWALL,AMBER CARO,2025-04-24 07:00,2025-04-25 17:00,2025-04-24 07:00,2025-04-25 17:00
CN.AB.AR.4420,DRYWALL 2 SIDE - RETICLE ROOM - SEB5 - GL 31-33 - C-A - L3 (Impacted by Temp Opening by SECAI),Complete,SEB - 5,East Support Building,SUEN-5 - 31-33,L3 / Waffle Slab Level,RETICLE RM,BERG,DRYWALL,AMBER CARO,2024-11-04 07:00,2024-11-14 17:00,2024-05-09 07:00,2024-09-16 07:00
CN.AB.AR.4430,DRYWALL & INSULATION (1 side) (INT) - RETICLE ROOM - SEB5 - GL 31-33 - C-A - L3,Complete,SEB - 5,East Support Building,SUEN-5 - 31-33,L3 / Waffle Slab Level,RETICLE RM,BERG,DRYWALL,AMBER CARO,2024-04-05 15:00,2024-04-15 15:00,2024-03-11 07:00,2024-05-08 17:00
CN.SWB5.1770,PH1- INSTALL INTERIOR DRYWALL - SE PENTHOUSE - GL 3-5 C-D,Complete,SEB - 5,East Support Building,SOUTH EAST PENTHOUSE,L4 - SUP Roof - FAB Roof,,BERG,DRYWALL,SEAN MONK,2024-06-04 07:00,2024-06-10 17:00,2024-06-04 07:00,2024-07-31 17:00
CN.SEB5.4250,DRYWALL & INSULATION (1 side) - SEB-5 - L1 only,Complete,SEB - 5,East Support Building,SUEN-5 - 31-33,L1 - Fndn Slab,,,DRYWALL,AMBER CARO,2023-10-16 07:00,2023-10-19 17:00,2023-10-16 07:00,2023-10-20 17:00
CN.SEB5R.4090,TAPE & FINISH DRYWALL - SEA5 - GL 31-33 - L2 - C-A - BATTERY ROOM 4,Complete,SEB - 5,East Support Building,SUEN-5 - 31-33,L2 - SubFab Level,BATT RM 4,,DRYWALL,AMBER CARO,2024-04-01 07:00,2024-04-05 17:00,2024-03-30 07:00,2024-04-04 17:00
CN.SEB5R.4400,DRYWALL 2 SIDE - SEA5 - GL 31-33 - L2 - C-A - BATTERY ROOM 4 [AWAITING SPRAYPAINT TO CLOSE-IN WALL],Complete,SEB - 5,East Support Building,SUEN-5 - 31-33,L2 - SubFab Level,BATT RM 4,ROLLING PLAINS,DRYWALL,AMBER CARO,2024-03-25 07:00,2024-03-29 17:00,2024-03-25 07:00,2024-03-29 17:00
CN.SEB5R.4410,DRYWALL & INSULATION (1 side) (INT) - SEA5 - GL 31-33 - L2 - C-A - BATTERY ROOM 4,Complete,SEB - 5,East Support Building,SUEN-5 - 31-33,L2 - SubFab Level,BATT RM 4,,DRYWALL,AMBER CARO,2023-11-27 07:00,2023-12-01 17:00,2023-11-27 07:00,2023-12-01 17:00
CN.SEB5.1181,TAPE & FINISH DRYWALL - SEA5 - GL 31-33 - L1 - D LINE,Complete,SEB - 5,West Support Building,SUEN-5 - 31-33,L1 - Fndn Slab,DS/AD INTERIORS,,DRYWALL,FIZ DATA CENTER,2024-01-26 07:00,2024-01-29 17:00,2023-11-22 07:00,2023-11-28 11:00
CN.SEB5.1191,PRIMER & PAINT DRYWALL -  GL 31-33 - D LINE - L1,Not Started,SEB - 5,West Support Building,SUEN-5 - 31-33,L1 - Fndn Slab,DS/AD INTERIORS,FINISH PAINT,TBD Architectural Finishes,FIZ DATA CENTER,2025-11-21 07:00,2025-11-21 07:00,,
CN.SEB5.1171,DRYWALL 2 SIDE - SEA5 - GL 31-33 - L1 - D LINE,Complete,SEB - 5,West Support Building,SUEN-5 - 31-33,L1 - Fndn Slab,DS/AD INTERIORS,,DRYWALL,FIZ DATA CENTER,2024-01-22 07:00,2024-01-25 17:00,2023-11-18 07:00,2023-11-22 17:00
CN.SEB5.1151,DRYWALL & INSULATION (1 side) (INT) - SEA5 - GL 31-33 - L1 - D LINE,Complete,SEB - 5,West Support Building,SUEN-5 - 31-33,L1 - Fndn Slab,DS/AD INTERIORS,,DRYWALL,FIZ DATA CENTER,2023-11-14 09:00,2023-11-19 17:00,2023-11-14 09:00,2023-11-17 11:00
CN.SEB5.1011,REMEDY - DEMO DRYWALL (2hr) - SEB5 - GL 31-33 - D LINE - L2,Complete,SEB - 5,West Support Building,SUEN-5 - 31-33,L2 - SubFab Level,DS/AD INTERIORS,BERG,TBD Architectural Finishes,FIZ DATA CENTER,2024-06-17 07:00,2024-06-25 17:00,2024-04-23 12:55,2024-04-25 17:00
CN.SEB5.1061,REMEDY - TAPE & FINISH DRYWALL - SEB5 - GL 31-33 - D LINE - L2,Complete,SEB - 5,West Support Building,SUEN-5 - 31-33,L2 - SubFab Level,DS/AD INTERIORS,CHERRY COATING,DRYWALL,FIZ DATA CENTER,2024-08-16 07:00,2024-08-20 17:00,2024-08-16 07:00,2024-08-19 17:00
CN.SEB5.1041,REMEDY - FRAME & DRYWALL (INT)- SEB5 - GL 31-33 - D LINE - L2,Complete,SEB - 5,West Support Building,SUEN-5 - 31-33,L2 - SubFab Level,DS/AD INTERIORS,BERG,DRYWALL,FIZ DATA CENTER,2024-07-22 07:00,2024-07-30 17:00,2024-07-22 07:00,2024-08-12 17:00
CN.SEB5.1121,TAPE & FINISH DRYWALL - SEB5 - GL 31-33 - D LINE - L3,Complete,SEB - 5,West Support Building,SUEN-5 - 31-33,L3 / Waffle Slab Level,DS/AD INTERIORS,CHERRY COATING,DRYWALL,FIZ DATA CENTER,2024-06-10 07:00,2024-06-14 17:00,2024-06-10 07:00,2024-06-14 17:00
CN.SEB5.1111,DRYWALL 2 SIDE - SEB5 - GL 31-33 - D LINE - L3,Complete,SEB - 5,West Support Building,SUEN-5 - 31-33,L3 / Waffle Slab Level,DS/AD INTERIORS,BERG,DRYWALL,FIZ DATA CENTER,2024-05-23 07:00,2024-05-30 17:00,2024-04-25 07:00,2024-06-03 17:00
CN.SEB5.1101,DRYWALL & INSULATION (1 side) (INT) - SEA5 - GL 31-33 - L3 - D LINE,Complete,SEB - 5,West Support Building,SUEN-5 - 31-33,L3 / Waffle Slab Level,DS/AD INTERIORS,,DRYWALL,FIZ DATA CENTER,2024-03-28 07:00,2024-03-31 17:00,2024-03-28 07:00,2024-03-30 11:00
CN.SEB5.1141,FRAMING & DRYWALL - ELEVATOR 18 (MK MARLOW) - LEVEL 1&2,Complete,SEB - 5,West Support Building,SUEN-5 - 31-33,L1 - Fndn Slab,ELEVATOR,BERG,DRYWALL,JAMES LIVELY,2024-07-01 07:00,2024-08-01 17:00,2024-07-03 07:00,2024-08-26 17:00
CN.SEB5.6310,Drywall Clips & AMTS Installs Support Beams - SEB5 - GL 31-33 - D LINE - L4,Complete,SEB - 5,,SUEN-5 - 31-33,L4 - SUP Roof - FAB Roof,DS/AD INTERIORS,SECAI,Fireproofing,,2024-03-25 07:00,2024-04-03 09:00,2024-03-21 07:00,2024-04-08 17:00
CN.SEB5.9200,INSTALL FRAMING & DRYWALL - ELEVATOR 18 (MK MARLOW) - LEVEL 3 (SOUTH WALL FIX INCLUDED),Complete,SEB - 5,West Support Building,SUEN-5 - 31-33,L1 - Fndn Slab,ELEVATOR,BERG,DRYWALL,JAMES LIVELY,2024-09-06 07:00,2024-09-17 17:00,2024-08-28 07:00,2024-10-03 17:00
CN.SEB5.9320,"COMPLETE REMAINING FRAMING, DRYWALL, FIRE CAULKING - DOOR FRONTS - ELEVATOR 18",Complete,SEB - 5,East Support Building,SUEN-5 - 31-33,,ELEVATOR,W&W,DRYWALL,AMBER CARO,2025-06-18 07:00,2025-07-21 17:00,2025-06-05 07:00,2025-07-31 17:00
CN.SWB5.10240,INSTALL SCAFFOLD TO DEMO DRYWALL - SE PENTHOUSE - GL 3-5 A,Complete,SEB - 5,East Support Building,SOUTH EAST PENTHOUSE,L4 - SUP Roof - FAB Roof,,BERG,DRYWALL,SEAN MONK,2024-10-04 07:00,2024-10-04 17:00,2024-10-03 07:00,2024-10-14 17:00
CN.SWB5.10250,"DEMO A LINE TEMP DRYWALL, CLEANUP & REMOVE SCAFFOLD - SE PENTHOUSE - GL 3-5 A",Complete,SEB - 5,East Support Building,SOUTH EAST PENTHOUSE,L4 - SUP Roof - FAB Roof,,BERG,DRYWALL,SEAN MONK,2024-10-15 07:00,2024-10-18 17:00,2024-10-15 07:00,2024-10-18 17:00
CN.SWB5.10270,REMAINING COLUMN WRAP FRAMING & DRYWALL - MCC ROOM / SE PENTHOUSE - GL 3-4,Complete,SEB - 5,East Support Building,SOUTH EAST PENTHOUSE,L4 - SUP Roof - FAB Roof,,BERG,DRYWALL,SEAN MONK,2024-10-21 07:00,2024-10-22 17:00,2024-10-21 07:00,2025-01-06 17:00
CN.AB.AR.8360,FINISH DRYWALL & FINISHES- AIRLOCK 18 - SEB5 - GL 31-33 - C-A - L3 SECAI TOOK OVER FOR ACCELERATION,Complete,SEB - 5,East Support Building,SUEN-5 - 31-33,L3 / Waffle Slab Level,AIRLOCKS & VESTABLES,ALK,TBD Architectural Finishes,AMBER CARO,2025-01-22 07:00,2025-01-28 17:00,2025-01-22 07:00,2025-06-06 17:00
CN.AB.AR.8430,FINISH DRYWALL & FINISHES- VESTIUBLE 18 - SEB5 - GL 31-33 - C-A - L3 SECAI TOOK OVER FOR ACCELERATION,Complete,SEB - 5,East Support Building,SUEN-5 - 31-33,L3 / Waffle Slab Level,AIRLOCKS & VESTABLES,ALK,TBD Architectural Finishes,AMBER CARO,2025-02-10 07:00,2025-02-18 17:00,2025-02-04 07:00,2025-06-06 17:00
CN.SEB5.9420,"COMPLETE REMAINING FRAMING, DRYWALL, FIRE CAULKING - SHAFT & DOOR FRONTS - ELEVATOR 01B -",Complete,SEB - 5,East Support Building,SUEN-5 - 31-33,,ELEVATOR,W&W,DRYWALL,AMBER CARO,2025-06-13 07:00,2025-07-10 17:00,2025-06-19 07:00,2025-08-01 17:00
INT.P1.Gypsum.1130,LOI - Execute Subcontract - Gypsum,Complete,PRE CONSTRUCTION,Support Building Overall,Gypsum,FRAMING/ DRYWALL GYPSUM,,,DRYWALL,AMBER CARO,2023-05-23 07:00,2023-05-28 15:00,2023-05-23 07:00,2023-05-30 17:00
INT.P1.Gypsum.1140,Subcontractor Submit Shop Drawings / Product Data - Gypsum,Complete,PRE CONSTRUCTION,Support Building Overall,Gypsum,FRAMING/ DRYWALL GYPSUM,,,DRYWALL,AMBER CARO,2023-06-02 07:00,2023-06-12 13:00,2023-06-02 07:00,2023-06-22 11:00
INT.P1.Gypsum.1150,Jacobs Review / Approve shop Drawings - Gypsum,Complete,PRE CONSTRUCTION,Support Building Overall,Gypsum,FRAMING/ DRYWALL GYPSUM,,,DRYWALL,AMBER CARO,2023-06-22 11:00,2023-07-02 17:00,2023-06-22 11:00,2023-07-10 09:00
INT.P1.Gypsum.1160,Fabrication / Lead time - Gypsum,Complete,PRE CONSTRUCTION,Support Building Overall,Gypsum,FRAMING/ DRYWALL GYPSUM,,,DRYWALL,AMBER CARO,2023-07-10 09:00,2023-07-14 09:00,2023-07-10 09:00,2023-07-14 09:00
INT.P1.Gypsum.1190,GL 33 - DRYWALL LEAD TIME,Complete,PRE CONSTRUCTION,Support Building Overall,GRIDLINE 33,FRAMING/ DRYWALL GYPSUM,GL 33 PROCUREMENT ITEMS,,DRYWALL,AMBER CARO,2023-11-27 07:00,2023-12-28 15:00,2023-11-20 20:44,2023-12-01 18:44
INT.P1.Gypsum.1200,IMPACT - STOP WORK - RAIN WATER INTRUSION - DRYWALL,Complete,PRE CONSTRUCTION,Support Building Overall,Gypsum,FRAMING/ DRYWALL GYPSUM,,,DRYWALL,AMBER CARO,2024-02-19 07:00,2024-03-18 11:00,2024-01-31 00:00,2024-02-27 00:00
INT.P1.Gypsum.1210,IMPACT - REMEDY - CCD#327 APACHE DRYWALL DEMO #324 MKMarlow Re Install #281/ 307 BERG #314 Apache scaffold,Complete,PRE CONSTRUCTION,Support Building Overall,Gypsum,FRAMING/ DRYWALL GYPSUM,,,DRYWALL,AMBER CARO,2024-02-19 07:00,2024-03-18 11:00,2024-05-13 00:00,2024-05-28 00:00
INT.P1.T&F.1230,IMPACT - REMEDY - YATES SUBMIT CCD #368 REMEDY DRYWALL TAPE & FINISH,Complete,PRE CONSTRUCTION,Support Building Overall,Gypsum,FRAMING/ DRYWALL GYPSUM,,,DRYWALL,AMBER CARO,2024-02-19 07:00,2024-03-18 11:00,2024-06-03 00:00,2024-06-10 07:00
A1000,DRYWALL SCOPE SUBSTANTIAL COMPLETION,Not Started,Remobilization and Out-of-Sequence Completion List - DD07-10-2025,,,,,,,,2025-12-22 17:00,2025-12-22 17:00,,
ZX-4330,Complete Drywall & Inspect - Elevator #22 - FAB1 - 2F,Complete,Elevator 22 - 2F -SUE-FAB1-EL22,,,,,,,,2025-08-01 08:00,2025-08-14 17:00,2025-07-16 08:00,2025-07-25 17:00
ZX-11710,Complete Drywall & Inspect - 4F-D/3-33 West Face,Complete,4F-D/3-33 West Face - 4F - SUE,,,,,,,,2025-08-25 08:00,2025-09-12 17:00,2025-08-25 08:00,2025-09-08 17:00
ZX-11830,Complete Drywall & Inspect - Duct Shaft - 4F-SUE-FAB146103,Complete,Duct Shaft - 4F -SUE-FAB146103,,,,,,,,2025-09-02 08:00,2025-09-08 17:00,2025-09-02 08:00,2025-09-08 17:00
ZX-13900,Complete Drywall & Inspect - MCC Rm - 4F-SUE-FAB146106 NON RATED,Complete,MCC Rm - 4F -SUE-FAB146106,,,,,,,,2025-06-18 08:00,2025-07-01 17:00,2025-06-10 08:00,2025-09-08 08:00
ZX-13510,Complete Drywall & Inspect - I/O Rm 1-4FSUE-FAB146107 NON RATED WALLS,Complete,I/O Rm 1 - 4F- SUE-FAB146107,,,,,,,,2025-06-18 08:00,2025-06-26 17:00,2025-06-10 08:00,2025-06-19 16:00
ZX-11860,Complete Drywall & Inspect - Elevator #22 - 4F-1FAB-EL22,Complete,Elevator 22 - 4F -SUE-FAB1-EL22,,,,,,,,2025-08-01 08:00,2025-08-14 17:00,2025-08-01 08:00,2025-08-08 17:00
ZX-11980,Complete Drywall & Inspect - Elevator Hall #22 - 4F-FAB146105,Complete,Elevator Hall 22 - 4F -SUE-FAB146105,,,,,,,,2025-09-02 08:00,2025-09-08 17:00,2025-09-02 08:00,2025-09-08 17:00
ZX-12010,Complete Drywall & Inspect - Duct Shaft - 4F-SUE-FAB146101,Complete,Duct Shaft - 4F -SUE-FAB146101,,,,,,,,2025-07-28 08:00,2025-08-08 17:00,2025-07-28 08:00,2025-08-08 17:00
FAB146101A-01,IMPACT - INSTALL/REWORK DRYWALL FRAMING AROUND DOORS - FAB146101A,Complete,Duct Shaft - 4F -SUE-FAB146101,,,,,,,,2025-05-07 08:00,2025-05-15 17:00,2025-05-07 08:00,2025-05-07 17:00
FAB146101B-01,IMPACT - INSTALL/REWORK DRYWALL FRAMING AROUND DOORS - FAB146101B,Complete,Duct Shaft - 4F -SUE-FAB146101,,,,,,,,2025-05-07 08:00,2025-05-15 17:00,2025-05-07 08:00,2025-05-07 17:00
ZX-12310,Complete Drywall & CATCHUP Inspect - Fire Alarm 22 - 4F-FAB146102,Complete,Fire Alarm 22 - 4F -SUE-FAB146102,,,,,,,,2025-05-16 08:00,2025-05-26 17:00,2025-05-16 08:00,2025-06-16 16:00
ZX-12610,Complete Drywall & Inspect - IT/Security 22 - 4F-TR-FAB146103,Complete,IT/Security 22 - 4F -SUE-TR-FAB146103,,,,,,,,2025-05-16 08:00,2025-05-26 17:00,2025-05-16 08:00,2025-06-30 16:00
ZX-11950,Complete Drywall & Inspect - Duct Shaft - 4F-SUE-FAB146302,Complete,Duct Shaft - 4F -SUE-FAB146302,,,,,,,,2025-09-29 08:00,2025-09-30 17:00,2025-09-29 08:00,2025-09-30 17:00
ZX-12100,Complete Drywall & Inspect - 4F-Vestibule @ ST20-SUE-FAB146303,Complete,4F-Vestibule @ ST20 - 4F -SUE-FAB146303,,,,,,,,2025-07-18 08:00,2025-07-31 17:00,2025-07-18 08:00,2025-08-08 17:00
ZX-12400,Complete Drywall & Inspect - Duct Shaft - 4F-SUE-FAB146402,Complete,Duct Shaft - 4F -SUE-FAB146402,,,,,,,,2025-09-01 08:00,2025-09-12 17:00,2025-09-01 08:00,2025-09-09 17:00
ZX-12700,Complete Drywall & Inspect - IT/Security 18 - 4F-SUE-FAB146508,Complete,IT/Security 18 - 4F -SUE-FAB146508,,,,,,,,2025-09-29 08:00,2025-09-30 17:00,2025-09-29 08:00,2025-09-30 17:00
TR-FAB146508A-01,IMPACT - INSTALL/REWORK DRYWALL FRAMING AROUND DOORS - TR - FAB146508A,Complete,IT/Security 18 - 4F -SUE-FAB146508,,,,,,,,2025-09-29 08:00,2025-09-30 17:00,2025-09-29 08:00,2025-09-30 17:00
ZX-11920,Complete Drywall & Inspect - Fire Alarm 18 - 4F-FAB146506,Complete,Fire Alarm 18 - 4F -SUE-FAB146506,,,,,,,,2025-06-26 08:00,2025-07-04 17:00,2025-06-10 08:00,2025-06-16 16:00
FAB146506A-01,IMPACT - INSTALL/REWORK DRYWALL FRAMING AROUND DOORS - FAB146506A,Complete,Fire Alarm 18 - 4F -SUE-FAB146506,,,,,,,,2025-09-03 08:00,2025-09-04 17:00,2025-09-03 08:00,2025-09-04 17:00
ZX-12160,Complete Drywall & Inspect - Elevator Hall #18 - 4F-SUE-FAB146507,Complete,Elevator Hall 18 - 4F -SUE-FAB146507,,,,,,,,2025-06-30 08:00,2025-07-08 17:00,2025-06-10 08:00,2025-06-30 16:00
FAB146507C-01,IMPACT - INSTALL/REWORK DRYWALL FRAMING AROUND DOORS - FAB146507C,Complete,Elevator Hall 18 - 4F -SUE-FAB146507,,,,,,,,2025-07-09 08:00,2025-07-10 17:00,2025-07-09 08:00,2025-07-10 17:00
ZX-12460,Complete Drywall & Inspect - Elevator #18 - 4F-1FAB-EL18,Complete,Elevator 18 - 4F -SUE-FAB1-EL18,,,,,,,,2025-07-18 08:00,2025-07-28 17:00,2025-07-18 08:00,2025-07-28 17:00
ZX-12760,Complete Drywall & Inspect - NE Breezway-4F,Complete,NE Breezway - 4F - SUE,,,,,,,,2025-09-04 08:00,2025-09-16 17:00,2025-09-04 08:00,2025-09-11 17:00
ZX-11890,Complete Drywall & Inspect - I/O Rm 2 - 4F-SUE-FAB146502,Complete,I/O Rm 2 - 4F -SUE-FAB146502,,,,,,,,2025-05-29 08:00,2025-06-06 17:00,2025-05-14 08:00,2025-05-19 16:00
ZX-12070,Complete Drywall & Inspect - MCC Rm 2 - 4F-SUE-FAB146503 NON RATED WALLS,Complete,MCC Rm 2 - 4F -SUE-FAB146503,,,,,,,,2025-06-12 08:00,2025-06-23 17:00,2025-05-23 08:00,2025-05-28 16:00
ZX-18670,Complete Drywall & Inspect CATCH-UP - MCC Rm 2 - 4F-SUE-FAB146503,Complete,MCC Rm 2 - 4F -SUE-FAB146503,,,,,,,,2025-06-13 08:00,2025-06-23 17:00,2025-06-13 08:00,2025-06-27 16:00
ZX-12370,Complete Drywall & Inspect - 4F-D-G/33,Complete,4F-D-G/33 - 4F - SUE,,,,,,,,2025-06-06 08:00,2025-06-19 17:00,2025-05-26 08:00,2025-05-29 16:00
ZX-12670,Complete Drywall & Inspect - 4F-G.3-K/33,Complete,4F-G.3-K/33 - 4F - SUW,,,,,,,,2025-09-25 08:00,2025-09-29 17:00,2025-09-25 08:00,2025-09-29 17:00
ZX-12220,Complete Drywall & Inspect - 4F-K/33-3,Complete,4F-K/33-3 - 4F - SUW,,,,,,,,2025-07-09 08:00,2025-07-29 17:00,2025-06-23 08:00,2025-06-30 16:00
ZX-12520,Complete Drywall & Inspect - IT/Security 5 - 4F-SUW-FAB140503,Complete,IT/Security 5 - 4F -SUW-FAB140503,,,,,,,,2025-05-27 08:00,2025-05-28 17:00,2025-05-27 08:00,2025-05-28 16:00
TR-FAB140503A-01,IMPACT - INSTALL/REWORK DRYWALL FRAMING AROUND DOORS - TR - FAB140503A,Complete,IT/Security 5 - 4F -SUW-FAB140503,,,,,,,,2025-05-01 08:00,2025-05-02 17:00,2025-05-01 08:00,2025-05-02 17:00
ZX-12820,Complete Drywall & Inspect - Fire Alarm 5 - 4F-FAB140507,Complete,Fire Alarm 5 - 4F -SUW-FAB140507,,,,,,,,2025-05-16 08:00,2025-05-19 17:00,2025-05-16 08:00,2025-05-21 16:00
ZX-12040,Complete Drywall & Inspect - Elevator Hall #05 - 4F-SUW-FAB140508,Complete,Elevator Hall 5 - 4F -SUW-FAB140508,,,,,,,,2025-09-01 08:00,2025-09-05 17:00,2025-09-01 08:00,2025-09-05 17:00
ZX-12340,Complete Drywall & Inspect - Elevator #05 - 4F-1FAB-EL5,Complete,Elevator 5 - 4F -SUW-FAB1-EL05,,,,,,,,2025-09-29 08:00,2025-09-30 17:00,2025-09-29 08:00,2025-09-30 17:00
ZX-12640,Complete Drywall & Inspect - NW Breezway 4F,Complete,NW Breezway - 4F - SUW,,,,,,,,2025-10-01 08:00,2025-10-14 17:00,2025-10-01 08:00,2025-10-13 17:00
ZX-12130,Complete Drywall & Inspect - I/O Rm 2 - 4F-SUW-FAB140501 NON RATED WALLS,Complete,I/O Rm 2 - 4F - SUW-FAB140501,,,,,,,,2025-06-13 08:00,2025-06-23 17:00,2025-06-13 08:00,2025-06-19 16:00
ZX-12430,Complete Drywall & Inspect - MCC Rm 2 - 4F-SUW-FAB140509 NON RATED WALLS,Complete,MCC Rm 2 - 4F -SUW-FAB140509,,,,,,,,2025-06-10 08:00,2025-06-19 17:00,2025-06-10 08:00,2025-08-01 17:00
ZX-12730,SECAI TOOK OVER FOR DESIGN ISSUES - Complete Drywall & Inspect - Rated Chase West - 4F-SUW-FAB140510,Complete,Rated Chase West - 4F -SUW-FAB140510,,,,,,,,2025-08-04 08:00,2025-08-15 17:00,2025-08-15 08:00,2025-08-15 17:00
ZX-12280,Complete Drywall & Inspect - Duct Shaft - 4F-SUW-FAB140502 (MK MARLOW),Complete,Duct Shaft - 4F -SUW-FAB140502,,,,,,,,2025-09-02 08:00,2025-09-08 17:00,2025-09-02 08:00,2025-09-08 17:00
ZX-12580,Complete Drywall & Inspect - Vestibule 3 - 4F-SUW-FAB140303,Complete,Vestibule 3 - 4F -SUW-FAB140303,,,,,,,,2025-06-19 08:00,2025-06-27 17:00,2025-06-10 08:00,2025-08-08 17:00
ZX-12880,Complete Drywall & Inspect - Voc CTR Rm - 4F-SUW-FAB140301,Complete,Voc CTR Rm - 4F -SUW-FAB140301,,,,,,,,2025-06-23 08:00,2025-07-01 17:00,2025-05-15 08:00,2025-05-19 16:00
ZX-12250,Complete Drywall & Inspect - Duct Shaft - 4F-SUW-FAB140201 (MK MARLOW),Complete,Duct Shaft - 4F -SUW-FAB140201,,,,,,,,2025-09-02 08:00,2025-09-08 17:00,2025-09-02 08:00,2025-09-08 17:00
FAB140201A-01,IMPACT - INSTALL/REWORK DRYWALL FRAMING AROUND DOORS - FAB140201A,Complete,Duct Shaft - 4F -SUW-FAB140201,,,,,,,,2025-07-30 08:00,2025-08-07 17:00,2025-07-11 08:00,2025-07-11 17:00
ZX-12550,Complete Drywall & Inspect - IT/Security 1 - 4F-SUW-FAB140105,Complete,IT/Security 1 - 4F -SUW-FAB140105,,,,,,,,2025-06-16 08:00,2025-06-17 17:00,2025-06-02 08:00,2025-06-04 16:00
ZX-12850,Complete Drywall & Inspect - Fire Alarm 1 - 4F-SUW-FAB140103,Complete,Fire Alarm 1 - 4F -SUW-FAB140103,,,,,,,,2025-06-10 08:00,2025-06-18 17:00,2025-06-10 08:00,2025-06-16 16:00
ZX-12190,Complete Drywall & Inspect - Elevator Hall #01 - 4F-SUW-FAB140101,Complete,Elevator Hall 1 - 4F -SUW-FAB140101,,,,,,,,2025-09-04 08:00,2025-09-08 17:00,2025-09-04 08:00,2025-09-08 17:00
ZX-12490,SECAI TOOK OVER FOR ACCELERATION - Drywall & Inspect - Elevator #01 - 4F-1FAB-EL,Complete,Elevator 1 - 4F -SUW-FAB1-EL01,,,,,,,,2025-09-09 08:00,2025-09-19 17:00,2025-09-19 08:00,2025-09-19 17:00
ZX-16600,IMPACT - Complete Drywall & Inspect - Elevator #01 - 4F-1FAB-EL - ELEVATOR TEAM TOOK OVER,Complete,Elevator 1 - 4F -SUW-FAB1-EL01,,,,,,,,2025-05-05 08:00,2025-05-23 17:00,2025-05-05 08:00,2025-09-15 17:00
ZX-12790,Complete Drywall & Inspect - Elevator #1B - 4F-1FAB-EL1B (Only missing FRONT by MK MARLOW),Complete,Elevator 1B-4F-1FAB-EL1B,,,,,,,,2025-05-16 08:00,2025-05-29 17:00,2025-05-16 08:00,2025-08-01 08:00
ZX-13030,Complete Drywall & Inspect - MCC Rm - 4F-SUW-FAB140106,Complete,MCC Rm - 4F -SUW-FAB140106,,,,,,,,2025-05-13 08:00,2025-05-15 17:00,2025-05-13 08:00,2025-05-15 16:00
FAB140106A-01,IMPACT - INSTALL/REWORK DRYWALL FRAMING AROUND DOORS - FAB140106A,Complete,MCC Rm - 4F -SUW-FAB140106,,,,,,,,2025-09-08 08:00,2025-09-09 17:00,2025-09-08 08:00,2025-09-09 17:00
ZX-13330,Complete Drywall & Inspect - I/O Rm - 4F-SUW-FAB140109 NON RATED WALLS,Complete,I/O Rm - 4F -SUW-FAB140109,,,,,,,,2025-06-11 08:00,2025-06-16 17:00,2025-06-11 08:00,2025-06-16 16:00
ZX-13630,Complete Drywall & Inspect - Duct Shaft - 4F-SUW-FAB140104 (MK MARLOW),Complete,Duct Shaft - 4F -SUW-FAB140104,,,,,,,,2025-09-02 08:00,2025-09-08 17:00,2025-09-02 08:00,2025-09-08 17:00
FAB140104A-01,IMPACT - INSTALL/REWORK DRYWALL FRAMING AROUND DOORS - FAB140104A,Complete,Duct Shaft - 4F -SUW-FAB140104,,,,,,,,2025-05-01 08:00,2025-05-09 17:00,2025-05-01 08:00,2025-05-06 17:00
ZX-12970,Complete Drywall & Inspect - Elevator Machine - 5F-FAB140110,Complete,Elevator Machine - 4F -SUW-FAB140110,,,,,,,,2025-09-04 08:00,2025-09-05 17:00,2025-09-04 08:00,2025-09-05 17:00
ZX-13540,Complete Drywall & Inspect - 4F-D-G/3 North Face,Complete,4F-D-G/3 North Face - 4F - SUE,,,,,,,,2025-09-04 08:00,2025-09-08 17:00,2025-09-04 08:00,2025-09-08 17:00
ZX-16750,Complete Drywall & Inspect - Stair #03 SUW- 4F- FAB1-ST03,Complete,Stair 3 - 4F -SUW-FAB1-ST03,,,,,,,,2025-05-13 08:00,2025-05-26 17:00,2025-05-13 08:00,2025-10-03 08:00
ZX-16780,Complete Drywall CEILING & Inspect - Stair #03 SUW- 4F- FAB1-ST03,Complete,Stair 3 - 4F -SUW-FAB1-ST03,,,,,,,,2025-09-29 08:00,2025-10-03 17:00,2025-09-29 08:00,2025-10-03 17:00
ZX-17560,IMPACT RFI Drywall CEILING - Stair #03,Complete,Stair 3 - 4F -SUW-FAB1-ST03,,,,,,,,2025-06-16 08:00,2025-06-20 17:00,2025-06-16 08:00,2025-06-18 16:00
ZX-16970,Complete Drywall & Inspect - Stair #20 SUE- 4F- FAB1-ST20,Complete,Stair 20 - 4F-SUE-FAB1-ST20,,,,,,,,2025-05-13 08:00,2025-05-26 17:00,2025-05-13 08:00,2025-09-30 08:00
ZX-17000,Complete Drywall CEILING & Inspect - Stair #20 SUE- 4F- FAB1-ST20,Complete,Stair 20 - 4F-SUE-FAB1-ST20,,,,,,,,2025-09-29 08:00,2025-10-03 17:00,2025-09-29 08:00,2025-10-03 17:00
ZX-17570,IMPACT RFI Drywall CEILING - Stair #20,Complete,Stair 20 - 4F-SUE-FAB1-ST20,,,,,,,,2025-06-16 08:00,2025-06-20 17:00,2025-06-16 08:00,2025-06-19 16:00
ZX-18560,Complete Drywall & Inspect - MCC Rm - 4F-SUW-FAB140106,Complete,TRUSS AREA VESTIBULE - 4F -FIZ-FAB142102 (LVL 4G),,,,,,,,2025-05-13 08:00,2025-05-15 17:00,2025-05-13 08:00,2025-05-15 16:00
ZX-1120,Complete Drywall & Inspect - Airlock #1-Airlock 1 - 3F-FAB130110,Complete,Air Lock 1 - 3F -SUW-FAB130110,,,,,,,,2025-05-05 08:00,2025-05-08 17:00,2025-05-05 08:00,2025-05-08 16:00
ZX-1180,Complete Drywall & Inspect - Airlock #5-Airlock 5 - 3F-FAB130505,Complete,Air Lock 5 - 3F -SUW-FAB130505,,,,,,,,2025-05-05 08:00,2025-05-13 17:00,2025-05-05 08:00,2025-05-19 16:00
ZX-17350,IMPACT - SECAI DENIAL OF ACCEL COST FOR BERG - Complete Drywall & Inspect - Airlock #5-Airlock 5 - 3F-FAB130505,Complete,Air Lock 5 - 3F -SUW-FAB130505,,,,,,,,2025-05-05 08:00,2025-05-13 17:00,2025-05-12 08:00,2025-05-16 16:00
FAB130505C-01,IMPACT - INSTALL/REWORK DRYWALL FRAMING AROUND DOORS - FAB136102C,Complete,Air Lock 5 - 3F -SUW-FAB130505,,,,,,,,2025-07-29 08:00,2025-08-06 17:00,2025-07-29 08:00,2025-08-06 17:00
ZX-1210,Complete Drywall & Inspect - Vestibule #22 - 3F-FAB136108,Complete,Vestibule 22 - 3F -SUE-FAB136108,,,,,,,,2025-09-23 08:00,2025-09-25 17:00,2025-09-23 08:00,2025-09-25 17:00
ZX-16430,IMPACT - SECAI DENIAL OF ACCEL COST FOR BERG - Complete Drywall & Inspect - Vestibule #22 - 3F-FAB136108,Complete,Vestibule 22 - 3F -SUE-FAB136108,,,,,,,,2025-05-05 08:00,2025-05-30 17:00,2025-05-05 08:00,2025-05-18 16:00
ZX-1240,Complete Drywall & Inspect - Elevator Hall #22 - 3F-FAB136107,Complete,Elevator Hall 22 - 3F -SUE-FAB136107,,,,,,,,2025-08-07 10:00,2025-08-18 10:00,2025-08-07 10:00,2025-08-18 10:00
FAB136107D-01,IMPACT - INSTALL/REWORK DRYWALL FRAMING AROUND DOORS - FAB136107D,Complete,Elevator Hall 22 - 3F -SUE-FAB136107,,,,,,,,2025-09-22 10:00,2025-10-01 10:00,2025-03-27 10:00,2025-04-04 10:00
ZX-1270,Complete Drywall & Inspect - Clean Vestibule #21 - 3F- FAB136203,Complete,Clean Vestibule 21 - 3F -SUE-FAB136203,,,,,,,,2025-06-10 08:00,2025-06-10 08:00,2025-05-26 08:00,2025-05-27 15:00
ZX-16620,IMPACT - MEP OPENING - Complete Drywall & Inspect - Clean Vestibule #21 - 3F- FAB136203,Complete,Clean Vestibule 21 - 3F -SUE-FAB136203,,,,,,,,2025-05-05 08:00,2025-05-05 08:00,2025-05-05 08:00,2025-06-19 16:00
ZX-18180,IMPACT - DRYWALL for mep opening - Clean Vestibule #21 - 3F- FAB136203,Complete,Clean Vestibule 21 - 3F -SUE-FAB136203,,,,,,,,2025-06-20 08:00,2025-06-23 17:00,2025-06-19 08:00,2025-06-20 16:00
ZX-1300,SECAI TURNOVER FOR ACELERATION - Complete Drywall & Inspect - Elevator Hall #20 - 3F-FAB136311,Complete,Elevator Hall 20 - 3F -SUE-FAB136311,,,,,,,,2025-08-12 08:00,2025-08-20 17:00,2025-07-18 08:00,2025-07-18 17:00
ZX-1330,Complete Drywall & Inspect - Vestibule #20 - 3F-FAB136310,Complete,Vestibule 20 - 3F -SUE-FAB136310,,,,,,,,2025-05-05 08:00,2025-05-07 17:00,2025-05-05 08:00,2025-05-13 08:00
ZX-1360,SECAI TOOK OVER FOR ACCELERATION - Complete Drywall & Inspect - Clean Vestibule #19 - 3F-FAB136406,Complete,Clean Vestibule 19 - 3F -SUE-FAB136406,,,,,,,,2025-10-21 08:00,2025-10-22 17:00,2025-10-22 08:00,2025-10-22 17:00
ZX-1390,SECAI TOOK OVER FOR ACCELERATION - Complete Drywall & Inspect - Clean Vestibule #19 - 3F-FAB136407,Complete,Clean Vestibule 19 - 3F -SUE-FAB136407,,,,,,,,2025-10-22 08:00,2025-10-22 17:00,2025-10-22 08:00,2025-10-22 17:00
ZX-1450,Complete Drywall & Inspect - Wafer I/O Entrance - 3F-FAB136501,Complete,Wafer I/O Entrance - 3F -SUE-FAB136501,,,,,,,,2025-06-10 08:00,2025-06-23 17:00,2025-06-02 08:00,2025-06-10 16:00
ZX-1480,Complete Drywall & Inspect - Vestibule #18 - 3F-FAB136505,Complete,Vestibule 18 - 3F -SUE-FAB136505,,,,,,,,2025-05-05 08:00,2025-05-09 17:00,2025-05-05 08:00,2025-05-14 16:00
FAB136505B-01,IMPACT - INSTALL/REWORK DRYWALL FRAMING AROUND DOORS- FAB136505B,Complete,Vestibule 18 - 3F -SUE-FAB136505,,,,,,,,2025-06-23 08:00,2025-07-01 17:00,2025-01-08 08:00,2025-01-16 16:00
ZX-1510,Complete Drywall & Inspect - Vestibule #5 - 3F-FAB130504,Complete,Vestibule 5 - 3F -SUW-FAB130504,,,,,,,,2025-05-16 08:00,2025-05-21 17:00,2025-05-16 08:00,2025-05-21 16:00
ZX-16510,IMPACT - Complete Drywall & Inspect - Vestibule #5 - 3F-FAB130504 INPSECTION,Complete,Vestibule 5 - 3F -SUW-FAB130504,,,,,,,,2025-05-12 08:00,2025-05-16 17:00,2025-05-09 08:00,2025-05-14 16:00
ZX-1540,Complete Drywall & Inspect - Elevator Hall #05 - 3F-FAB130505,Complete,Elevator Hall 5 - 3F -SUW-FAB130505,,,,,,,,2025-09-12 08:00,2025-09-15 17:00,2025-09-12 08:00,2025-09-15 17:00
ZX-1570,Complete Drywall & Inspect - CRT Lab Entrance - 3F-FAB130507,Complete,CRT Lab Entrance - 3F -SUW-FAB130507,,,,,,,,2025-05-05 08:00,2025-05-23 17:00,2025-05-05 08:00,2025-05-13 16:00
FAB130507B-01,IMPACT - INSTALL/REWORK DRYWALL FRAMING AROUND DOORS- FAB130507B,Complete,CRT Lab Entrance - 3F -SUW-FAB130507,,,,,,,,2025-05-15 08:00,2025-05-23 17:00,2025-05-07 08:00,2025-05-15 17:00
ZX-1600,Complete Drywall & Inspect - Clean Vestibule #04 - 3F-FAB130403,Complete,Clean Vestibule 4 -3F -SUW-FAB130403,,,,,,,,2025-06-20 08:00,2025-06-30 17:00,2025-06-13 08:00,2025-06-23 16:00
ZX-1630,Complete Drywall & Inspect - Clean Vestibule @M/17 - 3F-FAB130320 NON RATED WALLS,Complete,Clean Vestibule @M/17 - 3F -SUW-FAB130320,,,,,,,,2025-06-24 08:00,2025-07-11 17:00,2025-06-24 08:00,2025-08-12 17:00
ZX-17370,IMPACT - MEP WORK BLOCKING - Complete Drywall & Inspect - Clean Vestibule @M/17 - 3F-FAB130320,Complete,Clean Vestibule @M/17 - 3F -SUW-FAB130320,,,,,,,,2025-05-05 08:00,2025-05-22 17:00,2025-05-05 08:00,2025-06-23 16:00
ZX-1660,Complete Drywall & Inspect - SUB Clean Rm. Airlock - 3F-FAB130315,Complete,SUB Clean Rm. Airlock - 3F -SUW-FAB130315,,,,,,,,2025-05-13 08:00,2025-05-21 17:00,2025-05-13 08:00,2025-09-12 17:00
ZX-16520,IMPACT - Complete Drywall & Inspect - SUB Clean Rm. Airlock - 3F-FAB130315 SECAI DENIAL OF ACCEL COST FOR BERG,Complete,SUB Clean Rm. Airlock - 3F -SUW-FAB130315,,,,,,,,2025-05-05 08:00,2025-05-12 17:00,2025-05-05 08:00,2025-05-12 16:00
FAB130315A-01,IMPACT - INSTALL/REWORK DRYWALL FRAMING AROUND DOORS - FAB130315A,Complete,SUB Clean Rm. Airlock - 3F -SUW-FAB130315,,,,,,,,2025-07-24 08:00,2025-08-01 17:00,2025-07-24 08:00,2025-08-01 17:00
ZX-1690,Complete Drywall & Inspect - Clean Toilet Corridor - 3F-FAB130319,Complete,Clean Toilet Corridor - 3F -SUW-FAB130319,,,,,,,,2025-06-10 08:00,2025-06-23 17:00,2025-05-26 08:00,2025-06-05 16:00
FAB130319C-01,IMPACT - INSTALL/REWORK DRYWALL FRAMING AROUND DOORS - FAB130319C,Complete,Clean Toilet Corridor - 3F -SUW-FAB130319,,,,,,,,2025-06-27 08:00,2025-07-07 17:00,2025-02-19 08:00,2025-02-27 16:00
ZX-1720,SECAI TURNOVER FOR ACELERATION - Drywall & Inspect - Elevator Hall #03 - 3F-FAB130310 BAKER/DESCOPE,Complete,Elevator Hall 3 - 3F -SUW-FAB130310,,,,,,,,2025-06-27 08:00,2025-07-10 17:00,2025-06-27 08:00,2025-06-27 16:00
ZX-1750,Complete Drywall & Inspect - Vestibule #3 - 3F-FAB130303,Complete,Vestibule 3 - 3F -SUW-FAB130303,,,,,,,,2025-05-16 08:00,2025-05-27 17:00,2025-05-21 08:00,2025-05-27 08:00
ZX-16420,IMPACT - SECAI DENIAL OF ACCEL COST FOR BERG - Complete Drywall & Inspect - Vestibule #3 - 3F-FAB130303,Complete,Vestibule 3 - 3F -SUW-FAB130303,,,,,,,,2025-05-09 08:00,2025-05-12 17:00,2025-05-09 08:00,2025-05-19 16:00
ZX-1150,Complete Drywall & Inspect - Airlock 3 - 3F-SUW-FAB130302,Complete,Air Lock 3 - 3F -SUW-FAB130302,,,,,,,,2025-05-05 08:00,2025-05-09 17:00,2025-05-05 08:00,2025-05-30 16:00
ZX-17380,IMPACT - RFI SOFFIT DETAIL DESIGN - Complete Drywall & Inspect - Airlock 3 - 3F-SUW-FAB130302,Complete,Air Lock 3 - 3F -SUW-FAB130302,,,,,,,,2025-05-05 08:00,2025-05-09 17:00,2025-05-06 08:00,2025-05-16 08:00
ZX-1060,Complete Drywall & Inspect - Airlock #20-Airlock 20 - 3F-FAB136312,Complete,Air Lock 20 - 3F -SUE-FAB136312,,,,,,,,2025-05-05 08:00,2025-05-08 17:00,2025-05-05 08:00,2025-05-08 16:00
ZX-1030,Complete Drywall & Inspect - Airlock #22-Airlock 22 - 3F-FAB136109,Complete,Air Lock 22 - 3F -SUE-FAB136109,,,,,,,,2025-05-05 08:00,2025-05-07 17:00,2025-05-05 08:00,2025-05-24 16:00
ZX-16490,IMPACT - Complete Drywall & Inspect - Airlock #22-Airlock 22 - 3F-FAB136109 INSPECTIONS,Complete,Air Lock 22 - 3F -SUE-FAB136109,,,,,,,,2025-05-05 08:00,2025-05-07 17:00,2025-05-05 08:00,2025-05-16 16:00
TR-FAB130109A-01,IMPACT - INSTALL/REWORK DRYWALL FRAMING AROUND DOORS - TR - FAB130109A,Complete,Air Lock 22 - 3F -SUE-FAB136109,,,,,,,,2025-07-09 08:00,2025-07-16 17:00,2025-07-09 08:00,2025-07-16 17:00
ZX-1810,Complete Drywall & Inspect - Elevator #22 - 3F-FAB1-EL22,Complete,Elevator 22 - 3F -SUE-FAB1-EL22,,,,,,,,2025-07-28 08:00,2025-07-30 17:00,2025-07-28 08:00,2025-08-19 17:00
ZX-1840,Complete Drywall & Inspect - Elevator #20 - 3F-FAB1-EL20,Complete,Elevator 20 - 3F -SUE-FAB1-EL20,,,,,,,,2025-05-05 08:00,2025-05-16 17:00,2025-05-19 08:00,2025-05-28 16:00
ZX-1870,Complete Drywall & Inspect - Elevator #19 - 3F-FAB1-EL19,Complete,Elevator 19 - 3F -SUE-FAB1-EL19,,,,,,,,2025-06-30 08:00,2025-07-23 12:00,2025-06-30 08:00,2025-08-19 17:00
ZX-1900,Complete Drywall & Inspect - Elevator Hall #18 - 3F-FAB136504,Complete,Elevator Hall 18 - 3F -SUE-FAB136504,,,,,,,,2025-10-10 08:00,2025-10-13 17:00,2025-10-10 08:00,2025-10-13 17:00
ZX-1930,Complete Drywall & Inspect - Elevator #18 - 3F-FAB1-EL18 - MKM,Complete,Elevator 18- 3F -SUE-FAB1-EL18,,,,,,,,2025-07-25 08:00,2025-08-07 17:00,2025-07-21 08:00,2025-07-28 17:00
ZX-1960,Complete Drywall & Inspect - Elevator #05 - 3F-FAB1-EL5,Complete,Elevator 5 - 3F -SUW-FAB1-EL05,,,,,,,,2025-09-29 08:00,2025-09-30 17:00,2025-09-29 08:00,2025-09-30 17:00
ZX-1990,SECAI TOOK OVER FOR ACCELERATION - Complete Drywall & Inspect - Elevator #03 - 3F-FAB1-EL3,Complete,Elevator 3 - 3F -SUW-FAB1-EL03,,,,,,,,2025-05-05 08:00,2025-05-16 17:00,2025-05-05 08:00,2025-05-12 17:00
ZX-17320,IMPACT - SECAI OPEN FOR USE - Drywall & Inspect - Elevator #03 - 3F-FAB1-EL3,Complete,Elevator 3 - 3F -SUW-FAB1-EL03,,,,,,,,2025-05-05 08:00,2025-05-16 17:00,2025-05-12 08:00,2025-05-12 17:00
ZX-2020,Complete Drywall & Inspect - Vestibule #1 - 3F-FAB130111,Complete,Vestibule 1 - 3F -SUW-FAB130111,,,,,,,,2025-05-05 08:00,2025-05-22 17:00,2025-05-05 08:00,2025-05-28 16:00
FAB120311A-01,IMPACT - INSTALL/REWORK DRYWALL FRAMING AROUND DOORS - FAB120311A,Complete,Fire Alarm 3 - 2F -SUW-FAB120311,,,,,,,,2025-03-21 08:00,2025-03-31 17:00,2025-03-21 08:00,2025-03-31 17:00
ZX-2050,Complete Drywall & Inspect - Elevator #02 - 3F-FAB1-EL2,Complete,Elevator 2 - 3F -SUW-FAB1-EL02,,,,,,,,2025-10-22 08:00,2025-10-28 17:00,2025-10-22 08:00,2025-10-28 17:00
ZX-2110,SECAI TOOK OVER FOR ACCELERATION - Drywall & Inspect - Elevator #01 - 3F-FAB1-EL1,Complete,Elevator 1 - 3F -SUW-FAB1-EL01,,,,,,,,2025-09-09 08:00,2025-09-19 17:00,2025-09-19 08:00,2025-09-19 17:00
ZX-16480,IMPACT - Complete Drywall & Inspect - Elevator #01 - 3F-FAB1-EL1 ELEVATOR TEAM TOOK OVER,Complete,Elevator 1 - 3F -SUW-FAB1-EL01,,,,,,,,2025-05-05 08:00,2025-05-23 17:00,2025-05-05 08:00,2025-09-15 17:00
ZX-2140,Complete Drywall & Inspect - Elevator #01A - 3F-FAB1-EL1A,Complete,Elevator 1A - 3F -SUW-FAB1-EL01A,,,,,,,,2025-05-05 08:00,2025-05-22 17:00,2025-05-05 08:00,2025-06-13 16:00
ZX-17310,IMPACT - SECAI SCAFFOLD - Drywall & Inspect - Elevator #01A - 3F-FAB1-EL1A,Complete,Elevator 1A - 3F -SUW-FAB1-EL01A,,,,,,,,2025-05-05 08:00,2025-05-22 17:00,2025-05-12 08:00,2025-05-28 14:00
ZX-2170,Complete Drywall & Inspect - Elevator #1B - 3F-FAB1-EL1B - MK MARLOW FRONTS ONLY,Complete,Elevator 1B - 3F -SUW-FAB1-EL01B,,,,,,,,2025-06-27 08:00,2025-07-16 17:00,2025-06-27 08:00,2025-07-28 17:00
ZX-16500,IMPACT - Complete Drywall & Inspect - Elevator #01B - 3F-FAB1-EL1B RFI PENDING,Complete,Elevator 1B - 3F -SUW-FAB1-EL01B,,,,,,,,2025-05-13 08:00,2025-05-26 17:00,2025-05-05 08:00,2025-06-10 16:00
ZX-2200,Complete Drywall & Inspect - VIP Tour - 3F-FAB134101 NON RATED WALLS,Complete,VIP Tour - 3F -FIZ-FAB134101,,,,,,,,2025-06-05 08:00,2025-06-24 17:00,2025-05-12 08:00,2025-08-28 08:00
FAB134101D-01,IMPACT - INSTALL/REWORK DRYWALL FRAMING AROUND DOORS - FAB134101D,Complete,VIP Tour - 3F -FIZ-FAB134101,,,,,,,,2025-10-16 08:00,2025-10-17 17:00,2025-10-16 08:00,2025-10-17 17:00
ZX-2230,Complete Drywall & Inspect - VIP Tour Vestibule - 3F-FAB134103 NON RATED WALLS,Complete,VIP Tour Vestibule - 3F -FIZ-FAB134103,,,,,,,,2025-06-19 08:00,2025-06-27 17:00,2025-05-12 08:00,2025-06-16 16:00
ZX-2260,Complete Drywall & Inspect - Vestibule @ F.4/1 - 3F-FAB134104,Complete,Vestibule @ F.4/1 - 3F -FIZ-FAB134104,,,,,,,,2025-09-01 08:00,2025-09-05 17:00,2025-09-01 08:00,2025-09-05 17:00
ZX-2290,Complete Drywall & Inspect - Unassigned - 3F-FAB132102,Complete,Unassigned - 3F - FIZ-FAB134102,,,,,,,,2025-08-15 08:00,2025-08-25 17:00,2025-08-15 08:00,2025-09-05 17:00
ZX-2320,Complete Drywall & Inspect - Smock Locker@A-D/1-2 - 3F-FAB134106,Complete,Smock Locker@A-D/1-2 - 3F -FIZ-FAB134106,,,,,,,,2025-08-12 08:00,2025-08-18 17:00,2025-08-12 08:00,2025-08-18 17:00
ZX-16640,IMPACT SG PANELS TO BE REMOVED - Complete Drywall & Inspect - Smock Locker@A-D/1-2 - 3F-FAB134106,Complete,Smock Locker@A-D/1-2 - 3F -FIZ-FAB134106,,,,,,,,2025-05-05 08:00,2025-05-16 17:00,2025-05-05 08:00,2025-09-05 17:00
ZX-2410,Complete Drywall & Inspect - Duct Shaft - 3F-SUE-FAB136105,Complete,Duct Shaft - 3F -SUE-FAB136105,,,,,,,,2025-09-05 08:00,2025-09-11 17:00,2025-09-05 08:00,2025-09-11 17:00
FAB136105A-01,IMPACT - INSTALL/REWORK DRYWALL FRAMING AROUND DOORS - FAB136105A,Complete,Duct Shaft - 3F -SUE-FAB136105,,,,,,,,2025-05-05 08:00,2025-05-06 17:00,2025-05-05 08:00,2025-05-06 17:00
ZX-2380,Complete Drywall & Inspect - Fire Alarm - 3F-FAB136114,Complete,Fire Alarm 22 - 3F -SUE-FAB136114,,,,,,,,2024-12-09 08:00,2024-12-09 08:00,2024-12-09 08:00,2024-12-12 16:00
ZX-2500,SECAI TOOK OVER FOR ACCELERATION Drywall & Inspect - Electrical Rm - 3F-SUE-FAB136302,Complete,Electrical Rm - 3F -SUE-FAB136302,,,,,,,,2025-07-21 13:00,2025-08-06 12:00,2025-06-16 12:00,2025-11-05 08:00
FAB136302A-01,IMPACT - INSTALL/REWORK DRYWALL FRAMING AROUND DOORS - FAB136302A HANDED OVER TO SECAI ON 08/29,Complete,Electrical Rm - 3F -SUE-FAB136302,,,,,,,,2025-08-18 08:00,2025-08-26 17:00,2025-08-29 08:00,2025-08-29 17:00
FAB136302C-01,IMPACT - INSTALL/REWORK DRYWALL FRAMING AROUND DOORS - FAB136302C HANDED OVER TO SECAI ON 08/29,Complete,Electrical Rm - 3F -SUE-FAB136302,,,,,,,,2025-08-28 08:00,2025-08-29 17:00,2025-08-29 08:00,2025-08-29 17:00
FAB136302D-01,IMPACT - INSTALL/REWORK DRYWALL FRAMING AROUND DOORS - FAB136302D,Complete,Electrical Rm - 3F -SUE-FAB136302,,,,,,,,2025-01-17 08:00,2025-01-27 17:00,2025-01-17 08:00,2025-01-27 17:00
FAB136302E-01,IMPACT - INSTALL/REWORK DRYWALL FRAMING AROUND DOORS - FAB136302E,Complete,Electrical Rm - 3F -SUE-FAB136302,,,,,,,,2025-05-16 08:00,2025-05-26 17:00,2025-05-16 08:00,2025-05-21 17:00
FAB136302F-01,IMPACT - INSTALL/REWORK DRYWALL FRAMING AROUND DOORS - FAB136302F,Complete,Electrical Rm - 3F -SUE-FAB136302,,,,,,,,2025-04-28 08:00,2025-05-06 17:00,2025-04-28 08:00,2025-05-06 17:00
FAB136302G-01,IMPACT - INSTALL/REWORK DRYWALL FRAMING AROUND DOORS - FAB136302G HANDED OVER TO SECAI ON 08/29,Complete,Electrical Rm - 3F -SUE-FAB136302,,,,,,,,2025-08-28 08:00,2025-08-29 17:00,2025-08-29 08:00,2025-08-29 17:00
FAB136302H-01,IMPACT - INSTALL/REWORK DRYWALL FRAMING AROUND DOORS - FAB136302H,Complete,Electrical Rm - 3F -SUE-FAB136302,,,,,,,,2025-01-16 08:00,2025-01-24 17:00,2025-01-16 08:00,2025-01-24 17:00
FAB136302J-01,IMPACT - INSTALL/REWORK DRYWALL FRAMING AROUND DOORS - FAB136302J HANDED OVER TO SECAI ON 08/29,Complete,Electrical Rm - 3F -SUE-FAB136302,,,,,,,,2025-08-28 08:00,2025-08-29 17:00,2025-08-29 08:00,2025-08-29 17:00
ZX-2590,Complete Drywall & Inspect - Duct Shaft - 3F-SUE-FAB136301,Complete,Duct Shaft - 3F -SUE-FAB136301,,,,,,,,2025-09-26 08:00,2025-09-29 17:00,2025-09-26 08:00,2025-09-29 17:00
ZX-2950,Complete Drywall & Inspect - Duct Shaft - 3F-SUE-FAB136106,Complete,Duct Shaft - 3F -SUE-FAB136106,,,,,,,,2025-10-03 08:00,2025-10-06 17:00,2025-10-03 08:00,2025-10-06 17:00
FAB136106A-01,IMPACT - INSTALL/REWORK DRYWALL FRAMING AROUND DOORS - FAB136106A,Complete,Duct Shaft - 3F -SUE-FAB136106,,,,,,,,2025-01-14 08:00,2025-01-15 17:00,2025-01-14 08:00,2025-01-15 17:00
ZX-2650,Complete Drywall & Inspect - Battery Rm1 - 3F-SUE-FAB136202,Complete,Battery Rm 1 - 3F -SUE-FAB136202,,,,,,,,2025-06-26 08:00,2025-07-09 17:00,2025-06-16 08:00,2025-09-08 17:00
ZX-2740,Complete Drywall & Inspect - Duct Shaft - 3F-SUE-FAB136201,Not Started,Duct Shaft - 3F -SUE-FAB136201,,,,,,,,2025-12-05 08:00,2025-12-08 17:00,,
ZX-2830,Complete Drywall & Inspect - Smock Locker @D-F/1-3 - 3F-FAB134106,Complete,Smock Locker @D-F/1-3 - 3F -FIZ-FAB134106,,,,,,,,2025-08-12 08:00,2025-08-18 17:00,2025-08-12 08:00,2025-08-18 17:00
ZX-16630,IMPACT SG PANELS TO BE REMOVED - Complete Drywall & Inspect - Smock Locker @D-F/1-3 - 3F-FAB134106,Complete,Smock Locker @D-F/1-3 - 3F -FIZ-FAB134106,,,,,,,,2025-05-05 08:00,2025-05-16 17:00,2025-05-05 08:00,2025-09-05 17:00
ZX-2920,Complete Drywall & Inspect - Fire Alarm 20 - 3F-FAB136308,Complete,Fire Alarm 20 - 3F -SUE-FAB136308,,,,,,,,2025-06-26 08:00,2025-06-26 17:00,2024-09-16 08:00,2024-09-20 16:00
FAB136308A-01,IMPACT - INSTALL/REWORK DRYWALL FRAMING AROUND DOORS - FAB136308A,Complete,Fire Alarm 20 - 3F -SUE-FAB136308,,,,,,,,2025-01-17 08:00,2025-01-27 17:00,2025-01-17 08:00,2025-01-27 17:00
ZX-2680,Complete Drywall & Inspect - IT Security 22 - 3F-FAB136112,Complete,IT Security 22 - 3F -SUE-FAB136112,,,,,,,,2025-09-11 08:00,2025-09-11 08:00,2025-09-11 08:00,2025-09-11 08:00
ZX-3070,Complete Drywall & Inspect - Electrical RM - 3F-SUW-FAB130402,Complete,Electrical Rm - 3F -SUW-FAB130402,,,,,,,,2025-07-25 08:00,2025-08-07 17:00,2025-06-16 08:00,2025-09-29 08:00
FAB130402B-01,IMPACT - INSTALL/REWORK DRYWALL FRAMING AROUND DOORS - FAB130402B,Complete,Electrical Rm - 3F -SUW-FAB130402,,,,,,,,2025-04-30 08:00,2025-05-01 17:00,2025-04-30 08:00,2025-05-01 17:00
ZX-3160,Complete Drywall & Inspect - IT/Security 3 - 3F-FAB130307 NON RATED WALLS,Complete,IT/Security 3 - 3F -SUW-FAB130307,,,,,,,,2025-06-24 08:00,2025-06-26 17:00,2025-06-13 08:00,2025-06-23 16:00
TR-FAB130307A-01,IMPACT - INSTALL/REWORK DRYWALL FRAMING AROUND DOORS - TR - FAB130307A,Complete,IT/Security 3 - 3F -SUW-FAB130307,,,,,,,,2025-01-15 08:00,2025-01-23 17:00,2025-01-15 08:00,2025-01-23 17:00
ZX-3010,Complete Drywall & Inspect - Duct Shaft - 3F-SUW-FAB130112,Complete,Duct Shaft - 3F -SUW-FAB130112,,,,,,,,2025-09-04 08:00,2025-09-08 17:00,2025-09-04 08:00,2025-09-08 17:00
ZX-3460,Complete Drywall & Inspect - Duct Shaft - 3F-SUE-FAB136510,Complete,Duct Shaft - 3F -SUE-FAB136510,,,,,,,,2025-08-27 08:00,2025-09-02 17:00,2025-08-27 08:00,2025-09-02 17:00
FAB136510A-01,IMPACT - INSTALL/REWORK DRYWALL FRAMING AROUND DOORS - FAB136510A,Complete,Duct Shaft - 3F -SUE-FAB136510,,,,,,,,2025-05-05 08:00,2025-05-13 17:00,2025-05-05 08:00,2025-05-09 17:00
ZX-3430,SECAI TOOK OVER FOR DESIGN ISSUES - Complete Drywall & Inspect - Rated Chase-West - 3F-SUW-FAB130408,Complete,Rated Chase West - 3F -SUW-FAB130408,,,,,,,,2025-08-15 08:00,2025-08-21 17:00,2025-08-15 08:00,2025-08-15 17:00
ZX-3520,Complete Drywall & Inspect - Duct Shaft - 3F-SUW_FAB130401,Complete,Duct Shaft - 3F -SUW-FAB130401,,,,,,,,2025-09-02 08:00,2025-09-08 17:00,2025-09-02 08:00,2025-09-08 17:00
FAB130401A-01,IMPACT - INSTALL/REWORK DRYWALL FRAMING AROUND DOORS - FAB130401A,Complete,Duct Shaft - 3F -SUW-FAB130401,,,,,,,,2025-02-05 08:00,2025-02-13 17:00,2025-02-05 08:00,2025-02-13 17:00
ZX-3370,Complete Drywall & Inspect - NaOH Transfer Rm - 3F-FAB130311,Complete,NaOH Transfer Rm - 3F -SUW-FAB130311,,,,,,,,2025-08-18 08:00,2025-08-26 17:00,2025-08-18 08:00,2025-08-26 17:00
FAB130311A-01,IMPACT - INSTALL/REWORK DRYWALL FRAMING AROUND DOORS - FAB130311A,Complete,NaOH Transfer Rm - 3F -SUW-FAB130311,,,,,,,,2025-07-14 08:00,2025-07-22 17:00,2025-05-12 08:00,2025-05-20 16:00
ZX-3400,Complete Drywall & Inspect - Duct Shaft - 3F-SUW-FAB130102,Complete,Duct Shaft-3F-SUW-FAB130102,,,,,,,,2025-09-04 08:00,2025-09-08 17:00,2025-09-04 08:00,2025-09-08 17:00
ZX-4030,Complete Drywall & Inspect - Duct Shaft - 3F-SUE-FAB136401,Complete,Duct Shaft - 3F -SUE-FAB136401,,,,,,,,2025-11-03 08:00,2025-11-11 17:00,2025-11-03 08:00,2025-11-07 17:00
FAB136401A-01,IMPACT - INSTALL/REWORK DRYWALL FRAMING AROUND DOORS - FAB136401A FRAME HANDED OVER TO SECAI 07/18,Complete,Duct Shaft - 3F -SUE-FAB136401,,,,,,,,2025-07-18 08:00,2025-07-28 17:00,2025-07-18 08:00,2025-07-18 17:00
ZX-3820,Complete Drywall & Inspect - Reticle Rm - 3F-SUE-FAB136502,Complete,Reticle Rm - 3F -SUE-FAB136502,,,,,,,,2025-04-14 08:00,2025-04-18 17:00,2025-04-14 08:00,2025-04-18 17:00
ZX-3790,Complete Drywall & Inspect - Battery Rm - 3F-SUW-FAB130501,Complete,Battery Rm - 3F -SUW-FAB130501,,,,,,,,2025-07-18 08:00,2025-07-31 17:00,2025-06-16 08:00,2025-09-05 17:00
ZX-3880,Complete Drywall & Inspect - W-H2SO4 Transfer Rm - 3F-FAB130312,Complete,W-H2SO4 Transfer Rm - 3F -SUW-FAB130312,,,,,,,,2025-08-25 08:00,2025-08-26 17:00,2025-08-25 08:00,2025-08-26 17:00
ZX-3730,Complete Drywall & Inspect - Duct Shaft - 3F-SUW-FAB130301,Complete,Duct Shaft - 3F -SUW-FAB130301,,,,,,,,2025-09-29 08:00,2025-10-03 17:00,2025-09-29 08:00,2025-10-03 17:00
ZX-3760,Complete Drywall & Inspect - Quitz - 3F-FAB130313,Complete,Quitz - 3F -SUW-FAB130313,,,,,,,,2025-06-11 08:00,2025-06-24 17:00,2025-05-09 08:00,2025-05-23 16:00
ZX-4180,Complete Drywall & Inspect - Duct Shaft - 3F-SUE-FAB136507,Not Started,Duct Shaft - 3F -SUE-FAB136507,,,,,,,,2025-12-05 08:00,2025-12-05 08:00,,
ZX-4060,Complete Drywall & Inspect - Duct Shaft - 3F-SUW-FAB130502,Complete,Duct Shaft - 3F -SUW-FAB130502,,,,,,,,2025-09-01 08:00,2025-09-05 17:00,2025-09-01 08:00,2025-09-05 17:00
FAB130502A-01,IMPACT - INSTALL/REWORK DRYWALL FRAMING AROUND DOORS - FAB130502A,Complete,Duct Shaft - 3F -SUW-FAB130502,,,,,,,,2025-01-10 08:00,2025-01-20 17:00,2025-01-10 08:00,2025-01-20 17:00
ZX-4150,Complete Drywall & Inspect - Duct Shaft - 3F-SUW-FAB130406,Complete,Duct Shaft - 3F -SUW-FAB130406,,,,,,,,2025-09-09 08:00,2025-09-15 17:00,2025-09-09 08:00,2025-09-15 17:00
FAB130406A-01,IMPACT - INSTALL/REWORK DRYWALL FRAMING AROUND DOORS - FAB130406A,Complete,Duct Shaft - 3F -SUW-FAB130406,,,,,,,,2025-01-14 08:00,2025-01-22 17:00,2025-01-14 08:00,2025-01-22 17:00
ZX-16120,Complete Drywall & Inspect - G.3-J/33 - 3F-SECAI refuse to remove the panels - HANDED OVER DUE TO REFUSUAL,Complete,G.3-J/33 - 3F - FAB,,,,,,,,2025-09-23 08:00,2025-09-29 17:00,2025-09-29 08:00,2025-09-29 17:00
ZX-16440,IMPACT - Complete Drywall & Inspect - G.3-J/33 - 3F SG PANELS TO BE REMOVED,Complete,G.3-J/33 - 3F - FAB,,,,,,,,2025-05-05 08:00,2025-05-30 17:00,2025-05-05 08:00,2025-09-08 17:00
ZX-4090,Complete Drywall & Inspect - Duct Shaft - 3F-SUW-FAB130204,Complete,Duct Shaft - 3F -SUW-FAB130204,,,,,,,,2025-09-01 08:00,2025-09-05 17:00,2025-09-01 08:00,2025-09-05 17:00
ZX-4750,Complete Drywall & Inspect - Battery Rm 2 - 3F-SUE-FAB136402,Complete,Battery Rm 2 - 3F -SUE-FAB136402,,,,,,,,2025-07-18 08:00,2025-07-31 17:00,2025-07-18 08:00,2025-09-05 17:00
ZX-4540,Complete Drywall & Inspect - PR Lifter Rm - 3F-SUE-FAB126509,Complete,PR Lifter Rm - 2F -SUE-FAB126509,,,,,,,,2025-09-04 08:00,2025-09-05 17:00,2025-09-04 08:00,2025-09-05 17:00
FAB126509A-01,IMPACT - INSTALL/REWORK DRYWALL FRAMING AROUND DOORS - FAB126509A,Complete,PR Lifter Rm - 2F -SUE-FAB126509,,,,,,,,2025-09-26 08:00,2025-09-29 17:00,2025-09-26 08:00,2025-09-29 17:00
ZX-4420,Complete Drywall & Inspect - Duct Shaft - 3F-SUE-FAB136405,Complete,Duct Shaft - 3F -SUE-FAB136405,,,,,,,,2025-11-03 08:00,2025-11-11 17:00,2025-11-03 08:00,2025-11-07 17:00
ZX-4510,Complete Drywall & Inspect - Fire Alarm Rm 3 - 3F-FAB130305,Complete,Fire Alarm Rm 3 - 3F -SUW-FAB130305,,,,,,,,2025-09-03 08:00,2025-09-05 17:00,2025-09-03 08:00,2025-09-05 17:00
FAB130305A-01,IMPACT - INSTALL/REWORK DRYWALL FRAMING AROUND DOORS - FAB130305A,Complete,Fire Alarm Rm 3 - 3F -SUW-FAB130305,,,,,,,,2025-03-27 08:00,2025-04-04 17:00,2025-03-27 08:00,2025-04-03 17:00
ZX-4450,Complete Drywall & Inspect - Fire Alarm Rm 1 - 3F-FAB130105,Complete,Fire Alarm Rm 1 - 3F -SUW-FAB130105,,,,,,,,2025-07-21 08:00,2025-07-29 17:00,2024-08-12 08:00,2024-08-20 16:00
ZX-4480,Complete Drywall & Inspect - IT/Security 1 - 3F-FAB130109,Complete,IT/Security 1- 3F -SUW-FAB130109,,,,,,,,2024-11-11 08:00,2024-11-19 17:00,2024-11-11 08:00,2024-11-21 16:00
ZX-5770,Complete Drywall & Inspect - D-G/33 - 3F-SECAI refuse to remove the panels - HANDED OVER DUE TO REFUSUAL,Complete,D-G/33 - 3F - FAB,,,,,,,,2025-09-23 08:00,2025-09-29 17:00,2025-09-29 08:00,2025-09-29 17:00
ZX-16460,IMPACT - Complete Drywall & Inspect - D-G/33 - 3F-SECAI refuse to remove the panels - HANDED OVER DUE TO REFUSUAL,Complete,D-G/33 - 3F - FAB,,,,,,,,2025-05-05 08:00,2025-05-30 17:00,2025-05-05 08:00,2025-09-29 17:00
ZX-10450,Complete Drywall & Inspect - IT/Security 20 - 3F-TR-FAB136306,Complete,IT/Security 20 - 3F -SUE-TR-FAB136306,,,,,,,,2024-08-05 08:00,2024-08-06 17:00,2024-08-05 08:00,2024-08-09 16:00
TR-FAB136306A-01,IMPACT - INSTALL/REWORK DRYWALL FRAMING AROUND DOORS - TR - FAB136306A,Complete,IT/Security 20 - 3F -SUE-TR-FAB136306,,,,,,,,2025-01-09 08:00,2025-01-17 17:00,2025-01-09 08:00,2025-01-17 17:00
ZX-16180,Complete Drywall & Inspect - Clean Toilet (M) 1 - 3F-FAB130317,Complete,Clean Toilet (M) 1- 3F -SUW-FAB130317,,,,,,,,2025-06-10 10:00,2025-06-26 10:00,2025-05-26 10:00,2025-06-05 10:00
ZX-16210,Complete Drywall & Inspect - Clean Toilet (W) 1 - 3F-FAB130316,Complete,Clean Toilet (W) 1 - 3F -SUW-FAB130316,,,,,,,,2025-06-12 08:00,2025-06-20 17:00,2025-05-06 08:00,2025-05-23 16:00
FAB130316A-01,IMPACT - INSTALL/REWORK DRYWALL FRAMING AROUND DOORS- FAB130316A,Complete,Clean Toilet (W) 1 - 3F -SUW-FAB130316,,,,,,,,2025-06-06 08:00,2025-06-16 17:00,2025-05-06 08:00,2025-05-06 16:00
ZX-16240,Complete Drywall & Inspect - Airlock 18 - 3F-FAB136506,Complete,Air Lock 18 - 3F -SUE-FAB136506,,,,,,,,2025-05-05 08:00,2025-05-07 17:00,2025-05-05 08:00,2025-05-13 16:00
ZX-16270,Complete Drywall & Inspect - CRT Airlock - 3F-FAB130506,Complete,CRT Air Lock - 3F -SUW-FAB130506,,,,,,,,2025-07-09 08:00,2025-07-17 17:00,2025-06-19 08:00,2025-08-12 08:00
ZX-16650,Complete Drywall & Inspect - Stair #02 SUW- 3F- FAB1-ST02,Complete,Stair 2 - 3F-SUW-FAB1-ST02,,,,,,,,2025-05-13 08:00,2025-05-26 17:00,2025-05-13 08:00,2025-08-18 17:00
ZX-16710,Complete Drywall CEILING & Inspect - Stair #02 SUW- 3F- FAB1-ST02,Complete,Stair 2 - 3F-SUW-FAB1-ST02,,,,,,,,2025-07-16 08:00,2025-07-29 17:00,2025-06-09 08:00,2025-06-30 16:00
ZX-16850,Complete Drywall & Inspect - Stair #03 SUW- 3F- FAB1-ST03,Complete,Stair 3 - 3F- SUW-FAB1-ST03,,,,,,,,2025-05-13 08:00,2025-05-26 17:00,2025-05-13 08:00,2025-10-13 17:00
FAB1-ST03C-01,IMPACT - INSTALL/REWORK DRYWALL FRAMING AROUND DOORS - FAB1-ST03C,Complete,Stair 3 - 3F- SUW-FAB1-ST03,,,,,,,,2025-04-01 08:00,2025-04-09 17:00,2025-04-01 08:00,2025-04-07 17:00
ZX-16880,Complete Drywall & Inspect - Stair #20 SUE- 3F- FAB1-ST20,Complete,Stair 20 - 3F -SUE-FAB1-ST20,,,,,,,,2025-05-13 08:00,2025-05-19 17:00,2025-05-13 08:00,2025-10-06 17:00
FAB1-ST20C-01,IMPACT - INSTALL/REWORK DRYWALL FRAMING AROUND DOORS - FAB1-ST20C,Complete,Stair 20 - 3F -SUE-FAB1-ST20,,,,,,,,2025-09-09 08:00,2025-09-10 17:00,2025-09-09 08:00,2025-09-10 17:00
ZX-17010,Complete Drywall & Inspect - Stair #21 SUE- 3F- FAB1-ST21,Complete,Stair 21 - 3F-SUE-FAB1-ST21,,,,,,,,2025-05-13 08:00,2025-05-26 17:00,2025-05-13 08:00,2025-08-18 17:00
ZX-17040,Complete Drywall CEILING & Inspect - Stair #21 SUE- 3F- FAB1-ST21,Complete,Stair 21 - 3F-SUE-FAB1-ST21,,,,,,,,2025-08-05 08:00,2025-08-18 17:00,2025-08-05 08:00,2025-08-18 17:00
ZX-17540,IMPACT RFI Drywall CEILING - Stair #21,Complete,Stair 21 - 3F-SUE-FAB1-ST21,,,,,,,,2025-05-30 08:00,2025-06-05 17:00,2025-05-26 08:00,2025-05-30 16:00
FAB1-ST21C-01,IMPACT - INSTALL/REWORK DRYWALL FRAMING AROUND DOORS - FAB1-ST21C,Complete,Stair 21 - 3F-SUE-FAB1-ST21,,,,,,,,2025-02-05 08:00,2025-02-13 17:00,2025-02-05 08:00,2025-02-13 17:00
ZX-17170,Complete Drywall & Inspect - Stair #04 SUW- 3F- FAB1-ST04 - MKMARLOW,Complete,Stair 4 - 3F-SUW-FAB1-ST04,,,,,,,,2025-06-27 08:00,2025-07-10 17:00,2025-06-27 08:00,2025-09-05 17:00
ZX-17200,Complete Drywall CEILING & Inspect - Stair #04 SUE- 3F- FAB1-ST04 - MKMARLOW,Complete,Stair 4 - 3F-SUW-FAB1-ST04,,,,,,,,2025-09-15 08:00,2025-09-15 08:00,2025-09-15 08:00,2025-09-15 08:00
FAB1-ST04C-01,IMPACT - INSTALL/REWORK DRYWALL FRAMING AROUND DOORS - FAB1-ST04C,Complete,Stair 4 - 3F-SUW-FAB1-ST04,,,,,,,,2025-09-04 08:00,2025-09-05 17:00,2025-09-04 08:00,2025-09-05 17:00
ZX-17210,SECAI TURNOVER FOR ACELERATION - Drywall & Inspect - Stair #19 SUE- 3F- FAB1-ST19 BAKER/DESCOPE,Complete,Stair 19 - 3F -SUE-FAB1-ST19,,,,,,,,2025-06-10 08:00,2025-06-23 17:00,2025-06-10 08:00,2025-06-10 16:00
ZX-17240,SECAI TURNOVER FOR ACELERATION - Drywall CEILING & Inspect - Stair #19 SUE- 3F- FAB1-ST19 BAKER/DESCOPE,Complete,Stair 19 - 3F -SUE-FAB1-ST19,,,,,,,,2025-06-10 08:00,2025-06-23 17:00,2025-06-10 08:00,2025-06-10 16:00
ZX-18080,Complete Drywall & Inspect - Stair #18 SUE- 3F- FAB1-ST18,Complete,Stair 18 - 3F -SUE-FAB1-ST18,,,,,,,,2025-09-29 08:00,2025-10-03 17:00,2025-09-29 08:00,2025-10-03 17:00
ZX-2350,Complete Drywall & Inspect - Clean Vestibule #19 - 2F-FAB126402,Complete,Clean Vestibule 19 - 2F -SUE-FAB126402,,,,,,,,2025-10-22 08:00,2025-10-28 17:00,2025-10-22 08:00,2025-10-28 17:00
ZX-2440,Complete Drywall & Inspect - Elevator #19 - 2F-FAB1-EL19,Complete,Elevator 19 - 2F -SUE-FAB1-EL19,,,,,,,,2025-06-19 08:00,2025-07-02 17:00,2025-06-11 08:00,2025-07-21 11:00
ZX-2620,Complete Drywall & Inspect - Duct Shaft - 2F-SUE-FAB126510,Complete,Duct Shaft - 2F -SUE-FAB126510,,,,,,,,2025-09-01 08:00,2025-09-05 17:00,2025-09-01 08:00,2025-09-05 17:00
ZX-2560,Complete Drywall & Inspect - Airlock 20 - 2F-FAB126311,Complete,Air Lock 20 - 2F -SUE-FAB126311,,,,,,,,2025-06-27 08:00,2025-07-10 17:00,2024-08-19 08:00,2024-08-30 16:00
FAB126311B-01,IMPACT - INSTALL/REWORK DRYWALL FRAMING AROUND DOORS - FAB126311B,Complete,Air Lock 20 - 2F -SUE-FAB126311,,,,,,,,2025-04-01 08:00,2025-04-09 17:00,2025-04-01 08:00,2025-04-09 17:00
FAB126311C-01,IMPACT - INSTALL/REWORK DRYWALL FRAMING AROUND DOORS - FAB126311C,Complete,Air Lock 20 - 2F -SUE-FAB126311,,,,,,,,2025-04-01 08:00,2025-04-09 17:00,2025-04-01 08:00,2025-04-09 17:00
FAB126311D-01,IMPACT - INSTALL/REWORK DRYWALL FRAMING AROUND DOORS - FAB126311D,Complete,Air Lock 20 - 2F -SUE-FAB126311,,,,,,,,2025-04-02 08:00,2025-04-10 17:00,2025-04-02 08:00,2025-04-09 17:00
FAB126311E-01,IMPACT - INSTALL/REWORK DRYWALL FRAMING AROUND DOORS - FAB126311E,Complete,Air Lock 20 - 2F -SUE-FAB126311,,,,,,,,2025-02-26 08:00,2025-03-06 17:00,2025-02-26 08:00,2025-03-06 17:00
ZX-2530,Complete Drywall & Inspect - Duct Shaft - 2F-SUE-FAB126403,Complete,Duct Shaft - 2F -SUE-FAB126403,,,,,,,,2025-10-22 08:00,2025-10-28 17:00,2025-10-22 08:00,2025-10-28 17:00
FAB126110A-01,IMPACT - INSTALL/REWORK DRYWALL FRAMING AROUND DOORS - FAB126110A,Complete,Duct Shaft - 2F -SUE-FAB126403,,,,,,,,2025-05-08 08:00,2025-05-16 17:00,2025-05-08 08:00,2025-05-16 17:00
ZX-2470,SECAI TOOK OVER FOR ACCELERATION - Complete Drywall & Inspect - PR Lifter Vestibule - 2F-FAB126511,Complete,PR Lifter Vestibule - 2F -SUE-FAB126511,,,,,,,,2025-10-22 08:00,2025-10-23 17:00,2025-10-22 08:00,2025-10-22 17:00
ZX-2710,Complete Drywall & Inspect - T/L Maint. Rm 23 - 2F-SUE-FAB126501,Complete,T/L Maint. Rm 23 - 2F -SUE-FAB126501,,,,,,,,2025-09-22 08:00,2025-09-26 17:00,2025-09-22 08:00,2025-09-26 17:00
FAB126501A-01,IMPACT - INSTALL/REWORK DRYWALL FRAMING AROUND DOORS - FAB126501A,Complete,T/L Maint. Rm 23 - 2F -SUE-FAB126501,,,,,,,,2025-05-12 08:00,2025-05-20 17:00,2025-05-12 08:00,2025-05-16 17:00
ZX-2890,Complete Drywall & Inspect - Airlock 18 - 2F-FAB126506,Complete,Air Lock 18 - 2F -SUE-FAB126506,,,,,,,,2025-09-01 08:00,2025-09-05 17:00,2025-09-01 08:00,2025-09-05 17:00
FAB126506B-01,IMPACT - INSTALL/REWORK DRYWALL FRAMING AROUND DOORS - FAB126506B HANDED OVER TO SECAI ON 08/29,Complete,Air Lock 18 - 2F -SUE-FAB126506,,,,,,,,2025-08-28 08:00,2025-08-29 17:00,2025-08-29 08:00,2025-08-29 17:00
FAB126506D-01,IMPACT - INSTALL/REWORK DRYWALL FRAMING AROUND DOORS - FAB126506D,Complete,Air Lock 18 - 2F -SUE-FAB126506,,,,,,,,2025-02-18 08:00,2025-02-26 17:00,2025-02-18 08:00,2025-02-26 17:00
FAB126506E-01,IMPACT - INSTALL/REWORK DRYWALL FRAMING AROUND DOORS - FAB126506E HANDED OVER TO SECAI ON 08/29,Complete,Air Lock 18 - 2F -SUE-FAB126506,,,,,,,,2025-08-28 08:00,2025-08-29 17:00,2025-08-29 08:00,2025-08-29 17:00
ZX-2860,Complete Drywall & Inspect - Fire Alarm 18 - 2F-FAB126513,Complete,Fire Alarm 18 - 2F -SUE-FAB126513,,,,,,,,2025-09-10 08:00,2025-09-16 17:00,2025-09-10 08:00,2025-09-16 17:00
FAB126513A-01,IMPACT - INSTALL/REWORK DRYWALL FRAMING AROUND DOORS - FAB126513A,Complete,Fire Alarm 18 - 2F -SUE-FAB126513,,,,,,,,2025-02-27 08:00,2025-03-07 17:00,2025-02-27 08:00,2025-03-07 17:00
ZX-2800,Complete Drywall & Inspect - Elevator Hall #18 - 2F-FAB126504,Complete,Elevator Hall 18 - 2F -SUE-FAB126504,,,,,,,,2025-10-01 08:00,2025-10-07 17:00,2025-10-01 08:00,2025-10-07 17:00
ZX-2770,Complete Drywall & Inspect - Vestibule 18 - 2F-FAB126505,Complete,Vestibule 18 - 2F -SUE-FAB126505,,,,,,,,2025-11-03 08:00,2025-11-07 17:00,2025-11-03 08:00,2025-11-07 17:00
FAB126505B-01,IMPACT - INSTALL/REWORK DRYWALL FRAMING AROUND DOORS - FAB126505B,Complete,Vestibule 18 - 2F -SUE-FAB126505,,,,,,,,2025-03-05 08:00,2025-03-13 17:00,2025-03-05 08:00,2025-03-13 17:00
ZX-3310,Complete Drywall & Inspect - Vestibule 20 - 2F-FAB126310,Complete,Vestibule 20 - 2F -SUE-FAB126310,,,,,,,,2025-09-25 08:00,2025-09-26 17:00,2025-09-25 08:00,2025-09-26 17:00
FAB126310B-01,IMPACT - INSTALL/REWORK DRYWALL FRAMING AROUND DOORS - FAB126310B,Complete,Vestibule 20 - 2F -SUE-FAB126310,,,,,,,,2025-02-25 10:00,2025-03-06 10:00,2025-02-25 10:00,2025-03-06 10:00
ZX-3130,Complete Drywall & Inspect - Duct Shaft - 2F-SUE-FAB126102,Complete,Duct Shaft - 2F -SUE-FAB126102,,,,,,,,2025-09-01 08:00,2025-09-05 17:00,2025-09-01 08:00,2025-09-05 17:00
FAB126102A-01,IMPACT - INSTALL/REWORK DRYWALL FRAMING AROUND DOORS - FAB126102A,Complete,Duct Shaft - 2F -SUE-FAB126102,,,,,,,,2025-05-01 08:00,2025-05-09 17:00,2025-05-01 08:00,2025-05-05 17:00
ZX-3280,Complete Drywall & Inspect - Thermohygrostat Rm - 2F-FAB122103,Complete,Thermohygrostat Rm - 2F -FIZ-FAB122103,,,,,,,,2025-07-07 08:00,2025-07-18 17:00,2025-07-07 08:00,2025-07-18 17:00
ZX-3190,Complete Drywall & Inspect - Data Center B - 2F-FAB122106,Complete,Data Center B - 2F -FIZ-FAB122106,,,,,,,,2025-08-11 08:00,2025-08-22 17:00,2025-05-05 08:00,2025-08-22 17:00
FAB122106A-01,IMPACT - INSTALL/REWORK DRYWALL FRAMING AROUND DOORS - FAB122106A,Complete,Data Center B - 2F -FIZ-FAB122106,,,,,,,,2025-08-18 08:00,2025-08-26 17:00,2025-05-07 08:00,2025-05-15 17:00
FAB122106B-01,IMPACT - INSTALL/REWORK DRYWALL FRAMING AROUND DOORS - FAB122106B,Complete,Data Center B - 2F -FIZ-FAB122106,,,,,,,,2025-05-07 08:00,2025-05-15 17:00,2025-05-07 08:00,2025-05-15 17:00
FAB122106C-01,IMPACT - INSTALL/REWORK DRYWALL FRAMING AROUND DOORS - FAB122106C,Complete,Data Center B - 2F -FIZ-FAB122106,,,,,,,,2025-05-15 08:00,2025-05-23 17:00,2025-05-07 08:00,2025-05-15 17:00
ZX-3250,Complete Drywall & Inspect - Airlock 22 - 2F-FAB126107 - MKM,Complete,Air Lock 22 - 2F -SUE-FAB126107,,,,,,,,2025-07-18 08:00,2025-07-31 17:00,2025-07-18 08:00,2025-09-05 17:00
FAB126107D-01,IMPACT - INSTALL/REWORK DRYWALL FRAMING AROUND DOORS - FAB126107D,Complete,Air Lock 22 - 2F -SUE-FAB126107,,,,,,,,2025-03-25 08:00,2025-04-02 17:00,2025-03-25 08:00,2025-04-01 17:00
FAB126107E-01,IMPACT - INSTALL/REWORK DRYWALL FRAMING AROUND DOORS - FAB126107E,Complete,Air Lock 22 - 2F -SUE-FAB126107,,,,,,,,2025-04-01 08:00,2025-04-09 17:00,2025-04-01 08:00,2025-04-11 17:00
ZX-3220,Complete Drywall & Inspect - Elevator Hall #20 - 2F-FAB126302,Complete,Elevator Hall 20 - 2F SUE-FAB126302,,,,,,,,2025-09-01 08:00,2025-09-05 17:00,2025-09-01 08:00,2025-09-05 17:00
ZX-3670,Complete Drywall & Inspect - Clean Vestibule #21 - 2F-FAB126201 - MKM,Complete,Clean Vestibule 21 - 2F -SUE-FAB126201,,,,,,,,2025-07-18 08:00,2025-07-31 17:00,2025-07-18 08:00,2025-09-04 17:00
FAB126201A-01,IMPACT - INSTALL/REWORK DRYWALL FRAMING AROUND DOORS - FAB126201A,Complete,Clean Vestibule 21 - 2F -SUE-FAB126201,,,,,,,,2025-03-20 08:00,2025-03-28 17:00,2025-03-20 08:00,2025-03-28 17:00
ZX-3490,SECAI TOOK OVER ACCELERATION - Remaining CEILING Drywall & Inspect - Pedestrian Walkway - 2F-FAB120111,Complete,Pedestrian Walkway - 2F -FIZ-FAB120111,,,,,,,,2025-11-06 08:00,2025-11-12 17:00,2025-11-06 08:00,2025-11-06 17:00
ZX-3640,Complete Drywall & Inspect - Elevator Hall #22 - 2F-FAB126104,Complete,Elevator Hall 22 - 2F -SUE-FAB126104,,,,,,,,2025-09-01 08:00,2025-09-05 17:00,2025-09-01 08:00,2025-09-05 17:00
ZX-3610,SECAI TOOK OVER FOR ACCELERATION - Complete Drywall & Inspect - Vestibule 22 - 2F-FAB126106,Complete,Vestibule 22 - 2F -SUE-FAB126106,,,,,,,,2025-08-19 08:00,2025-08-25 17:00,2025-08-26 08:00,2025-08-26 17:00
FAB126106B-01,IMPACT - INSTALL/REWORK DRYWALL FRAMING AROUND DOORS - FAB126106B,Complete,Vestibule 22 - 2F -SUE-FAB126106,,,,,,,,2025-02-17 08:00,2025-02-25 17:00,2025-02-17 08:00,2025-02-25 17:00
ZX-3580,Complete Drywall & Inspect - Fire Alarm 22 - 2F-FAB126112,Complete,Fire Alarm 22 - 2F - SUE-FAB126112,,,,,,,,2025-09-09 08:00,2025-09-15 17:00,2025-09-09 08:00,2025-09-15 17:00
FAB126112A-01,IMPACT - INSTALL/REWORK DRYWALL FRAMING AROUND DOORS - FAB126112A,Complete,Fire Alarm 22 - 2F - SUE-FAB126112,,,,,,,,2025-05-12 08:00,2025-05-20 17:00,2025-05-12 08:00,2025-05-16 17:00
ZX-3850,Complete Drywall & Inspect - Data Center A - 2F-FAB120106,Complete,Data Center A - 2F -FIZ-FAB120106,,,,,,,,2025-06-10 08:00,2025-07-07 17:00,2025-06-10 08:00,2025-07-25 17:00
FAB120106A-01,IMPACT - INSTALL/REWORK DRYWALL FRAMING AROUND DOORS - FAB120106A,Complete,Data Center A - 2F -FIZ-FAB120106,,,,,,,,2025-08-01 08:00,2025-08-11 17:00,2025-07-08 13:00,2025-07-15 17:00
FAB120106B-01,IMPACT - INSTALL/REWORK DRYWALL FRAMING AROUND DOORS - FAB120106B,Complete,Data Center A - 2F -FIZ-FAB120106,,,,,,,,2025-08-01 08:00,2025-08-01 17:00,2025-07-14 08:00,2025-07-17 17:00
ZX-4000,Complete Drywall & Inspect - Thermohygrostat Rm - 2F-FAB120103,Complete,Thermohygrostat Rm - 2F -FIZ-FAB120103,,,,,,,,2025-07-07 08:00,2025-07-18 17:00,2025-07-07 08:00,2025-07-17 17:00
FAB120103A-01,IMPACT - INSTALL/REWORK DRYWALL FRAMING AROUND DOORS - FAB120103A,Complete,Thermohygrostat Rm - 2F -FIZ-FAB120103,,,,,,,,2025-09-24 08:00,2025-09-25 17:00,2025-09-24 08:00,2025-09-25 17:00
ZX-3910,Complete Drywall & Inspect - Duct Shaft - 2F-SUE-FAB126103,Complete,Duct Shaft - 2F -SUE-FAB126103,,,,,,,,2025-09-09 08:00,2025-09-15 17:00,2025-09-09 08:00,2025-09-15 17:00
ZX-3970,Complete Drywall & Inspect - Duct Shaft - 2F-SUE-FAB126105,Complete,Duct Shaft - 2F -SUE-FAB126105,,,,,,,,2025-10-06 08:00,2025-10-07 17:00,2025-10-06 08:00,2025-10-07 17:00
FAB126105A-01,IMPACT - INSTALL/REWORK DRYWALL FRAMING AROUND DOORS - FAB126105A,Complete,Duct Shaft - 2F -SUE-FAB126105,,,,,,,,2025-05-01 08:00,2025-05-02 17:00,2025-05-01 08:00,2025-05-02 17:00
FAB126109A-01,IMPACT - INSTALL/REWORK DRYWALL FRAMING AROUND DOORS - FAB126109A,Complete,Duct Shaft - 2F -SUE-FAB126105,,,,,,,,2025-05-08 08:00,2025-05-16 17:00,2025-05-08 08:00,2025-05-19 17:00
ZX-3940,Complete Drywall & Inspect - Fire Alarm 20 - 2F-FAB126308,Complete,Fire Alarm 20 - 2F -SUE-FAB126308,,,,,,,,2025-09-01 08:00,2025-09-05 17:00,2025-09-01 08:00,2025-09-05 17:00
ZX-4390,Complete Drywall & Inspect - Duct Shaft - 2F-SUE-FAB126401,Not Started,Duct Shaft - 2F -SUE-FAB126401,,,,,,,,2025-12-05 08:00,2025-12-11 17:00,,
FAB126401A-01,IMPACT - INSTALL/REWORK DRYWALL FRAMING AROUND DOORS - FAB126401A,Complete,Duct Shaft - 2F -SUE-FAB126401,,,,,,,,2025-07-09 08:00,2025-07-17 17:00,2025-07-09 08:00,2025-07-17 17:00
FAB126401B-01,IMPACT - INSTALL/REWORK DRYWALL FRAMING AROUND DOORS - FAB126401B,Complete,Duct Shaft - 2F -SUE-FAB126401,,,,,,,,2025-07-21 08:00,2025-07-29 17:00,2025-07-21 08:00,2025-07-29 17:00
ZX-4210,Complete Drywall & Inspect - Thermohygrostat Rm - 2F-FAB120104,Complete,Thermohygrostat Rm - 2F -FIZ-FAB120104,,,,,,,,2025-09-05 08:00,2025-09-18 17:00,2025-06-23 08:00,2025-06-25 11:00
ZX-4360,SECAI TURNOVER FOR ACELERATION - Drywall & Inspect - Battery Rm - 2F-FAB124102 BAKER/DESCOPE,Complete,Battery Rm - 2F -FIZ-FAB124102,,,,,,,,2025-08-04 08:00,2025-08-22 17:00,2025-06-16 08:00,2025-06-16 16:00
FAB124102A-01,SECAI TURNOVER FOR ACELERATION - INSTALL/REWORK DRYWALL FRAMING AROUND DOORS - FAB124102A,Complete,Battery Rm - 2F -FIZ-FAB124102,,,,,,,,2025-07-17 08:00,2025-07-25 17:00,2025-06-16 08:00,2025-06-16 16:00
ZX-4270,Complete Drywall & Inspect - IT/Security Rm 22 - 2F-FAB126108,Complete,IT/Security Rm 22 - 2F -SUE-FAB126108,,,,,,,,2025-09-01 08:00,2025-09-05 17:00,2025-09-01 08:00,2025-09-05 17:00
TR-FAB126108A-01,IMPACT - INSTALL/REWORK DRYWALL FRAMING AROUND DOORS - TR - FAB126108A,Complete,IT/Security Rm 22 - 2F -SUE-FAB126108,,,,,,,,2025-05-12 08:00,2025-05-20 17:00,2025-05-12 08:00,2025-05-16 17:00
ZX-4300,Complete Drywall & Inspect - IT/Security 20 - 2F-FABTR-FAB126304,Complete,IT/Security 20 - 2F -SUE-TR-FAB-FAB126304,,,,,,,,2024-08-19 08:00,2024-08-19 17:00,2024-08-19 08:00,2024-08-30 16:00
ZX-4570,SECAI TOOK OVER ACCELERATION - Complete Drywall & Inspect - Pedestrian Walkway - 2F-FAB122105,Complete,Pedestrian Walkway - 2F -FIZ-FAB122105,,,,,,,,2025-10-13 08:00,2025-10-17 17:00,2025-10-13 08:00,2025-11-06 17:00
ZX-4720,Complete Drywall & Inspect - I/O Rm - 2F-FAB124101,Complete,I/O Rm - 2F -FIZ-FAB124101,,,,,,,,2025-07-07 08:00,2025-07-18 17:00,2025-07-07 08:00,2025-07-18 17:00
FAB124101A-01,IMPACT - INSTALL/REWORK DRYWALL FRAMING AROUND DOORS - FAB124101A,Complete,I/O Rm - 2F -FIZ-FAB124101,,,,,,,,2025-10-08 08:00,2025-10-14 17:00,2025-10-08 08:00,2025-10-14 17:00
FAB124101B-01,IMPACT - INSTALL/REWORK DRYWALL FRAMING AROUND DOORS - FAB124101B,Complete,I/O Rm - 2F -FIZ-FAB124101,,,,,,,,2025-10-08 08:00,2025-10-14 17:00,2025-10-08 08:00,2025-10-14 17:00
ZX-4630,SECAI TURNOVER FOR ACELERATION - Drywall & Inspect - Electrical Rm - 2F-FAB124103,Complete,Electrical Rm - 2F -FIZ-FAB124103,,,,,,,,2025-06-16 08:00,2025-06-24 17:00,2025-06-16 08:00,2025-06-27 17:00
ZX-4690,Complete Drywall & Inspect - Duct Shaft - 2F-SUE-FAB126301,Complete,Duct Shaft - 2F -SUE-FAB126301,,,,,,,,2025-10-01 08:00,2025-10-07 17:00,2025-10-01 08:00,2025-10-07 17:00
FAB126301A-01,IMPACT - INSTALL/REWORK DRYWALL FRAMING AROUND DOORS - FAB126301A,Complete,Duct Shaft - 2F -SUE-FAB126301,,,,,,,,2025-04-24 08:00,2025-05-02 17:00,2025-04-24 08:00,2025-05-02 17:00
FAB126302A-01,IMPACT - INSTALL/REWORK DRYWALL FRAMING AROUND DOORS - FAB126302A,Complete,Duct Shaft - 2F -SUE-FAB126301,,,,,,,,2025-02-17 08:00,2025-02-25 17:00,2025-02-17 08:00,2025-02-25 17:00
ZX-4660,SECAI TOOK OVER FOR ACCELERATION - Complete Drywall & Inspect - Elevator 20 - 2F-1FAB-EL20,Complete,Elevator 20 - 2F -SUE-FAB1-EL20,,,,,,,,2025-05-16 08:00,2025-05-29 17:00,2025-05-16 08:00,2025-06-27 16:00
ZX-4780,Complete Drywall & Inspect - Elevator #05 - 2F-1FAB-EL5,Complete,Elevator 5 - 2F -SUW-FAB1-EL05,,,,,,,,2025-09-05 08:00,2025-09-11 17:00,2025-09-05 08:00,2025-09-11 17:00
ZX-4810,Complete Drywall & Inspect - Battery Rm - 2F-SUW-FAB120501,Complete,Battery Rm 3 - 2F -SUW-FAB120501,,,,,,,,2025-07-14 08:00,2025-07-25 17:00,2025-06-16 08:00,2025-09-02 17:00
FAB120501A-01,IMPACT - INSTALL/REWORK DRYWALL FRAMING AROUND DOORS - FAB120501A,Complete,Battery Rm 3 - 2F -SUW-FAB120501,,,,,,,,2025-05-16 08:00,2025-05-26 17:00,2025-05-16 08:00,2025-05-21 17:00
FAB120501B-01,IMPACT - INSTALL/REWORK DRYWALL FRAMING AROUND DOORS - FAB120501B,Complete,Battery Rm 3 - 2F -SUW-FAB120501,,,,,,,,2025-05-05 08:00,2025-05-13 17:00,2025-05-05 08:00,2025-05-12 17:00
ZX-4870,Complete Drywall & Inspect - Elevator #03 - 2F-1FAB-EL3,Complete,Elevator 3 - 2F -SUW-FAB1-EL03,,,,,,,,2025-08-14 08:00,2025-08-27 17:00,2025-05-05 08:00,2025-05-23 16:00
ZX-4840,Complete Drywall & Inspect - Vestibule 1 - 2F-SUW-FAB120508,Complete,Vestibule 1 - 2F -SUW-FAB120508,,,,,,,,2025-08-18 08:00,2025-08-18 08:00,2025-08-18 08:00,2025-10-28 17:00
FAB120508A-01,IMPACT - INSTALL/REWORK DRYWALL FRAMING AROUND DOORS - FAB120508A,Complete,Vestibule 1 - 2F -SUW-FAB120508,,,,,,,,2025-04-25 08:00,2025-05-05 17:00,2025-04-25 08:00,2025-05-02 17:00
ZX-4990,Complete Drywall & Inspect - T/L Maint. Rm 1 - 2F-SUW-FAB120102,Complete,T/L Maint. Rm 1 - 2F -SUW-FAB120102,,,,,,,,2025-09-01 08:00,2025-09-05 17:00,2025-09-01 08:00,2025-09-05 17:00
FAB120102A-01,IMPACT - INSTALL/REWORK DRYWALL FRAMING AROUND DOORS - FAB120102A,Complete,T/L Maint. Rm 1 - 2F -SUW-FAB120102,,,,,,,,2025-04-07 08:00,2025-04-15 17:00,2025-04-07 08:00,2025-04-14 17:00
ZX-4900,Complete Drywall & Inspect - GCS Storage - 2F-FAB120506,Complete,GCS Storage - 2F -SUW-FAB120506,,,,,,,,2025-09-08 08:00,2025-09-12 17:00,2025-09-08 08:00,2025-09-12 17:00
FAB120506D-01,IMPACT - INSTALL/REWORK DRYWALL FRAMING AROUND DOORS - FAB120506D,Complete,GCS Storage - 2F -SUW-FAB120506,,,,,,,,2025-02-19 08:00,2025-02-27 17:00,2025-02-19 00:00,2025-02-27 17:00
FAB120506E-01,IMPACT - INSTALL/REWORK DRYWALL FRAMING AROUND DOORS - FAB120506E,Complete,GCS Storage - 2F -SUW-FAB120506,,,,,,,,2025-02-12 08:00,2025-02-20 17:00,2025-02-12 08:00,2025-02-20 17:00
ZX-4960,Complete Drywall & Inspect-Electrical Rm - 2F-SUW-FAB120401,Complete,Electrical Rm - 2F -SUW-FAB120401,,,,,,,,2025-05-16 08:00,2025-05-29 17:00,2025-05-16 08:00,2025-10-13 17:00
FAB120401E-01,IMPACT - INSTALL/REWORK DRYWALL FRAMING AROUND DOORS - FAB120401E,Complete,Electrical Rm - 2F -SUW-FAB120401,,,,,,,,2025-06-25 08:00,2025-06-25 17:00,2025-06-12 08:00,2025-06-20 16:00
FAB120303F-01,IMPACT - INSTALL/REWORK DRYWALL FRAMING AROUND DOORS - FAB120303F HANDED OVER TO SECAI ON 08/29,Complete,Electrical Rm - 2F -SUW-FAB120401,,,,,,,,2025-08-29 08:00,2025-08-29 17:00,2025-08-29 08:00,2025-08-29 17:00
FAB120303H-01,IMPACT - INSTALL/REWORK DRYWALL FRAMING AROUND DOORS - FAB120303FH - P1,Complete,Electrical Rm - 2F -SUW-FAB120401,,,,,,,,2025-06-27 08:00,2025-06-27 17:00,2025-06-27 08:00,2025-06-27 16:00
ZX-4930,Complete Drywall & Inspect - Fire Alarm 3 - 2F-FAB120311,Complete,Fire Alarm 3 - 2F -SUW-FAB120311,,,,,,,,2025-07-23 08:00,2025-08-05 17:00,2025-07-23 08:00,2025-08-05 17:00
ZX-5230,Complete Drywall & Inspect - i/o Rm - 2F-SUE-FAB126512,Complete,I/O Rm - 2F -SUE-FAB126512,,,,,,,,2025-09-02 08:00,2025-09-08 17:00,2025-09-02 08:00,2025-09-08 17:00
ZX-5020,Complete Drywall & Inspect - Fire Alarm 5 - 2F-FAB120510,Complete,Fire Alarm 5 - 2F -SUW-FAB120510,,,,,,,,2025-09-29 08:00,2025-10-03 17:00,2025-09-29 08:00,2025-10-03 17:00
ZX-5080,SECAI TOOK OVER FOR DESIGN - Complete Drywall & Inspect - Rated Chase-West - 2F-SUW-FAB120511,Complete,Rated Chase West - 2F -SUW-FAB120511,,,,,,,,2025-08-15 08:00,2025-08-21 17:00,2025-08-15 08:00,2025-08-15 17:00
ZX-5140,Complete Drywall & Inspect - IT/Security 3 - 2F-TR-FAB120307,Complete,IT/Security 3 - 2F -SUW-TR-FAB120307,,,,,,,,2025-08-27 08:00,2025-09-02 17:00,2025-08-27 08:00,2025-09-02 17:00
TR-FAB120307A-01,IMPACT - INSTALL/REWORK DRYWALL FRAMING AROUND DOORS - TR - FAB120307A,Complete,IT/Security 3 - 2F -SUW-TR-FAB120307,,,,,,,,2025-05-21 08:00,2025-05-29 17:00,2025-05-21 08:00,2025-05-29 17:00
ZX-5050,Complete Drywall & Inspect - Battery Rm 2 - 2F-SUW-FAB120314,Complete,Battery Rm 2 - 2F -SUW-FAB120314,,,,,,,,2025-07-22 08:00,2025-08-04 17:00,2025-06-16 08:00,2025-09-03 17:00
FAB120314A-01,IMPACT - INSTALL/REWORK DRYWALL FRAMING AROUND DOORS - FAB120314A,Complete,Battery Rm 2 - 2F -SUW-FAB120314,,,,,,,,2025-04-01 08:00,2025-04-09 17:00,2025-04-01 08:00,2025-04-09 17:00
FAB120314B-01,IMPACT - INSTALL/REWORK DRYWALL FRAMING AROUND DOORS - FAB120314B,Complete,Battery Rm 2 - 2F -SUW-FAB120314,,,,,,,,2025-02-13 08:00,2025-02-21 17:00,2025-02-13 08:00,2025-02-21 17:00
ZX-5200,Complete Drywall & Inspect - Clean Vestibule #02 - 2F-FAB120201,Complete,Clean Vestibule 2 - 2F -SUW-FAB120201,,,,,,,,2025-10-01 08:00,2025-10-07 17:00,2025-10-01 08:00,2025-10-07 17:00
FAB120201A-01,IMPACT - INSTALL/REWORK DRYWALL FRAMING AROUND DOORS - FAB120201A,Complete,Clean Vestibule 2 - 2F -SUW-FAB120201,,,,,,,,2025-02-10 08:00,2025-02-18 17:00,2025-02-10 08:00,2025-02-18 17:00
ZX-5170,SECAI TOOK OVER FOR ACCELERATION - Complete Drywall & Inspect - Airlock 1 - 2F-FAB120108 - MKM,Complete,Air Lock 1 - 2F -SUW-FAB120108,,,,,,,,2025-07-18 08:00,2025-07-31 17:00,2025-07-18 08:00,2025-08-18 17:00
ZX-5110,Complete Drywall & Inspect - Elevator Hall #01 - 2F-FAB120113,Complete,Elevator Hall 1 - 2F -SUW-FAB120113,,,,,,,,2025-10-09 08:00,2025-10-10 17:00,2025-10-09 08:00,2025-10-10 17:00
FAB120113A-01,IMPACT - INSTALL/REWORK DRYWALL FRAMING AROUND DOORS - FAB120113A HANDED OVER TO SECAI 09/05,Complete,Elevator Hall 1 - 2F -SUW-FAB120113,,,,,,,,2025-09-05 08:00,2025-09-08 17:00,2025-09-05 08:00,2025-09-05 17:00
FAB120113B-01,IMPACT - INSTALL/REWORK DRYWALL FRAMING AROUND DOORS - FAB120113B,Complete,Elevator Hall 1 - 2F -SUW-FAB120113,,,,,,,,2025-03-21 08:00,2025-03-31 17:00,2025-03-21 08:00,2025-03-31 17:00
ZX-5710,SECAI TURNOVER FOR ACELERATION - Drywall & Inspect - Battery Rm - 2F-SUE-FAB126503 BAKER/DESCOPE,Complete,Battery Rm - 2F -SUE-FAB126503,,,,,,,,2025-07-15 08:00,2025-07-28 17:00,2025-06-16 08:00,2025-06-16 16:00
FAB126503A-01,INSTALL/REWORK DRYWALL FRAMING AROUND DOORS - FAB126503A,Complete,Battery Rm - 2F -SUE-FAB126503,,,,,,,,2025-07-04 08:00,2025-07-14 17:00,2025-07-04 08:00,2025-07-14 17:00
FAB126503B-01,INSTALL/REWORK DRYWALL FRAMING AROUND DOORS - FAB126503B,Complete,Battery Rm - 2F -SUE-FAB126503,,,,,,,,2025-06-18 08:00,2025-06-26 17:00,2025-06-18 08:00,2025-06-26 17:00
ZX-5260,Complete Drywall & Inspect - Storage - 2F-SUW-FAB120509 NON RATED,Complete,Storage - 2F -SUW-FAB120509,,,,,,,,2025-07-11 08:00,2025-07-24 17:00,2025-06-10 08:00,2025-06-20 16:00
FAB120509A-01,IMPACT - INSTALL/REWORK DRYWALL FRAMING AROUND DOORS - FAB120509A,Complete,Storage - 2F -SUW-FAB120509,,,,,,,,2025-02-10 08:00,2025-02-18 17:00,2025-02-10 08:00,2025-02-18 17:00
ZX-5320,Complete Drywall & Inspect - Duct Shaft - 2F-SUW-FAB120403,Complete,Duct Shaft - 2F -SUW-FAB120403,,,,,,,,2025-11-06 08:00,2025-11-07 17:00,2025-11-06 08:00,2025-11-08 17:00
FAB120403A-01,IMPACT - INSTALL/REWORK DRYWALL FRAMING AROUND DOORS  - FAB120403A,Complete,Duct Shaft - 2F -SUW-FAB120403,,,,,,,,2025-05-19 08:00,2025-05-27 17:00,2025-05-19 08:00,2025-05-22 17:00
ZX-5380,Complete Drywall & Inspect - Vestibule 3 - 2F-FAB120304 - MKM,Complete,Vestibule 3 - 2F -SUW-FAB120304,,,,,,,,2025-07-18 08:00,2025-07-24 17:00,2025-07-18 08:00,2025-09-26 17:00
FAB120304A-01,IMPACT - INSTALL/REWORK DRYWALL FRAMING AROUND DOORS - FAB120304A,Complete,Vestibule 3 - 2F -SUW-FAB120304,,,,,,,,2025-02-11 08:00,2025-02-19 17:00,2025-02-11 08:00,2025-02-19 17:00
FAB120304B-01,IMPACT - INSTALL/REWORK DRYWALL FRAMING AROUND DOORS - FAB120304B,Complete,Vestibule 3 - 2F -SUW-FAB120304,,,,,,,,2025-02-11 08:00,2025-02-19 17:00,2025-02-11 08:00,2025-02-19 17:00
ZX-5500,Complete Drywall & Inspect - Battery Rm 1 - 2F-SUW-FAB120315,Complete,Battery Rm 1- 2F -SUW-FAB120315,,,,,,,,2025-07-15 08:00,2025-07-28 17:00,2025-06-16 08:00,2025-08-29 17:00
FAB120315A-01,IMPACT - INSTALL/REWORK DRYWALL FRAMING AROUND DOORS - FAB120315A,Complete,Battery Rm 1- 2F -SUW-FAB120315,,,,,,,,2025-05-01 08:00,2025-05-09 17:00,2025-05-01 08:00,2025-05-08 17:00
FAB120315B-01,IMPACT - INSTALL/REWORK DRYWALL FRAMING AROUND DOORS - FAB120315B,Complete,Battery Rm 1- 2F -SUW-FAB120315,,,,,,,,2025-04-01 08:00,2025-04-09 17:00,2025-03-26 08:00,2025-04-01 17:00
ZX-5290,Complete Drywall & Inspect - Duct Shaft - 2F-SUW-FAB120110,Complete,Duct Shaft - 2F -SUW-FAB120110,,,,,,,,2025-09-01 08:00,2025-09-05 17:00,2025-09-01 08:00,2025-09-05 17:00
ZX-5440,Complete Drywall & Inspect - IT/Security 1 - 2F-TR-FAB120107,Complete,IT/Security 1 - 2F -SUW-TR-FAB120107,,,,,,,,2025-09-01 08:00,2025-09-05 17:00,2025-09-01 08:00,2025-09-05 17:00
TR-FAB120107A-01,IMPACT - INSTALL/REWORK DRYWALL FRAMING AROUND DOORS - TR - FAB120107A,Complete,IT/Security 1 - 2F -SUW-TR-FAB120107,,,,,,,,2025-08-13 08:00,2025-08-13 08:00,2025-08-13 08:00,2025-08-13 08:00
ZX-5560,Complete Drywall & Inspect - Elevator #01A - 2F-1FAB-EL1A,Complete,Elevator 1A - 2F -SUW-FAB1-EL01A,,,,,,,,2025-05-16 08:00,2025-05-29 17:00,2025-05-16 08:00,2025-07-14 17:00
ZX-5410,Complete Drywall & Inspect - Duct Shaft - 2F-SUW-FAB120101,Not Started,Duct Shaft - 2F -SUW-FAB120101,,,,,,,,2025-12-05 08:00,2025-12-05 17:00,,
ZX-5470,SECAI TURNOVER FOR ACELERATION - Drywall & Inspect - Electrical Rm - 2F-SUE-FAB126502 BAKER/DESCOPE,Complete,Electrical Rm - 2F -SUE-FAB126502,,,,,,,,2025-07-15 08:00,2025-07-28 17:00,2025-06-16 08:00,2025-06-16 16:00
FAB126502A-01,INSTALL/REWORK DRYWALL FRAMING AROUND DOORS - FAB126502A,Complete,Electrical Rm - 2F -SUE-FAB126502,,,,,,,,2025-07-22 08:00,2025-07-30 17:00,2025-07-22 08:00,2025-07-30 17:00
FAB126502E-01,INSTALL/REWORK DRYWALL FRAMING AROUND DOORS - FAB126502E,Complete,Electrical Rm - 2F -SUE-FAB126502,,,,,,,,2025-07-22 08:00,2025-07-30 17:00,2025-05-08 08:00,2025-05-13 16:00
ZX-5740,Complete Drywall & Inspect - Duct Shaft - 2F-SUW-FAB120512,Complete,Duct Shaft - 2F -SUW-FAB120512,,,,,,,,2025-11-03 08:00,2025-11-07 17:00,2025-11-03 08:00,2025-11-07 17:00
ZX-5800,Complete Drywall & Inspect - Clean Vestibule #04 - 2F-FAB120402,Complete,Clean Vestibule 4 - 2F -SUW-FAB120402,,,,,,,,2025-07-09 08:00,2025-07-22 17:00,2025-02-04 08:00,2025-02-14 16:00
FAB120402A-01,IMPACT - INSTALL/REWORK DRYWALL FRAMING AROUND DOORS - FAB120402A,Complete,Clean Vestibule 4 - 2F -SUW-FAB120402,,,,,,,,2025-05-29 08:00,2025-06-06 17:00,2025-05-29 08:00,2025-05-30 08:00
ZX-5860,Complete Drywall & Inspect - Airlock 3 - 2F-FAB120303 - MKM,Complete,Air Lock 3 - 2F -SUW-FAB120303,,,,,,,,2025-07-18 08:00,2025-07-31 17:00,2025-07-18 08:00,2025-08-25 08:00
FAB120303A-01,IMPACT - INSTALL/REWORK DRYWALL FRAMING AROUND DOORS - FAB120303A,Complete,Air Lock 3 - 2F -SUW-FAB120303,,,,,,,,2025-03-20 08:00,2025-03-28 17:00,2025-03-20 08:00,2025-03-28 17:00
FAB120303B-01,IMPACT - INSTALL/REWORK DRYWALL FRAMING AROUND DOORS - FAB120303B,Complete,Air Lock 3 - 2F -SUW-FAB120303,,,,,,,,2025-02-25 08:00,2025-03-05 17:00,2025-02-25 08:00,2025-03-05 17:00
FAB120303C-01,IMPACT - INSTALL/REWORK DRYWALL FRAMING AROUND DOORS - FAB120303C,Complete,Air Lock 3 - 2F -SUW-FAB120303,,,,,,,,2025-08-12 08:00,2025-08-20 17:00,2025-07-15 08:00,2025-07-16 17:00
ZX-5980,Complete Drywall & Inspect - Duct Shaft - 2F-SUW-FAB120301,Complete,Duct Shaft - 2F -SUW-FAB120301,,,,,,,,2025-09-01 08:00,2025-09-05 17:00,2025-09-01 08:00,2025-09-05 17:00
FAB120301A-01,IMPACT - INSTALL/REWORK DRYWALL FRAMING AROUND DOORS - FAB120301A,Complete,Duct Shaft - 2F -SUW-FAB120301,,,,,,,,2025-02-25 08:00,2025-03-05 17:00,2025-02-25 08:00,2025-03-05 17:00
ZX-5920,Complete Drywall & Inspect - Fire Alarm 1 - 2F-FAB120105,Complete,Fire Alarm 1 - 2F -SUW-FAB120105,,,,,,,,2025-08-01 08:00,2025-08-14 17:00,2025-08-01 08:00,2025-08-11 17:00
FAB120105A-01,IMPACT - INSTALL/REWORK DRYWALL FRAMING AROUND DOORS - FAB120105A,Complete,Fire Alarm 1 - 2F -SUW-FAB120105,,,,,,,,2025-03-14 08:00,2025-03-24 17:00,2025-03-14 08:00,2025-03-24 17:00
ZX-6040,SECAI TOOK OVER FOR ACCELERATION - Drywall & Inspect - Elevator #01 - 2F-1FAB-EL1,Complete,Elevator 1 - 2F -SUW-FAB1-EL01,,,,,,,,2025-09-09 08:00,2025-09-19 17:00,2025-09-19 08:00,2025-09-19 17:00
ZX-5950,SECAI TOOK OVER ACCELERATION - Drywall & Inspect - Vestibule 5 - 2F-FAB120504 - MKM,Complete,Vestibule 5 - 2F -SUW-FAB120504,,,,,,,,2025-10-23 08:00,2025-10-24 17:00,2025-10-23 08:00,2025-10-30 17:00
ZX-6190,Complete Drywall & Inspect - Elevator #18 - 2F-1FAB-EL18 - MKM,Complete,Elevator 18 - 2F -SUE-FAB1-EL18,,,,,,,,2025-07-18 08:00,2025-07-28 17:00,2025-06-25 15:39,2025-07-04 17:00
ZX-6220,Complete Drywall & Inspect - Utility Rm - 2F-FAB120507,Complete,Utility Rm - 2F -SUW-FAB120507,,,,,,,,2025-09-01 08:00,2025-09-05 17:00,2025-09-01 08:00,2025-09-05 17:00
FAB120507C-01,IMPACT - INSTALL/REWORK DRYWALL FRAMING AROUND DOORS - FAB120507C,Complete,Utility Rm - 2F -SUW-FAB120507,,,,,,,,2025-02-13 08:00,2025-02-21 17:00,2025-02-13 08:00,2025-02-21 17:00
ZX-6280,Complete Drywall & Inspect - Duct Shaft - 2F-SUW-FAB120312,Complete,Duct Shaft - 2F -SUW-FAB120312,,,,,,,,2025-08-19 08:00,2025-08-25 17:00,2025-08-19 08:00,2025-08-25 17:00
FAB120308A-01,IMPACT - INSTALL/REWORK DRYWALL FRAMING AROUND DOORS - FAB120308A,Complete,Duct Shaft - 2F -SUW-FAB120312,,,,,,,,2025-02-25 08:00,2025-03-05 17:00,2025-02-25 08:00,2025-03-05 17:00
ZX-6340,Complete Drywall & Inspect - Elevator Hall #03 - 2F-FAB120305,Not Started,Elevator Hall 3 - 2F -SUW-FAB120305,,,,,,,,2025-12-12 08:00,2025-12-18 17:00,,
ZX-6460,Complete Drywall & Inspect - Clean Elevator 2 - 2F-1FAB-EL2 - MKM,Complete,Clean Elevator 2 - 2F -SUW-FAB1-EL02,,,,,,,,2025-06-10 08:00,2025-06-23 17:00,2025-08-05 08:00,2025-10-27 08:00
ZX-6250,Complete Drywall & Inspect - Vestibule 1 - 2F-FAB120109,Complete,Vestibule 1 - 2F -SUW-FAB120109,,,,,,,,2024-11-01 08:00,2024-11-14 17:00,2024-11-01 08:00,2024-11-12 16:00
FAB120109A-01,IMPACT - INSTALL/REWORK DRYWALL FRAMING AROUND DOORS - FAB120109A,Complete,Vestibule 1 - 2F -SUW-FAB120109,,,,,,,,2025-03-24 08:00,2025-04-01 17:00,2025-03-24 08:00,2025-03-31 17:00
FAB120109B-01,IMPACT - INSTALL/REWORK DRYWALL FRAMING AROUND DOORS - FAB120109B,Complete,Vestibule 1 - 2F -SUW-FAB120109,,,,,,,,2025-02-12 08:00,2025-02-20 17:00,2025-02-12 08:00,2025-02-20 17:00
FAB120109C-01,IMPACT - INSTALL/REWORK DRYWALL FRAMING AROUND DOORS - FAB120109C,Complete,Vestibule 1 - 2F -SUW-FAB120109,,,,,,,,2025-05-01 08:00,2025-05-09 17:00,2025-05-01 08:00,2025-05-05 17:00
ZX-6400,Complete Drywall & Inspect - Duct Shaft - 2F-SUW-FAB120112,Complete,Duct Shaft - 2F -SUW-FAB120112,,,,,,,,2025-10-01 08:00,2025-10-07 17:00,2025-10-01 08:00,2025-10-06 17:00
FAB120112A-01,IMPACT - INSTALL/REWORK DRYWALL FRAMING AROUND DOORS - FAB120112A,Complete,Duct Shaft - 2F -SUW-FAB120112,,,,,,,,2025-07-21 08:00,2025-07-29 17:00,2025-07-21 08:00,2025-07-29 17:00
ZX-6520,Complete Drywall & Inspect - Elevator #1B - 2F-1FAB-EL1B - MK MARLOW,Complete,Elevator 1B - 2F -SUW-FAB1-EL01B,,,,,,,,2025-05-13 08:00,2025-05-26 17:00,2025-05-13 08:00,2025-07-18 10:00
ZX-6430,Complete Drywall & Inspect - Airlock 5 - 2F-FAB120503,Complete,Air lock 5 - 2F -SUW-FAB120503,,,,,,,,2025-06-27 08:00,2025-07-10 17:00,2024-12-09 08:00,2024-12-18 08:00
FAB120503A-01,IMPACT - INSTALL/REWORK DRYWALL FRAMING AROUND DOORS - FAB120503A,Complete,Air lock 5 - 2F -SUW-FAB120503,,,,,,,,2025-02-13 08:00,2025-02-21 17:00,2025-02-13 08:00,2025-02-21 17:00
FAB120503B-01,IMPACT - INSTALL/REWORK DRYWALL FRAMING AROUND DOORS - FAB120503B HANDED OVER TO SECAI ON 08/29,Complete,Air lock 5 - 2F -SUW-FAB120503,,,,,,,,2025-08-29 08:00,2025-09-01 17:00,2025-08-29 08:00,2025-08-29 17:00
FAB120503D-01,IMPACT - INSTALL/REWORK DRYWALL FRAMING AROUND DOORS - FAB120503D HANDED OVER TO SECAI ON 08/29,Complete,Air lock 5 - 2F -SUW-FAB120503,,,,,,,,2025-08-28 08:00,2025-08-29 17:00,2025-08-29 08:00,2025-08-29 17:00
FAB120503E-01,IMPACT - INSTALL/REWORK DRYWALL FRAMING AROUND DOORS - FAB120503E,Complete,Air lock 5 - 2F -SUW-FAB120503,,,,,,,,2025-07-24 08:00,2025-08-01 17:00,2025-07-24 08:00,2025-08-01 17:00
ZX-6670,Complete Drywall & Inspect - Elevator Hall #05 - 2F-FAB120505,Complete,Elevator Hall 5 - 2F -SUW-FAB120505,,,,,,,,2025-09-05 08:00,2025-09-11 17:00,2025-09-05 08:00,2025-09-11 17:00
FAB120505C-01,IMPACT - INSTALL/REWORK DRYWALL FRAMING AROUND DOORS - FAB120505C,Complete,Elevator Hall 5 - 2F -SUW-FAB120505,,,,,,,,2025-02-24 08:00,2025-03-04 17:00,2025-02-24 08:00,2025-03-04 17:00
ZX-16720,Complete Drywall & Inspect - Stair #02 SUW- 2F- FAB1-ST02,Complete,Stair 2 - 2F -SUW-FAB1-ST02,,,,,,,,2025-05-13 08:00,2025-05-26 17:00,2025-05-13 08:00,2025-08-18 08:00
FAB1-ST02B-01,IMPACT - INSTALL/REWORK DRYWALL FRAMING AROUND DOORS - FAB1-ST02B,Complete,Stair 2 - 2F -SUW-FAB1-ST02,,,,,,,,2025-02-10 08:00,2025-02-18 17:00,2025-02-10 08:00,2025-02-18 17:00
ZX-16790,Complete Drywall & Inspect - Stair #03 SUW- 2F- FAB1-ST03,Complete,Stair 3 - 2F -SUW-FAB1-ST03,,,,,,,,2025-05-13 08:00,2025-05-19 17:00,2025-05-13 08:00,2025-10-13 17:00
FAB1-ST03B-01,IMPACT - INSTALL/REWORK DRYWALL FRAMING AROUND DOORS - FAB1-ST03B,Complete,Stair 3 - 2F -SUW-FAB1-ST03,,,,,,,,2025-02-10 08:00,2025-02-18 17:00,2025-02-10 08:00,2025-02-18 17:00
ZX-16940,Complete Drywall & Inspect - Stair #20 SUE- 2F- FAB1-ST20,Complete,Stair #20 - 2F -SUE-FAB1-ST20,,,,,,,,2025-05-13 08:00,2025-05-26 17:00,2025-05-13 08:00,2025-05-30 08:00
FAB1-ST20B-01,IMPACT - INSTALL/REWORK DRYWALL FRAMING AROUND DOORS - FAB1-ST20B,Complete,Stair #20 - 2F -SUE-FAB1-ST20,,,,,,,,2025-10-10 08:00,2025-10-13 17:00,2025-10-10 08:00,2025-10-13 17:00
ZX-17080,Complete Drywall & Inspect - Stair #21 SUE- 2F- FAB1-ST20,Complete,Stair #21 - 2F -SUE- FAB1-ST21,,,,,,,,2025-05-13 08:00,2025-05-26 17:00,2025-05-13 08:00,2025-08-18 08:00
ZX-17110,Complete Drywall & Inspect - Stair #04 SUW- 2F- FAB1-ST04 - MK MARLOW,Complete,Stair #4 SUW- 2F -SUWFAB1-ST04,,,,,,,,2025-06-10 08:00,2025-06-18 17:00,2025-06-10 08:00,2025-09-05 17:00
FAB1-ST04B-01,IMPACT - INSTALL/REWORK DRYWALL FRAMING AROUND DOORS - FAB1-ST04B,Complete,Stair #4 SUW- 2F -SUWFAB1-ST04,,,,,,,,2025-08-25 08:00,2025-08-26 17:00,2025-08-25 08:00,2025-08-26 17:00
ZX-17250,SECAI TURNOVER FOR ACELERATION - Drywall & Inspect - Stair #19 SUE- 2F- FAB1-ST19 BAKER/DESCOPE,Complete,Stair #19 - 2F -SUE-FAB1-ST19,,,,,,,,2025-07-17 08:00,2025-07-30 17:00,2025-06-06 08:00,2025-06-06 16:00
ZX-18150,Complete Drywall & Inspect - Stair 18 SUE- 2F- FAB1-ST18,Complete,Stair 18 - 2F -SUE-FAB1-ST18,,,,,,,,2025-10-03 08:00,2025-10-06 17:00,2025-10-03 08:00,2025-10-06 17:00
ZX-18530,Complete Drywall & Inspect - Duct Shaft - 2F-SUE-FAB126507,Complete,Duct Shaft - 2F -SUE-FAB126507,,,,,,,,2025-09-01 08:00,2025-09-05 17:00,2025-09-01 08:00,2025-09-05 17:00
ZX-2080,Complete Drywall & Inspect - Elevator Hall #01 - 3F-FAB130103,Complete,Elevator Hall 1 - 3F -SUW-FAB130103,,,,,,,,2025-09-03 08:00,2025-09-04 17:00,2025-09-03 08:00,2025-09-04 17:00
FAB130103A-01,IMPACT - INSTALL/REWORK DRYWALL FRAMING AROUND DOORS - FAB130103A,Complete,Elevator Hall 1 - 3F -SUW-FAB130103,,,,,,,,2025-01-20 08:00,2025-01-28 17:00,2025-01-20 08:00,2025-01-27 17:00
FAB130103C-01,IMPACT - INSTALL/REWORK DRYWALL FRAMING AROUND DOORS - FAB130103C,Complete,Elevator Hall 1 - 3F -SUW-FAB130103,,,,,,,,2025-03-26 08:00,2025-04-03 17:00,2025-03-26 08:00,2025-04-03 17:00
ZX-5620,Complete Drywall & Inspect - Elevator Mech Rm #22 - 1F-FAB116103,Complete,Elevator Mech. Rm 22 - 1F -SUE-FAB116103,,,,,,,,2024-09-10 08:00,2024-09-16 17:00,2024-09-10 08:00,2024-09-16 17:00
ZX-5350,Complete Drywall & Inspect - Fire Alarm 22-1F-FAB116116,Complete,Fire Alarm 22 - 1F -FAB116116,,,,,,,,2025-09-12 08:00,2025-09-12 17:00,2025-09-12 08:00,2025-09-16 17:00
FAB116116A-01,IMPACT - INSTALL/REWORK DRYWALL FRAMING AROUND DOORS - FAB116116A HANDED OVER TO SECAI ON 08/20,Complete,Fire Alarm 22 - 1F -FAB116116,,,,,,,,2025-08-20 08:00,2025-08-21 17:00,2025-08-20 08:00,2025-08-20 17:00
ZX-5530,SECAI TOOK OVER FOR ACCELERATION - Drywall & Inspect - Airlock 22-1F-FAB116111,Complete,Air Lock 22 - 1F -SUE-FAB116111,,,,,,,,2025-06-10 08:00,2025-06-10 08:00,2025-06-10 08:00,2025-06-10 08:00
FAB116111B-01,IMPACT - INSTALL/REWORK DRYWALL FRAMING AROUND DOORS - FAB116111B,Complete,Air Lock 22 - 1F -SUE-FAB116111,,,,,,,,2025-06-10 08:00,2025-06-18 17:00,2025-03-10 08:00,2025-03-17 08:00
FAB116111C-01,IMPACT - INSTALL/REWORK DRYWALL FRAMING AROUND DOORS - FAB116111C,Complete,Air Lock 22 - 1F -SUE-FAB116111,,,,,,,,2025-06-10 08:00,2025-06-18 17:00,2025-04-01 08:00,2025-04-07 08:00
FAB116111D-01,IMPACT - INSTALL/REWORK DRYWALL FRAMING AROUND DOORS - FAB116111D,Complete,Air Lock 22 - 1F -SUE-FAB116111,,,,,,,,2025-06-10 08:00,2025-06-18 17:00,2025-05-01 08:00,2025-05-01 08:00
FAB116111F-01,IMPACT - INSTALL/REWORK DRYWALL FRAMING AROUND DOORS - FAB116111F,Complete,Air Lock 22 - 1F -SUE-FAB116111,,,,,,,,2025-06-10 08:00,2025-06-18 17:00,2025-03-24 08:00,2025-04-01 08:00
ZX-5680,SECAI TURNOVER FOR ACELERATION - Drywall & Inspect - Fire Riser Rm 3-1F-SUE-FAB116107,Complete,Fire Riser Rm 3 - 1F -SUE-FAB116107,,,,,,,,2025-06-30 08:00,2025-07-11 17:00,2025-06-30 08:00,2025-06-30 17:00
ZX-5650,Complete Drywall & Inspect - Duct Shaft - 1F-SUE-FAB116109,Complete,Duct Shaft - 1F -SUE-FAB116109,,,,,,,,2025-09-01 08:00,2025-09-05 17:00,2025-09-01 08:00,2025-09-05 17:00
FAB116109A-01,IMPACT - INSTALL/REWORK DRYWALL FRAMING AROUND DOORS - FAB116109A,Complete,Duct Shaft - 1F -SUE-FAB116109,,,,,,,,2025-05-12 08:00,2025-05-20 17:00,2025-05-12 08:00,2025-05-16 17:00
FAB116109B-01,IMPACT - INSTALL/REWORK DRYWALL FRAMING AROUND DOORS - FAB116109B,Complete,Duct Shaft - 1F -SUE-FAB116109,,,,,,,,2025-09-15 08:00,2025-09-23 17:00,2025-07-15 08:00,2025-07-18 17:00
ZX-5590,Drywall & Inspect - Mechanical Rm 2-1F-SUE-FAB116203,Complete,Mechanical Rm 2 - 1F -SUE-FAB116203,,,,,,,,2024-08-15 08:00,2024-08-28 17:00,2024-08-15 08:00,2024-08-28 17:00
ZX-5890,Complete Drywall & Inspect - Pedestrian Walkway-1F-FAB114108,Complete,Pedestrian Walkway - 1F -FIZ-FAB114108,,,,,,,,2025-09-03 08:00,2025-09-16 17:00,2024-11-04 08:00,2024-11-11 16:00
ZX-6100,Complete Drywall & Inspect - Elevator #22 - 1F-1FAB-EL22,Complete,Elevator 22 - 1F -SUE-FAB1-EL22,,,,,,,,2025-07-18 08:00,2025-07-31 17:00,2025-07-14 08:00,2025-08-11 17:00
ZX-5830,Complete Drywall & Inspect - IT/Security 22-1F-FAB116112,Complete,IT/Security 22 - 1F -TR-SUE-FAB116112,,,,,,,,2025-09-12 08:00,2025-09-25 17:00,2025-05-16 08:00,2025-05-30 17:00
TR-FAB116112A-01,IMPACT - INSTALL/REWORK DRYWALL FRAMING AROUND DOORS - TR - FAB116112A,Complete,IT/Security 22 - 1F -TR-SUE-FAB116112,,,,,,,,2025-09-01 08:00,2025-09-09 17:00,2025-09-05 08:00,2025-09-05 17:00
ZX-6010,SECAI TURNOVER FOR ACELERATION - Drywall & Inspect - Exit Passageway 22-1F-FAB116106 - BAKER/DESCOPE,Complete,Exit Passageway 22 - 1F -SUE-FAB116106,,,,,,,,2025-10-17 13:00,2025-10-31 12:00,2025-06-10 12:00,2025-06-10 12:00
ZX-6160,Complete Drywall & Inspect - I/O Rm 1-1F-SUE-FAB116108,Complete,I/O Rm 1 - 1F -SUE-FAB116108,,,,,,,,2025-08-19 08:00,2025-08-25 17:00,2025-08-19 08:00,2025-08-25 17:00
FAB116108A-01,IMPACT - INSTALL/REWORK DRYWALL FRAMING AROUND DOORS - FAB116108A,Complete,I/O Rm 1 - 1F -SUE-FAB116108,,,,,,,,2025-06-25 08:00,2025-07-03 17:00,2025-06-25 08:00,2025-06-25 17:00
ZX-6130,Complete Drywall & Inspect - Duct Shaft Vestibule - 1F-SUE-FAB116205,Complete,Duct Shaft Vestibule - 1F -SUE-FAB116205,,,,,,,,2025-09-22 08:00,2025-10-03 17:00,2024-12-03 08:00,2024-12-09 16:00
ZX-6070,Complete Drywall & Inspect - Duct Shaft Vestibule - 1F-SUE-FAB116206,Complete,Duct Shaft Vestibule - 1F -SUE-FAB116206,,,,,,,,2025-10-06 08:00,2025-10-07 17:00,2025-10-06 08:00,2025-10-07 17:00
FAB116206A-01,IMPACT - INSTALL/REWORK DRYWALL FRAMING AROUND DOORS - FAB116206A,Complete,Duct Shaft Vestibule - 1F -SUE-FAB116206,,,,,,,,2025-08-13 08:00,2025-08-21 17:00,2025-08-13 08:00,2025-08-21 17:00
ZX-6370,Complete Drywall & Inspect - OAC Mechanical RM-1F-FAB116101,Complete,OAC Mechanical RM - 1F -FIZ-FAB116101,,,,,,,,2025-09-22 08:00,2025-09-22 17:00,2025-09-22 08:00,2025-09-22 17:00
ZX-6580,Complete Drywall & Inspect - Duct Shaft - 1F-SUE-FAB116102,Complete,Duct Shaft - 1F -SUE-FAB116102,,,,,,,,2025-09-01 08:00,2025-09-05 17:00,2025-09-01 08:00,2025-09-05 17:00
FAB116102A-01,IMPACT - INSTALL/REWORK DRYWALL FRAMING AROUND DOORS - FAB116102A,Complete,Duct Shaft - 1F -SUE-FAB116102,,,,,,,,2025-03-25 08:00,2025-04-02 17:00,2025-03-25 08:00,2025-04-02 17:00
ZX-6310,SECAI TURNOVER FOR ACELERATION - Drywall & Inspect - Elevator Hall #22 - 1F-FAB116110 BAKER/DESCOPE,Complete,Elevator Hall 22 - 1F -SUE-FAB116110,,,,,,,,2025-09-19 08:00,2025-10-02 17:00,2025-06-27 08:00,2025-06-27 16:00
FAB116110B-01,IMPACT - REWORK DRYWALL FOR/AND DOOR FRAME INSTALL BY SECAI - FAB116110B,Complete,Elevator Hall 22 - 1F -SUE-FAB116110,,,,,,,,2025-09-17 08:00,2025-09-25 17:00,2025-06-27 08:00,2025-06-27 16:00
FAB116105E-01,IMPACT - INSTALL/REWORK DRYWALL FRAMING AROUND DOORS - FAB116105E,Complete,Elevator Hall 22 - 1F -SUE-FAB116110,,,,,,,,2025-01-13 08:00,2025-01-13 17:00,2025-01-13 08:00,2025-01-13 17:00
ZX-6490,Complete Drywall & Inspect - Duct Shaft Vestibule - 1F-SUE-FAB116112 (MK MARLOW),Complete,Duct Shaft Vestibule - 1F -SUE-FAB116112,,,,,,,,2025-09-10 08:00,2025-09-23 17:00,2025-05-23 08:00,2025-06-02 16:00
FAB116112A-01,IMPACT - INSTALL/REWORK DRYWALL FRAMING AROUND DOORS - FAB116112A,Complete,Duct Shaft Vestibule - 1F -SUE-FAB116112,,,,,,,,2025-05-12 08:00,2025-05-13 17:00,2025-05-12 08:00,2025-05-13 17:00
ZX-6640,Drywall & Inspect - Mechanical Rm1-1F-SUE-FAB116201,Complete,Mechanical Rm1 - 1F -SUE-FAB116201,,,,,,,,2024-09-12 08:00,2024-09-25 17:00,2024-09-12 08:00,2024-09-25 17:00
FAB116201C-01,IMPACT - INSTALL/REWORK DRYWALL FRAMING AROUND DOORS - FAB116201C,Complete,Mechanical Rm1 - 1F -SUE-FAB116201,,,,,,,,2025-07-07 08:00,2025-07-07 17:00,2025-07-07 08:00,2025-07-07 17:00
ZX-6610,SECAI TURNOVER FOR ACELERATION - Drywall & Inspect - Exit Passageway 21-1F-FAB116202 - BAKER/DESCOPE,Complete,Exit Passageway 21 - 1F -SUE-FAB116202,,,,,,,,2025-06-10 08:00,2025-06-10 08:00,2025-06-10 08:00,2025-06-10 08:00
ZX-6550,Complete Drywall & Inspect - Duct Shaft - 1F-SUE-FAB116204,Complete,Duct Shaft - 1F -SUE-FAB116204,,,,,,,,2025-09-01 08:00,2025-09-05 17:00,2025-09-01 08:00,2025-09-05 17:00
FAB116204B-01,IMPACT - INSTALL/REWORK DRYWALL FRAMING AROUND DOORS - FAB116204B,Complete,Duct Shaft - 1F -SUE-FAB116204,,,,,,,,2025-03-18 08:00,2025-03-26 17:00,2025-03-18 08:00,2025-03-26 17:00
ZX-6790,SECAI TOOK OVER FOR ACCELERATION - Complete Drywall & Inspect - CV Room-1F-SUE-FAB116304,Complete,CV Room - 1F -SUE-FAB116304,,,,,,,,2025-06-27 08:00,2025-07-10 17:00,2025-06-27 08:00,2025-06-27 17:00
ZX-6820,Complete Drywall & Inspect - I/O Rm 2-1F-SUE-FAB116303,Complete,I/O Rm 2 - 1F -SUE-FAB116303,,,,,,,,2025-09-09 08:00,2025-09-15 17:00,2025-09-09 08:00,2025-09-15 17:00
ZX-7120,SECAI TURNOVER FOR ACELERATION - Drywall & Inspect - Elevator Hall #20 - 1F-FAB116305 BAKER/DESCOPE,Complete,Elevator Hall 20 - 1F -SUE-FAB116305,,,,,,,,2025-06-27 08:00,2025-07-10 17:00,2025-06-27 08:00,2025-06-27 16:00
FAB116305B-01,IMPACT - INSTALL/REWORK DRYWALL FRAMING AROUND DOORS - FAB116305B,Complete,Elevator Hall 20 - 1F -SUE-FAB116305,,,,,,,,2025-10-08 08:00,2025-10-16 17:00,2025-03-12 08:00,2025-03-21 16:00
ZX-7420,SECAI TURNOVER FOR ACELERATION - Complete Drywall & Inspect - Elevator Hall #20 - 1F-1FAB-EL20,Complete,Elevator 20 - 1F -SUE-FAB1-EL20,,,,,,,,2025-05-05 08:00,2025-05-16 17:00,2025-05-05 08:00,2025-06-05 17:00
ZX-6760,Complete Drywall & Inspect - Elevator Mech Rm #20 - 1F-FAB116302,Complete,Elevator Mech.Rm 20 - 1F -SUE-FAB116302,,,,,,,,2025-07-11 08:00,2025-07-24 17:00,2025-05-26 08:00,2025-06-02 16:00
FAB116302A-01,IMPACT - INSTALL/REWORK DRYWALL FRAMING AROUND DOORS - FAB116302A - HANDED OVER TO SECAI ON 08/20,Complete,Elevator Mech.Rm 20 - 1F -SUE-FAB116302,,,,,,,,2025-10-06 08:00,2025-10-14 17:00,2025-08-20 13:00,2025-08-20 17:00
ZX-6910,SECAI TURNOVER FOR ACELERATION - Drywall & Inspect - Airlock 20-1F-FAB116301 - BAKER/DESCOPE,Complete,Air Lock 20 - 1F -SUE-FAB116301,,,,,,,,2025-07-30 08:00,2025-07-30 08:00,2025-06-03 08:00,2025-06-04 16:00
ZX-7210,SECAI TURNOVER FOR ACELERATION - Drywall & Inspect - Exit Passageway 20-1F-FAB116307,Complete,Exit Passageway 20 - 1F -SUE-FAB116307,,,,,,,,2025-06-10 08:00,2025-06-10 08:00,2025-06-10 08:00,2025-06-10 08:00
ZX-7510,Complete Drywall & Inspect - IT/Security 20-1F-TR-FAB116315,Complete,IT/Security 20 - 1F -SUE-TR-FAB116315,,,,,,,,2025-09-08 08:00,2025-09-12 17:00,2025-09-08 08:00,2025-09-12 17:00
TR-FAB116315A-01,IMPACT - INSTALL/REWORK DRYWALL FRAMING AROUND DOORS - TR - FAB116315A,Complete,IT/Security 20 - 1F -SUE-TR-FAB116315,,,,,,,,2025-07-25 08:00,2025-08-04 17:00,2025-07-25 08:00,2025-08-04 17:00
ZX-6730,Complete Drywall & Inspect - Fire Alarm 20-1F-FAB116312,Complete,Fire Alarm 20 - 1F -SUE-FAB116312,,,,,,,,2025-09-09 08:00,2025-09-15 17:00,2025-09-09 08:00,2025-09-15 17:00
FAB116312A-01,IMPACT - INSTALL/REWORK DRYWALL FRAMING AROUND DOORS - FAB116312A,Complete,Fire Alarm 20 - 1F -SUE-FAB116312,,,,,,,,2025-04-22 08:00,2025-04-30 17:00,2025-04-22 08:00,2025-04-30 17:00
ZX-6970,Complete Drywall & Inspect - Duct Shaft Vestibule - 1F-SUE-FAB116310,Complete,Duct Shaft Vestibule - 1F -SUE-FAB116310,,,,,,,,2025-09-01 08:00,2025-09-05 17:00,2025-09-01 08:00,2025-09-05 17:00
ZX-7270,Complete Drywall & Inspect - Duct Shaft - 1F-SUE-FAB116401,Complete,Duct Shaft - 1F -SUE-FAB116401,,,,,,,,2025-09-01 08:00,2025-09-05 17:00,2025-09-01 08:00,2025-09-05 17:00
FAB116401A-01,IMPACT - INSTALL/REWORK DRYWALL FRAMING AROUND DOORS - FAB116401A,Complete,Duct Shaft - 1F -SUE-FAB116401,,,,,,,,2025-03-25 08:00,2025-04-02 17:00,2025-03-25 08:00,2025-04-02 17:00
FAB116401B-01,IMPACT - INSTALL/REWORK DRYWALL FRAMING AROUND DOORS - FAB116401B,Complete,Duct Shaft - 1F -SUE-FAB116401,,,,,,,,2025-08-15 08:00,2025-08-15 08:00,2025-08-15 08:00,2025-08-15 08:00
FAB116408A-01,IMPACT - INSTALL/REWORK DRYWALL FRAMING AROUND DOORS - FAB116408A,Complete,Duct Shaft - 1F -SUE-FAB116401,,,,,,,,2025-03-25 08:00,2025-04-02 17:00,2025-03-25 08:00,2025-04-02 17:00
ZX-7570,Complete Drywall & Inspect - Mechanical Rm 3-1F-SUE-FAB116308,Complete,Mechanical Rm 3 - 1F -SUE-FAB116308,,,,,,,,2024-09-25 08:00,2024-10-01 17:00,2024-09-25 08:00,2024-10-01 17:00
FAB116308A-01,IMPACT - INSTALL/REWORK DRYWALL FRAMING AROUND DOORS - FAB116308A,Complete,Mechanical Rm 3 - 1F -SUE-FAB116308,,,,,,,,2025-08-12 08:00,2025-08-12 17:00,2025-08-12 08:00,2025-08-12 17:00
FAB116308J-01,IMPACT - INSTALL/REWORK DRYWALL FRAMING AROUND DOORS - FAB116308J,Complete,Mechanical Rm 3 - 1F -SUE-FAB116308,,,,,,,,2025-08-11 08:00,2025-08-19 17:00,2025-08-11 08:00,2025-08-19 17:00
ZX-6700,SECAI TURNOVER FOR ACELERATION - Complete Drywall & Inspect - Fire Riser Rm 4-1F-SUE-FAB116309,Complete,Fire Riser Rm 4 - 1F -SUE-FAB116309,,,,,,,,2025-07-07 08:00,2025-07-11 17:00,2025-07-07 08:00,2025-07-07 17:00
ZX-6880,Complete Drywall & Inspect - Toilet (W)-1-1F-SUE-FAB116402 WALL THIKNESS ISSUE (NON RATED WALLS),Complete,Toilet (W) 1 - 1F -SUE-FAB116402,,,,,,,,2025-06-10 08:00,2025-06-18 17:00,2025-06-10 08:00,2025-08-26 17:00
ZX-7180,Complete Drywall & Inspect - Toilet(M)-1-1F-SUE-FAB116404 WALL THIKNESS ISSUE (NON RATED WALLS),Complete,Toilet(M) 1 - 1F -SUE-FAB116404,,,,,,,,2025-06-27 08:00,2025-07-07 17:00,2025-06-27 08:00,2025-08-26 08:00
FAB116404A-01,IMPACT - INSTALL/REWORK DRYWALL FRAMING AROUND DOORS - FAB116404A,Complete,Toilet(M) 1 - 1F -SUE-FAB116404,,,,,,,,2025-08-01 08:00,2025-08-11 17:00,2025-08-01 08:00,2025-08-08 17:00
ZX-7480,Complete Drywall & Inspect - Toilet Vestibule - 1-1F-SUE-FAB116403 WALL THIKNESS ISSUE NON RATED WALLS,Complete,Toilet Vestibule 1 - 1F -SUE-FAB116403,,,,,,,,2025-08-11 08:00,2025-08-19 17:00,2025-08-11 08:00,2025-09-22 17:00
ZX-7030,Complete Drywall & Inspect - Janitor Rm 1-1F-SUE-FAB116405,Complete,Janitor Rm 1 - 1F -SUE-FAB116405,,,,,,,,2025-08-27 08:00,2025-08-28 17:00,2025-08-27 08:00,2025-08-28 17:00
FAB116405A-01,IMPACT - INSTALL/REWORK DRYWALL FRAMING AROUND DOORS - FAB116405A,Complete,Janitor Rm 1 - 1F -SUE-FAB116405,,,,,,,,2025-08-11 08:00,2025-08-19 17:00,2025-08-11 08:00,2025-08-12 17:00
ZX-7330,Complete Drywall & Inspect CEILING - Maint Rm 1-1F-SUE-FAB116406,Complete,Maint Rm 1 - 1F -SUE-FAB116406,,,,,,,,2025-08-22 08:00,2025-08-28 17:00,2025-08-22 08:00,2025-08-28 17:00
FAB116406A-01,IMPACT - INSTALL/REWORK DRYWALL FRAMING AROUND DOORS - FAB116406A,Complete,Maint Rm 1 - 1F -SUE-FAB116406,,,,,,,,2025-03-17 08:00,2025-03-25 17:00,2025-03-17 08:00,2025-03-25 17:00
ZX-7630,SECAI TURNOVER FOR ACELERATION - Drywall & Inspect - Exit Passageway 19-1F-FAB116407 - BAKER/DESCOPE,Complete,Exit Passageway 19 - 1F -SUE-FAB116407,,,,,,,,2025-09-24 10:00,2025-09-24 10:00,2025-06-10 10:00,2025-06-10 10:00
ZX-7150,SECAI TURNOVER FOR ACELERATION - Complete Drywall & Inspect - Fire Riser Rm 5-1F-SUE-FAB116507,Complete,Fire Riser Rm 5 - 1F -SUE-FAB116507,,,,,,,,2025-07-07 08:00,2025-07-11 17:00,2025-07-07 08:00,2025-07-07 17:00
ZX-7450,Complete Drywall & Inspect - Wafer I/O -1F-SUE-FAB116501,Complete,Wafer I/O - 1F -SUE-FAB116501,,,,,,,,2025-08-01 08:00,2025-08-07 17:00,2025-08-01 08:00,2025-08-07 17:00
FAB116414C-01,IMPACT - INSTALL/REWORK DRYWALL FRAMING AROUND DOORS - FAB116414C,Complete,Wafer I/O - 1F -SUE-FAB116501,,,,,,,,2025-04-01 08:00,2025-04-09 17:00,2025-04-01 08:00,2025-04-07 17:00
ZX-6940,Complete Drywall & Inspect - Duct Shaft - 1F-SUE-FAB116413,Complete,Duct Shaft - 1F -SUE-FAB116413,,,,,,,,2025-08-29 08:00,2025-09-04 17:00,2025-08-29 08:00,2025-09-04 17:00
FAB116413A-01,IMPACT - INSTALL/REWORK DRYWALL FRAMING AROUND DOORS - FAB116413A,Complete,Duct Shaft - 1F -SUE-FAB116413,,,,,,,,2025-09-26 08:00,2025-09-26 17:00,2025-09-26 08:00,2025-09-26 17:00
FAB116412A-01,IMPACT - INSTALL/REWORK DRYWALL FRAMING AROUND DOORS - FAB116412A,Complete,Duct Shaft - 1F -SUE-FAB116413,,,,,,,,2025-03-24 08:00,2025-04-01 17:00,2025-03-24 08:00,2025-04-01 17:00
ZX-7240,Complete Drywall & Inspect - Elevator #19-1F-1FAB-EL19,Complete,Elevator 19 - 1F -SUE-FAB1-EL19,,,,,,,,2025-05-16 08:00,2025-05-29 17:00,2025-05-16 08:00,2025-06-26 16:00
ZX-7540,Complete Drywall & Inspect - Elevator Mech Rm #19 - FAB116526,Complete,Elevator Mech.Rm 19 - 1F -SUE-FAB116526,,,,,,,,2025-06-20 08:00,2025-07-03 17:00,2025-06-13 08:00,2025-09-03 17:00
ZX-7090,Complete Drywall & Inspect - PR Airlock Vestibule - 1F-SUE-FAB116520,Complete,PR Air Lock Vestibule - 1F -SUE-FAB116520,,,,,,,,2025-08-28 08:00,2025-09-03 17:00,2025-08-28 08:00,2025-09-04 17:00
ZX-7390,SECAI TOOK OVER FOR ACCELERATION - Drywall & Inspect - PR Airlock-1F-SUE-FAB116519,Complete,PR Air Lock - 1F -SUE-FAB116519,,,,,,,,2025-10-01 08:00,2025-10-07 17:00,2025-10-07 08:00,2025-10-07 17:00
ZX-7690,Complete Drywall & Inspect - Duct Shaft - 1F-SUE-FAB116518,Complete,Duct Shaft - 1F -SUE-FAB116518,,,,,,,,2025-09-22 08:00,2025-09-24 17:00,2025-09-22 08:00,2025-09-24 17:00
FAB116518A-01,INSTALL/REWORK DRYWALL FRAMING AROUND DOORS - FAB116518A,Complete,Duct Shaft - 1F -SUE-FAB116518,,,,,,,,2025-06-16 08:00,2025-06-24 17:00,2025-06-16 08:00,2025-06-24 17:00
ZX-7060,Complete Drywall & Inspect - PR Room-1F-SUE-FAB116509,Complete,PR Room - 1F -SUE-FAB116509,,,,,,,,2025-08-11 08:00,2025-08-15 17:00,2025-08-11 08:00,2025-08-15 17:00
ZX-7300,Complete Drywall & Inspect - UPW MCC Rm-1F-SUE-FAB116521,Complete,UPW MCC Rm - 1F -SUE-FAB116521,,,,,,,,2025-08-01 08:00,2025-08-07 17:00,2025-08-01 08:00,2025-08-07 17:00
FAB116521A-01,IMPACT - INSTALL/REWORK DRYWALL FRAMING AROUND DOORS - FAB116521A,Complete,UPW MCC Rm - 1F -SUE-FAB116521,,,,,,,,2025-09-01 08:00,2025-09-02 17:00,2025-09-01 08:00,2025-09-02 17:00
ZX-7600,Complete Drywall & Inspect - Duct Shaft - 1F-SUE-FAB116516,Complete,Duct Shaft - 1F -SUE-FAB116516,,,,,,,,2025-09-01 08:00,2025-09-05 17:00,2025-09-01 08:00,2025-09-05 17:00
ZX-7810,Complete Drywall & Inspect - Elevator Mech Rm #18 - FAB116514 MK MARLOW,Complete,Elevator Mech. Rm - 1F -SUE18-FAB116514,,,,,,,,2025-06-20 08:00,2025-07-03 17:00,2025-06-13 08:00,2025-09-03 17:00
ZX-7840,Complete Drywall & Inspect - Elevator #18 - 1F-1FAB-EL18,Complete,Elevator 18 - 1F -SUE-FAB1-EL18,,,,,,,,2025-06-10 08:00,2025-06-18 17:00,2025-06-10 08:00,2025-06-26 16:00
ZX-8140,Complete Drywall & Inspect - Fire Alarm Rm 18-1F-FAB116527,Complete,Fire Alarm Rm 18 - 1F -SUE-FAB116527,,,,,,,,2025-08-20 08:00,2025-08-26 17:00,2025-08-20 08:00,2025-08-26 17:00
FAB116527A-01,IMPACT - INSTALL/REWORK DRYWALL FRAMING AROUND DOORS - FAB116527A,Complete,Fire Alarm Rm 18 - 1F -SUE-FAB116527,,,,,,,,2025-10-03 08:00,2025-10-07 17:00,2025-10-03 08:00,2025-10-07 17:00
ZX-8440,SECAI TOOK OVER FOR ACCELERATION - Complete Drywall & Inspect - Elevator Hall 18-1F-FAB116512,Complete,Elevator Hall 18 - 1F -SUE-FAB116512,,,,,,,,2025-08-20 08:00,2025-08-26 17:00,2025-06-27 08:00,2025-06-27 17:00
FAB116512C-01,IMPACT - INSTALL/REWORK DRYWALL FRAMING AROUND DOORS - FAB116512C HANDED OVER TO SECAI ON 08/20,Complete,Elevator Hall 18 - 1F -SUE-FAB116512,,,,,,,,2025-08-20 08:00,2025-08-21 17:00,2025-08-20 08:00,2025-08-20 17:00
ZX-7780,SECAI TURNOVER FOR ACELERATION - Drywall & Inspect - Airlock 18-1F-FAB116513 - BAKER/DESCOPE,Complete,Air Lock 18 - 1F -SUE-FAB116513,,,,,,,,2025-08-27 08:00,2025-09-09 17:00,2025-05-19 08:00,2025-06-02 16:00
ZX-7930,SECAI TURNOVER FOR ACELERATION - Drywall & Inspect - Exit Passageway 18-1F-FAB116511 BAKER/DESCOPE,Complete,Exit Passageway 18 - 1F -SUE-FAB116511,,,,,,,,2025-08-12 08:00,2025-08-25 17:00,2025-06-10 08:00,2025-06-10 16:00
FAB116511B-01,IMPACT - INSTALL/REWORK DRYWALL FRAMING AROUND DOORS - FAB116511B BAKER/DESCOPE,Complete,Exit Passageway 18 - 1F -SUE-FAB116511,,,,,,,,2025-06-10 08:00,2025-06-10 17:00,2025-06-10 08:00,2025-06-10 16:00
ZX-8230,Complete Drywall & Inspect - D-G/33-1F,Complete,D-G/33 - 1F -FAB,,,,,,,,2025-05-28 08:00,2025-06-10 17:00,2025-05-23 08:00,2025-05-28 16:00
ZX-16530,IMPACT - Complete Drywall & Inspect - D-G/33-1F N&b APPROVAL,Complete,D-G/33 - 1F -FAB,,,,,,,,2025-05-05 08:00,2025-05-16 17:00,2025-05-05 08:00,2025-05-22 16:00
ZX-8530,SECAI TURNOVER FOR ACELERATION - Drywall & Inspect - Bunker Rm 14-1F-FAB114404 BAKER/DESCOPE,Complete,Bunker Rm 14 - 1F -FAB-FAB114404,,,,,,,,2025-06-10 08:00,2025-06-10 08:00,2025-06-10 08:00,2025-06-10 08:00
FAB114404A-01,IMPACT - INSTALL/REWORK DRYWALL FRAMING AROUND DOORS - FAB114404A,Complete,Bunker Rm 14 - 1F -FAB-FAB114404,,,,,,,,2025-06-10 08:00,2025-06-10 08:00,2025-03-17 08:00,2025-03-24 08:00
FAB114404B-01,IMPACT - INSTALL/REWORK DRYWALL FRAMING AROUND DOORS - FAB114404B,Complete,Bunker Rm 14 - 1F -FAB-FAB114404,,,,,,,,2025-06-10 08:00,2025-06-10 08:00,2025-03-03 08:00,2025-03-11 08:00
ZX-7750,SECAI TURNOVER FOR ACELERATION - Drywall & Inspect - Bunker Rm 13-FAB114403 BAKER/DESCOPE,Complete,Bunker Rm 13 - 1F -FAB-FAB114403,,,,,,,,2025-08-28 08:00,2025-08-28 08:00,2025-06-10 08:00,2025-06-10 08:00
FAB114403A-01,IMPACT - INSTALL/REWORK DRYWALL FRAMING AROUND DOORS - FAB114403A,Complete,Bunker Rm 13 - 1F -FAB-FAB114403,,,,,,,,2025-06-10 08:00,2025-06-10 08:00,2025-03-03 08:00,2025-03-12 08:00
FAB114403B-01,IMPACT - INSTALL/REWORK DRYWALL FRAMING AROUND DOORS - FAB114403B,Complete,Bunker Rm 13 - 1F -FAB-FAB114403,,,,,,,,2025-06-10 08:00,2025-06-10 08:00,2025-03-05 08:00,2025-03-14 08:00
ZX-7990,SECAI TURNOVER FOR ACELERATION - Drywall & Inspect - Bunker Rm 12-FAB114402 BAKER/DESCOPE,Complete,Bunker Rm 12 -1F -FAB-FAB114402,,,,,,,,2025-08-15 08:00,2025-08-15 08:00,2025-06-10 08:00,2025-06-10 08:00
FAB114402A-01,IMPACT - INSTALL/REWORK DRYWALL FRAMING AROUND DOORS BY SECAI - FAB114402A BAKER/DESCOPE,Complete,Bunker Rm 12 -1F -FAB-FAB114402,,,,,,,,2025-06-10 08:00,2025-06-10 08:00,2025-06-10 08:00,2025-06-10 08:00
FAB114402B-01,IMPACT - INSTALL/REWORK DRYWALL FRAMING AROUND DOORS - FAB114402B,Complete,Bunker Rm 12 -1F -FAB-FAB114402,,,,,,,,2025-06-10 08:00,2025-06-10 08:00,2025-03-04 08:00,2025-03-12 08:00
ZX-8290,SECAI TURNOVER FOR ACELERATION - Drywall & Inspect - Bunker Rm 11-FAB114203 BAKER/DESCOPE,Complete,Bunker Rm 11- 1F -FAB-FAB114203,,,,,,,,2025-08-28 08:00,2025-08-28 08:00,2025-06-10 08:00,2025-06-10 08:00
FAB114203A-01,IMPACT - INSTALL/REWORK DRYWALL FRAMING AROUND DOORS - FAB114203A,Complete,Bunker Rm 11- 1F -FAB-FAB114203,,,,,,,,2025-06-10 08:00,2025-06-10 08:00,2025-03-04 08:00,2025-03-13 08:00
FAB114203B-01,IMPACT - INSTALL/REWORK DRYWALL FRAMING AROUND DOORS - FAB114203B,Complete,Bunker Rm 11- 1F -FAB-FAB114203,,,,,,,,2025-06-10 08:00,2025-06-10 08:00,2025-03-04 08:00,2025-06-13 08:00
ZX-8590,SECAI TURNOVER FOR ACELERATION - Drywall & Inspect - Bunker Rm 10-FAB114155 BAKER/DESCOPE,Complete,Bunker Rm 10- 1F -FAB-FAB114155,,,,,,,,2025-09-05 08:00,2025-09-18 17:00,2025-06-10 08:00,2025-06-10 16:00
FAB114155A-01,IMPACT - INSTALL/REWORK DRYWALL FRAMING AROUND DOORS BY SECAI - FAB114155A,Complete,Bunker Rm 10- 1F -FAB-FAB114155,,,,,,,,2025-09-23 08:00,2025-10-01 17:00,2025-03-05 08:00,2025-03-13 16:00
FAB114155B-01,IMPACT - INSTALL/REWORK DRYWALL FRAMING AROUND DOORS BY SECAI - FAB114155B,Complete,Bunker Rm 10- 1F -FAB-FAB114155,,,,,,,,2025-09-23 08:00,2025-10-01 17:00,2025-03-18 08:00,2025-03-26 16:00
ZX-7720,SECAI TURNOVER FOR ACELERATION - Drywall & Inspect - Bunker Rm 9-FAB114154 BAKER/DESCOPE,Complete,Bunker Rm 9 - 1F -FAB-FAB114154,,,,,,,,2025-08-29 08:00,2025-08-29 08:00,2025-06-10 08:00,2025-06-10 08:00
FAB114154A-01,IMPACT - INSTALL/REWORK DRYWALL FRAMING AROUND DOORS - FAB114154A,Complete,Bunker Rm 9 - 1F -FAB-FAB114154,,,,,,,,2025-03-04 08:00,2025-03-04 08:00,2025-03-04 08:00,2025-03-11 17:00
FAB114154B-01,IMPACT - INSTALL/REWORK DRYWALL FRAMING AROUND DOORS - FAB114154B,Complete,Bunker Rm 9 - 1F -FAB-FAB114154,,,,,,,,2025-03-03 08:00,2025-03-03 08:00,2025-03-04 08:00,2025-03-11 17:00
ZX-7900,SECAI TURNOVER FOR ACELERATION - Drywall & Inspect - Bunker Rm 8-FAB114153 BAKER/DESCOPE,Complete,Bunker Rm 8 - 1F -FAB-FAB114153,,,,,,,,2025-06-10 08:00,2025-06-10 08:00,2025-06-10 08:00,2025-06-10 08:00
FAB114153A-01,IMPACT - INSTALL/REWORK DRYWALL FRAMING AROUND DOORS BY SECAI - FAB114153A,Complete,Bunker Rm 8 - 1F -FAB-FAB114153,,,,,,,,2025-06-10 08:00,2025-06-10 08:00,2025-03-03 08:00,2025-03-11 08:00
FAB114153B-01,IMPACT - INSTALL/REWORK DRYWALL FRAMING AROUND DOORS BY SECAI - FAB114153B,Complete,Bunker Rm 8 - 1F -FAB-FAB114153,,,,,,,,2025-06-10 08:00,2025-06-10 08:00,2025-03-25 08:00,2025-03-25 08:00
ZX-8200,SECAI TURNOVER FOR ACELERATION - Drywall & Inspect - Bunker Rm 7-FAB114152 BAKER/DESCOPE,Complete,Bunker Rm 7 - 1F -FAB-FAB114152,,,,,,,,2025-06-10 08:00,2025-06-10 08:00,2025-06-10 08:00,2025-06-10 08:00
FAB114152A-01,IMPACT - INSTALL/REWORK DRYWALL FRAMING AROUND DOORS - FAB114152A,Complete,Bunker Rm 7 - 1F -FAB-FAB114152,,,,,,,,2025-06-10 08:00,2025-06-10 08:00,2025-03-11 08:00,2025-03-20 08:00
FAB114152B-01,IMPACT - INSTALL/REWORK DRYWALL FRAMING AROUND DOORS - FAB114152B,Complete,Bunker Rm 7 - 1F -FAB-FAB114152,,,,,,,,2025-06-10 08:00,2025-06-10 08:00,2025-03-11 08:00,2025-03-20 08:00
ZX-8500,Complete Drywall & Inspect - D-G/3-1F MK MARLOW,Complete,D-G/3 - 1F - FIZ,,,,,,,,2025-09-04 08:00,2025-09-04 08:00,2025-09-04 08:00,2025-09-04 08:00
ZX-8050,Complete Drywall & Inspect - G.3-J/3-1F MK MARLOW,Complete,G.3-J/3 - 1F - FIZ,,,,,,,,2025-08-04 08:00,2025-08-15 17:00,2025-08-04 08:00,2025-08-15 17:00
ZX-8350,Complete Drywall & Inspect - PCS Monitoring Rm-1F-FAB112155 NON RATED WALLS,Complete,PCS Monitoring Rm - 1F - FAB-FAB112155,,,,,,,,2024-08-19 08:00,2024-08-30 17:00,2024-08-19 08:00,2024-08-30 16:00
FAB112155B-01,IMPACT - REWORK DRYWALL FOR/AND INSTALL DOOR FRAMES - FAB112155B,Complete,PCS Monitoring Rm - 1F - FAB-FAB112155,,,,,,,,2025-08-05 08:00,2025-08-13 17:00,2025-03-10 08:00,2025-03-19 16:00
ZX-8650,SECAI TURNOVER FOR ACELERATION - Drywall & Inspect - PCS Cleaning Rm-1F-FAB112157 BAKER/DESCOPE,Complete,PCS Cleaning Rm - 1F -FAB-FAB112157,,,,,,,,2025-09-19 08:00,2025-10-02 17:00,2025-06-27 08:00,2025-06-27 16:00
ZX-7870,Complete Drywall & Inspect - Manufacturing Storage 1-1F-FAB112157 NON RATED WALLS,Complete,Manufacturing Storage 1 - 1F -FAB-FAB112157,,,,,,,,2025-10-02 08:00,2025-10-15 17:00,2024-08-19 08:00,2024-08-30 16:00
ZX-8170,SECAI TURNOVER FOR ACELERATION - Complete Drywall & Inspect - MCC Rm 1-1F-FAB112159,Complete,MCC Rm 1 - 1F -FAB-FAB112159,,,,,,,,2025-06-27 08:00,2025-07-10 17:00,2025-06-27 08:00,2025-06-27 17:00
FAB112159A-01,IMPACT - INSTALL/REWORK DRYWALL FRAMING AROUND DOORS - FAB112159A,Complete,MCC Rm 1 - 1F -FAB-FAB112159,,,,,,,,2025-09-24 08:00,2025-09-24 17:00,2025-09-24 08:00,2025-09-24 17:00
FAB112159B-01,IMPACT - INSTALL/REWORK DRYWALL FRAMING AROUND DOORS - FAB112159B,Complete,MCC Rm 1 - 1F -FAB-FAB112159,,,,,,,,2025-03-19 08:00,2025-03-27 17:00,2025-03-19 08:00,2025-03-27 17:00
ZX-8470,SECAI TURNOVER FOR ACELERATION - Complete Drywall & Inspect - I/O Rm 1-1F-FAB112160,Complete,I/O Rm 1 - 1F -FAB-FAB112160,,,,,,,,2025-06-27 08:00,2025-07-10 17:00,2025-06-27 08:00,2025-06-27 17:00
FAB112160A-01,IMPACT - INSTALL/REWORK DRYWALL FRAMING AROUND DOORS - FAB112160A,Complete,I/O Rm 1 - 1F -FAB-FAB112160,,,,,,,,2025-04-07 08:00,2025-04-15 17:00,2025-04-07 08:00,2025-04-15 17:00
ZX-7960,Complete Drywall & Inspect - I/O Rm 2-1F-FAB112202 NON RATED WALLS,Complete,I/O Rm 2 - 1F -FAB-FAB112202,,,,,,,,2025-08-29 08:00,2025-09-11 17:00,2024-05-20 08:00,2024-05-27 16:00
ZX-8260,SECAI TURNOVER FOR ACELERATION - Drywall & Inspect - Bunker Rm 1-1F-FAB112203 BAKER/DESCOPE,Complete,Bunker Rm 1 - 1F -FAB-FAB112203,,,,,,,,2025-08-25 08:00,2025-08-25 08:00,2025-06-10 08:00,2025-06-10 08:00
FAB112203A-01,IMPACT - INSTALL/REWORK DRYWALL FRAMING AROUND DOORS - FAB112203A,Complete,Bunker Rm 1 - 1F -FAB-FAB112203,,,,,,,,2025-06-10 08:00,2025-06-10 08:00,2025-03-01 08:00,2025-03-10 08:00
FAB112203B-01,IMPACT - INSTALL/REWORK DRYWALL FRAMING AROUND DOORS - FAB112203B,Complete,Bunker Rm 1 - 1F -FAB-FAB112203,,,,,,,,2025-06-10 08:00,2025-06-10 08:00,2025-03-01 08:00,2025-03-10 08:00
ZX-8560,SECAI TURNOVER FOR ACELERATION - Drywall & Inspect - Bunker Rm 2-1F-FAB112205 BAKER/DESCOPE,Complete,Bunker Rm 2 - 1F -FAB-FAB112205,,,,,,,,2025-06-10 08:00,2025-06-10 08:00,2025-06-10 08:00,2025-06-10 08:00
FAB112205A-01,IMPACT - INSTALL/REWORK DRYWALL FRAMING AROUND DOORS BY SECAI - FAB112205A BAKER/DESCOPE,Complete,Bunker Rm 2 - 1F -FAB-FAB112205,,,,,,,,2025-06-10 08:00,2025-06-10 08:00,2025-03-17 08:00,2025-03-24 08:00
FAB112205B-01,IMPACT - INSTALL/REWORK DRYWALL FRAMING AROUND DOORS - FAB112205B,Complete,Bunker Rm 2 - 1F -FAB-FAB112205,,,,,,,,2025-06-10 08:00,2025-06-10 08:00,2025-03-17 08:00,2025-03-24 08:00
ZX-8410,Complete Drywall & Inspect - Bunker Rm 3-1F-FAB112302 BAKER/DESCOPE,Complete,Bunker Rm 3 -1F -FAB-FAB112302,,,,,,,,2025-06-10 08:00,2025-06-10 08:00,2025-06-10 08:00,2025-06-10 08:00
FAB112302A-01,IMPACT - INSTALL/REWORK DRYWALL FRAMING AROUND DOORS - FAB112302A,Complete,Bunker Rm 3 -1F -FAB-FAB112302,,,,,,,,2025-06-10 08:00,2025-06-10 08:00,2025-03-04 08:00,2025-03-13 08:00
FAB112302B-01,IMPACT - INSTALL/REWORK DRYWALL FRAMING AROUND DOORS - FAB112302B,Complete,Bunker Rm 3 -1F -FAB-FAB112302,,,,,,,,2025-06-10 08:00,2025-06-10 08:00,2025-03-20 08:00,2025-03-20 08:00
ZX-8710,SECAI TURNOVER FOR ACELERATION - Drywall & Inspect - Bunker Rm 4-1F-FAB112303 BAKER/DESCOPE,Complete,Bunker Rm 4 - 1F -FAB-FAB112303,,,,,,,,2025-06-10 08:00,2025-06-10 08:00,2025-06-10 08:00,2025-06-10 08:00
FAB112303A-01,IMPACT - INSTALL/REWORK DRYWALL FRAMING AROUND DOORS BY SECAI - FAB112303A,Complete,Bunker Rm 4 - 1F -FAB-FAB112303,,,,,,,,2025-03-17 08:00,2025-03-17 08:00,2025-03-17 08:00,2025-03-27 17:00
FAB112303B-01,IMPACT - INSTALL/REWORK DRYWALL FRAMING AROUND DOORS BY SECAI - FAB112303B,Complete,Bunker Rm 4 - 1F -FAB-FAB112303,,,,,,,,2025-06-10 08:00,2025-06-10 08:00,2025-03-11 08:00,2025-03-20 08:00
ZX-8080,SECAI TURNOVER FOR ACELERATION - Drywall & Inspect - Bunker Rm 5-1F-FAB112305 BAKER/DESCOPE,Complete,Bunker Rm 5 - 1F -FAB-FAB112305,,,,,,,,2025-06-10 08:00,2025-06-10 08:00,2025-06-10 08:00,2025-06-10 08:00
FAB112305A-01,IMPACT - INSTALL/REWORK DRYWALL FRAMING AROUND DOORS - FAB112305A,Complete,Bunker Rm 5 - 1F -FAB-FAB112305,,,,,,,,2025-06-10 08:00,2025-06-18 17:00,2025-03-03 08:00,2025-03-11 08:00
FAB112305B-01,IMPACT - INSTALL/REWORK DRYWALL FRAMING AROUND DOORS - FAB112305B,Complete,Bunker Rm 5 - 1F -FAB-FAB112305,,,,,,,,2025-10-01 08:00,2025-10-01 17:00,2025-10-01 08:00,2025-10-01 17:00
ZX-8680,Complete Drywall & Inspect - I/O Rm 3-1F-FAB112408,Complete,I/O Rm 3 - 1F -FAB-FAB112408,,,,,,,,2025-08-08 08:00,2025-08-21 17:00,2024-03-11 08:00,2024-03-22 16:00
FAB112408A-01,IMPACT - OPEN DRYWALL TO/AND INSTALL DOOR FRAME BY SECAI - FAB112408A,Complete,I/O Rm 3 - 1F -FAB-FAB112408,,,,,,,,2025-08-26 08:00,2025-09-03 17:00,2025-06-27 08:00,2025-06-27 16:00
ZX-8020,SECAI TURNOVER FOR ACELERATION - Complete Drywall & Inspect - MCC Rm 2-1F-FAB112407,Complete,MCC Rm 2 - 1F -FAB-FAB112407,,,,,,,,2025-06-27 08:00,2025-07-10 17:00,2025-06-27 08:00,2025-06-27 17:00
FAB112407B-01,IMPACT - INSTALL/REWORK DRYWALL FRAMING AROUND DOORS - FAB112407B,Complete,MCC Rm 2 - 1F -FAB-FAB112407,,,,,,,,2025-04-07 08:00,2025-04-15 17:00,2025-04-07 08:00,2025-04-15 17:00
ZX-8320,Complete Drywall & Inspect - Manufacturing Storage 5-1F-FAB112410 NON RATED WALLS,Complete,Manufacturing Storage 5 - 1F -FAB-FAB112410,,,,,,,,2024-08-05 08:00,2024-08-16 17:00,2024-08-05 08:00,2024-08-16 16:00
ZX-8620,SECAI TURNOVER FOR ACELERATION - Drywall & Inspect - Bunker Rm 6-1F-FAB112403 BAKER/DESCOPE,Complete,Bunker Rm 6 - 1F -FAB-FAB112403,,,,,,,,2025-06-10 08:00,2025-06-10 08:00,2025-06-10 08:00,2025-06-10 08:00
FAB112403A-01,IMPACT - INSTALL/REWORK DRYWALL FRAMING AROUND DOORS - FAB112403A,Complete,Bunker Rm 6 - 1F -FAB-FAB112403,,,,,,,,2025-06-10 08:00,2025-06-10 08:00,2025-03-11 08:00,2025-03-20 08:00
FAB112403B-01,IMPACT - INSTALL/REWORK DRYWALL FRAMING AROUND DOORS - FAB112403B,Complete,Bunker Rm 6 - 1F -FAB-FAB112403,,,,,,,,2025-06-10 08:00,2025-06-10 08:00,2025-05-01 08:00,2025-05-09 08:00
ZX-8830,SECAI TURNOVER FOR ACELERATION - Complete Drywall & Inspect - I/O Rm 4-1F-FAB112404,Complete,I/O Rm 4 -1F -FAB-FAB112404,,,,,,,,2025-06-27 08:00,2025-07-10 17:00,2025-06-27 08:00,2025-06-27 17:00
FAB112404A-01,IMPACT - INSTALL/REWORK DRYWALL FRAMING AROUND DOORS - FAB112404A,Complete,I/O Rm 4 -1F -FAB-FAB112404,,,,,,,,2025-03-07 08:00,2025-03-17 17:00,2025-03-07 08:00,2025-03-17 17:00
FAB112404B-01,IMPACT - INSTALL/REWORK DRYWALL FRAMING AROUND DOORS - FAB112404B,Complete,I/O Rm 4 -1F -FAB-FAB112404,,,,,,,,2025-09-03 08:00,2025-09-04 17:00,2025-09-03 08:00,2025-09-04 17:00
ZX-8860,Complete Drywall & Inspect - G.3-J/33-1F,Complete,G.3-J/33- 1F - FAB,,,,,,,,2025-06-27 08:00,2025-07-10 17:00,2025-05-27 08:00,2025-06-09 16:00
ZX-16560,IMPACT - Complete Drywall & Inspect - G.3-J/33-1F N&B APPROVAL,Complete,G.3-J/33- 1F - FAB,,,,,,,,2025-05-05 08:00,2025-05-16 17:00,2025-05-05 08:00,2025-05-15 16:00
ZX-9160,SECAI TURNOVER FOR ACELERATION - Drywall & Inspect - Exit Passageway 5-1F-FAB110506 BAKER/DESCOPE,Complete,Exit Passageway 5 - 1F -SUW-FAB110506,,,,,,,,2025-05-28 08:00,2025-06-16 17:00,2025-05-22 08:00,2025-05-22 16:00
ZX-17490,IMPACT - SECAI DENIAL OF ACCEL COST FOR BERG - Drywall & Inspect - Exit Passageway 5-1F-FAB110506,Complete,Exit Passageway 5 - 1F -SUW-FAB110506,,,,,,,,2025-05-13 08:00,2025-05-30 17:00,2025-05-05 08:00,2025-05-22 16:00
ZX-8800,SECAI TURNOVER FOR ACELERATION - Drywall & Inspect - Elevator Hall #05 - 1F-FAB110507,Complete,Elevator Hall 5 - 1F -SUW-FAB110507,,,,,,,,2025-06-27 08:00,2025-07-10 17:00,2025-06-27 08:00,2025-06-27 16:00
FAB110507B-01,SECAI TURNOVER FOR ACELERATION - INSTALL/REWORK DRYWALL FRAMING AROUND DOORS - FAB110507B,Complete,Elevator Hall 5 - 1F -SUW-FAB110507,,,,,,,,2025-07-25 08:00,2025-08-04 17:00,2025-06-27 08:00,2025-06-27 16:00
FAB110507B-03,SECAI TURNOVER FOR ACELERATION - INSTALL FRAME & DRYWALL AROUND DOORS - FAB110507B,Complete,Elevator Hall 5 - 1F -SUW-FAB110507,,,,,,,,2025-08-01 08:00,2025-08-01 17:00,2025-08-01 08:00,2025-08-01 17:00
ZX-8950,Complete Drywall & Inspect - Elevator Mech Rm #05 - 1F-FAB110504 MK MARLOW,Complete,Elevator Mech. Rm 5 - 1F -SUW-FAB110504,,,,,,,,2025-08-07 08:00,2025-08-15 17:00,2025-08-07 08:00,2025-08-15 17:00
FAB110504A-01,IMPACT - INSTALL/REWORK DRYWALL FRAMING AROUND DOORS - FAB110504A,Complete,Elevator Mech. Rm 5 - 1F -SUW-FAB110504,,,,,,,,2025-10-14 08:00,2025-10-20 17:00,2025-10-14 08:00,2025-10-20 17:00
ZX-9250,SECAI TOOK OVER FOR ACCELERATION - Drywall & Inspect - Elevator #05 - 1F-1FAB-EL5,Complete,Elevator 5 - 1F -SUW-FAB1-EL05,,,,,,,,2025-10-02 08:00,2025-10-03 17:00,2025-10-03 08:00,2025-10-03 17:00
ZX-9550,SECAI TURNOVER FOR ACELERATION - Drywall & Inspect - S.GCS Storage Rm-1F-SUW-FAB110509 BAKER/DESCOPE,Complete,S.GCS Storage Rm - 1F -SUW-FAB110509,,,,,,,,2025-06-25 08:00,2025-07-08 17:00,2025-06-17 08:00,2025-06-27 16:00
ZX-8770,Complete Drywall & Inspect - Fire Riser Rm 2-1F-SUW-FAB110510,Complete,Fire Riser Rm 2 - 1F -SUW-FAB110510,,,,,,,,2025-08-15 08:00,2025-08-25 17:00,2025-08-08 08:00,2025-08-22 17:00
ZX-9310,Complete Drywall & Inspect - Vestibule - 1F-SUW-FAB110508,Complete,Fire Alarm Rm 5 - 1F -SUW-FAB110508,,,,,,,,2025-05-05 08:00,2025-05-13 17:00,2025-05-05 08:00,2025-05-13 16:00
ZX-9330,Drywall Catch-up inspections - Vestibule - 1F-SUW-FAB110508,Complete,Fire Alarm Rm 5 - 1F -SUW-FAB110508,,,,,,,,2025-07-31 08:00,2025-08-08 17:00,2025-07-31 08:00,2025-08-08 17:00
ZX-17430,Control Drywall & Inspect & Inspect - Vestibule - 1F-SUW-FAB110508,Complete,Fire Alarm Rm 5 - 1F -SUW-FAB110508,,,,,,,,2025-05-27 08:00,2025-05-28 17:00,2025-05-27 08:00,2025-05-28 16:00
FAB110508A-01,IMPACT - INSTALL/REWORK DRYWALL FRAMING AROUND DOORS - FAB110508A,Complete,Fire Alarm Rm 5 - 1F -SUW-FAB110508,,,,,,,,2025-09-02 08:00,2025-09-03 17:00,2025-09-02 08:00,2025-09-03 17:00
ZX-17800,IMPACT - SECAI DENIAL OF ACCEL COST FOR BERG - Drywall & Inspect Vestibule - 1F-SUW-FAB110508,Complete,Fire Alarm Rm 5 - 1F -SUW-FAB110508,,,,,,,,2025-05-13 08:00,2025-05-21 17:00,2025-05-13 08:00,2025-06-10 16:00
ZX-9610,Complete Drywall & Inspect - Duct Shaft - 1F-SUW-FAB110516,Complete,Duct Shaft - 1F -SUW-FAB110516,,,,,,,,2025-09-17 08:00,2025-09-18 17:00,2025-09-19 08:00,2025-09-19 17:00
FAB110516A-01,IMPACT - INSTALL/REWORK DRYWALL FRAMING AROUND DOORS - FAB110516A,Complete,Duct Shaft - 1F -SUW-FAB110516,,,,,,,,2025-03-07 08:00,2025-03-17 17:00,2025-03-07 08:00,2025-03-17 17:00
ZX-8740,Complete Drywall & Inspect - Duct Shaft Vestibule - 1F-SUW-FAB110502,Complete,Duct Shaft Vestibule - 1F -SUW-FAB110502,,,,,,,,2025-06-10 08:00,2025-06-18 17:00,2025-06-10 08:00,2025-10-13 08:00
ZX-17440,IMPACT - SECAI DENIAL OF ACCEL COST FOR BERG - Complete Drywall & Inspect - Duct Shaft Vestibule - 1F-SUW-FAB110502,Complete,Duct Shaft Vestibule - 1F -SUW-FAB110502,,,,,,,,2025-05-05 08:00,2025-05-13 17:00,2025-05-05 08:00,2025-06-10 16:00
ZX-8920,Complete Drywall & Inspect - Duct Shaft - 1F-SUW-FAB110503,Complete,Duct Shaft - 1F -SUW-FAB110503,,,,,,,,2025-08-14 08:00,2025-08-27 17:00,2025-08-14 08:00,2025-08-18 17:00
FAB110503B-01,IMPACT - INSTALL/REWORK DRYWALL FRAMING AROUND DOORS - FAB110503B,Complete,Duct Shaft - 1F -SUW-FAB110503,,,,,,,,2025-09-16 08:00,2025-09-17 17:00,2025-09-16 08:00,2025-09-17 17:00
ZX-9220,Complete Drywall & Inspect - Rated Chase West - 1F-SUW-FAB110513 - 7/14 DESIGN CHANGE TAKE ON OVER BY SECAI,Complete,Rated Chase West - 1F - SUW-FAB110513,,,,,,,,2025-09-23 08:00,2025-10-06 17:00,2025-07-07 08:00,2025-07-09 17:00
FAB110513A-01,IMPACT - INSTALL/REWORK DRYWALL FRAMING AROUND DOORS - FAB110513A,Complete,Rated Chase West - 1F - SUW-FAB110513,,,,,,,,2025-10-09 08:00,2025-10-17 17:00,2025-07-14 08:00,2025-07-14 17:00
ZX-9520,IMPACT - SECAI DENIAL OF ACCEL COST FOR BERG - Drywall & Inspect - Duct Shaft Vestibule - 1F-SUW-FAB110123,Complete,Duct Shaft Vestibule - 1F -SUW-FAB110123,,,,,,,,2025-05-05 08:00,2025-05-13 17:00,2025-05-05 08:00,2025-06-10 16:00
ZX-17450,Complete Drywall & Inspect - Duct Shaft Vestibule - 1F-SUW-FAB110123,Complete,Duct Shaft Vestibule - 1F -SUW-FAB110123,,,,,,,,2025-06-20 08:00,2025-06-30 17:00,2025-06-20 08:00,2025-07-03 16:00
FAB110123A-01,IMPACT - INSTALL/REWORK DRYWALL FRAMING AROUND DOORS - FAB110123A,Complete,Duct Shaft Vestibule - 1F -SUW-FAB110123,,,,,,,,2025-08-11 08:00,2025-08-19 17:00,2025-07-15 08:00,2025-07-16 17:00
ZX-9070,SECAI TURNOVER FOR ACELERATION - Drywall & Inspect - Exit Passageway 4-1F-FAB110402 BAKER/DESCOPE,Complete,Exit Passageway 4 - 1F -SUW-FAB110402,,,,,,,,2025-05-28 08:00,2025-06-10 17:00,2025-05-22 08:00,2025-05-22 16:00
ZX-17460,IMPACT - SECAI DENIAL OF ACCEL COST FOR BERG - Complete Drywall & Inspect - Exit Passageway 4-1F-FAB110402,Complete,Exit Passageway 4 - 1F -SUW-FAB110402,,,,,,,,2025-05-05 08:00,2025-05-16 17:00,2025-05-05 08:00,2025-05-22 16:00
ZX-9370,Complete Drywall & Inspect - Duct Shaft - 1F-SUW-FAB110306,Complete,Duct Shaft - 1F -SUW-FAB110306,,,,,,,,2025-08-04 08:00,2025-08-15 17:00,2025-08-04 08:00,2025-08-15 17:00
ZX-9670,Catchup - Complete Drywall & Inspect - GCS Training Rm-1F-SUW-FAB110401,Complete,GCS Training Rm - 1F -SUW-FAB110401,,,,,,,,2025-08-08 08:00,2025-08-18 17:00,2025-08-04 08:00,2025-08-08 17:00
ZX-8890,Complete Drywall & Inspect - H2 Purifier Analyzer Rm-1F-SUW-FAB110309,Complete,H2 Purifier Analyzer Rm - 1F -SUW-FAB110309,,,,,,,,2025-06-16 08:00,2025-06-17 17:00,2025-05-12 08:00,2025-05-22 16:00
ZX-16580,IMPACT - Complete Drywall & Inspect - H2 Purifier Analyzer Rm-1F-SUW-FAB110309 SECAI DENIAL OF ACCEL COST FOR BERG,Complete,H2 Purifier Analyzer Rm - 1F -SUW-FAB110309,,,,,,,,2025-05-05 08:00,2025-05-13 17:00,2025-05-05 08:00,2025-05-09 16:00
ZX-9190,Complete Drywall & Inspect - H2 Purifier Rm-1F-SUW-FAB110307,Complete,H2 Purifier Rm - 1F -SUW-FAB110307,,,,,,,,2025-05-05 08:00,2025-05-13 17:00,2025-05-05 08:00,2025-05-13 16:00
ZX-9490,Complete Drywall & Inspect - Fire Alarm Rm 3-1F-FAB110312,Complete,Fire Alarm Rm 3 - 1F -SUW-FAB110312,,,,,,,,2025-08-19 08:00,2025-08-22 17:00,2025-08-19 08:00,2025-08-22 17:00
ZX-8980,Complete Drywall & Inspect - Equip Platform-1F-SUW-FAB110308,Complete,Equip Platform - 1F -SUW-FAB110308,,,,,,,,2025-09-01 08:00,2025-09-02 17:00,2025-09-01 08:00,2025-09-02 17:00
ZX-9280,Complete Drywall & Inspect - MCC Rm-1F-SUW-FAB110314,Complete,MCC Rm - 1F -SUW-FAB110314,,,,,,,,2025-05-13 08:00,2025-05-15 17:00,2025-05-13 08:00,2025-05-15 16:00
FAB110314B-01,IMPACT - INSTALL/REWORK DRYWALL FRAMING AROUND DOORS - FAB110314B,Complete,MCC Rm - 1F -SUW-FAB110314,,,,,,,,2025-09-16 08:00,2025-09-17 17:00,2025-09-16 08:00,2025-09-17 17:00
ZX-9580,Complete Drywall & Inspect - I/O Rm-1F-SUW-FAB110313,Complete,I/O Rm - 1F -SUW-FAB110313,,,,,,,,2025-08-14 08:00,2025-08-22 17:00,2025-08-14 08:00,2025-08-22 17:00
FAB110313A-01,IMPACT - INSTALL/REWORK DRYWALL FRAMING AROUND DOORS - FAB110313A,Complete,I/O Rm - 1F -SUW-FAB110313,,,,,,,,2025-09-01 08:00,2025-09-01 17:00,2025-09-01 08:00,2025-09-01 17:00
ZX-9130,Complete Drywall & Inspect - IT/Security Rm-1F-SUW-FAB110311,Complete,IT/Security Rm - 1F -SUW-FAB110311,,,,,,,,2025-09-01 08:00,2025-09-09 17:00,2025-07-31 08:00,2025-08-01 17:00
ZX-9730,SECAI TURNOVER FOR ACELERATION - Drywall & Inspect - Exit Passageway 3-1F-FAB110305 BAKER/DESCOPE,Complete,Exit Passageway 3 - 1F -SUW-FAB110305,,,,,,,,2025-05-13 08:00,2025-05-13 08:00,2025-05-05 08:00,2025-05-05 08:00
FAB110305A-01,INSTALL/REWORK DRYWALL FRAMING AROUND DOORS - FAB110305A,Complete,Exit Passageway 3 - 1F -SUW-FAB110305,,,,,,,,2025-10-06 08:00,2025-10-14 17:00,2025-10-06 08:00,2025-10-14 17:00
ZX-9100,SECAI TURNOVER FOR ACELERATION - Drywall & Inspect - Airlock 3-1F-FAB110304 BAKER/DESCOPE,Complete,Air Lock 3 - 1F -SUW-FAB110304,,,,,,,,2025-05-28 08:00,2025-06-06 17:00,2025-05-22 08:00,2025-05-22 16:00
ZX-17400,IMPACT - SECAI DENIAL OF ACCEL COST FOR BERG - Drywall & Inspect - Airlock 3-1F-FAB110304,Complete,Air Lock 3 - 1F -SUW-FAB110304,,,,,,,,2025-05-05 08:00,2025-05-14 17:00,2025-05-05 08:00,2025-05-22 08:00
FAB110304B-03,INSTALL DOOR FRAMES - FAB110304B (REMOVED DURING DRYWALL REMEDIATION),Complete,Air Lock 3 - 1F -SUW-FAB110304,,,,,,,,2025-10-15 08:00,2025-10-15 17:00,2025-10-15 08:00,2025-10-15 17:00
ZX-9400,Complete Drywall & Inspect - Elevator Hall #03 - 1F-FAB110302,Complete,Elevator Hall 3 - 1F -SUW-FAB110302,,,,,,,,2025-05-28 08:00,2025-06-10 17:00,2025-05-28 08:00,2025-06-12 16:00
ZX-17410,IMPACT - SECAI DENIAL OF ACCEL COST FOR BERG Drywall & Inspect - Elevator Hall 3-1F-FAB110302,Complete,Elevator Hall 3 - 1F -SUW-FAB110302,,,,,,,,2025-05-05 08:00,2025-05-16 17:00,2025-05-05 08:00,2025-06-10 16:00
ZX-18760,SECAI TURNOVER FOR ACELERATION - NORTH WALL Drywall & Inspect - Elevator Hall #03 - 1F-FAB110302 AXIOS/DESCOPE,Complete,Elevator Hall 3 - 1F -SUW-FAB110302,,,,,,,,2025-05-28 08:00,2025-06-10 17:00,2025-06-12 08:00,2025-06-12 16:00
ZX-9700,Complete Drywall & Inspect - Elvator Mech Rm-1F-FAB110303,Complete,Elvator Mech Rm #3 - 1F -SUW-FAB110303,,,,,,,,2025-06-10 08:00,2025-06-18 17:00,2025-06-10 08:00,2025-06-13 16:00
ZX-16570,IMPACT - Complete Drywall & Inspect - Elvator Mech Rm-1F-FAB110303 - SECAI DENIAL OF ACCEL COST FOR BERG,Complete,Elvator Mech Rm #3 - 1F -SUW-FAB110303,,,,,,,,2025-05-05 08:00,2025-05-13 17:00,2025-05-05 08:00,2025-05-27 16:00
ZX-9040,Complete Drywall & Inspect - Elevator #03 - 1F-1FAB-EL3,Complete,Elevator 3 - 1F -SUW-FAB1-EL03,,,,,,,,2025-05-05 08:00,2025-05-13 17:00,2025-05-05 08:00,2025-05-13 16:00
ZX-9340,Complete Drywall & Inspect - Duct Shaft - 1F-SUW-FAB110206,Complete,Duct Shaft - 1F -SUW-FAB110206,,,,,,,,2025-08-27 08:00,2025-09-11 17:00,2025-08-15 08:00,2025-10-27 08:00
FAB110122A-01,IMPACT - INSTALL/REWORK DRYWALL FRAMING AROUND DOORS - FAB110122A,Complete,Duct Shaft - 1F -SUW-FAB110206,,,,,,,,2025-07-25 08:00,2025-08-04 17:00,2025-07-08 13:00,2025-07-16 17:00
ZX-9760,SECAI TURNOVER FOR ACELERATION - Drywall & Inspect - SOUTH PIT - BAKER/DESCOPE,Complete,SOUTH/NORTH PIT - 1F - SUW,,,,,,,,2025-05-07 13:00,2025-05-16 12:00,2025-05-07 12:00,2025-06-10 12:00
ZX-9880,SECAI TURNOVER FOR ACELERATION - Drywall & Inspect - Exit Passageway 2-1F-FAB110211 BAKER/DESCOPE,Complete,Exit Passageway 2 - 1F -FAB110211,,,,,,,,2025-05-19 13:00,2025-05-19 13:00,2025-05-06 12:00,2025-05-06 12:00
ZX-9910,Complete Drywall & Inspect - Elevator Mech Rm #02 - 1F-FAB110205,Complete,Elevator Mech. Rm 2 - 1F -SUW-FAB110205,,,,,,,,2025-08-11 08:00,2025-08-22 17:00,2025-08-11 08:00,2025-08-15 17:00
ZX-10210,Complete - Drywall & Inspect - Fire Riser Rm - 1F-SUW-FAB110212 - Catchup inspection pending,Complete,Fire Riser Rm - 1F -SUW-FAB110212,,,,,,,,2025-08-19 08:00,2025-08-21 11:00,2025-08-12 08:00,2025-08-22 17:00
ZX-10510,Complete Drywall & Inspect - Toilet Corridor-1F-SUW-FAB110213,Complete,Toilet Corridor - 1F -SUW-FAB110213,,,,,,,,2025-09-22 08:00,2025-10-03 17:00,2025-07-18 08:00,2025-07-24 11:00
ZX-9850,Complete Drywall & Inspect - Toilet (M) 2-1F-SUW-FAB110202,Complete,Toilet (M) 2 - 1F -SUW-FAB110202,,,,,,,,2025-08-04 08:00,2025-08-15 17:00,2025-07-07 08:00,2025-08-05 17:00
FAB110202B-01,IMPACT - INSTALL/REWORK DRYWALL FRAMING AROUND DOORS - FAB110202B,Complete,Toilet (M) 2 - 1F -SUW-FAB110202,,,,,,,,2025-08-11 08:00,2025-08-19 17:00,2025-08-11 08:00,2025-08-19 17:00
ZX-17910,IMPACT - MEP - Complete Drywall & Inspect - Toilet (M) 2-1F-SUW-FAB110202,Complete,Toilet (M) 2 - 1F -SUW-FAB110202,,,,,,,,2025-06-20 08:00,2025-07-03 17:00,2025-05-06 08:00,2025-05-28 16:00
ZX-18980,IMPACT - SECAI REMOVED DRYWALL - Toilet (M) 2-1F-SUW-FAB110202,Complete,Toilet (M) 2 - 1F -SUW-FAB110202,,,,,,,,2025-06-27 08:00,2025-07-17 17:00,2025-06-27 08:00,2025-07-22 17:00
ZX-10000,Complete Drywall & Inspect - Toilet (W) 2-1F-SUW-FAB110203 NON RATED WALLS,Complete,Toilet (W) 2 - 1F -SUW-FAB110203,,,,,,,,2025-06-10 08:00,2025-06-23 17:00,2025-06-10 08:00,2025-06-19 16:00
FAB110203A-01,IMPACT - INSTALL/REWORK DRYWALL FRAMING AROUND DOORS - FAB110203A,Complete,Toilet (W) 2 - 1F -SUW-FAB110203,,,,,,,,2025-08-11 08:00,2025-08-19 17:00,2025-08-11 08:00,2025-08-19 17:00
ZX-17900,IMPACT - MEP - Complete Drywall & Inspect - Toilet (W) 2-1F-SUW-FAB110203,Complete,Toilet (W) 2 - 1F -SUW-FAB110203,,,,,,,,2025-05-30 08:00,2025-06-12 17:00,2025-05-06 08:00,2025-05-23 16:00
ZX-10300,Complete Drywall & Inspect - Maint Rm 2-1F-SUW-FAB110201,Complete,Maint Rm 2 - 1F -SUW-FAB110201,,,,,,,,2025-10-06 08:00,2025-10-07 17:00,2025-10-06 08:00,2025-10-07 17:00
ZX-10600,Complete Drywall & Inspect - Gas Purifier Analyzer Rm-1F-SUW-FAB110207,Complete,Gas Purifier Analyzer Rm - 1F -SUW-FAB110207,,,,,,,,2025-07-09 08:00,2025-07-22 17:00,2025-07-03 08:00,2025-07-07 16:00
FAB110207A-01,IMPACT - INSTALL/REWORK DRYWALL FRAMING AROUND DOORS - FAB110207A,Complete,Gas Purifier Analyzer Rm - 1F -SUW-FAB110207,,,,,,,,2025-08-29 08:00,2025-09-01 17:00,2025-08-29 08:00,2025-09-01 17:00
FAB110207B-01,IMPACT - INSTALL/REWORK DRYWALL FRAMING AROUND DOORS - FAB110207B,Complete,Gas Purifier Analyzer Rm - 1F -SUW-FAB110207,,,,,,,,2025-08-29 08:00,2025-09-01 17:00,2025-08-29 08:00,2025-09-01 17:00
ZX-9820,Complete Drywall & Inspect - Gas Purifier Rm-1F-SUW-FAB110204 NON RATED WALLS,Complete,Gas Purifier Rm - 1F -SUW-FAB110204,,,,,,,,2025-05-07 13:00,2025-05-21 12:00,2025-05-07 12:00,2025-05-14 16:00
ZX-10060,Complete Drywall & Inspect - Duct Shaft Vestibule - 1F-SUW-FAB110109,Complete,Duct Shaft Vestibule - 1F -SUW-FAB110109,,,,,,,,2025-08-19 08:00,2025-09-11 12:00,2025-08-11 08:00,2025-08-18 12:00
FAB110109B-01,IMPACT - INSTALL/REWORK DRYWALL FRAMING AROUND DOORS - FAB110109B DOOR FRAME HANDED OVER TO SECAI,Complete,Duct Shaft Vestibule - 1F -SUW-FAB110109,,,,,,,,2025-07-17 13:00,2025-07-18 12:00,2025-07-17 13:00,2025-07-18 12:00
ZX-10360,Complete Drywall & Inspect - Duct Shaft - 1F-SUW-FAB110112,Complete,Duct Shaft - 1F -SUW-FAB110112,,,,,,,,2025-09-02 08:00,2025-09-17 17:00,2025-08-15 08:00,2025-08-18 17:00
ZX-17500,IMPACT - BERG ALLOCATION - Drywall & Inspect - Duct Shaft - 1F-SUW-FAB110112,Complete,Duct Shaft - 1F -SUW-FAB110112,,,,,,,,2025-05-13 08:00,2025-05-28 17:00,2025-05-05 08:00,2025-05-27 16:00
ZX-10660,Complete Drywall & Inspect - Duct Shaft Vestibule - 1F-SUW-FAB110108,Complete,Duct Shaft Vestibule - 1F -SUW-FAB110108,,,,,,,,2025-05-27 08:00,2025-06-11 17:00,2025-05-27 08:00,2025-06-20 16:00
ZX-18790,IMPACT - AFTER FINISHED THE DRYWALL SECAI MEP MADE HOLES -Duct Shaft Vestibule - 1F-SUW-FAB110108,Complete,Duct Shaft Vestibule - 1F -SUW-FAB110108,,,,,,,,2025-05-27 08:00,2025-05-27 17:00,2025-06-23 08:00,2025-06-23 16:00
ZX-9790,SECAI TURNOVER FOR ACELERATION - Drywall & Inspect - Exit Passageway 1-1F-FAB110111 BAKER/DESCOPE,Complete,Exit Passageway 1 - 1F -SUW-FAB110111,,,,,,,,2025-05-27 08:00,2025-06-13 17:00,2025-05-22 08:00,2025-05-22 16:00
FAB110111B-03,INSTALL DOOR FRAMES - FAB110111B SECAI REMOVED DURING DRYWALL REMEDIATION WORK,Complete,Exit Passageway 1 - 1F -SUW-FAB110111,,,,,,,,2025-07-17 08:00,2025-07-25 17:00,2025-06-10 08:00,2025-06-10 16:00
ZX-9970,SECAI TURNOVER FOR ACELERATION - Drywall & Inspect - Airlock 1-1F-FAB110110 BAKER/DESCOPE,Complete,Air Lock 1 - 1F -SUW-FAB110110,,,,,,,,2025-05-29 08:00,2025-06-06 17:00,2025-05-22 08:00,2025-05-22 16:00
ZX-10270,SECAI TURNOVER FOR ACELERATION - Drywall & Inspect - Elevator Hall #01 - 1F-FAB110113 BAKER/DESCOPE,Complete,Elevator Hall 1 - 1F -SUW-FAB110113,,,,,,,,2025-06-10 08:00,2025-06-10 08:00,2025-06-10 08:00,2025-06-10 08:00
FAB110113A-01,IMPACT - INSTALL/REWORK DRYWALL FRAMING AROUND DOORS - FAB110113A,Complete,Elevator Hall 1 - 1F -SUW-FAB110113,,,,,,,,2025-07-08 08:00,2025-07-16 17:00,2025-07-08 08:00,2025-07-08 17:00
ZX-10570,Complete Drywall & Inspect - Toilet Corridor-1F-SUW-FAB110116,Complete,Toilet Corridor - 1F -SUW-FAB110116,,,,,,,,2025-06-26 08:00,2025-07-15 17:00,2025-06-10 08:00,2025-07-21 17:00
ZX-18920,IMPACT - SECAI REMOVED DRYWALL - Toilet Corridor-1F-SUW-FAB110116,Complete,Toilet Corridor - 1F -SUW-FAB110116,,,,,,,,2025-06-23 08:00,2025-07-11 17:00,2025-06-23 08:00,2025-07-04 17:00
ZX-10120,Complete Drywall & Inspect - Janitor Rm 1-1F-SUW-FAB110119,Complete,Janitor Rm 1 - 1F -SUW-FAB110119,,,,,,,,2025-08-19 08:00,2025-08-26 17:00,2025-08-18 08:00,2025-08-27 08:00
FAB110119A-01,IMPACT - INSTALL/REWORK DRYWALL FRAMING AROUND DOORS - FAB110119A,Complete,Janitor Rm 1 - 1F -SUW-FAB110119,,,,,,,,2025-08-26 08:00,2025-08-27 17:00,2025-08-26 08:00,2025-08-27 17:00
ZX-10420,Complete Drywall & Inspect - Maint. Rm-1F-SUW-FAB110120,Complete,Maint. Rm - 1F -SUW-FAB110120,,,,,,,,2025-08-01 08:00,2025-08-11 17:00,2025-08-01 08:00,2025-08-13 17:00
FAB110120A-01,IMPACT - INSTALL/REWORK DRYWALL FRAMING AROUND DOORS - FAB110120A,Complete,Maint. Rm - 1F -SUW-FAB110120,,,,,,,,2025-08-12 08:00,2025-08-20 17:00,2025-08-12 08:00,2025-08-20 17:00
ZX-10720,Complete Drywall & Inspect - Duct Shaft - 1F-SUW-FAB110101,Complete,Duct Shaft - 1F -SUW-FAB110101,,,,,,,,2025-08-12 08:00,2025-08-27 17:00,2025-08-12 08:00,2025-08-26 17:00
ZX-9940,Complete Drywall & Inspect - Toilet (M) 1-1F-SUW-FAB110118 NON RATED WALLS,Complete,Toilet (M) 1 - 1F -SUW-FAB110118,,,,,,,,2025-06-20 08:00,2025-07-03 17:00,2025-06-13 08:00,2025-06-20 16:00
FAB110118A-01,IMPACT - INSTALL/REWORK DRYWALL FRAMING AROUND DOORS - FAB110118A,Complete,Toilet (M) 1 - 1F -SUW-FAB110118,,,,,,,,2025-08-01 08:00,2025-08-11 17:00,2025-08-01 08:00,2025-08-09 17:00
ZX-10240,Complete Drywall & Inspect - Toilet (W) 1-1F-FAB110117,Complete,Toilet (W) 1 -1F -SUW-FAB110117,,,,,,,,2025-06-10 08:00,2025-06-23 17:00,2025-06-10 08:00,2025-07-18 17:00
FAB110117A-01,IMPACT - INSTALL/REWORK DRYWALL FRAMING AROUND DOORS - FAB110117A,Complete,Toilet (W) 1 -1F -SUW-FAB110117,,,,,,,,2025-08-08 08:00,2025-08-08 17:00,2025-08-08 08:00,2025-08-08 17:00
ZX-18960,IMPACT - SECAI REMOVED DRYWALL - Toilet (W) 1-1F-FAB110117,Complete,Toilet (W) 1 -1F -SUW-FAB110117,,,,,,,,2025-06-27 08:00,2025-07-17 17:00,2025-06-27 08:00,2025-07-08 17:00
ZX-10540,Complete Drywall & Inspect - Elevator Mech Rm #01 - 1F-FAB110115,Complete,Elevator Mech Rm 1 - 1F -SUW-FAB110115,,,,,,,,2025-05-27 08:00,2025-06-02 17:00,2025-05-22 08:00,2025-05-27 16:00
ZX-10030,Complete Drywall & Inspect - Elevator #1B-1F-1FAB-EL1B FRONTS BY MK MARLOW,Complete,Elevator 1B - 1F -SUW-FAB1-EL01B,,,,,,,,2025-06-10 08:00,2025-06-25 17:00,2025-06-10 08:00,2025-07-18 17:00
ZX-17510,IMPACT - DESIGN WALL THCKNESS Drywall & Inspect - Elevator #1B-1F-1FAB-EL1B,Complete,Elevator 1B - 1F -SUW-FAB1-EL01B,,,,,,,,2025-05-07 08:00,2025-05-22 17:00,2025-05-07 08:00,2025-06-10 16:00
ZX-10330,Complete Drywall & Inspect - Elevator #01A - 1F-1FAB-EL1A,Complete,Elevator 1A - 1F -SUW-FAB1-EL01A,,,,,,,,2025-05-05 08:00,2025-05-23 17:00,2025-05-05 08:00,2025-05-30 16:00
ZX-10630,Complete Drywall & Inspect - Elevator Mech Rm #01A - 1F-FAB110102,Complete,Elevator Mech. Rm 1A - 1F -SUW-FAB110102,,,,,,,,2025-06-13 08:00,2025-06-19 17:00,2025-06-13 08:00,2025-06-16 16:00
ZX-10180,Complete Drywall & Inspect-Duct Shaft - 1F-SUW-FAB110103,Complete,Duct Shaft - 1F -SUW-FAB110103,,,,,,,,2025-08-19 08:00,2025-08-22 17:00,2025-08-07 08:00,2025-08-12 17:00
FAB110103A-01,IMPACT - INSTALL/REWORK DRYWALL FRAMING AROUND DOORS - FAB110103A,Complete,Duct Shaft - 1F -SUW-FAB110103,,,,,,,,2025-07-09 08:00,2025-07-17 17:00,2025-07-09 08:00,2025-07-17 17:00
ZX-10480,Complete Drywall & Inspect - Fire Alarm 1-1F-FAB110105,Complete,Fire Alarm 1 - 1F -SUW-FAB110105,,,,,,,,2025-09-30 08:00,2025-10-08 17:00,2025-06-04 16:00,2025-06-11 17:00
ZX-10780,Complete Drywall & Inspect - IT/Security 1-1F-FAB110109,Complete,IT/Security 1 - 1F -SUW-FAB110109,,,,,,,,2025-09-22 08:00,2025-09-30 17:00,2025-04-11 00:00,2025-04-17 17:00
ZX-10150,Complete Drywall & Inspect - Lab Vestibule - 1F-SUW-FAB112101,Complete,Lab Vestibule- 1F -FIZ-FAB112101,,,,,,,,2025-10-13 08:00,2025-10-17 17:00,2025-10-13 08:00,2025-11-04 08:00
ZX-11410,Complete Drywall & Inspect - Janitor Rm-1F-SUW-FAB110214,Complete,Janitor Rm - 1F -SUW-FAB110214,,,,,,,,2025-10-06 08:00,2025-10-07 17:00,2025-10-06 08:00,2025-10-07 17:00
FAB110214A-01,IMPACT - INSTALL/REWORK DRYWALL FRAMING AROUND DOORS - FAB110214A,Complete,Janitor Rm - 1F -SUW-FAB110214,,,,,,,,2025-10-03 08:00,2025-10-06 17:00,2025-10-03 08:00,2025-10-06 17:00
ZX-16090,Complete Drywall & Inspect - Vestibule - 1F-SUW-FAB110515,Complete,Vestibule - 1F -SUW-FAB110515,,,,,,,,2025-06-20 08:00,2025-07-07 17:00,2025-06-16 08:00,2025-06-27 16:00
ZX-16680,Complete Drywall & Inspect - Stair #02 SUW- 1F- FAB1-ST02,Complete,Stair 2 - 1F -SUW-FAB1-ST02,,,,,,,,2025-05-13 08:00,2025-05-26 17:00,2025-05-13 08:00,2025-08-18 08:00
FAB1-ST02A-01,IMPACT - INSTALL/REWORK DRYWALL FRAMING AROUND DOORS - FAB1-ST02A,Complete,Stair 2 - 1F -SUW-FAB1-ST02,,,,,,,,2025-05-01 08:00,2025-05-09 17:00,2025-05-01 08:00,2025-05-06 17:00
ZX-16820,Complete Drywall & Inspect - Stair #03 SUW- 1F- FAB1-ST03,Complete,Stair 3 - 1F -SUW-FAB1-ST03,,,,,,,,2025-05-13 08:00,2025-05-26 17:00,2025-05-13 08:00,2025-10-13 08:00
FAB1-ST03A-01,IMPACT - INSTALL/REWORK DRYWALL FRAMING AROUND DOORS - FAB1-ST03A,Complete,Stair 3 - 1F -SUW-FAB1-ST03,,,,,,,,2025-09-26 08:00,2025-09-29 17:00,2025-09-26 08:00,2025-09-29 17:00
ZX-16910,Complete Drywall & Inspect - Stair #20 SUE- 1F- FAB1-ST20,Complete,Stair 20 - 1F -SUE- FAB1-ST20,,,,,,,,2025-05-13 08:00,2025-05-26 17:00,2025-05-13 08:00,2025-09-15 08:00
FAB1-ST20A-01,IMPACT - INSTALL/REWORK DRYWALL FRAMING AROUND DOORS - FAB1-ST20A HANDED OVER TO SECAI ON 09/02,Complete,Stair 20 - 1F -SUE- FAB1-ST20,,,,,,,,2025-09-01 08:00,2025-09-02 17:00,2025-09-02 08:00,2025-09-02 17:00
ZX-17050,Complete Drywall & Inspect - Stair #21 SUE- 1F- FAB1-ST20,Complete,Stair 21 - 1F -SUE- FAB1-ST21,,,,,,,,2025-05-13 08:00,2025-05-26 17:00,2025-05-13 08:00,2025-09-15 08:00
ZX-17140,Complete Drywall & Inspect - Stair #04 SUW- 1F- FAB1-ST04 - MKMARLOW,Complete,Stair 4 - 1F -SUW-FAB1-ST04,,,,,,,,2025-06-10 08:00,2025-06-23 17:00,2025-06-10 08:00,2025-08-28 17:00
FAB1-ST04A-01,IMPACT - INSTALL/REWORK DRYWALL FRAMING AROUND DOORS - FAB1-ST04A,Complete,Stair 4 - 1F -SUW-FAB1-ST04,,,,,,,,2025-05-23 08:00,2025-06-02 17:00,2025-05-23 08:00,2025-05-27 17:00
ZX-17280,SECAI TURNOVER FOR ACELERATION - Drywall & Inspect - Stair #19 SUE- 1F- FAB1-ST19 BAKER/DESCOPE,Complete,Stair 19 - 1F -SUE- FAB1-ST19,,,,,,,,2025-06-10 08:00,2025-06-23 17:00,2025-06-10 08:00,2025-06-10 16:00
ZX-17580,Complete Drywall & Inspect - D-J/33-1F,Complete,D-J/33 - 1F - FAB,,,,,,,,2025-06-10 08:00,2025-06-23 17:00,2025-05-23 08:00,2025-06-04 16:00
ZX-17640,Complete Drywall & Inspect - Duct Shaft Vestibule - 1F-SUW-FAB110514,Complete,Duct Shaft Vestibule - 1F -SUW-FAB110514,,,,,,,,2025-06-10 08:00,2025-06-18 17:00,2025-06-10 08:00,2025-06-19 16:00
ZX-17670,Complete Drywall & Inspect - Duct Shaft Vestibule - 1F-SUW-FAB110310,Complete,Duct Shaft Vestibule - 1F -SUW-FAB110310,,,,,,,,2025-09-02 08:00,2025-09-10 17:00,2025-08-16 08:00,2025-08-18 17:00
ZX-17730,Complete Drywall & Inspect - Duct Shaft Vestibule - 1F-SUW-FAB110122,Complete,Duct Shaft Vestibule - 1F -SUW-FAB110122,,,,,,,,2025-08-15 08:00,2025-08-25 17:00,2025-08-07 08:00,2025-08-25 08:00
ZX-18120,Complete Drywall & Inspect - Stair 18 SUE- 1F- FAB1-ST18,Complete,Stair 18 - 1F -SUE- FAB1-ST18,,,,,,,,2025-09-29 08:00,2025-10-03 17:00,2025-09-29 08:00,2025-10-03 17:00
ZX-9009,SECAI TURNOVER FOR ACELERATION - Drywall & Inspect - LAB AIRLOCK/SMOCK FAB112103 BAKER/DESCOPE,Complete,LAB AIRLOCK/SMOCK- 1F -FIZ-FAB112103,,,,,,,,2025-05-19 13:00,2025-05-19 13:00,2025-05-06 12:00,2025-05-06 12:00
FAB114107B-01,IMPACT - INSTALL/REWORK DRYWALL FRAMING AROUND DOORS - FAB114107B,Complete,FA Lab-7 - 1F -FIZ-FAB114107,,,,,,,,2025-06-27 08:00,2025-06-27 17:00,2025-03-21 08:00,2025-03-21 16:00
FAB126507A-01,IMPACT - INSTALL/REWORK DRYWALL FRAMING AROUND DOORS - FAB126507A,Complete,Duct Shaft - 2F -SUE-FAB126507,,,,,,,,2025-02-13 08:00,2025-02-21 17:00,2025-02-26 08:00,2025-03-06 17:00
FAB122104A-01,IMPACT - INSTALL/REWORK DRYWALL FRAMING AROUND DOORS - FAB122104A,Complete,Pedestrian Walkway - 2F -FIZ-FAB122105,,,,,,,,2025-05-01 08:00,2025-05-09 17:00,2025-03-04 08:00,2025-03-13 08:00
FAB110515A-01,IMPACT - INSTALL/REWORK DRYWALL FRAMING AROUND DOORS - FAB110515A,Complete,Vestibule - 1F -SUW-FAB110515,,,,,,,,2025-03-10 08:00,2025-03-18 17:00,2025-03-10 08:00,2025-03-18 17:00
FAB126510A-01,IMPACT - INSTALL/REWORK DRYWALL FRAMING AROUND DOORS - FAB126510A,Complete,Duct Shaft - 2F -SUE-FAB126510,,,,,,,,2025-02-13 08:00,2025-02-21 17:00,2025-04-28 08:00,2025-05-06 17:00
FAB110310A-01,IMPACT - INSTALL/REWORK DRYWALL FRAMING AROUND DOORS - FAB110310A,Complete,Duct Shaft Vestibule - 1F -SUW-FAB110310,,,,,,,,2025-05-23 08:00,2025-06-02 17:00,2025-05-26 08:00,2025-06-03 17:00
FAB132101C-01,IMPACT - INSTALL/REWORK DRYWALL FRAMING AROUND DOORS - FAB132101C,Complete,Unassigned - 3F - FIZ-FAB134102,,,,,,,,2025-05-29 08:00,2025-06-06 17:00,2025-05-29 08:00,2025-06-06 17:00
FAB146109A-01,IMPACT - INSTALL/REWORK DRYWALL FRAMING AROUND DOORS - FAB146109A,Complete,Elevator Hall 22 - 4F -SUE-FAB146105,,,,,,,,2025-07-01 08:00,2025-07-09 17:00,2025-07-01 08:00,2025-07-09 17:00
MS.OOS.5440,SECAI - DRYWALL & DOORS - IMPACTS - START - ReMob Out of Seq Remaining completion list,Complete,Remobilization and Out-of-Sequence Completion List - DD07-10-2025,Key Milestones,Key Milestones,Milestones,,SECAI,Key Milestones,PROJECT MILESTONES,2024-12-02 07:00,2024-12-02 07:00,2024-12-02 07:00,2024-12-02 07:00
ZX-19925,Complete Drywall & Inspect - Duct Shaft - 3F-FAB130104,Complete,Duct Shaft - 3F -SUW-FAB130104,,,,,,,,2025-09-05 08:00,2025-09-08 17:00,2025-09-05 08:00,2025-09-08 17:00
FAB130104A-01,IMPACT - INSTALL/REWORK DRYWALL FRAMING AROUND DOORS - FAB130104A,Complete,Duct Shaft - 3F -SUW-FAB130104,,,,,,,,2025-09-22 10:00,2025-10-01 10:00,2025-01-09 10:00,2025-01-20 10:00
ZX-19955,Complete Drywall & Inspect -TQR LAB - 3F-FAB132102,Complete,TQR LAB - 3F -FIZ-FAB132102,,,,,,,,2025-09-05 08:00,2025-09-08 17:00,2025-09-05 08:00,2025-09-08 17:00
FAB132102C-01,IMPACT - INSTALL/REWORK DRYWALL FRAMING AROUND DOORS - FAB132102C,Complete,TQR LAB - 3F -FIZ-FAB132102,,,,,,,,2025-05-29 08:00,2025-06-06 17:00,2025-01-10 08:00,2025-01-20 17:00
ZX-19985,Complete Drywall & Inspect -TQR LAB Airlock - 3F-FAB132103,Complete,TQR LAB AIR LOCK - 3F -FIZ-FAB132103,,,,,,,,2025-09-05 08:00,2025-09-08 17:00,2025-09-05 08:00,2025-09-08 17:00
FAB132101D-01,IMPACT - INSTALL/REWORK DRYWALL FRAMING AROUND DOORS - FAB132101D,Complete,TQR LAB AIR LOCK - 3F -FIZ-FAB132103,,,,,,,,2025-05-29 08:00,2025-06-06 17:00,2025-06-09 08:00,2025-06-17 17:00
FAB132103A-01,IMPACT - INSTALL/REWORK DRYWALL FRAMING AROUND DOORS - FAB132103A,Complete,TQR LAB AIR LOCK - 3F -FIZ-FAB132103,,,,,,,,2025-09-03 08:00,2025-09-04 17:00,2025-09-03 08:00,2025-09-04 17:00
ZX-20015,"SECAI TURNOVER FOR ACELERATION - Drywall, CJ & FC + Inspect - Stair #50 SUW- 1F- FAB1-ST50 BAKER/DESCOPE",Complete,Stair 50 - 1F -SUW-FAB1-ST50,,,,,,,,2025-06-10 08:00,2025-06-23 17:00,2025-06-10 08:00,2025-06-10 16:00
ZX-20055,"SECAI TURNOVER FOR ACELERATION - Drywall, CJ & FC + Inspect - Stair #50 SUW- 2F- FAB1-ST50 BAKER/DESCOPE",Complete,Stair 50 - 2F-SUW-FAB1-ST50,,,,,,,,2025-07-17 08:00,2025-07-30 17:00,2025-06-06 08:00,2025-06-06 16:00
ZX-20085,"SECAI TURNOVER FOR ACELERATION - Drywall, CJ & FC + Inspect - Stair #50 SUW - 3F FAB1-ST50 BAKER/DESCOPE",Complete,Stair 50 - 3F-SUW-FAB1-ST50,,,,,,,,2025-06-10 08:00,2025-06-23 17:00,2025-06-10 08:00,2025-06-10 16:00
ZX-20135,Complete Drywall & Inspect - Thermohygrostat Rm - 2F-FAB122104,Complete,Thermohygrostat Rm - 2F -FIZ-FAB122104,,,,,,,,2025-07-07 08:00,2025-07-18 17:00,2025-07-07 08:00,2025-07-17 17:00
ZX-20175,"ELEVATOR FRONT Complete Drywall, Fire Caulk and Inspect - Elevator #19 - 3F-FAB1-EL19",Complete,Elevator 19 - 3F -SUE-FAB1-EL19,,,,,,,,2025-09-05 08:00,2025-09-05 08:00,2025-09-05 08:00,2025-09-05 08:00
ZX-20235,SECAI TOOK OVER ACCELERATION - Remaining CEILING Drywall & Inspect - Pedestrian Walkway - 2F-FAB122105,Complete,Pedestrian Walkway - 2F -FIZ-FAB122105,,,,,,,,2025-11-06 08:00,2025-11-12 17:00,2025-11-06 08:00,2025-11-06 17:00
ZX-20285,Complete Drywall & Inspect - Duct Shaft Vestibule - 1F-SUE-FAB116412,Complete,Duct Shaft Vestibule - 1F -SUE-FAB116412,,,,,,,,2025-09-23 08:00,2025-09-29 17:00,2025-09-23 08:00,2025-09-29 17:00
FAB116412B-01,IMPACT - INSTALL/REWORK DRYWALL FRAMING AROUND DOORS - FAB116412B,Complete,Duct Shaft Vestibule - 1F -SUE-FAB116412,,,,,,,,2025-03-10 08:00,2025-03-18 17:00,2025-03-10 08:00,2025-03-18 17:00
ZX-20325,"SECAI TURNOVER FOR ACELERATION - Drywall, CJ & FC + Inspect-SO - 2F-SUE-FAB122156",Complete,Slurry Office-  2F -FAB-FAB122156,,,,,,,,2025-06-27 08:00,2025-07-10 17:00,2025-06-27 08:00,2025-06-27 17:00
FAB1-ST01B-01,IMPACT - INSTALL/REWORK DRYWALL FRAMING AROUND DOORS - FAB1-ST01B,Complete,Stair 1 - 2F -SUW-FAB1-ST01,,,,,,,,2025-05-08 08:00,2025-05-16 17:00,2025-05-08 08:00,2025-05-16 17:00
ZX-20355,Complete Drywall & Inspect - Pedestrian Walkway-1F-FAB112104 - MKMARLOW,Complete,Pedestrian Walkway - 1F -FIZ-FAB112104,,,,,,,,2025-08-25 08:00,2025-09-05 17:00,2025-08-25 08:00,2025-09-22 08:00
ZX-20405,SECAI TOOK OVER FOR ACCELERATION - Complete Drywall & Inspect - Hall #19 - 3F-SUE-FAB136408,Complete,Hall 19 - 3F -SUE-FAB136408,,,,,,,,2025-10-16 08:00,2025-10-22 17:00,2025-10-22 08:00,2025-10-22 17:00
ZX-20455,SECAI TOOK OVER FOR ACCELERATION - Drywall & Inspect - Elevator #01 - 1F-FAB1-EL01,Complete,Elevator 1 - 1F -SUW-FAB1-EL01,,,,,,,,2025-09-19 08:00,2025-10-01 17:00,2025-09-19 08:00,2025-09-19 17:00
ZX-20515,Complete Drywall & Inspect - Stair #05 - 1F-FAB1-ST05,Complete,Stair 5 - 1F -SUW-FAB1-ST05,,,,,,,,2025-05-28 08:00,2025-06-16 17:00,2025-05-22 08:00,2025-09-02 17:00
ZX-20635,SECAI TOOK OVER FOR ACCELERATION - Complete Drywall & Inspect - Stair 22-1F-1FAB-ST22,Complete,Stair 22 - 1F -SUE-FAB1-ST22,,,,,,,,2025-06-24 08:00,2025-06-30 17:00,2025-06-27 08:00,2025-06-27 17:00
ZX-20665,Complete Drywall & Inspect - Duct Shaft Vestibule - 1F-SUE-FAB116408,Complete,Duct Shaft Vestibule - 1F -SUE-FAB116408,,,,,,,,2025-09-01 08:00,2025-09-05 17:00,2025-09-01 08:00,2025-09-05 17:00
ZX-20785,Complete Drywall & Inspect - Manufacturing Storage 1-1F-SUE-FAB116522,Complete,Manufacturing Storage 1 - 1F -SUE-FAB116522,,,,,,,,2025-08-01 08:00,2025-08-07 17:00,2025-08-01 08:00,2025-08-07 17:00
ZX-20815,SECAI TOOK OVER FOR ACCELERATION - Drywall & Inspect - Stair #01 - SUW - 2F - FAB1-ST01,Complete,Stair 1 - 2F -SUW-FAB1-ST01,,,,,,,,2025-05-16 08:00,2025-05-29 17:00,2025-05-16 08:00,2025-06-19 17:00
ZX-20845,SECAI TOOK OVER FOR ACCELERATION - Complete Drywall & Inspect - Stair 22 - 2F-SUE-FAB1-ST22,Complete,Stair 22 - 2F -SUE-FAB1-ST22,,,,,,,,2025-08-01 08:00,2025-08-14 17:00,2025-06-27 08:00,2025-06-27 17:00
ZX-20875,SECAI TOOK OVER FOR ACCELERATION - Complete Drywall & Inspect - Stair #01 - 3F-SUW-FAB1-ST01,Complete,Stair 1 - 3F -SUW-FAB1-ST01,,,,,,,,2025-06-17 08:00,2025-06-27 17:00,2025-06-27 08:00,2025-06-27 17:00
ZX-20905,Complete Drywall & Inspect - Sub Clean Rm - 3F-SUW-FAB130206,Complete,SUB Clean Rm - 3F -SUW-FAB130206,,,,,,,,2025-09-10 08:00,2025-09-15 17:00,2025-09-10 08:00,2025-09-15 17:00
ZX-20935,Complete Drywall & Inspect - Clean Vestibule - 3F-SUW-FAB130318,Complete,Clean Vestibule - 3F -SUW-FAB130318,,,,,,,,2025-09-10 08:00,2025-09-15 17:00,2025-09-10 08:00,2025-09-15 17:00
ZX-20965,SECAI TOOK OVER FOR ACCELERATION - Complete Drywall & Inspect - Stair 22 - 3F-SUE-FAB1-ST22,Complete,Stair 22 - 3F -SUE-FAB1-ST22,,,,,,,,2025-07-28 08:00,2025-07-30 17:00,2025-06-27 08:00,2025-06-27 17:00
ZX-20995,Complete Drywall & Inspect - Duct Shaft - L4 - SUW-FAB140102,Complete,Duct Shaft - 4F -SUW-FAB140102,,,,,,,,2025-09-04 08:00,2025-09-08 17:00,2025-09-04 08:00,2025-09-08 17:00
ZX-21025,SECAI TOOK OVER FOR ACCELERATION - Complete Drywall & Inspect - Stair #01 - 4F-SUW-FAB1-ST01,Complete,Stair 1 - 4F -SUW-FAB1-ST01,,,,,,,,2025-06-25 08:00,2025-06-27 17:00,2025-06-27 08:00,2025-06-27 17:00
ZX-21055,Complete Drywall & Inspect - Stair #05 - 4F-SUW-FAB1-ST05,Complete,Stair 5 - 4F -SUW-FAB1-ST05,,,,,,,,2025-07-09 08:00,2025-07-29 17:00,2025-06-23 08:00,2025-06-30 16:00
ZX-21085,Complete Drywall & Inspect - Duct Shaft - 4F-SUE-FAB146109,Complete,Duct Shaft - 4F - SUE-FAB146109,,,,,,,,2025-07-09 08:00,2025-07-29 17:00,2025-06-23 08:00,2025-06-30 16:00
ZX-21115,Complete Drywall & Inspect - Stair 22 - 4F-SUE-FAB1-ST22,Complete,Stair 22 - 4F - SUE-FAB1-ST22,,,,,,,,2025-07-09 08:00,2025-07-29 17:00,2025-06-23 08:00,2025-06-30 16:00
ZX-21145,Complete Drywall & Inspect - Duct Shaft - 4F-SUE-FAB146504,Complete,Duct Shaft - 4F - SUE-FAB146504,,,,,,,,2025-07-09 08:00,2025-07-29 17:00,2025-06-23 08:00,2025-06-30 16:00
ZX-21175,Complete Drywall & Inspect - Stair 18 - 4F-SUE-FAB1-ST18,Complete,Stair 18 - 4F - SUE-FAB1-ST18,,,,,,,,2025-07-09 08:00,2025-07-29 17:00,2025-06-23 08:00,2025-06-30 16:00
FAB1-ST05A-01,IMPACT - INSTALL/REWORK DRYWALL FRAMING AROUND DOORS - FAB1-ST05A,Complete,Stair 5 - 1F -SUW-FAB1-ST05,,,,,,,,2025-08-07 08:00,2025-08-08 17:00,2025-08-07 08:00,2025-08-08 17:00
FAB1-ST18B-01,IMPACT - INSTALL/REWORK DRYWALL FRAMING AROUND DOORS - FAB1-ST18B,Complete,Stair 18 - 2F -SUE-FAB1-ST18,,,,,,,,2025-08-01 08:00,2025-08-04 17:00,2025-08-01 08:00,2025-08-04 17:00
CN.BB51.ST.3572,INTERIOR FRAMING DRYWALL FIRECAULK VESTIBULE 5 3RD LAYER - GL 33 LVL 3 - 4 - STAIR 5 - K-L,Complete,CONSTRUCTION,,GRIDLINE 33,GL 33 STAIR 5 (WEST),STAIR 5 (WEST) - K-L,BERG,,,2025-10-13 07:00,2025-10-20 17:00,2025-10-13 07:00,2025-11-06 17:00
CN.BB51.ST.3582,TAPE & FLOAT & SANDING INTERIOR DRYWALL & SANDING - GL 33 - STAIR 5 - K-L(),Complete,CONSTRUCTION,,GRIDLINE 33,GL 33 STAIR 5 (WEST),STAIR 5 (WEST) - K-L,CHERRY COATING,,,2025-09-08 07:00,2025-09-12 17:00,2025-09-08 07:00,2025-09-22 07:00
FAB114107D-01,IMPACT - INSTALL/REWORK DRYWALL FRAMING AROUND DOORS - FAB114107D,Complete,FA Lab-7 - 1F -FIZ-FAB114107,,,,,,,,2025-10-10 08:00,2025-10-13 17:00,2025-10-10 08:00,2025-10-13 17:00
ZX-21495,"SECAI TURNOVER FOR ACELERATION - Drywall, CJ & FC + Inspect-Corridor - 2F-SUE-FAB122153",Complete,Corridor-  2F -FAB-FAB122153,,,,,,,,2025-06-27 08:00,2025-07-10 17:00,2025-06-27 08:00,2025-06-27 17:00
ZX-21505,"SECAI TURNOVER FOR ACELERATION - Drywall, CJ & FC + Inspect-EBS - 2F-SUE-FAB122155",Complete,Empty Bottle Storage-  2F -FAB-FAB122155,,,,,,,,2025-06-27 08:00,2025-07-10 17:00,2025-06-27 08:00,2025-06-27 17:00
ZX-21515,"SECAI TURNOVER FOR ACELERATION - Drywall, CJ & FC + Inspect-Slurry - 2F-SUE-FAB122157",Complete,Slurry-  2F -FAB-FAB122157,,,,,,,,2025-06-27 08:00,2025-07-10 17:00,2025-06-27 08:00,2025-06-27 17:00
ZX-21585,Complete Drywall & Inspect - Stair #05 - 2F-FAB1-ST05,Complete,Stair 5 - 2F -SUW-FAB1-ST05,,,,,,,,2025-05-28 08:00,2025-06-16 17:00,2025-05-22 08:00,2025-09-02 17:00
FAB1-ST05B-01,IMPACT - INSTALL/REWORK DRYWALL FRAMING AROUND DOORS - FAB1-ST05B,Complete,Stair 5 - 2F -SUW-FAB1-ST05,,,,,,,,2025-09-11 08:00,2025-09-12 17:00,2025-09-11 08:00,2025-09-12 17:00
ZX-21615,Complete Drywall & Inspect - Stair #05 - 3F-FAB1-ST05,Complete,Stair 5 - 3F -SUW-FAB1-ST05,,,,,,,,2025-05-28 08:00,2025-06-16 17:00,2025-05-22 08:00,2025-09-02 17:00
FAB1-ST05C-01,IMPACT - INSTALL/REWORK DRYWALL FRAMING AROUND DOORS - FAB1-ST05C,Complete,Stair 5 - 3F -SUW-FAB1-ST05,,,,,,,,2025-09-09 08:00,2025-09-10 17:00,2025-09-09 08:00,2025-09-10 17:00
FAB1-ST05D-01,IMPACT - INSTALL/REWORK DRYWALL FRAMING AROUND DOORS - FAB1-ST05D,Complete,Stair 5 - 4F -SUW-FAB1-ST05,,,,,,,,2025-09-15 08:00,2025-09-16 17:00,2025-09-15 08:00,2025-09-16 17:00
CN.SWA1.10080,"IMPACT - SECAI DIRECTION HOLD CUT SLAB, EDGE ARMOUR & LVL 1 FRAMING AND DRYWALL - ELEVATOR 5 - SECAI TO TAKE OVER",Active,SWA - 1,West Support Building,SUWS-1 - 18-15,,ELEVATOR,W&W,DRYWALL,JAMES LIVELY,2025-07-25 07:00,2025-10-20 17:00,2025-07-25 07:00,
CN.BB51.ST.3662,TAPE & FLOAT SANDING INTERIOR DRYWALL & SANDING - VESTIBULE 18 - GL 33 - STAIR 18 - C-D (),Active,CONSTRUCTION,,GRIDLINE 33,GL 33 STAIR 18 (EAST),STAIR 18 (EAST) - C-D,CHERRY COATING,,,2025-10-06 07:00,2025-10-10 17:00,2025-10-06 07:00,
FAB1-ST04D-01,IMPACT - INSTALL/REWORK DRYWALL FRAMING AROUND DOORS - FAB1-ST04D,Complete,Stair 4 - 3F-SUW-FAB1-ST04,,,,,,,,2025-09-26 08:00,2025-09-29 17:00,2025-09-26 08:00,2025-09-29 17:00
ZX-21645,IMPACT - SECAI MEP SCAFFOLD IMPACTING DRYWALL COMPLETION - Vestibule 5 - 2F-FAB120504 - MKM,Complete,Vestibule 5 - 2F -SUW-FAB120504,,,,,,,,2025-09-29 08:00,2025-10-03 17:00,2025-09-29 08:00,2025-10-30 17:00
CN.ST.3700,CHERRY - PRIME & FINISH PAINT INTERIOR DRYWALL - Vestibules 5 - Level 3- 4 - GL 33 - STAIR 5 - K-L(),Not Started,CONSTRUCTION,,GRIDLINE 33,GL 33 STAIR 5 (WEST),STAIR 5 (WEST) - K-L,CHERRY COATING,,,2025-11-24 07:00,2025-12-02 17:00,,
ZX-21665,IMPACT - SECAI MEP SCAFFOLD & TEMP POWER - Drywall & Inspect - Duct Shaft - 2F-SUW-FAB120101,Active,Duct Shaft - 2F -SUW-FAB120101,,,,,,,,2025-09-25 08:00,2025-10-15 17:00,2025-09-25 08:00,
ZX-21685,IMPACT - SECAI MEP PIPES - Drywall & Inspect - PR Lifter Vestibule - 2F-FAB126511,Active,PR Lifter Vestibule - 2F -SUE-FAB126511,,,,,,,,2025-10-03 08:00,2025-10-16 17:00,2025-10-03 08:00,
ZX-21695,IMPACT - SECAI MEP SCAFFOLD - Drywall & Inspect - Hall #19 - 3F-SUE-FAB136408 - SECAI TOOK OVER FOR ACCELERATION,Complete,Hall 19 - 3F -SUE-FAB136408,,,,,,,,2025-05-05 08:00,2025-05-16 17:00,2025-05-05 08:00,2025-10-22 17:00
CN.ST.36861,IMPACT - SECAI /VELTRI SCAFFOLD ON LVL 4 Cladding & Drywall connection - VESTIBULE 18 ENTRY WALL- GL 33 - STAIR 18 - C-D,Not Started,CONSTRUCTION,,GRIDLINE 33,GL 33 STAIR 18 (EAST),STAIR 18 (EAST) - C-D,WATER PROOFING GL33,,,2025-11-21 07:00,2025-11-25 17:00,,
FAB110404D-70,IMPACT - SECAI SCAFFOLD IMPEDING DOOR INSTALLATION AND SECAI MISSING DRYWALL COMPLETION - FAB110404D,Active,W-CuS04-ACQC RM (N/24.3-25) - 1F- SUW-FAB110404,,,,,,,,2025-09-16 08:00,2025-09-29 17:00,2025-09-16 08:00,
FAB110404A-70,IMPACT - SECAI BARRICADE AND SECAI MISSING DRYWALL COMPLETION - FAB110404A,Complete,W-CuS04-ACQC RM (N/24.3-25) - 1F- SUW-FAB110404,,,,,,,,2025-09-16 08:00,2025-09-29 17:00,2025-09-16 08:00,2025-11-05 17:00
FAB110409D-50,IMPACT - SECAI BARRICDE AND SECAI MISSING DRYWALL COMPLETION - FAB110409D,Complete,W-H3PO4 RM (N/25.4-26.2) - 1F -SUW-FAB110409,,,,,,,,2025-09-16 08:00,2025-09-29 17:00,2025-09-16 08:00,2025-11-04 17:00
FAB110408C-23,IMPACT - SECAI TO REALING FRAME AND DRYWALL COMPLETION - FAB110408C,Complete,W-H2S04 ACQC RM (N/26.2-27) - 1F -SUW-FAB110408,,,,,,,,2025-09-16 08:00,2025-09-29 17:00,2025-09-16 08:00,2025-11-13 17:00
ZX-21755,IMPACT - SECAI DEMO DRYWALL - Duct Shaft - 2F-SUE-FAB126401,Active,Duct Shaft - 2F -SUE-FAB126401,,,,,,,,2025-10-01 08:00,2025-10-21 17:00,2025-10-01 08:00,
CN.SWA5..6270,SECAI DRYWALL PATCHING ONGOING - STAIR #50 - 29/L - ALL LEVELS(),Complete,SWA - 5,West Support Building,SUWN-4 - 27-30,INTERIOR STAIR TOWER - STAIR #50 - DE-SCOPED,,,INSULATED METAL PANELS,JAMES LIVELY,2025-10-31 07:00,2025-11-04 17:00,2025-10-30 07:00,2025-10-31 17:00
CN.SWA5..6280,IMPACT - SECAI DRYWALL PATCH & FINISH - STAIR #20 - 19/D - ALL LEVELS,Complete,SWA - 5,West Support Building,SUES-1 - 19-16,INTERIOR STAIR TOWER - STAIR #20,,,INSULATED METAL PANELS,JAMES LIVELY,2025-10-13 07:00,2025-10-20 17:00,2025-09-16 07:00,2025-11-03 17:00
FAB130402E-70,IMPACT - SECAI TEMP DOOR & DRYWALL REMOVAL - HEADER/GOAL POST INSTALL - PATRIOT - FAB130402E - M/19,Active,Electrical Rm - 3F -SUW-FAB130402,,INTERIOR STAIRS,L3 / Waffle Slab Level,,PATRIOT,,,2025-10-29 08:00,2025-11-04 17:00,2025-10-29 08:00,
FAB136504C-70,IMPACT - SECAI DRYWALL REMOVAL - HEADER/GOAL POST INSTALL - PATRIOT - FAB136504C - C/32,Not Started,Elevator Hall 18 - 3F -SUE-FAB136504,,INTERIOR STAIRS,L3 / Waffle Slab Level,,,,,2025-11-21 08:00,2025-11-27 17:00,,
FAB130501A-60,IMPACT - SECAI TEMP DOOR & DRYWALL REMOVAL - FAB130501A - M/27,Complete,Battery Rm - 3F -SUW-FAB130501,,INTERIOR STAIRS,L3 / Waffle Slab Level,,,,,2025-10-27 08:00,2025-10-31 17:00,2025-10-27 08:00,2025-11-14 08:00
EJ-0122,IMPACT - SECAI FINISH DRYWALL (NO WALL FRAMED)- VEJ D/25 - Clean Vestibule #19 - 3F-FAB136406,Active,Clean Vestibule 19 - 3F -SUE-FAB136406,,,,,,,,2025-09-29 08:00,2025-10-03 17:00,2025-09-29 08:00,
