task_id,task_code,task_name,status_code,target_start_date,target_end_date,act_start_date,act_end_date,labor_budgeted_hrs,labor_remaining_hrs,labor_actual_reg_hrs,labor_actual_ot_hrs,labor_resources,equip_budgeted_hrs,equip_remaining_hrs,equip_actual_hrs,equipment_resources,total_budgeted_hrs,total_actual_hrs
100227670,CN.FIZ1.DP.1000,PH1- SLAB FIZ1FIZ1 (WEST INNER @ DATA CENTER AREA),TK_Complete,2022-10-01 10:00,2022-10-20 08:00,2022-10-01 10:00,2022-10-24 15:00,714.0,0.0,714.0,0.0,CIP Concrete SOG Crews,21.0,0.0,21.0,50-75 Ton Mobile Support Crane,735.0,735.0
100227677,FIZ.WEST.1051,FRP SLAB ON METAL DECK - ROOF - J-G,TK_Complete,2023-07-31 07:00,2023-08-03 09:00,2023-07-31 07:00,2023-08-03 09:00,112.0,0.0,112.0,0.0,CIP-Roof Slab,0.0,0.0,0.0,,112.0,112.0
100227678,FIZ.WEST.1061,FRP SLAB ON METAL DECK - L3 - J-G,TK_Complete,2023-07-10 07:00,2023-07-13 09:00,2023-07-08 07:00,2023-07-12 09:00,92.0,0.0,92.0,0.0,CIP Concrete Slab on Metal Deck Crews,0.0,0.0,0.0,,92.0,92.0
100227679,FIZ.WEST.1071,FRP SLAB ON METAL DECK - L2 - J-G - DATA CTR 2 .,TK_Complete,2023-07-11 07:00,2023-07-14 09:00,2023-07-07 07:00,2023-07-08 09:00,92.0,0.0,92.0,0.0,CIP Concrete Slab on Metal Deck Crews,0.0,0.0,0.0,,92.0,92.0
100227701,CN.FIZ1.1810,PH1- FIRE PROOFING - SFRM STEEL - FIZ1 - L2 - (Delay - Spray at night due to MEP issue) - DATA CTR 2 .,TK_Complete,2023-07-25 13:00,2023-08-06 13:00,2023-07-17 13:00,2023-07-24 15:00,320.0,0.0,320.0,0.0,"Precast Erect Crew FAB Waffles & Double-T's, Precast GROUTERS",40.0,0.0,40.0,"Precast Carry-Lift, 185 Ton Crawler Crane Unload/Handle Waffles",360.0,360.0
100227892,CN.FIZ3.DP.1000,PH1- SLAB FIZ3 (EAST INNER),TK_Complete,2022-11-17 09:00,2022-12-06 17:00,2022-09-12 09:00,2022-10-03 13:00,714.0,0.0,714.0,0.0,CIP Concrete SOG Crews,21.0,0.0,21.0,50-75 Ton Mobile Support Crane,735.0,735.0
100227894,CN.FIZ2.DP.1000,PH1- SLAB FIZ2 (WEST OUTER @ DATA CENTER AREA),TK_Complete,2023-01-10 13:00,2023-01-30 11:00,2023-01-10 13:00,2023-02-06 09:00,714.0,0.0,714.0,0.0,CIP Concrete SOG Crews,21.0,0.0,21.0,50-75 Ton Mobile Support Crane,735.0,735.0
100227899,FIZ.EAST.1061,FRP SLAB ON METAL DECK - ROOF - G-E,TK_Complete,2023-07-31 07:00,2023-08-03 09:00,2023-07-31 07:00,2023-08-03 09:00,112.0,0.0,112.0,0.0,CIP-Roof Slab,0.0,0.0,0.0,,112.0,112.0
100227901,FIZ.EAST.1051,FRP SLAB ON METAL DECK - L3 - G-E GL 1-3 - FIZ,TK_Complete,2023-09-01 09:00,2023-09-05 11:00,2023-08-26 09:00,2023-08-29 13:00,92.0,0.0,92.0,0.0,CIP Concrete Slab on Metal Deck Crews,0.0,0.0,0.0,,92.0,92.0
100227902,FIZ.EAST.2200,FRP SLAB ON METAL DECK - L2 - G-E GL 1-3,TK_Complete,2023-08-28 07:00,2023-09-01 09:00,2023-08-25 07:00,2023-08-28 07:00,92.0,0.0,92.0,0.0,CIP Concrete Slab on Metal Deck Crews,0.0,0.0,0.0,,92.0,92.0
100227955,CN.A1.ST.1000,STEEL PRE-ASSEMBLE TRUSSES - A1 - 17,TK_Complete,2022-10-27 07:00,2022-11-03 11:00,2022-10-27 07:00,2022-11-03 13:00,1092.0,0.0,1092.0,0.0,"W&W Fab Bldg West Half Erection Team, W&W Fab Bldg East Half Erection Team",42.0,0.0,42.0,"LR 1500 Crawler with Jib, 55 Ton Mobile Support Crane",1134.0,1134.0
100227956,CN.AB1.ST.1000,PH1-ERECT STEEL TRUSSES & INFILL - A1 - EARLY 17-18,TK_Complete,2022-11-23 16:00,2022-12-03 10:00,2022-11-23 16:00,2022-12-05 12:00,1092.0,0.0,1092.0,0.0,"W&W Fab Bldg West Half Erection Team, W&W Fab Bldg East Half Erection Team",42.0,0.0,42.0,"LR 1500 Crawler with Jib, 55 Ton Mobile Support Crane",1134.0,1134.0
100227957,CN.AB1.ST.1010,PH1-ERECT ROOF DECKING - A1,TK_Complete,2023-01-07 12:00,2023-01-28 10:00,2023-01-07 12:00,2023-02-13 16:00,210.0,0.0,210.0,0.0,W&W Roof Decking Crew DSAD,0.0,0.0,0.0,,210.0,210.0
100227958,CN.AB1.ST.1030,PH1-ERECT ROOFING - A1,TK_Complete,2023-03-13 07:00,2023-03-28 11:00,2023-03-13 07:00,2023-06-23 17:00,80.0,0.0,80.0,0.0,Main Fab Roof Crew,0.0,0.0,0.0,,80.0,80.0
100227959,CN.AB1.ST.1050,PH1-FRP SLAB ROOF - A1 - GL 15 - 17,TK_Complete,2023-02-20 07:00,2023-02-25 16:00,2023-02-20 07:00,2023-02-25 08:00,80.0,0.0,80.0,0.0,Main Fab Roof Crew,0.0,0.0,0.0,,80.0,80.0
100227960,CN.A1.CF.1000,"PH1- SLAB A1 (Slab B6, D9 RAMP, F7)",TK_Complete,2022-09-27 07:00,2022-10-24 17:00,2022-09-27 07:00,2022-10-31 17:00,748.0,0.0,748.0,0.0,CIP Concrete SOG Crews,22.0,0.0,22.0,50-75 Ton Mobile Support Crane,770.0,770.0
100227962,CN.A1.CF.1020,"SEQ1.1- ERECT EARLY COLUMNS/ GIRDERS W/ GROUT (E,G,J, H&F) - A1 - GL18,17,16",TK_Complete,2022-11-15 07:00,2022-11-20 17:00,2022-11-15 07:00,2022-12-15 09:00,63.0,0.0,63.0,0.0,Precast Erect Main Columns,7.0,0.0,7.0,LR-1300 330 Ton Crawler Crane,70.0,70.0
100227963,CN.AB1.ST.1020,PH1-ERECT PRECAST WAFFLES GL 18 - 17 (L3) - A1,TK_Complete,2023-02-20 15:00,2023-03-02 15:00,2023-02-13 15:00,2023-02-17 10:00,320.0,0.0,320.0,0.0,"Precast Erect Crew FAB Waffles & Double-T's, Precast GROUTERS",40.0,0.0,40.0,"Precast Carry-Lift, 185 Ton Crawler Crane Unload/Handle Waffles",360.0,360.0
100227964,CN.AB1.ST.1040,PH1-ERECT PRECAST SUBFAB  GL 18 - 17 (L2) - A1,TK_Complete,2023-02-27 16:00,2023-03-04 16:00,2023-02-23 16:00,2023-03-03 10:00,320.0,0.0,320.0,0.0,"Precast Erect Crew FAB Waffles & Double-T's, Precast GROUTERS",40.0,0.0,40.0,"Precast Carry-Lift, 185 Ton Crawler Crane Unload/Handle Waffles",360.0,360.0
100227965,CN.A1.CF.1210,PH1- ERECT REMAINING COLUMNS/GIRDERS - A1 - GL15-14,TK_Complete,2022-12-22 11:00,2022-12-29 13:00,2022-12-22 11:00,2023-01-04 17:00,63.0,0.0,63.0,0.0,Precast Erect Main Columns,7.0,0.0,7.0,LR-1300 330 Ton Crawler Crane,70.0,70.0
100227976,CN.AB1.ST.1180,PH1-WAFFLE COATING complete (L2&3) - A1 GL 18-15,TK_Complete,2024-05-16 07:00,2024-05-16 17:00,2024-05-16 07:00,2024-05-16 17:00,320.0,0.0,320.0,0.0,"Precast Erect Crew FAB Waffles & Double-T's, Precast GROUTERS",40.0,0.0,40.0,"Precast Carry-Lift, 185 Ton Crawler Crane Unload/Handle Waffles",360.0,360.0
100227987,CN.AB1.ST.1270,PH1-ERECT PRECAST SUBFAB GL 17 - 16 (L2) - A1,TK_Complete,2023-03-03 10:00,2023-03-08 16:00,2023-03-03 10:00,2023-03-10 08:00,320.0,0.0,320.0,0.0,"Precast Erect Crew FAB Waffles & Double-T's, Precast GROUTERS",40.0,0.0,40.0,"Precast Carry-Lift, 185 Ton Crawler Crane Unload/Handle Waffles",360.0,360.0
100227988,CN.AB1.ST.1280,PH1-ERECT PRECAST SUBFAB GL 16 - 15 (L2) - A1,TK_Complete,2023-03-13 08:00,2023-03-18 08:00,2023-03-13 08:00,2023-03-18 09:00,320.0,0.0,320.0,0.0,"Precast Erect Crew FAB Waffles & Double-T's, Precast GROUTERS",40.0,0.0,40.0,"Precast Carry-Lift, 185 Ton Crawler Crane Unload/Handle Waffles",360.0,360.0
100227989,CN.AB1.ST.1290,PH1-ERECT PRECAST WAFFLES GL 17 - 16 (L3) - A1,TK_Complete,2023-02-20 15:00,2023-03-02 15:00,2023-02-20 15:00,2023-02-24 10:00,320.0,0.0,320.0,0.0,"Precast Erect Crew FAB Waffles & Double-T's, Precast GROUTERS",40.0,0.0,40.0,"Precast Carry-Lift, 185 Ton Crawler Crane Unload/Handle Waffles",360.0,360.0
100227990,CN.AB1.ST.1300,PH1-ERECT PRECAST WAFFLES GL 16 - 15 (L3) - A1,TK_Complete,2023-02-20 15:00,2023-03-02 15:00,2023-02-27 15:00,2023-03-09 10:00,320.0,0.0,320.0,0.0,"Precast Erect Crew FAB Waffles & Double-T's, Precast GROUTERS",40.0,0.0,40.0,"Precast Carry-Lift, 185 Ton Crawler Crane Unload/Handle Waffles",360.0,360.0
100227991,CN.AB1.ST.1330,PH1- FIRE PROOFING TOUCH UP PRIME - SFRM STEEL COLUMNS / TRUSS WEB / TOP CORD(L3) - A1,TK_Complete,2023-06-29 11:00,2023-07-03 11:00,2023-06-29 11:00,2023-07-06 13:00,320.0,0.0,320.0,0.0,"Precast Erect Crew FAB Waffles & Double-T's, Precast GROUTERS",40.0,0.0,40.0,"Precast Carry-Lift, 185 Ton Crawler Crane Unload/Handle Waffles",360.0,360.0
100227992,CN.AB1.ST.1340,SAFETY PREP/ FIRE PROOFING & PRIMER APPLY - BOTTOM CORD (L3) - A1,TK_Complete,2023-05-23 07:00,2023-05-30 09:00,2023-05-01 07:00,2023-05-03 07:00,320.0,0.0,320.0,0.0,"Precast Erect Crew FAB Waffles & Double-T's, Precast GROUTERS",40.0,0.0,40.0,"Precast Carry-Lift, 185 Ton Crawler Crane Unload/Handle Waffles",360.0,360.0
100228012,CN.AB1.ST.2180,COLUMNS- GRINDING/SCRAPING - L2 - GL 18-15 - G-E - EAST,TK_Complete,2024-03-07 08:00,2024-03-09 12:00,2024-03-06 08:00,2024-03-12 13:00,320.0,0.0,320.0,0.0,"Precast Erect Crew FAB Waffles & Double-T's, Precast GROUTERS",40.0,0.0,40.0,"Precast Carry-Lift, 185 Ton Crawler Crane Unload/Handle Waffles",360.0,360.0
100228013,CN.AB1.ST.2190,"COLUMNS - PRIME, INTERMEDIATE COAT & TOP COAT - L2 - GL 18-15 - G-E - EAST",TK_Complete,2024-03-28 07:00,2024-04-05 17:00,2024-03-20 08:00,2024-03-29 12:00,320.0,0.0,320.0,0.0,"Precast Erect Crew FAB Waffles & Double-T's, Precast GROUTERS",40.0,0.0,40.0,"Precast Carry-Lift, 185 Ton Crawler Crane Unload/Handle Waffles",360.0,360.0
100228014,CN.AB1.ST.2200,COLUMNS- GRINDING/SCRAPING - L2 - GL 18-15 - G-J- WEST,TK_Complete,2024-02-20 07:00,2024-02-23 11:00,2024-02-20 07:00,2024-02-23 11:00,320.0,0.0,320.0,0.0,"Precast Erect Crew FAB Waffles & Double-T's, Precast GROUTERS",40.0,0.0,40.0,"Precast Carry-Lift, 185 Ton Crawler Crane Unload/Handle Waffles",360.0,360.0
100228016,CN.A2.ST.1030,STEEL PRE-ASSEMBLE TRUSSES - A2 - 13,TK_Complete,2022-12-06 07:00,2022-12-13 11:00,2022-12-06 07:00,2022-12-15 13:00,1092.0,0.0,1092.0,0.0,"W&W Fab Bldg West Half Erection Team, W&W Fab Bldg East Half Erection Team",42.0,0.0,42.0,"LR 1500 Crawler with Jib, 55 Ton Mobile Support Crane",1134.0,1134.0
100228017,CN.AB2.ST.1000,PH1-ERECT STEEL TRUSSES & INFILL - A2 - 13,TK_Complete,2023-01-13 07:00,2023-01-20 11:00,2023-01-13 07:00,2023-01-21 14:00,1092.0,0.0,1092.0,0.0,"W&W Fab Bldg West Half Erection Team, W&W Fab Bldg East Half Erection Team",42.0,0.0,42.0,"LR 1500 Crawler with Jib, 55 Ton Mobile Support Crane",1134.0,1134.0
100228018,CN.AB2.ST.1010,PH1-ERECT ROOF DECKING - A2,TK_Complete,2023-02-20 15:00,2023-03-10 13:00,2023-02-13 15:00,2023-02-21 10:00,210.0,0.0,210.0,0.0,W&W Roof Decking Crew DSAD,0.0,0.0,0.0,,210.0,210.0
100228019,CN.AB2.ST.1020,PH1-ERECT ROOFING - A2,TK_Complete,2023-06-19 07:00,2023-06-30 13:00,2023-06-19 07:00,2023-07-11 11:00,80.0,0.0,80.0,0.0,Main Fab Roof Crew,0.0,0.0,0.0,,80.0,80.0
100228020,CN.AB2.ST.1050,PH1 FRP SLAB ROOF - A2 GL 15 - 13,TK_Complete,2023-02-27 07:00,2023-03-04 15:00,2023-02-27 07:00,2023-03-04 16:00,80.0,0.0,80.0,0.0,Main Fab Roof Crew,0.0,0.0,0.0,,80.0,80.0
100228021,CN.A1.CF.1030,PH1- SLAB Area A2 - (Delayed SLAB B5 Direction to proceed. On Hold Void failure 11/11-11/16),TK_Complete,2022-10-17 07:00,2022-11-13 09:00,2022-10-17 07:00,2022-11-18 17:00,748.0,0.0,748.0,0.0,CIP Concrete SOG Crews,22.0,0.0,22.0,50-75 Ton Mobile Support Crane,770.0,770.0
100228023,CN.A2.CF.1020,SEQ2- ERECT COLUMNS (36nos) & GIRDERS (12 nos) (E-G-J) - A2 - GL13-11,TK_Complete,2023-01-07 12:00,2023-01-10 14:00,2023-01-07 12:00,2023-01-23 10:00,63.0,0.0,63.0,0.0,Precast Erect Main Columns,7.0,0.0,7.0,LR-1300 330 Ton Crawler Crane,70.0,70.0
100228024,CN.AB2.ST.1030,PH1-ERECT PRECAST WAFFLES GL 15 - 14 (L3) - A2,TK_Complete,2023-02-27 08:00,2023-03-08 08:00,2023-02-27 08:00,2023-03-06 08:00,320.0,0.0,320.0,0.0,"Precast Erect Crew FAB Waffles & Double-T's, Precast GROUTERS",40.0,0.0,40.0,"Precast Carry-Lift, 185 Ton Crawler Crane Unload/Handle Waffles",360.0,360.0
100228025,CN.AB2.ST.1040,PH1-ERECT PRECAST SUBFAB GL 15 - 14 (L2) - A2,TK_Complete,2023-03-10 16:00,2023-03-17 12:00,2023-03-10 16:00,2023-03-20 08:00,320.0,0.0,320.0,0.0,"Precast Erect Crew FAB Waffles & Double-T's, Precast GROUTERS",40.0,0.0,40.0,"Precast Carry-Lift, 185 Ton Crawler Crane Unload/Handle Waffles",360.0,360.0
100228026,CN.A2.CF.1030,PH1- ERECT INTERMEDIATE COLUMNS/GIRDERS (H&F) - A2 - GL14-11 - FAB SOUTH,TK_Complete,2023-01-23 10:00,2023-01-29 14:00,2023-01-23 10:00,2023-01-30 11:00,63.0,0.0,63.0,0.0,Precast Erect Main Columns,7.0,0.0,7.0,LR-1300 330 Ton Crawler Crane,70.0,70.0
100228031,CN.AB2.ST.1170,PH1-WAFFLE COATING- (L2&3) - A2 GL 14-10,TK_Complete,2024-03-17 07:00,2024-03-17 15:00,2023-03-18 08:00,2023-03-18 16:00,320.0,0.0,320.0,0.0,"Precast Erect Crew FAB Waffles & Double-T's, Precast GROUTERS",40.0,0.0,40.0,"Precast Carry-Lift, 185 Ton Crawler Crane Unload/Handle Waffles",360.0,360.0
100228033,CN.A2.ST.1040,STEEL PRE-ASSEMBLE TRUSSES - A2 - 12,TK_Complete,2022-12-15 07:00,2022-12-21 11:00,2022-12-15 07:00,2023-01-16 09:00,1092.0,0.0,1092.0,0.0,"W&W Fab Bldg West Half Erection Team, W&W Fab Bldg East Half Erection Team",42.0,0.0,42.0,"LR 1500 Crawler with Jib, 55 Ton Mobile Support Crane",1134.0,1134.0
100228034,CN.AB2.ST.1190,PH1-ERECT STEEL TRUSSES & INFILL - A2 - 12,TK_Complete,2023-02-02 13:00,2023-02-08 17:00,2023-01-30 13:00,2023-02-03 09:00,1092.0,0.0,1092.0,0.0,"W&W Fab Bldg West Half Erection Team, W&W Fab Bldg East Half Erection Team",42.0,0.0,42.0,"LR 1500 Crawler with Jib, 55 Ton Mobile Support Crane",1134.0,1134.0
100228035,CN.A2.ST.1050,STEEL PRE-ASSEMBLE TRUSSES - A2 - 11,TK_Complete,2022-12-27 07:00,2023-01-05 11:00,2022-12-27 07:00,2023-01-06 11:00,1092.0,0.0,1092.0,0.0,"W&W Fab Bldg West Half Erection Team, W&W Fab Bldg East Half Erection Team",42.0,0.0,42.0,"LR 1500 Crawler with Jib, 55 Ton Mobile Support Crane",1134.0,1134.0
100228036,CN.AB2.ST.1200,PH1-ERECT STEEL TRUSSES & INFILL - A2 - 11,TK_Complete,2023-02-08 13:00,2023-02-14 17:00,2023-02-04 13:00,2023-02-10 09:00,1092.0,0.0,1092.0,0.0,"W&W Fab Bldg West Half Erection Team, W&W Fab Bldg East Half Erection Team",42.0,0.0,42.0,"LR 1500 Crawler with Jib, 55 Ton Mobile Support Crane",1134.0,1134.0
100228040,CN.AB2.ST.1210,PH1 FRP SLAB ROOF - A2 GL 13 - 11,TK_Complete,2023-03-06 07:00,2023-03-10 15:00,2023-03-06 07:00,2023-03-10 15:00,80.0,0.0,80.0,0.0,Main Fab Roof Crew,0.0,0.0,0.0,,80.0,80.0
100228041,CN.AB2.ST.1220,PH1-ERECT PRECAST SUBFAB GL 14 - 13 (L2) - A2,TK_Complete,2023-03-20 08:00,2023-03-25 14:00,2023-03-20 08:00,2023-03-25 15:00,320.0,0.0,320.0,0.0,"Precast Erect Crew FAB Waffles & Double-T's, Precast GROUTERS",40.0,0.0,40.0,"Precast Carry-Lift, 185 Ton Crawler Crane Unload/Handle Waffles",360.0,360.0
100228042,CN.AB2.ST.1230,PH1-ERECT PRECAST SUBFAB GL 13 - 12 (L2) - A2,TK_Complete,2023-03-25 15:00,2023-04-01 11:00,2023-03-25 15:00,2023-04-03 14:00,320.0,0.0,320.0,0.0,"Precast Erect Crew FAB Waffles & Double-T's, Precast GROUTERS",40.0,0.0,40.0,"Precast Carry-Lift, 185 Ton Crawler Crane Unload/Handle Waffles",360.0,360.0
100228043,CN.AB2.ST.1240,PH1-ERECT PRECAST WAFFLES GL 14 - 13 (L3) - A2,TK_Complete,2023-03-06 08:00,2023-03-14 08:00,2023-03-06 08:00,2023-03-10 16:00,320.0,0.0,320.0,0.0,"Precast Erect Crew FAB Waffles & Double-T's, Precast GROUTERS",40.0,0.0,40.0,"Precast Carry-Lift, 185 Ton Crawler Crane Unload/Handle Waffles",360.0,360.0
100228044,CN.AB2.ST.1250,PH1-ERECT PRECAST WAFFLES GL 13 - 12 (L3) - A2,TK_Complete,2023-03-10 16:00,2023-03-19 16:00,2023-03-10 16:00,2023-03-18 09:00,320.0,0.0,320.0,0.0,"Precast Erect Crew FAB Waffles & Double-T's, Precast GROUTERS",40.0,0.0,40.0,"Precast Carry-Lift, 185 Ton Crawler Crane Unload/Handle Waffles",360.0,360.0
100228045,CN.AB1.ST.1350,PH1- FIRE PROOFING TOUCH UP PRIME - SFRM STEEL COLUMNS / TRUSS WEB / TOP CORD(L3) - A2,TK_Complete,2023-07-06 13:00,2023-07-10 13:00,2023-06-19 13:00,2023-06-23 15:00,320.0,0.0,320.0,0.0,"Precast Erect Crew FAB Waffles & Double-T's, Precast GROUTERS",40.0,0.0,40.0,"Precast Carry-Lift, 185 Ton Crawler Crane Unload/Handle Waffles",360.0,360.0
100228046,CN.AB1.ST.1360,PH1- FIRE PROOFING - INTUMSCENT PAINT / EPOXY BOTTOM CORD (L3) - A2 - GL 15-12 - L3,TK_Complete,2023-05-12 13:00,2023-05-16 13:00,2023-05-12 13:00,2023-05-18 15:00,320.0,0.0,320.0,0.0,"Precast Erect Crew FAB Waffles & Double-T's, Precast GROUTERS",40.0,0.0,40.0,"Precast Carry-Lift, 185 Ton Crawler Crane Unload/Handle Waffles",360.0,360.0
100228063,CN.A3.ST.1060,STEEL PRE-ASSEMBLE TRUSSES - A3 - 10,TK_Complete,2023-01-17 16:00,2023-01-26 10:00,2023-01-17 16:00,2023-01-27 12:00,1092.0,0.0,1092.0,0.0,"W&W Fab Bldg West Half Erection Team, W&W Fab Bldg East Half Erection Team",42.0,0.0,42.0,"LR 1500 Crawler with Jib, 55 Ton Mobile Support Crane",1134.0,1134.0
100228064,CN.AB3.ST.1000,PH1-ERECT STEEL TRUSSES & INFILL - A3 - 10,TK_Complete,2023-02-28 13:00,2023-03-07 17:00,2023-02-13 13:00,2023-02-18 13:00,1092.0,0.0,1092.0,0.0,"W&W Fab Bldg West Half Erection Team, W&W Fab Bldg East Half Erection Team",42.0,0.0,42.0,"LR 1500 Crawler with Jib, 55 Ton Mobile Support Crane",1134.0,1134.0
100228065,CN.AB3.ST.1010,PH1-ERECT ROOF DECKING GL 12 - 11 - A3,TK_Complete,2023-02-27 15:00,2023-03-05 13:00,2023-02-27 15:00,2023-03-06 15:00,210.0,0.0,210.0,0.0,W&W Roof Decking Crew DSAD,0.0,0.0,0.0,,210.0,210.0
100228066,CN.AB3.ST.1020,PH1-ERECT ROOFING - A3,TK_Complete,2023-07-26 11:00,2023-08-03 11:00,2023-07-13 11:00,2023-07-17 13:00,80.0,0.0,80.0,0.0,Main Fab Roof Crew,0.0,0.0,0.0,,80.0,80.0
100228067,CN.AB3.ST.1050,PH1- FRP SLAB ROOF - A3 GL 11 - 9,TK_Complete,2023-05-01 07:00,2023-05-05 17:00,2023-05-05 07:00,2023-05-18 17:00,80.0,0.0,80.0,0.0,Main Fab Roof Crew,0.0,0.0,0.0,,80.0,80.0
100228068,CN.A1.CF.1070,"PH1- SLAB A3 (Gridline 9-11 Complete) - (Slab B4,C4, D4, E4) - (Delayed Pour Only)",TK_Complete,2022-12-27 15:00,2023-01-03 15:00,2022-12-09 15:00,2023-01-06 17:00,748.0,0.0,748.0,0.0,CIP Concrete SOG Crews,22.0,0.0,22.0,50-75 Ton Mobile Support Crane,770.0,770.0
100228070,CN.A3.CF.1020,SEQ3-ERECT COLUMNS (27nos) & GIRDERS (12 nos) - (E-G-J) - A3 - GL11-9,TK_Complete,2023-01-23 10:00,2023-02-02 08:00,2023-01-23 10:00,2023-02-03 09:00,63.0,0.0,63.0,0.0,Precast Erect Main Columns,7.0,0.0,7.0,LR-1300 330 Ton Crawler Crane,70.0,70.0
100228071,CN.AB3.ST.1030,PH1-ERECT PRECAST WAFFLES GL 12 - 11 (L3) - A3,TK_Complete,2023-03-18 09:00,2023-03-26 09:00,2023-03-18 09:00,2023-04-10 16:00,320.0,0.0,320.0,0.0,"Precast Erect Crew FAB Waffles & Double-T's, Precast GROUTERS",40.0,0.0,40.0,"Precast Carry-Lift, 185 Ton Crawler Crane Unload/Handle Waffles",360.0,360.0
100228072,CN.AB3.ST.1040,PH1-ERECT PRECAST SUBFAB GL 12 - 11 (L2) - A3,TK_Complete,2023-04-03 14:00,2023-04-10 10:00,2023-04-03 14:00,2023-04-11 12:00,320.0,0.0,320.0,0.0,"Precast Erect Crew FAB Waffles & Double-T's, Precast GROUTERS",40.0,0.0,40.0,"Precast Carry-Lift, 185 Ton Crawler Crane Unload/Handle Waffles",360.0,360.0
100228073,CN.A3.CF.1030,PH1- ERECT INTERMEDIATE COLUMNS/GIRDERS (H&F) - A3 - GL11-9,TK_Complete,2023-02-21 13:00,2023-02-27 11:00,2023-02-06 07:00,2023-02-13 17:00,63.0,0.0,63.0,0.0,Precast Erect Main Columns,7.0,0.0,7.0,LR-1300 330 Ton Crawler Crane,70.0,70.0
100228079,CN.AB3.ST.1170,PH1-WAFFLE COATING (L2&3) - A3 GL 6-10,TK_Complete,2024-03-17 07:00,2024-03-17 15:00,2023-04-21 08:00,2023-04-21 16:00,320.0,0.0,320.0,0.0,"Precast Erect Crew FAB Waffles & Double-T's, Precast GROUTERS",40.0,0.0,40.0,"Precast Carry-Lift, 185 Ton Crawler Crane Unload/Handle Waffles",360.0,360.0
100228080,CN.A3.ST.1070,STEEL PRE-ASSEMBLE TRUSSES - A3 - 9,TK_Complete,2023-01-26 16:00,2023-02-03 10:00,2023-01-26 16:00,2023-02-04 11:00,1092.0,0.0,1092.0,0.0,"W&W Fab Bldg West Half Erection Team, W&W Fab Bldg East Half Erection Team",42.0,0.0,42.0,"LR 1500 Crawler with Jib, 55 Ton Mobile Support Crane",1134.0,1134.0
100228081,CN.AB3.ST.1190,PH1-ERECT STEEL TRUSSES & INFILL - A3 - 9,TK_Complete,2023-02-20 07:00,2023-02-25 15:00,2023-02-20 07:00,2023-02-25 16:00,1092.0,0.0,1092.0,0.0,"W&W Fab Bldg West Half Erection Team, W&W Fab Bldg East Half Erection Team",42.0,0.0,42.0,"LR 1500 Crawler with Jib, 55 Ton Mobile Support Crane",1134.0,1134.0
100228085,CN.AB3.ST.1200,PH1-ERECT PRECAST SUBFAB GL 11 - 10 (L2) - A3,TK_Complete,2023-04-14 10:00,2023-04-20 16:00,2023-04-14 10:00,2023-04-22 09:00,320.0,0.0,320.0,0.0,"Precast Erect Crew FAB Waffles & Double-T's, Precast GROUTERS",40.0,0.0,40.0,"Precast Carry-Lift, 185 Ton Crawler Crane Unload/Handle Waffles",360.0,360.0
100228086,CN.AB3.ST.1210,PH1-ERECT PRECAST SUBFAB GL 10 - 9 (L2) - A3,TK_Complete,2023-04-22 09:00,2023-04-28 15:00,2023-04-22 09:00,2023-04-27 17:00,320.0,0.0,320.0,0.0,"Precast Erect Crew FAB Waffles & Double-T's, Precast GROUTERS",40.0,0.0,40.0,"Precast Carry-Lift, 185 Ton Crawler Crane Unload/Handle Waffles",360.0,360.0
100228087,CN.AB3.ST.1220,PH1-ERECT PRECAST WAFFLES GL 11 - 10 (L3) - A3,TK_Complete,2023-04-10 08:00,2023-04-16 12:00,2023-04-10 08:00,2023-04-14 10:00,320.0,0.0,320.0,0.0,"Precast Erect Crew FAB Waffles & Double-T's, Precast GROUTERS",40.0,0.0,40.0,"Precast Carry-Lift, 185 Ton Crawler Crane Unload/Handle Waffles",360.0,360.0
100228088,CN.AB3.ST.1230,PH1-ERECT PRECAST WAFFLES GL 10 - 9 (L3) - A3,TK_Complete,2023-04-24 08:00,2023-04-29 16:00,2023-04-17 08:00,2023-04-21 08:00,320.0,0.0,320.0,0.0,"Precast Erect Crew FAB Waffles & Double-T's, Precast GROUTERS",40.0,0.0,40.0,"Precast Carry-Lift, 185 Ton Crawler Crane Unload/Handle Waffles",360.0,360.0
100228089,CN.AB3.ST.1240,PH1-ERECT ROOF DECKING GL 11 - 10 - A3,TK_Complete,2023-03-06 15:00,2023-03-12 11:00,2023-03-06 15:00,2023-03-17 15:00,210.0,0.0,210.0,0.0,W&W Roof Decking Crew DSAD,0.0,0.0,0.0,,210.0,210.0
100228090,CN.AB3.ST.1250,PH1-ERECT ROOF DECKING GL 10 - 9 - A3,TK_Complete,2023-04-24 15:00,2023-04-29 15:00,2023-03-21 15:00,2023-03-25 15:00,210.0,0.0,210.0,0.0,W&W Roof Decking Crew DSAD,0.0,0.0,0.0,,210.0,210.0
100228091,CN.AB1.ST.1370,PH1- FIRE PROOFING TOUCH UP PRIME - SFRM STEEL COLUMNS / TRUSS WEB / TOP CORD(L3) - A3,TK_Complete,2023-06-19 07:00,2023-06-23 17:00,2023-06-24 07:00,2023-06-30 17:00,320.0,0.0,320.0,0.0,"Precast Erect Crew FAB Waffles & Double-T's, Precast GROUTERS",40.0,0.0,40.0,"Precast Carry-Lift, 185 Ton Crawler Crane Unload/Handle Waffles",360.0,360.0
100228092,CN.AB1.ST.1380,PH1- FIRE PROOFING - INTUMSCENT PAINT / EPOXY BOTTOM CORD - A4 - GL 12-9 - L3,TK_Complete,2023-05-18 15:00,2023-05-23 11:00,2023-05-18 15:00,2023-05-25 13:00,320.0,0.0,320.0,0.0,"Precast Erect Crew FAB Waffles & Double-T's, Precast GROUTERS",40.0,0.0,40.0,"Precast Carry-Lift, 185 Ton Crawler Crane Unload/Handle Waffles",360.0,360.0
100228105,CN.AB3.ST.2240,PH1-WAFFLE RAKER COATING (L2&3) - A3 GL 18-10 WEST (R3W),TK_Complete,2024-03-11 07:00,2024-03-25 16:00,2024-03-05 07:00,2024-05-14 17:00,320.0,0.0,320.0,0.0,"Precast Erect Crew FAB Waffles & Double-T's, Precast GROUTERS",40.0,0.0,40.0,"Precast Carry-Lift, 185 Ton Crawler Crane Unload/Handle Waffles",360.0,360.0
100228106,CN.AB3.ST.2250,PH1-WAFFLE RAKER COATING (L2&3) - A3 GL 18-10 EAST (R3E),TK_Complete,2024-03-11 07:00,2024-03-29 17:00,2024-03-09 07:00,2024-04-11 17:00,320.0,0.0,320.0,0.0,"Precast Erect Crew FAB Waffles & Double-T's, Precast GROUTERS",40.0,0.0,40.0,"Precast Carry-Lift, 185 Ton Crawler Crane Unload/Handle Waffles",360.0,360.0
100228111,CN.A4.ST.1090,STEEL PRE-ASSEMBLE TRUSSES - A4 - 8,TK_Complete,2023-02-20 07:00,2023-02-27 11:00,2023-02-06 07:00,2023-02-13 13:00,1092.0,0.0,1092.0,0.0,"W&W Fab Bldg West Half Erection Team, W&W Fab Bldg East Half Erection Team",42.0,0.0,42.0,"LR 1500 Crawler with Jib, 55 Ton Mobile Support Crane",1134.0,1134.0
100228112,CN.AB4.ST.1000,PH1-ERECT STEEL TRUSSES & INFILL - A4 - 8,TK_Complete,2023-03-14 13:00,2023-03-19 11:00,2023-03-14 13:00,2023-03-20 13:00,1092.0,0.0,1092.0,0.0,"W&W Fab Bldg West Half Erection Team, W&W Fab Bldg East Half Erection Team",42.0,0.0,42.0,"LR 1500 Crawler with Jib, 55 Ton Mobile Support Crane",1134.0,1134.0
100228113,CN.AB4.ST.1010,PH1-ERECT ROOF DECKING GL 9 - 8 - A4,TK_Complete,2023-04-24 07:00,2023-04-28 17:00,2023-04-28 07:00,2023-05-04 17:00,210.0,0.0,210.0,0.0,W&W Roof Decking Crew DSAD,0.0,0.0,0.0,,210.0,210.0
100228114,CN.AB4.ST.1020,PH1-ERECT ROOFING - A4 GL 9-6,TK_Complete,2023-08-04 13:00,2023-08-13 13:00,2023-07-27 13:00,2023-08-31 11:00,80.0,0.0,80.0,0.0,Main Fab Roof Crew,0.0,0.0,0.0,,80.0,80.0
100228116,CN.A1.CF.1050,"FRP- SLAB A4 Gridline 6-9 Complete (SLABS B3, C3,D3, E3)",TK_Complete,2022-11-08 07:00,2022-12-06 09:00,2022-11-08 07:00,2022-12-22 17:00,748.0,0.0,748.0,0.0,CIP Concrete SOG Crews,22.0,0.0,22.0,50-75 Ton Mobile Support Crane,770.0,770.0
100228118,CN.A4.CF.1020,SEQ4-ERECT COLUMNS (36nos) & GIRDERS (16 nos) - (E-G-J) - A4 - GL9-6,TK_Complete,2023-02-20 07:00,2023-02-26 13:00,2023-02-10 07:00,2023-02-27 15:00,63.0,0.0,63.0,0.0,Precast Erect Main Columns,7.0,0.0,7.0,LR-1300 330 Ton Crawler Crane,70.0,70.0
100228119,CN.AB4.ST.1030,PH1-ERECT PRECAST WAFFLES GL 9 - 8 (L3) - A4,TK_Complete,2023-04-24 08:00,2023-04-28 10:00,2023-04-24 08:00,2023-05-01 17:00,320.0,0.0,320.0,0.0,"Precast Erect Crew FAB Waffles & Double-T's, Precast GROUTERS",40.0,0.0,40.0,"Precast Carry-Lift, 185 Ton Crawler Crane Unload/Handle Waffles",360.0,360.0
100228120,CN.AB4.ST.1040,PH1-ERECT PRECAST SUBFAB GL 9 - 8 (L2) - A4,TK_Complete,2023-04-28 10:00,2023-04-30 14:00,2023-04-28 10:00,2023-05-01 16:00,320.0,0.0,320.0,0.0,"Precast Erect Crew FAB Waffles & Double-T's, Precast GROUTERS",40.0,0.0,40.0,"Precast Carry-Lift, 185 Ton Crawler Crane Unload/Handle Waffles",360.0,360.0
100228121,CN.A4.CF.1030,PH1- ERECT INTERMEDIATE COLUMNS/GIRDERS (H&F) - A4 - GL9-6,TK_Complete,2023-02-27 15:00,2023-03-07 09:00,2023-02-27 15:00,2023-03-08 11:00,63.0,0.0,63.0,0.0,Precast Erect Main Columns,7.0,0.0,7.0,LR-1300 330 Ton Crawler Crane,70.0,70.0
100228127,CN.A4.ST.1100,STEEL PRE-ASSEMBLE TRUSSES - A4 - 7,TK_Complete,2023-02-20 07:00,2023-02-27 11:00,2023-02-20 07:00,2023-02-28 13:00,1092.0,0.0,1092.0,0.0,"W&W Fab Bldg West Half Erection Team, W&W Fab Bldg East Half Erection Team",42.0,0.0,42.0,"LR 1500 Crawler with Jib, 55 Ton Mobile Support Crane",1134.0,1134.0
100228128,CN.AB4.ST.1270,PH1-ERECT STEEL TRUSSES & INFILL - A4 - 7,TK_Complete,2023-03-14 13:00,2023-03-19 11:00,2023-03-14 13:00,2023-03-20 13:00,1092.0,0.0,1092.0,0.0,"W&W Fab Bldg West Half Erection Team, W&W Fab Bldg East Half Erection Team",42.0,0.0,42.0,"LR 1500 Crawler with Jib, 55 Ton Mobile Support Crane",1134.0,1134.0
100228129,CN.A4.ST.1110,STEEL PRE-ASSEMBLE TRUSSES - A4 - 6,TK_Complete,2023-02-27 16:00,2023-03-07 10:00,2023-02-27 16:00,2023-03-08 12:00,1092.0,0.0,1092.0,0.0,"W&W Fab Bldg West Half Erection Team, W&W Fab Bldg East Half Erection Team",42.0,0.0,42.0,"LR 1500 Crawler with Jib, 55 Ton Mobile Support Crane",1134.0,1134.0
100228130,CN.AB4.ST.1280,PH1-ERECT STEEL TRUSSES & INFILL - A4 - 6,TK_Complete,2023-03-20 13:00,2023-03-25 11:00,2023-03-20 13:00,2023-03-25 12:00,1092.0,0.0,1092.0,0.0,"W&W Fab Bldg West Half Erection Team, W&W Fab Bldg East Half Erection Team",42.0,0.0,42.0,"LR 1500 Crawler with Jib, 55 Ton Mobile Support Crane",1134.0,1134.0
100228135,CN.AB4.ST.1290,PH1-FRP SLAB ROOF - A4 GL 7 - 5,TK_Complete,2023-07-07 11:00,2023-07-11 11:00,2023-07-07 11:00,2023-07-12 13:00,80.0,0.0,80.0,0.0,Main Fab Roof Crew,0.0,0.0,0.0,,80.0,80.0
100228136,CN.AB4.ST.1300,PH1-ERECT PRECAST SUBFAB GL 8 - 7 (L2) - A4,TK_Complete,2023-05-13 08:00,2023-05-15 12:00,2023-05-08 07:00,2023-05-12 08:00,320.0,0.0,320.0,0.0,"Precast Erect Crew FAB Waffles & Double-T's, Precast GROUTERS",40.0,0.0,40.0,"Precast Carry-Lift, 185 Ton Crawler Crane Unload/Handle Waffles",360.0,360.0
100228137,CN.AB4.ST.1310,PH1-ERECT PRECAST SUBFAB GL 7 - 6 (L2) - A4,TK_Complete,2023-05-23 07:00,2023-05-25 13:00,2023-05-19 07:00,2023-05-23 15:00,320.0,0.0,320.0,0.0,"Precast Erect Crew FAB Waffles & Double-T's, Precast GROUTERS",40.0,0.0,40.0,"Precast Carry-Lift, 185 Ton Crawler Crane Unload/Handle Waffles",360.0,360.0
100228138,CN.AB4.ST.1320,PH1-ERECT PRECAST WAFFLES GL 8 - 7 (L3) - A4,TK_Complete,2023-04-28 10:00,2023-04-30 14:00,2023-04-28 10:00,2023-05-08 16:00,320.0,0.0,320.0,0.0,"Precast Erect Crew FAB Waffles & Double-T's, Precast GROUTERS",40.0,0.0,40.0,"Precast Carry-Lift, 185 Ton Crawler Crane Unload/Handle Waffles",360.0,360.0
100228139,CN.AB4.ST.1330,PH1-ERECT PRECAST WAFFLES GL 7 - 6 (L3) - A4,TK_Complete,2023-06-12 07:00,2023-06-13 13:00,2023-05-24 07:00,2023-05-25 13:00,320.0,0.0,320.0,0.0,"Precast Erect Crew FAB Waffles & Double-T's, Precast GROUTERS",40.0,0.0,40.0,"Precast Carry-Lift, 185 Ton Crawler Crane Unload/Handle Waffles",360.0,360.0
100228140,CN.AB4.ST.1340,PH1-ERECT ROOF DECKING GL 8 - 7 - A4,TK_Complete,2023-05-23 07:00,2023-05-27 17:00,2023-05-10 07:00,2023-05-16 17:00,210.0,0.0,210.0,0.0,W&W Roof Decking Crew DSAD,0.0,0.0,0.0,,210.0,210.0
100228141,CN.AB4.ST.1350,PH1-ERECT ROOF DECKING GL 7 - 6 - A4,TK_Complete,2023-05-05 09:00,2023-05-09 09:00,2023-05-05 09:00,2023-05-09 17:00,210.0,0.0,210.0,0.0,W&W Roof Decking Crew DSAD,0.0,0.0,0.0,,210.0,210.0
100228142,CN.AB1.ST.1400,PH1- FIRE PROOFING - INTUMSCENT PAINT / EPOXY / PRIMER BOTTOM CORD (L3) - A4,TK_Complete,2023-06-19 07:00,2023-06-25 11:00,2023-06-28 07:00,2023-07-02 13:00,320.0,0.0,320.0,0.0,"Precast Erect Crew FAB Waffles & Double-T's, Precast GROUTERS",40.0,0.0,40.0,"Precast Carry-Lift, 185 Ton Crawler Crane Unload/Handle Waffles",360.0,360.0
100228159,CN.A5.ST.1120,STEEL PRE-ASSEMBLE TRUSSES - A5 - 5,TK_Complete,2023-03-03 16:00,2023-03-10 10:00,2023-03-03 16:00,2023-03-11 13:00,1092.0,0.0,1092.0,0.0,"W&W Fab Bldg West Half Erection Team, W&W Fab Bldg East Half Erection Team",42.0,0.0,42.0,"LR 1500 Crawler with Jib, 55 Ton Mobile Support Crane",1134.0,1134.0
100228160,CN.AB5.ST.1000,PH1-ERECT STEEL TRUSSES & INFILL - A5 - 5,TK_Complete,2023-03-27 07:00,2023-04-01 15:00,2023-03-27 07:00,2023-04-01 16:00,1092.0,0.0,1092.0,0.0,"W&W Fab Bldg West Half Erection Team, W&W Fab Bldg East Half Erection Team",42.0,0.0,42.0,"LR 1500 Crawler with Jib, 55 Ton Mobile Support Crane",1134.0,1134.0
100228161,CN.AB5.ST.1010,PH1-ERECT ROOF DECKING GL 6 - 5 - A5,TK_Complete,2023-06-06 11:00,2023-06-11 11:00,2023-05-10 11:00,2023-05-13 16:00,210.0,0.0,210.0,0.0,W&W Roof Decking Crew DSAD,0.0,0.0,0.0,,210.0,210.0
100228162,CN.AB5.ST.1020,PH1-ERECT ROOFING - A5 GL 6-3,TK_Complete,2023-11-20 07:00,2023-11-28 15:00,2023-09-18 07:00,2023-10-11 07:00,80.0,0.0,80.0,0.0,Main Fab Roof Crew,0.0,0.0,0.0,,80.0,80.0
100228163,CN.AB5.ST.1050,PH1- FRP SLAB ROOF - A5 GL 5 - 3,TK_Complete,2023-06-22 11:00,2023-06-27 09:00,2023-06-22 11:00,2023-06-29 11:00,80.0,0.0,80.0,0.0,Main Fab Roof Crew,0.0,0.0,0.0,,80.0,80.0
100228164,CN.A1.CF.1090,"PH1- SLAB A5 Gridline 3-5 Complete (SLABS A2, B2, C2, D2. E2) - (Delayed C2 void form failure - 11/11-11/15)",TK_Complete,2023-01-05 07:00,2023-01-13 17:00,2023-01-07 07:00,2023-02-20 07:00,748.0,0.0,748.0,0.0,CIP Concrete SOG Crews,22.0,0.0,22.0,50-75 Ton Mobile Support Crane,770.0,770.0
100228166,CN.A5.CF.1020,SEQ5-ERECT COLUMNS (27nos) & GIRDERS (12 nos) - (E-G-J) - A5 - GL6-4,TK_Complete,2023-03-08 11:00,2023-03-13 17:00,2023-03-08 11:00,2023-03-24 09:00,63.0,0.0,63.0,0.0,Precast Erect Main Columns,7.0,0.0,7.0,LR-1300 330 Ton Crawler Crane,70.0,70.0
100228167,CN.AB5.ST.1030,PH1-ERECT PRECAST WAFFLES GL 6 - 5 (L3) - A5,TK_Complete,2023-06-13 13:00,2023-06-16 09:00,2023-06-05 13:00,2023-06-07 13:00,480.0,0.0,480.0,0.0,"Precast Erect Crew FAB Waffles & Double-T's, Precast GROUTERS",60.0,0.0,60.0,"Precast Carry-Lift, 185 Ton Crawler Crane Unload/Handle Waffles",540.0,540.0
100228168,CN.AB5.ST.1040,PH1-ERECT PRECAST SUBFAB GL 6 - 5 (L2) - A5,TK_Complete,2023-05-26 11:00,2023-05-28 15:00,2023-05-26 11:00,2023-05-30 17:00,480.0,0.0,480.0,0.0,"Precast Erect Crew FAB Waffles & Double-T's, Precast GROUTERS",60.0,0.0,60.0,"Precast Carry-Lift, 185 Ton Crawler Crane Unload/Handle Waffles",540.0,540.0
100228169,CN.A5.CF.1030,PH1- ERECT INTERMEDIATE COLUMNS/GIRDERS (H&F) -  A5 - GL6-4 - FAB SOUTH,TK_Complete,2023-03-27 07:00,2023-04-03 11:00,2023-03-27 07:00,2023-04-04 13:00,63.0,0.0,63.0,0.0,Precast Erect Main Columns,7.0,0.0,7.0,LR-1300 330 Ton Crawler Crane,70.0,70.0
100228175,CN.AB5.ST.1250,PH1-WAFFLE COATING (Bottom and Top)(L3) - A5 GL 6-3,TK_Complete,2024-06-28 07:00,2024-06-28 17:00,2024-06-27 07:00,2024-06-27 17:00,480.0,0.0,480.0,0.0,"Precast Erect Crew FAB Waffles & Double-T's, Precast GROUTERS",60.0,0.0,60.0,"Precast Carry-Lift, 185 Ton Crawler Crane Unload/Handle Waffles",540.0,540.0
100228176,CN.A5.ST.1130,STEEL PRE-ASSEMBLE TRUSSES - A5 - 4,TK_Complete,2023-03-13 07:00,2023-03-20 11:00,2023-03-13 07:00,2023-03-24 13:00,1092.0,0.0,1092.0,0.0,"W&W Fab Bldg West Half Erection Team, W&W Fab Bldg East Half Erection Team",42.0,0.0,42.0,"LR 1500 Crawler with Jib, 55 Ton Mobile Support Crane",1134.0,1134.0
100228177,CN.AB5.ST.1270,PH1-ERECT STEEL TRUSSES & INFILL - A5 - 4,TK_Complete,2023-04-17 13:00,2023-04-21 15:00,2023-04-17 13:00,2023-04-21 15:00,1092.0,0.0,1092.0,0.0,"W&W Fab Bldg West Half Erection Team, W&W Fab Bldg East Half Erection Team",42.0,0.0,42.0,"LR 1500 Crawler with Jib, 55 Ton Mobile Support Crane",1134.0,1134.0
100228181,CN.AB5.ST.1290,PH1-ERECT STEEL TRUSSES & INFILL - A5 - GL 3 - FIZ,TK_Complete,2023-04-21 15:00,2023-04-24 09:00,2023-04-21 15:00,2023-04-27 11:00,1092.0,0.0,1092.0,0.0,"W&W Fab Bldg West Half Erection Team, W&W Fab Bldg East Half Erection Team",42.0,0.0,42.0,"LR 1500 Crawler with Jib, 55 Ton Mobile Support Crane",1134.0,1134.0
100228182,CN.AB5.ST.1300,PH1-ERECT PRECAST SUBFAB GL 5 - 4 (L2) - A5,TK_Complete,2023-06-13 13:00,2023-06-15 11:00,2023-06-08 13:00,2023-06-10 16:00,480.0,0.0,480.0,0.0,"Precast Erect Crew FAB Waffles & Double-T's, Precast GROUTERS",60.0,0.0,60.0,"Precast Carry-Lift, 185 Ton Crawler Crane Unload/Handle Waffles",540.0,540.0
100228183,CN.AB5.ST.1310,PH1-ERECT PRECAST SUBFAB GL 4 - 3 (L2) - A5,TK_Complete,2023-05-08 07:00,2023-05-11 11:00,2023-05-04 07:00,2023-05-06 17:00,480.0,0.0,480.0,0.0,"Precast Erect Crew FAB Waffles & Double-T's, Precast GROUTERS",60.0,0.0,60.0,"Precast Carry-Lift, 185 Ton Crawler Crane Unload/Handle Waffles",540.0,540.0
100228184,CN.AB5.ST.1320,PH1-ERECT PRECAST WAFFLES GL 5 - 4 (L3) - A5,TK_Complete,2023-06-12 07:00,2023-06-13 13:00,2023-06-12 07:00,2023-06-13 13:00,480.0,0.0,480.0,0.0,"Precast Erect Crew FAB Waffles & Double-T's, Precast GROUTERS",60.0,0.0,60.0,"Precast Carry-Lift, 185 Ton Crawler Crane Unload/Handle Waffles",540.0,540.0
100228185,CN.AB5.ST.1330,PH1-ERECT PRECAST WAFFLES GL 4 - 3 (L3) - A5,TK_Complete,2023-05-08 07:00,2023-05-12 09:00,2023-05-08 07:00,2023-05-09 13:00,480.0,0.0,480.0,0.0,"Precast Erect Crew FAB Waffles & Double-T's, Precast GROUTERS",60.0,0.0,60.0,"Precast Carry-Lift, 185 Ton Crawler Crane Unload/Handle Waffles",540.0,540.0
100228186,CN.AB5.ST.1340,PH1-ERECT ROOF DECKING GL 5 - 4 - A5,TK_Complete,2023-06-12 13:00,2023-06-17 13:00,2023-05-15 13:00,2023-05-17 13:00,210.0,0.0,210.0,0.0,W&W Roof Decking Crew DSAD,0.0,0.0,0.0,,210.0,210.0
100228187,CN.AB5.ST.1350,PH1-ERECT ROOF DECKING GL 4 - 3 - A5,TK_Complete,2023-05-23 07:00,2023-05-27 17:00,2023-05-23 07:00,2023-05-30 09:00,210.0,0.0,210.0,0.0,W&W Roof Decking Crew DSAD,0.0,0.0,0.0,,210.0,210.0
100228188,CN.AB1.ST.1420,PH1- FIRE PROOFING - INTUMSCENT PAINT / EPOXY / PRIMER BOTTOM CORD (L3) - A5,TK_Complete,2023-07-24 07:00,2023-07-29 13:00,2023-07-24 07:00,2023-07-27 14:00,320.0,0.0,320.0,0.0,"Precast Erect Crew FAB Waffles & Double-T's, Precast GROUTERS",40.0,0.0,40.0,"Precast Carry-Lift, 185 Ton Crawler Crane Unload/Handle Waffles",360.0,360.0
100228201,CN.AB5.ST.1930,PH1-WAFFLE RAKER COATING - (L2) - A5 GL 3-10 WEST (R4W),TK_Complete,2024-04-15 07:00,2024-04-23 16:00,2024-04-09 07:00,2024-06-27 17:00,480.0,0.0,480.0,0.0,"Precast Erect Crew FAB Waffles & Double-T's, Precast GROUTERS",60.0,0.0,60.0,"Precast Carry-Lift, 185 Ton Crawler Crane Unload/Handle Waffles",540.0,540.0
100228202,CN.AB5.ST.1940,PH1-WAFFLE RAKER COATING - (L2) - A5 GL 3-10 EAST (R4E),TK_Complete,2024-03-11 07:00,2024-03-29 10:00,2024-03-09 07:00,2024-04-11 17:00,480.0,0.0,480.0,0.0,"Precast Erect Crew FAB Waffles & Double-T's, Precast GROUTERS",60.0,0.0,60.0,"Precast Carry-Lift, 185 Ton Crawler Crane Unload/Handle Waffles",540.0,540.0
100228203,CN.AB5.ST.1950,COLUMNS- GRINDING/SCRAPING - L2 - GL 6-3 - G-E - EAST,TK_Complete,2024-04-01 07:00,2024-04-03 11:00,2024-04-05 07:00,2024-04-08 11:00,480.0,0.0,480.0,0.0,"Precast Erect Crew FAB Waffles & Double-T's, Precast GROUTERS",60.0,0.0,60.0,"Precast Carry-Lift, 185 Ton Crawler Crane Unload/Handle Waffles",540.0,540.0
100228204,CN.AB5.ST.1960,COLUMNS- GRINDING/SCRAPING - L2 - GL 6-3 - G-J- WEST,TK_Complete,2024-04-22 13:00,2024-04-25 13:00,2024-04-22 13:00,2024-04-25 13:00,480.0,0.0,480.0,0.0,"Precast Erect Crew FAB Waffles & Double-T's, Precast GROUTERS",60.0,0.0,60.0,"Precast Carry-Lift, 185 Ton Crawler Crane Unload/Handle Waffles",540.0,540.0
100228205,CN.AB5.ST.1970,"COLUMNS - PRIME, INTERMEDIATE COAT & TOP COAT - L2 - GL 6-3 - G-E - EAST [A3]",TK_Complete,2024-04-15 13:00,2024-04-29 13:00,2024-04-29 13:00,2024-05-13 17:00,480.0,0.0,480.0,0.0,"Precast Erect Crew FAB Waffles & Double-T's, Precast GROUTERS",60.0,0.0,60.0,"Precast Carry-Lift, 185 Ton Crawler Crane Unload/Handle Waffles",540.0,540.0
100228206,CN.AB5.ST.1980,"COLUMNS - PRIME, INTERMEDIATE COAT & TOP COAT - L2 - GL 8-3 - G-J- WEST [A6]",TK_Complete,2024-04-29 13:00,2024-05-13 13:00,2024-04-29 13:00,2024-05-22 17:00,480.0,0.0,480.0,0.0,"Precast Erect Crew FAB Waffles & Double-T's, Precast GROUTERS",60.0,0.0,60.0,"Precast Carry-Lift, 185 Ton Crawler Crane Unload/Handle Waffles",540.0,540.0
100228207,CN.AB5.ST.1990,IMPACT 2ND FLOOR MEP MATERIAL CONSTRAINT - L2 - GL 6-3 - G-J,TK_Complete,2024-03-01 08:00,2024-03-09 08:00,2024-02-28 08:00,2024-03-09 16:00,480.0,0.0,480.0,0.0,"Precast Erect Crew FAB Waffles & Double-T's, Precast GROUTERS",60.0,0.0,60.0,"Precast Carry-Lift, 185 Ton Crawler Crane Unload/Handle Waffles",540.0,540.0
100228208,CN.B1.ST.1150,STEEL PRE-ASSEMBLE TRUSSES - B1 - 19 (Delayed Top chord Delivery),TK_Complete,2022-12-27 07:00,2023-01-06 10:00,2022-12-27 07:00,2023-01-12 09:00,1092.0,0.0,1092.0,0.0,"W&W Fab Bldg West Half Erection Team, W&W Fab Bldg East Half Erection Team",42.0,0.0,42.0,"LR 1500 Crawler with Jib, 55 Ton Mobile Support Crane",1134.0,1134.0
100228209,xN.AB1.ST.1000,PH1-ERECT STEEL TRUSSES & INFILL - B1 - 19,TK_Complete,2023-01-17 11:00,2023-01-24 15:00,2023-01-17 11:00,2023-01-26 17:00,1092.0,0.0,1092.0,0.0,"W&W Fab Bldg West Half Erection Team, W&W Fab Bldg East Half Erection Team",42.0,0.0,42.0,"LR 1500 Crawler with Jib, 55 Ton Mobile Support Crane",1134.0,1134.0
100228210,xN.AB1.ST.1010,PH1-ERECT ROOF DECKING GL 18 - 19 - B1,TK_Complete,2023-02-21 10:00,2023-02-27 08:00,2023-02-21 10:00,2023-03-02 11:00,210.0,0.0,210.0,0.0,W&W Roof Decking Crew DSAD,0.0,0.0,0.0,,210.0,210.0
100228211,xN.AB1.ST.1030,PH1-ERECT ROOFING - B1,TK_Complete,2023-06-24 08:00,2023-07-06 14:00,2023-06-24 08:00,2023-07-11 17:00,80.0,0.0,80.0,0.0,Main Fab Roof Crew,0.0,0.0,0.0,,80.0,80.0
100228212,xN.AB1.ST.1050,PH1- FRP SLAB ROOF - B1 GL 17 - 19,TK_Complete,2023-03-10 15:00,2023-03-14 15:00,2023-03-10 15:00,2023-03-18 15:00,80.0,0.0,80.0,0.0,Main Fab Roof Crew,0.0,0.0,0.0,,80.0,80.0
100228213,CN.A1.CF.1110,"SLAB B1 18-22 Complete (SLABS B8, C8, D8, E8) - (Delayed SLAB B8 Direction to proceed. On Hold Void failure 11/11-11/16)",TK_Complete,2022-09-06 07:00,2022-09-29 09:00,2022-09-06 07:00,2022-11-18 17:00,748.0,0.0,748.0,0.0,CIP Concrete SOG Crews,22.0,0.0,22.0,50-75 Ton Mobile Support Crane,770.0,770.0
100228215,CN.AB1.ST.1060,PH1-ERECT PRECAST WAFFLES GL 18 - 19 (L3) - B1,TK_Complete,2023-03-02 11:00,2023-03-10 11:00,2023-03-02 11:00,2023-03-08 11:00,320.0,0.0,320.0,0.0,"Precast Erect Crew FAB Waffles & Double-T's, Precast GROUTERS",40.0,0.0,40.0,"Precast Carry-Lift, 185 Ton Crawler Crane Unload/Handle Waffles",360.0,360.0
100228216,CN.B1.CF.1020,ERECT COLUMNS (24nos) & GIRDERS (8 nos) (E & J only)- GL19-20 -B1,TK_Complete,2023-01-04 07:00,2023-01-07 09:00,2023-01-04 07:00,2023-01-07 10:00,63.0,0.0,63.0,0.0,Precast Erect Main Columns,7.0,0.0,7.0,LR-1300 330 Ton Crawler Crane,70.0,70.0
100228217,xN.AB1.ST.1040,PH1-ERECT PRECAST SUBFAB GL 18 - 19 (L2) - B1,TK_Complete,2023-04-10 07:00,2023-04-13 09:00,2023-04-10 07:00,2023-04-13 09:00,320.0,0.0,320.0,0.0,"Precast Erect Crew FAB Waffles & Double-T's, Precast GROUTERS",40.0,0.0,40.0,"Precast Carry-Lift, 185 Ton Crawler Crane Unload/Handle Waffles",360.0,360.0
100228218,CN.B1.CF.1030,"PH1- ERECT REMAINING COLUMNS/GIRDERS (G, H & F) - GL21-22 -B1",TK_Complete,2023-02-20 07:00,2023-02-24 17:00,2023-02-13 07:00,2023-02-18 16:00,63.0,0.0,63.0,0.0,Precast Erect Main Columns,7.0,0.0,7.0,LR-1300 330 Ton Crawler Crane,70.0,70.0
100228225,CN.B1.ST.1160,STEEL PRE-ASSEMBLE TRUSSES - B1 - 20,TK_Complete,2023-01-10 07:00,2023-01-17 11:00,2023-01-10 07:00,2023-01-19 13:00,1092.0,0.0,1092.0,0.0,"W&W Fab Bldg West Half Erection Team, W&W Fab Bldg East Half Erection Team",42.0,0.0,42.0,"LR 1500 Crawler with Jib, 55 Ton Mobile Support Crane",1134.0,1134.0
100228226,xN.AB1.ST.1060,PH1-ERECT STEEL TRUSSES & INFILL - B1 - 20 (E10 Slab held Due to Pit7),TK_Complete,2023-02-07 15:00,2023-02-14 09:00,2023-02-06 15:00,2023-02-11 11:00,1092.0,0.0,1092.0,0.0,"W&W Fab Bldg West Half Erection Team, W&W Fab Bldg East Half Erection Team",42.0,0.0,42.0,"LR 1500 Crawler with Jib, 55 Ton Mobile Support Crane",1134.0,1134.0
100228227,CN.B1.ST.1170,STEEL PRE-ASSEMBLE TRUSSES - B1 - 21,TK_Complete,2023-01-10 07:00,2023-01-17 11:00,2023-01-10 07:00,2023-01-19 13:00,1092.0,0.0,1092.0,0.0,"W&W Fab Bldg West Half Erection Team, W&W Fab Bldg East Half Erection Team",42.0,0.0,42.0,"LR 1500 Crawler with Jib, 55 Ton Mobile Support Crane",1134.0,1134.0
100228228,xN.AB1.ST.1070,PH1-ERECT STEEL TRUSSES & INFILL - B1 - 21,TK_Complete,2023-02-21 13:00,2023-02-27 11:00,2023-02-21 13:00,2023-02-23 13:00,1092.0,0.0,1092.0,0.0,"W&W Fab Bldg West Half Erection Team, W&W Fab Bldg East Half Erection Team",42.0,0.0,42.0,"LR 1500 Crawler with Jib, 55 Ton Mobile Support Crane",1134.0,1134.0
100228232,xN.AB1.ST.1090,PH1- FRP SLAB ROOF - B1 GL 19 - 21,TK_Complete,2023-03-27 15:00,2023-04-01 15:00,2023-03-27 15:00,2023-04-01 16:00,80.0,0.0,80.0,0.0,Main Fab Roof Crew,0.0,0.0,0.0,,80.0,80.0
100228233,xN.AB1.ST.1100,PH1-ERECT PRECAST SUBFAB GL 19 - 20 (L2) - B1,TK_Complete,2023-05-26 11:00,2023-05-28 15:00,2023-05-15 11:00,2023-05-17 11:00,320.0,0.0,320.0,0.0,"Precast Erect Crew FAB Waffles & Double-T's, Precast GROUTERS",40.0,0.0,40.0,"Precast Carry-Lift, 185 Ton Crawler Crane Unload/Handle Waffles",360.0,360.0
100228234,xN.AB1.ST.1110,PH1-ERECT PRECAST SUBFAB GL 20 - 21 (L2) - B1,TK_Complete,2023-05-25 13:00,2023-05-27 09:00,2023-05-25 13:00,2023-05-27 10:00,320.0,0.0,320.0,0.0,"Precast Erect Crew FAB Waffles & Double-T's, Precast GROUTERS",40.0,0.0,40.0,"Precast Carry-Lift, 185 Ton Crawler Crane Unload/Handle Waffles",360.0,360.0
100228235,CN.AB1.ST.1310,PH1-ERECT PRECAST WAFFLES GL 19 - 20 (L3) - B1,TK_Complete,2023-05-23 07:00,2023-05-26 11:00,2023-05-08 07:00,2023-05-10 07:00,320.0,0.0,320.0,0.0,"Precast Erect Crew FAB Waffles & Double-T's, Precast GROUTERS",40.0,0.0,40.0,"Precast Carry-Lift, 185 Ton Crawler Crane Unload/Handle Waffles",360.0,360.0
100228236,CN.AB1.ST.1320,PH1-ERECT PRECAST WAFFLES GL 20 - 21 (L3) - B1,TK_Complete,2023-05-23 07:00,2023-05-26 11:00,2023-05-23 07:00,2023-05-25 13:00,320.0,0.0,320.0,0.0,"Precast Erect Crew FAB Waffles & Double-T's, Precast GROUTERS",40.0,0.0,40.0,"Precast Carry-Lift, 185 Ton Crawler Crane Unload/Handle Waffles",360.0,360.0
100228237,xN.AB1.ST.1120,PH1-ERECT ROOF DECKING GL 19 - 20 - B1,TK_Complete,2023-03-02 11:00,2023-03-06 11:00,2023-03-02 11:00,2023-03-23 17:00,210.0,0.0,210.0,0.0,W&W Roof Decking Crew DSAD,0.0,0.0,0.0,,210.0,210.0
100228238,xN.AB1.ST.1130,PH1-ERECT ROOF DECKING GL 20 -21 - B1,TK_Complete,2023-03-07 13:00,2023-03-12 11:00,2023-03-07 13:00,2023-03-27 15:00,210.0,0.0,210.0,0.0,W&W Roof Decking Crew DSAD,0.0,0.0,0.0,,210.0,210.0
100228239,CN.AB1.ST.1430,PH1- FIRE PROOFING TOUCH UP PRIME - SFRM STEEL COLUMNS / TRUSS WEB / TOP CORD - B1 - GL 18-21 - L3,TK_Complete,2024-07-15 07:00,2024-07-22 17:00,2024-06-24 07:00,2024-06-27 07:00,320.0,0.0,320.0,0.0,"Precast Erect Crew FAB Waffles & Double-T's, Precast GROUTERS",40.0,0.0,40.0,"Precast Carry-Lift, 185 Ton Crawler Crane Unload/Handle Waffles",360.0,360.0
100228240,CN.AB1.ST.1440,SAFETY PREP/ FIRE PROOFING & PRIMER APPLY - BOTTOM CORD (L3) - B1,TK_Complete,2023-07-03 07:00,2023-07-10 13:00,2023-07-03 07:00,2023-07-11 15:00,320.0,0.0,320.0,0.0,"Precast Erect Crew FAB Waffles & Double-T's, Precast GROUTERS",40.0,0.0,40.0,"Precast Carry-Lift, 185 Ton Crawler Crane Unload/Handle Waffles",360.0,360.0
100228265,CN.B2.ST.1180,STEEL PRE-ASSEMBLE TRUSSES - B2 - 22,TK_Complete,2023-01-10 07:00,2023-01-17 11:00,2023-01-10 07:00,2023-01-19 13:00,1092.0,0.0,1092.0,0.0,"W&W Fab Bldg West Half Erection Team, W&W Fab Bldg East Half Erection Team",42.0,0.0,42.0,"LR 1500 Crawler with Jib, 55 Ton Mobile Support Crane",1134.0,1134.0
100228266,xN.AB2.ST.1000,PH1-ERECT STEEL TRUSSES & INFILL - B2 - 22,TK_Complete,2023-03-09 09:00,2023-03-13 09:00,2023-03-09 09:00,2023-03-14 13:00,1092.0,0.0,1092.0,0.0,"W&W Fab Bldg West Half Erection Team, W&W Fab Bldg East Half Erection Team",42.0,0.0,42.0,"LR 1500 Crawler with Jib, 55 Ton Mobile Support Crane",1134.0,1134.0
100228267,xN.AB2.ST.1010,PH1-ERECT ROOF DECKING GL 21 - 22 - B2,TK_Complete,2023-04-10 07:00,2023-04-13 17:00,2023-04-03 07:00,2023-04-07 17:00,210.0,0.0,210.0,0.0,W&W Roof Decking Crew DSAD,0.0,0.0,0.0,,210.0,210.0
100228268,xN.AB2.ST.1020,PH1-ERECT ROOFING - B2,TK_Complete,2023-07-07 11:00,2023-07-16 17:00,2023-07-07 11:00,2023-07-13 15:00,80.0,0.0,80.0,0.0,Main Fab Roof Crew,0.0,0.0,0.0,,80.0,80.0
100228269,xN.AB2.ST.1050,PH1-FRP SLAB ROOF - B2 GL 21 - 23,TK_Complete,2023-04-17 11:00,2023-04-22 11:00,2023-04-17 11:00,2023-05-04 15:00,80.0,0.0,80.0,0.0,Main Fab Roof Crew,0.0,0.0,0.0,,80.0,80.0
100228270,CN.A1.CF.1130,"PH1- SLAB B2 Gridline 22-25 Complete (SLABS B9,C9,D9,E9)",TK_Complete,2022-10-10 15:00,2022-11-06 17:00,2022-11-04 15:00,2022-12-29 13:00,748.0,0.0,748.0,0.0,CIP Concrete SOG Crews,22.0,0.0,22.0,50-75 Ton Mobile Support Crane,770.0,770.0
100228272,CN.AB2.ST.1060,PH1-ERECT PRECAST WAFFLES GL 21 - 22 (L3) - B2,TK_Complete,2023-05-23 07:00,2023-05-25 13:00,2023-05-23 07:00,2023-05-25 13:00,320.0,0.0,320.0,0.0,"Precast Erect Crew FAB Waffles & Double-T's, Precast GROUTERS",40.0,0.0,40.0,"Precast Carry-Lift, 185 Ton Crawler Crane Unload/Handle Waffles",360.0,360.0
100228273,CN.B2.CF.1020,SEQ2-ERECT COLUMNS (36nos) & GIRDERS (16 nos) (E-G-J)- GL22-25 - B2,TK_Complete,2023-02-20 07:00,2023-02-24 09:00,2023-02-20 07:00,2023-03-09 09:00,63.0,0.0,63.0,0.0,Precast Erect Main Columns,7.0,0.0,7.0,LR-1300 330 Ton Crawler Crane,70.0,70.0
100228274,xN.AB2.ST.1040,PH1-ERECT PRECAST SUBFAB GL 21 - 22 (L2) - B2,TK_Complete,2023-05-25 13:00,2023-05-27 09:00,2023-05-25 13:00,2023-05-27 10:00,320.0,0.0,320.0,0.0,"Precast Erect Crew FAB Waffles & Double-T's, Precast GROUTERS",40.0,0.0,40.0,"Precast Carry-Lift, 185 Ton Crawler Crane Unload/Handle Waffles",360.0,360.0
100228275,CN.B2.CF.1030,PH1- ERECT INTERMEDIATE COLUMNS/GIRDERS (H&F) - FAB NORTH- GL22-25 - B2,TK_Complete,2023-03-06 15:00,2023-03-10 15:00,2023-03-06 15:00,2023-03-10 15:00,63.0,0.0,63.0,0.0,Precast Erect Main Columns,7.0,0.0,7.0,LR-1300 330 Ton Crawler Crane,70.0,70.0
100228281,CN.B2.ST.1190,STEEL PRE-ASSEMBLE TRUSSES - B2 - 23,TK_Complete,2023-01-10 07:00,2023-01-17 11:00,2023-01-10 07:00,2023-01-19 13:00,1092.0,0.0,1092.0,0.0,"W&W Fab Bldg West Half Erection Team, W&W Fab Bldg East Half Erection Team",42.0,0.0,42.0,"LR 1500 Crawler with Jib, 55 Ton Mobile Support Crane",1134.0,1134.0
100228282,xN.AB2.ST.1060,PH1-ERECT STEEL TRUSSES & INFILL - B2 - 23,TK_Complete,2023-03-09 09:00,2023-03-13 09:00,2023-03-09 09:00,2023-03-14 13:00,1092.0,0.0,1092.0,0.0,"W&W Fab Bldg West Half Erection Team, W&W Fab Bldg East Half Erection Team",42.0,0.0,42.0,"LR 1500 Crawler with Jib, 55 Ton Mobile Support Crane",1134.0,1134.0
100228283,CN.B2.ST.1200,STEEL PRE-ASSEMBLE TRUSSES - B2 - 24,TK_Complete,2023-01-17 16:00,2023-01-26 10:00,2023-01-17 16:00,2023-01-27 12:00,1092.0,0.0,1092.0,0.0,"W&W Fab Bldg West Half Erection Team, W&W Fab Bldg East Half Erection Team",42.0,0.0,42.0,"LR 1500 Crawler with Jib, 55 Ton Mobile Support Crane",1134.0,1134.0
100228284,xN.AB2.ST.1070,PH1-ERECT STEEL TRUSSES & INFILL - B2 - 24,TK_Complete,2023-03-27 07:00,2023-04-01 15:00,2023-03-27 07:00,2023-04-01 16:00,1092.0,0.0,1092.0,0.0,"W&W Fab Bldg West Half Erection Team, W&W Fab Bldg East Half Erection Team",42.0,0.0,42.0,"LR 1500 Crawler with Jib, 55 Ton Mobile Support Crane",1134.0,1134.0
100228288,xN.AB2.ST.1100,PH1-ERECT PRECAST SUBFAB GL 22 - 23 (L2) - B2,TK_Complete,2023-05-27 10:00,2023-05-28 16:00,2023-05-27 10:00,2023-05-30 17:00,320.0,0.0,320.0,0.0,"Precast Erect Crew FAB Waffles & Double-T's, Precast GROUTERS",40.0,0.0,40.0,"Precast Carry-Lift, 185 Ton Crawler Crane Unload/Handle Waffles",360.0,360.0
100228289,xN.AB2.ST.1110,PH1-ERECT PRECAST SUBFAB GL 23 - 24 (L2) - B2,TK_Complete,2023-06-02 07:00,2023-06-03 13:00,2023-06-02 07:00,2023-06-13 13:00,320.0,0.0,320.0,0.0,"Precast Erect Crew FAB Waffles & Double-T's, Precast GROUTERS",40.0,0.0,40.0,"Precast Carry-Lift, 185 Ton Crawler Crane Unload/Handle Waffles",360.0,360.0
100228290,CN.AB2.ST.1260,PH1-ERECT PRECAST WAFFLES GL 22 - 23 (L3) - B2,TK_Complete,2023-05-25 13:00,2023-05-27 09:00,2023-05-25 13:00,2023-05-27 10:00,320.0,0.0,320.0,0.0,"Precast Erect Crew FAB Waffles & Double-T's, Precast GROUTERS",40.0,0.0,40.0,"Precast Carry-Lift, 185 Ton Crawler Crane Unload/Handle Waffles",360.0,360.0
100228291,CN.AB2.ST.1270,PH1-ERECT PRECAST WAFFLES GL 23 - 24 (L3) - B2,TK_Complete,2023-05-27 10:00,2023-05-28 16:00,2023-05-27 10:00,2023-06-09 13:00,320.0,0.0,320.0,0.0,"Precast Erect Crew FAB Waffles & Double-T's, Precast GROUTERS",40.0,0.0,40.0,"Precast Carry-Lift, 185 Ton Crawler Crane Unload/Handle Waffles",360.0,360.0
100228292,xN.AB2.ST.1120,PH1-ERECT ROOF DECKING GL 22 - 23 - B2,TK_Complete,2023-04-13 11:00,2023-04-16 13:00,2023-04-10 11:00,2023-04-11 15:00,210.0,0.0,210.0,0.0,W&W Roof Decking Crew DSAD,0.0,0.0,0.0,,210.0,210.0
100228293,xN.AB2.ST.1130,PH1-ERECT ROOF DECKING GL 23 - 24 - B2,TK_Complete,2023-04-17 11:00,2023-04-22 11:00,2023-04-11 11:00,2023-04-14 11:00,210.0,0.0,210.0,0.0,W&W Roof Decking Crew DSAD,0.0,0.0,0.0,,210.0,210.0
100228294,CN.AB1.ST.1450,PH1- FIRE PROOFING TOUCH UP PRIME - SFRM STEEL COLUMNS / TRUSS WEB / TOP CORD - B2 - GL 21-24 - L3,TK_Complete,2024-07-26 07:00,2024-08-02 17:00,2024-06-18 07:00,2024-06-22 17:00,320.0,0.0,320.0,0.0,"Precast Erect Crew FAB Waffles & Double-T's, Precast GROUTERS",40.0,0.0,40.0,"Precast Carry-Lift, 185 Ton Crawler Crane Unload/Handle Waffles",360.0,360.0
100228295,CN.AB1.ST.1460,PH1- FIRE PROOFING - INTUMSCENT PAINT / EPOXY BOTTOM CORD (L3) - B2 GL 21-24,TK_Complete,2023-07-03 07:00,2023-07-10 13:00,2023-07-03 07:00,2023-09-28 17:00,320.0,0.0,320.0,0.0,"Precast Erect Crew FAB Waffles & Double-T's, Precast GROUTERS",40.0,0.0,40.0,"Precast Carry-Lift, 185 Ton Crawler Crane Unload/Handle Waffles",360.0,360.0
100228309,CN.B3.ST.1210,STEEL PRE-ASSEMBLE TRUSSES - B3 - 25,TK_Complete,2023-01-31 07:00,2023-02-07 11:00,2023-01-26 07:00,2023-02-04 16:00,1092.0,0.0,1092.0,0.0,"W&W Fab Bldg West Half Erection Team, W&W Fab Bldg East Half Erection Team",42.0,0.0,42.0,"LR 1500 Crawler with Jib, 55 Ton Mobile Support Crane",1134.0,1134.0
100228310,xN.AB3.ST.1000,PH1-ERECT STEEL TRUSSES & INFILL - B3 - 25,TK_Complete,2023-03-21 13:00,2023-03-25 17:00,2023-03-21 13:00,2023-03-27 09:00,1092.0,0.0,1092.0,0.0,"W&W Fab Bldg West Half Erection Team, W&W Fab Bldg East Half Erection Team",42.0,0.0,42.0,"LR 1500 Crawler with Jib, 55 Ton Mobile Support Crane",1134.0,1134.0
100228311,xN.AB3.ST.1010,PH1-ERECT ROOF DECKING GL 24 - 25 - B3,TK_Complete,2023-04-24 15:00,2023-04-29 15:00,2023-04-25 07:00,2023-05-04 17:00,210.0,0.0,210.0,0.0,W&W Roof Decking Crew DSAD,0.0,0.0,0.0,,210.0,210.0
100228312,xN.AB3.ST.1020,PH1-ERECT ROOFING - B3,TK_Complete,2023-07-28 15:00,2023-08-07 11:00,2023-07-14 15:00,2023-07-21 15:00,80.0,0.0,80.0,0.0,Main Fab Roof Crew,0.0,0.0,0.0,,80.0,80.0
100228314,CN.A1.CF.1150,"PH1- SLAB B3 (B10, C10, D10, E10)",TK_Complete,2023-01-31 07:00,2023-02-09 09:00,2023-01-27 07:00,2023-02-18 16:00,748.0,0.0,748.0,0.0,CIP Concrete SOG Crews,22.0,0.0,22.0,50-75 Ton Mobile Support Crane,770.0,770.0
100228316,CN.AB3.ST.1060,PH1-ERECT PRECAST WAFFLES GL 24 - 25 (L3) - B3,TK_Complete,2023-06-12 07:00,2023-06-15 11:00,2023-06-09 07:00,2023-06-12 07:00,320.0,0.0,320.0,0.0,"Precast Erect Crew FAB Waffles & Double-T's, Precast GROUTERS",40.0,0.0,40.0,"Precast Carry-Lift, 185 Ton Crawler Crane Unload/Handle Waffles",360.0,360.0
100228317,CN.B3.CF.1020,SEQ3-ERECT COLUMNS (36nos) & GIRDERS (16 nos) (E-G-J)- GL25-28 - B3,TK_Complete,2023-03-09 09:00,2023-03-13 09:00,2023-03-09 09:00,2023-03-14 13:00,63.0,0.0,63.0,0.0,Precast Erect Main Columns,7.0,0.0,7.0,LR-1300 330 Ton Crawler Crane,70.0,70.0
100228318,xN.AB3.ST.1040,PH1-ERECT PRECAST SUBFAB GL 24 - 25 (L2) - B3,TK_Complete,2023-06-15 11:00,2023-06-16 17:00,2023-06-12 11:00,2023-06-12 17:00,320.0,0.0,320.0,0.0,"Precast Erect Crew FAB Waffles & Double-T's, Precast GROUTERS",40.0,0.0,40.0,"Precast Carry-Lift, 185 Ton Crawler Crane Unload/Handle Waffles",360.0,360.0
100228319,CN.B3.CF.1030,PH1- ERECT INTERMEDIATE COLUMNS/GIRDERS (H&F) - FAB NORTH- GL25-28 - B3,TK_Complete,2023-03-27 07:00,2023-03-31 17:00,2023-03-27 07:00,2023-03-31 17:00,63.0,0.0,63.0,0.0,Precast Erect Main Columns,7.0,0.0,7.0,LR-1300 330 Ton Crawler Crane,70.0,70.0
100228325,CN.AB3.ST.1180,PH1-WAFFLE COATING (Bottom and Top) (L2&3) - B3 GL 22-26,TK_Complete,2024-02-22 15:00,2024-02-23 13:00,2023-06-12 15:00,2023-06-24 13:00,320.0,0.0,320.0,0.0,"Precast Erect Crew FAB Waffles & Double-T's, Precast GROUTERS",40.0,0.0,40.0,"Precast Carry-Lift, 185 Ton Crawler Crane Unload/Handle Waffles",360.0,360.0
100228326,CN.B3.ST.1220,STEEL PRE-ASSEMBLE TRUSSES - B3 - 26,TK_Complete,2023-02-27 07:00,2023-03-06 11:00,2023-02-27 07:00,2023-03-07 13:00,1092.0,0.0,1092.0,0.0,"W&W Fab Bldg West Half Erection Team, W&W Fab Bldg East Half Erection Team",42.0,0.0,42.0,"LR 1500 Crawler with Jib, 55 Ton Mobile Support Crane",1134.0,1134.0
100228327,xN.AB3.ST.1060,PH1-ERECT STEEL TRUSSES & INFILL - B3 - 26,TK_Complete,2023-04-03 07:00,2023-04-08 11:00,2023-04-03 07:00,2023-04-08 12:00,1092.0,0.0,1092.0,0.0,"W&W Fab Bldg West Half Erection Team, W&W Fab Bldg East Half Erection Team",42.0,0.0,42.0,"LR 1500 Crawler with Jib, 55 Ton Mobile Support Crane",1134.0,1134.0
100228328,CN.B3.ST.1230,STEEL PRE-ASSEMBLE TRUSSES - B3 - 27,TK_Complete,2023-02-27 07:00,2023-03-06 11:00,2023-02-27 07:00,2023-03-07 13:00,1092.0,0.0,1092.0,0.0,"W&W Fab Bldg West Half Erection Team, W&W Fab Bldg East Half Erection Team",42.0,0.0,42.0,"LR 1500 Crawler with Jib, 55 Ton Mobile Support Crane",1134.0,1134.0
100228329,xN.AB3.ST.1070,PH1-ERECT STEEL TRUSSES & INFILL - B3 - 27,TK_Complete,2023-04-03 07:00,2023-04-08 11:00,2023-04-03 07:00,2023-04-08 12:00,1092.0,0.0,1092.0,0.0,"W&W Fab Bldg West Half Erection Team, W&W Fab Bldg East Half Erection Team",42.0,0.0,42.0,"LR 1500 Crawler with Jib, 55 Ton Mobile Support Crane",1134.0,1134.0
100228334,xN.AB2.ST.1090,PH1-FRP SLAB ROOF - B2 GL 23 - 25,TK_Complete,2023-05-01 07:00,2023-05-05 17:00,2023-05-01 07:00,2023-05-05 17:00,80.0,0.0,80.0,0.0,Main Fab Roof Crew,0.0,0.0,0.0,,80.0,80.0
100228335,xN.AB3.ST.1090,PH1-ERECT PRECAST SUBFAB GL 25 - 26 (L2) - B3,TK_Complete,2023-06-17 08:00,2023-06-18 14:00,2023-06-14 08:00,2023-06-16 15:00,320.0,0.0,320.0,0.0,"Precast Erect Crew FAB Waffles & Double-T's, Precast GROUTERS",40.0,0.0,40.0,"Precast Carry-Lift, 185 Ton Crawler Crane Unload/Handle Waffles",360.0,360.0
100228336,xN.AB3.ST.1100,PH1-ERECT PRECAST SUBFAB GL 26 - 27 (L2) - B3,TK_Complete,2023-06-19 15:00,2023-06-22 11:00,2023-06-19 15:00,2023-06-24 16:00,320.0,0.0,320.0,0.0,"Precast Erect Crew FAB Waffles & Double-T's, Precast GROUTERS",40.0,0.0,40.0,"Precast Carry-Lift, 185 Ton Crawler Crane Unload/Handle Waffles",360.0,360.0
100228337,CN.AB3.ST.1260,PH1-ERECT PRECAST WAFFLES GL 25 - 26 (L3) - B3,TK_Complete,2023-06-15 11:00,2023-06-16 17:00,2023-06-12 11:00,2023-06-14 17:00,320.0,0.0,320.0,0.0,"Precast Erect Crew FAB Waffles & Double-T's, Precast GROUTERS",40.0,0.0,40.0,"Precast Carry-Lift, 185 Ton Crawler Crane Unload/Handle Waffles",360.0,360.0
100228338,CN.AB3.ST.1270,PH1-ERECT PRECAST WAFFLES GL 26 - 27 (L3) - B3,TK_Complete,2023-07-03 07:00,2023-07-06 13:00,2023-06-16 07:00,2023-06-20 07:00,320.0,0.0,320.0,0.0,"Precast Erect Crew FAB Waffles & Double-T's, Precast GROUTERS",40.0,0.0,40.0,"Precast Carry-Lift, 185 Ton Crawler Crane Unload/Handle Waffles",360.0,360.0
100228339,xN.AB3.ST.1110,PH1-ERECT ROOF DECKING GL 25 - 26 - B3,TK_Complete,2023-05-23 07:00,2023-05-27 17:00,2023-05-08 07:00,2023-05-12 15:00,210.0,0.0,210.0,0.0,W&W Roof Decking Crew DSAD,0.0,0.0,0.0,,210.0,210.0
100228340,xN.AB3.ST.1120,PH1-ERECT ROOF DECKING GL 26 - 27 - B3,TK_Complete,2023-05-23 07:00,2023-05-27 17:00,2023-05-23 07:00,2023-05-30 09:00,210.0,0.0,210.0,0.0,W&W Roof Decking Crew DSAD,0.0,0.0,0.0,,210.0,210.0
100228341,CN.AB1.ST.1480,PH1- FIRE PROOFING TOUCH UP PRIME - SFRM STEEL COLUMNS / TRUSS WEB / TOP CORD - B3 - GL 24-27 - L3,TK_Complete,2024-07-09 07:00,2024-07-17 17:00,2024-07-05 07:00,2024-07-12 17:00,320.0,0.0,320.0,0.0,"Precast Erect Crew FAB Waffles & Double-T's, Precast GROUTERS",40.0,0.0,40.0,"Precast Carry-Lift, 185 Ton Crawler Crane Unload/Handle Waffles",360.0,360.0
100228342,CN.AB1.ST.1810,PH1- FIRE PROOFING - INTUMSCENT PAINT / EPOXY BOTTOM CORD (L3) - B3 GL 24-27,TK_Complete,2023-07-11 15:00,2023-07-17 11:00,2023-07-11 15:00,2023-09-23 16:00,320.0,0.0,320.0,0.0,"Precast Erect Crew FAB Waffles & Double-T's, Precast GROUTERS",40.0,0.0,40.0,"Precast Carry-Lift, 185 Ton Crawler Crane Unload/Handle Waffles",360.0,360.0
100228353,CN.AB3.ST.2260,PH1-WAFFLE RAKER COATING - (L2&3) - B3 GL 18-26 WEST (R2W),TK_Complete,2024-03-11 07:00,2024-03-29 16:00,2024-03-08 07:00,2024-04-06 17:00,320.0,0.0,320.0,0.0,"Precast Erect Crew FAB Waffles & Double-T's, Precast GROUTERS",40.0,0.0,40.0,"Precast Carry-Lift, 185 Ton Crawler Crane Unload/Handle Waffles",360.0,360.0
100228354,CN.AB3.ST.2270,PH1-WAFFLE RAKER COATING - (L2&3) - B3 GL 18-26 EAST (R2E),TK_Complete,2024-03-11 07:00,2024-04-05 17:00,2024-03-09 07:00,2024-06-11 17:00,320.0,0.0,320.0,0.0,"Precast Erect Crew FAB Waffles & Double-T's, Precast GROUTERS",40.0,0.0,40.0,"Precast Carry-Lift, 185 Ton Crawler Crane Unload/Handle Waffles",360.0,360.0
100228361,CN.AB1.ST.2290,PH1- FIRE PROOFING TOUCH UP PRIME - SFRM STEEL COLUMNS / TRUSS WEB / TOP CORD - A4 - GL 9-6 - L3,TK_Complete,2024-05-30 07:00,2024-06-07 17:00,2024-05-30 07:00,2024-06-27 17:00,320.0,0.0,320.0,0.0,"Precast Erect Crew FAB Waffles & Double-T's, Precast GROUTERS",40.0,0.0,40.0,"Precast Carry-Lift, 185 Ton Crawler Crane Unload/Handle Waffles",360.0,360.0
100228362,CN.AB1.ST.2310,PH1- FIRE PROOFING TOUCH UP PRIME - SFRM STEEL COLUMNS / TRUSS WEB / TOP CORD - A4 - GL 6-3 - L3,TK_Complete,2024-07-11 07:00,2024-07-18 17:00,2024-07-02 07:00,2024-07-08 17:00,320.0,0.0,320.0,0.0,"Precast Erect Crew FAB Waffles & Double-T's, Precast GROUTERS",40.0,0.0,40.0,"Precast Carry-Lift, 185 Ton Crawler Crane Unload/Handle Waffles",360.0,360.0
100228363,CN.AB1.ST.2350,PH1- FIRE PROOFING TOUCH UP PRIME - SFRM STEEL COLUMNS / TRUSS WEB / TOP CORD - B3 - GL 24-27 - L3,TK_Complete,2024-07-05 07:00,2024-07-12 17:00,2024-07-05 07:00,2024-07-12 17:00,320.0,0.0,320.0,0.0,"Precast Erect Crew FAB Waffles & Double-T's, Precast GROUTERS",40.0,0.0,40.0,"Precast Carry-Lift, 185 Ton Crawler Crane Unload/Handle Waffles",360.0,360.0
100228364,CN.B4.ST.1240,STEEL PRE-ASSEMBLE TRUSSES - B4 - 28,TK_Complete,2023-02-27 16:00,2023-03-07 10:00,2023-02-27 16:00,2023-03-08 12:00,1092.0,0.0,1092.0,0.0,"W&W Fab Bldg West Half Erection Team, W&W Fab Bldg East Half Erection Team",42.0,0.0,42.0,"LR 1500 Crawler with Jib, 55 Ton Mobile Support Crane",1134.0,1134.0
100228365,xN.AB4.ST.1000,PH1-ERECT STEEL TRUSSES & INFILL - B4 - 28,TK_Complete,2023-04-10 07:00,2023-04-16 11:00,2023-04-10 07:00,2023-04-17 13:00,1092.0,0.0,1092.0,0.0,"W&W Fab Bldg West Half Erection Team, W&W Fab Bldg East Half Erection Team",42.0,0.0,42.0,"LR 1500 Crawler with Jib, 55 Ton Mobile Support Crane",1134.0,1134.0
100228366,xN.AB4.ST.1010,PH1-ERECT ROOF DECKING GL 27 - 28 - B4,TK_Complete,2023-06-12 07:00,2023-06-16 17:00,2023-05-26 07:00,2023-05-31 07:00,210.0,0.0,210.0,0.0,W&W Roof Decking Crew DSAD,0.0,0.0,0.0,,210.0,210.0
100228367,xN.AB4.ST.1020,PH1-ERECT ROOFING - B4,TK_Complete,2023-08-10 15:00,2023-08-20 11:00,2023-07-22 15:00,2023-07-28 15:00,80.0,0.0,80.0,0.0,Main Fab Roof Crew,0.0,0.0,0.0,,80.0,80.0
100228368,xN.AB4.ST.1050,PH1- FRP SLAB ROOF - B4 GL 27 - 29,TK_Complete,2023-06-29 11:00,2023-07-03 11:00,2023-06-08 11:00,2023-06-15 13:00,80.0,0.0,80.0,0.0,Main Fab Roof Crew,0.0,0.0,0.0,,80.0,80.0
100228369,CN.A1.CF.1170,PH1- SLAB B4 (Gridline 26-29 Complete),TK_Complete,2023-02-20 07:00,2023-02-28 17:00,2023-02-02 07:00,2023-02-11 07:00,748.0,0.0,748.0,0.0,CIP Concrete SOG Crews,22.0,0.0,22.0,50-75 Ton Mobile Support Crane,770.0,770.0
100228371,CN.AB4.ST.1060,PH1-ERECT PRECAST WAFFLES GL 27 - 28 (L3) - B4,TK_Complete,2023-07-03 07:00,2023-07-06 13:00,2023-07-03 07:00,2023-07-06 13:00,320.0,0.0,320.0,0.0,"Precast Erect Crew FAB Waffles & Double-T's, Precast GROUTERS",40.0,0.0,40.0,"Precast Carry-Lift, 185 Ton Crawler Crane Unload/Handle Waffles",360.0,360.0
100228372,CN.B4.CF.1020,SEQ4-ERECT COLUMNS (36nos) & GIRDERS (16 nos) (E-G-J)- GL28-31 - B4,TK_Complete,2023-03-27 07:00,2023-04-06 09:00,2023-03-30 07:00,2023-04-07 11:00,63.0,0.0,63.0,0.0,Precast Erect Main Columns,7.0,0.0,7.0,LR-1300 330 Ton Crawler Crane,70.0,70.0
100228373,xN.AB4.ST.1040,PH1-ERECT PRECAST SUBFAB GL 27 - 28 (L2) - B4,TK_Complete,2023-07-06 13:00,2023-07-08 09:00,2023-07-06 13:00,2023-07-08 10:00,320.0,0.0,320.0,0.0,"Precast Erect Crew FAB Waffles & Double-T's, Precast GROUTERS",40.0,0.0,40.0,"Precast Carry-Lift, 185 Ton Crawler Crane Unload/Handle Waffles",360.0,360.0
100228374,CN.B4.CF.1030,PH1- ERECT INTERMEDIATE COLUMNS/GIRDERS (H&F) - FAB NORTH- GL28-31 - B4,TK_Complete,2023-04-10 07:00,2023-04-12 11:00,2023-04-10 07:00,2023-04-12 11:00,63.0,0.0,63.0,0.0,Precast Erect Main Columns,7.0,0.0,7.0,LR-1300 330 Ton Crawler Crane,70.0,70.0
100228381,CN.B4.ST.1250,STEEL PRE-ASSEMBLE TRUSSES - B4 - 29,TK_Complete,2023-03-03 16:00,2023-03-10 10:00,2023-03-03 16:00,2023-03-11 13:00,1092.0,0.0,1092.0,0.0,"W&W Fab Bldg West Half Erection Team, W&W Fab Bldg East Half Erection Team",42.0,0.0,42.0,"LR 1500 Crawler with Jib, 55 Ton Mobile Support Crane",1134.0,1134.0
100228382,xN.AB4.ST.1060,PH1-ERECT STEEL TRUSSES & INFILL - B4 - 29,TK_Complete,2023-04-24 13:00,2023-04-27 17:00,2023-04-24 13:00,2023-04-29 16:00,1092.0,0.0,1092.0,0.0,"W&W Fab Bldg West Half Erection Team, W&W Fab Bldg East Half Erection Team",42.0,0.0,42.0,"LR 1500 Crawler with Jib, 55 Ton Mobile Support Crane",1134.0,1134.0
100228383,CN.B4.ST.1260,STEEL PRE-ASSEMBLE TRUSSES - B4 - 30,TK_Complete,2023-03-27 16:00,2023-04-04 10:00,2023-03-13 16:00,2023-03-17 10:00,1092.0,0.0,1092.0,0.0,"W&W Fab Bldg West Half Erection Team, W&W Fab Bldg East Half Erection Team",42.0,0.0,42.0,"LR 1500 Crawler with Jib, 55 Ton Mobile Support Crane",1134.0,1134.0
100228384,xN.AB4.ST.1070,PH1-ERECT STEEL TRUSSES & INFILL - B4 - 30,TK_Complete,2023-04-27 09:00,2023-04-29 13:00,2023-04-29 14:00,2023-05-02 17:00,1092.0,0.0,1092.0,0.0,"W&W Fab Bldg West Half Erection Team, W&W Fab Bldg East Half Erection Team",42.0,0.0,42.0,"LR 1500 Crawler with Jib, 55 Ton Mobile Support Crane",1134.0,1134.0
100228388,xN.AB4.ST.1080,PH1- FRP SLAB ROOF - B4 GL 29 - 31,TK_Complete,2023-06-19 07:00,2023-06-23 17:00,2023-06-19 07:00,2023-06-23 17:00,80.0,0.0,80.0,0.0,Main Fab Roof Crew,0.0,0.0,0.0,,80.0,80.0
100228389,xN.AB4.ST.1090,PH1-ERECT PRECAST SUBFAB GL 28 - 29 (L2) - B4,TK_Complete,2023-07-08 10:00,2023-07-09 16:00,2023-07-08 10:00,2023-07-10 17:00,320.0,0.0,320.0,0.0,"Precast Erect Crew FAB Waffles & Double-T's, Precast GROUTERS",40.0,0.0,40.0,"Precast Carry-Lift, 185 Ton Crawler Crane Unload/Handle Waffles",360.0,360.0
100228390,xN.AB4.ST.1100,PH1-ERECT PRECAST SUBFAB GL 29 - 30 (L2) - B4,TK_Complete,2023-07-11 07:00,2023-07-12 13:00,2023-07-11 07:00,2023-07-12 13:00,320.0,0.0,320.0,0.0,"Precast Erect Crew FAB Waffles & Double-T's, Precast GROUTERS",40.0,0.0,40.0,"Precast Carry-Lift, 185 Ton Crawler Crane Unload/Handle Waffles",360.0,360.0
100228391,CN.AB4.ST.1360,PH1-ERECT PRECAST WAFFLES GL 28 - 29 (L3) - B4,TK_Complete,2023-07-06 13:00,2023-07-08 09:00,2023-07-06 13:00,2023-07-08 10:00,320.0,0.0,320.0,0.0,"Precast Erect Crew FAB Waffles & Double-T's, Precast GROUTERS",40.0,0.0,40.0,"Precast Carry-Lift, 185 Ton Crawler Crane Unload/Handle Waffles",360.0,360.0
100228392,CN.AB4.ST.1370,PH1-ERECT PRECAST WAFFLES GL 29 - 30 (L3) - B4,TK_Complete,2023-07-08 10:00,2023-07-09 16:00,2023-07-08 10:00,2023-07-10 17:00,320.0,0.0,320.0,0.0,"Precast Erect Crew FAB Waffles & Double-T's, Precast GROUTERS",40.0,0.0,40.0,"Precast Carry-Lift, 185 Ton Crawler Crane Unload/Handle Waffles",360.0,360.0
100228393,xN.AB4.ST.1110,PH1-ERECT ROOF DECKING GL 28 - 29 - B4,TK_Complete,2023-06-17 08:00,2023-06-22 08:00,2023-05-31 08:00,2023-06-02 09:00,210.0,0.0,210.0,0.0,W&W Roof Decking Crew DSAD,0.0,0.0,0.0,,210.0,210.0
100228394,xN.AB4.ST.1120,PH1-ERECT ROOF DECKING GL 29 - 30 - B4,TK_Complete,2023-06-23 09:00,2023-06-27 09:00,2023-06-03 09:00,2023-06-06 11:00,210.0,0.0,210.0,0.0,W&W Roof Decking Crew DSAD,0.0,0.0,0.0,,210.0,210.0
100228395,CN.AB1.ST.1490,PH1- FIRE PROOFING - SFRM STEEL COLUMNS / TRUSS WEB / TOP CORD - B4 - GL 28-29 - L3,TK_Complete,2024-07-15 07:00,2024-07-17 17:00,2024-07-13 07:00,2024-07-17 17:00,320.0,0.0,320.0,0.0,"Precast Erect Crew FAB Waffles & Double-T's, Precast GROUTERS",40.0,0.0,40.0,"Precast Carry-Lift, 185 Ton Crawler Crane Unload/Handle Waffles",360.0,360.0
100228396,CN.AB1.ST.1500,PH1- FIRE PROOFING - INTUMSCENT PAINT / EPOXY / PRIMER BOTTOM CORD (L3) - B4,TK_Complete,2023-07-27 09:00,2023-08-01 15:00,2023-07-27 09:00,2023-08-12 14:00,320.0,0.0,320.0,0.0,"Precast Erect Crew FAB Waffles & Double-T's, Precast GROUTERS",40.0,0.0,40.0,"Precast Carry-Lift, 185 Ton Crawler Crane Unload/Handle Waffles",360.0,360.0
100228407,CN.AB4.ST.1860,PH1-WAFFLE RAKER COATING - B4 - GL 26-33 - WEST (R1W) - L2,TK_Complete,2024-03-22 13:00,2024-04-03 09:00,2024-02-29 07:00,2024-05-06 17:00,320.0,0.0,320.0,0.0,"Precast Erect Crew FAB Waffles & Double-T's, Precast GROUTERS",40.0,0.0,40.0,"Precast Carry-Lift, 185 Ton Crawler Crane Unload/Handle Waffles",360.0,360.0
100228408,CN.AB4.ST.1870,PH1-WAFFLE RAKER COATING - B4 - GL 26-33 - EAST (R1E) - L2,TK_Complete,2024-02-29 07:00,2024-03-12 09:00,2024-02-29 07:00,2024-05-06 17:00,320.0,0.0,320.0,0.0,"Precast Erect Crew FAB Waffles & Double-T's, Precast GROUTERS",40.0,0.0,40.0,"Precast Carry-Lift, 185 Ton Crawler Crane Unload/Handle Waffles",360.0,360.0
100228411,CN.AB1.ST.2300,PH1- FIRE PROOFING - SFRM STEEL COLUMNS / TRUSS WEB / TOP CORD - A4 - GL 9-6 - L3,TK_Complete,2024-07-22 07:00,2024-07-25 17:00,2024-06-29 07:00,2024-07-02 07:00,320.0,0.0,320.0,0.0,"Precast Erect Crew FAB Waffles & Double-T's, Precast GROUTERS",40.0,0.0,40.0,"Precast Carry-Lift, 185 Ton Crawler Crane Unload/Handle Waffles",360.0,360.0
100228412,CN.AB1.ST.2320,PH1- FIRE PROOFING - SFRM STEEL COLUMNS / TRUSS WEB / TOP CORD - A4 - GL 6-3 - L3,TK_Complete,2024-07-09 07:00,2024-07-12 17:00,2024-07-09 07:00,2024-07-15 17:00,320.0,0.0,320.0,0.0,"Precast Erect Crew FAB Waffles & Double-T's, Precast GROUTERS",40.0,0.0,40.0,"Precast Carry-Lift, 185 Ton Crawler Crane Unload/Handle Waffles",360.0,360.0
100228413,CN.AB1.ST.2340,PH1- FIRE PROOFING - SFRM STEEL COLUMNS / TRUSS WEB / TOP CORD - B2 - GL 21-22 - L3,TK_Complete,2024-08-05 07:00,2024-08-08 17:00,2024-06-24 07:00,2024-06-28 07:00,320.0,0.0,320.0,0.0,"Precast Erect Crew FAB Waffles & Double-T's, Precast GROUTERS",40.0,0.0,40.0,"Precast Carry-Lift, 185 Ton Crawler Crane Unload/Handle Waffles",360.0,360.0
100228414,CN.B5.ST.1270,STEEL PRE-ASSEMBLE TRUSSES - B5 - 31,TK_Complete,2023-04-12 16:00,2023-04-20 10:00,2023-03-13 16:00,2023-03-24 17:00,1092.0,0.0,1092.0,0.0,"W&W Fab Bldg West Half Erection Team, W&W Fab Bldg East Half Erection Team",42.0,0.0,42.0,"LR 1500 Crawler with Jib, 55 Ton Mobile Support Crane",1134.0,1134.0
100228415,xN.AB5.ST.1000,PH1-ERECT STEEL TRUSSES & INFILL - B5 -31,TK_Complete,2023-05-23 07:00,2023-05-27 09:00,2023-05-05 07:00,2023-05-11 13:00,1092.0,0.0,1092.0,0.0,"W&W Fab Bldg West Half Erection Team, W&W Fab Bldg East Half Erection Team",42.0,0.0,42.0,"LR 1500 Crawler with Jib, 55 Ton Mobile Support Crane",1134.0,1134.0
100228416,xN.AB5.ST.1010,PH1-ERECT ROOF DECKING GL 30 -31 - B5,TK_Complete,2023-06-12 07:00,2023-06-16 17:00,2023-06-12 07:00,2023-06-16 17:00,210.0,0.0,210.0,0.0,W&W Roof Decking Crew DSAD,0.0,0.0,0.0,,210.0,210.0
100228417,xN.AB5.ST.1020,PH1-ERECT ROOFING - B5 GL 27-33 - EXPANSION JOINTS & REMAINING,TK_Complete,2023-10-09 07:00,2023-10-18 14:00,2023-09-04 07:00,2023-09-06 07:00,80.0,0.0,80.0,0.0,Main Fab Roof Crew,0.0,0.0,0.0,,80.0,80.0
100228418,xN.AB5.ST.1050,PH1-FRP SLAB ROOF - B5 GL 31 - 33,TK_Complete,2023-07-03 07:00,2023-07-12 17:00,2023-07-04 07:00,2023-07-16 16:00,80.0,0.0,80.0,0.0,Main Fab Roof Crew,0.0,0.0,0.0,,80.0,80.0
100228419,CN.A1.CF.1190,PH1- SLAB B5 (Gridline 29-33 Complete),TK_Complete,2023-02-20 07:00,2023-02-26 11:00,2023-02-07 07:00,2023-02-10 07:00,748.0,0.0,748.0,0.0,CIP Concrete SOG Crews,22.0,0.0,22.0,50-75 Ton Mobile Support Crane,770.0,770.0
100228421,CN.AB5.ST.1060,PH1-ERECT PRECAST WAFFLES GL 30 - 31 (L3) - B5,TK_Complete,2023-07-11 07:00,2023-07-12 13:00,2023-07-11 07:00,2023-07-12 13:00,480.0,0.0,480.0,0.0,"Precast Erect Crew FAB Waffles & Double-T's, Precast GROUTERS",60.0,0.0,60.0,"Precast Carry-Lift, 185 Ton Crawler Crane Unload/Handle Waffles",540.0,540.0
100228422,CN.B5.CF.1020,SEQ5-ERECT COLUMNS (27nos) & GIRDERS (12 nos) (E-G-J)- GL31-33 -B5,TK_Complete,2023-04-24 07:00,2023-04-28 09:00,2023-04-27 11:00,2023-05-02 15:00,63.0,0.0,63.0,0.0,Precast Erect Main Columns,7.0,0.0,7.0,LR-1300 330 Ton Crawler Crane,70.0,70.0
100228423,xN.AB5.ST.1040,PH1-ERECT PRECAST SUBFAB GL 30 - 31 (L2) - B5,TK_Complete,2023-07-12 13:00,2023-07-14 09:00,2023-07-12 13:00,2023-07-14 09:00,480.0,0.0,480.0,0.0,"Precast Erect Crew FAB Waffles & Double-T's, Precast GROUTERS",60.0,0.0,60.0,"Precast Carry-Lift, 185 Ton Crawler Crane Unload/Handle Waffles",540.0,540.0
100228424,CN.B5.CF.1030,PH1- ERECT INTERMEDIATE COLUMNS/GIRDERS (H&F) - FAB NORTH- GL31-33 -B5,TK_Complete,2023-04-28 09:00,2023-04-30 13:00,2023-05-02 07:00,2023-05-06 16:00,63.0,0.0,63.0,0.0,Precast Erect Main Columns,7.0,0.0,7.0,LR-1300 330 Ton Crawler Crane,70.0,70.0
100228430,CN.B5.ST.1280,STEEL PRE-ASSEMBLE TRUSSES - B5 - 32,TK_Complete,2023-04-13 16:00,2023-04-21 10:00,2023-04-13 16:00,2023-04-14 00:00,1092.0,0.0,1092.0,0.0,"W&W Fab Bldg West Half Erection Team, W&W Fab Bldg East Half Erection Team",42.0,0.0,42.0,"LR 1500 Crawler with Jib, 55 Ton Mobile Support Crane",1134.0,1134.0
100228431,xN.AB5.ST.1060,PH1-ERECT STEEL TRUSSES & INFILL - B5 -32,TK_Complete,2023-05-25 13:00,2023-05-28 15:00,2023-05-11 13:00,2023-05-15 13:00,1092.0,0.0,1092.0,0.0,"W&W Fab Bldg West Half Erection Team, W&W Fab Bldg East Half Erection Team",42.0,0.0,42.0,"LR 1500 Crawler with Jib, 55 Ton Mobile Support Crane",1134.0,1134.0
100228432,CN.B5.ST.1290,STEEL PRE-ASSEMBLE TRUSSES - B5 - 33,TK_Complete,2023-04-14 16:00,2023-04-22 10:00,2023-04-14 16:00,2023-04-24 14:00,1092.0,0.0,1092.0,0.0,"W&W Fab Bldg West Half Erection Team, W&W Fab Bldg East Half Erection Team",42.0,0.0,42.0,"LR 1500 Crawler with Jib, 55 Ton Mobile Support Crane",1134.0,1134.0
100228433,xN.AB5.ST.1070,PH1-ERECT STEEL TRUSSES & INFILL - B5 -33,TK_Complete,2023-06-02 07:00,2023-06-05 09:00,2023-05-16 07:00,2023-05-19 07:00,1092.0,0.0,1092.0,0.0,"W&W Fab Bldg West Half Erection Team, W&W Fab Bldg East Half Erection Team",42.0,0.0,42.0,"LR 1500 Crawler with Jib, 55 Ton Mobile Support Crane",1134.0,1134.0
100228437,xN.AB5.ST.1090,PH1-ERECT PRECAST SUBFAB GL 31 - 32 (L2) - B5,TK_Complete,2023-07-14 09:00,2023-07-15 15:00,2023-07-14 09:00,2023-07-15 16:00,480.0,0.0,480.0,0.0,"Precast Erect Crew FAB Waffles & Double-T's, Precast GROUTERS",60.0,0.0,60.0,"Precast Carry-Lift, 185 Ton Crawler Crane Unload/Handle Waffles",540.0,540.0
100228438,xN.AB5.ST.1100,PH1-ERECT PRECAST SUBFAB GL 32 - 33 (L2) - B5,TK_Complete,2023-07-17 07:00,2023-07-18 13:00,2023-07-15 07:00,2023-07-31 15:00,480.0,0.0,480.0,0.0,"Precast Erect Crew FAB Waffles & Double-T's, Precast GROUTERS",60.0,0.0,60.0,"Precast Carry-Lift, 185 Ton Crawler Crane Unload/Handle Waffles",540.0,540.0
100228439,CN.AB5.ST.1360,PH1-ERECT PRECAST WAFFLES GL 31 - 32 (L3) - B5,TK_Complete,2023-07-12 13:00,2023-07-14 09:00,2023-07-12 13:00,2023-07-14 09:00,480.0,0.0,480.0,0.0,"Precast Erect Crew FAB Waffles & Double-T's, Precast GROUTERS",60.0,0.0,60.0,"Precast Carry-Lift, 185 Ton Crawler Crane Unload/Handle Waffles",540.0,540.0
100228440,CN.AB5.ST.1370,PH1-ERECT PRECAST WAFFLES GL 32 - 33 (L3) - B5,TK_Complete,2023-07-14 09:00,2023-07-15 15:00,2023-07-14 09:00,2023-07-15 16:00,480.0,0.0,480.0,0.0,"Precast Erect Crew FAB Waffles & Double-T's, Precast GROUTERS",60.0,0.0,60.0,"Precast Carry-Lift, 185 Ton Crawler Crane Unload/Handle Waffles",540.0,540.0
100228441,xN.AB5.ST.1110,PH1-ERECT ROOF DECKING GL 31 - 32 - B5,TK_Complete,2023-06-17 08:00,2023-06-22 08:00,2023-06-17 08:00,2023-06-18 09:00,210.0,0.0,210.0,0.0,W&W Roof Decking Crew DSAD,0.0,0.0,0.0,,210.0,210.0
100228442,xN.AB5.ST.1120,PH1-ERECT ROOF DECKING GL 32 - 33 - B5,TK_Complete,2023-07-03 07:00,2023-07-08 17:00,2023-06-28 07:00,2023-07-03 07:00,210.0,0.0,210.0,0.0,W&W Roof Decking Crew DSAD,0.0,0.0,0.0,,210.0,210.0
100228443,CN.AB1.ST.1510,PH1- FIRE PROOFING TOUCH UP PRIME - SFRM STEEL COLUMNS / TRUSS WEB / BOTTOM CORD - B2 - GL 30-33 - L3,TK_Complete,2024-07-29 07:00,2024-08-02 17:00,2024-07-02 07:00,2024-07-08 17:00,320.0,0.0,320.0,0.0,"Precast Erect Crew FAB Waffles & Double-T's, Precast GROUTERS",40.0,0.0,40.0,"Precast Carry-Lift, 185 Ton Crawler Crane Unload/Handle Waffles",360.0,360.0
100228444,CN.AB1.ST.1520,PH1- FIRE PROOFING - INTUMSCENT PAINT / EPOXY / PRIMER BOTTOM CORD (L3) - B5,TK_Complete,2023-08-03 07:00,2023-08-08 13:00,2023-07-27 07:00,2023-07-30 15:00,320.0,0.0,320.0,0.0,"Precast Erect Crew FAB Waffles & Double-T's, Precast GROUTERS",40.0,0.0,40.0,"Precast Carry-Lift, 185 Ton Crawler Crane Unload/Handle Waffles",360.0,360.0
100228561,CN.AB1.ST.2360,PH1- FIRE PROOFING TOUCH UP PRIME - SFRM STEEL COLUMNS / TRUSS WEB / TOP CORD - B2 - GL 30-33 - L4,TK_Complete,2024-07-16 07:00,2024-07-23 17:00,2024-06-28 07:00,2024-06-29 17:00,320.0,0.0,320.0,0.0,"Precast Erect Crew FAB Waffles & Double-T's, Precast GROUTERS",40.0,0.0,40.0,"Precast Carry-Lift, 185 Ton Crawler Crane Unload/Handle Waffles",360.0,360.0
100228599,CN.A2.UG.1040,PH1- UNDERSLAB WATERPROOFING SWA1,TK_Complete,2022-09-28 14:00,2022-10-02 14:00,2022-09-28 14:00,2022-10-03 16:00,63.0,0.0,63.0,0.0,Precast Erect Main Columns,7.0,0.0,7.0,LR-1300 330 Ton Crawler Crane,70.0,70.0
100228600,CN.A2.UG.1050,PH1- WATERPROOF WALL SWA1,TK_Complete,2022-10-20 09:00,2022-10-23 11:00,2022-10-20 09:00,2022-10-24 13:00,63.0,0.0,63.0,0.0,Precast Erect Main Columns,7.0,0.0,7.0,LR-1300 330 Ton Crawler Crane,70.0,70.0
100228601,CN.A2.UG.1060,PH1- FRENCH DRAIN SWA1,TK_Complete,2022-10-21 07:00,2022-10-24 17:00,2022-10-21 07:00,2022-10-27 09:00,63.0,0.0,63.0,0.0,Precast Erect Main Columns,7.0,0.0,7.0,LR-1300 330 Ton Crawler Crane,70.0,70.0
100228602,CN.SWA1.1010,PH1-FRP GRADE BEAM - SWA1,TK_Complete,2022-09-28 14:00,2022-10-01 08:00,2022-09-28 14:00,2022-10-01 09:00,480.0,0.0,480.0,0.0,CIP Concrete SUP Pier Cap Crew,16.0,0.0,16.0,50-75 Ton Mobile Support Crane,496.0,496.0
100228603,CN.SWA1.1120,PH1- FRP SLAB - SWA-1-L3,TK_Complete,2023-08-18 07:00,2023-08-20 11:00,2023-08-18 07:00,2023-08-21 13:00,280.0,0.0,280.0,0.0,CIP Concrete Slab on Metal Deck Crews,10.0,0.0,10.0,50-75 Ton Mobile Support Crane,290.0,290.0
100228604,CN.SWA1.1170,PH1- FRP SLAB - SWA-1-ROOF,TK_Complete,2023-08-16 07:00,2023-08-18 11:00,2023-08-16 07:00,2023-08-18 11:00,280.0,0.0,280.0,0.0,CIP Concrete Slab on Metal Deck Crews,10.0,0.0,10.0,50-75 Ton Mobile Support Crane,290.0,290.0
100228609,CN.SWA1.1130,PH1- 1st FLOOR SLAB - SWA-1-L1,TK_Complete,2022-10-01 08:00,2022-10-10 14:00,2022-10-01 08:00,2022-10-13 17:00,646.0,0.0,646.0,0.0,CIP Concrete SOG Crews,19.0,0.0,19.0,50-75 Ton Mobile Support Crane,665.0,665.0
100228610,CN.SWA1.1280,FRP TOPPING SLAB - SWA1 - GL 18-15 - L-N - L4 ROOF,TK_Complete,2024-02-06 13:00,2024-02-09 17:00,2024-01-14 13:00,2024-01-16 16:00,80.0,0.0,80.0,0.0,CIP Concrete Topping Slab Crews,0.0,0.0,0.0,,80.0,80.0
100228611,CN.SWA1.1300,MEP EQPT PADS (LAYOUT & INSTALL DOWELS)- SWA-1-ROOF,TK_Complete,2023-09-05 07:00,2023-09-05 15:00,2023-08-21 07:00,2023-08-31 15:00,1120.0,0.0,1120.0,0.0,CIP Concrete Topping Slab Crews,0.0,0.0,0.0,,1120.0,1120.0
100228612,CN.SWA1.1040,PH1-FRP PIT WALLS - SWA1,TK_Complete,2022-10-11 11:00,2022-10-17 17:00,2022-10-11 11:00,2022-10-20 09:00,782.0,0.0,782.0,0.0,CIP Concrete Pit Crews,23.0,0.0,23.0,50-75 Ton Mobile Support Crane,805.0,805.0
100228615,CN.SWA1.1080,TIER 1 ERECT PRECAST COLUMNS & BEAMS - SWA1,TK_Complete,2023-03-27 07:00,2023-04-02 13:00,2023-04-03 07:00,2023-05-25 13:00,192.0,0.0,192.0,0.0,Precast Erect Crew SUP Col's/Bm's/Girders,24.0,0.0,24.0,LR-1400 400 Ton Crawler Crane,216.0,216.0
100228616,CN.SWA1.1210,PH1-ROOF LAYER PARAPET - SWA1,TK_Complete,2024-02-05 07:00,2024-02-05 15:00,2024-01-02 07:00,2024-01-03 07:00,64.0,0.0,64.0,0.0,Precast Erect Crew SUP Col's/Bm's/Girders,8.0,0.0,8.0,185 Ton Crawler Crane Unload/Handle Waffles,72.0,72.0
100228617,CN.SWA1.1230,PH1-FLUID APPLIED MEMBRANE ROOFING - SWA1,TK_Complete,2024-02-05 07:00,2024-02-06 13:00,2024-01-04 07:00,2024-01-06 13:00,112.0,0.0,112.0,0.0,SUP Bldg Roofing Membrane Crew,0.0,0.0,0.0,,112.0,112.0
100228618,CN.SWA1.1250,PH1 - CLADDING STEEL INTERIOR GL 15-18 - K LINE (AD AREA),TK_Complete,2024-03-18 07:00,2024-03-25 13:00,2024-03-08 07:00,2024-03-22 17:00,300.0,0.0,300.0,0.0,"Cladding Steel, Insulated Metal Panel - Prefab Crews",15.0,0.0,15.0,50 Ton Mobile Support Crane,315.0,315.0
100228619,CN.SWA1.1270,PH1 - INSTALL INSULATED METAL PANEL MODULES - GL 15-18.5 - L LINE (DS AREA) [SKIP VOC LEAVEOUT 17~18],TK_Complete,2024-06-28 07:00,2024-07-08 17:00,2024-06-27 07:00,2024-07-05 17:00,300.0,0.0,300.0,0.0,"Cladding Steel, Insulated Metal Panel - Prefab Crews",15.0,0.0,15.0,50 Ton Mobile Support Crane,315.0,315.0
100228620,CN.SWA1.1220,PH1 - CLADDING STEEL  - SWA-1  N LINE [SUP EXTERIOR WALL],TK_Complete,2023-10-14 08:00,2023-10-19 14:00,2023-10-14 08:00,2023-10-24 17:00,330.0,0.0,330.0,0.0,"Insulated Metal Panels - Lower Areas, Insulated Metal Panel - Prefab Crews",15.0,0.0,15.0,50 Ton Mobile Support Crane,345.0,345.0
100228621,CN.SWA1.1260,PH1 - INSTALL INSULATED METAL PANEL MODULES - SWA-1 - N Line 17-15 [SUP EXTERIOR WALL],TK_Complete,2024-02-13 07:00,2024-02-17 15:00,2024-02-13 07:00,2024-02-27 13:00,330.0,0.0,330.0,0.0,"Insulated Metal Panels - Lower Areas, Insulated Metal Panel - Prefab Crews",15.0,0.0,15.0,50 Ton Mobile Support Crane,345.0,345.0
100228622,CN.SWA1.1180,PH1- AD STEEL FRAME INSTALL - SWA-1 fab side(14-17),TK_Complete,2023-11-07 15:00,2023-11-10 09:00,2023-10-29 15:00,2023-11-10 09:00,580.0,0.0,580.0,0.0,W&W DS/AD Infill Steel - West - Team A,58.0,0.0,58.0,"200-300 Ton Crawler, 55 Ton Mobile Support Crane",638.0,638.0
100228631,CN.SWA1.1340,DS STEEL SPRAY FIREPROOFING SFRM - SWA-1 - L4&L5 CEILING GL 15-17/J-L,TK_Complete,2024-09-27 07:00,2024-10-10 17:00,2024-09-09 07:00,2024-09-18 17:00,80.0,0.0,80.0,0.0,CIP Concrete Topping Slab Crews,0.0,0.0,0.0,,80.0,80.0
100228643,CN.SWA1.1420,PH1-TOPPING SLAB- SWA-1-L3,TK_Complete,2024-05-10 07:00,2024-05-13 17:00,2023-11-13 07:00,2023-11-18 17:00,80.0,0.0,80.0,0.0,CIP Concrete Topping Slab Crews,0.0,0.0,0.0,,80.0,80.0
100228644,CN.SWA1.1440,PH1-TOPPING SLAB w TRENCH & ANGLE EMBEDS- SWA-1-L1,TK_Complete,2023-11-13 07:00,2023-11-16 11:00,2023-11-14 07:00,2023-11-19 11:00,80.0,0.0,80.0,0.0,CIP Concrete Topping Slab Crews,0.0,0.0,0.0,,80.0,80.0
100228645,CN.SWA1.1450,PH1- DS/AD DECKING & DETAILNG GL 18 - 15 DS/AD SWA-1 L6,TK_Complete,2023-11-30 07:00,2023-12-03 17:00,2023-11-30 07:00,2023-12-03 11:00,580.0,0.0,580.0,0.0,W&W DS/AD Infill Steel - West - Team A,58.0,0.0,58.0,"200-300 Ton Crawler, 55 Ton Mobile Support Crane",638.0,638.0
100228646,CN.SWA1.1460,PH1- DS/AD FRP SLAB - DS/AD SWA-1 - L4/E,TK_Complete,2024-01-29 11:00,2024-01-31 15:00,2024-01-29 11:00,2024-02-01 15:00,695.0,0.0,695.0,0.0,"W&W DS/AD Infill Steel - West - Team A, CIP Concrete Slab on Metal Deck Crews",58.0,0.0,58.0,"200-300 Ton Crawler, 55 Ton Mobile Support Crane",753.0,753.0
100228647,CN.SWA1.1470,AD WATERPROOFING - SWA1 - GL 18-15 - J-K - L4/E,TK_Complete,2024-07-22 07:00,2024-08-05 17:00,2024-07-13 07:00,2024-07-18 17:00,580.0,0.0,580.0,0.0,W&W DS/AD Infill Steel - West - Team A,58.0,0.0,58.0,"200-300 Ton Crawler, 55 Ton Mobile Support Crane",638.0,638.0
100228648,CN.SWA1.1480,AD TOPPING SLAB - SWA1 - GL 18-15 - J-K - L4/E,TK_Complete,2024-08-16 07:00,2024-08-22 17:00,2024-07-19 07:00,2024-07-23 17:00,580.0,0.0,580.0,0.0,W&W DS/AD Infill Steel - West - Team A,58.0,0.0,58.0,"200-300 Ton Crawler, 55 Ton Mobile Support Crane",638.0,638.0
100228649,TIER 21.1080,TIER 2 GROUT PRECAST COLUMNS & BEAMS - SWA1,TK_Complete,2023-07-31 07:00,2023-08-05 13:00,2023-07-31 07:00,2023-08-05 14:00,192.0,0.0,192.0,0.0,Precast Erect Crew SUP Col's/Bm's/Girders,24.0,0.0,24.0,LR-1400 400 Ton Crawler Crane,216.0,216.0
100228656,CN.SWA1.1550,PH1- DS/AD DECKING & DETAILING GL18 - 15 DS/AD SWA-1 L4 & L4/E,TK_Complete,2024-01-18 13:00,2024-01-23 11:00,2024-01-18 13:00,2024-01-23 07:00,580.0,0.0,580.0,0.0,W&W DS/AD Infill Steel - West - Team A,58.0,0.0,58.0,"200-300 Ton Crawler, 55 Ton Mobile Support Crane",638.0,638.0
100228659,CN.SWA1.1570,PH1- DS STEEL FRAME INSTALL - SWA-1 Comeback Sup Side(14-17),TK_Complete,2023-11-05 08:00,2023-11-08 14:00,2023-11-05 08:00,2023-11-10 15:00,580.0,0.0,580.0,0.0,W&W DS/AD Infill Steel - West - Team A,58.0,0.0,58.0,"200-300 Ton Crawler, 55 Ton Mobile Support Crane",638.0,638.0
100228660,CN.SWA1.1580,PH1- EXTERIOR CURBS - SWA-1-L1,TK_Complete,2023-10-09 13:00,2023-10-11 17:00,2023-10-09 13:00,2023-10-12 17:00,80.0,0.0,80.0,0.0,CIP Concrete Topping Slab Crews,0.0,0.0,0.0,,80.0,80.0
100228661,CN.SWA1.1590,PH1- MEP PADS - SWA-1-L1,TK_Complete,2024-06-07 07:00,2024-06-10 17:00,2024-03-02 07:00,2024-03-05 17:00,80.0,0.0,80.0,0.0,CIP Concrete Topping Slab Crews,0.0,0.0,0.0,,80.0,80.0
100228688,CN.SWA1.1620,PH1 - CLADDING STEEL  EXTERIOR - GL 18-15 SWA-1 L LINE (DS AREA),TK_Complete,2023-11-14 09:00,2023-11-28 15:00,2023-11-13 09:00,2023-11-15 09:00,300.0,0.0,300.0,0.0,"Cladding Steel, Insulated Metal Panel - Prefab Crews",15.0,0.0,15.0,50 Ton Mobile Support Crane,315.0,315.0
100228689,EMB1009,IMPACT - Missing Precast Embeds GL M17 Level 1A SEQ 9301,TK_Complete,2023-10-24 13:00,2023-10-27 09:00,2023-10-12 13:00,2023-10-13 09:00,580.0,0.0,580.0,0.0,W&W DS/AD Infill Steel - West - Team A,58.0,0.0,58.0,"200-300 Ton Crawler, 55 Ton Mobile Support Crane",638.0,638.0
100228693,CN.SWA1.1630,PH1- DS/AD DECKING & DETAILNG GL 18 - 15 DS/AD SWA-1 L2-L3,TK_Complete,2023-12-04 07:00,2023-12-15 13:00,2023-12-01 07:00,2024-01-06 16:00,580.0,0.0,580.0,0.0,W&W DS/AD Infill Steel - West - Team A,58.0,0.0,58.0,"200-300 Ton Crawler, 55 Ton Mobile Support Crane",638.0,638.0
100228694,CN.SWA1.1640,PH1- DS/AD FRP SLAB - SWA-1  L3,TK_Complete,2023-12-01 08:00,2023-12-05 08:00,2023-12-01 08:00,2023-12-05 12:00,695.0,0.0,695.0,0.0,"W&W DS/AD Infill Steel - West - Team A, CIP Concrete Slab on Metal Deck Crews",58.0,0.0,58.0,"200-300 Ton Crawler, 55 Ton Mobile Support Crane",753.0,753.0
100228695,CN.SWA1.1650,AD STEEL PAINT FIREPROOFING IFRM - SWA-1 - GL 18-15 - J-K - L2-CEILING,TK_Complete,2024-07-18 07:00,2024-07-24 17:00,2024-06-25 07:00,2024-06-27 17:00,80.0,0.0,80.0,0.0,CIP Concrete Topping Slab Crews,0.0,0.0,0.0,,80.0,80.0
100228708,CN.SWA1.1660,PH1 -WELD CLIPS - CLADDING STEEL - SWA-1 L LINE (DS AREA),TK_Complete,2023-11-13 07:00,2023-11-14 09:00,2023-11-10 07:00,2023-11-14 09:00,300.0,0.0,300.0,0.0,"Cladding Steel, Insulated Metal Panel - Prefab Crews",15.0,0.0,15.0,50 Ton Mobile Support Crane,315.0,315.0
100228728,EMB6010,IMPACT - Missing Precast Embeds GL L.5-17 Level 1UA SEQ 9301,TK_Complete,2023-10-24 13:00,2023-10-27 09:00,2023-10-12 13:00,2023-10-13 09:00,580.0,0.0,580.0,0.0,W&W DS/AD Infill Steel - West - Team A,58.0,0.0,58.0,"200-300 Ton Crawler, 55 Ton Mobile Support Crane",638.0,638.0
100228732,CN.SWA1.6320,IMPACT - SECAI MEP DSI CRANE - SUW GL 18-15 - SWA-1,TK_Complete,2023-11-02 07:00,2023-11-07 13:00,2023-11-02 07:00,2023-11-16 17:00,330.0,0.0,330.0,0.0,"Insulated Metal Panels - Lower Areas, Insulated Metal Panel - Prefab Crews",15.0,0.0,15.0,50 Ton Mobile Support Crane,345.0,345.0
100228734,EMB6030,IMPACT - Missing Plate - GL 17 3A GIRDER - TR066 - TF1-SMT-SH-1747,TK_Complete,2023-11-27 07:00,2023-11-28 13:00,2023-11-20 07:00,2023-12-01 11:00,580.0,0.0,580.0,0.0,W&W DS/AD Infill Steel - West - Team A,58.0,0.0,58.0,"200-300 Ton Crawler, 55 Ton Mobile Support Crane",638.0,638.0
100228735,EMB6040,IMPACT - Missing Plate - GL 17-18 4A GIRDER - TR078B,TK_Complete,2023-11-28 13:00,2023-12-01 09:00,2023-11-20 13:00,2023-12-01 11:00,580.0,0.0,580.0,0.0,W&W DS/AD Infill Steel - West - Team A,58.0,0.0,58.0,"200-300 Ton Crawler, 55 Ton Mobile Support Crane",638.0,638.0
100228736,EMB6080,IMPACT - Missing Plate WW COLUMN FIX - GL 17 3A M17 - TR091 - TF1-SMT-SH-2451,TK_Complete,2023-12-04 07:00,2023-12-08 11:00,2023-12-04 07:00,2023-12-29 17:00,580.0,0.0,580.0,0.0,W&W DS/AD Infill Steel - West - Team A,58.0,0.0,58.0,"200-300 Ton Crawler, 55 Ton Mobile Support Crane",638.0,638.0
100228737,SUWPIT12-30,IMPACT - TINDAL FIX M17 - SWB-1 - L1 & L3 - GL 12-20 L-N,TK_Complete,2023-10-17 13:00,2023-10-29 13:00,2023-09-18 13:00,2023-11-11 10:00,580.0,0.0,580.0,0.0,W&W DS/AD Infill Steel - West - Team B,58.0,0.0,58.0,"200-300 Ton Crawler, 55 Ton Mobile Support Crane",638.0,638.0
100228739,CN.SWA1.6330,IMPACT - SECAI MEP PIPE RACK STARCON CRANE - SUW GL 18-15 - SWA-1,TK_Complete,2023-12-11 07:00,2023-12-18 16:00,2023-12-06 07:00,2023-12-11 15:00,330.0,0.0,330.0,0.0,"Insulated Metal Panels - Lower Areas, Insulated Metal Panel - Prefab Crews",15.0,0.0,15.0,50 Ton Mobile Support Crane,345.0,345.0
100228740,CN.SWA1.6340,REMAINING - CLADDING STEEL EXTERIOR - SWA-1 L LINE (DS AREA),TK_Complete,2023-12-11 15:00,2023-12-15 09:00,2023-12-11 15:00,2023-12-15 09:00,300.0,0.0,300.0,0.0,"Cladding Steel, Insulated Metal Panel - Prefab Crews",15.0,0.0,15.0,50 Ton Mobile Support Crane,315.0,315.0
100228743,CN.SWA1.6380,DS/AD STEEL SPRAY FIREPROOFING SFRM - SWA-1 - GL 18-15 - L1 CEILING,TK_Complete,2023-12-04 07:00,2023-12-11 13:00,2023-12-01 07:00,2023-12-03 17:00,80.0,0.0,80.0,0.0,CIP Concrete Topping Slab Crews,0.0,0.0,0.0,,80.0,80.0
100228744,CN.SWA1.6390,K-LINE STEEL SPRAY FIREPROOFING SFRM2 - SWA1 - L3-CEILING - GL 15-18,TK_Complete,2024-04-25 07:00,2024-04-30 17:00,2024-04-25 07:00,2024-04-29 17:00,80.0,0.0,80.0,0.0,CIP Concrete Topping Slab Crews,0.0,0.0,0.0,,80.0,80.0
100228745,SUWPIT12-40,IMPACT - WW FIX COLUMN M17 - SWB-1 - L1,TK_Complete,2023-10-17 13:00,2023-10-29 13:00,2023-11-13 13:00,2023-12-28 17:00,580.0,0.0,580.0,0.0,W&W DS/AD Infill Steel - West - Team B,58.0,0.0,58.0,"200-300 Ton Crawler, 55 Ton Mobile Support Crane",638.0,638.0
100228746,CN.SWA1.6400,IMPACT - STARCON PIPE RACK Gridline L - SUW GL 17-16 - L-LINE,TK_Complete,2023-12-16 15:00,2023-12-22 11:00,2023-12-16 15:00,2024-01-15 13:00,330.0,0.0,330.0,0.0,"Insulated Metal Panels - Lower Areas, Insulated Metal Panel - Prefab Crews",15.0,0.0,15.0,50 Ton Mobile Support Crane,345.0,345.0
100228748,CN.SWA1.6410,ROOFTOP DRY PARAPET - SWB-1 (DS AREA) GL 18-15 N (DS AREA),TK_Complete,2024-02-19 11:00,2024-02-24 11:00,2024-02-19 11:00,2024-02-24 12:00,300.0,0.0,300.0,0.0,"Cladding Steel, Insulated Metal Panel - Prefab Crews",15.0,0.0,15.0,50 Ton Mobile Support Crane,315.0,315.0
100228749,CN.SWA1.6420,INSTALL INSULATED METAL PANEL MODULES - GL 18-15 - J LINE (AD AREA),TK_Complete,2024-06-29 07:00,2024-06-30 17:00,2024-06-20 07:00,2024-06-20 17:00,80.0,0.0,80.0,0.0,CIP Concrete Topping Slab Crews,0.0,0.0,0.0,,80.0,80.0
100228750,CN.SWA1.6440,INSTALL TPO ROOFING - SWA1 - GL 19-15 - K-L - L6,TK_Complete,2024-10-14 07:00,2024-10-17 17:00,2024-10-12 07:00,2024-10-16 17:00,580.0,0.0,580.0,0.0,W&W DS/AD Infill Steel - West - Team A,58.0,0.0,58.0,"200-300 Ton Crawler, 55 Ton Mobile Support Crane",638.0,638.0
100228754,CN.SWA1.6480,Drywall Clips & AMTS Installs Support Beams - SWA-1 L4 GL 18-15 - K LINE,TK_Complete,2024-03-25 07:00,2024-04-01 10:00,2024-03-20 07:00,2024-04-05 17:00,80.0,0.0,80.0,0.0,CIP Concrete Topping Slab Crews,0.0,0.0,0.0,,80.0,80.0
100228755,CN.SWA1.6490,DS STEEL SPRAY SFRM SWA 1 - L3 CEILING GL15-18/K-L,TK_Complete,2024-06-03 07:00,2024-06-07 17:00,2024-05-28 07:00,2024-06-04 17:00,80.0,0.0,80.0,0.0,CIP Concrete Topping Slab Crews,0.0,0.0,0.0,,80.0,80.0
100228756,CN.SWA1.6500,ADD FLANGE EXTENSIONS/ CUT GRATING - SWA-1 L4 GL 18-15 - K LINE,TK_Complete,2024-04-01 07:00,2024-04-03 11:00,2024-04-01 07:00,2024-04-04 11:00,80.0,0.0,80.0,0.0,CIP Concrete Topping Slab Crews,0.0,0.0,0.0,,80.0,80.0
100228757,CN.SWA1.6510,AD STEEL APPLY INTUMESCENT - SWA1- L3 CEILING - GL 15-18/J-K,TK_Complete,2024-06-14 07:00,2024-06-20 17:00,2024-06-14 07:00,2024-06-18 17:00,80.0,0.0,80.0,0.0,CIP Concrete Topping Slab Crews,0.0,0.0,0.0,,80.0,80.0
100228758,CN.SWA1.6520,CURE INTUMESCENT PAINT AD side- SWA-1 L4 GL 18-15 - K-J LINE,TK_Complete,2024-07-16 07:00,2024-07-31 17:00,2024-06-19 07:00,2024-07-10 17:00,80.0,0.0,80.0,0.0,CIP Concrete Topping Slab Crews,0.0,0.0,0.0,,80.0,80.0
100228759,CN.SWA1.6530,SECAI-AMTS Installs UPPER CEILING - SWA-1 L4 GL 18-15 - K LINE,TK_Complete,2024-08-01 07:00,2024-08-05 17:00,2024-08-01 07:00,2024-08-05 17:00,80.0,0.0,80.0,0.0,CIP Concrete Topping Slab Crews,0.0,0.0,0.0,,80.0,80.0
100228760,SUWPIT12-50,IMPACT [C1] - MEP MATERIAL/EQUIPMENT OBSTRUCTION - SWB-1 - U1A - GL 12-20 L-N,TK_Complete,2023-10-17 13:00,2023-10-21 13:00,2023-12-31 13:00,2024-01-14 09:00,580.0,0.0,580.0,0.0,W&W DS/AD Infill Steel - West - Team B,58.0,0.0,58.0,"200-300 Ton Crawler, 55 Ton Mobile Support Crane",638.0,638.0
100228761,CN.SWA1.6580,IMPACT [C21] - PIPE RACK GROUT - TOP OF VOC CONTROL RM - FRP SLAB - DS/AD SWA-1 GL 17-18,TK_Complete,2024-01-29 07:00,2024-01-31 11:00,2023-12-15 07:00,2023-12-28 17:00,695.0,0.0,695.0,0.0,"W&W DS/AD Infill Steel - West - Team A, CIP Concrete Slab on Metal Deck Crews",58.0,0.0,58.0,"200-300 Ton Crawler, 55 Ton Mobile Support Crane",753.0,753.0
100228762,CN.SWA1.6590,REMAINING - DS/AD DECKING & DETAILING GL18 - 15 DS/AD SWA-1 L4 & L4/E,TK_Complete,2024-01-24 07:00,2024-01-27 09:00,2024-01-24 07:00,2024-01-27 10:00,580.0,0.0,580.0,0.0,W&W DS/AD Infill Steel - West - Team A,58.0,0.0,58.0,"200-300 Ton Crawler, 55 Ton Mobile Support Crane",638.0,638.0
100228763,CN.SWA1.6600,IMPACT [S.TIA-9.5] - BENT PLATE CUTOUT GL14 SWA-1 L4,TK_Complete,2024-01-18 13:00,2024-01-22 15:00,2023-12-22 07:00,2024-04-29 17:00,580.0,0.0,580.0,0.0,W&W DS/AD Infill Steel - West - Team A,58.0,0.0,58.0,"200-300 Ton Crawler, 55 Ton Mobile Support Crane",638.0,638.0
100228774,CN.SWA1.6750,IMPACT - K-LINE STEEL SPRAY FIREPROOFING SFRM2 - SWA1 - L3-CEILING - GL 15-18,TK_Complete,2024-04-22 07:00,2024-04-24 17:00,2024-04-22 07:00,2024-04-25 17:00,80.0,0.0,80.0,0.0,CIP Concrete Topping Slab Crews,0.0,0.0,0.0,,80.0,80.0
100228775,CN.SWA1.6760,STEEL SPRAY FIREPROOFING SFRM - SWA-1 - U1 CEILING - GL 18-19 - SUW 11-19 PIT STEEL,TK_Complete,2024-09-20 07:00,2024-09-26 17:00,2024-09-20 07:00,2024-09-26 17:00,80.0,0.0,80.0,0.0,CIP Concrete Topping Slab Crews,0.0,0.0,0.0,,80.0,80.0
100228776,CN.SWA5.6770,STEEL SPRAY FIREPROOFING SFRM - SWA-5 - U1 CEILING - GL 3 / 18-19 - SUW 11-19 PIT STEEL,TK_Complete,2024-09-12 07:00,2024-09-17 17:00,2024-09-12 07:00,2024-09-17 17:00,80.0,0.0,80.0,0.0,CIP Concrete Topping Slab Crews,0.0,0.0,0.0,,80.0,80.0
100228777,CN.SWA1.6770,IMPACT - INSPECT & SURFACE PREP ADDITIONAL AD STEEL FOR INTUMESCENT - SWA1 - GL 15-18 - J-K - L3 CEILING,TK_Complete,2024-06-04 07:00,2024-06-10 17:00,2024-06-04 07:00,2024-06-13 17:00,80.0,0.0,80.0,0.0,CIP Concrete Topping Slab Crews,0.0,0.0,0.0,,80.0,80.0
100228779,CN.SWA1.6800,INSTALL FRAMING FOR IMP - GL 18-15 - J LINE (AD AREA),TK_Complete,2024-06-03 07:00,2024-06-03 17:00,2024-05-01 07:00,2024-05-14 17:00,80.0,0.0,80.0,0.0,CIP Concrete Topping Slab Crews,0.0,0.0,0.0,,80.0,80.0
100228783,CN.SWA1.9430,CURE - AD STEEL PAINT FIREPROOFING IFRM - SWA-1 - GL 18-15 - J-K - L2-CEILING,TK_Complete,2024-07-25 07:00,2024-08-12 17:00,2024-06-28 07:00,2024-07-15 17:00,80.0,0.0,80.0,0.0,CIP Concrete Topping Slab Crews,0.0,0.0,0.0,,80.0,80.0
100228784,CN.SWA1.9520,IMPACT - CCD 396 - INSTALL INSULATED METAL PANEL MODULES - GL 17-18 - L LINE (DS AREA) [VOC ROOM],TK_Complete,2024-11-18 07:00,2024-11-25 17:00,2024-11-18 07:00,2024-11-22 17:00,300.0,0.0,300.0,0.0,"Cladding Steel, Insulated Metal Panel - Prefab Crews",15.0,0.0,15.0,50 Ton Mobile Support Crane,315.0,315.0
100228794,CN.SWA1.9610,DS ROOF PARAPET DRY IN - SWA1 - GL 18-15 - K-L - L6,TK_Complete,2024-09-13 07:00,2024-10-01 17:00,2024-08-26 07:00,2024-09-12 17:00,580.0,0.0,580.0,0.0,W&W DS/AD Infill Steel - West - Team A,58.0,0.0,58.0,"200-300 Ton Crawler, 55 Ton Mobile Support Crane",638.0,638.0
100228826,CN.SWA1.10000,IMPACT - PATRIOT BENT PLATE FIX - STEEL FABRICATION (GALVANIZED) - GL 17-18 - L LINE (DS AREA) [VOC ROOM],TK_Complete,2025-01-13 07:00,2025-02-07 17:00,2024-11-18 07:00,2024-12-20 17:00,300.0,0.0,300.0,0.0,"Cladding Steel, Insulated Metal Panel - Prefab Crews",15.0,0.0,15.0,50 Ton Mobile Support Crane,315.0,315.0
100228827,CN.SWA1.10010,IMPACT - PATRIOT BENT PLATE FIX - INSTALL STEEL TOP BENT PLATE - GL 17-18 - L LINE (DS AREA) [VOC ROOM],TK_Complete,2024-12-23 07:00,2024-12-31 17:00,2024-12-23 07:00,2024-12-31 17:00,300.0,0.0,300.0,0.0,"Cladding Steel, Insulated Metal Panel - Prefab Crews",15.0,0.0,15.0,50 Ton Mobile Support Crane,315.0,315.0
100228828,CN.SWA1.10020,IMPACT - PATRIOT BENT PLATE FIX - INSTALL INSULATED METAL PANEL - GL 17-18 - L LINE (DS AREA) [VOC ROOM],TK_Complete,2025-01-24 07:00,2025-01-30 17:00,2025-01-27 07:00,2025-02-01 17:00,300.0,0.0,300.0,0.0,"Cladding Steel, Insulated Metal Panel - Prefab Crews",15.0,0.0,15.0,50 Ton Mobile Support Crane,315.0,315.0
100228829,CN.SWA1.10030,IMPACT - PATRIOT BENT PLATE FIX - FINISH DRYWALL AND PARAPET - GL 17-18 - L LINE (DS AREA) [VOC ROOM],TK_Complete,2025-01-14 07:00,2025-01-20 17:00,2025-01-14 07:00,2025-01-22 17:00,300.0,0.0,300.0,0.0,"Cladding Steel, Insulated Metal Panel - Prefab Crews",15.0,0.0,15.0,50 Ton Mobile Support Crane,315.0,315.0
100228842,CN.A1.UG.1290,PH1- UNDERGROUND PLUMBING SWA2,TK_Complete,2022-09-27 07:00,2022-09-30 17:00,2022-09-27 07:00,2022-09-30 17:00,748.0,0.0,748.0,0.0,CIP Concrete SOG Crews,22.0,0.0,22.0,50-75 Ton Mobile Support Crane,770.0,770.0
100228844,CN.A2.UG.1070,PH1- UNDERSLAB WATERPROOFING SWA2,TK_Complete,2022-10-10 13:00,2022-10-15 13:00,2022-10-10 13:00,2022-10-15 14:00,63.0,0.0,63.0,0.0,Precast Erect Main Columns,7.0,0.0,7.0,LR-1300 330 Ton Crawler Crane,70.0,70.0
100228845,CN.A2.UG.1080,PH1- WATERPROOF WALL SWA2,TK_Complete,2022-10-27 12:00,2022-10-31 12:00,2022-10-27 12:00,2022-11-01 14:00,63.0,0.0,63.0,0.0,Precast Erect Main Columns,7.0,0.0,7.0,LR-1300 330 Ton Crawler Crane,70.0,70.0
100228846,CN.A2.UG.1090,PH1- FRENCH DRAIN SWA2,TK_Complete,2022-10-29 09:00,2022-11-03 09:00,2022-10-29 09:00,2022-11-04 10:00,63.0,0.0,63.0,0.0,Precast Erect Main Columns,7.0,0.0,7.0,LR-1300 330 Ton Crawler Crane,70.0,70.0
100228851,CN.SWA2.1090,PH1- FRP SLAB - SWA-2-L3,TK_Complete,2023-10-09 07:00,2023-10-11 11:00,2023-10-09 07:00,2023-10-12 11:00,280.0,0.0,280.0,0.0,CIP Concrete Slab on Metal Deck Crews,10.0,0.0,10.0,50-75 Ton Mobile Support Crane,290.0,290.0
100228852,CN.SWA2.1120,PH1- FRP SLAB - SWA-2-ROOF,TK_Complete,2023-08-29 07:00,2023-09-01 11:00,2023-08-29 07:00,2023-09-01 11:00,280.0,0.0,280.0,0.0,CIP Concrete Slab on Metal Deck Crews,10.0,0.0,10.0,50-75 Ton Mobile Support Crane,290.0,290.0
100228855,CN.SWA2.1100,PH1- 1st FLOOR SLAB - SWA-2-L1,TK_Complete,2022-10-15 08:00,2022-10-22 13:00,2022-10-15 08:00,2022-10-24 16:00,646.0,0.0,646.0,0.0,CIP Concrete SOG Crews,19.0,0.0,19.0,50-75 Ton Mobile Support Crane,665.0,665.0
100228856,CN.SWA2.1200,FRP TOPPING SLAB - SWA2 - GL 12-15 - L-N - L4 ROOF,TK_Complete,2024-02-16 08:00,2024-02-18 12:00,2024-02-16 08:00,2024-02-17 15:00,80.0,0.0,80.0,0.0,CIP Concrete Topping Slab Crews,0.0,0.0,0.0,,80.0,80.0
100228857,CN.SWA2.1230,MEP EQPT PADS (LAYOUT & INSTALL DOWELS)- SWA-2-ROOF,TK_Complete,2023-09-28 07:00,2023-09-30 11:00,2023-09-25 07:00,2023-09-27 12:00,1120.0,0.0,1120.0,0.0,CIP Concrete Topping Slab Crews,0.0,0.0,0.0,,1120.0,1120.0
100228858,CN.SWA2.1000,PH1-FRP PIT WALLS - SWA2,TK_Complete,2022-10-24 16:00,2022-10-30 13:00,2022-10-24 16:00,2022-10-31 15:00,782.0,0.0,782.0,0.0,CIP Concrete Pit Crews,23.0,0.0,23.0,50-75 Ton Mobile Support Crane,805.0,805.0
100228860,CN.SWA2.1050,TIER 1 ERECT PRECAST COLUMNS & BEAMS - SWA2,TK_Complete,2023-04-27 11:00,2023-05-02 09:00,2023-04-27 11:00,2023-08-08 17:00,200.0,0.0,200.0,0.0,Precast Erect Crew SUP Col's/Bm's/Girders,25.0,0.0,25.0,LR-1400 400 Ton Crawler Crane,225.0,225.0
100228861,CN.SWA2.1150,PH1-ROOF LAYER PARAPET - SWA2 GL 12-15 L-N,TK_Complete,2024-01-10 07:00,2024-01-13 11:00,2024-01-09 15:00,2024-01-12 09:00,64.0,0.0,64.0,0.0,Precast Erect Crew SUP Col's/Bm's/Girders,8.0,0.0,8.0,185 Ton Crawler Crane Unload/Handle Waffles,72.0,72.0
100228862,CN.SWA2.1170,PH1-FLUID APPLIED MEMBRANE ROOFING - SWA2 GL 12-15 L-N,TK_Complete,2024-01-03 07:00,2024-01-06 15:00,2024-01-02 15:00,2024-01-07 10:00,112.0,0.0,112.0,0.0,SUP Bldg Roofing Membrane Crew,0.0,0.0,0.0,,112.0,112.0
100228863,CN.SWA2.1180,PH1 - CLADDING STEEL INTERIOR GL 12-15 - K LINE (AD AREA),TK_Complete,2024-03-01 08:00,2024-03-07 14:00,2024-03-01 07:00,2024-03-28 17:00,300.0,0.0,300.0,0.0,"Cladding Steel, Insulated Metal Panel - Prefab Crews",15.0,0.0,15.0,50 Ton Mobile Support Crane,315.0,315.0
100228864,CN.SWA2.1210,PH1 - INSTALL INSULATED METAL PANEL MODULES - GL 15-12 - L LINE (DS AREA),TK_Complete,2024-07-12 07:00,2024-07-21 17:00,2024-07-01 07:00,2024-07-12 17:00,300.0,0.0,300.0,0.0,"Cladding Steel, Insulated Metal Panel - Prefab Crews",15.0,0.0,15.0,50 Ton Mobile Support Crane,315.0,315.0
100228865,CN.SWA2.1160,PH1 - CLADDING STEEL  - SWA-2  N LINE [SUP EXTERIOR WALL],TK_Complete,2023-10-09 09:00,2023-10-14 15:00,2023-10-09 09:00,2023-10-14 16:00,330.0,0.0,330.0,0.0,"Insulated Metal Panels - Lower Areas, Insulated Metal Panel - Prefab Crews",15.0,0.0,15.0,50 Ton Mobile Support Crane,345.0,345.0
100228866,CN.SWA2.1190,PH1 - INSTALL INSULATED METAL PANEL MODULES - SWA-2 N LINE [SUP EXTERIOR WALL] GL 12-15 N,TK_Complete,2024-01-11 09:00,2024-01-21 09:00,2024-01-10 07:00,2024-01-20 11:00,330.0,0.0,330.0,0.0,"Insulated Metal Panels - Lower Areas, Insulated Metal Panel - Prefab Crews",15.0,0.0,15.0,50 Ton Mobile Support Crane,345.0,345.0
100228867,CN.SWA2.1130,PH1- AD STEEL FRAME INSTALL - SWA-2 fab side,TK_Complete,2023-10-24 07:00,2023-10-28 09:00,2023-10-23 07:00,2023-10-28 10:00,580.0,0.0,580.0,0.0,W&W DS/AD Infill Steel - West - Team A,58.0,0.0,58.0,"200-300 Ton Crawler, 55 Ton Mobile Support Crane",638.0,638.0
100228874,CN.SWA1.1351,DS STEEL SPRAY FIREPROOFING SFRM - SWA-1 - L4&L5 CEILING GL 12-15/J-L,TK_Complete,2024-09-09 07:00,2024-09-20 17:00,2024-09-09 07:00,2024-09-18 17:00,80.0,0.0,80.0,0.0,CIP Concrete Topping Slab Crews,0.0,0.0,0.0,,80.0,80.0
100228885,CN.SWA2.1310,PH1- WATERPROOFING - SWA-2-L3,TK_Complete,2023-12-18 07:00,2023-12-22 15:00,2023-12-18 07:00,2023-12-22 15:00,80.0,0.0,80.0,0.0,CIP Concrete Topping Slab Crews,0.0,0.0,0.0,,80.0,80.0
100228886,CN.SWA2.1320,PH1- WATERPROOFING - SWA2 - GL 12-15 - L-N - L2,TK_Complete,2023-12-26 07:00,2024-01-04 17:00,2023-12-26 07:00,2024-01-04 17:00,80.0,0.0,80.0,0.0,CIP Concrete Topping Slab Crews,0.0,0.0,0.0,,80.0,80.0
100228887,CN.SWA2.1330,PH1- INSTALL ANCHOR BOLTS - SWA-2-L1,TK_Complete,2023-09-12 07:00,2023-09-14 13:00,2023-09-12 07:00,2023-09-14 13:00,80.0,0.0,80.0,0.0,CIP Concrete Topping Slab Crews,0.0,0.0,0.0,,80.0,80.0
100228888,CN.SWA2.1360,PH1- TOPPING SLAB w TRENCH & ANGLE EMBEDS- SWA-2-L1(BOTTOM OF PIT),TK_Complete,2024-01-26 07:00,2024-01-28 11:00,2024-01-08 07:00,2024-01-10 07:00,80.0,0.0,80.0,0.0,CIP Concrete Topping Slab Crews,0.0,0.0,0.0,,80.0,80.0
100228889,CN.SWA2.1370,PH1- DS/AD DECKING & DETAILING  DS/AD SWA-2 L6GL 12-15 J-K,TK_Complete,2023-12-11 07:00,2023-12-15 17:00,2023-12-09 07:00,2023-12-12 17:00,580.0,0.0,580.0,0.0,W&W DS/AD Infill Steel - West - Team A,58.0,0.0,58.0,"200-300 Ton Crawler, 55 Ton Mobile Support Crane",638.0,638.0
100228890,CN.SWA2.1380,PH1- DS/AD FRP SLAB - DS/AD SWA-2 -L4/E GL 12-15 J-K,TK_Complete,2024-01-25 07:00,2024-01-27 11:00,2024-01-25 07:00,2024-01-27 12:00,695.0,0.0,695.0,0.0,"W&W DS/AD Infill Steel - West - Team A, CIP Concrete Slab on Metal Deck Crews",58.0,0.0,58.0,"200-300 Ton Crawler, 55 Ton Mobile Support Crane",753.0,753.0
100228891,CN.SWA2.1390,AD WATERPROOFING - SWA2 - GL 12-15 - J-K - L4/E,TK_Complete,2024-07-22 07:00,2024-08-05 17:00,2024-07-13 07:00,2024-07-18 17:00,580.0,0.0,580.0,0.0,W&W DS/AD Infill Steel - West - Team A,58.0,0.0,58.0,"200-300 Ton Crawler, 55 Ton Mobile Support Crane",638.0,638.0
100228892,CN.SWA2.1400,AD TOPPING SLAB - SWA2 - GL 12-15 - J-K - L4/E,TK_Complete,2024-08-01 07:00,2024-08-06 17:00,2024-07-19 07:00,2024-07-23 17:00,580.0,0.0,580.0,0.0,W&W DS/AD Infill Steel - West - Team A,58.0,0.0,58.0,"200-300 Ton Crawler, 55 Ton Mobile Support Crane",638.0,638.0
100228893,TIER 22.1053,TIER 2 GROUT PRECAST COLUMNS & BEAMS - SWA2,TK_Complete,2023-08-21 07:00,2023-08-24 11:00,2023-08-09 07:00,2023-08-12 07:00,200.0,0.0,200.0,0.0,Precast Erect Crew SUP Col's/Bm's/Girders,25.0,0.0,25.0,LR-1400 400 Ton Crawler Crane,225.0,225.0
100228900,CN.SWA2.1470,PH1- DS/AD DECKING & DETAILING  GL 15 - 12  DS/AD SWA-2 L4 & L4/E GL 12-15 J-K,TK_Complete,2024-01-18 13:00,2024-01-23 11:00,2024-01-18 13:00,2024-01-23 13:00,580.0,0.0,580.0,0.0,W&W DS/AD Infill Steel - West - Team A,58.0,0.0,58.0,"200-300 Ton Crawler, 55 Ton Mobile Support Crane",638.0,638.0
100228903,CN.SWA2.1490,PH1- DS STEEL FRAME INSTALL - SWA-2 Comeback Sup Side (10-14),TK_Complete,2023-10-30 07:00,2023-11-04 09:00,2023-10-30 07:00,2023-11-04 10:00,580.0,0.0,580.0,0.0,W&W DS/AD Infill Steel - West - Team A,58.0,0.0,58.0,"200-300 Ton Crawler, 55 Ton Mobile Support Crane",638.0,638.0
100228904,CN.SWA2.1500,PH1- EXTERIOR CURBS - SWA-2-L1,TK_Complete,2023-09-18 13:00,2023-09-21 09:00,2023-09-18 13:00,2023-09-21 09:00,80.0,0.0,80.0,0.0,CIP Concrete Topping Slab Crews,0.0,0.0,0.0,,80.0,80.0
100228905,CN.SWA2.1510,PH1- MEP PADS - SWA-2-L1-WASTE WATER TANK RM SOUTH GL 12-15 L-J,TK_Complete,2024-01-29 07:00,2024-01-30 13:00,2024-01-24 07:00,2024-01-26 13:00,80.0,0.0,80.0,0.0,CIP Concrete Topping Slab Crews,0.0,0.0,0.0,,80.0,80.0
100228920,SUWPIT12-20,SOUTH PIT STEEL INSTALL - SWB-1 - L1 - GL 12-20,TK_Complete,2023-10-17 13:00,2023-10-29 13:00,2023-10-02 13:00,2023-11-17 11:00,580.0,0.0,580.0,0.0,W&W DS/AD Infill Steel - West - Team B,58.0,0.0,58.0,"200-300 Ton Crawler, 55 Ton Mobile Support Crane",638.0,638.0
100228923,CN.SWA2.1530,PH1 - REMAINING CLADDING STEEL EXTERIOR - SWA-2 L LINE (DS AREA) GL 12-15,TK_Complete,2023-12-15 09:00,2023-12-17 13:00,2023-12-15 09:00,2023-12-16 16:00,300.0,0.0,300.0,0.0,"Cladding Steel, Insulated Metal Panel - Prefab Crews",15.0,0.0,15.0,50 Ton Mobile Support Crane,315.0,315.0
100228925,CN.SWA2.1550,PH1 -WELD CLIPS - CLADDING STEEL - SWA-2 (DS/AD AREA),TK_Complete,2023-11-02 07:00,2023-11-03 09:00,2023-11-02 07:00,2023-11-03 09:00,300.0,0.0,300.0,0.0,"Cladding Steel, Insulated Metal Panel - Prefab Crews",15.0,0.0,15.0,50 Ton Mobile Support Crane,315.0,315.0
100228942,CN.SWA1.1670,PH1- DS/AD DECKING & DETAILNG GL 15 - 12 DS/AD SWA-1 L2-L3,TK_Complete,2023-11-05 08:00,2023-11-14 14:00,2023-11-05 08:00,2023-11-08 09:00,580.0,0.0,580.0,0.0,W&W DS/AD Infill Steel - West - Team A,58.0,0.0,58.0,"200-300 Ton Crawler, 55 Ton Mobile Support Crane",638.0,638.0
100228943,CN.SWA1.1680,PH1- DS/AD FRP SLAB - SWA-1  L2-L3GL 12-15 J-K,TK_Complete,2023-12-15 07:00,2023-12-18 17:00,2023-12-13 07:00,2024-01-09 17:00,695.0,0.0,695.0,0.0,"W&W DS/AD Infill Steel - West - Team A, CIP Concrete Slab on Metal Deck Crews",58.0,0.0,58.0,"200-300 Ton Crawler, 55 Ton Mobile Support Crane",753.0,753.0
100228944,CN.SWA1.1690,AD STEEL PAINT FIREPROOFING IFRM - SWA-1 - GL 12-15 - J-K - L2-CEILING,TK_Complete,2024-07-17 07:00,2024-07-23 17:00,2024-06-18 07:00,2024-06-21 17:00,80.0,0.0,80.0,0.0,CIP Concrete Topping Slab Crews,0.0,0.0,0.0,,80.0,80.0
100228967,CN.SWA2.6260,IMPACT - DSI CRANE - SWA-2 - SUW GL 10-17,TK_Complete,2023-10-30 07:00,2023-11-04 09:00,2023-10-30 07:00,2023-11-04 10:00,580.0,0.0,580.0,0.0,W&W DS/AD Infill Steel - West - Team A,58.0,0.0,58.0,"200-300 Ton Crawler, 55 Ton Mobile Support Crane",638.0,638.0
100228970,CN.SWA2.6270,IMPACT - DSI CRANE MOVING INTO MATERIAL AREA - SWA2 - GL 14-15,TK_Complete,2023-11-30 13:00,2023-12-01 11:00,2023-11-30 13:00,2023-12-15 15:00,580.0,0.0,580.0,0.0,W&W DS/AD Infill Steel - West - Team A,58.0,0.0,58.0,"200-300 Ton Crawler, 55 Ton Mobile Support Crane",638.0,638.0
100228971,CN.SWA2.6280,PH1 - CLADDING STEEL  EXTERIOR - SWA-2 L LINE (DS AREA) GL 12-15 L,TK_Complete,2023-11-02 07:00,2023-11-09 09:00,2023-11-02 07:00,2023-11-05 13:00,300.0,0.0,300.0,0.0,"Cladding Steel, Insulated Metal Panel - Prefab Crews",15.0,0.0,15.0,50 Ton Mobile Support Crane,315.0,315.0
100228974,CN.SWA1.6360,DS/AD STEEL SPRAY FIREPROOFING SFRM - SWA-1 - GL 12-15 - J-K - L1 CEILING,TK_Complete,2024-02-12 07:00,2024-02-16 17:00,2024-02-12 07:00,2024-02-12 17:00,80.0,0.0,80.0,0.0,CIP Concrete Topping Slab Crews,0.0,0.0,0.0,,80.0,80.0
100228975,CN.SWA2.6370,K-LINE STEEL SPRAY FIREPROOFING SFRM2 - SWA1 - L3-CEILING - GL 12-15,TK_Complete,2024-04-25 07:00,2024-04-30 17:00,2024-04-25 07:00,2024-04-29 17:00,80.0,0.0,80.0,0.0,CIP Concrete Topping Slab Crews,0.0,0.0,0.0,,80.0,80.0
100228977,CN.SWA2.6300,PH1-ROOF LAYER PARAPET(FRAMING & SHEATING RIP) - SWB4 - GL 15-12- L4 - N,TK_Complete,2024-01-07 10:00,2024-01-13 12:00,2024-01-07 10:00,2024-01-11 11:00,80.0,0.0,80.0,0.0,CIP Concrete Topping Slab Crews,0.0,0.0,0.0,,80.0,80.0
100228978,CN.SWA2.6310,ROOFTOP DRY PARAPET - SWB-1 (DS AREA) GL 15-12 N (DS AREA),TK_Complete,2024-02-19 09:00,2024-02-24 09:00,2024-02-19 09:00,2024-02-23 17:00,300.0,0.0,300.0,0.0,"Cladding Steel, Insulated Metal Panel - Prefab Crews",15.0,0.0,15.0,50 Ton Mobile Support Crane,315.0,315.0
100228979,CN.SWA1.6430,INSTALL INSULATED METAL PANEL MODULES - GL 12-15 - J LINE (AD AREA),TK_Complete,2024-06-28 07:00,2024-06-29 17:00,2024-06-21 07:00,2024-06-21 17:00,80.0,0.0,80.0,0.0,CIP Concrete Topping Slab Crews,0.0,0.0,0.0,,80.0,80.0
100228980,CN.SWA2.6320,INSTALL TPO ROOFING - SWA2 - GL 10-15 - K-L - L6,TK_Complete,2024-10-04 07:00,2024-10-08 17:00,2024-10-01 07:00,2024-10-04 17:00,580.0,0.0,580.0,0.0,W&W DS/AD Infill Steel - West - Team A,58.0,0.0,58.0,"200-300 Ton Crawler, 55 Ton Mobile Support Crane",638.0,638.0
100228983,CN.SWA2.6520,Drywall Clips & AMTS Installs Support Beams - SWA-1-L4 GL 12-15 K LINE,TK_Complete,2024-03-25 07:00,2024-04-01 10:00,2024-03-14 19:00,2024-03-25 17:00,80.0,0.0,80.0,0.0,CIP Concrete Topping Slab Crews,0.0,0.0,0.0,,80.0,80.0
100228984,CN.SWA2.6530,DS STEEL SPRAY SFRM SWA 4 - L3 CEILING GL12-15/K-L,TK_Complete,2024-06-03 07:00,2024-06-07 17:00,2024-05-29 07:00,2024-06-06 17:00,80.0,0.0,80.0,0.0,CIP Concrete Topping Slab Crews,0.0,0.0,0.0,,80.0,80.0
100228985,CN.SWA2.6540,ADD FLANGE EXTENSIONS/ CUT GRATING - SWA-1-L4 GL 12-15 K LINE,TK_Complete,2024-04-02 07:00,2024-04-04 17:00,2024-04-02 07:00,2024-04-04 17:00,80.0,0.0,80.0,0.0,CIP Concrete Topping Slab Crews,0.0,0.0,0.0,,80.0,80.0
100228986,CN.SWA2.6550,AD STEEL APPLY INTUMESCENT - SWA2 - L3 CEILING - GL 12-15/J-K,TK_Complete,2024-06-03 07:00,2024-06-06 17:00,2024-06-03 07:00,2024-06-14 17:00,80.0,0.0,80.0,0.0,CIP Concrete Topping Slab Crews,0.0,0.0,0.0,,80.0,80.0
100228987,CN.SWA2.6560,CURE INTUMESCENT PAINT AD side - SWA2,TK_Complete,2024-07-12 07:00,2024-07-26 17:00,2024-06-15 07:00,2024-07-11 17:00,80.0,0.0,80.0,0.0,CIP Concrete Topping Slab Crews,0.0,0.0,0.0,,80.0,80.0
100228988,CN.SWA2.6570,SECAI -AMTS INSTALL UPPER CEILING - AD - SWA-1-L4 GL 12-15 K LINE,TK_Complete,2024-08-01 07:00,2024-08-05 17:00,2024-08-01 07:00,2024-08-05 17:00,80.0,0.0,80.0,0.0,CIP Concrete Topping Slab Crews,0.0,0.0,0.0,,80.0,80.0
100228989,CN.SWA2.6610,IMPACT [CL 72-73] - SUW ROOF TUBE STEEL - SWA-2-ROOF - GL 10-14 - L-N,TK_Complete,2024-02-10 08:00,2024-02-14 08:00,2024-02-15 08:00,2024-02-15 17:00,80.0,0.0,80.0,0.0,CIP Concrete Topping Slab Crews,0.0,0.0,0.0,,80.0,80.0
100228991,CN.SWA2.6640,IMPACT - K-LINE STEEL SPRAY FIREPROOFING SFRM2 - SWA1 - L3-CEILING - GL 12-15,TK_Complete,2024-04-22 07:00,2024-04-24 17:00,2024-04-22 07:00,2024-04-25 17:00,80.0,0.0,80.0,0.0,CIP Concrete Topping Slab Crews,0.0,0.0,0.0,,80.0,80.0
100228992,CN.SWA2.6650,IMPACT - INSPECT & SURFACE PREP ADDITIONAL AD STEEL FOR INTUMESCENT - SWA2 - GL 12-15 - J-K - L3 CEILING,TK_Complete,2024-05-14 07:00,2024-05-20 17:00,2024-05-14 07:00,2024-05-20 17:00,80.0,0.0,80.0,0.0,CIP Concrete Topping Slab Crews,0.0,0.0,0.0,,80.0,80.0
100228993,CN.SWA1.6780,INSTALL FRAMING FOR IMP - GL 12-15 - J LINE (AD AREA),TK_Complete,2024-06-04 07:00,2024-06-06 17:00,2024-05-01 07:00,2024-05-14 17:00,80.0,0.0,80.0,0.0,CIP Concrete Topping Slab Crews,0.0,0.0,0.0,,80.0,80.0
100228995,CN.SWA1.9420,CURE - AD STEEL PAINT FIREPROOFING IFRM - SWA-1 - GL 12-15 - J-K - L2-CEILING,TK_Complete,2024-07-25 07:00,2024-08-12 17:00,2024-06-22 07:00,2024-07-09 17:00,80.0,0.0,80.0,0.0,CIP Concrete Topping Slab Crews,0.0,0.0,0.0,,80.0,80.0
100228996,CN.SWA1.9440,PRIME & TOUCH UP AD STEEL - SWA-1 - GL 12-24 - J-K - L2-CEILING,TK_Complete,2024-07-12 07:00,2024-07-16 17:00,2024-06-14 07:00,2024-06-17 07:00,80.0,0.0,80.0,0.0,CIP Concrete Topping Slab Crews,0.0,0.0,0.0,,80.0,80.0
100228997,CN.SWA2.6690,IMPACT - REQUEST SECAI REMOVE DUCT BLOCKING ACCESS / SECAI REMOVE DUCT - GL 17-15 - L LINE (DS AREA),TK_Complete,2024-07-12 07:00,2024-07-22 17:00,2024-06-17 07:00,2024-07-03 17:00,300.0,0.0,300.0,0.0,"Cladding Steel, Insulated Metal Panel - Prefab Crews",15.0,0.0,15.0,50 Ton Mobile Support Crane,315.0,315.0
100228998,CN.SWA2.6700,IMPACT - SECAI (dsi / strarcon) MATERIAL EQUIPMENT IN THE WAY - GL 14-12 - L LINE (DS AREA),TK_Complete,2024-07-12 07:00,2024-07-22 17:00,2024-06-27 07:00,2024-07-10 17:00,300.0,0.0,300.0,0.0,"Cladding Steel, Insulated Metal Panel - Prefab Crews",15.0,0.0,15.0,50 Ton Mobile Support Crane,315.0,315.0
100229000,CN.SWA2.6710,DS ROOF PARAPET DRY IN - SWA2 - GL 12-15 - K-L - L6,TK_Complete,2024-08-02 07:00,2024-08-20 17:00,2024-08-01 07:00,2024-09-06 17:00,580.0,0.0,580.0,0.0,W&W DS/AD Infill Steel - West - Team A,58.0,0.0,58.0,"200-300 Ton Crawler, 55 Ton Mobile Support Crane",638.0,638.0
100229003,CN.A1.UG.1030,PH1- UNDERGROUND PLUMBING SWA3,TK_Complete,2022-09-06 07:00,2022-09-09 17:00,2022-09-06 07:00,2022-09-09 17:00,748.0,0.0,748.0,0.0,CIP Concrete SOG Crews,22.0,0.0,22.0,50-75 Ton Mobile Support Crane,770.0,770.0
100229005,CN.SWA3.1020,PH1-FRP GRADE BEAM - SWA3,TK_Complete,2022-11-04 12:00,2022-11-06 16:00,2022-11-04 12:00,2022-11-08 08:00,480.0,0.0,480.0,0.0,CIP Concrete SUP Pier Cap Crew,16.0,0.0,16.0,50-75 Ton Mobile Support Crane,496.0,496.0
100229008,CN.SWA3.1080,PH1- FRP SLAB - SWA-3-L3,TK_Complete,2023-07-31 07:00,2023-08-01 12:00,2023-07-24 07:00,2023-07-27 07:00,280.0,0.0,280.0,0.0,CIP Concrete Slab on Metal Deck Crews,10.0,0.0,10.0,50-75 Ton Mobile Support Crane,290.0,290.0
100229009,CN.SWA3.1120,PH1- FRP SLAB - SWA-3-ROOF,TK_Complete,2023-09-11 08:00,2023-09-12 14:00,2023-09-11 08:00,2023-09-12 14:00,280.0,0.0,280.0,0.0,CIP Concrete Slab on Metal Deck Crews,10.0,0.0,10.0,50-75 Ton Mobile Support Crane,290.0,290.0
100229012,CN.SWA3.1090,PH1- 1st FLOOR SLAB - SWA-3-L1 - A3,TK_Complete,2022-12-27 07:00,2023-01-03 09:00,2022-12-27 07:00,2023-01-04 09:00,646.0,0.0,646.0,0.0,CIP Concrete SOG Crews,19.0,0.0,19.0,50-75 Ton Mobile Support Crane,665.0,665.0
100229013,CN.SWA3.1200,FRP TOPPING SLAB - SWA3 - GL 12-10 - L-N - L4 ROOF,TK_Complete,2024-02-17 13:00,2024-02-20 17:00,2024-02-17 13:00,2024-02-19 10:00,80.0,0.0,80.0,0.0,CIP Concrete Topping Slab Crews,0.0,0.0,0.0,,80.0,80.0
100229014,CN.SWA3.1220,MEP EQPT PADS (LAYOUT & INSTALL DOWELS)- SWA-3-ROOF,TK_Complete,2023-10-30 07:00,2023-11-03 11:00,2023-10-30 07:00,2023-11-02 17:00,1120.0,0.0,1120.0,0.0,CIP Concrete Topping Slab Crews,0.0,0.0,0.0,,1120.0,1120.0
100229015,CN.SWA3.1230,PH1-EXCAVATE PITS - SWA3,TK_Complete,2022-09-02 08:00,2022-09-04 12:00,2022-09-02 08:00,2022-09-06 14:00,480.0,0.0,480.0,0.0,CIP Concrete SUP Pier Cap Crew,16.0,0.0,16.0,50-75 Ton Mobile Support Crane,496.0,496.0
100229016,CN.SWA3.1050,TIER 1 ERECT PRECAST COLUMNS & BEAMS - SWA3,TK_Complete,2023-05-01 13:00,2023-05-07 11:00,2023-05-01 13:00,2023-05-30 09:00,200.0,0.0,200.0,0.0,Precast Erect Crew SUP Col's/Bm's/Girders,25.0,0.0,25.0,LR-1400 400 Ton Crawler Crane,225.0,225.0
100229017,CN.SWA3.1140,PH1-ROOF LAYER PARAPET - SWA3 GL 12-9 L-N,TK_Complete,2024-02-03 08:00,2024-02-04 14:00,2024-02-03 08:00,2024-02-04 16:00,64.0,0.0,64.0,0.0,Precast Erect Crew SUP Col's/Bm's/Girders,8.0,0.0,8.0,185 Ton Crawler Crane Unload/Handle Waffles,72.0,72.0
100229018,CN.SWA3.1160,PH1-FLUID APPLIED MEMBRANE ROOFING - SWA3,TK_Complete,2023-10-30 07:00,2023-11-04 09:00,2023-11-03 09:00,2023-11-08 16:00,112.0,0.0,112.0,0.0,SUP Bldg Roofing Membrane Crew,0.0,0.0,0.0,,112.0,112.0
100229019,CN.SWA3.1170,PH1 - CLADDING STEEL INTERIOR GL 12-9 - K LINE (AD AREA),TK_Complete,2024-03-05 07:00,2024-03-11 13:00,2024-03-05 07:00,2024-04-02 17:00,300.0,0.0,300.0,0.0,"Cladding Steel, Insulated Metal Panel - Prefab Crews",15.0,0.0,15.0,50 Ton Mobile Support Crane,315.0,315.0
100229020,CN.SWA3.1190,PH1 - INSTALL INSULATED METAL PANEL MODULES - GL 12-9 - L LINE (DS AREA),TK_Complete,2024-07-21 07:00,2024-07-30 17:00,2024-07-10 07:00,2024-07-20 17:00,300.0,0.0,300.0,0.0,"Cladding Steel, Insulated Metal Panel - Prefab Crews",15.0,0.0,15.0,50 Ton Mobile Support Crane,315.0,315.0
100229021,CN.SWA3.1150,PH1 - CLADDING STEEL  - SWA-3  N LINE [SUP EXTERIOR WALL]  GL 12-9 N,TK_Complete,2024-01-11 09:00,2024-01-20 15:00,2024-01-06 07:00,2024-01-14 17:00,330.0,0.0,330.0,0.0,"Insulated Metal Panels - Lower Areas, Insulated Metal Panel - Prefab Crews",15.0,0.0,15.0,50 Ton Mobile Support Crane,345.0,345.0
100229022,CN.SWA3.1180,PH1 - INSTALL INSULATED METAL PANEL MODULES - SWA-3 N LINE [SUP EXTERIOR WALL] GL 12-9 N,TK_Complete,2024-01-29 07:00,2024-02-05 16:00,2024-01-29 07:00,2024-02-05 08:00,330.0,0.0,330.0,0.0,"Insulated Metal Panels - Lower Areas, Insulated Metal Panel - Prefab Crews",15.0,0.0,15.0,50 Ton Mobile Support Crane,345.0,345.0
100229023,CN.SWA3.1110,PH1- AD STEEL FRAME INSTALL - SWA-3 fab side,TK_Complete,2023-10-02 07:00,2023-10-03 13:00,2023-10-02 07:00,2023-10-08 13:00,580.0,0.0,580.0,0.0,W&W DS/AD Infill Steel - West - Team A,58.0,0.0,58.0,"200-300 Ton Crawler, 55 Ton Mobile Support Crane",638.0,638.0
100229043,CN.SWA3.1370,PH1- TOPPING SLAB w TRENCH & ANGLE EMBEDS- SWA-3-L1- GAS PURIFER NORTH,TK_Complete,2023-10-30 07:00,2023-11-03 11:00,2023-08-08 07:00,2023-08-11 07:00,80.0,0.0,80.0,0.0,CIP Concrete Topping Slab Crews,0.0,0.0,0.0,,80.0,80.0
100229044,CN.SWA3.1380,PH1- DS/AD DECKING & DETAILING GL 12 - 9 DS/AD SWA-3 L6 GL 12-9 L-J,TK_Complete,2023-12-09 08:00,2023-12-14 08:00,2023-12-09 08:00,2023-12-12 17:00,580.0,0.0,580.0,0.0,W&W DS/AD Infill Steel - West - Team A,58.0,0.0,58.0,"200-300 Ton Crawler, 55 Ton Mobile Support Crane",638.0,638.0
100229045,CN.SWA3.1390,PH1- DS/AD FRP SLAB - DS/AD SWA-3 -  L4/E GL 12-9 L-J,TK_Complete,2024-02-06 08:00,2024-02-08 12:00,2024-02-06 08:00,2024-02-08 12:00,695.0,0.0,695.0,0.0,"W&W DS/AD Infill Steel - West - Team A, CIP Concrete Slab on Metal Deck Crews",58.0,0.0,58.0,"200-300 Ton Crawler, 55 Ton Mobile Support Crane",753.0,753.0
100229046,CN.SWA3.1400,AD WATERPROOFING - SWA3 - GL 12-9 - J-K - L4/E,TK_Complete,2024-07-22 07:00,2024-08-05 17:00,2024-07-13 07:00,2024-07-18 17:00,580.0,0.0,580.0,0.0,W&W DS/AD Infill Steel - West - Team A,58.0,0.0,58.0,"200-300 Ton Crawler, 55 Ton Mobile Support Crane",638.0,638.0
100229047,CN.SWA3.1410,AD TOPPING SLAB - SWA3 - GL 12-9 - J-K - L4/E,TK_Complete,2024-08-01 07:00,2024-08-06 17:00,2024-07-19 07:00,2024-07-23 17:00,580.0,0.0,580.0,0.0,W&W DS/AD Infill Steel - West - Team A,58.0,0.0,58.0,"200-300 Ton Crawler, 55 Ton Mobile Support Crane",638.0,638.0
100229048,TIER23. 105W,TIER 2 GROUT PRECAST COLUMNS & BEAMS - SWA3,TK_Complete,2023-07-31 07:00,2023-08-12 10:00,2023-07-31 07:00,2023-08-08 17:00,200.0,0.0,200.0,0.0,Precast Erect Crew SUP Col's/Bm's/Girders,25.0,0.0,25.0,LR-1400 400 Ton Crawler Crane,225.0,225.0
100229055,CN.SWA3.1480,PH1- DS/AD DECKING & DETAILING  DS/AD SWA-3  L4 & L4/E  GL 12-9 L-J,TK_Complete,2024-01-19 07:00,2024-01-20 13:00,2024-01-19 07:00,2024-01-23 13:00,580.0,0.0,580.0,0.0,W&W DS/AD Infill Steel - West - Team A,58.0,0.0,58.0,"200-300 Ton Crawler, 55 Ton Mobile Support Crane",638.0,638.0
100229058,CN.SWA3.1500,PH1- DS STEEL FRAME INSTALL - SWA-3 Comeback Sup Side,TK_Complete,2023-10-12 07:00,2023-10-13 13:00,2023-10-12 07:00,2023-10-13 13:00,580.0,0.0,580.0,0.0,W&W DS/AD Infill Steel - West - Team A,58.0,0.0,58.0,"200-300 Ton Crawler, 55 Ton Mobile Support Crane",638.0,638.0
100229059,CN.SWA3.1510,PH1- EXTERIOR CURBS - SWA-3-L1- GAS PURIFER NORTH,TK_Complete,2023-10-24 07:00,2023-10-29 15:00,2023-10-18 11:00,2023-10-20 17:00,80.0,0.0,80.0,0.0,CIP Concrete Topping Slab Crews,0.0,0.0,0.0,,80.0,80.0
100229060,CN.SWA3.1520,PH1- MEP PADS - SWA-3-L1- GAS PURIFER NORTH,TK_Complete,2023-10-30 07:00,2023-11-05 15:00,2023-10-24 07:00,2023-10-26 17:00,80.0,0.0,80.0,0.0,CIP Concrete Topping Slab Crews,0.0,0.0,0.0,,80.0,80.0
100229076,CN.SWA3.1540,REMAINING - CLADDING STEEL  EXTERIOR - SWA-3 L LINE (DS AREA)  GL 12-9 L,TK_Complete,2023-12-16 15:00,2023-12-19 09:00,2023-12-16 15:00,2024-01-21 11:00,300.0,0.0,300.0,0.0,"Cladding Steel, Insulated Metal Panel - Prefab Crews",15.0,0.0,15.0,50 Ton Mobile Support Crane,315.0,315.0
100229077,ANC1006,IMPACT - Missing Anchor Rods GL L10 Level 4A (#06),TK_Complete,2023-10-12 11:00,2023-10-14 15:00,2023-10-12 11:00,2023-10-14 16:00,580.0,0.0,580.0,0.0,W&W DS/AD Infill Steel - West - Team A,58.0,0.0,58.0,"200-300 Ton Crawler, 55 Ton Mobile Support Crane",638.0,638.0
100229078,EMB1004,IMPACT - Missing Precast Embed J10 and J11 Level 3 - SEQ 1804,TK_Complete,2023-10-09 07:00,2023-10-11 11:00,2023-10-07 07:00,2023-10-12 11:00,580.0,0.0,580.0,0.0,W&W DS/AD Infill Steel - West - Team A,58.0,0.0,58.0,"200-300 Ton Crawler, 55 Ton Mobile Support Crane",638.0,638.0
100229082,CN.SWA3.1550,PH1- DS/AD DECKING & DETAILING - GL 12 - 9 DS/AD SWA-3  L2-L3,TK_Complete,2023-10-14 08:00,2023-10-24 14:00,2023-10-13 08:00,2023-11-01 16:00,580.0,0.0,580.0,0.0,W&W DS/AD Infill Steel - West - Team A,58.0,0.0,58.0,"200-300 Ton Crawler, 55 Ton Mobile Support Crane",638.0,638.0
100229083,CN.SWA3.1560,PH1- DS/AD FRP SLAB - SWA3 - GL 12-9 - L-J - L3,TK_Complete,2024-05-24 07:00,2024-05-30 17:00,2024-05-14 07:00,2024-05-24 17:00,695.0,0.0,695.0,0.0,"W&W DS/AD Infill Steel - West - Team A, CIP Concrete Slab on Metal Deck Crews",58.0,0.0,58.0,"200-300 Ton Crawler, 55 Ton Mobile Support Crane",753.0,753.0
100229097,CN.SWA3.1580,PH1 -WELD CLIPS - CLADDING STEEL- SWA-3 L LINE (DS AREA),TK_Complete,2023-11-03 08:00,2023-11-04 10:00,2023-11-03 08:00,2023-11-04 11:00,300.0,0.0,300.0,0.0,"Cladding Steel, Insulated Metal Panel - Prefab Crews",15.0,0.0,15.0,50 Ton Mobile Support Crane,315.0,315.0
100229112,EMB6070,IMPACT [S.TIA-16] - Missing Precast Embed L12 and L11 3F L2A SEQ. 1803,TK_Complete,2023-11-27 07:00,2023-12-08 17:00,2023-11-20 07:00,2024-05-13 17:00,580.0,0.0,580.0,0.0,W&W DS/AD Infill Steel - West - Team A,58.0,0.0,58.0,"200-300 Ton Crawler, 55 Ton Mobile Support Crane",638.0,638.0
100229113,CN.SWA3.1670,IMPACT - ABR EXCAVATION FOR MEP TEAM (CRANE MATS REMOVED) - GL 12-9 N,TK_Complete,2023-11-13 07:00,2023-11-21 17:00,2023-11-13 07:00,2024-01-05 16:00,330.0,0.0,330.0,0.0,"Insulated Metal Panels - Lower Areas, Insulated Metal Panel - Prefab Crews",15.0,0.0,15.0,50 Ton Mobile Support Crane,345.0,345.0
100229115,CN.SWA3.1690,PH1 - CLADDING STEEL  EXTERIOR - SWA-3 L LINE (DS AREA)  GL 12-9 L,TK_Complete,2023-11-02 07:00,2023-11-09 09:00,2023-11-02 07:00,2023-11-22 17:00,300.0,0.0,300.0,0.0,"Cladding Steel, Insulated Metal Panel - Prefab Crews",15.0,0.0,15.0,50 Ton Mobile Support Crane,315.0,315.0
100229118,CN.SWA3.1730,ROOFTOP DRY PARAPET - SWB-1 (DS AREA) GL 12-9 N (DS AREA),TK_Complete,2024-02-19 15:00,2024-02-24 17:00,2024-02-19 15:00,2024-02-23 09:00,300.0,0.0,300.0,0.0,"Cladding Steel, Insulated Metal Panel - Prefab Crews",15.0,0.0,15.0,50 Ton Mobile Support Crane,315.0,315.0
100229119,CN.SWA3.1740,INSTALL INSULATED METAL PANEL MODULES - GL 12-9 - J LINE (AD AREA),TK_Complete,2024-06-30 07:00,2024-07-01 17:00,2024-06-24 07:00,2024-06-24 17:00,580.0,0.0,580.0,0.0,W&W DS/AD Infill Steel - West - Team A,58.0,0.0,58.0,"200-300 Ton Crawler, 55 Ton Mobile Support Crane",638.0,638.0
100229120,CN.SWA3.1750,INSTALL TPO ROOFING - SWA3 - GL 10-6 - K-L - L6,TK_Complete,2024-10-01 07:00,2024-10-01 17:00,2024-10-01 07:00,2024-10-04 17:00,580.0,0.0,580.0,0.0,W&W DS/AD Infill Steel - West - Team A,58.0,0.0,58.0,"200-300 Ton Crawler, 55 Ton Mobile Support Crane",638.0,638.0
100229144,CN.SWA3.6700,INSTALL FRAMING FOR IMP - GL 12-9 - J LINE (AD AREA),TK_Complete,2024-06-07 07:00,2024-06-07 17:00,2024-05-01 07:00,2024-05-14 17:00,580.0,0.0,580.0,0.0,W&W DS/AD Infill Steel - West - Team A,58.0,0.0,58.0,"200-300 Ton Crawler, 55 Ton Mobile Support Crane",638.0,638.0
100229151,CN.SWA3.9390,IMPACT - NOTIFY SECAI TO MOVE MATERIAL BLOCKING ACCESS FOR IMP INSTALL / ACCESS PROVIDED - GL 12-9 - L LINE (DS AREA),TK_Complete,2024-07-13 07:00,2024-07-23 17:00,2024-06-27 07:00,2024-07-09 17:00,300.0,0.0,300.0,0.0,"Cladding Steel, Insulated Metal Panel - Prefab Crews",15.0,0.0,15.0,50 Ton Mobile Support Crane,315.0,315.0
100229152,CN.SWA3.9400,IMPACT - NEED TO PROCURE ADDITIONAL INSULATED METAL PANEL MODULES / AWAIT DELIVERY - D & L LINE,TK_Complete,2024-07-21 07:00,2024-07-30 17:00,2024-07-16 07:00,2024-07-20 17:00,300.0,0.0,300.0,0.0,"Cladding Steel, Insulated Metal Panel - Prefab Crews",15.0,0.0,15.0,50 Ton Mobile Support Crane,315.0,315.0
100229157,CN.SWA3.9470,DS ROOF PARAPET DRY IN - SWA3 - GL 12-9 - K-L - L6,TK_Complete,2024-08-01 07:00,2024-08-19 17:00,2024-08-01 07:00,2024-09-06 11:00,580.0,0.0,580.0,0.0,W&W DS/AD Infill Steel - West - Team A,58.0,0.0,58.0,"200-300 Ton Crawler, 55 Ton Mobile Support Crane",638.0,638.0
100229179,CN.A1.UG.1050,PH1- UNDERGROUND PLUMBING SWA4,TK_Complete,2022-10-27 08:00,2022-10-29 12:00,2022-10-27 08:00,2022-10-29 13:00,748.0,0.0,748.0,0.0,CIP Concrete SOG Crews,22.0,0.0,22.0,50-75 Ton Mobile Support Crane,770.0,770.0
100229182,CN.SWA4.1020,PH1-FRP GRADE BEAM - SWA4,TK_Complete,2022-11-03 07:00,2022-11-05 11:00,2022-11-03 07:00,2022-11-05 12:00,480.0,0.0,480.0,0.0,CIP Concrete SUP Pier Cap Crew,16.0,0.0,16.0,50-75 Ton Mobile Support Crane,496.0,496.0
100229185,CN.SWA4.1080,PH1- FRP SLAB - SWA-4-L3,TK_Complete,2023-08-04 15:00,2023-08-07 09:00,2023-08-04 15:00,2023-08-08 11:00,280.0,0.0,280.0,0.0,CIP Concrete Slab on Metal Deck Crews,10.0,0.0,10.0,50-75 Ton Mobile Support Crane,290.0,290.0
100229186,CN.SWA4.1120,PH1- FRP SLAB - SWA-4-ROOF,TK_Complete,2023-09-18 07:00,2023-09-21 11:00,2023-09-16 07:00,2023-09-20 11:00,280.0,0.0,280.0,0.0,CIP Concrete Slab on Metal Deck Crews,10.0,0.0,10.0,50-75 Ton Mobile Support Crane,290.0,290.0
100229189,CN.SWA4.1090,PH1- 1st FLOOR SLAB - SWA-4-L1,TK_Complete,2023-02-23 11:00,2023-02-27 11:00,2023-02-07 11:00,2023-02-10 11:00,646.0,0.0,646.0,0.0,CIP Concrete SOG Crews,19.0,0.0,19.0,50-75 Ton Mobile Support Crane,665.0,665.0
100229190,CN.SWA4.1220,MEP EQPT PADS (LAYOUT & INSTALL DOWELS) - SWA4 - GL 9-6 - L4 - L-N - ROOF,TK_Complete,2023-09-25 07:00,2023-09-28 11:00,2023-09-25 07:00,2023-09-28 11:00,1120.0,0.0,1120.0,0.0,CIP Concrete Topping Slab Crews,0.0,0.0,0.0,,1120.0,1120.0
100229191,CN.SWA4.1050,TIER 1 ERECT PRECAST COLUMNS & BEAMS - SWA4,TK_Complete,2023-07-10 09:00,2023-07-15 15:00,2023-07-10 09:00,2023-07-23 14:00,192.0,0.0,192.0,0.0,Precast Erect Crew SUP Col's/Bm's/Girders,24.0,0.0,24.0,LR-1400 400 Ton Crawler Crane,216.0,216.0
100229192,CN.SWA4.1140,PH1-ROOF LAYER PARAPET - SWA4 - GL 9-1 - L4 - L-N,TK_Complete,2024-02-19 07:00,2024-02-20 13:00,2024-02-19 07:00,2024-02-20 13:00,64.0,0.0,64.0,0.0,Precast Erect Crew SUP Col's/Bm's/Girders,8.0,0.0,8.0,185 Ton Crawler Crane Unload/Handle Waffles,72.0,72.0
100229193,CN.SWA4.1160,PH1-FLUID APPLIED MEMBRANE ROOFING - SWA4 - GL 9-6 - L4 - L-N - ROOF,TK_Complete,2023-12-04 07:00,2023-12-08 09:00,2023-11-22 07:00,2023-11-27 09:00,112.0,0.0,112.0,0.0,SUP Bldg Roofing Membrane Crew,0.0,0.0,0.0,,112.0,112.0
100229194,CN.SWA4.1170,PH1 - CLADDING STEEL INTERIOR GL 9-6 - K LINE (AD AREA),TK_Complete,2024-02-29 13:00,2024-03-07 09:00,2024-02-29 07:00,2024-03-18 17:00,300.0,0.0,300.0,0.0,"Cladding Steel, Insulated Metal Panel - Prefab Crews",15.0,0.0,15.0,50 Ton Mobile Support Crane,315.0,315.0
100229195,CN.SWA4.1200,PH1 - INSTALL INSULATED METAL PANEL MODULES - GL 9-6 - L LINE (DS AREA),TK_Complete,2024-07-29 07:00,2024-08-03 17:00,2024-07-22 07:00,2024-07-30 17:00,300.0,0.0,300.0,0.0,"Cladding Steel, Insulated Metal Panel - Prefab Crews",15.0,0.0,15.0,50 Ton Mobile Support Crane,315.0,315.0
100229196,CN.SWA4.1150,PH1 - CLADDING STEEL  - SWA4 - GL 9-6 - N line  [SUP EXTERIOR WALL],TK_Complete,2024-02-26 07:00,2024-03-05 09:00,2024-01-15 07:00,2024-01-23 11:00,330.0,0.0,330.0,0.0,"Insulated Metal Panels - Lower Areas, Insulated Metal Panel - Prefab Crews",15.0,0.0,15.0,50 Ton Mobile Support Crane,345.0,345.0
100229197,CN.SWA4.1180,PH1 - INSTALL INSULATED METAL PANEL MODULES - SWA4 - GL 9-6 - N LINE [SUP EXTERIOR WALL],TK_Complete,2024-02-08 07:00,2024-02-15 09:00,2024-02-01 07:00,2024-02-10 12:00,330.0,0.0,330.0,0.0,"Insulated Metal Panels - Lower Areas, Insulated Metal Panel - Prefab Crews",15.0,0.0,15.0,50 Ton Mobile Support Crane,345.0,345.0
100229198,CN.SWA4.1110,PH1- AD STEEL FRAME INSTALL - SWA-4 fab side,TK_Complete,2023-08-28 07:00,2023-09-02 15:00,2023-08-24 07:00,2023-08-26 16:00,580.0,0.0,580.0,0.0,W&W DS/AD Infill Steel - West - Team A,58.0,0.0,58.0,"200-300 Ton Crawler, 55 Ton Mobile Support Crane",638.0,638.0
100229214,CN.SWA4.1360,PH1- TOPPING SLAB w TRENCH & ANGLE EMBEDS- SWA-4-L1 - GAS PURIFER SOUTH,TK_Complete,2023-10-01 08:00,2023-10-03 12:00,2023-10-01 08:00,2023-10-03 13:00,80.0,0.0,80.0,0.0,CIP Concrete Topping Slab Crews,0.0,0.0,0.0,,80.0,80.0
100229215,CN.SWA4.1370,L6 DS DECKING & DETAILING - SWA4 - GL 9-6 - L-J DS/AD,TK_Complete,2024-01-17 07:00,2024-01-20 17:00,2024-01-04 13:00,2024-01-08 17:00,580.0,0.0,580.0,0.0,W&W DS/AD Infill Steel - West - Team A,58.0,0.0,58.0,"200-300 Ton Crawler, 55 Ton Mobile Support Crane",638.0,638.0
100229216,CN.SWA4.1380,DS/AD FRP SLAB - DS/AD - SWA4 - GL 9-6 - L-J - L4 & 4E,TK_Complete,2024-02-06 08:00,2024-02-08 13:00,2024-02-06 08:00,2024-02-08 13:00,695.0,0.0,695.0,0.0,"W&W DS/AD Infill Steel - West - Team A, CIP Concrete Slab on Metal Deck Crews",58.0,0.0,58.0,"200-300 Ton Crawler, 55 Ton Mobile Support Crane",753.0,753.0
100229217,CN.SWA4.1390,AD WATERPROOFING - SWA4 - GL 9-6 - J-K - L4/E,TK_Complete,2024-09-23 07:00,2024-10-08 17:00,2024-09-03 07:00,2024-09-14 17:00,580.0,0.0,580.0,0.0,W&W DS/AD Infill Steel - West - Team A,58.0,0.0,58.0,"200-300 Ton Crawler, 55 Ton Mobile Support Crane",638.0,638.0
100229218,CN.SWA4.1400,AD TOPPING SLAB - SWA4 - GL 9-6 - J-K - L4/E,TK_Complete,2024-10-10 07:00,2024-10-11 17:00,2024-09-16 07:00,2024-09-18 17:00,580.0,0.0,580.0,0.0,W&W DS/AD Infill Steel - West - Team A,58.0,0.0,58.0,"200-300 Ton Crawler, 55 Ton Mobile Support Crane",638.0,638.0
100229219,TIER 2. 105W,TIER 2 GROUT PRECAST COLUMNS & BEAMS - SWA4,TK_Complete,2023-09-05 07:00,2023-09-10 13:00,2023-08-11 07:00,2023-08-17 16:00,192.0,0.0,192.0,0.0,Precast Erect Crew SUP Col's/Bm's/Girders,24.0,0.0,24.0,LR-1400 400 Ton Crawler Crane,216.0,216.0
100229226,CN.SWA4.1470,PH1- DS/AD DECKING & DETAILING GL 9 - 6- DS/AD - SWA4 - GL 9-6 - L-J - L4& L4/E,TK_Complete,2024-02-02 13:00,2024-02-05 15:00,2024-02-02 13:00,2024-02-06 09:00,580.0,0.0,580.0,0.0,W&W DS/AD Infill Steel - West - Team A,58.0,0.0,58.0,"200-300 Ton Crawler, 55 Ton Mobile Support Crane",638.0,638.0
100229229,CN.SWA4.1490,PH1- DS STEEL FRAME INSTALL - SWA-4 Comeback Sup Side,TK_Complete,2023-08-28 13:00,2023-09-03 11:00,2023-08-26 13:00,2023-09-11 14:00,580.0,0.0,580.0,0.0,W&W DS/AD Infill Steel - West - Team A,58.0,0.0,58.0,"200-300 Ton Crawler, 55 Ton Mobile Support Crane",638.0,638.0
100229230,CN.SWA4.1500,PH1- EXTERIOR CURBS - SWA-4-L1 - GAS PURIFER SOUTH,TK_Complete,2023-10-27 07:00,2023-11-02 15:00,2023-10-23 11:00,2023-10-25 11:00,80.0,0.0,80.0,0.0,CIP Concrete Topping Slab Crews,0.0,0.0,0.0,,80.0,80.0
100229231,CN.SWA4.1510,REMAINING 1 MEP PADS - SWA-4-L1 - GAS PURIFER SOUTH,TK_Complete,2023-12-28 07:00,2024-01-05 13:00,2023-12-14 07:00,2023-12-16 15:00,80.0,0.0,80.0,0.0,CIP Concrete Topping Slab Crews,0.0,0.0,0.0,,80.0,80.0
100229245,CN.SWA4.1530,PH1 - CLADDING STEEL  EXTERIOR - SWA4 - GL 9-6 - L LINE (DS AREA)(Including Detailing),TK_Complete,2024-01-22 07:00,2024-02-03 11:00,2023-12-27 07:00,2024-01-12 15:00,300.0,0.0,300.0,0.0,"Cladding Steel, Insulated Metal Panel - Prefab Crews",15.0,0.0,15.0,50 Ton Mobile Support Crane,315.0,315.0
100229256,CN.SWA4.1540,PH1 -WELD CLIPS - CLADDING STEEL - SWA4 - GL 9-5 - L LINE (DS AREA),TK_Complete,2023-11-20 07:00,2023-11-21 09:00,2023-11-20 07:00,2023-11-21 09:00,300.0,0.0,300.0,0.0,"Cladding Steel, Insulated Metal Panel - Prefab Crews",15.0,0.0,15.0,50 Ton Mobile Support Crane,315.0,315.0
100229286,CN.SWA4.6250,L6 DS FRP SLAB - DS/AD - SWA4 - GL 9-6 - L-J,TK_Complete,2024-01-22 15:00,2024-01-25 09:00,2024-01-09 15:00,2024-01-11 15:00,695.0,0.0,695.0,0.0,"W&W DS/AD Infill Steel - West - Team A, CIP Concrete Slab on Metal Deck Crews",58.0,0.0,58.0,"200-300 Ton Crawler, 55 Ton Mobile Support Crane",753.0,753.0
100229290,CN.SWA4.6260,IMPACT [S.TIA-113] - POST INSTALL EQUIP PADS (MEP MATERIALS OBSTRUCTION) - SUW4 - GL N/9 - N-M,TK_Complete,2023-11-20 07:00,2023-11-27 17:00,2023-11-16 07:00,2023-12-01 11:00,80.0,0.0,80.0,0.0,CIP Concrete Topping Slab Crews,0.0,0.0,0.0,,80.0,80.0
100229291,CN.SWA4.6270,IMPACT [S.TIA-114] - NCR AT GL 9 EXPANSION JOINT - SUW4 - GL N/9 - N-L,TK_Complete,2023-11-20 07:00,2023-11-27 17:00,2023-11-16 07:00,2023-12-05 15:00,80.0,0.0,80.0,0.0,CIP Concrete Topping Slab Crews,0.0,0.0,0.0,,80.0,80.0
100229297,CN.SWA4.6310,ROOFTOP DRY PARAPET - SWB-1 GL 9-6 N L LINE (DS AREA),TK_Complete,2024-02-19 08:00,2024-02-24 14:00,2024-02-19 08:00,2024-02-24 15:00,300.0,0.0,300.0,0.0,"Cladding Steel, Insulated Metal Panel - Prefab Crews",15.0,0.0,15.0,50 Ton Mobile Support Crane,315.0,315.0
100229298,CN.SWA4.6320,INSTALL INSULATED METAL PANEL MODULES - GL 9-6 - J LINE (AD AREA),TK_Complete,2024-07-02 07:00,2024-07-05 17:00,2024-06-25 07:00,2024-06-25 17:00,580.0,0.0,580.0,0.0,W&W DS/AD Infill Steel - West - Team A,58.0,0.0,58.0,"200-300 Ton Crawler, 55 Ton Mobile Support Crane",638.0,638.0
100229299,CN.SWA4.6330,INSTALL TPO ROOFING - SWA4 - GL 3-6 - K-L - L6,TK_Complete,2024-10-01 07:00,2024-10-04 17:00,2024-10-01 07:00,2024-10-04 17:00,580.0,0.0,580.0,0.0,W&W DS/AD Infill Steel - West - Team A,58.0,0.0,58.0,"200-300 Ton Crawler, 55 Ton Mobile Support Crane",638.0,638.0
100229327,CN.SWA4.6750,INSTALL FRAMING FOR IMP - GL 9-6 - J LINE (AD AREA),TK_Complete,2024-06-10 07:00,2024-06-11 17:00,2024-05-01 07:00,2024-05-14 17:00,580.0,0.0,580.0,0.0,W&W DS/AD Infill Steel - West - Team A,58.0,0.0,58.0,"200-300 Ton Crawler, 55 Ton Mobile Support Crane",638.0,638.0
100229337,CN.SWA4.7040,DS ROOF PARAPET DRY IN - SWA4 - GL 9-5 - K-L - L6,TK_Complete,2024-08-02 07:00,2024-08-09 17:00,2024-07-31 07:00,2024-09-06 17:00,580.0,0.0,580.0,0.0,W&W DS/AD Infill Steel - West - Team A,58.0,0.0,58.0,"200-300 Ton Crawler, 55 Ton Mobile Support Crane",638.0,638.0
100229344,CN.A1.UG.1070,PH1- UNDERGROUND PLUMBING SWA5,TK_Complete,2022-10-17 15:00,2022-10-21 09:00,2022-10-17 15:00,2022-10-21 09:00,748.0,0.0,748.0,0.0,CIP Concrete SOG Crews,22.0,0.0,22.0,50-75 Ton Mobile Support Crane,770.0,770.0
100229347,CN.SWA5.1020,PH1-FRP GRADE BEAM - SWA5,TK_Complete,2022-10-27 08:00,2022-10-29 12:00,2022-10-27 08:00,2022-10-29 13:00,510.0,0.0,510.0,0.0,CIP Concrete SUP Pier Cap Crew,17.0,0.0,17.0,50-75 Ton Mobile Support Crane,527.0,527.0
100229349,CN.SWA5.1060,L2 - FRP SLAB - SWA-5-L2 - GL1 -3,TK_Complete,2023-08-11 09:00,2023-08-13 13:00,2023-08-11 09:00,2023-08-14 15:00,280.0,0.0,280.0,0.0,CIP Concrete Slab on Metal Deck Crews,10.0,0.0,10.0,50-75 Ton Mobile Support Crane,290.0,290.0
100229350,CN.SWA5.1080,L3 - FRP SLAB - SWA-5-L3 - GL 1- 3 - FA LAB SOUTH,TK_Complete,2023-08-04 09:00,2023-08-06 13:00,2023-08-04 09:00,2023-08-07 15:00,280.0,0.0,280.0,0.0,CIP Concrete Slab on Metal Deck Crews,10.0,0.0,10.0,50-75 Ton Mobile Support Crane,290.0,290.0
100229354,CN.SWA5.1090,PH1- 1st FLOOR SLAB - SWA-5-L1,TK_Complete,2023-02-07 07:00,2023-02-10 17:00,2023-01-30 07:00,2023-02-04 17:00,646.0,0.0,646.0,0.0,CIP Concrete SOG Crews,19.0,0.0,19.0,50-75 Ton Mobile Support Crane,665.0,665.0
100229355,CN.SWA5.1050,TIER 1 ERECT PRECAST COLUMNS & BEAMS - SWA5,TK_Complete,2023-06-16 09:00,2023-06-26 15:00,2023-06-13 09:00,2023-07-03 17:00,200.0,0.0,200.0,0.0,Precast Erect Crew SUP Col's/Bm's/Girders,25.0,0.0,25.0,LR-1400 400 Ton Crawler Crane,225.0,225.0
100229356,CN.SWA5.1140,PH1-ROOF LAYER PARAPET - SWA5 - GL 6-1 - L3 - L-N,TK_Complete,2024-01-12 09:00,2024-01-14 08:00,2024-01-12 09:00,2024-01-14 11:00,64.0,0.0,64.0,0.0,Precast Erect Crew SUP Col's/Bm's/Girders,8.0,0.0,8.0,185 Ton Crawler Crane Unload/Handle Waffles,72.0,72.0
100229357,CN.SWA5.1160,INSTALL WATERPROOFING & CRICKETS - GL 1-2 - L-N - L4/A ROOF,TK_Complete,2024-05-07 07:00,2024-05-24 17:00,2024-03-28 07:00,2024-04-18 17:00,112.0,0.0,112.0,0.0,SUP Bldg Roofing Membrane Crew,0.0,0.0,0.0,,112.0,112.0
100229359,CN.SWA5.1180,PH1 - CLADDING STEEL INTERIOR GL 6-3 - K LINE (AD AREA),TK_Complete,2024-04-08 07:00,2024-04-16 17:00,2024-04-06 07:00,2024-04-13 17:00,300.0,0.0,300.0,0.0,"Cladding Steel, Insulated Metal Panel - Prefab Crews",15.0,0.0,15.0,50 Ton Mobile Support Crane,315.0,315.0
100229360,CN.SWA5.1200,PH1 - INSTALL INSULATED METAL PANEL MODULES - GL 6-5 - L LINE (DS AREA),TK_Complete,2024-08-04 07:00,2024-08-08 17:00,2024-07-22 07:00,2024-07-30 17:00,300.0,0.0,300.0,0.0,"Cladding Steel, Insulated Metal Panel - Prefab Crews",15.0,0.0,15.0,50 Ton Mobile Support Crane,315.0,315.0
100229361,CN.SWA5.1150,PH1 - CLADDING STEEL  - SWA5 - GL 6-4 -  N LINE [SUP EXTERIOR WALL],TK_Complete,2024-01-29 07:00,2024-02-02 15:00,2024-01-04 07:00,2024-01-10 15:00,330.0,0.0,330.0,0.0,"Insulated Metal Panels - Lower Areas, Insulated Metal Panel - Prefab Crews",15.0,0.0,15.0,50 Ton Mobile Support Crane,345.0,345.0
100229362,CN.SWA5.1170,INSTALL INSULATED METAL PANEL MODULES - GL 6-4 - N LINE [SUP EXTERIOR WALL],TK_Complete,2024-04-08 07:00,2024-04-11 17:00,2024-04-11 07:00,2024-04-18 17:00,330.0,0.0,330.0,0.0,"Insulated Metal Panels - Lower Areas, Insulated Metal Panel - Prefab Crews",15.0,0.0,15.0,50 Ton Mobile Support Crane,345.0,345.0
100229363,CN.SWA5.1120,PH1- AD STEEL FRAME INSTALL - SWA-5 fab side,TK_Complete,2023-06-12 07:00,2023-06-18 13:00,2023-06-12 07:00,2023-06-19 15:00,580.0,0.0,580.0,0.0,W&W DS/AD Infill Steel - West - Team A,58.0,0.0,58.0,"200-300 Ton Crawler, 55 Ton Mobile Support Crane",638.0,638.0
100229369,CN.SWA5.1240,DS STEEL SPRAY FIREPROOFING SFRM - SWA5 - L4 & L5 CEILING - GL 6-3 - J-L,TK_Complete,2024-11-01 07:00,2024-11-14 17:00,2024-10-12 07:00,2024-10-16 17:00,80.0,0.0,80.0,0.0,CIP Concrete Topping Slab Crews,0.0,0.0,0.0,,80.0,80.0
100229374,CN.SWA5.1350,PH1- DS/AD FRP SLAB - DS/AD - SWA5 - GL 6-3 - L-J - L4 & L4/E,TK_Complete,2024-02-06 09:00,2024-02-09 13:00,2024-02-06 09:00,2024-02-09 13:00,695.0,0.0,695.0,0.0,"W&W DS/AD Infill Steel - West - Team A, CIP Concrete Slab on Metal Deck Crews",58.0,0.0,58.0,"200-300 Ton Crawler, 55 Ton Mobile Support Crane",753.0,753.0
100229375,CN.SWA5.1370,AD TOPPING SLAB - SWA5 - GL 6-3 - J-K - L4/E,TK_Complete,2024-10-10 07:00,2024-10-11 17:00,2024-09-16 07:00,2024-09-18 17:00,580.0,0.0,580.0,0.0,W&W DS/AD Infill Steel - West - Team A,58.0,0.0,58.0,"200-300 Ton Crawler, 55 Ton Mobile Support Crane",638.0,638.0
100229376,TIER 25.1061,IMPACT - TIER 2 GROUT PRECAST COLUMNS & BEAMS - SWA5 - tindal fixes L4 corbel misalignment delay,TK_Complete,2023-07-24 07:00,2023-07-30 11:00,2023-07-24 07:00,2023-09-06 17:00,200.0,0.0,200.0,0.0,Precast Erect Crew SUP Col's/Bm's/Girders,25.0,0.0,25.0,LR-1400 400 Ton Crawler Crane,225.0,225.0
100229383,CN.SWA5.1440,L6- DS/AD DECKING & DETAILING DS/AD - SWA5 - GL 6-1 - L-J - L6,TK_Complete,2024-01-17 07:00,2024-01-20 17:00,2024-01-15 07:00,2024-01-19 17:00,580.0,0.0,580.0,0.0,W&W DS/AD Infill Steel - West - Team A,58.0,0.0,58.0,"200-300 Ton Crawler, 55 Ton Mobile Support Crane",638.0,638.0
100229386,CN.SWB5.1500,PH1- ERECT STEEL - SW PENTHOUSE,TK_Complete,2024-01-11 09:00,2024-01-21 09:00,2024-01-11 09:00,2024-01-24 11:00,580.0,0.0,580.0,0.0,W&W DS/AD Infill Steel - West - Team B,58.0,0.0,58.0,"200-300 Ton Crawler, 55 Ton Mobile Support Crane",638.0,638.0
100229387,CN.SWB5.1910,PH1- INSTALL DECKING & STUDS - SW PENTHOUSE,TK_Complete,2024-01-23 15:00,2024-02-02 11:00,2024-01-23 15:00,2024-02-01 16:00,580.0,0.0,580.0,0.0,W&W DS/AD Infill Steel - West - Team B,58.0,0.0,58.0,"200-300 Ton Crawler, 55 Ton Mobile Support Crane",638.0,638.0
100229388,CN.SWB5.1920,PH1- FRP SLAB ON DECK - SW PENTHOUSE ROOF,TK_Complete,2024-02-01 09:00,2024-02-03 13:00,2024-02-01 09:00,2024-02-02 14:00,580.0,0.0,580.0,0.0,W&W DS/AD Infill Steel - West - Team B,58.0,0.0,58.0,"200-300 Ton Crawler, 55 Ton Mobile Support Crane",638.0,638.0
100229389,CN.SWB5.1930,INSTALL EDGE OF SLAB - SW PENTHOUSE ROOF- L4,TK_Complete,2024-12-02 07:00,2024-12-09 17:00,2024-11-18 07:00,2024-11-26 17:00,580.0,0.0,580.0,0.0,W&W DS/AD Infill Steel - West - Team B,58.0,0.0,58.0,"200-300 Ton Crawler, 55 Ton Mobile Support Crane",638.0,638.0
100229390,CN.SWB5.1970,PH1- INSTALL HSS CLADDING STEEL - SW PENTHOUSE,TK_Complete,2024-02-22 07:00,2024-03-08 17:00,2024-02-22 07:00,2024-03-17 13:00,580.0,0.0,580.0,0.0,W&W DS/AD Infill Steel - West - Team B,58.0,0.0,58.0,"200-300 Ton Crawler, 55 Ton Mobile Support Crane",638.0,638.0
100229391,CN.SWB5.1980,PH1- INSTALL EXTERIOR DOOR / LOUVERS FRAMES - SW PENTHOUSE,TK_NotStart,2025-11-21 07:00,2025-11-21 17:00,,,580.0,580.0,0.0,0.0,W&W DS/AD Infill Steel - West - Team B,58.0,58.0,0.0,"200-300 Ton Crawler, 55 Ton Mobile Support Crane",638.0,0.0
100229392,CN.SWB5.1990,PH1- INSTALL INSULATED METAL PANELS - SW PENTHOUSE - SOUTH WALL,TK_Complete,2024-09-19 07:00,2024-09-28 17:00,2024-10-07 07:00,2024-10-25 17:00,580.0,0.0,580.0,0.0,W&W DS/AD Infill Steel - West - Team B,58.0,0.0,58.0,"200-300 Ton Crawler, 55 Ton Mobile Support Crane",638.0,638.0
100229393,CN.SWB5.2010,PH1- INSTALL EXTERIOR STEEL ACCESS STAIRS / RAMPS - SW PENTHOUSE - STAIR 60/61/62/63/R1/R8/R16,TK_NotStart,2025-11-21 07:00,2025-11-21 17:00,,,580.0,580.0,0.0,0.0,W&W DS/AD Infill Steel - West - Team B,58.0,58.0,0.0,"200-300 Ton Crawler, 55 Ton Mobile Support Crane",638.0,0.0
100229394,CN.SWB5.2020,PH1- INSTALL INTERIOR METAL STUD FRAMING (2hr) - SW PENTHOUSE,TK_Complete,2024-05-30 07:00,2024-06-04 17:00,2024-05-30 07:00,2024-06-04 17:00,580.0,0.0,580.0,0.0,W&W DS/AD Infill Steel - West - Team B,58.0,0.0,58.0,"200-300 Ton Crawler, 55 Ton Mobile Support Crane",638.0,638.0
100229395,CN.SWB5.2030,PH1- INSTALL INTERIOR DRYWALL - SW PENTHOUSE,TK_Complete,2024-06-06 07:00,2024-06-10 17:00,2024-06-06 07:00,2024-08-01 17:00,580.0,0.0,580.0,0.0,W&W DS/AD Infill Steel - West - Team B,58.0,0.0,58.0,"200-300 Ton Crawler, 55 Ton Mobile Support Crane",638.0,638.0
100229396,CN.SWB5.2070,PH1- INSTALL DECKING - SW PENTHOUSE,TK_Complete,2024-01-26 15:00,2024-01-28 11:00,2024-01-26 15:00,2024-02-01 16:00,580.0,0.0,580.0,0.0,W&W DS/AD Infill Steel - West - Team B,58.0,0.0,58.0,"200-300 Ton Crawler, 55 Ton Mobile Support Crane",638.0,638.0
100229397,CN.AB1.ST.1550,PH1- FIRE PROOFING - SFRM STEEL - SWA - 5 L2 GL 1-6- DATA CENTER 2 & ELECTRICAL ROOM 1,TK_Complete,2023-10-16 07:00,2023-10-20 15:00,2023-08-31 07:00,2023-09-10 07:00,320.0,0.0,320.0,0.0,"Precast Erect Crew FAB Waffles & Double-T's, Precast GROUTERS",40.0,0.0,40.0,"Precast Carry-Lift, 185 Ton Crawler Crane Unload/Handle Waffles",360.0,360.0
100229398,CN.SWB5.2080,PH1- INSTALL GRATING - SW PENTHOUSE,TK_NotStart,2025-11-24 07:00,2025-11-25 17:00,,,580.0,580.0,0.0,0.0,W&W DS/AD Infill Steel - West - Team B,58.0,58.0,0.0,"200-300 Ton Crawler, 55 Ton Mobile Support Crane",638.0,0.0
100229399,CN.SWB5.2090,IMPACT [C35] - FRP STRUCTURAL SLAB SOMD - 4C (LOWER MEZZ) - SW PENTHOUSE,TK_Complete,2024-05-06 07:00,2024-05-07 17:00,2024-04-30 07:00,2024-05-02 17:00,580.0,0.0,580.0,0.0,W&W DS/AD Infill Steel - West - Team B,58.0,0.0,58.0,"200-300 Ton Crawler, 55 Ton Mobile Support Crane",638.0,638.0
100229400,CN.SWA5.1460,PH1- DS STEEL FRAME INSTALL - SWA-5,TK_Complete,2023-10-14 08:00,2023-10-15 14:00,2023-10-14 08:00,2023-10-15 16:00,580.0,0.0,580.0,0.0,W&W DS/AD Infill Steel - West - Team A,58.0,0.0,58.0,"200-300 Ton Crawler, 55 Ton Mobile Support Crane",638.0,638.0
100229401,CN.SWA5.1470,PH1- EXTERIOR CURBS - SWA-5-L1 GL 1-6,TK_Complete,2023-09-05 07:00,2023-09-08 17:00,2023-08-29 07:00,2023-08-29 07:00,80.0,0.0,80.0,0.0,CIP Concrete Topping Slab Crews,0.0,0.0,0.0,,80.0,80.0
100229417,TIER 25.1071,IMPACT - ERECT L-M STEEL - L4 corbel misalignment delay,TK_Complete,2023-10-16 07:00,2023-10-16 15:00,2023-10-09 07:00,2023-10-10 15:00,200.0,0.0,200.0,0.0,Precast Erect Crew SUP Col's/Bm's/Girders,25.0,0.0,25.0,LR-1400 400 Ton Crawler Crane,225.0,225.0
100229418,TIER 25.1081,IMPACT - ERECT M-N STEEL - L4 corbel misalignment delay,TK_Complete,2023-10-16 15:00,2023-10-17 13:00,2023-10-09 07:00,2023-10-10 15:00,200.0,0.0,200.0,0.0,Precast Erect Crew SUP Col's/Bm's/Girders,25.0,0.0,25.0,LR-1400 400 Ton Crawler Crane,225.0,225.0
100229419,TIER 25.1091,DETAIL L-M STEEL - L4 corbel misalignment delay,TK_Complete,2023-10-16 15:00,2023-10-17 13:00,2023-10-09 07:00,2023-10-10 15:00,200.0,0.0,200.0,0.0,Precast Erect Crew SUP Col's/Bm's/Girders,25.0,0.0,25.0,LR-1400 400 Ton Crawler Crane,225.0,225.0
100229420,TIER 25.1101,DETAIL M-N STEEL - L4 corbel misalignment delay,TK_Complete,2023-10-17 13:00,2023-10-19 17:00,2023-10-09 07:00,2023-10-10 15:00,200.0,0.0,200.0,0.0,Precast Erect Crew SUP Col's/Bm's/Girders,25.0,0.0,25.0,LR-1400 400 Ton Crawler Crane,225.0,225.0
100229421,TIER 25.1111,IMPACT - GL 3 CRANE PAD INSTALL & CRANE BREAKDOWN - SWA5 - N/2 AB Fix - corbel misalignment delay,TK_Complete,2023-10-02 07:00,2023-10-02 15:00,2023-09-15 07:00,2023-09-18 07:00,200.0,0.0,200.0,0.0,Precast Erect Crew SUP Col's/Bm's/Girders,25.0,0.0,25.0,LR-1400 400 Ton Crawler Crane,225.0,225.0
100229422,CN.SWA5.1630,PH1 - CLADDING STEEL EXTERIOR - SWA5 - GL 6-3 - L LINE (DS AREA)(Including Detailing),TK_Complete,2024-02-23 07:00,2024-03-03 14:00,2024-02-23 07:00,2024-03-04 12:00,300.0,0.0,300.0,0.0,"Cladding Steel, Insulated Metal Panel - Prefab Crews",15.0,0.0,15.0,50 Ton Mobile Support Crane,315.0,315.0
100229423,EMB1017,IMPACT - Missing Precast Embed - L4 - GL 5 and 3 (#17),TK_Complete,2023-10-09 07:00,2023-10-10 13:00,2023-09-18 07:00,2023-10-10 13:00,580.0,0.0,580.0,0.0,W&W DS/AD Infill Steel - West - Team A,58.0,0.0,58.0,"200-300 Ton Crawler, 55 Ton Mobile Support Crane",638.0,638.0
100229424,EMB4000,IMPACT [CL 44] - Missing Precast Embed GL L3 and L4 Level 4 (#4000),TK_Complete,2023-10-02 07:00,2023-10-03 13:00,2023-08-14 07:00,2023-09-20 07:00,580.0,0.0,580.0,0.0,W&W DS/AD Infill Steel - West - Team A,58.0,0.0,58.0,"200-300 Ton Crawler, 55 Ton Mobile Support Crane",638.0,638.0
100229425,ANC3000,IMPACT - Missing Anchor Rods (3) Between GL2 L and N (#3000),TK_Complete,2023-10-10 13:00,2023-10-12 09:00,2023-09-19 13:00,2023-10-13 09:00,580.0,0.0,580.0,0.0,W&W DS/AD Infill Steel - West - Team A,58.0,0.0,58.0,"200-300 Ton Crawler, 55 Ton Mobile Support Crane",638.0,638.0
100229426,CN.SWA5.1640,PH1- DS/AD DECKING & DETAILING DS/AD SWA-5 GL 3-6 L2-L3,TK_Complete,2023-09-28 11:00,2023-10-01 13:00,2023-09-17 11:00,2023-09-20 16:00,580.0,0.0,580.0,0.0,W&W DS/AD Infill Steel - West - Team A,58.0,0.0,58.0,"200-300 Ton Crawler, 55 Ton Mobile Support Crane",638.0,638.0
100229427,CN.SWA5.1650,PH1- DS/AD FRP SLAB - SWA-5 GL 1-6 L2-L3,TK_Complete,2023-10-06 09:00,2023-10-09 11:00,2023-09-21 09:00,2023-09-24 15:00,695.0,0.0,695.0,0.0,"W&W DS/AD Infill Steel - West - Team A, CIP Concrete Slab on Metal Deck Crews",58.0,0.0,58.0,"200-300 Ton Crawler, 55 Ton Mobile Support Crane",753.0,753.0
100229428,CN.SWA5.1660,DS/AD STEEL SPRAY FIREPROOFING SFRM- SWA-5 GL 1-6 L1 CEILING,TK_Complete,2023-10-16 07:00,2023-10-17 13:00,2023-10-16 07:00,2023-10-17 13:00,80.0,0.0,80.0,0.0,CIP Concrete Topping Slab Crews,0.0,0.0,0.0,,80.0,80.0
100229433,CN.SWA5.1670,PH1 -WELD CLIPS - CLADDING STEEL - SWA5 - GL 6-3 - L LINE (DS AREA),TK_Complete,2024-02-20 07:00,2024-02-22 09:00,2024-02-20 07:00,2024-02-22 09:00,300.0,0.0,300.0,0.0,"Cladding Steel, Insulated Metal Panel - Prefab Crews",15.0,0.0,15.0,50 Ton Mobile Support Crane,315.0,315.0
100229442,EMB1250,IMPACT - SUW ELEVATOR 01 STEEL EMBEDS OFF - SWA5 - L4 - GL 6-1,TK_Complete,2023-10-16 15:00,2023-10-17 13:00,2023-08-16 07:00,2023-09-20 15:00,200.0,0.0,200.0,0.0,Precast Erect Crew SUP Col's/Bm's/Girders,25.0,0.0,25.0,LR-1400 400 Ton Crawler Crane,225.0,225.0
100229452,ANC3010,IMPACT - Missing Anchor Rods N2 2P - TR075 - TF1-SMT-SH-2214,TK_Complete,2024-01-22 07:00,2024-01-23 13:00,2024-01-02 07:00,2024-01-15 13:00,580.0,0.0,580.0,0.0,W&W DS/AD Infill Steel - West - Team A,58.0,0.0,58.0,"200-300 Ton Crawler, 55 Ton Mobile Support Crane",638.0,638.0
100229453,EMB6090,IMPACT [S.TIA-116] - MISSING OPENING (W&W INSTALL) MISSING TINDALL Embed - L4 - GL 3 N-M,TK_Complete,2023-10-09 07:00,2023-10-12 17:00,2023-11-03 07:00,2023-12-16 16:00,580.0,0.0,580.0,0.0,W&W DS/AD Infill Steel - West - Team A,58.0,0.0,58.0,"200-300 Ton Crawler, 55 Ton Mobile Support Crane",638.0,638.0
100229456,CN.SWA5.1690,K-LINE STEEL SPRAY FIREPROOFING SFRM2 - SWA5 - L3-CEILING - GL 6-3,TK_Complete,2024-04-29 07:00,2024-05-03 17:00,2024-04-20 07:00,2024-04-25 17:00,80.0,0.0,80.0,0.0,CIP Concrete Topping Slab Crews,0.0,0.0,0.0,,80.0,80.0
100229457,CN.SWA5.1700,AD STEEL PAINT FIREPROOFING IFRM - SWA5 - GL 3-6 - L-J - L2-CEILING,TK_Complete,2024-07-12 07:00,2024-07-18 17:00,2024-06-21 07:00,2024-06-24 17:00,80.0,0.0,80.0,0.0,CIP Concrete Topping Slab Crews,0.0,0.0,0.0,,80.0,80.0
100229458,CN.SWA5.1720,ROOFTOP DRY PARAPET - SWB-1 (DS AREA) GL 6-1 N (DS AREA),TK_Complete,2024-02-19 07:00,2024-02-23 17:00,2024-02-19 07:00,2024-02-23 17:00,300.0,0.0,300.0,0.0,"Cladding Steel, Insulated Metal Panel - Prefab Crews",15.0,0.0,15.0,50 Ton Mobile Support Crane,315.0,315.0
100229459,CN.SWA5.1730,INSTALL INSULATED METAL PANEL MODULES - GL 6-3 - J LINE (AD AREA),TK_Complete,2024-07-18 07:00,2024-07-19 17:00,2024-06-26 07:00,2024-06-26 17:00,80.0,0.0,80.0,0.0,CIP Concrete Topping Slab Crews,0.0,0.0,0.0,,80.0,80.0
100229463,CN.SWA5.1750,Drywall Clips & AMTS Installs Support Beams - SWA5 - GL 6-1 - K LINE - L4,TK_Complete,2024-03-18 07:00,2024-03-28 17:00,2024-03-18 07:00,2024-03-28 17:00,80.0,0.0,80.0,0.0,CIP Concrete Topping Slab Crews,0.0,0.0,0.0,,80.0,80.0
100229464,CN.SWA5.1760,DS STEEL SPRAY SFRM - SWA5 - GL 6-3 - K-L - L3 CEILING,TK_Complete,2024-05-24 07:00,2024-05-31 17:00,2024-05-24 07:00,2024-05-30 17:00,80.0,0.0,80.0,0.0,CIP Concrete Topping Slab Crews,0.0,0.0,0.0,,80.0,80.0
100229465,CN.SWA5.1770,ADD FLANGE EXTENSIONS/ CUT GRATING - SWA5 - GL 6-1 - K LINE - L4,TK_Complete,2024-03-12 07:00,2024-03-19 08:00,2024-03-12 07:00,2024-03-15 08:00,80.0,0.0,80.0,0.0,CIP Concrete Topping Slab Crews,0.0,0.0,0.0,,80.0,80.0
100229466,CN.SWA5.1780,AD STEEL APPLY INTUMESCENT - SWA5 - GL 6-3 - J-K - L3 CEILING,TK_Complete,2024-05-30 07:00,2024-06-04 17:00,2024-05-30 07:00,2024-06-03 17:00,80.0,0.0,80.0,0.0,CIP Concrete Topping Slab Crews,0.0,0.0,0.0,,80.0,80.0
100229467,CN.SWA5.1790,CURE AD INTUMESCENT PAINT - SWA5 - GL 6-3 - J-K - L4,TK_Complete,2024-06-03 07:00,2024-06-21 17:00,2024-06-03 07:00,2024-07-02 15:00,80.0,0.0,80.0,0.0,CIP Concrete Topping Slab Crews,0.0,0.0,0.0,,80.0,80.0
100229468,CN.SWA5.1800,SECAI - AMTS Installs UPPER CEILING  - SWA5 - GL 6-1 - K LINE - L4,TK_Complete,2024-09-27 07:00,2024-10-01 17:00,2024-07-01 07:00,2024-07-04 17:00,80.0,0.0,80.0,0.0,CIP Concrete Topping Slab Crews,0.0,0.0,0.0,,80.0,80.0
100229469,CN.SWA5.1830,IMPACT [C3] - BATHROOM PIT HATCH OPENING - SWA-5 - L1 - GL 3 (Waiting on Hatch framing),TK_Complete,2023-02-07 07:00,2023-02-10 17:00,2024-01-03 07:00,2024-03-29 17:00,646.0,0.0,646.0,0.0,CIP Concrete SOG Crews,19.0,0.0,19.0,50-75 Ton Mobile Support Crane,665.0,665.0
100229470,CN.SWA5.1840,IMPACT - STARCON COLUMNS & WELDING BASE PLATE - SWA5 - GL 6-1 - L4 - L-N - ROOF,TK_Complete,2024-01-29 07:00,2024-01-31 11:00,2024-01-23 07:00,2024-03-08 17:00,1120.0,0.0,1120.0,0.0,CIP Concrete Topping Slab Crews,0.0,0.0,0.0,,1120.0,1120.0
100229471,CN.SWA5.1870,IMPACT [C22] - SECAI / TINDALL TO FIX MISSING FORMSAVERS / TURNOVER TO YATES - SWA5 - GL 5.3 - L-N - L4 ROOF,TK_Complete,2024-02-09 09:00,2024-02-15 09:00,2024-01-11 09:00,2024-05-28 17:00,695.0,0.0,695.0,0.0,"W&W DS/AD Infill Steel - West - Team A, CIP Concrete Slab on Metal Deck Crews",58.0,0.0,58.0,"200-300 Ton Crawler, 55 Ton Mobile Support Crane",753.0,753.0
100229472,CN.SWA5.1880,PH1 - CLADDING STEEL  - SWA5 - GL 6-3 -  N LINE [SUP EXTERIOR WALL],TK_Complete,2024-02-08 07:00,2024-02-19 09:00,2024-02-08 07:00,2024-02-20 12:00,330.0,0.0,330.0,0.0,"Insulated Metal Panels - Lower Areas, Insulated Metal Panel - Prefab Crews",15.0,0.0,15.0,50 Ton Mobile Support Crane,345.0,345.0
100229482,CN.SWA5.1930,IMPACT - K-LINE STEEL SPRAY FIREPROOFING SFRM2 - SWA5 - SWA5 - L3-CEILING - GL 6-3,TK_Complete,2024-04-17 07:00,2024-04-19 17:00,2024-04-17 07:00,2024-04-19 17:00,80.0,0.0,80.0,0.0,CIP Concrete Topping Slab Crews,0.0,0.0,0.0,,80.0,80.0
100229483,CN.SWA5.8050,IMPACT - AD STEEL APPLY INTUMESCENT - SWA5 -L3 CEILING - GL 6-3/J-K - INSPECT - SURFACE PREP ADDITIONAL STEELS,TK_Complete,2024-05-14 07:00,2024-05-20 17:00,2024-05-14 07:00,2024-05-20 17:00,80.0,0.0,80.0,0.0,CIP Concrete Topping Slab Crews,0.0,0.0,0.0,,80.0,80.0
100229484,CN.SWA5.8060,IMPACT [C22] - SECAI / TINDALL TO LINE MISSING FORMSAVER / TURNOVER TO YATES - SWA5 - GL 5.3 - M LINE - L4 ROOF,TK_Complete,2024-02-09 09:00,2024-02-13 09:00,2024-01-11 09:00,2024-02-01 16:00,695.0,0.0,695.0,0.0,"W&W DS/AD Infill Steel - West - Team A, CIP Concrete Slab on Metal Deck Crews",58.0,0.0,58.0,"200-300 Ton Crawler, 55 Ton Mobile Support Crane",753.0,753.0
100229485,CN.SWA5.8090,INSTALL FRAMING FOR IMP - GL 6-1 - J LINE (AD AREA),TK_Complete,2024-06-13 07:00,2024-06-14 17:00,2024-05-01 07:00,2024-05-14 17:00,80.0,0.0,80.0,0.0,CIP Concrete Topping Slab Crews,0.0,0.0,0.0,,80.0,80.0
100229486,CN.SWA5.8100,IMPACT ENVIROMENTAL CONTROLS FOR INTUMSCENT - SWA5 - GL 6-3 - J-K - L3 CEILING,TK_Complete,2024-05-13 07:00,2024-05-17 17:00,2024-05-13 07:00,2024-05-25 17:00,80.0,0.0,80.0,0.0,CIP Concrete Topping Slab Crews,0.0,0.0,0.0,,80.0,80.0
100229489,CN.SWA5.9290,CURE - AD STEEL PAINT FIREPROOFING IFRM - SWA5 - GL 3-6 - L-J - L2-CEILING,TK_Complete,2024-07-19 07:00,2024-08-06 17:00,2024-06-25 07:00,2024-07-14 17:00,80.0,0.0,80.0,0.0,CIP Concrete Topping Slab Crews,0.0,0.0,0.0,,80.0,80.0
100229490,CN.SWA5.9300,PRIME & TOUCH UP AD STEEL - SWA5 - GL 3-6 - L-J - L2-CEILING,TK_Complete,2024-06-17 07:00,2024-06-20 17:00,2024-06-15 07:00,2024-06-20 17:00,80.0,0.0,80.0,0.0,CIP Concrete Topping Slab Crews,0.0,0.0,0.0,,80.0,80.0
100229491,CN.SWA5.9312,IMPACT - SECAI INSTALLING HANGER AND PIPE RACKS IN THE AREA - SWA5 - GL 3-6 - L-J - L2-CEILING,TK_Complete,2024-06-18 07:00,2024-06-25 17:00,2024-06-04 07:00,2024-06-19 17:00,80.0,0.0,80.0,0.0,CIP Concrete Topping Slab Crews,0.0,0.0,0.0,,80.0,80.0
100229582,CN.SWB5.10160,IMPACT - AWAIT RFI RESPONSE & SOUTH WALL KNEE WALL FIX - SW PENTHOUSE - SOUTH WALL,TK_Complete,2024-09-14 07:00,2024-09-24 17:00,2024-09-09 07:00,2024-10-02 17:00,580.0,0.0,580.0,0.0,W&W DS/AD Infill Steel - West - Team B,58.0,0.0,58.0,"200-300 Ton Crawler, 55 Ton Mobile Support Crane",638.0,638.0
100229624,CN.SWB5.10470,PH1- INSTALL EXPANSION BOARDS - SW PENTHOUSE - SOUTH,TK_Complete,2024-09-19 07:00,2024-09-19 17:00,2024-10-14 07:00,2024-10-19 07:00,580.0,0.0,580.0,0.0,W&W DS/AD Infill Steel - West - Team B,58.0,0.0,58.0,"200-300 Ton Crawler, 55 Ton Mobile Support Crane",638.0,638.0
100229625,CN.SWB5.10490,IMPACT - CURB DESIGN ISSUE - SW PENTHOUSE - SOUTH WALL,TK_Complete,2024-09-14 07:00,2024-09-24 17:00,2024-10-10 07:00,2024-10-25 17:00,580.0,0.0,580.0,0.0,W&W DS/AD Infill Steel - West - Team B,58.0,0.0,58.0,"200-300 Ton Crawler, 55 Ton Mobile Support Crane",638.0,638.0
100229671,CN.A1.UG.1320,PH1- UNDERGROUND PLUMBING SWB1,TK_Complete,2022-10-03 08:00,2022-10-07 08:00,2022-10-03 08:00,2022-10-07 08:00,748.0,0.0,748.0,0.0,CIP Concrete SOG Crews,22.0,0.0,22.0,50-75 Ton Mobile Support Crane,770.0,770.0
100229673,CN.A2.UG.1100,PH1- UNDERSLAB WATERPROOFING SWB1,TK_Complete,2022-10-03 07:00,2022-10-06 09:00,2022-10-03 07:00,2022-10-06 09:00,63.0,0.0,63.0,0.0,Precast Erect Main Columns,7.0,0.0,7.0,LR-1300 330 Ton Crawler Crane,70.0,70.0
100229674,CN.A2.UG.1110,PH1- WATERPROOF WALL SWB1,TK_Complete,2022-10-13 12:00,2022-10-17 12:00,2022-10-13 12:00,2022-10-18 14:00,63.0,0.0,63.0,0.0,Precast Erect Main Columns,7.0,0.0,7.0,LR-1300 330 Ton Crawler Crane,70.0,70.0
100229675,CN.A2.UG.1120,PH1- FRENCH DRAIN SWB1,TK_Complete,2022-10-13 12:00,2022-10-17 12:00,2022-10-13 12:00,2022-10-18 14:00,63.0,0.0,63.0,0.0,Precast Erect Main Columns,7.0,0.0,7.0,LR-1300 330 Ton Crawler Crane,70.0,70.0
100229677,CN.SWB1.1010,PH1-FRP GRADE BEAM - SWB1,TK_Complete,2022-09-27 07:00,2022-09-29 11:00,2022-09-27 07:00,2022-09-29 11:00,480.0,0.0,480.0,0.0,CIP Concrete SUP Pier Cap Crew,16.0,0.0,16.0,50-75 Ton Mobile Support Crane,496.0,496.0
100229678,CN.SWB1.1070,PH1- FRP SLAB - SWB-1-L2 - ELECTRICAL ROOM 2(Waiting for Expansion Joint),TK_Complete,2023-10-19 07:00,2023-10-21 11:00,2023-10-17 07:00,2023-10-19 12:00,280.0,0.0,280.0,0.0,CIP Concrete Slab on Metal Deck Crews,10.0,0.0,10.0,50-75 Ton Mobile Support Crane,290.0,290.0
100229679,CN.SWB1.1100,PH1- FRP SLAB - SWB-1-L3( Waiting on Expansion Joint),TK_Complete,2023-10-09 07:00,2023-10-11 11:00,2023-10-09 07:00,2023-10-12 11:00,280.0,0.0,280.0,0.0,CIP Concrete Slab on Metal Deck Crews,10.0,0.0,10.0,50-75 Ton Mobile Support Crane,290.0,290.0
100229680,CN.SWB1.1130,PH1- FRP SLAB - SWB-1-ROOF,TK_Complete,2023-08-16 07:00,2023-08-17 13:00,2023-08-16 07:00,2023-08-17 13:00,280.0,0.0,280.0,0.0,CIP Concrete Slab on Metal Deck Crews,10.0,0.0,10.0,50-75 Ton Mobile Support Crane,290.0,290.0
100229686,CN.SWB1.1110,PH1- 1st FLOOR SLAB - SWB-1-L1,TK_Complete,2022-10-06 09:00,2022-10-07 15:00,2022-10-06 09:00,2022-10-07 15:00,646.0,0.0,646.0,0.0,CIP Concrete SOG Crews,19.0,0.0,19.0,50-75 Ton Mobile Support Crane,665.0,665.0
100229687,CN.SWB1.1220,FRP TOPPING SLAB - SWB1- GL 18-21 - L-N - L4 ROOF,TK_Complete,2024-05-07 07:00,2024-05-13 17:00,2024-04-15 07:00,2024-04-18 17:00,80.0,0.0,80.0,0.0,CIP Concrete Topping Slab Crews,0.0,0.0,0.0,,80.0,80.0
100229688,CN.SWB1.1240,LAYOUT & INSTALL DOWELS - SWB-1-ROOF GL 18-21 K-N,TK_Complete,2023-11-13 07:00,2023-11-13 15:00,2023-11-13 07:00,2023-11-13 15:00,400.0,0.0,400.0,0.0,CIP Concrete Topping Slab Crews,0.0,0.0,0.0,,400.0,400.0
100229689,CN.SWB1.1040,PH1-FRP PIT WALLS - SWB1,TK_Complete,2022-10-07 15:00,2022-10-14 11:00,2022-10-07 15:00,2022-10-15 14:00,782.0,0.0,782.0,0.0,CIP Concrete Pit Crews,23.0,0.0,23.0,50-75 Ton Mobile Support Crane,805.0,805.0
100229691,CN.SWB1.1060,TIER 1 ERECT PRECAST COLUMNS & BEAMS - SWB1,TK_Complete,2023-05-01 13:00,2023-05-08 09:00,2023-05-01 13:00,2023-05-27 16:00,192.0,0.0,192.0,0.0,Precast Erect Crew SUP Col's/Bm's/Girders,24.0,0.0,24.0,LR-1400 400 Ton Crawler Crane,216.0,216.0
100229692,CN.SWB1.1160,PH1-ROOF LAYER PARAPET - SWB1 GL 18-21 K-N,TK_Complete,2023-11-14 07:00,2023-11-14 15:00,2023-11-14 07:00,2023-11-14 15:00,64.0,0.0,64.0,0.0,Precast Erect Crew SUP Col's/Bm's/Girders,8.0,0.0,8.0,185 Ton Crawler Crane Unload/Handle Waffles,72.0,72.0
100229693,CN.SWB1.1180,PH1-FLUID APPLIED MEMBRANE ROOFING - SWB1 GL 18-21 K-N,TK_Complete,2023-11-17 15:00,2023-11-18 13:00,2023-11-17 15:00,2023-11-18 14:00,112.0,0.0,112.0,0.0,SUP Bldg Roofing Membrane Crew,0.0,0.0,0.0,,112.0,112.0
100229694,CN.SWB1.1190,PH1 - CLADDING STEEL INTERIOR GL 18-21 - K LINE (AD AREA),TK_Complete,2024-03-04 15:00,2024-03-11 09:00,2024-03-04 07:00,2024-03-20 17:00,300.0,0.0,300.0,0.0,"Cladding Steel, Insulated Metal Panel - Prefab Crews",15.0,0.0,15.0,50 Ton Mobile Support Crane,315.0,315.0
100229695,CN.SWB1.1210,PH1 - INSTALL INSULATED METAL PANEL MODULES - GL 19.5-21 - L LINE (DS AREA),TK_Complete,2024-06-22 07:00,2024-07-01 17:00,2024-06-19 07:00,2024-06-27 17:00,300.0,0.0,300.0,0.0,"Cladding Steel, Insulated Metal Panel - Prefab Crews",15.0,0.0,15.0,50 Ton Mobile Support Crane,315.0,315.0
100229696,CN.SWB1.1170,PH1 - CLADDING STEEL  - SWB-1 N Line [SUP EXTERIOR WALL],TK_Complete,2023-10-20 09:00,2023-10-27 15:00,2023-10-20 09:00,2023-11-02 09:00,330.0,0.0,330.0,0.0,"Insulated Metal Panels - Lower Areas, Insulated Metal Panel - Prefab Crews",15.0,0.0,15.0,50 Ton Mobile Support Crane,345.0,345.0
100229697,CN.SWB1.1200,INSTALL INSULATED METAL PANEL MODULES(LOADING PLATFORM ) - GL 18-19.5 -N LINE [SUP EXTERIOR WALL],TK_Complete,2024-11-14 07:00,2024-11-22 17:00,2024-12-05 07:00,2025-03-28 16:00,330.0,0.0,330.0,0.0,"Insulated Metal Panels - Lower Areas, Insulated Metal Panel - Prefab Crews",15.0,0.0,15.0,50 Ton Mobile Support Crane,345.0,345.0
100229698,CN.SWB1.1140,PH1- AD STEEL FRAME INSTALL - SWB-1 fab side,TK_Complete,2023-08-28 07:00,2023-09-02 15:00,2023-08-24 07:00,2023-09-08 09:00,580.0,0.0,580.0,0.0,W&W DS/AD Infill Steel - West - Team B,58.0,0.0,58.0,"200-300 Ton Crawler, 55 Ton Mobile Support Crane",638.0,638.0
100229715,CN.SWB1.1360,PH1- TOPPING SLAB w TRENCH & ANGLE EMBEDS- SWB-1-L1 GL 18-21 K-N,TK_Complete,2024-02-03 14:00,2024-02-06 08:00,2024-01-21 08:00,2024-01-25 11:00,80.0,0.0,80.0,0.0,CIP Concrete Topping Slab Crews,0.0,0.0,0.0,,80.0,80.0
100229716,CN.SWB1.1370,PH1- DS/AD DECKING & DETAILING GL 18 - 21 J-K - DS/ AD SWB-1 L6,TK_Complete,2023-12-11 07:00,2023-12-15 17:00,2023-12-11 07:00,2023-12-12 17:00,580.0,0.0,580.0,0.0,W&W DS/AD Infill Steel - West - Team B,58.0,0.0,58.0,"200-300 Ton Crawler, 55 Ton Mobile Support Crane",638.0,638.0
100229717,CN.SWB1.1380,PH1- DS/AD FRP SLAB - DS/ AD SWB-1 - L4/E  GL 18 - 21 J-K,TK_Complete,2024-01-22 07:00,2024-01-24 11:00,2024-01-21 07:00,2024-01-23 15:00,695.0,0.0,695.0,0.0,"W&W DS/AD Infill Steel - West - Team B, CIP Concrete Slab on Metal Deck Crews",58.0,0.0,58.0,"200-300 Ton Crawler, 55 Ton Mobile Support Crane",753.0,753.0
100229718,CN.SWB1.1390,AD WATERPROOFING - SWB1 - GL 18-21 - J-K - L4/E,TK_Complete,2024-06-28 07:00,2024-07-17 17:00,2024-06-26 07:00,2024-07-01 17:00,580.0,0.0,580.0,0.0,W&W DS/AD Infill Steel - West - Team B,58.0,0.0,58.0,"200-300 Ton Crawler, 55 Ton Mobile Support Crane",638.0,638.0
100229719,CN.SWB1.1400,AD TOPPING SLAB - SWB1 - GL 18-21 - J-K - L4/E,TK_Complete,2024-07-26 07:00,2024-07-31 17:00,2024-07-01 07:00,2024-07-02 17:00,580.0,0.0,580.0,0.0,W&W DS/AD Infill Steel - West - Team B,58.0,0.0,58.0,"200-300 Ton Crawler, 55 Ton Mobile Support Crane",638.0,638.0
100229720,TIER 21.1060,TIER 2 GROUT PRECAST COLUMNS & BEAMS - SWB1,TK_Complete,2023-07-24 07:00,2023-07-31 12:00,2023-07-10 07:00,2023-08-03 12:00,192.0,0.0,192.0,0.0,Precast Erect Crew SUP Col's/Bm's/Girders,24.0,0.0,24.0,LR-1400 400 Ton Crawler Crane,216.0,216.0
100229725,CN.SWB1.1470,PH1- DS/AD DECKING & DECKING GL 18 - 21 J-K DS/ AD SWB-1  L4&L4/E,TK_Complete,2024-01-17 07:00,2024-01-21 15:00,2024-01-16 07:00,2024-01-20 09:00,580.0,0.0,580.0,0.0,W&W DS/AD Infill Steel - West - Team B,58.0,0.0,58.0,"200-300 Ton Crawler, 55 Ton Mobile Support Crane",638.0,638.0
100229728,CN.SWB1.1490,PH1- DS STEEL FRAME INSTALL - SWB-1 Comeback Sup Side,TK_Complete,2023-09-18 07:00,2023-09-22 09:00,2023-09-15 07:00,2023-09-19 09:00,580.0,0.0,580.0,0.0,W&W DS/AD Infill Steel - West - Team B,58.0,0.0,58.0,"200-300 Ton Crawler, 55 Ton Mobile Support Crane",638.0,638.0
100229730,CN.SWB1.1510,PH1- EXTERIOR CURBS - SWB-1-L1,TK_Complete,2023-10-24 07:00,2023-10-28 09:00,2023-10-24 07:00,2023-10-28 10:00,80.0,0.0,80.0,0.0,CIP Concrete Topping Slab Crews,0.0,0.0,0.0,,80.0,80.0
100229731,CN.SWB1.1520,PH1- MEP PADS - SWB-1-L1- MCC RM & I/O RM GL 18-21 K-N,TK_Complete,2024-06-07 07:00,2024-06-13 17:00,2024-02-13 07:00,2024-02-23 17:00,80.0,0.0,80.0,0.0,CIP Concrete Topping Slab Crews,0.0,0.0,0.0,,80.0,80.0
100229746,SUWPIT12-20-1,PIT DECKING - SWB-1 - L1 - GL 12-20 GL 12 L-N,TK_Complete,2024-04-01 15:00,2024-04-04 17:00,2024-02-09 15:00,2024-02-11 15:00,580.0,0.0,580.0,0.0,W&W DS/AD Infill Steel - West - Team B,58.0,0.0,58.0,"200-300 Ton Crawler, 55 Ton Mobile Support Crane",638.0,638.0
100229747,SUWPIT18-19,ADDED SOUTH PIT PLATFORM / RAMP STEEL DETAIL & INSTALL - SWB-1 - L1 - GL 17-15 L-N,TK_Complete,2024-01-23 13:00,2024-02-01 13:00,2024-01-23 13:00,2024-02-08 17:00,580.0,0.0,580.0,0.0,W&W DS/AD Infill Steel - West - Team B,58.0,0.0,58.0,"200-300 Ton Crawler, 55 Ton Mobile Support Crane",638.0,638.0
100229748,SUWPIT12-20-2,FRP SLAB - SWB-1-L1 - PIT - GL 12-20 L-N,TK_Complete,2024-04-08 07:00,2024-04-15 08:00,2024-02-12 08:00,2024-02-13 09:00,80.0,0.0,80.0,0.0,CIP Concrete Topping Slab Crews,0.0,0.0,0.0,,80.0,80.0
100229751,CN.SWB1.4560,PH1 - CLADDING STEEL  EXTERIOR  - SWB-1 L LINE (DS AREA) GL 18-21,TK_Complete,2024-02-05 07:00,2024-02-15 13:00,2024-02-01 07:00,2024-02-09 16:00,300.0,0.0,300.0,0.0,"Cladding Steel, Insulated Metal Panel - Prefab Crews",15.0,0.0,15.0,50 Ton Mobile Support Crane,315.0,315.0
100229752,EMB1021,"IMPACT - Missing Precast Embeds (2) L19 and L20 Level 2, 3, & 4 (#21)",TK_Complete,2023-09-16 08:00,2023-09-17 14:00,2023-09-09 08:00,2023-09-10 08:00,580.0,0.0,580.0,0.0,W&W DS/AD Infill Steel - West - Team B,58.0,0.0,58.0,"200-300 Ton Crawler, 55 Ton Mobile Support Crane",638.0,638.0
100229753,EMB1002,IMPACT - Missing Precast Embed Between GL19 L18 and L19 Level 4 (#02),TK_Complete,2023-09-16 08:00,2023-09-17 14:00,2023-09-11 08:00,2023-09-12 16:00,580.0,0.0,580.0,0.0,W&W DS/AD Infill Steel - West - Team B,58.0,0.0,58.0,"200-300 Ton Crawler, 55 Ton Mobile Support Crane",638.0,638.0
100229754,ANC2000,IMPACT - Missing Anchor Rods GL L18 (#2000),TK_Complete,2023-09-16 08:00,2023-09-17 14:00,2023-09-13 08:00,2023-09-14 16:00,580.0,0.0,580.0,0.0,W&W DS/AD Infill Steel - West - Team B,58.0,0.0,58.0,"200-300 Ton Crawler, 55 Ton Mobile Support Crane",638.0,638.0
100229755,CN.SWB1.4570,PH1- DS/AD DECKING & DETAILING GL 18 - 21 - DS/ AD SWB-1 L2,TK_Complete,2023-09-16 08:00,2023-09-21 16:00,2023-09-20 08:00,2023-09-25 17:00,580.0,0.0,580.0,0.0,W&W DS/AD Infill Steel - West - Team B,58.0,0.0,58.0,"200-300 Ton Crawler, 55 Ton Mobile Support Crane",638.0,638.0
100229756,CN.SWB1.4580,PH1- DS/AD FRP SLAB - SWB-1  L3  GL 18 - 21 J-K,TK_Complete,2023-12-07 07:00,2023-12-14 11:00,2023-12-07 07:00,2023-12-08 15:00,695.0,0.0,695.0,0.0,"W&W DS/AD Infill Steel - West - Team B, CIP Concrete Slab on Metal Deck Crews",58.0,0.0,58.0,"200-300 Ton Crawler, 55 Ton Mobile Support Crane",753.0,753.0
100229769,CN.SWB1.4600,PH1 -WELD CLIPS - CLADDING STEEL - SWB-1 L LINE (DS AREA) GL 18-21,TK_Complete,2023-12-18 15:00,2023-12-19 17:00,2023-12-13 15:00,2023-12-15 17:00,300.0,0.0,300.0,0.0,"Cladding Steel, Insulated Metal Panel - Prefab Crews",15.0,0.0,15.0,50 Ton Mobile Support Crane,315.0,315.0
100229791,CN.SWB1.4860,ROOFTOP DRY PARAPET - SWB-1 (DS AREA) GL 18-21 N (DS AREA),TK_Complete,2024-02-26 07:00,2024-03-01 17:00,2024-02-26 07:00,2024-02-28 17:00,300.0,0.0,300.0,0.0,"Cladding Steel, Insulated Metal Panel - Prefab Crews",15.0,0.0,15.0,50 Ton Mobile Support Crane,315.0,315.0
100229792,CN.SWB1.4870,INSTALL INSULATED METAL PANEL MODULES - GL 18-21 - J LINE (AD AREA),TK_Complete,2024-06-27 07:00,2024-06-28 17:00,2024-06-19 07:00,2024-06-19 17:00,580.0,0.0,580.0,0.0,W&W DS/AD Infill Steel - West - Team B,58.0,0.0,58.0,"200-300 Ton Crawler, 55 Ton Mobile Support Crane",638.0,638.0
100229793,CN.SWB1.4880,INSTALL TPO ROOFING - SWB1 - GL 19-22 - K-L - L6,TK_Complete,2024-10-14 07:00,2024-10-18 17:00,2024-10-14 07:00,2024-10-18 17:00,580.0,0.0,580.0,0.0,W&W DS/AD Infill Steel - West - Team B,58.0,0.0,58.0,"200-300 Ton Crawler, 55 Ton Mobile Support Crane",638.0,638.0
100229804,CN.SWB1.5010,INSTALL RAISED ACCESS FLOORING- I/O FAB110313 - SUW - L1 - GL M/18,TK_Complete,2025-03-03 07:00,2025-03-11 17:00,2025-03-03 07:00,2025-03-05 17:00,646.0,0.0,646.0,0.0,CIP Concrete SOG Crews,19.0,0.0,19.0,50-75 Ton Mobile Support Crane,665.0,665.0
100229805,CN.SWB1.5030,IMPACT [C25] - ROOF DRAIN IN THE WAY - SWB-1-L1- GL 18-19 M-N,TK_Complete,2024-01-29 07:00,2024-02-01 17:00,2024-01-23 07:00,2024-02-01 17:00,80.0,0.0,80.0,0.0,CIP Concrete Topping Slab Crews,0.0,0.0,0.0,,80.0,80.0
100229806,CN.SWB1.5040,IMPACT [C23] - EXPANSION JOINT DETAIL (C23) - SWB-1 L4 & L4/E GL 19 J-K,TK_Complete,2024-01-22 07:00,2024-01-24 11:00,2024-01-21 07:00,2024-07-31 17:00,695.0,0.0,695.0,0.0,"W&W DS/AD Infill Steel - West - Team B, CIP Concrete Slab on Metal Deck Crews",58.0,0.0,58.0,"200-300 Ton Crawler, 55 Ton Mobile Support Crane",753.0,753.0
100229808,CN.SWB1.5060,WWSE SOMD PENETRATIONS - SWB1 - GL 3-33 - L-N - L4E,TK_Complete,2024-04-15 11:00,2024-05-13 15:00,2024-03-15 11:00,2024-03-30 15:00,580.0,0.0,580.0,0.0,W&W DS/AD Infill Steel - West - Team B,58.0,0.0,58.0,"200-300 Ton Crawler, 55 Ton Mobile Support Crane",638.0,638.0
100229809,CN.SWB1.5070,LATCON / VELTRI SOMD ROOF DRAIN PENETRATION SUPPORT STEEL - SUW - GL 3-33 - L-J - L6,TK_Complete,2024-09-06 07:00,2024-10-04 17:00,2024-07-22 07:00,2024-10-31 17:00,580.0,0.0,580.0,0.0,W&W DS/AD Infill Steel - West - Team B,58.0,0.0,58.0,"200-300 Ton Crawler, 55 Ton Mobile Support Crane",638.0,638.0
100229810,CN.SWB1.5120,IMPACT [S.TIA-45] - STARCON EQUIPMENT & MATERIALS IMPACTING TOPPING SLAB - GL 18-23,TK_Complete,2024-03-04 07:00,2024-03-11 17:00,2024-02-01 07:00,2024-03-02 15:00,80.0,0.0,80.0,0.0,CIP Concrete Topping Slab Crews,0.0,0.0,0.0,,80.0,80.0
100229813,CN.SWB1.5250,INSTALL FRAMING FOR IMP - GL 18-21 - J LINE (AD AREA),TK_Complete,2024-05-30 07:00,2024-05-31 17:00,2024-05-01 07:00,2024-05-14 17:00,580.0,0.0,580.0,0.0,W&W DS/AD Infill Steel - West - Team B,58.0,0.0,58.0,"200-300 Ton Crawler, 55 Ton Mobile Support Crane",638.0,638.0
100229817,CN.SWB1.5290,REMAINING INSTALL INSULATED METAL PANEL MODULES - GL 19.5-18.5 - L LINE (DS AREA),TK_Complete,2024-11-18 07:00,2024-11-22 17:00,2024-11-18 07:00,2024-11-27 17:00,300.0,0.0,300.0,0.0,"Cladding Steel, Insulated Metal Panel - Prefab Crews",15.0,0.0,15.0,50 Ton Mobile Support Crane,315.0,315.0
100229822,CN.SWB1.5320,DS ROOF PARAPET DRY IN - SWB1 - GL 18-21 - K-L - L6,TK_Complete,2024-09-13 07:00,2024-10-01 17:00,2024-08-26 07:00,2024-09-12 17:00,580.0,0.0,580.0,0.0,W&W DS/AD Infill Steel - West - Team B,58.0,0.0,58.0,"200-300 Ton Crawler, 55 Ton Mobile Support Crane",638.0,638.0
100229823,CN.SWB1.5330,IMPACT - EXPANSION JOINT PARAPET DETAIL - SWB1 - GL 19-22 - K-L - L6,TK_Complete,2024-10-21 07:00,2024-11-07 17:00,2024-09-09 07:00,2024-10-12 17:00,580.0,0.0,580.0,0.0,W&W DS/AD Infill Steel - West - Team B,58.0,0.0,58.0,"200-300 Ton Crawler, 55 Ton Mobile Support Crane",638.0,638.0
100229824,CN.SWB1.5400,IMPACT - EXPANSION JOIN CORRECTION (LOADING PLATFORM ) - GL 18-19.5 -N LINE [SUP EXTERIOR WALL],TK_Complete,2024-11-14 07:00,2024-11-21 17:00,2024-12-05 07:00,2025-02-25 17:00,330.0,0.0,330.0,0.0,"Insulated Metal Panels - Lower Areas, Insulated Metal Panel - Prefab Crews",15.0,0.0,15.0,50 Ton Mobile Support Crane,345.0,345.0
100229825,CN.SWB1.5410,IMPACT - AWAINING LOUVER DESINGN & IOCC APPROVAL (LOADING PLATFORM ) - GL 18-19.5 -N LINE [SUP EXTERIOR WALL],TK_Complete,2024-11-14 07:00,2024-11-21 17:00,2024-12-05 07:00,2025-02-25 17:00,330.0,0.0,330.0,0.0,"Insulated Metal Panels - Lower Areas, Insulated Metal Panel - Prefab Crews",15.0,0.0,15.0,50 Ton Mobile Support Crane,345.0,345.0
100229826,CN.SWB1.5440,IMPACT-TARPS IN THE WAY FOR WEATHER (LOADING PLATFORM ) - GL 18-19.5 -N LINE [SUP EXTERIOR WALL],TK_Complete,2024-11-14 07:00,2024-11-21 17:00,2025-01-13 07:00,2025-01-23 17:00,330.0,0.0,330.0,0.0,"Insulated Metal Panels - Lower Areas, Insulated Metal Panel - Prefab Crews",15.0,0.0,15.0,50 Ton Mobile Support Crane,345.0,345.0
100229827,CN.SWB1.5450,IMPACT-PAINT BOLTS (LOADING PLATFORM ) - GL 18-19.5 -N LINE [SUP EXTERIOR WALL],TK_Complete,2025-02-26 07:00,2025-02-28 17:00,2025-02-26 07:00,2025-02-28 17:00,330.0,0.0,330.0,0.0,"Insulated Metal Panels - Lower Areas, Insulated Metal Panel - Prefab Crews",15.0,0.0,15.0,50 Ton Mobile Support Crane,345.0,345.0
100229828,CN.SWB1.5460,IMPACT - AWAINING LOUVER INFILL STEEL & IMP (LOADING PLATFORM ) - GL 18-19.5 -N LINE [SUP EXTERIOR WALL],TK_Complete,2025-05-12 07:00,2025-05-12 17:00,2025-04-15 07:00,2025-04-16 07:00,330.0,0.0,330.0,0.0,"Insulated Metal Panels - Lower Areas, Insulated Metal Panel - Prefab Crews",15.0,0.0,15.0,50 Ton Mobile Support Crane,345.0,345.0
100229829,CN.A1.UG.1340,PH1- UNDERGROUND PLUMBING SWB2,TK_Complete,2022-09-07 08:00,2022-09-11 08:00,2022-09-07 08:00,2022-09-12 10:00,748.0,0.0,748.0,0.0,CIP Concrete SOG Crews,22.0,0.0,22.0,50-75 Ton Mobile Support Crane,770.0,770.0
100229831,CN.A2.UG.1130,PH1- UNDERSLAB WATERPROOFING SWB2,TK_Complete,2022-10-14 09:00,2022-10-18 09:00,2022-10-14 09:00,2022-10-20 11:00,63.0,0.0,63.0,0.0,Precast Erect Main Columns,7.0,0.0,7.0,LR-1300 330 Ton Crawler Crane,70.0,70.0
100229832,CN.A2.UG.1140,PH1- WATERPROOF WALL SWB2,TK_Complete,2022-11-10 11:00,2022-11-20 17:00,2022-11-10 11:00,2022-11-23 11:00,63.0,0.0,63.0,0.0,Precast Erect Main Columns,7.0,0.0,7.0,LR-1300 330 Ton Crawler Crane,70.0,70.0
100229833,CN.A2.UG.1150,PH1- FRENCH DRAIN SWB2,TK_Complete,2022-11-21 07:00,2022-11-27 17:00,2022-11-21 07:00,2022-11-28 17:00,63.0,0.0,63.0,0.0,Precast Erect Main Columns,7.0,0.0,7.0,LR-1300 330 Ton Crawler Crane,70.0,70.0
100229834,CN.SWB2.1010,PH1-FRP GRADE BEAM - SWB2,TK_Complete,2022-10-06 11:24,2022-10-08 15:24,2022-10-06 11:24,2022-10-10 07:24,480.0,0.0,480.0,0.0,CIP Concrete SUP Pier Cap Crew,16.0,0.0,16.0,50-75 Ton Mobile Support Crane,496.0,496.0
100229837,CN.SWB2.1060,PH1- FRP SLAB - SWB-2-L2 -,TK_Complete,2023-07-24 07:00,2023-07-26 11:00,2023-07-19 07:00,2023-07-21 11:00,280.0,0.0,280.0,0.0,CIP Concrete Slab on Metal Deck Crews,10.0,0.0,10.0,50-75 Ton Mobile Support Crane,290.0,290.0
100229838,CN.SWB2.1090,PH1- FRP SLAB - SWB-2-L3,TK_Complete,2023-08-28 07:00,2023-08-31 11:00,2023-08-28 07:00,2023-08-31 11:00,280.0,0.0,280.0,0.0,CIP Concrete Slab on Metal Deck Crews,10.0,0.0,10.0,50-75 Ton Mobile Support Crane,290.0,290.0
100229839,CN.SWB2.1120,PH1- FRP SLAB - SWB-2-ROOF,TK_Complete,2023-08-28 07:00,2023-08-31 11:00,2023-08-28 07:00,2023-08-31 07:00,280.0,0.0,280.0,0.0,CIP Concrete Slab on Metal Deck Crews,10.0,0.0,10.0,50-75 Ton Mobile Support Crane,290.0,290.0
100229843,CN.SWB2.1100,PH1- 1st FLOOR SLAB - SWB-2-L1,TK_Complete,2022-10-20 11:00,2022-10-30 17:00,2022-10-20 11:00,2022-11-03 11:00,646.0,0.0,646.0,0.0,CIP Concrete SOG Crews,19.0,0.0,19.0,50-75 Ton Mobile Support Crane,665.0,665.0
100229844,CN.SWB2.1230,MEP EQPT PADS (LAYOUT & INSTALL DOWELS)- SWB-2-ROOF,TK_Complete,2023-09-28 07:00,2023-09-30 11:00,2023-09-28 07:00,2023-09-30 12:00,400.0,0.0,400.0,0.0,CIP Concrete Topping Slab Crews,0.0,0.0,0.0,,400.0,400.0
100229845,CN.SWB2.1040,PH1-FRP PIT WALLS - SWB2,TK_Complete,2022-10-31 15:00,2022-11-07 11:00,2022-10-31 15:00,2022-11-08 13:00,680.0,0.0,680.0,0.0,CIP Concrete Pit Crews,20.0,0.0,20.0,50-75 Ton Mobile Support Crane,700.0,700.0
100229847,CN.SWB2.1050,TIER 1 ERECT PRECAST COLUMNS & BEAMS - SWB2,TK_Complete,2023-05-09 11:00,2023-05-15 17:00,2023-05-01 11:00,2023-05-30 17:00,200.0,0.0,200.0,0.0,Precast Erect Crew SUP Col's/Bm's/Girders,25.0,0.0,25.0,LR-1400 400 Ton Crawler Crane,225.0,225.0
100229848,CN.SWB2.1150,PH1-ROOF LAYER PARAPET - SWB2,TK_Complete,2024-01-23 08:00,2024-01-24 14:00,2024-01-23 08:00,2024-01-24 14:00,64.0,0.0,64.0,0.0,Precast Erect Crew SUP Col's/Bm's/Girders,8.0,0.0,8.0,185 Ton Crawler Crane Unload/Handle Waffles,72.0,72.0
100229849,CN.SWB2.1170,PH1-FLUID APPLIED MEMBRANE ROOFING - SWB2,TK_Complete,2023-10-05 11:00,2023-10-08 13:00,2023-10-05 11:00,2023-10-08 16:00,112.0,0.0,112.0,0.0,SUP Bldg Roofing Membrane Crew,0.0,0.0,0.0,,112.0,112.0
100229850,CN.SWB2.1180,PH1 - CLADDING STEEL  INTERIOR GL 21-24 - K LINE (AD AREA),TK_Complete,2024-03-04 08:00,2024-03-09 14:00,2024-03-04 08:00,2024-03-27 13:00,300.0,0.0,300.0,0.0,"Cladding Steel, Insulated Metal Panel - Prefab Crews",15.0,0.0,15.0,50 Ton Mobile Support Crane,315.0,315.0
100229851,CN.SWB2.1210,PH1 - INSTALL INSULATED METAL PANEL MODULES - GL 21-24 - L LINE (DS AREA),TK_Complete,2024-05-25 07:00,2024-06-03 17:00,2024-05-25 07:00,2024-06-18 17:00,300.0,0.0,300.0,0.0,"Cladding Steel, Insulated Metal Panel - Prefab Crews",15.0,0.0,15.0,50 Ton Mobile Support Crane,315.0,315.0
100229852,CN.SWB2.1160,PH1 - CLADDING STEEL  - SWB-2 N Line [SUP EXTERIOR WALL],TK_Complete,2023-11-06 09:00,2023-11-13 11:00,2023-11-06 09:00,2023-11-10 15:00,330.0,0.0,330.0,0.0,"Insulated Metal Panels - Lower Areas, Insulated Metal Panel - Prefab Crews",15.0,0.0,15.0,50 Ton Mobile Support Crane,345.0,345.0
100229853,CN.SWB2.1190,INSTALL INSULATED METAL PANEL MODULES - GL 21-24 - N LINE [SUP EXTERIOR WALL],TK_Complete,2024-05-04 07:00,2024-05-14 17:00,2024-04-30 07:00,2024-05-22 17:00,330.0,0.0,330.0,0.0,"Insulated Metal Panels - Lower Areas, Insulated Metal Panel - Prefab Crews",15.0,0.0,15.0,50 Ton Mobile Support Crane,345.0,345.0
100229854,CN.SWB2.1130,PH1- AD STEEL FRAME INSTALL - SWB-2 fab side,TK_Complete,2023-09-16 08:00,2023-09-18 12:00,2023-09-16 08:00,2023-09-18 15:00,580.0,0.0,580.0,0.0,W&W DS/AD Infill Steel - West - Team B,58.0,0.0,58.0,"200-300 Ton Crawler, 55 Ton Mobile Support Crane",638.0,638.0
100229868,CN.SWB2.1340,PH1- TOPPING SLAB w TRENCH & ANGLE EMBEDS- SWB-2-L1,TK_Complete,2023-10-30 07:00,2023-11-03 11:00,2023-10-30 07:00,2023-11-03 11:00,80.0,0.0,80.0,0.0,CIP Concrete Topping Slab Crews,0.0,0.0,0.0,,80.0,80.0
100229869,CN.SWB2.1350,PH1- DS/AD DECKING & DETAILING GL 21 - 24  DS/AD SWB-2  L6 GL 21-24 J-K,TK_Complete,2023-12-04 07:00,2023-12-08 17:00,2023-11-27 07:00,2023-11-29 17:00,580.0,0.0,580.0,0.0,W&W DS/AD Infill Steel - West - Team B,58.0,0.0,58.0,"200-300 Ton Crawler, 55 Ton Mobile Support Crane",638.0,638.0
100229870,CN.SWB2.1360,PH1- DS/AD FRP SLAB - DS/AD SWB-2 - L4/E GL 21-24 J-K,TK_Complete,2024-01-22 07:00,2024-01-24 11:00,2024-01-21 07:00,2024-01-23 15:00,115.0,0.0,115.0,0.0,CIP Concrete Slab on Metal Deck Crews,0.0,0.0,0.0,,115.0,115.0
100229871,CN.SWB2.1370,AD WATERPROOFING - SWB2 - GL 21-24 - J-K - L4/E,TK_Complete,2024-06-28 07:00,2024-07-17 17:00,2024-06-26 07:00,2024-07-01 17:00,580.0,0.0,580.0,0.0,W&W DS/AD Infill Steel - West - Team B,58.0,0.0,58.0,"200-300 Ton Crawler, 55 Ton Mobile Support Crane",638.0,638.0
100229872,CN.SWB2.1380,AD TOPPING SLAB - SWB2 - GL 21-24 - J-K - L4/E,TK_Complete,2024-07-26 07:00,2024-07-31 17:00,2024-07-01 07:00,2024-07-02 17:00,580.0,0.0,580.0,0.0,W&W DS/AD Infill Steel - West - Team B,58.0,0.0,58.0,"200-300 Ton Crawler, 55 Ton Mobile Support Crane",638.0,638.0
100229873,TIER 22.1054,TIER 2 GROUT PRECAST COLUMNS & BEAMS - SWB2,TK_Complete,2023-08-19 11:00,2023-08-22 13:00,2023-08-04 11:00,2023-08-10 14:00,200.0,0.0,200.0,0.0,Precast Erect Crew SUP Col's/Bm's/Girders,25.0,0.0,25.0,LR-1400 400 Ton Crawler Crane,225.0,225.0
100229881,CN.SWB2.1450,PH1- DS/AD DECKING & DETAILING GL 21 - 24  DS/AD SWB-2  L4 & L4/E GL 21-24 J-K,TK_Complete,2024-01-18 07:00,2024-01-21 09:00,2024-01-18 07:00,2024-01-20 13:00,580.0,0.0,580.0,0.0,W&W DS/AD Infill Steel - West - Team B,58.0,0.0,58.0,"200-300 Ton Crawler, 55 Ton Mobile Support Crane",638.0,638.0
100229884,CN.SWB2.1470,PH1- DS STEEL FRAME INSTALL - SWB-2 Comeback Sup Side,TK_Complete,2023-09-21 11:00,2023-09-23 15:00,2023-09-21 11:00,2023-09-23 16:00,580.0,0.0,580.0,0.0,W&W DS/AD Infill Steel - West - Team B,58.0,0.0,58.0,"200-300 Ton Crawler, 55 Ton Mobile Support Crane",638.0,638.0
100229885,CN.SWB2.1480,PH1- EXTERIOR CURBS - SWB-2-L1,TK_Complete,2023-10-30 07:00,2023-11-05 15:00,2023-10-30 07:00,2023-11-02 09:00,80.0,0.0,80.0,0.0,CIP Concrete Topping Slab Crews,0.0,0.0,0.0,,80.0,80.0
100229886,CN.SWB2.1490,PH1- MEP PADS - SWB-2-L1,TK_Complete,2023-11-03 11:00,2023-11-08 09:00,2023-11-03 11:00,2023-11-08 13:00,80.0,0.0,80.0,0.0,CIP Concrete Topping Slab Crews,0.0,0.0,0.0,,80.0,80.0
100229904,EMB1020,IMPACT - Missing 3 Precast Embeds - N23 and M23 1A (36),TK_Complete,2023-11-27 07:00,2023-11-28 13:00,2023-09-19 07:00,2023-12-02 13:00,580.0,0.0,580.0,0.0,W&W DS/AD Infill Steel - West - Team B,58.0,0.0,58.0,"200-300 Ton Crawler, 55 Ton Mobile Support Crane",638.0,638.0
100229905,ANC1008,IMPACT [CL 23] - Missing EMBED IN COLUMN FOR DS/AD STEEL - GL L23 Level 3A (33),TK_Complete,2023-10-30 07:00,2023-11-04 17:00,2023-08-02 07:00,2023-10-18 10:00,580.0,0.0,580.0,0.0,W&W DS/AD Infill Steel - West - Team B,58.0,0.0,58.0,"200-300 Ton Crawler, 55 Ton Mobile Support Crane",638.0,638.0
100229906,CN.SWB2.4700,PH1- DS/AD DECKING & DETAILING GL 21 - 24 DS/AD SWB-2 L2,TK_Complete,2023-09-29 07:00,2023-10-03 15:00,2023-09-29 07:00,2023-10-03 17:00,580.0,0.0,580.0,0.0,W&W DS/AD Infill Steel - West - Team B,58.0,0.0,58.0,"200-300 Ton Crawler, 55 Ton Mobile Support Crane",638.0,638.0
100229907,CN.SWB2.4710,PH1- DS/AD FRP SLAB - SWB-2 L2,TK_Complete,2023-11-07 10:00,2023-11-12 08:00,2023-11-07 10:00,2023-11-09 11:00,115.0,0.0,115.0,0.0,CIP Concrete Slab on Metal Deck Crews,0.0,0.0,0.0,,115.0,115.0
100229920,CN.SWB2.4730,PH1 -WELD CLIPS - CLADDING STEEL - SWB-2 L LINE (DS AREA),TK_Complete,2023-12-11 07:00,2023-12-12 09:00,2023-12-11 07:00,2023-12-12 09:00,300.0,0.0,300.0,0.0,"Cladding Steel, Insulated Metal Panel - Prefab Crews",15.0,0.0,15.0,50 Ton Mobile Support Crane,315.0,315.0
100229951,CN.SWB2.6350,IMPACT - SECAI MEP CRANE - SWB-2 L LINE (DS AREA),TK_Complete,2023-11-20 07:00,2023-11-27 17:00,2023-11-13 07:00,2023-11-18 07:00,300.0,0.0,300.0,0.0,"Cladding Steel, Insulated Metal Panel - Prefab Crews",15.0,0.0,15.0,50 Ton Mobile Support Crane,315.0,315.0
100229954,CN.SWB2.6400,PH1- DS/AD DECKING & DETAILING GL 21 - 24  DS/AD SWB-2  L3,TK_Complete,2023-11-30 07:00,2023-12-04 15:00,2023-11-30 07:00,2023-12-03 09:00,580.0,0.0,580.0,0.0,W&W DS/AD Infill Steel - West - Team B,58.0,0.0,58.0,"200-300 Ton Crawler, 55 Ton Mobile Support Crane",638.0,638.0
100229955,CN.SWB2.6410,PH1- DS/AD FRP SLAB - SWB-2  L3,TK_Complete,2023-12-03 08:00,2023-12-05 12:00,2023-12-05 08:00,2023-12-06 13:00,115.0,0.0,115.0,0.0,CIP Concrete Slab on Metal Deck Crews,0.0,0.0,0.0,,115.0,115.0
100229959,CN.SWB2.6500,ROOFTOP DRY PARAPET - SWB-1 (DS AREA) GL 21-24 N (DS AREA),TK_Complete,2024-02-26 07:00,2024-03-03 15:00,2024-02-26 07:00,2024-03-02 16:00,300.0,0.0,300.0,0.0,"Cladding Steel, Insulated Metal Panel - Prefab Crews",15.0,0.0,15.0,50 Ton Mobile Support Crane,315.0,315.0
100229960,CN.SWB2.6520,INSTALL INSULATED METAL PANEL MODULES - GL 21-24 - J LINE (AD AREA),TK_Complete,2024-06-24 07:00,2024-06-25 17:00,2024-06-18 07:00,2024-06-18 17:00,580.0,0.0,580.0,0.0,W&W DS/AD Infill Steel - West - Team B,58.0,0.0,58.0,"200-300 Ton Crawler, 55 Ton Mobile Support Crane",638.0,638.0
100229961,CN.SWB2.6530,INSTALL TPO ROOFING - SWB2 - GL 22-26 - K-L - L6,TK_Complete,2024-10-08 07:00,2024-10-11 17:00,2024-10-08 07:00,2024-10-12 17:00,580.0,0.0,580.0,0.0,W&W DS/AD Infill Steel - West - Team B,58.0,0.0,58.0,"200-300 Ton Crawler, 55 Ton Mobile Support Crane",638.0,638.0
100229983,CN.SWB2.6910,INSTALL FRAMING FOR IMP - GL 21-24 - J LINE (AD AREA),TK_Complete,2024-05-28 07:00,2024-05-28 17:00,2024-05-01 07:00,2024-05-14 17:00,580.0,0.0,580.0,0.0,W&W DS/AD Infill Steel - West - Team B,58.0,0.0,58.0,"200-300 Ton Crawler, 55 Ton Mobile Support Crane",638.0,638.0
100229988,CN.SWB2.7000,DS ROOF PARAPET DRY IN - SWB2 - GL 21-24 - K-L - L6,TK_Complete,2024-09-16 07:00,2024-10-03 17:00,2024-08-26 07:00,2024-09-12 17:00,580.0,0.0,580.0,0.0,W&W DS/AD Infill Steel - West - Team B,58.0,0.0,58.0,"200-300 Ton Crawler, 55 Ton Mobile Support Crane",638.0,638.0
100229989,CN.A1.UG.1360,PH1- UNDERGROUND PLUMBING SWB3,TK_Complete,2022-10-01 08:00,2022-10-03 12:00,2022-10-01 08:00,2022-10-04 13:00,748.0,0.0,748.0,0.0,CIP Concrete SOG Crews,22.0,0.0,22.0,50-75 Ton Mobile Support Crane,770.0,770.0
100229991,CN.A2.UG.1160,PH1- UNDERSLAB WATERPROOFING SWB3,TK_Complete,2022-10-07 15:00,2022-10-09 11:00,2022-10-07 15:00,2022-10-10 13:00,63.0,0.0,63.0,0.0,Precast Erect Main Columns,7.0,0.0,7.0,LR-1300 330 Ton Crawler Crane,70.0,70.0
100229992,CN.A2.UG.1170,PH1- WATERPROOF WALL SWB3,TK_Complete,2022-10-21 09:00,2022-10-25 09:00,2022-10-21 09:00,2022-10-27 11:00,63.0,0.0,63.0,0.0,Precast Erect Main Columns,7.0,0.0,7.0,LR-1300 330 Ton Crawler Crane,70.0,70.0
100229993,CN.A2.UG.1180,PH1- FRENCH DRAIN SWB3,TK_Complete,2022-10-24 07:00,2022-10-28 17:00,2022-10-24 07:00,2022-10-28 17:00,63.0,0.0,63.0,0.0,Precast Erect Main Columns,7.0,0.0,7.0,LR-1300 330 Ton Crawler Crane,70.0,70.0
100229995,CN.SWB3.1010,PH1-FRP GRADE BEAM - SWB3,TK_Complete,2022-10-04 13:00,2022-10-06 17:00,2022-10-04 13:00,2022-10-06 17:00,480.0,0.0,480.0,0.0,CIP Concrete SUP Pier Cap Crew,16.0,0.0,16.0,50-75 Ton Mobile Support Crane,496.0,496.0
100229998,CN.SWB3.1060,PH1- FRP SLAB - SWB-3-L2,TK_Complete,2023-08-29 13:00,2023-09-01 09:00,2023-08-29 13:00,2023-08-30 07:00,280.0,0.0,280.0,0.0,CIP Concrete Slab on Metal Deck Crews,10.0,0.0,10.0,50-75 Ton Mobile Support Crane,290.0,290.0
100229999,CN.SWB3.1090,PH1- FRP SLAB - SWB-3-L3,TK_Complete,2023-09-01 09:00,2023-09-03 13:00,2023-09-01 09:00,2023-09-02 17:00,280.0,0.0,280.0,0.0,CIP Concrete Slab on Metal Deck Crews,10.0,0.0,10.0,50-75 Ton Mobile Support Crane,290.0,290.0
100230000,CN.SWB3.1120,PH1- FRP SLAB - SWB-3-ROOF,TK_Complete,2023-09-08 09:00,2023-09-10 13:00,2023-09-08 09:00,2023-09-09 16:00,280.0,0.0,280.0,0.0,CIP Concrete Slab on Metal Deck Crews,10.0,0.0,10.0,50-75 Ton Mobile Support Crane,290.0,290.0
100230004,CN.SWB3.1100,PH1- 1st FLOOR SLAB - SWB-3-L1,TK_Complete,2022-10-10 13:00,2022-10-13 11:00,2022-10-10 13:00,2022-10-13 11:00,646.0,0.0,646.0,0.0,CIP Concrete SOG Crews,19.0,0.0,19.0,50-75 Ton Mobile Support Crane,665.0,665.0
100230005,CN.SWB3.1200,FRP TOPPING SLAB - SWB3 - GL 24-26 - L-N - L4 ROOF,TK_Complete,2024-06-24 07:00,2024-06-28 17:00,2024-06-05 07:00,2024-06-06 17:00,80.0,0.0,80.0,0.0,CIP Concrete Topping Slab Crews,0.0,0.0,0.0,,80.0,80.0
100230006,CN.SWB3.1230,MEP EQPT PADS (LAYOUT & INSTALL DOWELS)- SWB-3-ROOF,TK_Complete,2023-10-30 07:00,2023-11-03 11:00,2023-10-30 07:00,2023-11-03 11:00,400.0,0.0,400.0,0.0,CIP Concrete Topping Slab Crews,0.0,0.0,0.0,,400.0,400.0
100230007,CN.SWB3.1040,PH1-FRP PIT WALLS - SWB3 (None),TK_Complete,2022-10-15 08:00,2022-10-20 08:00,2022-10-15 08:00,2022-10-21 09:00,680.0,0.0,680.0,0.0,CIP Concrete Pit Crews,20.0,0.0,20.0,50-75 Ton Mobile Support Crane,700.0,700.0
100230009,CN.SWB3.1050,TIER 1 ERECT PRECAST COLUMNS & BEAMS - SWB3,TK_Complete,2023-05-26 11:00,2023-06-03 17:00,2023-05-24 11:00,2023-07-29 16:00,200.0,0.0,200.0,0.0,Precast Erect Crew SUP Col's/Bm's/Girders,25.0,0.0,25.0,LR-1400 400 Ton Crawler Crane,225.0,225.0
100230010,CN.SWB3.1170,PH1-FLUID APPLIED MEMBRANE ROOFING - SWB3,TK_Complete,2024-01-22 07:00,2024-01-25 09:00,2024-01-22 07:00,2024-01-25 09:00,112.0,0.0,112.0,0.0,SUP Bldg Roofing Membrane Crew,0.0,0.0,0.0,,112.0,112.0
100230011,CN.SWB3.1190,PH1 - CLADDING STEEL INTERIOR GL 24-27 - K LINE (AD AREA),TK_Complete,2024-03-18 15:00,2024-03-26 11:00,2024-02-20 07:00,2024-02-27 11:00,300.0,0.0,300.0,0.0,"Cladding Steel, Insulated Metal Panel - Prefab Crews",15.0,0.0,15.0,50 Ton Mobile Support Crane,315.0,315.0
100230012,CN.SWB3.1220,PH1 - INSTALL INSULATED METAL PANEL MODULES - GL 24-27 - L LINE (DS AREA),TK_Complete,2024-05-04 07:00,2024-05-14 17:00,2024-05-08 07:00,2024-05-20 17:00,300.0,0.0,300.0,0.0,"Cladding Steel, Insulated Metal Panel - Prefab Crews",15.0,0.0,15.0,50 Ton Mobile Support Crane,315.0,315.0
100230013,CN.SWB3.1160,PH1 - CLADDING STEEL  - SWB-3 N Line [SUP EXTERIOR WALL] GL 24-27,TK_Complete,2023-11-11 09:00,2023-11-19 11:00,2023-11-11 09:00,2023-11-17 09:00,330.0,0.0,330.0,0.0,"Insulated Metal Panels - Lower Areas, Insulated Metal Panel - Prefab Crews",15.0,0.0,15.0,50 Ton Mobile Support Crane,345.0,345.0
100230014,CN.SWB3.1180,INSTALL INSULATED METAL PANEL MODULES - GL 24-26 - N LINE [SUP EXTERIOR WALL],TK_Complete,2024-09-17 07:00,2024-09-26 17:00,2024-08-01 07:00,2024-08-09 17:00,330.0,0.0,330.0,0.0,"Insulated Metal Panels - Lower Areas, Insulated Metal Panel - Prefab Crews",15.0,0.0,15.0,50 Ton Mobile Support Crane,345.0,345.0
100230015,CN.SWB3.1140,PH1- AD STEEL FRAME INSTALL - SWB-3 fab side,TK_Complete,2023-09-29 07:00,2023-10-02 09:00,2023-09-29 07:00,2023-10-02 15:00,580.0,0.0,580.0,0.0,W&W DS/AD Infill Steel - West - Team B,58.0,0.0,58.0,"200-300 Ton Crawler, 55 Ton Mobile Support Crane",638.0,638.0
100230033,CN.SWB3.1340,PH1- TOPPING SLAB w TRENCH & ANGLE EMBEDS- SWB-3-L1,TK_Complete,2023-11-05 10:00,2023-11-07 14:00,2023-11-05 10:00,2023-11-07 15:00,80.0,0.0,80.0,0.0,CIP Concrete Topping Slab Crews,0.0,0.0,0.0,,80.0,80.0
100230034,CN.SWB3.1350,PH1- DS/AD DECKING & DETAILING DS/AD SWB-3 -L6 GL 24-27 J-K,TK_Complete,2023-11-20 07:00,2023-11-27 17:00,2023-11-18 07:00,2023-11-28 07:00,580.0,0.0,580.0,0.0,W&W DS/AD Infill Steel - West - Team B,58.0,0.0,58.0,"200-300 Ton Crawler, 55 Ton Mobile Support Crane",638.0,638.0
100230035,CN.SWB3.1360,PH1- DS/AD FRP SLAB - DS/AD SWB-3 - L4/E GL 24-27 J-K,TK_Complete,2024-01-22 07:00,2024-01-24 11:00,2024-01-19 07:00,2024-01-22 15:00,695.0,0.0,695.0,0.0,"W&W DS/AD Infill Steel - West - Team B, CIP Concrete Slab on Metal Deck Crews",58.0,0.0,58.0,"200-300 Ton Crawler, 55 Ton Mobile Support Crane",753.0,753.0
100230036,CN.SWB3.1370,AD WATERPROOFING - SWB3 - GL 24-27 - J-K - L4/E,TK_Complete,2024-06-27 07:00,2024-07-16 17:00,2024-06-26 07:00,2024-07-01 17:00,580.0,0.0,580.0,0.0,W&W DS/AD Infill Steel - West - Team B,58.0,0.0,58.0,"200-300 Ton Crawler, 55 Ton Mobile Support Crane",638.0,638.0
100230037,CN.SWB3.1380,AD TOPPING SLAB - SWB3 - GL 24-27 - J-K - L4/E,TK_Complete,2024-07-26 07:00,2024-07-31 17:00,2024-07-01 07:00,2024-07-02 17:00,580.0,0.0,580.0,0.0,W&W DS/AD Infill Steel - West - Team B,58.0,0.0,58.0,"200-300 Ton Crawler, 55 Ton Mobile Support Crane",638.0,638.0
100230038,TIER 23.105W,TIER 2 GROUT PRECAST COLUMNS & BEAMS - SWB3,TK_Complete,2023-08-24 14:00,2023-08-27 16:00,2023-08-11 14:00,2023-08-13 08:00,200.0,0.0,200.0,0.0,Precast Erect Crew SUP Col's/Bm's/Girders,25.0,0.0,25.0,LR-1400 400 Ton Crawler Crane,225.0,225.0
100230048,CN.SWB3.1450,PH1- DS STEEL FRAME INSTALL - SWB-3 Comeback Sup Side,TK_Complete,2023-10-02 15:00,2023-10-05 17:00,2023-10-02 15:00,2023-10-06 17:00,580.0,0.0,580.0,0.0,W&W DS/AD Infill Steel - West - Team B,58.0,0.0,58.0,"200-300 Ton Crawler, 55 Ton Mobile Support Crane",638.0,638.0
100230049,CN.SWB3.1460,PH1- EXTERIOR CURBS - SWB-3-L1,TK_Complete,2023-10-30 07:00,2023-11-04 17:00,2023-10-30 07:00,2023-11-05 10:00,80.0,0.0,80.0,0.0,CIP Concrete Topping Slab Crews,0.0,0.0,0.0,,80.0,80.0
100230066,CN.SWB3.4600,PH1 - CLADDING STEEL  EXTERIOR - SWB-3 L LINE (DS AREA)GL 24-27,TK_Complete,2024-01-22 07:00,2024-01-31 13:00,2023-12-29 07:00,2024-01-29 11:00,300.0,0.0,300.0,0.0,"Cladding Steel, Insulated Metal Panel - Prefab Crews",15.0,0.0,15.0,50 Ton Mobile Support Crane,315.0,315.0
100230078,CN.SWB3.4610,PH1 -WELD CLIPS - CLADDING STEEL - SWB-3 L LINE (DS AREA)GL 24-27,TK_Complete,2023-12-15 09:00,2023-12-16 11:00,2023-12-15 09:00,2023-12-16 12:00,300.0,0.0,300.0,0.0,"Cladding Steel, Insulated Metal Panel - Prefab Crews",15.0,0.0,15.0,50 Ton Mobile Support Crane,315.0,315.0
100230085,CN.SWB2.4740,PH1- DS/AD DECKING GL 21 - 24 DS/AD SWB-3 L2,TK_Complete,2023-10-20 07:00,2023-11-04 08:00,2023-10-20 07:00,2023-10-27 17:00,580.0,0.0,580.0,0.0,W&W DS/AD Infill Steel - West - Team B,58.0,0.0,58.0,"200-300 Ton Crawler, 55 Ton Mobile Support Crane",638.0,638.0
100230086,CN.SWB2.4750,PH1- DS/AD FRP SLAB - SWB-3 L2,TK_Complete,2023-11-18 08:00,2023-11-21 10:00,2023-10-28 08:00,2023-11-01 13:00,115.0,0.0,115.0,0.0,CIP Concrete Slab on Metal Deck Crews,0.0,0.0,0.0,,115.0,115.0
100230088,SUWPIT 22-30,NORTH PIT STEEL INSTALL - SWB-1 - L1 - GL 12-20,TK_Complete,2023-10-17 13:00,2023-10-29 13:00,2023-10-04 08:00,2023-10-26 17:00,580.0,0.0,580.0,0.0,W&W DS/AD Infill Steel - West - Team B,58.0,0.0,58.0,"200-300 Ton Crawler, 55 Ton Mobile Support Crane",638.0,638.0
100230099,CN.SWB3.4710,IMPACT - SECAI MEP CRANE - SWB-3 L LINE (DS AREA)GL 24-27,TK_Complete,2023-11-13 07:00,2023-11-17 17:00,2023-11-17 07:00,2024-01-31 17:00,300.0,0.0,300.0,0.0,"Cladding Steel, Insulated Metal Panel - Prefab Crews",15.0,0.0,15.0,50 Ton Mobile Support Crane,315.0,315.0
100230100,CN.SWB3.4720,REMAINING INSTALL INSULATED METAL PANEL MODULES - GL 26-27 - N LINE [SUP EXTERIOR WALL],TK_Complete,2024-09-29 07:00,2024-10-05 17:00,2024-09-23 07:00,2024-09-26 17:00,330.0,0.0,330.0,0.0,"Insulated Metal Panels - Lower Areas, Insulated Metal Panel - Prefab Crews",15.0,0.0,15.0,50 Ton Mobile Support Crane,345.0,345.0
100230103,CN.SWB2.6420,PH1- DS/AD FRP SLAB - SWB-3  L3,TK_Complete,2023-12-03 15:00,2023-12-07 09:00,2023-12-03 15:00,2023-12-05 10:00,115.0,0.0,115.0,0.0,CIP Concrete Slab on Metal Deck Crews,0.0,0.0,0.0,,115.0,115.0
100230104,CN.SWB2.6430,PH1- DS/AD DECKING 21 - 24 DS/AD SWB-3 L3,TK_Complete,2023-11-30 07:00,2023-12-04 14:00,2023-11-30 07:00,2023-12-02 16:00,580.0,0.0,580.0,0.0,W&W DS/AD Infill Steel - West - Team B,58.0,0.0,58.0,"200-300 Ton Crawler, 55 Ton Mobile Support Crane",638.0,638.0
100230106,CN.SWB3.4810,ROOFTOP DRY PARAPET - SWB-1 (DS AREA) GL 27-24 N (DS AREA),TK_Complete,2024-02-27 07:00,2024-03-02 17:00,2024-02-27 07:00,2024-03-01 17:00,300.0,0.0,300.0,0.0,"Cladding Steel, Insulated Metal Panel - Prefab Crews",15.0,0.0,15.0,50 Ton Mobile Support Crane,315.0,315.0
100230108,CN.SWB3.4820,INSTALL TPO ROOFING - SWB3 - GL 26-29 - K-L - L6,TK_Complete,2024-10-08 07:00,2024-10-11 17:00,2024-10-08 07:00,2024-10-12 17:00,580.0,0.0,580.0,0.0,W&W DS/AD Infill Steel - West - Team B,58.0,0.0,58.0,"200-300 Ton Crawler, 55 Ton Mobile Support Crane",638.0,638.0
100230118,CN.SWB3.4930,IMPACT - BUCK HOIST OPENING/ LEAVE OUTS - SWB-3 N LINE [SUP EXTERIOR WALL] GL 17-18,TK_Complete,2024-01-22 07:00,2024-02-12 13:00,2024-01-02 07:00,2024-01-15 11:00,330.0,0.0,330.0,0.0,"Insulated Metal Panels - Lower Areas, Insulated Metal Panel - Prefab Crews",15.0,0.0,15.0,50 Ton Mobile Support Crane,345.0,345.0
100230119,SUWPIT 22-40,REMAINING - NORTH PIT STEEL INSTALL - SWB-1 - L1 - GL 12-20,TK_Complete,2024-04-15 08:00,2024-04-19 16:00,2024-01-09 08:00,2024-01-19 16:00,580.0,0.0,580.0,0.0,W&W DS/AD Infill Steel - West - Team B,58.0,0.0,58.0,"200-300 Ton Crawler, 55 Ton Mobile Support Crane",638.0,638.0
100230120,SUWPIT 22-50,IMPACT [C2] - MEP MATERIAL/EQUIPMENT OBSTRUCTION (C2) - SWB-1 - L1 - GL 26-31,TK_Complete,2024-01-08 07:00,2024-01-11 17:00,2023-12-30 07:00,2024-01-08 17:00,580.0,0.0,580.0,0.0,W&W DS/AD Infill Steel - West - Team B,58.0,0.0,58.0,"200-300 Ton Crawler, 55 Ton Mobile Support Crane",638.0,638.0
100230122,CN.SWB3.4950,IMPACT [ES 25] - RE-INSTALL CLADDING STEELGL 26-27 - N LINE [SUP EXTERIOR WALL],TK_Complete,2024-09-20 07:00,2024-09-27 17:00,2024-09-10 07:00,2024-09-17 17:00,330.0,0.0,330.0,0.0,"Insulated Metal Panels - Lower Areas, Insulated Metal Panel - Prefab Crews",15.0,0.0,15.0,50 Ton Mobile Support Crane,345.0,345.0
100230126,CN.SWB3.5140,FRP TOPPING SLAB - SWB3 - GL 26-27 - L-N - L4 ROOF,TK_Complete,2024-09-26 11:00,2024-09-30 11:00,2024-09-13 11:00,2024-09-16 11:00,80.0,0.0,80.0,0.0,CIP Concrete Topping Slab Crews,0.0,0.0,0.0,,80.0,80.0
100230132,CN.SWB3.5220,DS ROOF PARAPET DRY IN - SWB3 - GL 24-27 - K-L - L6,TK_Complete,2024-09-16 07:00,2024-10-04 17:00,2024-08-26 07:00,2024-09-12 17:00,580.0,0.0,580.0,0.0,W&W DS/AD Infill Steel - West - Team B,58.0,0.0,58.0,"200-300 Ton Crawler, 55 Ton Mobile Support Crane",638.0,638.0
100230133,CN.A1.UG.1380,PH1- UNDERGROUND PLUMBING SWB4,TK_Complete,2022-09-29 11:00,2022-10-03 11:00,2022-09-29 11:00,2022-10-04 13:00,748.0,0.0,748.0,0.0,CIP Concrete SOG Crews,22.0,0.0,22.0,50-75 Ton Mobile Support Crane,770.0,770.0
100230135,CN.A2.UG.1190,PH1- UNDERSLAB WATERPROOFING SWB4,TK_Complete,2022-10-13 09:00,2022-10-17 09:00,2022-10-13 09:00,2022-10-18 11:00,63.0,0.0,63.0,0.0,Precast Erect Main Columns,7.0,0.0,7.0,LR-1300 330 Ton Crawler Crane,70.0,70.0
100230136,CN.A2.UG.1200,PH1- WATERPROOF WALL SWB4,TK_Complete,2022-10-27 09:00,2022-10-31 09:00,2022-10-27 09:00,2022-11-01 11:00,63.0,0.0,63.0,0.0,Precast Erect Main Columns,7.0,0.0,7.0,LR-1300 330 Ton Crawler Crane,70.0,70.0
100230137,CN.A2.UG.1210,PH1- FRENCH DRAIN SWB4,TK_Complete,2022-10-28 15:00,2022-10-31 09:00,2022-10-28 15:00,2022-11-01 11:00,63.0,0.0,63.0,0.0,Precast Erect Main Columns,7.0,0.0,7.0,LR-1300 330 Ton Crawler Crane,70.0,70.0
100230140,CN.SWB4.1010,PH1-FRP GRADE BEAM - SWB4,TK_Complete,2022-10-04 13:00,2022-10-06 17:00,2022-10-04 13:00,2022-10-06 17:00,480.0,0.0,480.0,0.0,CIP Concrete SUP Pier Cap Crew,16.0,0.0,16.0,50-75 Ton Mobile Support Crane,496.0,496.0
100230143,CN.SWB4.1060,PH1- FRP SLAB - SWB-4-L2,TK_Complete,2023-09-06 13:00,2023-09-08 09:00,2023-09-06 13:00,2023-09-08 09:00,280.0,0.0,280.0,0.0,CIP Concrete Slab on Metal Deck Crews,10.0,0.0,10.0,50-75 Ton Mobile Support Crane,290.0,290.0
100230144,CN.SWB4.1090,PH1- FRP SLAB - SWB-4-L3,TK_Complete,2023-08-31 07:00,2023-09-02 11:00,2023-08-31 07:00,2023-09-01 12:00,280.0,0.0,280.0,0.0,CIP Concrete Slab on Metal Deck Crews,10.0,0.0,10.0,50-75 Ton Mobile Support Crane,290.0,290.0
100230145,CN.SWB4.1120,PH1- FRP SLAB - SWB-4-ROOF,TK_Complete,2023-09-11 15:00,2023-09-15 09:00,2023-09-11 15:00,2023-09-12 09:00,280.0,0.0,280.0,0.0,CIP Concrete Slab on Metal Deck Crews,10.0,0.0,10.0,50-75 Ton Mobile Support Crane,290.0,290.0
100230149,CN.SWB4.1100,PH1- 1st FLOOR SLAB - SWB-4-L1,TK_Complete,2022-10-13 07:00,2022-10-22 09:00,2022-10-13 07:00,2022-10-24 13:00,646.0,0.0,646.0,0.0,CIP Concrete SOG Crews,19.0,0.0,19.0,50-75 Ton Mobile Support Crane,665.0,665.0
100230150,CN.SWB4.1200,FRP TOPPING SLAB - SWB4 - GL 27-29 - L-N - L4 ROOF,TK_Complete,2024-10-04 07:00,2024-10-07 17:00,2024-09-13 07:00,2024-09-16 17:00,80.0,0.0,80.0,0.0,CIP Concrete Topping Slab Crews,0.0,0.0,0.0,,80.0,80.0
100230151,CN.SWB4.1230,MEP EQPT PADS (LAYOUT & INSTALL DOWELS)- SWB-4-ROOF,TK_Complete,2023-10-27 07:00,2023-10-29 11:00,2023-10-27 07:00,2023-10-29 14:00,400.0,0.0,400.0,0.0,CIP Concrete Topping Slab Crews,0.0,0.0,0.0,,400.0,400.0
100230152,CN.SWB4.1040,PH1-FRP PIT WALLS - SWB4 (None),TK_Complete,2022-10-21 15:00,2022-10-28 11:00,2022-10-21 15:00,2022-10-29 14:00,680.0,0.0,680.0,0.0,CIP Concrete Pit Crews,20.0,0.0,20.0,50-75 Ton Mobile Support Crane,700.0,700.0
100230154,CN.SWB4.1050,TIER 1 ERECT PRECAST COLUMNS & BEAMS - SWB4,TK_Complete,2023-05-26 11:00,2023-06-03 17:00,2023-05-26 11:00,2023-07-10 09:00,192.0,0.0,192.0,0.0,Precast Erect Crew SUP Col's/Bm's/Girders,24.0,0.0,24.0,LR-1400 400 Ton Crawler Crane,216.0,216.0
100230155,CN.SWB4.1150,PH1-ROOF LAYER PARAPET - SWB4,TK_Complete,2024-01-20 13:00,2024-01-22 09:00,2024-01-20 13:00,2024-01-22 12:00,64.0,0.0,64.0,0.0,Precast Erect Crew SUP Col's/Bm's/Girders,8.0,0.0,8.0,185 Ton Crawler Crane Unload/Handle Waffles,72.0,72.0
100230156,CN.SWB4.1170,PH1-FLUID APPLIED MEMBRANE ROOFING - SWB4,TK_Complete,2024-01-19 08:00,2024-01-22 10:00,2024-01-19 08:00,2024-01-22 14:00,112.0,0.0,112.0,0.0,SUP Bldg Roofing Membrane Crew,0.0,0.0,0.0,,112.0,112.0
100230157,CN.SWB4.1180,PH1 - CLADDING STEEL INTERIOR GL 27-30 - K LINE (AD AREA),TK_Complete,2024-02-12 07:00,2024-02-17 13:00,2024-02-12 07:00,2024-03-01 11:00,300.0,0.0,300.0,0.0,"Cladding Steel, Insulated Metal Panel - Prefab Crews",15.0,0.0,15.0,50 Ton Mobile Support Crane,315.0,315.0
100230158,CN.SWB4.1210,PH1 - INSTALL INSULATED METAL PANEL MODULES - GL 27-31 - L LINE (DS AREA),TK_Complete,2024-05-24 07:00,2024-06-02 17:00,2024-05-17 07:00,2024-05-24 17:00,300.0,0.0,300.0,0.0,"Cladding Steel, Insulated Metal Panel - Prefab Crews",15.0,0.0,15.0,50 Ton Mobile Support Crane,315.0,315.0
100230159,CN.SWB4.1160,PH1 - CLADDING STEEL - GL 27-29 - SWB-4 N Line [SUP EXTERIOR WALL],TK_Complete,2023-11-08 07:00,2023-11-11 09:00,2023-11-08 07:00,2023-11-10 07:00,330.0,0.0,330.0,0.0,"Insulated Metal Panels - Lower Areas, Insulated Metal Panel - Prefab Crews",15.0,0.0,15.0,50 Ton Mobile Support Crane,345.0,345.0
100230160,CN.SWB4.1190,INSTALL INSULATED METAL PANEL MODULES - GL 27-30 - N LINE [SUP EXTERIOR WALL],TK_Complete,2024-10-12 07:00,2024-10-17 17:00,2024-10-12 07:00,2024-10-17 17:00,330.0,0.0,330.0,0.0,"Insulated Metal Panels - Lower Areas, Insulated Metal Panel - Prefab Crews",15.0,0.0,15.0,50 Ton Mobile Support Crane,345.0,345.0
100230161,CN.SWB4.1130,PH1- AD STEEL FRAME INSTALL - SWB-4 fab side,TK_Complete,2023-10-07 08:00,2023-10-09 12:00,2023-10-07 08:00,2023-10-11 17:00,580.0,0.0,580.0,0.0,W&W DS/AD Infill Steel - West - Team B,58.0,0.0,58.0,"200-300 Ton Crawler, 55 Ton Mobile Support Crane",638.0,638.0
100230166,CN.SWB4.1250,DS STEEL SPRAY FIREPROOFING SFRM - SWB-4 - L4&L5 CEILING GL 27-30/J-L,TK_Complete,2024-09-06 07:00,2024-09-19 17:00,2024-08-23 07:00,2024-08-28 17:00,80.0,0.0,80.0,0.0,CIP Concrete Topping Slab Crews,0.0,0.0,0.0,,80.0,80.0
100230176,CN.SWB4.1340,PH1- TOPPING SLAB w TRENCH & ANGLE EMBEDS- SWB-4-L1- WASTE LIQUOR RM,TK_Complete,2023-11-09 07:00,2023-11-11 11:00,2023-11-09 07:00,2023-11-11 12:00,80.0,0.0,80.0,0.0,CIP Concrete Topping Slab Crews,0.0,0.0,0.0,,80.0,80.0
100230177,CN.SWB4.1350,PH1- DS/AD DECKING & DETAILING - DS/AD SWB-4  L6 GL 27-30  K-L,TK_Complete,2023-11-18 08:00,2023-11-22 08:00,2023-11-13 08:00,2023-11-18 11:00,580.0,0.0,580.0,0.0,W&W DS/AD Infill Steel - West - Team B,58.0,0.0,58.0,"200-300 Ton Crawler, 55 Ton Mobile Support Crane",638.0,638.0
100230178,CN.SWB4.1360,PH1- DS/AD FRP SLAB - DS/AD SWB-4 - L4/E GL 27-30  K-L,TK_Complete,2024-01-18 07:00,2024-01-21 09:00,2024-01-15 07:00,2024-01-16 17:00,695.0,0.0,695.0,0.0,"W&W DS/AD Infill Steel - West - Team B, CIP Concrete Slab on Metal Deck Crews",58.0,0.0,58.0,"200-300 Ton Crawler, 55 Ton Mobile Support Crane",753.0,753.0
100230179,CN.SWB4.1370,AD WATERPROOFING - SWB4 - GL 27-30 - J-K - L4/E,TK_Complete,2024-06-21 07:00,2024-07-11 17:00,2024-06-07 07:00,2024-06-19 17:00,580.0,0.0,580.0,0.0,W&W DS/AD Infill Steel - West - Team B,58.0,0.0,58.0,"200-300 Ton Crawler, 55 Ton Mobile Support Crane",638.0,638.0
100230180,CN.SWB4.1380,AD TOPPING SLAB - SWB4 - GL 27-30 - J-K - L4/E,TK_Complete,2024-07-12 07:00,2024-07-17 17:00,2024-06-20 07:00,2024-06-25 17:00,580.0,0.0,580.0,0.0,W&W DS/AD Infill Steel - West - Team B,58.0,0.0,58.0,"200-300 Ton Crawler, 55 Ton Mobile Support Crane",638.0,638.0
100230181,TIER 24.105W,TIER 2 GROUT PRECAST COLUMNS & BEAMS - SWB4,TK_Complete,2023-08-21 07:00,2023-08-25 09:00,2023-08-14 07:00,2023-08-17 07:00,192.0,0.0,192.0,0.0,Precast Erect Crew SUP Col's/Bm's/Girders,24.0,0.0,24.0,LR-1400 400 Ton Crawler Crane,216.0,216.0
100230188,CN.SWB4.1450,PH1- DS/AD DECKING & DETAILING ROOF DS/AD SWB-4 L4 & L4/E GL 27-30 K-L,TK_Complete,2024-01-17 07:00,2024-01-20 17:00,2024-01-12 13:00,2024-01-15 17:00,580.0,0.0,580.0,0.0,W&W DS/AD Infill Steel - West - Team B,58.0,0.0,58.0,"200-300 Ton Crawler, 55 Ton Mobile Support Crane",638.0,638.0
100230191,CN.SWB4.1470,PH1- DS STEEL FRAME INSTALL - SWB-4 Comeback Sup Side,TK_Complete,2023-10-12 07:00,2023-10-14 11:00,2023-10-12 07:00,2023-10-14 12:00,580.0,0.0,580.0,0.0,W&W DS/AD Infill Steel - West - Team B,58.0,0.0,58.0,"200-300 Ton Crawler, 55 Ton Mobile Support Crane",638.0,638.0
100230192,CN.SWB4.1480,PH1- EXTERIOR CURBS - SWB-4-L1- WASTE LIQUOR RM,TK_Complete,2023-10-27 07:00,2023-10-30 17:00,2023-10-26 07:00,2023-10-27 09:00,80.0,0.0,80.0,0.0,CIP Concrete Topping Slab Crews,0.0,0.0,0.0,,80.0,80.0
100230211,CN.SWB4.4560,PH1 - CLADDING STEEL  EXTERIOR  - SWB-4 L LINE (DS AREA) GL 27-30,TK_Complete,2024-02-22 07:00,2024-03-03 13:00,2024-02-22 07:00,2024-02-29 17:00,300.0,0.0,300.0,0.0,"Cladding Steel, Insulated Metal Panel - Prefab Crews",15.0,0.0,15.0,50 Ton Mobile Support Crane,315.0,315.0
100230212,EMB1010,IMPACT [S.TIA-16] - Incorrect Precast Embeds GL L29 and L30 3A (30) - TR074 - TF1-SMT-SH-2168 GL 27-30 K-L SEQ. 4901,TK_Complete,2023-11-27 07:00,2023-11-28 13:00,2023-08-14 07:00,2024-04-30 17:00,580.0,0.0,580.0,0.0,W&W DS/AD Infill Steel - West - Team B,58.0,0.0,58.0,"200-300 Ton Crawler, 55 Ton Mobile Support Crane",638.0,638.0
100230213,CN.SWB4.4590,DS/AD STEEL SPRAY FIREPROOFING SFRM- SWB-4 L1 CEILING - GL 27-30 K-L,TK_Complete,2023-12-09 08:00,2023-12-14 16:00,2023-11-28 08:00,2023-12-03 13:00,80.0,0.0,80.0,0.0,CIP Concrete Topping Slab Crews,0.0,0.0,0.0,,80.0,80.0
100230214,CN.SWB4.4570,PH1- DS/AD DECKING  GL 27 - 30 - DS/AD SWB-4  L2,TK_Complete,2023-10-30 07:00,2023-11-10 13:00,2023-10-25 07:00,2023-10-27 17:00,580.0,0.0,580.0,0.0,W&W DS/AD Infill Steel - West - Team B,58.0,0.0,58.0,"200-300 Ton Crawler, 55 Ton Mobile Support Crane",638.0,638.0
100230215,CN.SWB4.4580,PH1- DS/AD FRP SLAB - DS/AD SWB-4 L2 GL 27-30 K-L,TK_Complete,2023-12-05 13:00,2023-12-08 17:00,2023-12-19 13:00,2023-12-21 13:00,695.0,0.0,695.0,0.0,"W&W DS/AD Infill Steel - West - Team B, CIP Concrete Slab on Metal Deck Crews",58.0,0.0,58.0,"200-300 Ton Crawler, 55 Ton Mobile Support Crane",753.0,753.0
100230226,CN.SWB4.4600,PH1 -WELD CLIPS - CLADDING STEEL - SWB-4 L LINE (DS AREA),TK_Complete,2023-12-07 07:00,2023-12-08 09:00,2024-01-24 07:00,2024-01-30 13:00,300.0,0.0,300.0,0.0,"Cladding Steel, Insulated Metal Panel - Prefab Crews",15.0,0.0,15.0,50 Ton Mobile Support Crane,315.0,315.0
100230248,CN.SWB4.6300,DSAD PENETRATION SUPPORT STEEL FRAMING - SWB-4 GL 27-30 K-L L3,TK_Complete,2024-02-20 11:00,2024-02-23 17:00,2024-02-20 11:00,2024-02-26 11:00,80.0,0.0,80.0,0.0,CIP Concrete Topping Slab Crews,0.0,0.0,0.0,,80.0,80.0
100230249,CN.SWB4.6310,DSAD & PENETRATION SUPPORT STEEL FRAMING - SWB-4 GL 27-30 K-L L4,TK_Complete,2024-07-29 07:00,2024-08-02 17:00,2024-07-27 07:00,2024-08-03 17:00,80.0,0.0,80.0,0.0,CIP Concrete Topping Slab Crews,0.0,0.0,0.0,,80.0,80.0
100230256,EMB6050,IMPACT - Incorrect Precast Embeds GL L29 and L30 3F (10) GL 27-30 K-L,TK_Complete,2023-11-27 07:00,2023-11-28 13:00,2023-11-20 07:00,2023-11-27 13:00,580.0,0.0,580.0,0.0,W&W DS/AD Infill Steel - West - Team B,58.0,0.0,58.0,"200-300 Ton Crawler, 55 Ton Mobile Support Crane",638.0,638.0
100230257,CN.SWB4.6320,PH1 - REMAINING CLADDING STEEL - GL 29-32 - SWB-4 N Line [SUP EXTERIOR WALL],TK_Complete,2024-01-11 11:00,2024-01-21 11:00,2023-12-04 11:00,2023-12-12 16:00,330.0,0.0,330.0,0.0,"Insulated Metal Panels - Lower Areas, Insulated Metal Panel - Prefab Crews",15.0,0.0,15.0,50 Ton Mobile Support Crane,345.0,345.0
100230260,CN.SWB4.6340,K-LINE STEEL SPRAY FIREPROOFING SFRM2 - SWB4 - L3-CEILING - GL 27-30,TK_Complete,2024-04-24 07:00,2024-04-29 17:00,2024-04-24 07:00,2024-04-29 17:00,80.0,0.0,80.0,0.0,CIP Concrete Topping Slab Crews,0.0,0.0,0.0,,80.0,80.0
100230261,CN.SWB4.6380,ROOFTOP DRY PARAPET - SWB-1 (DS AREA) GL 27-30 N (DS AREA),TK_Complete,2024-02-29 07:00,2024-03-03 08:00,2024-02-28 08:00,2024-03-02 10:00,300.0,0.0,300.0,0.0,"Cladding Steel, Insulated Metal Panel - Prefab Crews",15.0,0.0,15.0,50 Ton Mobile Support Crane,315.0,315.0
100230262,CN.SWB4.6390,INSTALL INSULATED METAL PANEL MODULES - GL 26-30 - J LINE (AD AREA),TK_Complete,2024-06-30 07:00,2024-07-01 17:00,2024-06-28 07:00,2024-06-29 17:00,80.0,0.0,80.0,0.0,CIP Concrete Topping Slab Crews,0.0,0.0,0.0,,80.0,80.0
100230263,CN.SWB4.6400,INSTALL TPO ROOFING - SWB4 - GL 30 33 - K-L - L6,TK_Complete,2024-12-23 07:00,2024-12-27 17:00,2024-12-21 07:00,2024-12-27 17:00,580.0,0.0,580.0,0.0,W&W DS/AD Infill Steel - West - Team B,58.0,0.0,58.0,"200-300 Ton Crawler, 55 Ton Mobile Support Crane",638.0,638.0
100230273,CN.SWB4.6520,IMPACT - HEI FIXES - WW PENTHOUSE INSTALL - GL 29-32 - SWB-4 N LINE [SUP EXTERIOR WALL],TK_Complete,2024-01-02 09:00,2024-01-18 10:00,2023-12-29 07:00,2024-01-29 14:00,330.0,0.0,330.0,0.0,"Insulated Metal Panels - Lower Areas, Insulated Metal Panel - Prefab Crews",15.0,0.0,15.0,50 Ton Mobile Support Crane,345.0,345.0
100230274,CN.SWB4.6530,IMPACT - WAITING ON MEP LAYOUTS - SWB-4 GL 27-30 K-L L4 / INCOMPLETE - CLOSED FOR CCD 310 LAYOUT,TK_Complete,2024-01-22 07:00,2024-01-25 17:00,2024-01-10 07:00,2024-05-30 17:00,80.0,0.0,80.0,0.0,CIP Concrete Topping Slab Crews,0.0,0.0,0.0,,80.0,80.0
100230275,CN.SWB4.6540,IMPACT - DWG CHANGE RETROFIT STEEL - APPROVAL FABRICATION & INSTALL DRB-001 SEQ#9990 - SWB-4 - L4 - GL 32-33 K-L L2- L4,TK_Complete,2024-02-26 07:00,2024-03-19 17:00,2024-01-16 07:00,2024-06-11 17:00,80.0,0.0,80.0,0.0,CIP Concrete Topping Slab Crews,0.0,0.0,0.0,,80.0,80.0
100230276,CN.SWB4.6550,REMAINING TOPPING SLAB NORTH PIT - SWB-4-L1- GL 27-28,TK_Complete,2023-11-09 07:00,2023-11-10 13:00,2023-11-09 07:00,2023-11-11 12:00,80.0,0.0,80.0,0.0,CIP Concrete Topping Slab Crews,0.0,0.0,0.0,,80.0,80.0
100230277,CN.SWB4.6560,IMPACT [C33] - STAIR TOWER OBSTRUCTION - SWB-4-L1- GL 27-28,TK_Complete,2023-11-09 07:00,2023-11-10 13:00,2023-11-09 07:00,2023-11-11 12:00,80.0,0.0,80.0,0.0,CIP Concrete Topping Slab Crews,0.0,0.0,0.0,,80.0,80.0
100230287,CN.SWB4.6660,IMPACT - K-LINE STEEL SPRAY FIREPROOFING SFRM2 - SWB4 - L3-CEILING - GL 27-30,TK_Complete,2024-04-25 07:00,2024-04-26 17:00,2024-04-25 07:00,2024-04-29 17:00,80.0,0.0,80.0,0.0,CIP Concrete Topping Slab Crews,0.0,0.0,0.0,,80.0,80.0
100230289,CN.SWB4.6680,INSTALL FRAMING FOR IMP - GL 27-30 - J LINE (AD AREA),TK_Complete,2024-05-20 07:00,2024-05-21 17:00,2024-05-01 07:00,2024-05-14 17:00,80.0,0.0,80.0,0.0,CIP Concrete Topping Slab Crews,0.0,0.0,0.0,,80.0,80.0
100230299,CN.SWB4.6770,DS ROOF PARAPET DRY IN - SWB4 - GL 27-30 - K-L - L6,TK_Complete,2024-09-16 07:00,2024-10-04 17:00,2024-08-26 07:00,2024-09-12 17:00,580.0,0.0,580.0,0.0,W&W DS/AD Infill Steel - West - Team B,58.0,0.0,58.0,"200-300 Ton Crawler, 55 Ton Mobile Support Crane",638.0,638.0
100230308,CN.SWB5.1010,PH1-FRP PIER CAPS - SWB5,TK_Complete,2022-10-29 14:00,2022-11-01 08:00,2022-10-29 14:00,2022-11-03 09:00,510.0,0.0,510.0,0.0,CIP Concrete SUP Pier Cap Crew,17.0,0.0,17.0,50-75 Ton Mobile Support Crane,527.0,527.0
100230311,CN.SWB5.1060,PH1- FRP SLAB - SWB-5-L2,TK_Complete,2023-10-16 07:00,2023-10-17 13:00,2023-10-16 07:00,2023-10-17 13:00,280.0,0.0,280.0,0.0,CIP Concrete Slab on Metal Deck Crews,10.0,0.0,10.0,50-75 Ton Mobile Support Crane,290.0,290.0
100230312,CN.SWB5.1090,PH1- FRP SLAB - SWB-5-L3,TK_Complete,2023-09-11 09:00,2023-09-14 13:00,2023-09-11 09:00,2023-09-13 17:00,280.0,0.0,280.0,0.0,CIP Concrete Slab on Metal Deck Crews,10.0,0.0,10.0,50-75 Ton Mobile Support Crane,290.0,290.0
100230313,CN.SWB5.1120,PH1- FRP SLAB - SWB-5-ROOF,TK_Complete,2023-10-16 07:00,2023-10-18 12:00,2023-10-16 07:00,2023-10-21 11:00,280.0,0.0,280.0,0.0,CIP Concrete Slab on Metal Deck Crews,10.0,0.0,10.0,50-75 Ton Mobile Support Crane,290.0,290.0
100230317,CN.SWB5.1100,PH1- 1st FLOOR SLAB - SWB-5-L1,TK_Complete,2023-02-20 07:00,2023-02-24 17:00,2023-02-10 07:00,2023-02-15 07:00,646.0,0.0,646.0,0.0,CIP Concrete SOG Crews,19.0,0.0,19.0,50-75 Ton Mobile Support Crane,665.0,665.0
100230318,CN.SWB5.1230,MEP EQPT PADS (LAYOUT & INSTALL DOWELS)- SWB-5-ROOF,TK_Complete,2024-07-29 07:00,2024-07-30 17:00,2024-07-27 07:00,2024-08-03 17:00,400.0,0.0,400.0,0.0,CIP Concrete Topping Slab Crews,0.0,0.0,0.0,,400.0,400.0
100230320,CN.SWB5.1050,TIER 1 ERECT PRECAST COLUMNS & BEAMS - SWB5,TK_Complete,2023-07-10 09:00,2023-07-15 15:00,2023-07-10 09:00,2023-08-04 17:00,200.0,0.0,200.0,0.0,Precast Erect Crew SUP Col's/Bm's/Girders,25.0,0.0,25.0,LR-1400 400 Ton Crawler Crane,225.0,225.0
100230321,CN.SWB5.1150,PH1-ROOF LAYER PARAPET - SWB5,TK_Complete,2024-02-26 07:00,2024-02-27 13:00,2024-02-26 07:00,2024-02-27 13:00,64.0,0.0,64.0,0.0,Precast Erect Crew SUP Col's/Bm's/Girders,8.0,0.0,8.0,185 Ton Crawler Crane Unload/Handle Waffles,72.0,72.0
100230322,CN.SWB5.1170,PH1-FLUID APPLIED MEMBRANE ROOFING - SWB5,TK_Complete,2024-02-26 07:00,2024-03-01 09:00,2024-02-05 07:00,2024-02-07 09:00,112.0,0.0,112.0,0.0,SUP Bldg Roofing Membrane Crew,0.0,0.0,0.0,,112.0,112.0
100230323,CN.SWB5.1180,PH1 - CLADDING STEEL INTERIOR GL 30-33 - K LINE (AD AREA),TK_Complete,2024-04-04 08:30,2024-04-16 10:30,2024-04-04 07:00,2024-04-06 00:00,300.0,0.0,300.0,0.0,"Cladding Steel, Insulated Metal Panel - Prefab Crews",15.0,0.0,15.0,50 Ton Mobile Support Crane,315.0,315.0
100230324,CN.SWB5.1160,PH1 - CLADDING STEEL  - SWB-5  N LINE [SUP EXTERIOR WALL],TK_Complete,2023-11-18 08:00,2023-11-27 14:00,2023-11-16 08:00,2023-12-07 17:00,330.0,0.0,330.0,0.0,"Insulated Metal Panels - Lower Areas, Insulated Metal Panel - Prefab Crews",15.0,0.0,15.0,50 Ton Mobile Support Crane,345.0,345.0
100230325,CN.SWB5.1190,INSTALL INSULATED METAL PANEL MODULES - GL 31-33 - N LINE WEST WALL - PENTHOUSE],TK_Complete,2025-01-16 07:00,2025-01-22 17:00,2025-01-16 07:00,2025-01-22 17:00,330.0,0.0,330.0,0.0,"Insulated Metal Panels - Lower Areas, Insulated Metal Panel - Prefab Crews",15.0,0.0,15.0,50 Ton Mobile Support Crane,345.0,345.0
100230326,CN.SWB5.1130,PH1- AD STEEL FRAME INSTALL - SWB-5 fab side,TK_Complete,2023-10-15 15:00,2023-10-18 18:00,2023-10-15 15:00,2023-10-20 09:00,580.0,0.0,580.0,0.0,W&W DS/AD Infill Steel - West - Team B,58.0,0.0,58.0,"200-300 Ton Crawler, 55 Ton Mobile Support Crane",638.0,638.0
100230331,CN.SWB5.1250,DS STEEL SPRAY FIREPROOFING SFRM - SWB-5 - L4&L5 CEILING GL 30-33/J-L,TK_Complete,2024-09-09 07:00,2024-09-20 17:00,2024-08-23 07:00,2024-08-28 17:00,80.0,0.0,80.0,0.0,CIP Concrete Topping Slab Crews,0.0,0.0,0.0,,80.0,80.0
100230337,CN.SWB5.1350,PH1- TOPPING SLAB w TRENCH & ANGLE EMBEDS- SWB-5-L1,TK_Complete,2023-11-09 11:00,2023-11-11 15:00,2023-10-05 11:00,2023-10-07 16:00,80.0,0.0,80.0,0.0,CIP Concrete Topping Slab Crews,0.0,0.0,0.0,,80.0,80.0
100230338,CN.SWB5.1360,PH1- DS/AD DETAILING GL 30 - 33- DS/AD SWB-5- L4 & L4/E,TK_Complete,2024-01-02 09:00,2024-01-20 12:00,2024-01-09 07:00,2024-01-12 17:00,580.0,0.0,580.0,0.0,W&W DS/AD Infill Steel - West - Team B,58.0,0.0,58.0,"200-300 Ton Crawler, 55 Ton Mobile Support Crane",638.0,638.0
100230339,CN.SWB5.1370,PH1- DS/AD FRP SLAB - DS/AD SWB-5 -  L4/E,TK_Complete,2024-01-18 07:00,2024-01-23 10:00,2024-01-13 07:00,2024-01-14 16:00,695.0,0.0,695.0,0.0,"W&W DS/AD Infill Steel - West - Team B, CIP Concrete Slab on Metal Deck Crews",58.0,0.0,58.0,"200-300 Ton Crawler, 55 Ton Mobile Support Crane",753.0,753.0
100230340,CN.SWB5.1380,AD WATERPROOFING - SWB5 - GL 30-33 - J-K - L4/E [LEAVEOUT 32.5~33 - PENDING DESIGN],TK_Complete,2024-06-21 07:00,2024-07-11 17:00,2024-06-07 07:00,2024-06-20 17:00,580.0,0.0,580.0,0.0,W&W DS/AD Infill Steel - West - Team B,58.0,0.0,58.0,"200-300 Ton Crawler, 55 Ton Mobile Support Crane",638.0,638.0
100230341,CN.SWB5.1390,AD TOPPING SLAB - SWB5 - GL 30-33 - J-K - L4/E [LEAVEOUT 32.5~33 - PENDING DESIGN],TK_Complete,2024-07-12 07:00,2024-07-17 17:00,2024-06-20 07:00,2024-06-25 17:00,580.0,0.0,580.0,0.0,W&W DS/AD Infill Steel - West - Team B,58.0,0.0,58.0,"200-300 Ton Crawler, 55 Ton Mobile Support Crane",638.0,638.0
100230342,TIER 25.105WN,TIER 2 GROUT PRECAST COLUMNS & BEAMS - SWB5,TK_Complete,2023-08-21 07:00,2023-08-25 09:00,2023-08-15 07:00,2023-08-18 17:00,200.0,0.0,200.0,0.0,Precast Erect Crew SUP Col's/Bm's/Girders,25.0,0.0,25.0,LR-1400 400 Ton Crawler Crane,225.0,225.0
100230351,CN.SWB5.1490,PH1- ERECT STEEL - NW PENTHOUSE,TK_Complete,2023-12-19 15:00,2024-01-04 16:00,2023-12-05 15:00,2024-02-16 15:00,580.0,0.0,580.0,0.0,W&W DS/AD Infill Steel - West - Team B,58.0,0.0,58.0,"200-300 Ton Crawler, 55 Ton Mobile Support Crane",638.0,638.0
100230352,CN.SWB5.1790,PH1 - INSTALL CLADDING STEEL & DETAILING - NW PENTHOUSE,TK_Complete,2024-05-31 07:00,2024-06-24 17:00,2024-04-22 07:00,2024-05-17 17:00,580.0,0.0,580.0,0.0,W&W DS/AD Infill Steel - West - Team B,58.0,0.0,58.0,"200-300 Ton Crawler, 55 Ton Mobile Support Crane",638.0,638.0
100230353,CN.SWB5.1800,PH1- INSTALL EXTERIOR DOOR / LOUVERS FRAMES - NW PENTHOUSE,TK_NotStart,2025-12-04 07:00,2025-12-08 17:00,,,580.0,580.0,0.0,0.0,W&W DS/AD Infill Steel - West - Team B,58.0,58.0,0.0,"200-300 Ton Crawler, 55 Ton Mobile Support Crane",638.0,0.0
100230354,CN.SWB5.1810,PH1- - NW PENTHOUSE BERG FRAMING & SHEATHING - SOUTH WALL & BREEZE WAY,TK_Complete,2024-09-30 07:00,2024-10-04 17:00,2024-09-24 07:00,2025-10-06 17:00,580.0,0.0,0.0,0.0,W&W DS/AD Infill Steel - West - Team B,58.0,0.0,0.0,"200-300 Ton Crawler, 55 Ton Mobile Support Crane",638.0,0.0
100230355,CN.SWB5.1820,PH1- INSTALL EXTERIOR DOORS / LOUVERS - NW PENTHOUSE,TK_NotStart,2025-12-09 07:00,2025-12-11 17:00,,,580.0,580.0,0.0,0.0,W&W DS/AD Infill Steel - West - Team B,58.0,58.0,0.0,"200-300 Ton Crawler, 55 Ton Mobile Support Crane",638.0,0.0
100230356,CN.SWB5.1830,PH1- INSTALL EXTERIOR STEEL ACCESS STAIRS / RAMPS - NW PENTHOUSE - STAIR R3/R18/66,TK_NotStart,2025-12-01 07:00,2025-12-03 17:00,,,580.0,580.0,0.0,0.0,W&W DS/AD Infill Steel - West - Team B,58.0,58.0,0.0,"200-300 Ton Crawler, 55 Ton Mobile Support Crane",638.0,0.0
100230357,CN.SWB5.1840,PH1- INSTALL INTERIOR METAL STUD FRAMING (2hr) FIRE ALARM ROOM & IT/SECURITY ROOM 5 - NW PENTHOUSE,TK_Complete,2025-02-24 07:00,2025-02-28 17:00,2025-02-03 07:00,2025-05-30 17:00,580.0,0.0,580.0,0.0,W&W DS/AD Infill Steel - West - Team B,58.0,0.0,58.0,"200-300 Ton Crawler, 55 Ton Mobile Support Crane",638.0,638.0
100230358,CN.SWB5.1850,PH1- INSTALL INTERIOR DRYWALL 1ST LAYER - IT SECURITY/ FIRE ALARM ROOM - NW PENTHOUSE,TK_Complete,2025-02-28 07:00,2025-03-05 17:00,2025-02-10 07:00,2025-05-30 17:00,9.354839,0.0,9.354839,0.0,W&W DS/AD Infill Steel - West - Team B,58.0,0.0,58.0,"200-300 Ton Crawler, 55 Ton Mobile Support Crane",67.354839,67.354839
100230359,CN.SWB5.1860,PH1- INSTALL DECKING & STUDS - NW PENTHOUSE ROOF,TK_Complete,2024-02-16 15:00,2024-02-22 13:00,2024-02-16 15:00,2024-02-18 16:00,580.0,0.0,580.0,0.0,W&W DS/AD Infill Steel - West - Team B,58.0,0.0,58.0,"200-300 Ton Crawler, 55 Ton Mobile Support Crane",638.0,638.0
100230360,CN.SWB5.1870,PH1- FRP SLAB ON DECK - NW PENTHOUSE ROOF,TK_Complete,2024-02-26 07:00,2024-02-29 11:00,2024-02-26 07:00,2024-02-29 11:00,580.0,0.0,580.0,0.0,W&W DS/AD Infill Steel - West - Team B,58.0,0.0,58.0,"200-300 Ton Crawler, 55 Ton Mobile Support Crane",638.0,638.0
100230361,CN.SWB5.2060,PH1- INSTALL DECKING - NW PENTHOUSE,TK_Complete,2024-02-16 15:00,2024-02-18 11:00,2024-02-16 15:00,2024-02-19 14:00,580.0,0.0,580.0,0.0,W&W DS/AD Infill Steel - West - Team B,58.0,0.0,58.0,"200-300 Ton Crawler, 55 Ton Mobile Support Crane",638.0,638.0
100230362,CN.AB1.ST.1560,PH1- FIRE PROOFING - SFRM INFILL STEEL - SWA - 5 L3,TK_Complete,2024-02-29 13:00,2024-03-04 13:00,2024-02-29 13:00,2024-03-04 17:00,320.0,0.0,320.0,0.0,"Precast Erect Crew FAB Waffles & Double-T's, Precast GROUTERS",40.0,0.0,40.0,"Precast Carry-Lift, 185 Ton Crawler Crane Unload/Handle Waffles",360.0,360.0
100230363,CN.SWB5.2120,PH1- FRP STRUCTURAL SLAB SOMD - NW PENTHOUSE,TK_Complete,2024-06-04 07:00,2024-06-06 17:00,2024-05-22 07:00,2024-05-23 17:00,580.0,0.0,580.0,0.0,W&W DS/AD Infill Steel - West - Team B,58.0,0.0,58.0,"200-300 Ton Crawler, 55 Ton Mobile Support Crane",638.0,638.0
100230364,CN.SWB5.2130,PH1- DS STEEL FRAME INSTALL - SWB-5 Comeback Sup Side,TK_Complete,2023-10-21 08:00,2023-10-25 10:30,2023-10-21 08:00,2023-10-25 15:00,580.0,0.0,580.0,0.0,W&W DS/AD Infill Steel - West - Team B,58.0,0.0,58.0,"200-300 Ton Crawler, 55 Ton Mobile Support Crane",638.0,638.0
100230365,CN.SWB5.2140,PH1- EXTERIOR CURBS - SWB-5-L1,TK_Complete,2023-10-19 11:00,2023-10-24 11:00,2023-09-13 11:00,2023-09-19 17:00,80.0,0.0,80.0,0.0,CIP Concrete Topping Slab Crews,0.0,0.0,0.0,,80.0,80.0
100230366,CN.SWB5.2150,PH1- MEP PADS/ INTERIOR CURBS - SWB-5-L1 - GCS STORAGE,TK_Complete,2023-10-24 07:00,2023-10-25 13:30,2023-10-24 07:00,2023-10-25 13:30,80.0,0.0,80.0,0.0,CIP Concrete Topping Slab Crews,0.0,0.0,0.0,,80.0,80.0
100230398,CN.SWB4.4630,AD STEEL PAINT FIREPROOFING IFRM - SWB-5 - GL 30-33 - K-L - L2-CEILING,TK_Complete,2024-07-16 07:00,2024-07-22 17:00,2024-07-16 07:00,2024-07-22 17:00,80.0,0.0,80.0,0.0,CIP Concrete Topping Slab Crews,0.0,0.0,0.0,,80.0,80.0
100230399,CN.SWB4.4610,PH1- DS/AD DECKING & DETAILING GL 30- 33 - DS/AD SWB-5 L2,TK_Complete,2023-10-27 07:00,2023-11-09 09:00,2023-10-27 07:00,2023-10-29 16:00,580.0,0.0,580.0,0.0,W&W DS/AD Infill Steel - West - Team B,58.0,0.0,58.0,"200-300 Ton Crawler, 55 Ton Mobile Support Crane",638.0,638.0
100230400,CN.SWB4.4620,PH1- DS/AD FRP SLAB - DS/AD SWB-5 L2,TK_Complete,2023-12-18 07:00,2023-12-20 11:00,2023-12-18 07:00,2023-12-20 11:00,695.0,0.0,695.0,0.0,"W&W DS/AD Infill Steel - West - Team B, CIP Concrete Slab on Metal Deck Crews",58.0,0.0,58.0,"200-300 Ton Crawler, 55 Ton Mobile Support Crane",753.0,753.0
100230419,CN.SWB5.6210,IMPACT - MISSING EMBED ALONG L LINE BETWEEN GL 31-32 - SWB5 - L4A - TR081 - SEQ 4904,TK_Complete,2024-01-22 07:00,2024-01-24 11:00,2023-10-23 07:00,2024-04-01 17:00,280.0,0.0,280.0,0.0,CIP Concrete Slab on Metal Deck Crews,10.0,0.0,10.0,50-75 Ton Mobile Support Crane,290.0,290.0
100230420,SITE.SWB5.2140,IMPACT - TRESTLE & PAVING (Patriot relocated) - GL 32-33 - SWB-5-L1,TK_Complete,2023-10-19 11:00,2023-10-24 11:00,2023-09-23 08:00,2023-11-16 17:00,80.0,0.0,80.0,0.0,CIP Concrete Topping Slab Crews,0.0,0.0,0.0,,80.0,80.0
100230434,CN.SWB5.6410,DOOR FRAMES BITUMINOUS COATING (2 Exterior) - NW PENTHOUSE,TK_NotStart,2025-11-21 07:00,2025-11-21 17:00,,,580.0,580.0,0.0,0.0,W&W DS/AD Infill Steel - West - Team B,58.0,58.0,0.0,"200-300 Ton Crawler, 55 Ton Mobile Support Crane",638.0,0.0
100230437,CN.SWB4.6350,DS/AD STEEL SPRAY FIREPROOFING SFRM- SWB-5 L1 CEILING - GL 30-33,TK_Complete,2024-01-02 09:00,2024-01-07 16:00,2024-01-02 07:00,2024-01-08 09:00,80.0,0.0,80.0,0.0,CIP Concrete Topping Slab Crews,0.0,0.0,0.0,,80.0,80.0
100230438,CN.SWB5.6420,K-LINE STEEL SPRAY FIREPROOFING SFRM2 - SWB5 - L3-CEILING - GL 30-33,TK_Complete,2024-04-24 07:00,2024-04-29 17:00,2024-04-24 07:00,2024-04-29 17:00,80.0,0.0,80.0,0.0,CIP Concrete Topping Slab Crews,0.0,0.0,0.0,,80.0,80.0
100230439,CN.SWB5.6440,IMPACT - PRECAST COLUMN OUT OF TOLERANCE ABs - ERECT STEEL - NW PENTHOUSE,TK_Complete,2023-12-19 15:00,2024-01-04 16:00,2023-12-30 15:00,2024-01-11 17:00,580.0,0.0,580.0,0.0,W&W DS/AD Infill Steel - West - Team B,58.0,0.0,58.0,"200-300 Ton Crawler, 55 Ton Mobile Support Crane",638.0,638.0
100230440,CN.SWB5.6450,IMPACT - PRECAST COLUMN OUT OF TOLERANCE ABs - ERECT STEEL - NE PENTHOUSE,TK_Complete,2023-12-19 15:00,2024-01-04 16:00,2023-12-30 15:00,2024-01-21 11:00,580.0,0.0,580.0,0.0,W&W DS/AD Infill Steel - West - Team B,58.0,0.0,58.0,"200-300 Ton Crawler, 55 Ton Mobile Support Crane",638.0,638.0
100230441,CN.SWB5.6470,ROOFTOP DRY PARAPET - SWB-1 (DS AREA) GL 30-33 N (DS AREA),TK_Complete,2024-03-04 08:00,2024-03-08 08:00,2024-03-04 08:00,2024-03-06 10:00,300.0,0.0,300.0,0.0,"Cladding Steel, Insulated Metal Panel - Prefab Crews",15.0,0.0,15.0,50 Ton Mobile Support Crane,315.0,315.0
100230443,CN.SWB5.6490,INSTALL TPO ROOFING - SWB5 - GL 30-33 - K-L - L6 - NORTHWEST PENTHOUSE,TK_Complete,2025-10-13 07:00,2025-10-16 17:00,2025-10-10 07:00,2025-10-16 17:00,580.0,0.0,0.0,0.0,W&W DS/AD Infill Steel - West - Team B,58.0,0.0,0.0,"200-300 Ton Crawler, 55 Ton Mobile Support Crane",638.0,0.0
100230452,CN.SWB5.6610,IMPACT [ES 8] - DESIGN CHANGE - BRIDGE & TRESTLE WORK GL 30-32 - N LINE [SUP EXTERIOR WALL],TK_Complete,2024-01-25 07:00,2024-02-01 15:00,2024-01-04 07:00,2024-04-24 17:00,330.0,0.0,330.0,0.0,"Insulated Metal Panels - Lower Areas, Insulated Metal Panel - Prefab Crews",15.0,0.0,15.0,50 Ton Mobile Support Crane,345.0,345.0
100230459,CN.SWB5.6790,IMPACT [C32] - RFI 5153 / Y_RFI 1217 - TOPPING SLAB REWORK & REPLACEMENT - NORTH PIT - SWB-5-L1 GL 30-31,TK_Complete,2024-04-11 07:00,2024-04-15 11:00,2024-03-20 07:00,2024-04-02 17:00,80.0,0.0,80.0,0.0,CIP Concrete Topping Slab Crews,0.0,0.0,0.0,,80.0,80.0
100230460,CN.SWB5.6800,IMPACT [C32] - SCAFFOLD SHORING MATERIAL IN WAY - NORTH PIT - SWB-5-L1 GL 30-31,TK_Complete,2024-03-25 07:00,2024-03-29 17:00,2024-03-18 08:00,2024-03-20 16:00,80.0,0.0,80.0,0.0,CIP Concrete Topping Slab Crews,0.0,0.0,0.0,,80.0,80.0
100230472,CN.SWB5.7930,IMPACT - K-LINE STEEL SPRAY FIREPROOFING SFRM2- SWB-5- L3-CEILING 30-33 - SWB5 - L3-CEILING - GL 30-33,TK_Complete,2024-04-25 07:00,2024-04-26 17:00,2024-04-25 07:00,2024-04-29 17:00,80.0,0.0,80.0,0.0,CIP Concrete Topping Slab Crews,0.0,0.0,0.0,,80.0,80.0
100230477,CN.SWB4.6730,CURE - AD STEEL PAINT FIREPROOFING IFRM - SWB-5 - GL 30-33 - K-L - L2-CEILING,TK_Complete,2024-08-09 07:00,2024-08-28 17:00,2024-07-23 07:00,2024-08-07 17:00,80.0,0.0,80.0,0.0,CIP Concrete Topping Slab Crews,0.0,0.0,0.0,,80.0,80.0
100230484,CN.SWB5.9450,IMPACT - AD WATERPROOFING - SWB5 - GL 32.5-33 - J-K - L4/E,TK_Complete,2025-05-27 07:00,2025-06-13 17:00,2025-03-10 07:00,2025-03-13 07:00,580.0,0.0,580.0,0.0,W&W DS/AD Infill Steel - West - Team B,58.0,0.0,58.0,"200-300 Ton Crawler, 55 Ton Mobile Support Crane",638.0,638.0
100230485,CN.SWB5.9460,IMPACT - AD TOPPING SLAB - SWB5 - GL 32.5-33 - J-K - L4/E,TK_Complete,2025-06-16 07:00,2025-06-18 17:00,2025-03-14 07:00,2025-03-20 17:00,580.0,0.0,580.0,0.0,W&W DS/AD Infill Steel - West - Team B,58.0,0.0,58.0,"200-300 Ton Crawler, 55 Ton Mobile Support Crane",638.0,638.0
100230503,CN.SWB5.9860,DS ROOF PARAPET DRY IN - SWB5 - GL 30-33 - K-L - L6 - NORTH WEST PENTHOUSE(2 Sides REMAINING),TK_Complete,2024-10-21 07:00,2024-11-08 17:00,2024-10-21 07:00,2025-10-21 07:00,580.0,0.0,372.857143,0.0,W&W DS/AD Infill Steel - West - Team B,58.0,0.0,37.285714,"200-300 Ton Crawler, 55 Ton Mobile Support Crane",638.0,410.142857
100230509,CN.SWB5.10360,PAINT BOLTS & INSTALL INSULATED METAL PANEL MODULES - GL 31-33 - N LINE - ABOVE & BELOW TRESTLE,TK_Complete,2024-12-09 07:00,2024-12-26 17:00,2024-12-09 07:00,2025-02-12 17:00,330.0,0.0,330.0,0.0,"Insulated Metal Panels - Lower Areas, Insulated Metal Panel - Prefab Crews",15.0,0.0,15.0,50 Ton Mobile Support Crane,345.0,345.0
100230512,CN.SWB5.10440,TAPE & FINISH I/O ROOM EXTERIOR  (2hr) - NW PENTHOUSE,TK_NotStart,2025-11-24 07:00,2025-11-26 17:00,,,580.0,580.0,0.0,0.0,W&W DS/AD Infill Steel - West - Team B,58.0,58.0,0.0,"200-300 Ton Crawler, 55 Ton Mobile Support Crane",638.0,0.0
100230513,CN.SWB5.10450,IMPACT - ELECTRICAL OPENING - WALL ON HOLD FOR SECAI MEP ACCESS - I/O ROOM - NW PENTHOUSE,TK_Complete,2024-08-12 07:00,2024-08-15 17:00,2024-11-01 07:00,2025-05-30 17:00,580.0,0.0,580.0,0.0,W&W DS/AD Infill Steel - West - Team B,58.0,0.0,58.0,"200-300 Ton Crawler, 55 Ton Mobile Support Crane",638.0,638.0
100230514,CN.SWB5.10460,IMPACT - SECAI MEP MATERIAL IN THE WAY (2hr) - FIRE ALARM ROOM & IT/SECURITY ROOM 5 - NW PENTHOUSE,TK_Complete,2024-08-12 07:00,2024-08-16 17:00,2024-08-12 07:00,2024-11-25 17:00,580.0,0.0,580.0,0.0,W&W DS/AD Infill Steel - West - Team B,58.0,0.0,58.0,"200-300 Ton Crawler, 55 Ton Mobile Support Crane",638.0,638.0
100230519,CN.SWB5.10600,ALPHA PAINT CLADDING STEEL & BOLTS - GL 31-33 - N LINE WEST WALL - PENTHOUSE],TK_Complete,2024-12-09 07:00,2024-12-13 17:00,2024-12-09 07:00,2024-12-27 17:00,330.0,0.0,330.0,0.0,"Insulated Metal Panels - Lower Areas, Insulated Metal Panel - Prefab Crews",15.0,0.0,15.0,50 Ton Mobile Support Crane,345.0,345.0
100230520,CN.SWB5.10740,IMPACT - TEMP POWER CABLES IN THE WAY L/ 32 - NW PENTHOUSE,TK_Complete,2024-11-01 07:00,2024-11-07 17:00,2024-11-01 07:00,2025-05-30 17:00,9.354839,0.0,9.354839,0.0,W&W DS/AD Infill Steel - West - Team B,58.0,0.0,58.0,"200-300 Ton Crawler, 55 Ton Mobile Support Crane",67.354839,67.354839
100230522,CN.SWB5.10760,IMPACT RFI 1678 PENETRATIONDETAIL AT DUCT SHAFT STEEL - GL 31-33 - N LINE - ABOVE TRESTLE,TK_Complete,2024-12-09 07:00,2024-12-26 17:00,2024-12-09 07:00,2025-02-03 17:00,330.0,0.0,330.0,0.0,"Insulated Metal Panels - Lower Areas, Insulated Metal Panel - Prefab Crews",15.0,0.0,15.0,50 Ton Mobile Support Crane,345.0,345.0
100230523,CN.SWB5.10780,"IMPACT RFI 1678 PENETRATIONDETAIL AT DUCT SHAFT STEEL IOCC APPROVAL, FAB - GL 31-33 - N LINE - ABOVE TRESTLE",TK_Complete,2025-02-04 07:00,2025-02-17 17:00,2025-02-04 07:00,2025-02-28 17:00,330.0,0.0,330.0,0.0,"Insulated Metal Panels - Lower Areas, Insulated Metal Panel - Prefab Crews",15.0,0.0,15.0,50 Ton Mobile Support Crane,345.0,345.0
100230524,CN.SWB5.10790,IMPACT RFI 1678 INSTALL STEEL & IMP - GL 31-33 - N LINE - ABOVE TRESTLE,TK_Complete,2025-03-04 07:00,2025-03-19 17:00,2025-03-04 07:00,2025-06-25 17:00,330.0,0.0,330.0,0.0,"Insulated Metal Panels - Lower Areas, Insulated Metal Panel - Prefab Crews",15.0,0.0,15.0,50 Ton Mobile Support Crane,345.0,345.0
100230527,CN.SWB5.10840,FRAMING & DRYWALL COLUMN N33 M33 - NW PENTHOUSE,TK_Complete,2025-07-14 07:00,2025-07-17 17:00,2025-07-14 07:00,2025-07-25 17:00,9.354839,0.0,0.0,0.0,W&W DS/AD Infill Steel - West - Team B,58.0,0.0,0.0,"200-300 Ton Crawler, 55 Ton Mobile Support Crane",67.354839,0.0
100230528,CN.SWB5.10850,PH1- IMPACT - AXIOS DEMO'ED L32 SHAFT WALL - NEED REWORK - FIRE ALARM ROOM & IT/SECURITY ROOM 5 - NW PENTHOUSE,TK_Complete,2025-02-27 07:00,2025-03-04 17:00,2025-02-19 07:00,2025-03-01 17:00,580.0,0.0,580.0,0.0,W&W DS/AD Infill Steel - West - Team B,58.0,0.0,58.0,"200-300 Ton Crawler, 55 Ton Mobile Support Crane",638.0,638.0
100230529,CN.SWB5.10860,IMPACT - ELECTRICAL OPENING - WALL ON HOLD FOR SECAI MEP ACCESS - I/O ROOM - NE PENTHOUSE,TK_Complete,2024-08-12 07:00,2024-08-15 17:00,2024-11-01 07:00,2025-03-01 17:00,580.0,0.0,580.0,0.0,W&W DS/AD Infill Steel - West - Team B,58.0,0.0,58.0,"200-300 Ton Crawler, 55 Ton Mobile Support Crane",638.0,638.0
100230533,CN.A1.UG.1090,PH1- UNDERGROUND PLUMBING SEA1,TK_Complete,2022-10-10 15:00,2022-10-15 15:00,2022-10-10 15:00,2022-10-15 16:00,748.0,0.0,748.0,0.0,CIP Concrete SOG Crews,22.0,0.0,22.0,50-75 Ton Mobile Support Crane,770.0,770.0
100230536,CN.SEA1.1010,PH1-FRP GRADE BEAM- SEA1,TK_Complete,2022-10-06 09:00,2022-10-10 09:00,2022-10-06 09:00,2022-10-11 11:00,480.0,0.0,480.0,0.0,CIP Concrete SUP Pier Cap Crew,16.0,0.0,16.0,50-75 Ton Mobile Support Crane,496.0,496.0
100230537,CN.SEA1.1080,PH1- FRP SLAB - SEA-1-L3,TK_Complete,2023-08-03 09:00,2023-08-05 13:00,2023-07-26 09:00,2023-07-28 09:00,280.0,0.0,280.0,0.0,CIP Concrete Slab on Metal Deck Crews,0.0,0.0,0.0,,280.0,280.0
100230538,CN.SEA1.1120,PH1- FRP SLAB - SEA-1-ROOF,TK_Complete,2023-07-03 07:00,2023-07-03 11:00,2023-07-01 07:00,2023-07-02 11:00,280.0,0.0,280.0,0.0,CIP Concrete Slab on Metal Deck Crews,10.0,0.0,10.0,50-75 Ton Mobile Support Crane,290.0,290.0
100230542,CN.SEA1.1090,PH1- 1st FLOOR SLAB - SEA-1-L1,TK_Complete,2022-10-14 09:00,2022-10-22 10:00,2022-10-14 09:00,2022-10-24 14:00,646.0,0.0,646.0,0.0,CIP Concrete SOG Crews,19.0,0.0,19.0,50-75 Ton Mobile Support Crane,665.0,665.0
100230545,CN.SEA1.1050,TIER 1 ERECT PRECAST COLUMNS & BEAMS - SEA1 (C-Line column delivery delayed),TK_Complete,2023-01-31 08:00,2023-02-18 16:00,2023-01-17 07:00,2023-02-25 16:00,192.0,0.0,192.0,0.0,Precast Erect Crew SUP Col's/Bm's/Girders,24.0,0.0,24.0,LR-1400 400 Ton Crawler Crane,216.0,216.0
100230546,CN.SEA1.1140,PH1-ROOF LAYER PARAPET (FRAMING AND SHEAT RIP) - SEA1 - GL 19-16 - L4 - C-A,TK_Complete,2024-01-10 08:00,2024-01-12 11:00,2024-01-10 08:00,2024-01-11 14:00,64.0,0.0,64.0,0.0,Precast Erect Crew SUP Col's/Bm's/Girders,8.0,0.0,8.0,185 Ton Crawler Crane Unload/Handle Waffles,72.0,72.0
100230547,CN.SEA1.1170,PH1 - CLADDING STEEL INTERIOR - GL 19-16 - D LINE (AD AREA) [Cranes Clashing],TK_Complete,2024-03-11 07:00,2024-03-20 14:00,2024-03-11 07:00,2024-04-05 17:00,300.0,0.0,300.0,0.0,"Cladding Steel, Insulated Metal Panel - Prefab Crews",15.0,0.0,15.0,50 Ton Mobile Support Crane,315.0,315.0
100230548,CN.SEA1.1190,INSTALL INSULATED METAL PANEL MODULES - GL 19-16 - C LINE (DS AREA) (18~21),TK_Complete,2024-04-19 07:00,2024-05-09 17:00,2024-04-16 07:00,2024-04-26 17:00,300.0,0.0,300.0,0.0,"Cladding Steel, Insulated Metal Panel - Prefab Crews",15.0,0.0,15.0,50 Ton Mobile Support Crane,315.0,315.0
100230549,CN.SEA1.1150,PH1 - CLADDING STEEL - SEA-1 A LINE [SUP EXTERIOR WALL],TK_Complete,2023-08-26 08:00,2023-09-01 14:00,2023-08-26 08:00,2023-08-26 08:00,330.0,0.0,330.0,0.0,"Insulated Metal Panels - Lower Areas, Insulated Metal Panel - Prefab Crews",15.0,0.0,15.0,50 Ton Mobile Support Crane,345.0,345.0
100230550,CN.SEA1.1180,INSTALL INSULATED METAL PANEL MODULES - GL 18-16 - A LINE [SUP EXTERIOR WALL],TK_Complete,2024-08-13 07:00,2024-08-23 17:00,2024-08-07 07:00,2024-08-23 17:00,330.0,0.0,330.0,0.0,"Insulated Metal Panels - Lower Areas, Insulated Metal Panel - Prefab Crews",15.0,0.0,15.0,50 Ton Mobile Support Crane,345.0,345.0
100230551,CN.SEA1.1110,PH1- AD STEEL FRAME INSTALL TIER 1 - SEA-1 fab side,TK_Complete,2023-06-10 14:00,2023-06-16 12:00,2023-05-09 16:00,2023-05-19 17:00,580.0,0.0,580.0,0.0,W&W DS/AD Infill Steel - East - Team A,58.0,0.0,58.0,"200-300 Ton Crawler, 55 Ton Mobile Support Crane",638.0,638.0
100230562,CN.SEA1.2990,PH1- DS/AD DETAILING & DECKING  SEA-1GL C-E GL 18 - 15 - L2,TK_Complete,2023-10-09 07:00,2023-10-13 15:00,2023-10-02 07:00,2023-10-25 17:30,580.0,0.0,580.0,0.0,W&W DS/AD Infill Steel - East - Team A,58.0,0.0,58.0,"200-300 Ton Crawler, 55 Ton Mobile Support Crane",638.0,638.0
100230563,CN.SEA1.3000,PH1- DS/AD FRP SLAB - SEA1 - GL 19-16 -L4/E - C-E,TK_Complete,2024-01-06 10:00,2024-01-07 16:00,2024-01-06 10:00,2024-01-12 09:00,695.0,0.0,695.0,0.0,"W&W DS/AD Infill Steel - East - Team A, CIP Concrete Slab on Metal Deck Crews",58.0,0.0,58.0,"200-300 Ton Crawler, 55 Ton Mobile Support Crane",753.0,753.0
100230564,CN.SEA1.3010,AD WATERPROOFING - SEA1 - GL 19-16 - D-E - L4/E,TK_Complete,2024-08-20 07:00,2024-09-06 17:00,2024-07-24 07:00,2024-08-11 17:00,580.0,0.0,580.0,0.0,W&W DS/AD Infill Steel - East - Team A,58.0,0.0,58.0,"200-300 Ton Crawler, 55 Ton Mobile Support Crane",638.0,638.0
100230565,CN.SEA1.3020,AD TOPPING SLAB - SEA1 - GL 19-16 - D-E - L4/E,TK_Complete,2024-08-27 07:00,2024-08-29 17:00,2024-08-12 07:00,2024-08-14 17:00,580.0,0.0,580.0,0.0,W&W DS/AD Infill Steel - East - Team A,58.0,0.0,58.0,"200-300 Ton Crawler, 55 Ton Mobile Support Crane",638.0,638.0
100230566,TIER 21.1050,TIER 2 ERECT PRECAST COLUMNS & BEAMS - SEA1 (C-Line column delivery delayed),TK_Complete,2023-06-22 11:00,2023-06-24 15:00,2023-06-22 11:00,2023-06-24 16:00,192.0,0.0,192.0,0.0,Precast Erect Crew SUP Col's/Bm's/Girders,24.0,0.0,24.0,LR-1400 400 Ton Crawler Crane,216.0,216.0
100230571,CN.SEA1.5110,PH1- DS/AD DECKING & DETAILING SEA-1 GL 19 - 16 L4 & L4/E - C-E,TK_Complete,2024-01-04 13:00,2024-01-06 15:00,2024-01-04 13:00,2024-01-06 10:00,580.0,0.0,580.0,0.0,W&W DS/AD Infill Steel - East - Team A,58.0,0.0,58.0,"200-300 Ton Crawler, 55 Ton Mobile Support Crane",638.0,638.0
100230574,CN.SEA1.5130,PH1- DS STEEL FRAME INSTALL - SEA-1 Comeback Sup Side GL 19-16,TK_Complete,2023-09-30 08:00,2023-10-07 10:00,2023-09-26 08:00,2023-09-30 17:00,580.0,0.0,580.0,0.0,W&W DS/AD Infill Steel - East - Team A,58.0,0.0,58.0,"200-300 Ton Crawler, 55 Ton Mobile Support Crane",638.0,638.0
100230607,CN.SEA1.5310,PH1 - CLADDING STEEL  EXTERIOR - SEA1 - GL 19-16 - C LINE  (DS AREA),TK_Complete,2023-11-02 07:00,2023-11-09 09:00,2023-11-02 07:00,2023-11-09 13:00,300.0,0.0,300.0,0.0,"Cladding Steel, Insulated Metal Panel - Prefab Crews",15.0,0.0,15.0,50 Ton Mobile Support Crane,315.0,315.0
100230619,CN.SEA1.5320,PH1 -WELD CLIPS - CLADDING STEEL - SEA1 - GL 19-16 - C LINE (DS AREA),TK_Complete,2023-11-08 14:00,2023-11-09 16:00,2023-11-08 14:00,2023-11-09 16:00,300.0,0.0,300.0,0.0,"Cladding Steel, Insulated Metal Panel - Prefab Crews",15.0,0.0,15.0,50 Ton Mobile Support Crane,315.0,315.0
100230622,CN.SEA1.5330,PH1- DS/AD DECKING & DETAILING - SEA1 - GL 18-15  C-E - L6,TK_Complete,2023-12-09 08:00,2023-12-14 16:00,2023-12-09 08:00,2023-12-12 11:00,580.0,0.0,580.0,0.0,W&W DS/AD Infill Steel - East - Team A,58.0,0.0,58.0,"200-300 Ton Crawler, 55 Ton Mobile Support Crane",638.0,638.0
100230623,CN.SEA1.5350,PH1- DS/AD FRP SLAB - SEA1 - GL 19-16 - L2 - C-E,TK_Complete,2023-11-13 07:00,2023-11-16 11:00,2023-11-13 07:00,2023-11-16 11:00,695.0,0.0,695.0,0.0,"W&W DS/AD Infill Steel - East - Team A, CIP Concrete Slab on Metal Deck Crews",58.0,0.0,58.0,"200-300 Ton Crawler, 55 Ton Mobile Support Crane",753.0,753.0
100230643,CN.SEA1.6210,DSAD PENETRATION SUPPORT STEEL FRAMING - SEA1 - GL 19-16 - L3 C-E,TK_Complete,2024-01-02 09:00,2024-01-07 08:00,2024-01-16 07:00,2024-01-22 17:00,580.0,0.0,580.0,0.0,W&W DS/AD Infill Steel - East - Team A,58.0,0.0,58.0,"200-300 Ton Crawler, 55 Ton Mobile Support Crane",638.0,638.0
100230644,CN.SEA1.6220,DSAD PENETRATION SUPPORT STEEL FRAMING - SEA1 - GL 17-16 - C-E - L4,TK_Complete,2024-06-21 07:00,2024-06-24 17:00,2024-06-14 07:00,2024-06-17 17:00,580.0,0.0,580.0,0.0,W&W DS/AD Infill Steel - East - Team A,58.0,0.0,58.0,"200-300 Ton Crawler, 55 Ton Mobile Support Crane",638.0,638.0
100230655,CN.SEA1.6440,DS SPRAY FIREPROOFING SFRM - SEA1 - GL 19-17 - C-D - L4&L5 CEILING,TK_NotStart,2025-11-25 07:00,2025-11-26 17:00,,,80.0,80.0,0.0,0.0,CIP Concrete Topping Slab Crews,0.0,0.0,0.0,,80.0,0.0
100230657,CN.SEA1.6450,IMPACT [S.TIA-12] - WAITING ON MEP LAYOUTS - SEA1 - GL 19-16 - L4 - C-E,TK_Complete,2024-01-22 07:00,2024-01-25 17:00,2024-01-10 07:00,2024-04-10 17:00,580.0,0.0,580.0,0.0,W&W DS/AD Infill Steel - East - Team A,58.0,0.0,58.0,"200-300 Ton Crawler, 55 Ton Mobile Support Crane",638.0,638.0
100230661,CN.SEA1.6460,IMPACT - DESIGN CHANGE - RETROFIT STEEL APPROVAL FABRICATION INSTALL - SEA1 - GL 19-18 - C-E - L4(only 4/10 can be insta,TK_Complete,2024-02-26 07:00,2024-03-28 17:00,2024-01-10 07:00,2025-04-25 17:00,580.0,0.0,580.0,0.0,W&W DS/AD Infill Steel - East - Team A,58.0,0.0,58.0,"200-300 Ton Crawler, 55 Ton Mobile Support Crane",638.0,638.0
100230663,CN.SEA1.6490,IMPACT [ES16 / ES17] - RE-INSTALL CLADDING STEEL - GL16-18 - A LINE [SUP EXTERIOR WALL],TK_Complete,2024-07-19 07:00,2024-07-26 17:00,2024-07-08 07:00,2024-07-18 17:00,330.0,0.0,330.0,0.0,"Insulated Metal Panels - Lower Areas, Insulated Metal Panel - Prefab Crews",15.0,0.0,15.0,50 Ton Mobile Support Crane,345.0,345.0
100230665,CN.SEA1.6500,IMPACT [S.TIA-46] - CCD 127 - WW L4E ROOF DRAIN PENETRATION STEEL - SEA1 - GL 19-16 - L4E - C-E,TK_Complete,2024-04-08 07:00,2024-04-29 17:00,2024-03-09 08:00,2024-04-01 16:00,580.0,0.0,580.0,0.0,W&W DS/AD Infill Steel - East - Team A,58.0,0.0,58.0,"200-300 Ton Crawler, 55 Ton Mobile Support Crane",638.0,638.0
100230680,CN.SEA1.6910,DSAD PENETRATION SUPPORT STEEL FRAMING - SEA1 - GL 19-17 - L4 - C-E,TK_Complete,2024-05-09 07:00,2024-05-17 17:00,2024-04-11 07:00,2024-04-17 17:00,580.0,0.0,580.0,0.0,W&W DS/AD Infill Steel - East - Team A,58.0,0.0,58.0,"200-300 Ton Crawler, 55 Ton Mobile Support Crane",638.0,638.0
100230681,CN.SEA1.6940,IMPACT - MECH PIPE NEEDS TO BE REMOVED - GL 18-20 - C LINE (DS AREA) (18-20),TK_Complete,2024-04-19 07:00,2024-05-09 17:00,2024-04-16 07:00,2024-05-13 17:00,300.0,0.0,300.0,0.0,"Cladding Steel, Insulated Metal Panel - Prefab Crews",15.0,0.0,15.0,50 Ton Mobile Support Crane,315.0,315.0
100230691,CN.SEA1.9065,IMPACT - YATES/SECAI COORDINATE PLAN FOR STEEL FIX - L6 EXPANSION JOINT REMEDIATION - GL 19 - C-D / K-L,TK_Complete,2024-02-26 07:00,2024-03-25 17:00,2024-04-15 07:00,2024-06-17 17:00,580.0,0.0,580.0,0.0,W&W DS/AD Infill Steel - East - Team A,58.0,0.0,58.0,"200-300 Ton Crawler, 55 Ton Mobile Support Crane",638.0,638.0
100230692,CN.SEA1.9075,IMPACT - YATES SUBMIT REPAIR PROCEDURE STEEL FIX - L6 EXPANSION JOINT REMEDIATION - GL 19 - C-D / K-L,TK_Complete,2024-06-28 07:00,2024-07-05 17:00,2024-06-18 07:00,2024-06-26 17:00,580.0,0.0,580.0,0.0,W&W DS/AD Infill Steel - East - Team A,58.0,0.0,58.0,"200-300 Ton Crawler, 55 Ton Mobile Support Crane",638.0,638.0
100230693,CN.SEA1.9085,IMPACT - SECAI REVIEW & COORDINATE ALTERNATIVE STEEL FIX - L6 EXPANSION JOINT REMEDIATION - GL 19 - C-D / K-L,TK_Complete,2024-02-26 07:00,2024-03-07 17:00,2024-06-27 07:00,2024-07-10 17:00,580.0,0.0,580.0,0.0,W&W DS/AD Infill Steel - East - Team A,58.0,0.0,58.0,"200-300 Ton Crawler, 55 Ton Mobile Support Crane",638.0,638.0
100230694,CN.SEA1.9105,IMPACT - COMPLETE STEEL FIX - REPLACE CORBELS - L6 EXPANSION JOINT REMEDIATION - GL 19 - C-D,TK_Complete,2024-11-04 07:00,2024-11-15 17:00,2024-11-04 07:00,2024-11-12 17:00,580.0,0.0,580.0,0.0,W&W DS/AD Infill Steel - East - Team A,58.0,0.0,58.0,"200-300 Ton Crawler, 55 Ton Mobile Support Crane",638.0,638.0
100230695,CN.SEA1.9135,IMPACT - COMPLETE STEEL FIX - REPLACE CORBELS - L6 EXPANSION JOINT REMEDIATION - GL 19 - K-L,TK_Complete,2024-10-29 07:00,2024-11-11 17:00,2024-10-28 07:00,2024-11-06 17:00,580.0,0.0,580.0,0.0,W&W DS/AD Infill Steel - East - Team A,58.0,0.0,58.0,"200-300 Ton Crawler, 55 Ton Mobile Support Crane",638.0,638.0
100230711,CN.SEA1.9215,IMPACT - YATES AWAIT JACOBS TO CONFIRM REPLACEMENT CORBEL DESIGN - L6 EXPANSION JOINT REMEDIATION - GL 19 - C-D / K-L,TK_Complete,2024-02-26 07:00,2024-03-07 17:00,2024-06-28 07:00,2024-07-10 17:00,580.0,0.0,580.0,0.0,W&W DS/AD Infill Steel - East - Team A,58.0,0.0,58.0,"200-300 Ton Crawler, 55 Ton Mobile Support Crane",638.0,638.0
100230712,CN.SEA1.9225,IMPACT - WWAFCO PREP CORBEL SHOP DRAWINGS - SUBMIT TO SECAI - L6 EXPANSION JOINT REMEDIATION - GL 19 - C-D / K-L,TK_Complete,2024-07-12 07:00,2024-07-23 17:00,2024-07-11 07:00,2024-09-14 17:00,580.0,0.0,580.0,0.0,W&W DS/AD Infill Steel - East - Team A,58.0,0.0,58.0,"200-300 Ton Crawler, 55 Ton Mobile Support Crane",638.0,638.0
100230713,CN.SEA1.9235,IMPACT - SECAI REVIEW & APPROVE CORBEL SHOP DRAWINGS - L6 EXPANSION JOINT REMEDIATION - GL 19 - C-D / K-L,TK_Complete,2024-09-16 07:00,2024-09-27 17:00,2024-09-16 07:00,2024-09-28 17:00,580.0,0.0,580.0,0.0,W&W DS/AD Infill Steel - East - Team A,58.0,0.0,58.0,"200-300 Ton Crawler, 55 Ton Mobile Support Crane",638.0,638.0
100230714,CN.SEA1.9245,IMPACT - WWAFCO FABRICATE & DELIVER NEW CORBELS - L6 EXPANSION JOINT REMEDIATION - GL 19 - C-D / K-L,TK_Complete,2024-09-30 07:00,2024-10-18 17:00,2024-09-30 07:00,2024-10-26 17:00,580.0,0.0,580.0,0.0,W&W DS/AD Infill Steel - East - Team A,58.0,0.0,58.0,"200-300 Ton Crawler, 55 Ton Mobile Support Crane",638.0,638.0
100230715,CN.SEA1.9255,IMPACT - WWAFCO ERECT SCAFFOLD - L6 EXPANSION JOINT REMEDIATION - GL 19 - C-D,TK_Complete,2024-10-31 07:00,2024-11-12 17:00,2024-10-28 07:00,2024-11-02 17:00,580.0,0.0,580.0,0.0,W&W DS/AD Infill Steel - East - Team A,58.0,0.0,58.0,"200-300 Ton Crawler, 55 Ton Mobile Support Crane",638.0,638.0
100230716,CN.SEA1.9265,IMPACT - WWAFCO DISMANTLE SCAFFOLD - L6 EXPANSION JOINT REMEDIATION - GL 19 - C-D,TK_Complete,2024-11-14 07:00,2024-11-26 17:00,2024-11-14 07:00,2024-11-26 17:00,580.0,0.0,580.0,0.0,W&W DS/AD Infill Steel - East - Team A,58.0,0.0,58.0,"200-300 Ton Crawler, 55 Ton Mobile Support Crane",638.0,638.0
100230717,CN.SEA1.9275,IMPACT - WWAFCO ERECT SCAFFOLD - L6 EXPANSION JOINT REMEDIATION - GL 19 - K-L,TK_Complete,2024-11-01 07:00,2024-11-14 17:00,2024-10-21 07:00,2024-10-26 17:00,580.0,0.0,580.0,0.0,W&W DS/AD Infill Steel - East - Team A,58.0,0.0,58.0,"200-300 Ton Crawler, 55 Ton Mobile Support Crane",638.0,638.0
100230718,CN.SEA1.9285,IMPACT - WWAFCO DISMANTLE SCAFFOLD - L6 EXPANSION JOINT REMEDIATION - GL 19 - K-L,TK_Complete,2024-11-07 07:00,2024-11-19 17:00,2024-11-07 07:00,2024-11-19 17:00,580.0,0.0,580.0,0.0,W&W DS/AD Infill Steel - East - Team A,58.0,0.0,58.0,"200-300 Ton Crawler, 55 Ton Mobile Support Crane",638.0,638.0
100230778,CN.A1.UG.1110,PH1- UNDERGROUND PLUMBING SEA2,TK_Complete,2022-10-10 07:00,2022-10-14 17:00,2022-10-10 07:00,2022-10-14 17:00,748.0,0.0,748.0,0.0,CIP Concrete SOG Crews,22.0,0.0,22.0,50-75 Ton Mobile Support Crane,770.0,770.0
100230781,CN.SEA2.1010,PH1-FRP GRADE BEAM - SEA2,TK_Complete,2022-10-21 07:00,2022-10-23 09:00,2022-10-21 07:00,2022-10-24 11:00,480.0,0.0,480.0,0.0,CIP Concrete SUP Pier Cap Crew,16.0,0.0,16.0,50-75 Ton Mobile Support Crane,496.0,496.0
100230784,CN.SEA2.1080,PH1- FRP SLAB - SEA-2-L3,TK_Complete,2023-06-12 07:00,2023-06-17 15:00,2023-06-12 07:00,2023-06-22 11:00,280.0,0.0,280.0,0.0,CIP Concrete Slab on Metal Deck Crews,10.0,0.0,10.0,50-75 Ton Mobile Support Crane,290.0,290.0
100230785,CN.SEA2.1120,PH1- FRP SLAB - SEA-2-ROOF,TK_Complete,2023-07-11 07:00,2023-07-14 09:00,2023-07-11 07:00,2023-07-22 16:00,280.0,0.0,280.0,0.0,CIP Concrete Slab on Metal Deck Crews,10.0,0.0,10.0,50-75 Ton Mobile Support Crane,290.0,290.0
100230788,CN.SEA2.1090,PH1- 1st FLOOR SLAB - SEA-2-L1,TK_Complete,2022-10-28 09:00,2022-11-01 10:00,2022-10-28 09:00,2022-11-03 12:00,646.0,0.0,646.0,0.0,CIP Concrete SOG Crews,19.0,0.0,19.0,50-75 Ton Mobile Support Crane,665.0,665.0
100230789,CN.SEA2.1190,FRP TOPPING SLAB - GL 16-11 - C-A - L4 ROOF,TK_Complete,2024-07-29 07:00,2024-07-31 17:00,2024-07-24 07:00,2024-07-25 17:00,80.0,0.0,80.0,0.0,CIP Concrete Topping Slab Crews,0.0,0.0,0.0,,80.0,80.0
100230790,CN.SEA2.1220,MEP EQPT PADS (LAYOUT & INSTALL DOWELS)- SEA-2-ROOF,TK_Complete,2023-08-01 13:00,2023-08-03 17:00,2023-07-24 13:00,2023-07-26 13:00,1120.0,0.0,1120.0,0.0,CIP Concrete Topping Slab Crews,0.0,0.0,0.0,,1120.0,1120.0
100230791,CN.SEA2.1050,TIER 1 ERECT PRECAST COLUMNS & BEAMS - SEA2,TK_Complete,2023-02-27 08:00,2023-03-05 14:00,2023-02-27 08:00,2023-03-06 16:00,200.0,0.0,200.0,0.0,Precast Erect Crew SUP Col's/Bm's/Girders,25.0,0.0,25.0,LR-1400 400 Ton Crawler Crane,225.0,225.0
100230792,CN.SEA2.1140,PH1-ROOF LAYER PARAPET (FRAMING & SHEATING RIP)- SEA2 GL 16-13 L4,TK_Complete,2023-08-02 07:00,2023-08-03 13:00,2023-07-26 21:00,2023-07-27 13:00,64.0,0.0,64.0,0.0,Precast Erect Crew SUP Col's/Bm's/Girders,8.0,0.0,8.0,185 Ton Crawler Crane Unload/Handle Waffles,72.0,72.0
100230793,CN.SEA2.1160,PH1-FLUID APPLIED MEMBRANE ROOFING - SEA2,TK_Complete,2023-08-04 07:00,2023-08-07 09:00,2023-07-28 07:00,2023-07-29 07:00,112.0,0.0,112.0,0.0,SUP Bldg Roofing Membrane Crew,0.0,0.0,0.0,,112.0,112.0
100230794,CN.SEA2.1170,PH1 - CLADDING STEEL INTERIOR - GL 16-13 - D LINE (AD AREA),TK_Complete,2024-05-03 07:00,2024-05-10 17:00,2024-04-22 07:00,2024-05-03 17:00,300.0,0.0,300.0,0.0,"Cladding Steel, Insulated Metal Panel - Prefab Crews",15.0,0.0,15.0,50 Ton Mobile Support Crane,315.0,315.0
100230795,CN.SEA2.1200,PH1 - INSTALL INSULATED METAL PANEL MODULES - SEA2 - GL 16-13 - C LINE (DS AREA),TK_Complete,2024-04-15 07:00,2024-04-23 09:00,2024-04-04 11:00,2024-04-12 17:00,300.0,0.0,300.0,0.0,"Cladding Steel, Insulated Metal Panel - Prefab Crews",15.0,0.0,15.0,50 Ton Mobile Support Crane,315.0,315.0
100230796,CN.SEA2.1150,PH1 - CLADDING STEEL - SEA-2 A LINE [SUP EXTERIOR WALL],TK_Complete,2023-10-02 07:00,2023-10-07 13:00,2023-09-23 07:00,2023-09-30 11:00,330.0,0.0,330.0,0.0,"Insulated Metal Panels - Lower Areas, Insulated Metal Panel - Prefab Crews",15.0,0.0,15.0,50 Ton Mobile Support Crane,345.0,345.0
100230797,CN.SEA2.1180,PH1 - INSTALL INSULATED METAL PANEL MODULES - SEA2 - GL 16-13 - A LINE [SUP EXTERIOR WALL],TK_Complete,2024-01-02 11:00,2024-01-12 11:00,2024-01-02 11:00,2024-01-11 15:00,330.0,0.0,330.0,0.0,"Insulated Metal Panels - Lower Areas, Insulated Metal Panel - Prefab Crews",15.0,0.0,15.0,50 Ton Mobile Support Crane,345.0,345.0
100230798,CN.SEA2.1110,PH1- AD STEEL FRAME INSTALL - SEA-2 fab side,TK_Complete,2023-05-23 07:00,2023-05-28 15:00,2023-05-23 07:00,2023-06-02 15:00,580.0,0.0,580.0,0.0,W&W DS/AD Infill Steel - East - Team A,58.0,0.0,58.0,"200-300 Ton Crawler, 55 Ton Mobile Support Crane",638.0,638.0
100230819,CN.SEA2.1310,PH1- TOPPING SLAB w TRENCH & ANGLE EMBEDS- SEA-2-L1,TK_Complete,2023-10-09 07:00,2023-10-16 17:00,2023-09-25 07:00,2023-09-28 09:00,80.0,0.0,80.0,0.0,CIP Concrete Topping Slab Crews,0.0,0.0,0.0,,80.0,80.0
100230820,CN.SEA2.1320,PH1- DS/AD DETAILING GL 16 - 13  SEA-2 GL C-E,TK_Complete,2023-09-16 08:00,2023-09-23 12:00,2023-09-12 08:00,2023-09-20 16:00,580.0,0.0,580.0,0.0,W&W DS/AD Infill Steel - East - Team A,58.0,0.0,58.0,"200-300 Ton Crawler, 55 Ton Mobile Support Crane",638.0,638.0
100230821,CN.SEA2.1340,AD WATERPROOFING - SEA2 - GL 16-13 - D-E - L4/E,TK_Complete,2024-09-09 07:00,2024-09-26 17:00,2024-07-24 07:00,2024-08-11 17:00,580.0,0.0,580.0,0.0,W&W DS/AD Infill Steel - East - Team A,58.0,0.0,58.0,"200-300 Ton Crawler, 55 Ton Mobile Support Crane",638.0,638.0
100230822,CN.SEA2.1350,AD TOPPING SLAB - SEA2 - GL 16-13 - D-E - L4/E,TK_Complete,2024-08-27 07:00,2024-08-29 17:00,2024-08-12 07:00,2024-08-14 17:00,580.0,0.0,580.0,0.0,W&W DS/AD Infill Steel - East - Team A,58.0,0.0,58.0,"200-300 Ton Crawler, 55 Ton Mobile Support Crane",638.0,638.0
100230823,TIER 22.1050,TIER 2 ERECT PRECAST COLUMNS & BEAMS - SEA2,TK_Complete,2023-06-26 07:00,2023-06-30 17:00,2023-06-26 07:00,2023-06-30 17:00,200.0,0.0,200.0,0.0,Precast Erect Crew SUP Col's/Bm's/Girders,25.0,0.0,25.0,LR-1400 400 Ton Crawler Crane,225.0,225.0
100230828,CN.SEA2.1400,PH1- DS/AD DETAILING & DECKING - SEA2 - GL 16-13 - L2-L3 - C-E,TK_Complete,2023-10-30 07:00,2023-11-05 15:00,2023-10-10 07:00,2023-10-18 07:00,580.0,0.0,580.0,0.0,W&W DS/AD Infill Steel - East - Team A,58.0,0.0,58.0,"200-300 Ton Crawler, 55 Ton Mobile Support Crane",638.0,638.0
100230831,CN.SEA2.1420,PH1- DS STEEL FRAME INSTALL - SEA-2 Comeback Sup Side,TK_Complete,2023-07-25 13:00,2023-07-30 11:00,2023-07-13 13:00,2023-07-17 17:00,580.0,0.0,580.0,0.0,W&W DS/AD Infill Steel - East - Team A,58.0,0.0,58.0,"200-300 Ton Crawler, 55 Ton Mobile Support Crane",638.0,638.0
100230832,CN.SEA2.1430,PH1- EXTERIOR CURBS - SEA-2-L1,TK_Complete,2023-05-02 13:00,2023-05-07 13:00,2023-05-02 13:00,2023-05-08 15:00,80.0,0.0,80.0,0.0,CIP Concrete Topping Slab Crews,0.0,0.0,0.0,,80.0,80.0
100230833,CN.SEA2.1440,PH1- MEP PADS - SEA-2-L1,TK_Complete,2023-10-09 07:00,2023-10-11 11:00,2023-10-09 07:00,2023-10-12 11:00,80.0,0.0,80.0,0.0,CIP Concrete Topping Slab Crews,0.0,0.0,0.0,,80.0,80.0
100230843,CN.SEA2.1460,PH1 - CLADDING STEEL  EXTERIOR - SEA2 - GL 16-13 - C LINE  (DS AREA),TK_Complete,2023-11-10 07:00,2023-11-18 09:00,2023-11-10 07:00,2023-12-12 15:00,300.0,0.0,300.0,0.0,"Cladding Steel, Insulated Metal Panel - Prefab Crews",15.0,0.0,15.0,50 Ton Mobile Support Crane,315.0,315.0
100230844,SEA2.MOCKUP,QC INSPECT CLADDING STEEL - SEA2 - GL 15-14 - A LINE [SUP EXTERIOR WALL],TK_Complete,2023-11-11 08:00,2023-11-11 16:00,2023-11-11 08:00,2023-11-11 16:00,300.0,0.0,300.0,0.0,"Cladding Steel, Insulated Metal Panel - Prefab Crews",15.0,0.0,15.0,50 Ton Mobile Support Crane,315.0,315.0
100230845,SEA2.MOCKUP10,BAKER GROUT BASE PLATES - SEA2 - GL 15-14 - C-E,TK_Complete,2023-11-11 15:00,2023-11-12 13:00,2023-11-11 15:00,2023-11-12 15:00,300.0,0.0,300.0,0.0,"Cladding Steel, Insulated Metal Panel - Prefab Crews",15.0,0.0,15.0,50 Ton Mobile Support Crane,315.0,315.0
100230846,SEA2.MOCKUP20,CAULK ANGLES GDA - SEA2 - GL 15-14 - C-E,TK_Complete,2023-11-09 13:00,2023-11-10 11:00,2023-11-09 13:00,2023-11-10 11:00,300.0,0.0,300.0,0.0,"Cladding Steel, Insulated Metal Panel - Prefab Crews",15.0,0.0,15.0,50 Ton Mobile Support Crane,315.0,315.0
100230847,SEA2.MOCKUP30,SECAI QC INSPECTION - CLADDING MOCKUP SIGN OFF - SEA2 - GL 15-14 - C-E,TK_Complete,2023-12-07 07:00,2023-12-07 15:00,2023-12-07 07:00,2023-12-07 15:00,300.0,0.0,300.0,0.0,"Cladding Steel, Insulated Metal Panel - Prefab Crews",15.0,0.0,15.0,50 Ton Mobile Support Crane,315.0,315.0
100230848,SEA2.MOCKUP40,KOVACH MOBILIZATION & DETAILING - SEA2 - GL 15-14 - C-E,TK_Complete,2023-12-08 15:00,2023-12-09 13:00,2023-12-08 15:00,2023-12-09 14:00,300.0,0.0,300.0,0.0,"Cladding Steel, Insulated Metal Panel - Prefab Crews",15.0,0.0,15.0,50 Ton Mobile Support Crane,315.0,315.0
100230849,SEA2.MOCKUP50,SECAI INSPECT IMP MOCKUP - SEA2 - GL 15-14 - C-E,TK_Complete,2023-12-18 13:00,2023-12-19 11:00,2023-12-18 13:00,2023-12-19 11:00,300.0,0.0,300.0,0.0,"Cladding Steel, Insulated Metal Panel - Prefab Crews",15.0,0.0,15.0,50 Ton Mobile Support Crane,315.0,315.0
100230861,CN.SEA2.1490,PH1 -WELD CLIPS - CLADDING STEEL - SEA2 - GL 16-13 - C-E (DSAREA),TK_Complete,2023-10-24 07:00,2023-10-25 09:30,2023-10-24 07:00,2023-10-25 09:30,300.0,0.0,300.0,0.0,"Cladding Steel, Insulated Metal Panel - Prefab Crews",15.0,0.0,15.0,50 Ton Mobile Support Crane,315.0,315.0
100230863,CN.SEA5.3961,PH1- DS/AD DECKING  GL 16 - 13  SEA-2 L2-L3,TK_Complete,2023-09-21 11:00,2023-10-05 17:00,2023-09-21 11:00,2023-09-27 07:00,580.0,0.0,580.0,0.0,W&W DS/AD Infill Steel - East - Team A,58.0,0.0,58.0,"200-300 Ton Crawler, 55 Ton Mobile Support Crane",638.0,638.0
100230864,CN.SEA5.3971,PH1- DS/AD FRP SLAB - SEA2 - GL 16-13 - L3 - C-E,TK_Complete,2023-10-30 07:00,2023-11-02 13:00,2023-10-30 07:00,2023-11-01 07:00,695.0,0.0,695.0,0.0,"W&W DS/AD Infill Steel - East - Team A, CIP Concrete Slab on Metal Deck Crews",58.0,0.0,58.0,"200-300 Ton Crawler, 55 Ton Mobile Support Crane",753.0,753.0
100230882,CN.SEA5.4061,PH1- DS/AD DECKING & DETAILING - SEA2 - GL 16-13 - L6 - C-E,TK_Complete,2023-12-09 08:00,2023-12-14 08:00,2023-12-07 08:00,2023-12-10 11:00,580.0,0.0,580.0,0.0,W&W DS/AD Infill Steel - East - Team A,58.0,0.0,58.0,"200-300 Ton Crawler, 55 Ton Mobile Support Crane",638.0,638.0
100230883,CN.SEA5.4071,PH1- DS/AD DECKING & DETAILING - SEA2 - GL 16-13 - L4&4/E - C-E,TK_Complete,2024-01-17 07:00,2024-01-21 15:00,2024-01-11 10:00,2024-01-17 12:00,580.0,0.0,580.0,0.0,W&W DS/AD Infill Steel - East - Team A,58.0,0.0,58.0,"200-300 Ton Crawler, 55 Ton Mobile Support Crane",638.0,638.0
100230884,CN.SEA1.5400,PH1- DS/AD FRP SLAB - SEA2 - GL 16-13 - L4/E - C-E,TK_Complete,2024-01-22 12:00,2024-01-26 12:00,2024-01-16 12:00,2024-01-19 12:00,695.0,0.0,695.0,0.0,"W&W DS/AD Infill Steel - East - Team A, CIP Concrete Slab on Metal Deck Crews",58.0,0.0,58.0,"200-300 Ton Crawler, 55 Ton Mobile Support Crane",753.0,753.0
100230887,CN.SEA5.6220,DSAD PENETRATION SUPPORT STEEL FRAMING - SEA2 - GL 16-13 - L3 - C-E,TK_Complete,2024-01-02 09:00,2024-01-07 08:00,2024-01-02 07:00,2024-01-02 07:00,580.0,0.0,580.0,0.0,W&W DS/AD Infill Steel - East - Team A,58.0,0.0,58.0,"200-300 Ton Crawler, 55 Ton Mobile Support Crane",638.0,638.0
100230888,CN.SEA5.6230,DSAD PENETRATION SUPPORT STEEL FRAMING - SEA2 - GL 14-10 - L4 - C-E,TK_Complete,2024-04-25 07:00,2024-04-30 17:00,2024-04-11 07:00,2024-04-17 17:00,580.0,0.0,580.0,0.0,W&W DS/AD Infill Steel - East - Team A,58.0,0.0,58.0,"200-300 Ton Crawler, 55 Ton Mobile Support Crane",638.0,638.0
100230903,CN.SEA5.6440,DS SPRAY FIREPROOFING SFRM C-D (READY MEP DUCT) - SEA2 - GL 16-13 - L4&L5 CEILING - D LINE,TK_Complete,2024-03-18 08:00,2024-03-24 16:00,2024-03-18 08:00,2024-03-22 16:00,80.0,0.0,80.0,0.0,CIP Concrete Topping Slab Crews,0.0,0.0,0.0,,80.0,80.0
100230904,CN.SEA5.6470,IMPACT [S.TIA-12] - WAITING ON MEP LAYOUTS - SEA2 - GL 14-10 - L4 - C-E,TK_Complete,2024-01-22 07:00,2024-01-25 17:00,2024-01-10 07:00,2024-04-10 17:00,580.0,0.0,580.0,0.0,W&W DS/AD Infill Steel - East - Team A,58.0,0.0,58.0,"200-300 Ton Crawler, 55 Ton Mobile Support Crane",638.0,638.0
100230905,CN.SEA2.6520,IMPACT [E.TIA-3] - CLADDING STEEL LEAVE OUT - INSTALL INSULATED METAL PANELS - SEA2-GL 16-13-A LINE [SUP EXTERIOR WALL],TK_Complete,2024-02-19 07:00,2024-02-23 15:00,2024-01-04 07:00,2024-03-08 00:00,330.0,0.0,330.0,0.0,"Insulated Metal Panels - Lower Areas, Insulated Metal Panel - Prefab Crews",15.0,0.0,15.0,50 Ton Mobile Support Crane,345.0,345.0
100230918,CN.SEA2.6690,CURE TOPPING SLAB - GL 16-11 - C-A - L4 ROOF,TK_Complete,2024-09-06 07:00,2024-09-09 17:00,2024-07-26 07:00,2024-07-29 17:00,80.0,0.0,80.0,0.0,CIP Concrete Topping Slab Crews,0.0,0.0,0.0,,80.0,80.0
100230921,CN.A1.UG.1130,PH1- UNDERGROUND PLUMBING SEA3,TK_Complete,2022-11-03 11:00,2022-11-07 11:00,2022-11-03 11:00,2022-11-08 13:00,748.0,0.0,748.0,0.0,CIP Concrete SOG Crews,22.0,0.0,22.0,50-75 Ton Mobile Support Crane,770.0,770.0
100230925,CN.SEA3.1010,PH1-FRP GRADE BEAMS - SEA3,TK_Complete,2022-11-12 08:00,2022-11-17 08:00,2022-11-12 08:00,2022-11-18 09:00,480.0,0.0,480.0,0.0,CIP Concrete SUP Pier Cap Crew,16.0,0.0,16.0,50-75 Ton Mobile Support Crane,496.0,496.0
100230928,CN.SEA3.1080,PH1- FRP SLAB - SEA-3-L3,TK_Complete,2023-07-31 07:00,2023-08-02 11:00,2023-07-31 07:00,2023-08-02 11:00,280.0,0.0,280.0,0.0,CIP Concrete Slab on Metal Deck Crews,10.0,0.0,10.0,50-75 Ton Mobile Support Crane,290.0,290.0
100230929,CN.SEA3.1110,PH1- FRP SLAB - SEA-3-ROOF,TK_Complete,2023-07-31 15:00,2023-08-03 17:00,2023-07-31 15:00,2023-08-02 11:00,280.0,0.0,280.0,0.0,CIP Concrete Slab on Metal Deck Crews,10.0,0.0,10.0,50-75 Ton Mobile Support Crane,290.0,290.0
100230932,CN.SEA3.1090,PH1- 1st FLOOR SLAB - F4 - SEA-3-L1,TK_Complete,2023-01-10 07:00,2023-01-16 09:00,2023-01-03 07:00,2023-01-06 07:00,646.0,0.0,646.0,0.0,CIP Concrete SOG Crews,19.0,0.0,19.0,50-75 Ton Mobile Support Crane,665.0,665.0
100230933,CN.SEA3.1180,FRP TOPPING SLAB (AREA AROUND PADS) - GL 11-6 - C-A - L4 ROOF,TK_Complete,2024-07-09 07:00,2024-07-12 17:00,2024-06-27 07:00,2024-06-27 17:00,80.0,0.0,80.0,0.0,CIP Concrete Topping Slab Crews,0.0,0.0,0.0,,80.0,80.0
100230934,CN.SEA3.1220,PH1- MEP EQPT PADS(DRILL & EPOXY)- SEA-3-ROOF,TK_Complete,2023-09-05 07:00,2023-09-07 11:00,2023-08-21 07:00,2023-08-22 17:00,1120.0,0.0,1120.0,0.0,CIP Concrete Topping Slab Crews,0.0,0.0,0.0,,1120.0,1120.0
100230935,CN.SEA3.1050,TIER 1 ERECT PRECAST COLUMNS & BEAMS - SEA3,TK_Complete,2023-04-24 07:00,2023-04-27 11:00,2023-04-24 07:00,2023-04-27 11:00,200.0,0.0,200.0,0.0,Precast Erect Crew SUP Col's/Bm's/Girders,25.0,0.0,25.0,LR-1400 400 Ton Crawler Crane,225.0,225.0
100230936,CN.SEA3.1130,PH1-ROOF LAYER PARAPET( FRAMING & SHEATHING RIP) - SEA3 - GL 13-9 - L4 - C-A,TK_Complete,2023-12-18 07:00,2023-12-19 13:00,2023-12-18 07:00,2023-12-19 13:00,64.0,0.0,64.0,0.0,Precast Erect Crew SUP Col's/Bm's/Girders,8.0,0.0,8.0,185 Ton Crawler Crane Unload/Handle Waffles,72.0,72.0
100230937,CN.SEA3.1160,PH1-FLUID APPLIED MEMBRANE ROOFING - SEA3,TK_Complete,2023-09-06 13:00,2023-09-09 15:00,2023-08-23 13:00,2023-08-29 17:00,112.0,0.0,112.0,0.0,SUP Bldg Roofing Membrane Crew,0.0,0.0,0.0,,112.0,112.0
100230938,CN.SEA3.1190,PH1 - CLADDING STEEL INTERIOR - GL 13-9 - D LINE (AD AREA),TK_Complete,2024-05-06 07:00,2024-05-13 17:00,2024-04-25 07:00,2024-04-30 17:00,300.0,0.0,300.0,0.0,"Cladding Steel, Insulated Metal Panel - Prefab Crews",15.0,0.0,15.0,50 Ton Mobile Support Crane,315.0,315.0
100230939,CN.SEA3.1210,PH1 - INSTALL INSULATED METAL PANEL MODULES - SEA3 - GL 13-9 - C LINE (DS AREA),TK_Complete,2023-12-18 07:00,2024-01-05 11:00,2023-12-18 07:00,2024-01-27 16:00,300.0,0.0,300.0,0.0,"Cladding Steel, Insulated Metal Panel - Prefab Crews",15.0,0.0,15.0,50 Ton Mobile Support Crane,315.0,315.0
100230940,CN.SEA3.1150,PH1 - CLADDING STEEL - SEA-3 A LINE [SUP EXTERIOR WALL],TK_Complete,2023-10-10 13:00,2023-10-16 09:00,2023-09-30 13:00,2023-10-09 11:00,330.0,0.0,330.0,0.0,"Insulated Metal Panels - Lower Areas, Insulated Metal Panel - Prefab Crews",15.0,0.0,15.0,50 Ton Mobile Support Crane,345.0,345.0
100230941,CN.SEA3.1170,PH1 - INSTALL INSULATED METAL PANEL MODULES - SEA3 - GL 13-9 - A LINE [SUP EXTERIOR WALL],TK_Complete,2024-01-25 07:00,2024-01-29 15:00,2024-01-25 07:00,2024-01-30 07:00,330.0,0.0,330.0,0.0,"Insulated Metal Panels - Lower Areas, Insulated Metal Panel - Prefab Crews",15.0,0.0,15.0,50 Ton Mobile Support Crane,345.0,345.0
100230942,CN.SEA3.1140,PH1- AD STEEL FRAME INSTALL - SEA-3 fab side,TK_Complete,2023-06-12 07:00,2023-06-16 17:00,2023-06-06 07:00,2023-06-10 17:00,580.0,0.0,580.0,0.0,W&W DS/AD Infill Steel - East - Team A,58.0,0.0,58.0,"200-300 Ton Crawler, 55 Ton Mobile Support Crane",638.0,638.0
100230962,CN.SEA3.1470,PH1- TOPPING SLAB w TRENCH & ANGLE EMBEDS- SEA-3-L1,TK_Complete,2023-09-19 09:00,2023-09-22 13:00,2023-09-19 09:00,2023-09-22 13:00,80.0,0.0,80.0,0.0,CIP Concrete Topping Slab Crews,0.0,0.0,0.0,,80.0,80.0
100230963,CN.SEA3.1480,PH1- DS/AD DECKING & DETAILING - SEA3 - GL 13-9 - L6 -C-E,TK_Complete,2023-11-17 07:00,2023-11-20 17:00,2023-11-17 07:00,2023-11-29 17:00,580.0,0.0,580.0,0.0,W&W DS/AD Infill Steel - East - Team A,58.0,0.0,58.0,"200-300 Ton Crawler, 55 Ton Mobile Support Crane",638.0,638.0
100230964,CN.SEA3.1490,PH1- DS/AD FRP SLAB - DS/AD - SEA3 - GL 13-9 - L4/E - C-E,TK_Complete,2024-02-05 15:00,2024-02-09 09:00,2024-02-05 15:00,2024-02-06 17:00,695.0,0.0,695.0,0.0,"W&W DS/AD Infill Steel - East - Team A, CIP Concrete Slab on Metal Deck Crews",58.0,0.0,58.0,"200-300 Ton Crawler, 55 Ton Mobile Support Crane",753.0,753.0
100230965,CN.SEA3.1500,AD WATERPROOFING - SEA3 - GL 13-8 - D-E - L4/E [IMPACTED BY KOVACH MATERIAL/EQPT FOR 10 DAYS],TK_Complete,2024-08-23 07:00,2024-09-09 17:00,2024-08-14 07:00,2024-09-03 17:00,580.0,0.0,580.0,0.0,W&W DS/AD Infill Steel - East - Team A,58.0,0.0,58.0,"200-300 Ton Crawler, 55 Ton Mobile Support Crane",638.0,638.0
100230966,CN.SEA3.1510,AD TOPPING SLAB - SEA3 - GL 13-8 - D-E - L4/E,TK_Complete,2024-09-10 07:00,2024-09-12 17:00,2024-09-04 07:00,2024-09-04 17:00,580.0,0.0,580.0,0.0,W&W DS/AD Infill Steel - East - Team A,58.0,0.0,58.0,"200-300 Ton Crawler, 55 Ton Mobile Support Crane",638.0,638.0
100230967,TIER 23.1050,TIER 2 ERECT PRECAST COLUMNS & BEAMS - SEA3,TK_Complete,2023-07-13 07:00,2023-07-18 13:00,2023-07-06 07:00,2023-07-10 09:00,200.0,0.0,200.0,0.0,Precast Erect Crew SUP Col's/Bm's/Girders,25.0,0.0,25.0,LR-1400 400 Ton Crawler Crane,225.0,225.0
100230972,CN.SEA3.1560,PH1- DS/AD DECKING & DETAILING - SEA3 - GL 13-9 - L4 & L4/E - C-E,TK_Complete,2024-01-17 07:00,2024-01-21 15:00,2024-01-15 07:00,2024-01-20 15:00,580.0,0.0,580.0,0.0,W&W DS/AD Infill Steel - East - Team A,58.0,0.0,58.0,"200-300 Ton Crawler, 55 Ton Mobile Support Crane",638.0,638.0
100230975,CN.SEA3.1580,PH1- DS STEEL FRAME INSTALL - SEA-3 Comeback Sup Side,TK_Complete,2023-07-24 07:00,2023-07-28 15:00,2023-07-17 07:00,2023-07-29 11:00,580.0,0.0,580.0,0.0,W&W DS/AD Infill Steel - East - Team A,58.0,0.0,58.0,"200-300 Ton Crawler, 55 Ton Mobile Support Crane",638.0,638.0
100230976,CN.SEA3.1590,PH1- EXTERIOR CURBS- SEA-3-L1,TK_Complete,2023-09-25 13:00,2023-09-30 13:00,2023-09-25 13:00,2023-09-30 14:00,80.0,0.0,80.0,0.0,CIP Concrete Topping Slab Crews,0.0,0.0,0.0,,80.0,80.0
100230977,CN.SEA3.1600,PH1- MEP PADS - SEA-3-L1,TK_Complete,2023-10-10 13:00,2023-10-14 13:00,2023-10-10 13:00,2023-10-14 15:00,80.0,0.0,80.0,0.0,CIP Concrete Topping Slab Crews,0.0,0.0,0.0,,80.0,80.0
100230986,CN.SEA3.5000,PH1- SECAI MEP UG DRAIN WORK - SEA-3-L1 - 12- 15,TK_Complete,2023-10-13 16:00,2023-10-15 16:00,2023-09-14 16:00,2023-09-18 08:00,80.0,0.0,80.0,0.0,CIP Concrete Topping Slab Crews,0.0,0.0,0.0,,80.0,80.0
100230988,CN.SEA3.5010,PH1 - CLADDING STEEL  EXTERIOR - SEA3 - GL 13-9 - C LINE  (DS AREA),TK_Complete,2023-11-10 07:00,2023-11-18 09:00,2023-11-10 07:00,2023-12-10 17:00,300.0,0.0,300.0,0.0,"Cladding Steel, Insulated Metal Panel - Prefab Crews",15.0,0.0,15.0,50 Ton Mobile Support Crane,315.0,315.0
100230989,EMB2000,IMPACT - Missing Precast Embed C9 Level 3A (#2000),TK_Complete,2023-09-16 08:00,2023-09-21 08:00,2023-08-04 08:00,2023-09-16 11:00,580.0,0.0,580.0,0.0,W&W DS/AD Infill Steel - East - Team A,58.0,0.0,58.0,"200-300 Ton Crawler, 55 Ton Mobile Support Crane",638.0,638.0
100230990,CN.SEA3.5020,PH1- DS/AD DECKING & DETAILING GL 13 - 9 SEA-3 L2-L3,TK_Complete,2023-07-31 07:00,2023-08-03 09:00,2023-07-31 07:00,2023-08-03 09:00,580.0,0.0,580.0,0.0,W&W DS/AD Infill Steel - East - Team A,58.0,0.0,58.0,"200-300 Ton Crawler, 55 Ton Mobile Support Crane",638.0,638.0
100230991,CN.SEA3.5030,PH1- DS/AD FRP SLAB - SEA-3 L2,TK_Complete,2023-10-09 07:00,2023-10-11 11:00,2023-09-23 07:00,2023-09-25 17:00,695.0,0.0,695.0,0.0,"W&W DS/AD Infill Steel - East - Team A, CIP Concrete Slab on Metal Deck Crews",58.0,0.0,58.0,"200-300 Ton Crawler, 55 Ton Mobile Support Crane",753.0,753.0
100230999,CN.SEA3.5050,PH1 -WELD CLIPS - CLADDING STEEL - SEA3 - GL 13-9 - C-E (DS AREA),TK_Complete,2023-09-10 08:00,2023-09-11 10:00,2023-09-10 08:00,2023-09-11 11:00,300.0,0.0,300.0,0.0,"Cladding Steel, Insulated Metal Panel - Prefab Crews",15.0,0.0,15.0,50 Ton Mobile Support Crane,315.0,315.0
100231018,CN.SEA2.1520,IMPACT [CL 48-67] - LEVEL 1 DRAIN BODIES - EXCAVATION & INSTALL - SEA-3 - L1 - GL 9-10.5,TK_Complete,2023-10-16 07:00,2023-10-19 09:00,2023-10-16 07:00,2023-11-06 11:00,80.0,0.0,80.0,0.0,CIP Concrete Topping Slab Crews,0.0,0.0,0.0,,80.0,80.0
100231021,CN.SEA3.6180,DSAD PENETRATION SUPPORT STEEL FRAMING - SEA3 - GL 13-9 -L3 - C-E,TK_Complete,2024-02-05 07:00,2024-02-09 17:00,2024-01-20 07:00,2024-01-25 17:00,580.0,0.0,580.0,0.0,W&W DS/AD Infill Steel - East - Team A,58.0,0.0,58.0,"200-300 Ton Crawler, 55 Ton Mobile Support Crane",638.0,638.0
100231022,CN.SEA3.6190,DSAD PENETRATION SUPPORT STEEL FRAMING - SEA3 - GL 9-13 - L4 - C-E,TK_Complete,2024-04-23 07:00,2024-04-26 17:00,2024-04-11 07:00,2024-04-17 17:00,580.0,0.0,580.0,0.0,W&W DS/AD Infill Steel - East - Team A,58.0,0.0,58.0,"200-300 Ton Crawler, 55 Ton Mobile Support Crane",638.0,638.0
100231029,EMB6060,IMPACT - Missing Precast Embed C13 4A SEQ 1604 - SEA3 - GL 13-9 - C-E,TK_Complete,2023-11-13 07:00,2023-11-17 17:00,2023-11-14 07:00,2023-12-14 11:00,580.0,0.0,580.0,0.0,W&W DS/AD Infill Steel - East - Team A,58.0,0.0,58.0,"200-300 Ton Crawler, 55 Ton Mobile Support Crane",638.0,638.0
100231035,CN.SEA3.6210,PH1 - INSTALL REMAINING INSULATED METAL PANEL MODULES - SEA3 - GL 13-9 - C LINE (DS AREA),TK_Complete,2024-03-19 11:00,2024-03-28 13:00,2024-03-19 11:00,2024-03-29 09:00,300.0,0.0,300.0,0.0,"Cladding Steel, Insulated Metal Panel - Prefab Crews",15.0,0.0,15.0,50 Ton Mobile Support Crane,315.0,315.0
100231036,CN.SEA3.6220,IMPACT - W&W MEP PIPE RACK STEEL CRANE Gridline C 10 - 14 SEA3 - C-Line,TK_Complete,2023-12-18 07:00,2024-01-05 11:00,2023-12-21 07:00,2024-01-23 16:00,300.0,0.0,300.0,0.0,"Cladding Steel, Insulated Metal Panel - Prefab Crews",15.0,0.0,15.0,50 Ton Mobile Support Crane,315.0,315.0
100231039,CN.SEA3.6660,IMPACT [S.TIA-11] - WAITING ON MEP LAYOUTS - SEA3 - GL 9-13 - L4 - C-E,TK_Complete,2024-01-22 07:00,2024-01-25 17:00,2024-01-10 07:00,2024-04-10 17:00,580.0,0.0,580.0,0.0,W&W DS/AD Infill Steel - East - Team A,58.0,0.0,58.0,"200-300 Ton Crawler, 55 Ton Mobile Support Crane",638.0,638.0
100231050,CN.SEA3.7000,FRP TOPPING SLAB (AIRLOCK AREA BETWEEN PADS) - GL 11-6 - C-A - L4 ROOF,TK_Complete,2024-07-08 07:00,2024-07-09 17:00,2024-06-27 07:00,2024-06-27 17:00,80.0,0.0,80.0,0.0,CIP Concrete Topping Slab Crews,0.0,0.0,0.0,,80.0,80.0
100231053,CN.SEA3.7030,CURE TOPPING SLAB (AREA AROUND PADS) - GL 11-6 - C-A - L4 ROOF,TK_Complete,2024-09-06 07:00,2024-09-09 17:00,2024-06-28 07:00,2024-07-01 17:00,80.0,0.0,80.0,0.0,CIP Concrete Topping Slab Crews,0.0,0.0,0.0,,80.0,80.0
100231057,CN.A1.UG.1150,PH1- UNDERGROUND PLUMBING SEA4,TK_Complete,2022-10-25 11:00,2022-10-30 11:00,2022-10-25 11:00,2022-10-31 13:00,748.0,0.0,748.0,0.0,CIP Concrete SOG Crews,22.0,0.0,22.0,50-75 Ton Mobile Support Crane,770.0,770.0
100231060,CN.SEA4.1010,PH1-FRP GRADE BEAM - SEA4,TK_Complete,2022-12-03 08:00,2022-12-08 08:00,2022-12-03 08:00,2022-12-09 09:00,480.0,0.0,480.0,0.0,CIP Concrete SUP Pier Cap Crew,16.0,0.0,16.0,50-75 Ton Mobile Support Crane,496.0,496.0
100231063,CN.SEA4.1080,PH1- FRP SLAB - SEA-4-L3,TK_Complete,2023-08-04 15:00,2023-08-07 09:00,2023-08-04 15:00,2023-08-08 11:00,280.0,0.0,280.0,0.0,CIP Concrete Slab on Metal Deck Crews,10.0,0.0,10.0,50-75 Ton Mobile Support Crane,290.0,290.0
100231064,CN.SEA4.1110,PH1- FRP SLAB - SEA-4-ROOF,TK_Complete,2023-08-21 07:00,2023-08-24 11:00,2023-08-16 07:00,2023-08-19 07:00,280.0,0.0,280.0,0.0,CIP Concrete Slab on Metal Deck Crews,10.0,0.0,10.0,50-75 Ton Mobile Support Crane,290.0,290.0
100231067,CN.SEA4.1090,PH1- 1st FLOOR SLAB - F3 - SEA-4-L1,TK_Complete,2022-12-15 13:00,2022-12-18 15:00,2022-12-15 13:00,2022-12-19 17:00,646.0,0.0,646.0,0.0,CIP Concrete SOG Crews,19.0,0.0,19.0,50-75 Ton Mobile Support Crane,665.0,665.0
100231068,CN.SEA4.1220,MEP EQPT PADS (LAYOUT & INSTALL DOWELS)- SEA-4-ROOF,TK_Complete,2023-10-02 07:00,2023-10-04 11:00,2023-09-16 07:00,2023-09-18 17:00,1120.0,0.0,1120.0,0.0,CIP Concrete Topping Slab Crews,0.0,0.0,0.0,,1120.0,1120.0
100231069,CN.SEA4.1050,TIER 1 ERECT PRECAST COLUMNS & BEAMS - SEA4,TK_Complete,2023-05-23 07:00,2023-06-03 09:00,2023-05-23 07:00,2023-06-23 17:00,192.0,0.0,192.0,0.0,Precast Erect Crew SUP Col's/Bm's/Girders,24.0,0.0,24.0,LR-1400 400 Ton Crawler Crane,216.0,216.0
100231070,CN.SEA4.1140,PH1-ROOF LAYER PARAPET(FRAMING & SHEATING RIP) - SEA4 - GL 9-6 - L4 - C-A - ROOF,TK_Complete,2023-10-30 07:00,2023-11-02 13:00,2023-10-28 08:00,2023-10-30 17:00,64.0,0.0,64.0,0.0,Precast Erect Crew SUP Col's/Bm's/Girders,8.0,0.0,8.0,185 Ton Crawler Crane Unload/Handle Waffles,72.0,72.0
100231071,CN.SEA4.1160,PH1-FLUID APPLIED MEMBRANE ROOFING - SEA4,TK_Complete,2023-10-05 11:00,2023-10-08 13:00,2023-09-19 11:00,2023-09-22 11:00,112.0,0.0,112.0,0.0,SUP Bldg Roofing Membrane Crew,0.0,0.0,0.0,,112.0,112.0
100231072,CN.SEA4.1170,PH1 - CLADDING STEEL INTERIOR - GL 9-6 - D LINE (AD AREA),TK_Complete,2024-04-29 07:00,2024-05-02 11:00,2024-03-28 07:00,2024-04-05 17:00,300.0,0.0,300.0,0.0,"Cladding Steel, Insulated Metal Panel - Prefab Crews",15.0,0.0,15.0,50 Ton Mobile Support Crane,315.0,315.0
100231073,CN.SEA4.1200,PH1 - INSTALL INSULATED METAL PANEL MODULES - SEA4 - GL 9-6 - C (DS AREA),TK_Complete,2024-02-22 07:00,2024-03-01 09:00,2024-02-22 07:00,2024-03-02 16:00,300.0,0.0,300.0,0.0,"Cladding Steel, Insulated Metal Panel - Prefab Crews",15.0,0.0,15.0,50 Ton Mobile Support Crane,315.0,315.0
100231074,CN.SEA4.1150,PH1 - CLADDING STEEL  - SEA-4 A LINE [SUP EXTERIOR WALL],TK_Complete,2023-10-16 14:00,2023-10-22 10:00,2023-10-10 07:00,2023-10-16 16:00,330.0,0.0,330.0,0.0,"Insulated Metal Panels - Lower Areas, Insulated Metal Panel - Prefab Crews",15.0,0.0,15.0,50 Ton Mobile Support Crane,345.0,345.0
100231075,CN.SEA4.1180,INSTALL INSULATED METAL PANEL MODULES - GL 8-6 - A LINE [SUP EXTERIOR WALL],TK_Complete,2024-09-15 07:00,2024-09-24 17:00,2024-08-07 07:00,2024-08-30 17:00,330.0,0.0,330.0,0.0,"Insulated Metal Panels - Lower Areas, Insulated Metal Panel - Prefab Crews",15.0,0.0,15.0,50 Ton Mobile Support Crane,345.0,345.0
100231076,CN.SEA4.1120,PH1- AD STEEL FRAME INSTALL - SEA-4 fab side,TK_Complete,2023-08-21 07:00,2023-08-26 15:00,2023-08-12 07:00,2023-08-14 16:00,580.0,0.0,580.0,0.0,W&W DS/AD Infill Steel - East - Team A,58.0,0.0,58.0,"200-300 Ton Crawler, 55 Ton Mobile Support Crane",638.0,638.0
100231079,CN.SEA4.1240,DS/AD STEEL SPRAY FIREPROOFING SFRM - SEA4 - GL 9-6 - C-E L1 CEILING,TK_Complete,2023-12-14 07:00,2023-12-19 13:00,2023-12-14 07:00,2023-12-15 11:00,80.0,0.0,80.0,0.0,CIP Concrete Topping Slab Crews,0.0,0.0,0.0,,80.0,80.0
100231092,CN.SEA4.1310,PH1- TOPPING SLAB w TRENCH & ANGLE EMBEDS- SEA-4-L1,TK_Complete,2023-09-14 16:00,2023-09-17 10:00,2023-09-14 16:00,2023-09-18 12:00,80.0,0.0,80.0,0.0,CIP Concrete Topping Slab Crews,0.0,0.0,0.0,,80.0,80.0
100231093,CN.SEA4.1330,PH1- DS/AD FRP SLAB - DS/AD - SEA4 - GL 9-6 - C-E - L3,TK_Complete,2023-11-30 07:00,2023-12-02 11:00,2023-11-30 07:00,2023-12-01 12:00,695.0,0.0,695.0,0.0,"W&W DS/AD Infill Steel - East - Team A, CIP Concrete Slab on Metal Deck Crews",58.0,0.0,58.0,"200-300 Ton Crawler, 55 Ton Mobile Support Crane",753.0,753.0
100231094,CN.SEA4.1340,AD WATERPROOFING - SEA4 - GL 8-6 - D-E - L4/E,TK_Complete,2024-10-14 07:00,2024-10-21 17:00,2024-10-07 07:00,2024-10-19 17:00,580.0,0.0,580.0,0.0,W&W DS/AD Infill Steel - East - Team A,58.0,0.0,58.0,"200-300 Ton Crawler, 55 Ton Mobile Support Crane",638.0,638.0
100231095,CN.SEA4.1350,AD TOPPING SLAB - SEA4 - GL 8-6 - D-E - L4/E,TK_Complete,2024-10-21 07:00,2024-10-24 17:00,2024-10-21 07:00,2024-10-24 17:00,580.0,0.0,580.0,0.0,W&W DS/AD Infill Steel - East - Team A,58.0,0.0,58.0,"200-300 Ton Crawler, 55 Ton Mobile Support Crane",638.0,638.0
100231096,TIER 24.1050,TIER 2 ERECT PRECAST COLUMNS & BEAMS - SEA4,TK_Complete,2023-06-30 09:00,2023-07-07 15:00,2023-07-09 09:00,2023-07-15 09:00,192.0,0.0,192.0,0.0,Precast Erect Crew SUP Col's/Bm's/Girders,24.0,0.0,24.0,LR-1400 400 Ton Crawler Crane,216.0,216.0
100231101,CN.SEA4.1420,PH1- DS STEEL FRAME INSTALL - SEA-4 Comeback Sup Side,TK_Complete,2023-08-28 07:00,2023-09-02 15:00,2023-08-15 07:00,2023-08-20 16:00,580.0,0.0,580.0,0.0,W&W DS/AD Infill Steel - East - Team A,58.0,0.0,58.0,"200-300 Ton Crawler, 55 Ton Mobile Support Crane",638.0,638.0
100231102,CN.SEA4.1430,PH1- EXTERIOR CURBS - SEA-4-L1,TK_Complete,2023-10-02 16:00,2023-10-04 12:00,2023-10-02 16:00,2023-10-05 12:00,80.0,0.0,80.0,0.0,CIP Concrete Topping Slab Crews,0.0,0.0,0.0,,80.0,80.0
100231103,CN.SEA4.1440,PH1- MEP PADS - SEA-4-L1,TK_Complete,2023-10-16 07:00,2023-10-20 15:00,2023-10-06 07:00,2023-10-13 07:00,80.0,0.0,80.0,0.0,CIP Concrete Topping Slab Crews,0.0,0.0,0.0,,80.0,80.0
100231117,SECAI.UG.SUE96,IMPACT - SECAI MEP UG DRAIN INSTALL - SEA-4-L1,TK_Complete,2023-10-09 07:00,2023-10-12 16:00,2023-09-04 07:00,2023-09-13 16:00,80.0,0.0,80.0,0.0,CIP Concrete Topping Slab Crews,0.0,0.0,0.0,,80.0,80.0
100231120,CN.SEA4.4370,PH1 - CLADDING STEEL  EXTERIOR - SEA4 - GL 9-6 - C LINE  (DS AREA) (9~6),TK_Complete,2024-02-01 08:00,2024-02-10 10:00,2024-02-01 08:00,2024-02-12 14:00,300.0,0.0,300.0,0.0,"Cladding Steel, Insulated Metal Panel - Prefab Crews",15.0,0.0,15.0,50 Ton Mobile Support Crane,315.0,315.0
100231131,CN.SEA4.4400,PH1 -WELD CLIPS - CLADDING STEEL - SEA4 - GL 9-6 - C LINE (DS AREA),TK_Complete,2023-09-18 07:00,2023-09-19 09:00,2023-09-18 07:00,2023-09-19 09:00,300.0,0.0,300.0,0.0,"Cladding Steel, Insulated Metal Panel - Prefab Crews",15.0,0.0,15.0,50 Ton Mobile Support Crane,315.0,315.0
100231133,CN.SEA4.1232,PH1- DS/AD DETAILING & DETAILING - SEA4 - GL 9-6 - L2-L3 - C-E,TK_Complete,2023-09-25 07:00,2023-09-30 15:00,2023-09-25 07:00,2023-11-02 09:00,580.0,0.0,580.0,0.0,W&W DS/AD Infill Steel - East - Team A,58.0,0.0,58.0,"200-300 Ton Crawler, 55 Ton Mobile Support Crane",638.0,638.0
100231152,CN.SEA4.1272,PH1- DS/AD DECKING & DETAILING - SEA4 - GL 9-6 - C-E - L6,TK_Complete,2023-11-13 07:00,2023-11-17 17:00,2023-11-08 07:00,2023-11-10 17:00,580.0,0.0,580.0,0.0,W&W DS/AD Infill Steel - East - Team A,58.0,0.0,58.0,"200-300 Ton Crawler, 55 Ton Mobile Support Crane",638.0,638.0
100231153,CN.SEA4.1282,PH1- DS/AD DECKING & DETAILING - SEA4 - GL 9-6 - C-E - L4 & L4/E,TK_Complete,2024-01-17 07:00,2024-01-21 15:00,2024-01-15 16:00,2024-01-20 13:00,580.0,0.0,580.0,0.0,W&W DS/AD Infill Steel - East - Team A,58.0,0.0,58.0,"200-300 Ton Crawler, 55 Ton Mobile Support Crane",638.0,638.0
100231154,CN.SEA4.1292,PH1- DS/AD FRP SLAB - SEA4 - GL 9-6 - C-E - L4/E,TK_Complete,2024-01-22 07:00,2024-01-25 17:00,2024-01-22 07:00,2024-01-25 17:00,695.0,0.0,695.0,0.0,"W&W DS/AD Infill Steel - East - Team A, CIP Concrete Slab on Metal Deck Crews",58.0,0.0,58.0,"200-300 Ton Crawler, 55 Ton Mobile Support Crane",753.0,753.0
100231158,CN.SEA4.6170,DSAD PENETRATION SUPPORT STEEL FRAMING - SEA4 - GL 9-6 - C-E - L3,TK_Complete,2024-01-25 07:00,2024-01-28 17:00,2024-01-25 07:00,2024-01-29 11:00,695.0,0.0,695.0,0.0,"W&W DS/AD Infill Steel - East - Team A, CIP Concrete Slab on Metal Deck Crews",58.0,0.0,58.0,"200-300 Ton Crawler, 55 Ton Mobile Support Crane",753.0,753.0
100231159,CN.SEA4.6180,DSAD PENETRATION SUPPORT STEEL FRAMING - SEA4 - GL 9-6 - C-E - L4,TK_Complete,2024-02-22 08:00,2024-02-27 08:00,2024-02-22 07:00,2024-03-22 16:00,695.0,0.0,695.0,0.0,"W&W DS/AD Infill Steel - East - Team A, CIP Concrete Slab on Metal Deck Crews",58.0,0.0,58.0,"200-300 Ton Crawler, 55 Ton Mobile Support Crane",753.0,753.0
100231198,CN.SEA4.6400,DS SPRAY FIREPROOFING SFRM C-D (READY MEP DUCT) - SEA4 - GL 9-6 - D LINE - L5 - L6,TK_Complete,2024-03-27 07:00,2024-04-02 17:00,2024-03-27 07:00,2024-04-02 17:00,80.0,0.0,80.0,0.0,CIP Concrete Topping Slab Crews,0.0,0.0,0.0,,80.0,80.0
100231200,CN.SEA4.6490,IMPACT [S.TIA-11] - WAITING ON MEP LAYOUTS - SEA4 - GL 9-6 - C-E - L4,TK_Complete,2024-01-22 07:00,2024-01-25 17:00,2024-01-10 07:00,2024-02-20 13:00,695.0,0.0,695.0,0.0,"W&W DS/AD Infill Steel - East - Team A, CIP Concrete Slab on Metal Deck Crews",58.0,0.0,58.0,"200-300 Ton Crawler, 55 Ton Mobile Support Crane",753.0,753.0
100231229,CN.FIZ4.DP.1000,PH1- SLAB FIZ4 (EAST OUTER),TK_Complete,2023-01-14 08:00,2023-02-02 16:00,2023-01-14 08:00,2023-02-25 17:00,714.0,0.0,714.0,0.0,CIP Concrete SOG Crews,21.0,0.0,21.0,50-75 Ton Mobile Support Crane,735.0,735.0
100231231,CN.A1.UG.1170,PH1- UNDERGROUND PLUMBING SEA5,TK_Complete,2022-10-13 11:00,2022-10-17 11:00,2022-10-13 11:00,2022-10-18 13:00,748.0,0.0,748.0,0.0,CIP Concrete SOG Crews,22.0,0.0,22.0,50-75 Ton Mobile Support Crane,770.0,770.0
100231234,CN.SEA5.1010,PH1-FRP GRADE BEAM - SEA5,TK_Complete,2022-10-27 09:00,2022-10-31 09:00,2022-10-27 09:00,2022-11-01 11:00,510.0,0.0,510.0,0.0,CIP Concrete SUP Pier Cap Crew,17.0,0.0,17.0,50-75 Ton Mobile Support Crane,527.0,527.0
100231237,CN.SEA5.1060,PH1- FRP SLAB - SEA-5-L2,TK_Complete,2023-08-21 07:00,2023-08-24 11:00,2023-08-21 07:00,2023-08-24 11:00,280.0,0.0,280.0,0.0,CIP Concrete Slab on Metal Deck Crews,10.0,0.0,10.0,50-75 Ton Mobile Support Crane,290.0,290.0
100231238,CN.SEA5.1080,PH1- FRP SLAB - SEA-5-L3,TK_Complete,2023-09-06 13:00,2023-09-08 17:00,2023-09-06 13:00,2023-09-08 17:00,280.0,0.0,280.0,0.0,CIP Concrete Slab on Metal Deck Crews,10.0,0.0,10.0,50-75 Ton Mobile Support Crane,290.0,290.0
100231239,CN.SEA5.1110,PH1- FRP SLAB - SEA-5-ROOF,TK_Complete,2023-09-21 07:00,2023-09-23 11:00,2023-09-21 07:00,2023-09-23 12:00,280.0,0.0,280.0,0.0,CIP Concrete Slab on Metal Deck Crews,10.0,0.0,10.0,50-75 Ton Mobile Support Crane,290.0,290.0
100231243,CN.SEA5.1090,PH1- 1st FLOOR SLAB - SEA-5-L1-,TK_Complete,2023-02-21 07:00,2023-03-02 17:00,2023-02-21 07:00,2023-02-24 07:00,646.0,0.0,646.0,0.0,CIP Concrete SOG Crews,19.0,0.0,19.0,50-75 Ton Mobile Support Crane,665.0,665.0
100231244,CN.SEA5.1220,PH1- MEP EQPT PADS(DRILL DOWELS & EPOXY) - SEA5 FIZ - GL 6-1 - L4 - C-A,TK_Complete,2023-11-17 16:00,2023-11-20 10:00,2023-11-17 16:00,2023-12-06 13:00,1120.0,0.0,1120.0,0.0,CIP Concrete Topping Slab Crews,0.0,0.0,0.0,,1120.0,1120.0
100231245,CN.SEA5.1050,TIER 1 ERECT PRECAST COLUMNS & BEAMS - SEA5,TK_Complete,2023-06-24 08:00,2023-06-30 14:00,2023-06-24 08:00,2023-07-01 16:00,200.0,0.0,200.0,0.0,Precast Erect Crew SUP Col's/Bm's/Girders,25.0,0.0,25.0,LR-1400 400 Ton Crawler Crane,225.0,225.0
100231246,CN.SEA5.1140,PH1-ROOF LAYER PARAPET(FRAMING & SHEATH RIP)- SEA5 FIZ - GL 3-1 - L4 - C-A,TK_Complete,2024-05-09 07:00,2024-05-10 17:00,2024-04-15 07:00,2024-04-16 17:00,64.0,0.0,64.0,0.0,Precast Erect Crew SUP Col's/Bm's/Girders,8.0,0.0,8.0,185 Ton Crawler Crane Unload/Handle Waffles,72.0,72.0
100231247,CN.SEA5.1180,PH1 - CLADDING STEEL INTERIOR - GL 6-1 - D LINE (AD AREA) (3~5),TK_Complete,2024-03-28 09:00,2024-04-16 11:00,2024-03-28 09:00,2024-04-05 17:00,300.0,0.0,300.0,0.0,"Cladding Steel, Insulated Metal Panel - Prefab Crews",15.0,0.0,15.0,50 Ton Mobile Support Crane,315.0,315.0
100231248,CN.SEA5.1200,PH1 - INSTALL INSULATED METAL PANEL MODULES GL 6-3 - C LINE (DS AREA),TK_Complete,2024-04-04 08:30,2024-04-12 10:30,2024-04-04 07:00,2024-04-09 17:00,300.0,0.0,300.0,0.0,"Cladding Steel, Insulated Metal Panel - Prefab Crews",15.0,0.0,15.0,50 Ton Mobile Support Crane,315.0,315.0
100231249,CN.SEA5.1150,CLADDING STEEL - GL 1-3 - A LINE [SUP EXTERIOR WALL],TK_Complete,2024-03-22 07:00,2024-04-02 13:00,2024-03-21 07:00,2024-04-27 12:00,330.0,0.0,330.0,0.0,"Insulated Metal Panels - Lower Areas, Insulated Metal Panel - Prefab Crews",15.0,0.0,15.0,50 Ton Mobile Support Crane,345.0,345.0
100231250,CN.SEA5.1170,INSTALL INSULATED METAL PANEL MODULES - GL 1-3 - A LINE [SUP EXTERIOR WALL] - NIGHT SHIFT ONLY [1~1.5 LEAVEOUT],TK_Complete,2024-06-28 07:00,2024-07-06 17:00,2024-06-26 07:00,2024-07-16 17:00,330.0,0.0,330.0,0.0,"Insulated Metal Panels - Lower Areas, Insulated Metal Panel - Prefab Crews",15.0,0.0,15.0,50 Ton Mobile Support Crane,345.0,345.0
100231251,CN.SEA5.1120,PH1- AD STEEL FRAME INSTALL - SEA-5 fab side,TK_Complete,2023-08-28 07:00,2023-09-06 09:00,2023-08-28 07:00,2023-09-15 10:00,580.0,0.0,580.0,0.0,W&W DS/AD Infill Steel - East - Team A,58.0,0.0,58.0,"200-300 Ton Crawler, 55 Ton Mobile Support Crane",638.0,638.0
100231262,CN.SEA5.1310,PH1- TOPPING SLAB w TRENCH & ANGLE EMBEDS- SEA-5-L1,TK_Complete,2023-10-12 07:00,2023-10-14 11:00,2023-10-12 07:00,2023-10-14 12:00,80.0,0.0,80.0,0.0,CIP Concrete Topping Slab Crews,0.0,0.0,0.0,,80.0,80.0
100231263,CN.SEA5.1320,PH1- DS/AD DETAILING & DECKING - SEA5 FIZ - GL 6-3 - L2-L3 - C-E,TK_Complete,2023-11-27 07:00,2023-12-01 17:00,2023-11-27 07:00,2023-11-30 17:00,580.0,0.0,580.0,0.0,W&W DS/AD Infill Steel - East - Team A,58.0,0.0,58.0,"200-300 Ton Crawler, 55 Ton Mobile Support Crane",638.0,638.0
100231264,CN.SEA5.1330,PH1- DS/AD FRP SLAB - DS/AD - SEA5 FIZ - GL 6-3 - C-E - L4/E,TK_Complete,2024-01-22 13:00,2024-01-24 17:00,2024-01-22 13:00,2024-01-24 17:00,695.0,0.0,695.0,0.0,"W&W DS/AD Infill Steel - East - Team A, CIP Concrete Slab on Metal Deck Crews",58.0,0.0,58.0,"200-300 Ton Crawler, 55 Ton Mobile Support Crane",753.0,753.0
100231265,CN.SEA5.1340,AD WATERPROOFING - SEA5 - GL 6-3 - D-E - L4/E,TK_Complete,2024-10-14 07:00,2024-10-21 17:00,2024-10-07 07:00,2024-10-19 17:00,580.0,0.0,580.0,0.0,W&W DS/AD Infill Steel - East - Team A,58.0,0.0,58.0,"200-300 Ton Crawler, 55 Ton Mobile Support Crane",638.0,638.0
100231266,CN.SEA5.1350,AD TOPPING SLAB - SEA5 - GL 6-3 - D-E - L4/E,TK_Complete,2024-10-21 07:00,2024-10-24 17:00,2024-10-21 07:00,2024-10-24 17:00,580.0,0.0,580.0,0.0,W&W DS/AD Infill Steel - East - Team A,58.0,0.0,58.0,"200-300 Ton Crawler, 55 Ton Mobile Support Crane",638.0,638.0
100231267,TIER 25.1050,TIER 2 GROUT PRECAST COLUMNS & BEAMS - SEA5,TK_Complete,2023-07-03 07:00,2023-07-16 13:00,2023-07-11 07:00,2023-08-03 09:00,200.0,0.0,200.0,0.0,Precast Erect Crew SUP Col's/Bm's/Girders,25.0,0.0,25.0,LR-1400 400 Ton Crawler Crane,225.0,225.0
100231274,CN.SEA5.1420,PH1- DS/AD DECKING  & DETAILING - SEA5 FIZ - GL 6-1 - C-E - L4 & L4/E,TK_Complete,2024-01-02 09:00,2024-01-07 16:00,2024-01-02 07:00,2024-01-08 09:00,580.0,0.0,580.0,0.0,W&W DS/AD Infill Steel - East - Team A,58.0,0.0,58.0,"200-300 Ton Crawler, 55 Ton Mobile Support Crane",638.0,638.0
100231277,CN.SWB5.1480,PH1- ERECT STEEL - NE PENTHOUSE,TK_Complete,2024-02-05 09:00,2024-02-15 15:00,2024-02-05 09:00,2024-02-27 11:00,580.0,0.0,580.0,0.0,W&W DS/AD Infill Steel - West - Team B,58.0,0.0,58.0,"200-300 Ton Crawler, 55 Ton Mobile Support Crane",638.0,638.0
100231278,CN.SWB5.1520,PH1- INSTALL DECKING & STUDS - NE PENTHOUSE ROOF,TK_Complete,2024-02-29 11:00,2024-03-05 09:00,2024-02-29 11:00,2024-03-03 13:00,580.0,0.0,580.0,0.0,W&W DS/AD Infill Steel - West - Team B,58.0,0.0,58.0,"200-300 Ton Crawler, 55 Ton Mobile Support Crane",638.0,638.0
100231279,CN.SWB5.1530,PH1- FRP SLAB ON DECK - NE PENTHOUSE ROOF,TK_Complete,2024-06-04 07:00,2024-06-07 17:00,2024-05-14 07:00,2024-05-20 17:00,580.0,0.0,580.0,0.0,W&W DS/AD Infill Steel - West - Team B,58.0,0.0,58.0,"200-300 Ton Crawler, 55 Ton Mobile Support Crane",638.0,638.0
100231280,CN.SWB5.1550,PH1- INSTALL CLADDING STEEL & DETAILING - NE PENTHOUSE,TK_Complete,2024-03-07 15:00,2024-03-29 17:00,2024-03-07 07:00,2024-05-17 17:00,580.0,0.0,580.0,0.0,W&W DS/AD Infill Steel - West - Team B,58.0,0.0,58.0,"200-300 Ton Crawler, 55 Ton Mobile Support Crane",638.0,638.0
100231281,CN.SWB5.1560,PH1- INSTALL INSULATED METAL PANELS - NE PENTHOUSE - SOUTH & EAST WALLS,TK_Complete,2024-08-25 07:00,2024-08-27 17:00,2024-08-19 07:00,2024-09-19 17:00,580.0,0.0,580.0,0.0,W&W DS/AD Infill Steel - West - Team B,58.0,0.0,58.0,"200-300 Ton Crawler, 55 Ton Mobile Support Crane",638.0,638.0
100231282,CN.SWB5.1570,INSTALL EDGE OF SLAB - NE PENTHOUSE- L4-A LINE,TK_Complete,2024-10-29 07:00,2024-11-05 17:00,2024-10-29 07:00,2024-12-23 17:00,580.0,0.0,580.0,0.0,W&W DS/AD Infill Steel - West - Team B,58.0,0.0,58.0,"200-300 Ton Crawler, 55 Ton Mobile Support Crane",638.0,638.0
100231283,CN.SWB5.1600,PH1- INSTALL EXTERIOR DOOR / LOUVERS FRAMES - NE PENTHOUSE,TK_NotStart,2025-11-25 07:00,2025-12-01 17:00,,,580.0,580.0,0.0,0.0,W&W DS/AD Infill Steel - West - Team B,58.0,58.0,0.0,"200-300 Ton Crawler, 55 Ton Mobile Support Crane",638.0,0.0
100231284,CN.SWB5.1610,PH1- INSTALL EXTERIOR DOORS / LOUVERS - NE PENTHOUSE,TK_NotStart,2025-11-25 07:00,2025-12-01 17:00,,,580.0,580.0,0.0,0.0,W&W DS/AD Infill Steel - West - Team B,58.0,58.0,0.0,"200-300 Ton Crawler, 55 Ton Mobile Support Crane",638.0,0.0
100231285,CN.SWB5.1620,PH1- INSTALL INTERIOR METAL STUD FRAMING (2hr) - NE PENTHOUSE,TK_Complete,2024-06-25 07:00,2024-07-01 17:00,2024-06-25 07:00,2024-08-05 17:00,580.0,0.0,580.0,0.0,W&W DS/AD Infill Steel - West - Team B,58.0,0.0,58.0,"200-300 Ton Crawler, 55 Ton Mobile Support Crane",638.0,638.0
100231286,CN.SWB5.1630,PH1- INSTALL INTERIOR DRYWALL - NE PENTHOUSE,TK_Complete,2024-06-20 07:00,2024-06-24 17:00,2024-07-20 07:00,2024-08-03 07:00,9.354839,0.0,9.354839,0.0,W&W DS/AD Infill Steel - West - Team B,58.0,0.0,58.0,"200-300 Ton Crawler, 55 Ton Mobile Support Crane",67.354839,67.354839
100231287,CN.SWB5.1640,PH1- INSTALL EXTERIOR STEEL ACCESS STAIRS / RAMPS - NE PENTHOUSE - STAIR 76/R15/R5/R30,TK_NotStart,2025-12-02 07:00,2025-12-04 17:00,,,580.0,580.0,0.0,0.0,W&W DS/AD Infill Steel - West - Team B,58.0,58.0,0.0,"200-300 Ton Crawler, 55 Ton Mobile Support Crane",638.0,0.0
100231288,CN.SWB5.2040,PH1- INSTALL DECKING - NE PENTHOUSE,TK_Complete,2024-02-29 11:00,2024-03-01 17:00,2024-02-29 11:00,2024-03-02 16:00,580.0,0.0,580.0,0.0,W&W DS/AD Infill Steel - West - Team B,58.0,0.0,58.0,"200-300 Ton Crawler, 55 Ton Mobile Support Crane",638.0,638.0
100231289,CN.AB1.ST.1530,FIREPROOFING - SFRM INFILL STEEL - ELECTRICAL ROOM 4 - SEA5 FIZ - GL 6-1 - C-A - L2,TK_Complete,2024-09-06 07:00,2024-09-12 17:00,2024-08-01 07:00,2024-08-07 17:00,320.0,0.0,320.0,0.0,"Precast Erect Crew FAB Waffles & Double-T's, Precast GROUTERS",40.0,0.0,40.0,"Precast Carry-Lift, 185 Ton Crawler Crane Unload/Handle Waffles",360.0,360.0
100231290,CN.SWB5.2100,PH1- FRP STRUCTURAL SLAB SOMD - NE PENTHOUSE,TK_Complete,2024-06-03 07:00,2024-06-03 17:00,2024-05-17 07:00,2024-05-20 17:00,580.0,0.0,580.0,0.0,W&W DS/AD Infill Steel - West - Team B,58.0,0.0,58.0,"200-300 Ton Crawler, 55 Ton Mobile Support Crane",638.0,638.0
100231291,CN.SEA5.1440,PH1- DS STEEL FRAME INSTALL - SEA5 FIZ - GL 6-1 - C-E - ROOF Comeback Sup Side,TK_Complete,2023-11-02 07:00,2023-11-05 09:00,2023-11-02 07:00,2023-11-05 12:00,580.0,0.0,580.0,0.0,W&W DS/AD Infill Steel - East - Team A,58.0,0.0,58.0,"200-300 Ton Crawler, 55 Ton Mobile Support Crane",638.0,638.0
100231292,CN.SEA5.1450,PH1- EXTERIOR CURBS - SEA-5-L1,TK_Complete,2024-03-01 08:00,2024-03-04 10:00,2024-03-01 08:00,2024-03-04 14:00,80.0,0.0,80.0,0.0,CIP Concrete Topping Slab Crews,0.0,0.0,0.0,,80.0,80.0
100231293,CN.SEA5.1460,PH1- MEP PADS & INTERIOR CURBS - SEA-5-L1,TK_Complete,2023-10-09 07:00,2023-10-13 15:00,2023-10-09 07:00,2023-10-14 16:00,80.0,0.0,80.0,0.0,CIP Concrete Topping Slab Crews,0.0,0.0,0.0,,80.0,80.0
100231312,CN.SEA5.3871,PH1- FRP SLAB 3 - 1- SEA-5-L3-FIZ,TK_Complete,2023-09-05 07:00,2023-09-07 11:00,2023-09-05 07:00,2023-09-07 11:00,280.0,0.0,280.0,0.0,CIP Concrete Slab on Metal Deck Crews,10.0,0.0,10.0,50-75 Ton Mobile Support Crane,290.0,290.0
100231314,CN.SEA5.3881,PH1 - CLADDING STEEL  EXTERIOR - SEA5 FIZ - GL 6-3 - C LINE  (DS AREA) (6~3),TK_Complete,2024-02-15 09:00,2024-02-25 11:00,2024-02-15 09:00,2024-03-01 09:00,300.0,0.0,300.0,0.0,"Cladding Steel, Insulated Metal Panel - Prefab Crews",15.0,0.0,15.0,50 Ton Mobile Support Crane,315.0,315.0
100231315,EMB1018,IMPACT - Missing Precast Embeds (2) GL E3 and E4 (#18),TK_Complete,2023-10-09 07:00,2023-10-12 17:00,2023-10-09 07:00,2023-10-13 17:00,580.0,0.0,580.0,0.0,W&W DS/AD Infill Steel - East - Team A,58.0,0.0,58.0,"200-300 Ton Crawler, 55 Ton Mobile Support Crane",638.0,638.0
100231316,EMB1012,IMPACT - Missing Precast Embeds (4) Between B4 and C4 Level 2 (#12),TK_Complete,2023-09-16 08:00,2023-09-18 12:00,2023-09-16 08:00,2023-09-18 15:00,580.0,0.0,580.0,0.0,W&W DS/AD Infill Steel - East - Team A,58.0,0.0,58.0,"200-300 Ton Crawler, 55 Ton Mobile Support Crane",638.0,638.0
100231317,EMB1011,IMPACT - Missing Precast Embeds (2) Between GL B3 and C3 Level 2 (#11),TK_Complete,2023-09-16 08:00,2023-09-18 12:00,2023-09-16 08:00,2023-09-18 15:00,580.0,0.0,580.0,0.0,W&W DS/AD Infill Steel - East - Team A,58.0,0.0,58.0,"200-300 Ton Crawler, 55 Ton Mobile Support Crane",638.0,638.0
100231318,EMB1003,IMPACT - Missing Precast Embed Between GL C2 and C3 Level 4 (#03),TK_Complete,2023-10-09 07:00,2023-10-12 17:00,2023-08-22 07:00,2023-10-13 17:00,580.0,0.0,580.0,0.0,W&W DS/AD Infill Steel - East - Team A,58.0,0.0,58.0,"200-300 Ton Crawler, 55 Ton Mobile Support Crane",638.0,638.0
100231319,EMB5000,IMPACT - Missing Precast Embeds (2) Between GL B4 and C4 Level 3 (#5000),TK_Complete,2023-09-16 08:00,2023-09-18 12:00,2023-09-16 08:00,2023-09-18 15:00,580.0,0.0,580.0,0.0,W&W DS/AD Infill Steel - East - Team A,58.0,0.0,58.0,"200-300 Ton Crawler, 55 Ton Mobile Support Crane",638.0,638.0
100231320,CN.SEA5.3901,PH1- DS/AD FRP SLAB - SEA-5 L2-L3 GL 1-3,TK_Complete,2023-10-02 07:00,2023-10-07 13:00,2023-10-02 07:00,2023-10-08 16:00,695.0,0.0,695.0,0.0,"W&W DS/AD Infill Steel - East - Team A, CIP Concrete Slab on Metal Deck Crews",58.0,0.0,58.0,"200-300 Ton Crawler, 55 Ton Mobile Support Crane",753.0,753.0
100231332,CN.SEA5.3951,PH1 -WELD CLIPS - CLADDING STEEL - SEA5 FIZ - GL 6-1 - C LINE (DS AREA),TK_Complete,2024-02-19 07:00,2024-02-20 09:00,2024-02-19 07:00,2024-02-20 09:00,300.0,0.0,300.0,0.0,"Cladding Steel, Insulated Metal Panel - Prefab Crews",15.0,0.0,15.0,50 Ton Mobile Support Crane,315.0,315.0
100231355,CN.SEA5.6190,IMPACT - MISSING 4 ANCHOR BOLTS - SEA5 FIZ - C4 - 4A - (35),TK_Complete,2023-12-04 07:00,2023-12-05 13:00,2023-09-25 07:00,2023-10-30 13:00,1120.0,0.0,1120.0,0.0,CIP Concrete Topping Slab Crews,0.0,0.0,0.0,,1120.0,1120.0
100231358,CN.SEA5.6210,IMPACT - MISSING EMBEDS (WHOLE BAY) - SEA5 - GL A - C/ 4-3 (32),TK_Complete,2023-10-30 07:00,2023-11-04 17:00,2023-09-18 07:00,2023-09-20 10:00,1120.0,0.0,1120.0,0.0,CIP Concrete Topping Slab Crews,0.0,0.0,0.0,,1120.0,1120.0
100231359,SITE6020,IMPACT - SECAI Transformer and Temp Generator setup - SUE GL 3 (WW & Patriot work at 1-3 line and 3-4),TK_Complete,2023-09-16 08:00,2023-09-18 12:00,2023-09-08 08:00,2023-09-20 08:00,580.0,0.0,580.0,0.0,W&W DS/AD Infill Steel - East - Team A,58.0,0.0,58.0,"200-300 Ton Crawler, 55 Ton Mobile Support Crane",638.0,638.0
100231374,CN.SEA5.6260,IMPACT [S.TIA-6] - F03B.05(SEQ9941) - DUCT SHAFT OPENING RETROFIT REVISION/FABRICATION - SEA5 - L3 - GL 3 - A-B.5,TK_Complete,2023-11-20 07:00,2023-11-22 17:00,2023-11-17 07:00,2024-04-08 17:00,280.0,0.0,280.0,0.0,CIP Concrete Slab on Metal Deck Crews,10.0,0.0,10.0,50-75 Ton Mobile Support Crane,290.0,290.0
100231375,CN.SEA5.6270,IMPACT [CL 84-85] - SECAI TEMP STAIR & SUPER DECK REMOVAL - SEA5 - L1 - GL 1-5 - A LINE,TK_Complete,2023-11-20 07:00,2023-12-07 09:00,2023-10-13 07:00,2024-02-17 14:00,80.0,0.0,80.0,0.0,CIP Concrete Topping Slab Crews,0.0,0.0,0.0,,80.0,80.0
100231381,EMB6100,IMPACT - Missing Embeds (2) GL E3 and E4 L3A SEQ. 1701,TK_Complete,2023-10-09 07:00,2023-10-12 17:00,2023-10-12 07:00,2024-01-02 17:00,580.0,0.0,580.0,0.0,W&W DS/AD Infill Steel - East - Team A,58.0,0.0,58.0,"200-300 Ton Crawler, 55 Ton Mobile Support Crane",638.0,638.0
100231393,CN.SEA5.6510,IMPACT - FIZ ROOF OFFICE MATERIAL IN THE WAY - DS/AD - SEA5 FIZ - GL 6-1 - C-E - L4 & L4/E,TK_Complete,2024-01-24 11:00,2024-01-26 15:00,2024-01-18 11:00,2024-01-21 11:00,695.0,0.0,695.0,0.0,"W&W DS/AD Infill Steel - East - Team A, CIP Concrete Slab on Metal Deck Crews",58.0,0.0,58.0,"200-300 Ton Crawler, 55 Ton Mobile Support Crane",753.0,753.0
100231404,CN.SWB5.8010,IMPACT - L4A PRECAST CONFLICT - ELEVATOR 18 - RFI 6444 - ERECT STEEL - NE PENTHOUSE,TK_Complete,2024-02-05 09:00,2024-02-16 15:00,2024-03-10 07:00,2024-05-02 17:00,580.0,0.0,580.0,0.0,W&W DS/AD Infill Steel - West - Team B,58.0,0.0,58.0,"200-300 Ton Crawler, 55 Ton Mobile Support Crane",638.0,638.0
100231405,CN.SEB5.8020,IMPACT - CLADDING POSTS ELEVATION ISSUE - L4C - RFI 1264 - NE PENTHOUSE,TK_Complete,2024-02-05 09:00,2024-02-15 15:00,2024-03-10 08:00,2024-04-01 09:00,580.0,0.0,580.0,0.0,W&W DS/AD Infill Steel - West - Team B,58.0,0.0,58.0,"200-300 Ton Crawler, 55 Ton Mobile Support Crane",638.0,638.0
100231406,CN.SWB5.8030,IMPACT - CLADDING POSTS ELEVATION ISSUE - L4C - RFI 1264 ANSWER - NW PENTHOUSE (CCD 269),TK_Complete,2024-02-05 09:00,2024-02-15 15:00,2024-03-10 08:00,2024-04-01 09:00,580.0,0.0,580.0,0.0,W&W DS/AD Infill Steel - West - Team B,58.0,0.0,58.0,"200-300 Ton Crawler, 55 Ton Mobile Support Crane",638.0,638.0
100231407,CN.SWA5.8040,IMPACT [C35] - ELEVATOR 1B BENT PLATE & L4A BEAM - ERECT STEEL - SW PENTHOUSE,TK_Complete,2024-04-19 07:00,2024-04-25 17:00,2024-04-16 07:00,2024-04-24 17:00,580.0,0.0,580.0,0.0,W&W DS/AD Infill Steel - West - Team B,58.0,0.0,58.0,"200-300 Ton Crawler, 55 Ton Mobile Support Crane",638.0,638.0
100231408,CN.SWB5.8830,IMPACT - CLADDING POSTS ELEVATION ISSUE - L4C - CCD 269 APPROVAL - NW PENTHOUSE,TK_Complete,2024-04-08 07:00,2024-04-15 17:00,2024-04-02 07:00,2024-04-11 17:00,580.0,0.0,580.0,0.0,W&W DS/AD Infill Steel - West - Team B,58.0,0.0,58.0,"200-300 Ton Crawler, 55 Ton Mobile Support Crane",638.0,638.0
100231409,CN.SWB5.8840,IMPACT - CLADDING POSTS ELEVATION ISSUE - L4C - SWITCH INSTALL STEEL - NW PENTHOUSE,TK_Complete,2024-05-20 07:00,2024-06-03 17:00,2024-04-29 07:00,2024-05-21 17:00,580.0,0.0,580.0,0.0,W&W DS/AD Infill Steel - West - Team B,58.0,0.0,58.0,"200-300 Ton Crawler, 55 Ton Mobile Support Crane",638.0,638.0
100231410,CN.SEB5.8850,IMPACT - CLADDING POSTS ELEVATION ISSUE - L4C - CCD 269 APPROVAL - NE PENTHOUSE,TK_Complete,2024-04-08 07:00,2024-04-15 17:00,2024-04-02 07:00,2024-04-11 17:00,580.0,0.0,580.0,0.0,W&W DS/AD Infill Steel - West - Team B,58.0,0.0,58.0,"200-300 Ton Crawler, 55 Ton Mobile Support Crane",638.0,638.0
100231411,CN.SEB5.8860,IMPACT - CLADDING POSTS ELEVATION ISSUE - L4C -SWITCH/ INSTALL STEEL - NE PENTHOUSE,TK_Complete,2024-05-20 07:00,2024-06-03 17:00,2024-05-06 07:00,2024-05-16 17:00,580.0,0.0,580.0,0.0,W&W DS/AD Infill Steel - West - Team B,58.0,0.0,58.0,"200-300 Ton Crawler, 55 Ton Mobile Support Crane",638.0,638.0
100231539,CN.SEA5.10165,IMPACT - INSTALL HAT CHANNEL - GL 1-1.5 - A LINE [SUP EXTERIOR WALL],TK_Complete,2024-08-15 07:00,2024-08-17 17:00,2024-07-23 07:00,2024-07-25 17:00,330.0,0.0,330.0,0.0,"Insulated Metal Panels - Lower Areas, Insulated Metal Panel - Prefab Crews",15.0,0.0,15.0,50 Ton Mobile Support Crane,345.0,345.0
100231540,CN.SEA5.10185,IMPACT - INSTALL INSULATED METAL PANEL MODULES - GL 1-1.5 - A LINE [SUP EXTERIOR WALL],TK_Complete,2024-08-09 07:00,2024-08-10 17:00,2024-08-01 07:00,2024-08-02 17:00,330.0,0.0,330.0,0.0,"Insulated Metal Panels - Lower Areas, Insulated Metal Panel - Prefab Crews",15.0,0.0,15.0,50 Ton Mobile Support Crane,345.0,345.0
100231556,CN.SWB5.9890,INSTALL INSULATED METAL PANELS - NE PENTHOUSE - BREEZEWAY,TK_Complete,2024-11-02 07:00,2024-11-12 17:00,2024-10-17 07:00,2024-10-23 17:00,580.0,0.0,580.0,0.0,W&W DS/AD Infill Steel - West - Team B,58.0,0.0,58.0,"200-300 Ton Crawler, 55 Ton Mobile Support Crane",638.0,638.0
100231557,CN.SWB5.9900,IMPACT - PATRIOT COMPLETE REMAINING CLADDING STEEL - NE PENTHOUSE - BREEZEWAY,TK_Complete,2024-08-25 07:00,2024-08-30 17:00,2024-08-19 07:00,2024-09-05 17:00,580.0,0.0,580.0,0.0,W&W DS/AD Infill Steel - West - Team B,58.0,0.0,58.0,"200-300 Ton Crawler, 55 Ton Mobile Support Crane",638.0,638.0
100231558,CN.SWB5.9910,ALPHA PAINT BOLTS / CLADDING - NE PENTHOUSE - BREEZEWAY,TK_Complete,2024-09-13 07:00,2024-09-16 17:00,2024-09-04 07:00,2024-09-10 17:00,580.0,0.0,580.0,0.0,W&W DS/AD Infill Steel - West - Team B,58.0,0.0,58.0,"200-300 Ton Crawler, 55 Ton Mobile Support Crane",638.0,638.0
100231563,CN.SWB5.10400,REMAINING TAPE & FLOAT - IT SECURITY ROOM - NE PENTHOUSE,TK_Complete,2025-01-02 07:00,2025-01-03 17:00,2025-01-02 07:00,2025-01-04 17:00,580.0,0.0,580.0,0.0,W&W DS/AD Infill Steel - West - Team B,58.0,0.0,58.0,"200-300 Ton Crawler, 55 Ton Mobile Support Crane",638.0,638.0
100231564,CN.SWB5.10410,REMAINING TAPE & FLOAT -FIREALARM 18 - NE PENTHOUSE,TK_Complete,2025-01-06 07:00,2025-01-08 17:00,2025-01-06 07:00,2025-01-08 17:00,580.0,0.0,580.0,0.0,W&W DS/AD Infill Steel - West - Team B,58.0,0.0,58.0,"200-300 Ton Crawler, 55 Ton Mobile Support Crane",638.0,638.0
100231565,CN.SWB5.10420,REMAINING TAPE & FLOAT  -I/O EM-2 -  NE PENTHOUSE,TK_Complete,2025-01-06 07:00,2025-01-08 17:00,2025-01-06 07:00,2025-01-08 17:00,580.0,0.0,580.0,0.0,W&W DS/AD Infill Steel - West - Team B,58.0,0.0,58.0,"200-300 Ton Crawler, 55 Ton Mobile Support Crane",638.0,638.0
100231566,CN.SWB5.10430,TAPE & FLOAT - 33 COLUMNS & I/O RM 2 - NE PENTHOUSE,TK_NotStart,2025-11-21 07:00,2025-11-24 17:00,,,580.0,580.0,0.0,0.0,W&W DS/AD Infill Steel - West - Team B,58.0,58.0,0.0,"200-300 Ton Crawler, 55 Ton Mobile Support Crane",638.0,0.0
100231568,CN.SWB5.10580,INSTALL WATER PROOFING & TOPPING SLAB - NE PENTHOUSE RAMP- L4,TK_Complete,2024-12-02 07:00,2024-12-09 17:00,2024-12-02 07:00,2024-12-09 17:00,580.0,0.0,580.0,0.0,W&W DS/AD Infill Steel - West - Team B,58.0,0.0,58.0,"200-300 Ton Crawler, 55 Ton Mobile Support Crane",638.0,638.0
100231571,CN.SWB5.10650,IMPACT - MC DEAN BLOCKING THE ACCESS -I/O EM-2 - NE PENTHOUSE,TK_Complete,2024-12-02 07:00,2024-12-05 17:00,2024-12-02 07:00,2024-12-24 17:00,580.0,0.0,580.0,0.0,W&W DS/AD Infill Steel - West - Team B,58.0,0.0,58.0,"200-300 Ton Crawler, 55 Ton Mobile Support Crane",638.0,638.0
100231613,CN.A1.UG.1190,PH1- UNDERGROUND PLUMBING SEB1,TK_Complete,2022-08-15 07:00,2022-08-18 17:00,2022-08-15 07:00,2022-08-18 17:00,748.0,0.0,748.0,0.0,CIP Concrete SOG Crews,22.0,0.0,22.0,50-75 Ton Mobile Support Crane,770.0,770.0
100231616,CN.SEB1.1010,PH1-FRP GRADE BEAM - SEB1,TK_Complete,2022-10-01 08:00,2022-10-05 08:00,2022-10-01 08:00,2022-10-06 09:00,480.0,0.0,480.0,0.0,CIP Concrete SUP Pier Cap Crew,16.0,0.0,16.0,50-75 Ton Mobile Support Crane,496.0,496.0
100231617,CN.SEB1.1080,PH1- FRP SLAB - SEB-1-L3,TK_Complete,2023-08-03 09:00,2023-08-05 13:00,2023-08-03 09:00,2023-08-05 14:00,280.0,0.0,280.0,0.0,CIP Concrete Slab on Metal Deck Crews,10.0,0.0,10.0,50-75 Ton Mobile Support Crane,290.0,290.0
100231618,CN.SEB1.1120,PH1- FRP SLAB - SEB-1-ROOF,TK_Complete,2023-09-11 09:00,2023-09-12 15:00,2023-09-11 09:00,2023-09-12 15:00,280.0,0.0,280.0,0.0,CIP Concrete Slab on Metal Deck Crews,10.0,0.0,10.0,50-75 Ton Mobile Support Crane,290.0,290.0
100231623,CN.SEB1.1200,FRP TOPPING SLAB - GL 20-22 - C-A - L4 ROOF,TK_Complete,2024-10-08 07:00,2024-10-11 17:00,2024-10-08 07:00,2024-10-09 17:00,80.0,0.0,80.0,0.0,CIP Concrete Topping Slab Crews,0.0,0.0,0.0,,80.0,80.0
100231624,CN.SEB1.1220,MEP EQPT PADS (LAYOUT & INSTALL DOWELS)- SEB-1-ROOF,TK_Complete,2023-10-16 07:00,2023-10-18 12:00,2023-10-09 07:00,2023-10-12 07:00,1120.0,0.0,1120.0,0.0,CIP Concrete Topping Slab Crews,0.0,0.0,0.0,,1120.0,1120.0
100231625,CN.SEB1.1230,PH1- 1st FLOOR SLAB - SEB-1-L1,TK_Complete,2022-10-08 14:00,2022-10-17 14:00,2022-10-08 14:00,2022-10-20 17:00,646.0,0.0,646.0,0.0,CIP Concrete SOG Crews,19.0,0.0,19.0,50-75 Ton Mobile Support Crane,665.0,665.0
100231626,CN.SEB1.1050,TIER 1 ERECT PRECAST COLUMNS & BEAMS - SEB1,TK_Complete,2023-04-13 09:00,2023-04-25 17:00,2023-04-03 09:00,2023-05-08 17:00,192.0,0.0,192.0,0.0,Precast Erect Crew SUP Col's/Bm's/Girders,24.0,0.0,24.0,LR-1400 400 Ton Crawler Crane,216.0,216.0
100231627,CN.SEB1.1140,PH1-ROOF LAYER PARAPET(FRAMING & SHEATING RIP) - SEB1- GL 19-22 - L4 - C-A,TK_Complete,2023-12-11 07:00,2023-12-12 13:00,2023-11-26 07:00,2023-11-27 07:00,64.0,0.0,64.0,0.0,Precast Erect Crew SUP Col's/Bm's/Girders,8.0,0.0,8.0,185 Ton Crawler Crane Unload/Handle Waffles,72.0,72.0
100231628,CN.SEB1.1160,PH1-FLUID APPLIED MEMBRANE ROOFING - SEB1- GL 19-22 - L4 - C-A,TK_Complete,2023-12-12 13:00,2023-12-15 09:00,2023-11-28 13:00,2023-11-29 09:00,112.0,0.0,112.0,0.0,SUP Bldg Roofing Membrane Crew,0.0,0.0,0.0,,112.0,112.0
100231629,CN.SEB1.1170,PH1 - CLADDING STEEL INTERIOR GL 19-22 - D LINE (AD AREA),TK_Complete,2024-03-07 07:00,2024-03-11 17:00,2024-03-07 07:00,2024-03-30 00:00,300.0,0.0,300.0,0.0,"Cladding Steel, Insulated Metal Panel - Prefab Crews",15.0,0.0,15.0,50 Ton Mobile Support Crane,315.0,315.0
100231630,CN.SEB1.1190,INSTALL INSULATED METAL PANEL MODULES - GL 19-22 - C LINE (DS AREA) (21~24),TK_Complete,2024-04-19 07:00,2024-05-09 17:00,2024-04-19 07:00,2024-04-26 17:00,300.0,0.0,300.0,0.0,"Cladding Steel, Insulated Metal Panel - Prefab Crews",15.0,0.0,15.0,50 Ton Mobile Support Crane,315.0,315.0
100231631,CN.SEB1.1150,CLADDING STEEL - GL 18-19 - A LINE [SUP EXTERIOR WALL] (ABOVE MEP TANK LEAVEOUT),TK_Complete,2024-09-13 07:00,2024-09-19 17:00,2024-08-19 07:00,2024-08-30 17:00,330.0,0.0,330.0,0.0,"Insulated Metal Panels - Lower Areas, Insulated Metal Panel - Prefab Crews",15.0,0.0,15.0,50 Ton Mobile Support Crane,345.0,345.0
100231632,CN.SEB1.1180,INSTALL INSULATED METAL PANEL MODULES - GL 18-19 - A LINE [SUP EXTERIOR WALL] (MEP TANK LEAVEOUT),TK_Complete,2024-11-21 07:00,2024-11-27 17:00,2024-11-21 07:00,2024-11-27 17:00,330.0,0.0,330.0,0.0,"Insulated Metal Panels - Lower Areas, Insulated Metal Panel - Prefab Crews",15.0,0.0,15.0,50 Ton Mobile Support Crane,345.0,345.0
100231633,CN.SEB1.1110,PH1- AD STEEL FRAME INSTALL - SEB-1 fab side - (South crane moves here),TK_Complete,2023-10-10 13:00,2023-10-13 15:00,2023-10-04 13:00,2023-10-08 08:00,580.0,0.0,580.0,0.0,W&W DS/AD Infill Steel - East - Team B,58.0,0.0,58.0,"200-300 Ton Crawler, 55 Ton Mobile Support Crane",638.0,638.0
100231653,CN.SEB1.1300,PH1- TOPPING SLAB w TRENCH & ANGLE EMBEDS- SEB-1-L1,TK_Complete,2023-06-29 11:00,2023-07-02 13:00,2023-06-29 11:00,2023-06-30 11:00,80.0,0.0,80.0,0.0,CIP Concrete Topping Slab Crews,0.0,0.0,0.0,,80.0,80.0
100231654,CN.SEB1.1310,PH1- DS/AD DECKING & DETAILING GL 22 - 19 - DS/AD SEB-1 L6,TK_Complete,2023-11-05 10:00,2023-11-09 10:00,2023-11-05 10:00,2023-11-09 11:00,580.0,0.0,580.0,0.0,W&W DS/AD Infill Steel - East - Team B,58.0,0.0,58.0,"200-300 Ton Crawler, 55 Ton Mobile Support Crane",638.0,638.0
100231655,CN.SEB1.1320,PH1- DS/AD FRP SLAB - DS/AD - SEB1- GL 19-22 - C-E -L4/E,TK_Complete,2024-01-22 07:00,2024-01-24 11:00,2024-01-10 07:00,2024-01-11 07:00,695.0,0.0,695.0,0.0,"W&W DS/AD Infill Steel - East - Team B, CIP Concrete Slab on Metal Deck Crews",58.0,0.0,58.0,"200-300 Ton Crawler, 55 Ton Mobile Support Crane",753.0,753.0
100231656,CN.SEB1.1330,AD WATERPROOFING - SEB1 - GL 19-22 - D-E - L4/E,TK_Complete,2024-08-20 07:00,2024-09-06 17:00,2024-07-24 07:00,2024-08-11 17:00,580.0,0.0,580.0,0.0,W&W DS/AD Infill Steel - East - Team B,58.0,0.0,58.0,"200-300 Ton Crawler, 55 Ton Mobile Support Crane",638.0,638.0
100231657,CN.SEB1.1340,AD TOPPING SLAB - SEB1 - GL 19-22 - D-E - L4/E,TK_Complete,2024-08-27 07:00,2024-08-29 17:00,2024-08-12 07:00,2024-08-14 17:00,580.0,0.0,580.0,0.0,W&W DS/AD Infill Steel - East - Team B,58.0,0.0,58.0,"200-300 Ton Crawler, 55 Ton Mobile Support Crane",638.0,638.0
100231658,TIER 2.1050,TIER 2 GROUT PRECAST COLUMNS & BEAMS - SEB1,TK_Complete,2023-07-03 07:00,2023-07-16 13:00,2023-07-15 07:00,2023-07-25 17:00,192.0,0.0,192.0,0.0,Precast Erect Crew SUP Col's/Bm's/Girders,24.0,0.0,24.0,LR-1400 400 Ton Crawler Crane,216.0,216.0
100231663,CN.SEB1.1390,PH1- DS/AD DECKING & DECKING - DS/AD - SEB1- GL 19-22 - C-E -  L4 & L4/E,TK_Complete,2024-01-05 11:00,2024-01-10 16:00,2024-01-05 11:00,2024-01-09 15:00,580.0,0.0,580.0,0.0,W&W DS/AD Infill Steel - East - Team B,58.0,0.0,58.0,"200-300 Ton Crawler, 55 Ton Mobile Support Crane",638.0,638.0
100231666,CN.SEB1.1410,PH1- DS STEEL FRAME INSTALL - SEB-1 Comeback Sup Side,TK_Complete,2023-10-09 08:00,2023-10-12 10:00,2023-10-09 08:00,2023-10-12 10:00,580.0,0.0,580.0,0.0,W&W DS/AD Infill Steel - East - Team B,58.0,0.0,58.0,"200-300 Ton Crawler, 55 Ton Mobile Support Crane",638.0,638.0
100231667,CN.SEB1.1420,PH1- EXTERIOR CURBS - SEB-1-L1,TK_Complete,2023-06-20 13:00,2023-06-25 13:00,2023-06-20 13:00,2023-06-26 15:00,80.0,0.0,80.0,0.0,CIP Concrete Topping Slab Crews,0.0,0.0,0.0,,80.0,80.0
100231668,CN.SEB1.1430,PH1- MEP PADS - SEB-1-L1,TK_Complete,2023-07-14 11:00,2023-07-15 17:00,2023-07-01 11:00,2023-07-03 09:00,80.0,0.0,80.0,0.0,CIP Concrete Topping Slab Crews,0.0,0.0,0.0,,80.0,80.0
100231679,CN.SEB1.4910,PH1- POUR TRENCH ANGLE EMBEDS - SEB-1-L1,TK_Complete,2023-09-05 07:00,2023-09-06 13:00,2023-09-01 07:00,2023-09-01 13:00,80.0,0.0,80.0,0.0,CIP Concrete Topping Slab Crews,0.0,0.0,0.0,,80.0,80.0
100231680,CN.SEB1.4920,SECAI UPW TANK INSTALL - SEB1 - GL 19-22 - L1 C-A,TK_Complete,2023-11-13 07:00,2023-11-20 15:00,2023-11-06 07:00,2023-11-12 09:00,80.0,0.0,80.0,0.0,CIP Concrete Topping Slab Crews,0.0,0.0,0.0,,80.0,80.0
100231683,CN.SEB1.4930,PH1 - CLADDING STEEL  EXTERIOR - SEB1- GL 19-22 - C LINE  (DS AREA),TK_Complete,2023-11-28 07:00,2023-12-07 09:00,2023-11-28 07:00,2023-12-15 09:00,300.0,0.0,300.0,0.0,"Cladding Steel, Insulated Metal Panel - Prefab Crews",15.0,0.0,15.0,50 Ton Mobile Support Crane,315.0,315.0
100231694,CN.SEB1.4940,PH1 -WELD CLIPS - CLADDING STEEL - SEB-1 C LINE (DS AREA),TK_Complete,2023-10-24 07:00,2023-10-25 09:30,2023-10-23 07:00,2023-10-24 09:00,300.0,0.0,300.0,0.0,"Cladding Steel, Insulated Metal Panel - Prefab Crews",15.0,0.0,15.0,50 Ton Mobile Support Crane,315.0,315.0
100231697,CN.SEB1.4950,PH1- DS/AD DECKING &  DETAILING GL 22 - 19 - DS/AD SEB-1 L2,TK_Complete,2023-10-24 07:00,2023-10-28 17:00,2023-10-24 07:00,2023-10-27 10:00,580.0,0.0,580.0,0.0,W&W DS/AD Infill Steel - East - Team B,58.0,0.0,58.0,"200-300 Ton Crawler, 55 Ton Mobile Support Crane",638.0,638.0
100231698,CN.SEB1.4970,PH1- DS/AD FRP SLAB - DS/AD - SEB1- GL 19-22 - C-E - L3,TK_Complete,2024-01-08 09:00,2024-01-14 09:00,2024-01-08 09:00,2024-01-12 09:00,695.0,0.0,695.0,0.0,"W&W DS/AD Infill Steel - East - Team B, CIP Concrete Slab on Metal Deck Crews",58.0,0.0,58.0,"200-300 Ton Crawler, 55 Ton Mobile Support Crane",753.0,753.0
100231718,TRES.SEB1.11,IMPACT [ES6] - TRESTLE WORK GL 19-22 - A LINE [SUP EXTERIOR WALL],TK_Complete,2023-10-02 07:00,2023-10-09 13:00,2023-09-29 07:00,2024-07-11 17:00,330.0,0.0,330.0,0.0,"Insulated Metal Panels - Lower Areas, Insulated Metal Panel - Prefab Crews",15.0,0.0,15.0,50 Ton Mobile Support Crane,345.0,345.0
100231724,TRES.SEB1.21,IMPACT - MEP TANKS MOVE IN - SEB-1 A LINE [SUP EXTERIOR WALL],TK_Complete,2023-10-30 07:00,2023-11-06 13:00,2023-10-30 07:00,2023-11-06 17:00,330.0,0.0,330.0,0.0,"Insulated Metal Panels - Lower Areas, Insulated Metal Panel - Prefab Crews",15.0,0.0,15.0,50 Ton Mobile Support Crane,345.0,345.0
100231726,CN.SEB1.4941,IMPACT [S.TIA-111] - SECAI MEP AND SPMT CRANE - SEB1- GL 19-22,TK_Complete,2023-10-02 07:00,2023-10-07 13:00,2023-11-17 07:00,2023-12-02 15:00,330.0,0.0,330.0,0.0,"Insulated Metal Panels - Lower Areas, Insulated Metal Panel - Prefab Crews",15.0,0.0,15.0,50 Ton Mobile Support Crane,345.0,345.0
100231731,CN.SEB1.6210,DS ROOF PARAPET - L6 - SEB1- GL 19-22 - C LINE (DS AREA) (21~24),TK_Complete,2024-02-15 16:00,2024-02-24 08:00,2024-02-15 16:00,2024-02-19 17:00,300.0,0.0,300.0,0.0,"Cladding Steel, Insulated Metal Panel - Prefab Crews",15.0,0.0,15.0,50 Ton Mobile Support Crane,315.0,315.0
100231732,CN.SEB1.6240,INSTALL TPO ROOFING - SEB1 - GL 17-21 - C-D - L6,TK_Complete,2024-10-14 07:00,2024-10-18 17:00,2024-10-14 07:00,2024-10-18 17:00,580.0,0.0,580.0,0.0,W&W DS/AD Infill Steel - East - Team B,58.0,0.0,58.0,"200-300 Ton Crawler, 55 Ton Mobile Support Crane",638.0,638.0
100231738,CN.SEB1.6590,IMPACT [C3] - BATHROOM PIT HATCH OPENING - SEB-1 - L1 - GL 21 (Waiting on Hatch framing),TK_Complete,2022-10-10 07:00,2022-10-20 14:00,2024-01-03 14:00,2024-03-29 17:00,646.0,0.0,646.0,0.0,CIP Concrete SOG Crews,19.0,0.0,19.0,50-75 Ton Mobile Support Crane,665.0,665.0
100231739,CN.SEB1.6600,IMPACT [C9] - RFI 5825 - TRENCH/ELEVATOR PIT CURB/BATHROOM (NOMURA PIPE CONFLICT) - SEB1 - L1 - GL 21,TK_Complete,2022-10-10 07:00,2022-10-20 14:00,2024-01-03 07:00,2024-01-12 17:00,646.0,0.0,646.0,0.0,CIP Concrete SOG Crews,19.0,0.0,19.0,50-75 Ton Mobile Support Crane,665.0,665.0
100231741,CN.SEB1.6830,IMPACT [C23] - EXPANSION JOINT DETAIL (C23) - SEB1- GL 19 - C-E -L4 & L4/E,TK_Complete,2024-01-22 07:00,2024-01-24 11:00,2024-01-10 07:00,2024-01-11 07:00,695.0,0.0,695.0,0.0,"W&W DS/AD Infill Steel - East - Team B, CIP Concrete Slab on Metal Deck Crews",58.0,0.0,58.0,"200-300 Ton Crawler, 55 Ton Mobile Support Crane",753.0,753.0
100231742,CN.SEB1.6840,IMPACT - SECAI MEP LEAVEOUTS FOR PCW TANK (expected November) - GL 18-19 - A LINE [SUP EXTERIOR WALL],TK_Complete,2024-08-09 07:00,2024-08-09 17:00,2024-07-01 07:00,2024-10-28 17:00,330.0,0.0,330.0,0.0,"Insulated Metal Panels - Lower Areas, Insulated Metal Panel - Prefab Crews",15.0,0.0,15.0,50 Ton Mobile Support Crane,345.0,345.0
100231756,CN.SEB1.7410,REMAINING INSTALL INSULATED METAL PANEL MODULES - GL 19.5-18.5 - C LINE (DS AREA) [BLOCKED BY MEP],TK_Complete,2024-08-09 07:00,2024-08-10 17:00,2024-08-08 07:00,2024-08-21 17:00,300.0,0.0,300.0,0.0,"Cladding Steel, Insulated Metal Panel - Prefab Crews",15.0,0.0,15.0,50 Ton Mobile Support Crane,315.0,315.0
100231765,CN.SEB1.9030,CURE TOPPING SLAB - GL 20-22 - C-A - L4 ROOF,TK_Complete,2024-10-10 07:00,2024-10-11 17:00,2024-10-10 07:00,2024-10-12 17:00,80.0,0.0,80.0,0.0,CIP Concrete Topping Slab Crews,0.0,0.0,0.0,,80.0,80.0
100231769,CN.SEB1.10040,DS ROOF PARAPET DRY IN - SEB1 - GL 19-22 - C-D - L6,TK_Complete,2024-08-02 07:00,2024-08-20 17:00,2024-08-01 07:00,2024-09-03 17:00,580.0,0.0,580.0,0.0,W&W DS/AD Infill Steel - East - Team B,58.0,0.0,58.0,"200-300 Ton Crawler, 55 Ton Mobile Support Crane",638.0,638.0
100231773,CN.SEB1.10100,CLADDING STEEL & DETAIL/INSPECT - GL 18-19 - A LINE [SUP EXTERIOR WALL] (MEP TANK LEAVEOUT),TK_Complete,2024-10-29 07:00,2024-11-05 17:00,2024-10-29 07:00,2024-11-05 17:00,330.0,0.0,330.0,0.0,"Insulated Metal Panels - Lower Areas, Insulated Metal Panel - Prefab Crews",15.0,0.0,15.0,50 Ton Mobile Support Crane,345.0,345.0
100231774,CN.SEB1.10110,IMPACT - AWAIT SECAI PIPE ELEVATION FIX / TURNOVER AREA TO YATES - GL 19-21 - A LINE [SUP EXTERIOR WALL],TK_Complete,2024-08-09 07:00,2024-08-09 17:00,2024-08-12 07:00,2024-10-04 17:00,330.0,0.0,330.0,0.0,"Insulated Metal Panels - Lower Areas, Insulated Metal Panel - Prefab Crews",15.0,0.0,15.0,50 Ton Mobile Support Crane,345.0,345.0
100231775,CN.SEB1.10140,INSTALL INSULATED METAL PANEL MODULES - GL 18-19 - A LINE [SUP EXTERIOR WALL] (ABOVE MEP TANK LEAVEOUT),TK_Complete,2024-09-25 07:00,2024-09-29 17:00,2024-09-11 07:00,2024-10-08 17:00,330.0,0.0,330.0,0.0,"Insulated Metal Panels - Lower Areas, Insulated Metal Panel - Prefab Crews",15.0,0.0,15.0,50 Ton Mobile Support Crane,345.0,345.0
100231776,CN.SEB1.10150,INSTALL INSULATED METAL PANEL MODULES - GL 20-21 - A LINE [SUP EXTERIOR WALL] (ABOVE MEP PIPE),TK_Complete,2025-01-23 07:00,2025-01-28 17:00,2025-01-23 07:00,2025-01-24 17:00,330.0,0.0,330.0,0.0,"Insulated Metal Panels - Lower Areas, Insulated Metal Panel - Prefab Crews",15.0,0.0,15.0,50 Ton Mobile Support Crane,345.0,345.0
100231777,CN.SEB1.10160,IMPACT - EXPANSION JOINT PARAPET DETAIL - SEB1 - GL 17-21 - C-D - L6,TK_Complete,2024-09-09 07:00,2024-09-27 17:00,2024-09-09 07:00,2024-10-10 17:00,580.0,0.0,580.0,0.0,W&W DS/AD Infill Steel - East - Team B,58.0,0.0,58.0,"200-300 Ton Crawler, 55 Ton Mobile Support Crane",638.0,638.0
100231778,CN.SEB1.10320,IMPACT - SCAFFOLD/ MEP TRADES IN THE WAY - GL 19-21 - A LINE [SUP EXTERIOR WALL],TK_Complete,2024-08-09 07:00,2024-08-09 17:00,2024-10-05 07:00,2024-10-22 17:00,330.0,0.0,330.0,0.0,"Insulated Metal Panels - Lower Areas, Insulated Metal Panel - Prefab Crews",15.0,0.0,15.0,50 Ton Mobile Support Crane,345.0,345.0
100231779,CN.SEB1.10330,IMPACT - OFFICE BLDG SCHEDULE COMPLETE - A1 LINE [SUP EXTERIOR WALL] (OFFICE BLDG RETURN),TK_Complete,2024-10-14 07:00,2024-10-15 17:00,2024-10-01 07:00,2024-11-12 17:00,330.0,0.0,330.0,0.0,"Insulated Metal Panels - Lower Areas, Insulated Metal Panel - Prefab Crews",15.0,0.0,15.0,50 Ton Mobile Support Crane,345.0,345.0
100231780,CN.SEB1.10340,ALPHA PREP PAINTING & PATRIOT CLADDING - A1 LINE [SUP EXTERIOR WALL] (OFFICE BLDG RETURN),TK_Complete,2024-11-21 07:00,2024-11-22 17:00,2024-11-22 07:00,2024-11-27 17:00,330.0,0.0,330.0,0.0,"Insulated Metal Panels - Lower Areas, Insulated Metal Panel - Prefab Crews",15.0,0.0,15.0,50 Ton Mobile Support Crane,345.0,345.0
100231781,CN.SEB1.10350,INSTALL INSULATED METAL PANEL - A1 LINE [SUP EXTERIOR WALL] (OFFICE BLDG RETURN Emseal completion delayed),TK_Complete,2024-12-17 07:00,2024-12-23 17:00,2024-12-17 07:00,2024-12-23 17:00,330.0,0.0,330.0,0.0,"Insulated Metal Panels - Lower Areas, Insulated Metal Panel - Prefab Crews",15.0,0.0,15.0,50 Ton Mobile Support Crane,345.0,345.0
100231782,CN.SEB1.10360,INSTALL CLADDING - A1 LINE [SUP EXTERIOR WALL] (OFFICE BLDG RETURN),TK_Complete,2024-11-12 07:00,2024-11-15 17:00,2024-11-12 07:00,2024-11-20 17:00,330.0,0.0,330.0,0.0,"Insulated Metal Panels - Lower Areas, Insulated Metal Panel - Prefab Crews",15.0,0.0,15.0,50 Ton Mobile Support Crane,345.0,345.0
100231783,CN.SEB1.10370,IMPACT - MEP PIPE DIMENSION NEEDED - GL 19-20 - A LINE [SUP EXTERIOR WALL] (TRESTLE AREA),TK_Complete,2024-11-12 07:00,2024-11-15 17:00,2024-10-01 07:00,2024-12-06 17:00,330.0,0.0,330.0,0.0,"Insulated Metal Panels - Lower Areas, Insulated Metal Panel - Prefab Crews",15.0,0.0,15.0,50 Ton Mobile Support Crane,345.0,345.0
100231784,CN.SEB1.10380,INSTALL & INSPECT CLADDING STEEL - GL 19-20 - A LINE [SUP EXTERIOR WALL] (TRESTLE MEP PENETXN),TK_Complete,2024-11-12 07:00,2024-11-15 17:00,2024-12-09 07:00,2025-01-04 17:00,330.0,0.0,330.0,0.0,"Insulated Metal Panels - Lower Areas, Insulated Metal Panel - Prefab Crews",15.0,0.0,15.0,50 Ton Mobile Support Crane,345.0,345.0
100231785,CN.SEB1.10390,IMPACT - STUD FRAMING - DENSE GLASS - SHEATHING - GL 19-20 - A LINE [SUP EXTERIOR WALL],TK_Complete,2025-07-23 07:00,2025-08-19 17:00,2025-06-20 07:00,2025-10-28 17:00,330.0,0.0,122.1,0.0,"Insulated Metal Panels - Lower Areas, Insulated Metal Panel - Prefab Crews",15.0,0.0,5.55,50 Ton Mobile Support Crane,345.0,127.64999999999999
100231787,CN.SEB1.10420,IMPACT - PATRIOT PRICING & IOCC APPROVAL FOR CHANGED STEEL - GL 19-20 - A LINE [SUP EXTERIOR WALL] (INSIDE TRUSTLE),TK_Complete,2024-11-12 07:00,2024-11-18 17:00,2025-01-09 07:00,2025-02-17 07:00,330.0,0.0,330.0,0.0,"Insulated Metal Panels - Lower Areas, Insulated Metal Panel - Prefab Crews",15.0,0.0,15.0,50 Ton Mobile Support Crane,345.0,345.0
100231788,CN.SEB1.10430,IMPACT - OFFICE BUILDING EMSEAL COMLETION - A1 LINE [SUP EXTERIOR WALL] (OFFICE BLDG RETURN Emseal completion delayed),TK_Complete,2024-11-27 07:00,2024-12-06 17:00,2024-11-27 07:00,2024-12-16 17:00,330.0,0.0,330.0,0.0,"Insulated Metal Panels - Lower Areas, Insulated Metal Panel - Prefab Crews",15.0,0.0,15.0,50 Ton Mobile Support Crane,345.0,345.0
100231789,CN.SEB1.10520,IMPACT - PATRIOT PRICING ON HOLD - Payment issues w SECAI - GL 19-20 - A LINE [SUP EXTERIOR WALL] (INSIDE TRUSTLE),TK_Complete,2024-11-12 07:00,2024-11-15 17:00,2024-12-09 07:00,2025-01-08 17:00,330.0,0.0,330.0,0.0,"Insulated Metal Panels - Lower Areas, Insulated Metal Panel - Prefab Crews",15.0,0.0,15.0,50 Ton Mobile Support Crane,345.0,345.0
100231790,CN.SEB1.10560,PAINT BOLTS AND INSTALL INSULATED METAL PANELS (BELOW TRUSTLE ),TK_Complete,2025-05-05 07:00,2025-05-09 17:00,2025-05-02 07:00,2025-05-09 17:00,330.0,0.0,330.0,0.0,"Insulated Metal Panels - Lower Areas, Insulated Metal Panel - Prefab Crews",15.0,0.0,15.0,50 Ton Mobile Support Crane,345.0,345.0
100231791,CN.SEB1.10570,IMPACT - GREEN BERRY PIPE DELAY- GL 19-20 (BELOW TRUSTLE )(4/20),TK_Complete,2025-02-07 07:00,2025-02-12 17:00,2025-02-07 07:00,2025-05-02 17:00,330.0,0.0,330.0,0.0,"Insulated Metal Panels - Lower Areas, Insulated Metal Panel - Prefab Crews",15.0,0.0,15.0,50 Ton Mobile Support Crane,345.0,345.0
100231803,CN.A1.UG.1210,PH1- UNDERGROUND PLUMBING SEB2,TK_Complete,2022-10-03 07:00,2022-10-06 17:00,2022-10-03 07:00,2022-10-06 17:00,748.0,0.0,748.0,0.0,CIP Concrete SOG Crews,22.0,0.0,22.0,50-75 Ton Mobile Support Crane,770.0,770.0
100231806,CN.SEB2.1010,PH1-FRP GRADE BEAM - SEB2,TK_Complete,2022-11-21 07:00,2022-11-27 17:00,2022-11-21 07:00,2022-11-28 17:00,480.0,0.0,480.0,0.0,CIP Concrete SUP Pier Cap Crew,16.0,0.0,16.0,50-75 Ton Mobile Support Crane,496.0,496.0
100231809,CN.SEB2.1080,PH1- FRP SLAB - SEB-2-L3,TK_Complete,2023-06-27 13:00,2023-07-03 11:00,2023-06-27 13:00,2023-06-30 13:00,280.0,0.0,280.0,0.0,CIP Concrete Slab on Metal Deck Crews,10.0,0.0,10.0,50-75 Ton Mobile Support Crane,290.0,290.0
100231810,CN.SEB2.1120,PH1- FRP SLAB - SEB-2-ROOF,TK_Complete,2023-09-14 07:00,2023-09-15 13:00,2023-09-14 07:00,2023-09-15 13:00,280.0,0.0,280.0,0.0,CIP Concrete Slab on Metal Deck Crews,10.0,0.0,10.0,50-75 Ton Mobile Support Crane,290.0,290.0
100231813,CN.SEB2.1090,PH1- 1st FLOOR SLAB - F8 - SEB-2-L1,TK_Complete,2023-01-10 07:00,2023-01-13 11:00,2023-01-10 07:00,2023-02-20 15:00,646.0,0.0,646.0,0.0,CIP Concrete SOG Crews,19.0,0.0,19.0,50-75 Ton Mobile Support Crane,665.0,665.0
100231814,CN.SEB2.1220,MEP EQPT PADS (LAYOUT & INSTALL DOWELS)- SEB-2-ROOF,TK_Complete,2023-10-30 07:00,2023-11-03 11:00,2023-10-30 07:00,2023-10-30 17:00,1120.0,0.0,1120.0,0.0,CIP Concrete Topping Slab Crews,0.0,0.0,0.0,,1120.0,1120.0
100231815,CN.SEB2.1050,TIER 1 ERECT PRECAST COLUMNS & BEAMS - SEB2,TK_Complete,2023-04-24 07:00,2023-04-30 13:00,2023-04-24 07:00,2023-05-13 16:00,200.0,0.0,200.0,0.0,Precast Erect Crew SUP Col's/Bm's/Girders,25.0,0.0,25.0,LR-1400 400 Ton Crawler Crane,225.0,225.0
100231816,CN.SEB2.1160,PH1-FLUID APPLIED MEMBRANE ROOFING - SEB2,TK_Complete,2023-11-03 11:00,2023-11-06 13:00,2023-11-01 11:00,2023-11-03 11:00,112.0,0.0,112.0,0.0,SUP Bldg Roofing Membrane Crew,0.0,0.0,0.0,,112.0,112.0
100231818,CN.SEB2.1170,PH1 - CLADDING STEEL  INTERIOR - SEB-2 - GL 22-25 - D LINE (AD  AREA),TK_Complete,2024-03-01 07:00,2024-03-06 13:00,2024-03-01 07:00,2024-03-15 17:00,300.0,0.0,300.0,0.0,"Cladding Steel, Insulated Metal Panel - Prefab Crews",15.0,0.0,15.0,50 Ton Mobile Support Crane,315.0,315.0
100231819,CN.SEB2.1200,INSTALL INSULATED METAL PANEL MODULES - GL 22-25 - C LINE (DS AREA),TK_Complete,2024-05-04 07:00,2024-05-11 17:00,2024-04-30 07:00,2024-05-08 17:00,300.0,0.0,300.0,0.0,"Cladding Steel, Insulated Metal Panel - Prefab Crews",15.0,0.0,15.0,50 Ton Mobile Support Crane,315.0,315.0
100231820,CN.SEB2.1150,PH1 - CLADDING STEEL  - SEB-2 A LINE [SUP EXTERIOR WALL](Impacted by TRESTLE),TK_Complete,2023-09-29 15:00,2023-10-05 11:00,2023-09-29 15:00,2023-10-06 15:00,330.0,0.0,330.0,0.0,"Insulated Metal Panels - Lower Areas, Insulated Metal Panel - Prefab Crews",15.0,0.0,15.0,50 Ton Mobile Support Crane,345.0,345.0
100231821,CN.SEB2.1180,PH1 - INSTALL INSULATED METAL PANEL MODULES - SEB-2 - GL 22-25 - A LINE [SUP EXTERIOR WALL],TK_Complete,2024-03-18 07:00,2024-03-27 09:00,2024-03-15 08:00,2024-04-04 00:00,330.0,0.0,330.0,0.0,"Insulated Metal Panels - Lower Areas, Insulated Metal Panel - Prefab Crews",15.0,0.0,15.0,50 Ton Mobile Support Crane,345.0,345.0
100231822,CN.SEB2.1110,PH1- AD STEEL FRAME INSTALL - SEB-2 fab side,TK_Complete,2023-09-22 15:00,2023-09-25 17:00,2023-09-22 15:00,2023-09-27 11:00,580.0,0.0,580.0,0.0,W&W DS/AD Infill Steel - East - Team B,58.0,0.0,58.0,"200-300 Ton Crawler, 55 Ton Mobile Support Crane",638.0,638.0
100231840,CN.SEB2.1290,PH1- TOPPING SLAB w TRENCH & ANGLE EMBEDS- SEB-2-L1,TK_Complete,2023-09-11 15:00,2023-09-16 15:00,2023-07-03 15:00,2023-07-06 15:00,80.0,0.0,80.0,0.0,CIP Concrete Topping Slab Crews,0.0,0.0,0.0,,80.0,80.0
100231841,CN.SEB2.1300,PH1- DS/AD DECKING &  DETAILING GL 22 - 24 - DS/AD SEB-2 L6,TK_Complete,2023-10-30 07:00,2023-11-04 17:00,2023-10-30 07:00,2023-11-09 10:00,580.0,0.0,580.0,0.0,W&W DS/AD Infill Steel - East - Team B,58.0,0.0,58.0,"200-300 Ton Crawler, 55 Ton Mobile Support Crane",638.0,638.0
100231842,CN.SEB2.1310,PH1- DS/AD FRP SLAB - DS/AD SEB-2 - GL 22-25 - L4/E - C-E,TK_Complete,2023-12-17 08:00,2023-12-19 12:00,2023-12-17 08:00,2023-12-19 13:00,695.0,0.0,695.0,0.0,"W&W DS/AD Infill Steel - East - Team B, CIP Concrete Slab on Metal Deck Crews",58.0,0.0,58.0,"200-300 Ton Crawler, 55 Ton Mobile Support Crane",753.0,753.0
100231843,CN.SEB2.1320,AD WATERPROOFING - SEB2 - GL 22-25 - D-E - L4/E,TK_Complete,2024-07-15 07:00,2024-07-29 17:00,2024-07-08 07:00,2024-07-24 17:00,580.0,0.0,580.0,0.0,W&W DS/AD Infill Steel - East - Team B,58.0,0.0,58.0,"200-300 Ton Crawler, 55 Ton Mobile Support Crane",638.0,638.0
100231844,CN.SEB2.1330,AD TOPPING SLAB - SEB2 - GL 22-25 - D-E - L4/E,TK_Complete,2024-08-08 07:00,2024-08-13 17:00,2024-07-25 07:00,2024-07-29 17:00,580.0,0.0,580.0,0.0,W&W DS/AD Infill Steel - East - Team B,58.0,0.0,58.0,"200-300 Ton Crawler, 55 Ton Mobile Support Crane",638.0,638.0
100231845,TIER 2.1051,TIER 2 GROUT PRECAST COLUMNS & BEAMS - SEB2,TK_Complete,2023-07-31 07:00,2023-08-03 17:00,2023-07-26 07:00,2023-07-27 07:00,200.0,0.0,200.0,0.0,Precast Erect Crew SUP Col's/Bm's/Girders,25.0,0.0,25.0,LR-1400 400 Ton Crawler Crane,225.0,225.0
100231850,CN.SEB2.1380,PH1- DS/AD DECKING & DETAILING GL 22 - DS/AD SEB-2 L4 & L4/E - C-E,TK_Complete,2023-12-14 07:00,2023-12-17 17:00,2023-12-14 07:00,2023-12-16 11:00,580.0,0.0,580.0,0.0,W&W DS/AD Infill Steel - East - Team B,58.0,0.0,58.0,"200-300 Ton Crawler, 55 Ton Mobile Support Crane",638.0,638.0
100231853,CN.SEB2.1400,PH1- DS STEEL FRAME INSTALL - SEB-2 Comeback Sup Side,TK_Complete,2023-09-29 07:00,2023-10-02 09:00,2023-09-29 07:00,2023-10-03 13:00,580.0,0.0,580.0,0.0,W&W DS/AD Infill Steel - East - Team B,58.0,0.0,58.0,"200-300 Ton Crawler, 55 Ton Mobile Support Crane",638.0,638.0
100231854,CN.SEB2.1410,PH1- EXTERIOR CURBS- SEB-2-L1,TK_Complete,2023-10-16 07:00,2023-10-19 17:00,2023-09-26 07:00,2023-09-29 07:00,80.0,0.0,80.0,0.0,CIP Concrete Topping Slab Crews,0.0,0.0,0.0,,80.0,80.0
100231855,CN.SEB2.1420,PH1- MEP PADS - SEB2 GL 22-25 - L1 C-A - MECHANICAL ROOM 3 NORTH - Bathroom Pit Rework,TK_Complete,2024-01-25 13:00,2024-01-27 17:00,2024-01-25 13:00,2024-01-28 10:00,80.0,0.0,80.0,0.0,CIP Concrete Topping Slab Crews,0.0,0.0,0.0,,80.0,80.0
100231866,CN.SEB2.2331,PH1 - CLADDING STEEL  EXTERIOR - SEB-2 - GL 22-25 - C (DS AREA),TK_Complete,2023-12-15 09:00,2023-12-22 11:00,2023-12-15 09:00,2023-12-24 09:00,300.0,0.0,300.0,0.0,"Cladding Steel, Insulated Metal Panel - Prefab Crews",15.0,0.0,15.0,50 Ton Mobile Support Crane,315.0,315.0
100231873,CN.SEB2.2351,PH1 -WELD CLIPS - CLADDING STEEL - SEB-2 - GL 22-25 - C LINE (DS AREA),TK_Complete,2023-11-27 07:00,2023-11-28 09:00,2023-11-21 07:00,2023-11-22 09:00,300.0,0.0,300.0,0.0,"Cladding Steel, Insulated Metal Panel - Prefab Crews",15.0,0.0,15.0,50 Ton Mobile Support Crane,315.0,315.0
100231875,CN.SEB21011,PH1- DS/AD DECKING & DETAILING - SEB2- GL 22-25 - L2,TK_Complete,2023-10-30 07:00,2023-10-30 15:00,2023-10-23 07:00,2023-10-27 11:00,580.0,0.0,580.0,0.0,W&W DS/AD Infill Steel - East - Team A,58.0,0.0,58.0,"200-300 Ton Crawler, 55 Ton Mobile Support Crane",638.0,638.0
100231876,CN.SEB21021,PH1- DS/AD FRP SLAB - SEB2- GL 22-25 - L3 - C-E,TK_Complete,2024-01-10 07:00,2024-01-13 11:00,2024-01-10 07:00,2024-01-12 11:00,695.0,0.0,695.0,0.0,"W&W DS/AD Infill Steel - East - Team A, CIP Concrete Slab on Metal Deck Crews",58.0,0.0,58.0,"200-300 Ton Crawler, 55 Ton Mobile Support Crane",753.0,753.0
100231910,CN.SEB2.6170,IMPACT - REWORK ADDED DBA's L4E SLAB - AD GL 22 - 24 DS/AD SEB-2 L4 & L4/E - C-E,TK_Complete,2024-01-22 07:00,2024-01-24 11:00,2024-01-10 07:00,2024-01-11 17:00,580.0,0.0,580.0,0.0,W&W DS/AD Infill Steel - East - Team B,58.0,0.0,58.0,"200-300 Ton Crawler, 55 Ton Mobile Support Crane",638.0,638.0
100231933,CN.A1.UG.1230,PH1- UNDERGROUND PLUMBING SEB3,TK_Complete,2022-10-13 13:00,2022-10-17 13:00,2022-10-13 13:00,2022-10-18 15:00,748.0,0.0,748.0,0.0,CIP Concrete SOG Crews,22.0,0.0,22.0,50-75 Ton Mobile Support Crane,770.0,770.0
100231937,CN.SEB3.1010,PH1-FRP GRADE BEAM - SEB3,TK_Complete,2022-10-25 07:00,2022-10-29 17:00,2022-10-25 07:00,2022-10-31 09:00,480.0,0.0,480.0,0.0,CIP Concrete SUP Pier Cap Crew,16.0,0.0,16.0,50-75 Ton Mobile Support Crane,496.0,496.0
100231940,CN.SEB3.1060,PH1- FRP SLAB - SEB-3-L2,TK_Complete,2023-09-08 09:00,2023-09-09 15:00,2023-09-08 09:00,2023-09-09 16:00,280.0,0.0,280.0,0.0,CIP Concrete Slab on Metal Deck Crews,10.0,0.0,10.0,50-75 Ton Mobile Support Crane,290.0,290.0
100231941,CN.SEB3.1080,PH1- FRP SLAB - SEB-3-L3,TK_Complete,2023-09-28 07:00,2023-09-29 13:00,2023-09-28 07:00,2023-09-29 13:00,280.0,0.0,280.0,0.0,CIP Concrete Slab on Metal Deck Crews,10.0,0.0,10.0,50-75 Ton Mobile Support Crane,290.0,290.0
100231942,CN.SEB3.1120,PH1- FRP SLAB - SEB-3-ROOF,TK_Complete,2023-10-03 07:00,2023-10-04 13:00,2023-09-20 07:00,2023-09-22 07:00,280.0,0.0,280.0,0.0,CIP Concrete Slab on Metal Deck Crews,10.0,0.0,10.0,50-75 Ton Mobile Support Crane,290.0,290.0
100231946,CN.SEB3.1090,PH1- 1st FLOOR SLAB - F9 - SEB-3-L1,TK_Complete,2023-02-20 15:00,2023-02-25 15:00,2023-02-20 15:00,2023-02-25 16:00,646.0,0.0,646.0,0.0,CIP Concrete SOG Crews,19.0,0.0,19.0,50-75 Ton Mobile Support Crane,665.0,665.0
100231947,CN.SEB3.1220,MEP EQPT PADS (LAYOUT & INSTALL DOWELS) - SEB3 - GL 25-28 - C-A - L4 ROOF,TK_Complete,2024-06-07 07:00,2024-06-10 17:00,2024-01-26 07:00,2024-01-27 17:00,1120.0,0.0,1120.0,0.0,CIP Concrete Topping Slab Crews,0.0,0.0,0.0,,1120.0,1120.0
100231948,CN.SEB3.1050,TIER 1 ERECT PRECAST COLUMNS & BEAMS - SEB3,TK_Complete,2023-05-04 07:00,2023-05-09 13:00,2023-05-04 07:00,2023-05-20 16:00,200.0,0.0,200.0,0.0,Precast Erect Crew SUP Col's/Bm's/Girders,25.0,0.0,25.0,LR-1400 400 Ton Crawler Crane,225.0,225.0
100231949,CN.SEB3.1140,PH1-ROOF LAYER PARAPET FRAMING & SHEATHING RIP - SEB3 - GL 25-28 - L4 - C-A,TK_Complete,2024-01-17 07:00,2024-01-20 09:00,2024-01-16 08:00,2024-01-20 11:00,64.0,0.0,64.0,0.0,Precast Erect Crew SUP Col's/Bm's/Girders,8.0,0.0,8.0,185 Ton Crawler Crane Unload/Handle Waffles,72.0,72.0
100231951,CN.SEB3.1170,PH1 - CLADDING STEEL INTERIOR GL 25-28 - D LINE (AD AREA),TK_Complete,2024-02-29 07:00,2024-03-06 13:00,2024-02-28 14:00,2024-03-11 00:00,300.0,0.0,300.0,0.0,"Cladding Steel, Insulated Metal Panel - Prefab Crews",15.0,0.0,15.0,50 Ton Mobile Support Crane,315.0,315.0
100231952,CN.SEB3.1190,INSTALL INSULATED METAL PANEL MODULES - GL 25-28 - C LINE (DS AREA),TK_Complete,2024-05-04 07:00,2024-05-11 17:00,2024-04-30 07:00,2024-05-16 17:00,300.0,0.0,300.0,0.0,"Cladding Steel, Insulated Metal Panel - Prefab Crews",15.0,0.0,15.0,50 Ton Mobile Support Crane,315.0,315.0
100231953,CN.SEB3.1150,PH1 - CLADDING STEEL  - SEB-3 A LINE [SUP EXTERIOR WALL],TK_Complete,2023-10-30 07:00,2023-11-08 09:00,2023-10-30 07:00,2023-11-08 13:00,330.0,0.0,330.0,0.0,"Insulated Metal Panels - Lower Areas, Insulated Metal Panel - Prefab Crews",15.0,0.0,15.0,50 Ton Mobile Support Crane,345.0,345.0
100231954,CN.SEB3.1180,INSTALL INSULATED METAL PANEL MODULES - GL 25-28 - A LINE [SUP EXTERIOR WALL],TK_Complete,2024-04-12 07:00,2024-04-26 17:00,2024-04-12 07:00,2024-05-18 17:00,330.0,0.0,330.0,0.0,"Insulated Metal Panels - Lower Areas, Insulated Metal Panel - Prefab Crews",15.0,0.0,15.0,50 Ton Mobile Support Crane,345.0,345.0
100231955,CN.SEB3.1110,PH1- AD STEEL FRAME INSTALL - SEB-3 fab side,TK_Complete,2023-09-22 09:00,2023-09-24 13:00,2023-09-15 09:00,2023-09-17 16:00,580.0,0.0,580.0,0.0,W&W DS/AD Infill Steel - East - Team B,58.0,0.0,58.0,"200-300 Ton Crawler, 55 Ton Mobile Support Crane",638.0,638.0
100231970,CN.SEB3.1310,PH1- TOPPING SLAB w TRENCH & ANGLE EMBEDS- SEB-3-L1,TK_Complete,2023-10-19 07:00,2023-10-21 11:00,2023-10-19 07:00,2023-10-21 12:00,80.0,0.0,80.0,0.0,CIP Concrete Topping Slab Crews,0.0,0.0,0.0,,80.0,80.0
100231971,CN.SEB3.1320,PH1- DS/AD DECKING & DETAILING GL 24 - 28 - DS/AD SEB-3 L6,TK_Complete,2023-10-30 07:00,2023-11-04 17:00,2023-10-30 07:00,2023-11-06 17:00,580.0,0.0,580.0,0.0,W&W DS/AD Infill Steel - East - Team B,58.0,0.0,58.0,"200-300 Ton Crawler, 55 Ton Mobile Support Crane",638.0,638.0
100231972,CN.SEB3.1330,PH1- DS/AD FRP SLAB - DS/AD - SEB3 - GL 25-28 - C-E -L4/E,TK_Complete,2023-12-22 15:00,2024-01-04 10:00,2023-12-17 15:00,2023-12-18 15:00,695.0,0.0,695.0,0.0,"W&W DS/AD Infill Steel - East - Team B, CIP Concrete Slab on Metal Deck Crews",58.0,0.0,58.0,"200-300 Ton Crawler, 55 Ton Mobile Support Crane",753.0,753.0
100231973,CN.SEB3.1340,AD WATERPROOFING - SEB3 - GL 25-28 - D-E - L4/E,TK_Complete,2024-07-15 07:00,2024-07-29 17:00,2024-07-08 07:00,2024-07-24 17:00,580.0,0.0,580.0,0.0,W&W DS/AD Infill Steel - East - Team B,58.0,0.0,58.0,"200-300 Ton Crawler, 55 Ton Mobile Support Crane",638.0,638.0
100231974,CN.SEB3.1350,AD TOPPING SLAB - SEB3 - GL 25-28 - D-E - L4/E,TK_Complete,2024-08-08 07:00,2024-08-13 17:00,2024-07-25 07:00,2024-07-29 17:00,580.0,0.0,580.0,0.0,W&W DS/AD Infill Steel - East - Team B,58.0,0.0,58.0,"200-300 Ton Crawler, 55 Ton Mobile Support Crane",638.0,638.0
100231975,TIER 2.1052,TIER 2 GROUT PRECAST COLUMNS & BEAMS - SEB3,TK_Complete,2023-08-04 07:00,2023-08-07 17:00,2023-07-28 07:00,2023-07-29 09:00,200.0,0.0,200.0,0.0,Precast Erect Crew SUP Col's/Bm's/Girders,25.0,0.0,25.0,LR-1400 400 Ton Crawler Crane,225.0,225.0
100231982,CN.SEB3.1420,PH1- DS/AD DECKING & DETAILING - DS/AD  - SEB3 - GL 24-28  - C-E - L4 & L4/E,TK_Complete,2023-12-11 07:00,2023-12-16 15:00,2023-12-11 07:00,2023-12-16 16:00,580.0,0.0,580.0,0.0,W&W DS/AD Infill Steel - East - Team B,58.0,0.0,58.0,"200-300 Ton Crawler, 55 Ton Mobile Support Crane",638.0,638.0
100231985,CN.SEB3.1440,PH1- DS STEEL FRAME INSTALL - SEB-3 Comeback Sup Side,TK_Complete,2023-09-29 09:00,2023-10-01 13:00,2023-09-20 07:00,2023-09-22 16:00,580.0,0.0,580.0,0.0,W&W DS/AD Infill Steel - East - Team B,58.0,0.0,58.0,"200-300 Ton Crawler, 55 Ton Mobile Support Crane",638.0,638.0
100231986,CN.SEB3.1450,PH1- EXTERIOR CURBS - SEB-3-L1,TK_Complete,2023-10-24 07:00,2023-10-29 15:00,2023-10-23 07:00,2023-10-28 16:00,80.0,0.0,80.0,0.0,CIP Concrete Topping Slab Crews,0.0,0.0,0.0,,80.0,80.0
100231987,CN.SEB3.1460,PH1- MEP PADS - SEB-3-L1- WAFER I/O,TK_Complete,2023-10-24 07:00,2023-10-30 15:00,2023-10-23 07:00,2023-10-28 16:00,80.0,0.0,80.0,0.0,CIP Concrete Topping Slab Crews,0.0,0.0,0.0,,80.0,80.0
100232005,CN.SEB3.1480,PH1 - CLADDING STEEL  EXTERIOR - SEB3 - GL 25-28 - C LINE (DS AREA),TK_Complete,2024-02-19 08:00,2024-02-29 10:00,2024-02-13 08:00,2024-02-20 12:00,300.0,0.0,300.0,0.0,"Cladding Steel, Insulated Metal Panel - Prefab Crews",15.0,0.0,15.0,50 Ton Mobile Support Crane,315.0,315.0
100232006,EMB1016,IMPACT - Missing 2 Precast Embeds ALONG 25 LINE Between - GL B25 and C25 - TR077 - SEQ 5307,TK_Complete,2023-09-26 13:00,2023-09-29 09:00,2023-10-10 13:00,2023-10-13 09:00,580.0,0.0,580.0,0.0,W&W DS/AD Infill Steel - East - Team B,58.0,0.0,58.0,"200-300 Ton Crawler, 55 Ton Mobile Support Crane",638.0,638.0
100232007,EMB3000,IMPACT - Missing Precast Embed A25 Level 4 (#3000),TK_Complete,2023-09-25 07:00,2023-09-26 13:00,2023-09-18 07:00,2023-09-19 13:00,580.0,0.0,580.0,0.0,W&W DS/AD Infill Steel - East - Team B,58.0,0.0,58.0,"200-300 Ton Crawler, 55 Ton Mobile Support Crane",638.0,638.0
100232008,CN.SEA5.3921,PH1- DS/AD DECKING &  24 - 28 - DS/AD SEB-3 L2,TK_Complete,2023-10-18 08:00,2023-10-29 13:00,2023-10-18 08:00,2023-10-28 11:00,580.0,0.0,580.0,0.0,W&W DS/AD Infill Steel - East - Team A,58.0,0.0,58.0,"200-300 Ton Crawler, 55 Ton Mobile Support Crane",638.0,638.0
100232009,CN.SEA5.3931,PH1- DS/AD FRP SLAB - SEB3 - GL 25-28 - C-E L3,TK_Complete,2023-12-07 15:00,2023-12-10 09:00,2023-12-07 15:00,2023-12-09 12:00,695.0,0.0,695.0,0.0,"W&W DS/AD Infill Steel - East - Team A, CIP Concrete Slab on Metal Deck Crews",58.0,0.0,58.0,"200-300 Ton Crawler, 55 Ton Mobile Support Crane",753.0,753.0
100232018,CN.SEB3.1500,PH1 -WELD CLIPS - CLADDING STEEL - SEB3 - GL 25-28 - C LINE (DS AREA),TK_Complete,2023-12-18 07:00,2023-12-19 09:00,2023-12-18 07:00,2023-12-19 09:00,300.0,0.0,300.0,0.0,"Cladding Steel, Insulated Metal Panel - Prefab Crews",15.0,0.0,15.0,50 Ton Mobile Support Crane,315.0,315.0
100232045,EMB6020,IMPACT - Missing Embeds - GL C29 - TF1-SMT-SH-2006 - TR069,TK_Complete,2023-11-13 07:00,2023-11-14 13:00,2023-11-13 07:00,2023-11-14 13:00,580.0,0.0,580.0,0.0,W&W DS/AD Infill Steel - East - Team B,58.0,0.0,58.0,"200-300 Ton Crawler, 55 Ton Mobile Support Crane",638.0,638.0
100232050,CN.SEB3.6190,IMPACT - BAKER DOWELS CIP - SEB3 - GL 25-28 - L4 - C-A - ROOF,TK_Complete,2024-02-05 15:00,2024-02-13 13:00,2024-01-19 15:00,2024-01-25 15:00,1120.0,0.0,1120.0,0.0,CIP Concrete Topping Slab Crews,0.0,0.0,0.0,,1120.0,1120.0
100232052,CN.SEB3.6200,DETAIL & INSPECT CLADDING STEEL - SEB-3 A LINE [SUP EXTERIOR WALL],TK_Complete,2024-03-01 15:00,2024-03-08 17:00,2024-03-01 15:00,2024-03-07 14:00,330.0,0.0,330.0,0.0,"Insulated Metal Panels - Lower Areas, Insulated Metal Panel - Prefab Crews",15.0,0.0,15.0,50 Ton Mobile Support Crane,345.0,345.0
100232053,CN.SEB3.6210,IMPACT - REWORK ADDED DBA's L4E AD POUR - DS/AD - SEB3 - GL 24-28 - C-E - L4 & L4/E,TK_Complete,2024-02-19 07:00,2024-02-21 11:00,2024-01-22 07:00,2024-01-30 17:00,580.0,0.0,580.0,0.0,W&W DS/AD Infill Steel - East - Team B,58.0,0.0,58.0,"200-300 Ton Crawler, 55 Ton Mobile Support Crane",638.0,638.0
100232056,CN.SEB3.6220,INSTALL INSULATED METAL PANEL MODULES - GL 26-28 - E LINE (AD AREA),TK_Complete,2024-07-25 07:00,2024-07-26 17:00,2024-06-11 07:00,2024-06-13 17:00,580.0,0.0,580.0,0.0,W&W DS/AD Infill Steel - East - Team B,58.0,0.0,58.0,"200-300 Ton Crawler, 55 Ton Mobile Support Crane",638.0,638.0
100232058,CN.SEB3.6230,Drywall Clips & AMTS Installs Support Beams - SEB3 - GL 25-28 - D LINE - L4E,TK_Complete,2024-03-23 08:00,2024-03-30 10:00,2024-03-11 00:00,2024-03-21 00:00,580.0,0.0,580.0,0.0,W&W DS/AD Infill Steel - East - Team B,58.0,0.0,58.0,"200-300 Ton Crawler, 55 Ton Mobile Support Crane",638.0,638.0
100232059,CN.SEB3.6240,DS STEEL SPRAY SFRM - SEB3 - GL 25-28 - C-D - L3 CEILING,TK_Complete,2024-05-23 07:00,2024-05-30 17:00,2024-05-23 07:00,2024-07-01 15:00,580.0,0.0,580.0,0.0,W&W DS/AD Infill Steel - East - Team B,58.0,0.0,58.0,"200-300 Ton Crawler, 55 Ton Mobile Support Crane",638.0,638.0
100232060,CN.SEB3.6250,AD STEEL APPLY INTUMESCENT - SEB3 - GL 25-28 - D-E - L3 CEILING,TK_Complete,2024-06-14 07:00,2024-06-20 17:00,2024-06-14 07:00,2024-06-18 17:00,580.0,0.0,580.0,0.0,W&W DS/AD Infill Steel - East - Team B,58.0,0.0,58.0,"200-300 Ton Crawler, 55 Ton Mobile Support Crane",638.0,638.0
100232080,CN.SEB3.6770,IMPACT - INSPECT & SURFACE PREP ADDITIONAL AD STEEL FOR INTUMESCENT - SEB3 - GL 25-28 - D-E - L3 CEILING,TK_Complete,2024-05-14 07:00,2024-05-28 17:00,2024-05-14 07:00,2024-05-23 17:00,580.0,0.0,580.0,0.0,W&W DS/AD Infill Steel - East - Team B,58.0,0.0,58.0,"200-300 Ton Crawler, 55 Ton Mobile Support Crane",638.0,638.0
100232081,CN.SEB3.6780,INSTALL FRAMING FOR IMP - GL 25-28 - E LINE (AD AREA),TK_Complete,2024-05-06 07:00,2024-05-07 17:00,2024-05-06 07:00,2024-05-14 17:00,580.0,0.0,580.0,0.0,W&W DS/AD Infill Steel - East - Team B,58.0,0.0,58.0,"200-300 Ton Crawler, 55 Ton Mobile Support Crane",638.0,638.0
100232082,CN.SEB3.6790,IMPACT - SECAI MEP AND IRON WORK INTERFERANCE [F56] [F58] - SEB3 - GL 25-28 - C-D - L3 CEILING,TK_Complete,2024-05-16 07:00,2024-05-21 17:00,2024-05-07 07:00,2024-05-21 17:00,580.0,0.0,580.0,0.0,W&W DS/AD Infill Steel - East - Team B,58.0,0.0,58.0,"200-300 Ton Crawler, 55 Ton Mobile Support Crane",638.0,638.0
100232100,CN.A1.UG.1250,PH1- UNDERGROUND PLUMBING SEB4,TK_Complete,2022-11-03 07:00,2022-11-06 17:00,2022-11-03 07:00,2022-11-08 09:00,748.0,0.0,748.0,0.0,CIP Concrete SOG Crews,22.0,0.0,22.0,50-75 Ton Mobile Support Crane,770.0,770.0
100232103,CN.SEB4.1010,PH1-FRP GRADE BEAM - SEB4,TK_Complete,2022-11-11 09:00,2022-11-15 09:00,2022-11-11 09:00,2022-11-17 11:00,480.0,0.0,480.0,0.0,CIP Concrete SUP Pier Cap Crew,16.0,0.0,16.0,50-75 Ton Mobile Support Crane,496.0,496.0
100232106,CN.SEB4.1060,PH1- FRP SLAB - SEB-4-L2,TK_Complete,2023-09-11 15:00,2023-09-14 11:00,2023-09-11 15:00,2023-09-14 11:00,280.0,0.0,280.0,0.0,CIP Concrete Slab on Metal Deck Crews,10.0,0.0,10.0,50-75 Ton Mobile Support Crane,290.0,290.0
100232107,CN.SEB4.1080,PH1- FRP SLAB - SEB-4-L3,TK_Complete,2023-09-25 07:00,2023-09-26 13:00,2023-09-19 07:00,2023-09-21 13:00,280.0,0.0,280.0,0.0,CIP Concrete Slab on Metal Deck Crews,10.0,0.0,10.0,50-75 Ton Mobile Support Crane,290.0,290.0
100232108,CN.SEB4.1110,PH1- FRP SLAB - SEB-4-ROOF,TK_Complete,2023-10-03 07:00,2023-10-05 11:00,2023-09-14 07:00,2023-09-18 17:00,280.0,0.0,280.0,0.0,CIP Concrete Slab on Metal Deck Crews,10.0,0.0,10.0,50-75 Ton Mobile Support Crane,290.0,290.0
100232112,CN.SEB4.1090,PH1- 1st FLOOR SLAB - SEB-4-L1,TK_Complete,2023-02-27 07:00,2023-03-03 17:00,2023-02-20 07:00,2023-02-23 07:00,646.0,0.0,646.0,0.0,CIP Concrete SOG Crews,19.0,0.0,19.0,50-75 Ton Mobile Support Crane,665.0,665.0
100232113,CN.SEB4.1050,TIER 1 ERECT PRECAST COLUMNS & BEAMS - SEB4,TK_Complete,2023-05-26 11:00,2023-06-03 17:00,2023-05-26 11:00,2023-06-26 15:00,192.0,0.0,192.0,0.0,Precast Erect Crew SUP Col's/Bm's/Girders,24.0,0.0,24.0,LR-1400 400 Ton Crawler Crane,216.0,216.0
100232114,CN.SEB4.1140,PH1-ROOF LAYER PARAPET(FRAMING & SHEATHING RIP) - SEB4 - GL 28-31 - L4 - C-A- SUP ROOF,TK_Complete,2023-11-12 08:00,2023-11-13 14:00,2023-11-12 08:00,2023-11-13 15:00,64.0,0.0,64.0,0.0,Precast Erect Crew SUP Col's/Bm's/Girders,8.0,0.0,8.0,185 Ton Crawler Crane Unload/Handle Waffles,72.0,72.0
100232116,CN.SEB4.1170,PH1 - CLADDING STEEL INTERIOR GL 28-31 - D LINE (AD AREA),TK_Complete,2024-02-26 07:00,2024-03-01 17:00,2024-02-26 07:00,2024-03-14 00:00,300.0,0.0,300.0,0.0,"Cladding Steel, Insulated Metal Panel - Prefab Crews",15.0,0.0,15.0,50 Ton Mobile Support Crane,315.0,315.0
100232117,CN.SEB4.1200,INSTALL INSULATED METAL PANEL MODULES - GL 28-31 - C LINE (DS AREA),TK_Complete,2024-05-24 07:00,2024-05-28 17:00,2024-05-23 07:00,2024-05-30 17:00,300.0,0.0,300.0,0.0,"Cladding Steel, Insulated Metal Panel - Prefab Crews",15.0,0.0,15.0,50 Ton Mobile Support Crane,315.0,315.0
100232118,CN.SEB4.1150,PH1 - CLADDING STEEL  - SEB-4 A LINE [SUP EXTERIOR WALL] UPTO L3,TK_Complete,2023-10-30 09:00,2023-11-06 15:00,2023-10-23 09:00,2023-10-28 15:00,330.0,0.0,330.0,0.0,"Insulated Metal Panels - Lower Areas, Insulated Metal Panel - Prefab Crews",15.0,0.0,15.0,50 Ton Mobile Support Crane,345.0,345.0
100232119,CN.SEB4.1180,INSTALL INSULATED METAL PANEL MODULES - GL 28-31 - A LINE [SUP EXTERIOR WALL],TK_Complete,2024-05-24 07:00,2024-06-02 17:00,2024-05-20 07:00,2024-05-29 17:00,330.0,0.0,330.0,0.0,"Insulated Metal Panels - Lower Areas, Insulated Metal Panel - Prefab Crews",15.0,0.0,15.0,50 Ton Mobile Support Crane,345.0,345.0
100232120,CN.SEB4.1120,PH1- AD STEEL FRAME INSTALL - SEB-4 fab side,TK_Complete,2023-09-05 07:00,2023-09-08 17:00,2023-09-05 07:00,2023-09-08 17:00,580.0,0.0,580.0,0.0,W&W DS/AD Infill Steel - East - Team B,58.0,0.0,58.0,"200-300 Ton Crawler, 55 Ton Mobile Support Crane",638.0,638.0
100232125,CN.SEB4.1240,DS STEEL SPRAY FIREPROOFING SFRM - SEB4 - GL 28-31 - D LINE,TK_Complete,2024-05-31 07:00,2024-06-04 17:00,2024-05-31 07:00,2024-06-04 17:00,80.0,0.0,80.0,0.0,CIP Concrete Topping Slab Crews,0.0,0.0,0.0,,80.0,80.0
100232130,CN.SEB4.1340,PH1- TOPPING SLAB w TRENCH & ANGLE EMBEDS- SEB-4-L1,TK_Complete,2023-10-03 07:00,2023-10-05 11:00,2023-10-03 07:00,2023-10-06 11:00,80.0,0.0,80.0,0.0,CIP Concrete Topping Slab Crews,0.0,0.0,0.0,,80.0,80.0
100232131,CN.SEB4.1350,PH1- DS/AD DECKING & DETAILING GL 27 - 30 SEB-4 L6,TK_Complete,2023-10-22 13:00,2023-10-28 13:00,2023-10-22 13:00,2023-11-02 13:00,580.0,0.0,580.0,0.0,W&W DS/AD Infill Steel - East - Team B,58.0,0.0,58.0,"200-300 Ton Crawler, 55 Ton Mobile Support Crane",638.0,638.0
100232132,CN.SEB4.1360,PH1- DS/AD FRP SLAB - DS/AD - SEB4 - GL 28-31 - C-E - L4/E,TK_Complete,2023-12-17 15:00,2023-12-21 15:00,2023-12-17 15:00,2023-12-18 16:00,695.0,0.0,695.0,0.0,"W&W DS/AD Infill Steel - East - Team B, CIP Concrete Slab on Metal Deck Crews",58.0,0.0,58.0,"200-300 Ton Crawler, 55 Ton Mobile Support Crane",753.0,753.0
100232133,CN.SEB4.1370,AD WATERPROOFING - SEB4 - GL 28-31 - D-E - L4/E,TK_Complete,2024-07-15 07:00,2024-07-29 17:00,2024-07-08 07:00,2024-07-22 17:00,580.0,0.0,580.0,0.0,W&W DS/AD Infill Steel - East - Team B,58.0,0.0,58.0,"200-300 Ton Crawler, 55 Ton Mobile Support Crane",638.0,638.0
100232134,CN.SEB4.1380,AD TOPPING SLAB - SEB4 - GL 28-31 - D-E - L4/E,TK_Complete,2024-08-08 07:00,2024-08-13 17:00,2024-07-23 07:00,2024-07-25 17:00,580.0,0.0,580.0,0.0,W&W DS/AD Infill Steel - East - Team B,58.0,0.0,58.0,"200-300 Ton Crawler, 55 Ton Mobile Support Crane",638.0,638.0
100232135,TIER 24.1052,TIER 2 GROUT PRECAST COLUMNS & BEAMS - SEB4,TK_Complete,2023-08-10 09:00,2023-08-14 09:00,2023-07-30 09:00,2023-07-31 11:00,192.0,0.0,192.0,0.0,Precast Erect Crew SUP Col's/Bm's/Girders,24.0,0.0,24.0,LR-1400 400 Ton Crawler Crane,216.0,216.0
100232142,CN.SEB4.1450,PH1- DS/AD DETAILING & DECKING  - SEB4 - GL 27-30 - C-E - DS/AD L4 & L4/E,TK_Complete,2023-12-11 07:00,2023-12-16 15:00,2023-12-11 07:00,2023-12-16 16:00,580.0,0.0,580.0,0.0,W&W DS/AD Infill Steel - East - Team B,58.0,0.0,58.0,"200-300 Ton Crawler, 55 Ton Mobile Support Crane",638.0,638.0
100232145,CN.SEB4.1470,PH1- DS STEEL FRAME INSTALL - SEB-4 Comeback Sup Side,TK_Complete,2023-09-19 13:00,2023-09-23 15:00,2023-09-11 13:00,2023-09-15 16:00,580.0,0.0,580.0,0.0,W&W DS/AD Infill Steel - East - Team B,58.0,0.0,58.0,"200-300 Ton Crawler, 55 Ton Mobile Support Crane",638.0,638.0
100232146,CN.SEB4.1480,PH1- EXTERIOR CURBS - SEB-4-L1,TK_Complete,2023-09-26 07:00,2023-10-01 15:00,2023-09-26 07:00,2023-10-02 17:00,80.0,0.0,80.0,0.0,CIP Concrete Topping Slab Crews,0.0,0.0,0.0,,80.0,80.0
100232147,CN.SEB4.1490,PH1- MEP PADS - SEB-4-L1 - PR RM,TK_Complete,2023-10-30 07:00,2023-11-05 15:00,2023-10-08 08:00,2023-10-11 17:00,80.0,0.0,80.0,0.0,CIP Concrete Topping Slab Crews,0.0,0.0,0.0,,80.0,80.0
100232166,CN.SEB4.4690,PH1 - CLADDING STEEL  EXTERIOR - SEB4 - GL 28-31 - C LINE  (DS AREA) (27~30),TK_Complete,2024-02-20 08:00,2024-02-29 10:00,2024-02-16 08:00,2024-02-25 14:00,300.0,0.0,300.0,0.0,"Cladding Steel, Insulated Metal Panel - Prefab Crews",15.0,0.0,15.0,50 Ton Mobile Support Crane,315.0,315.0
100232167,EMB1005,IMPACT - Missing Precast Embeds GL C-29 East Face Level 2P TR083 SEQ 5401,TK_Complete,2023-10-30 07:00,2023-11-02 13:00,2023-09-13 07:00,2023-09-16 13:00,580.0,0.0,580.0,0.0,W&W DS/AD Infill Steel - East - Team B,58.0,0.0,58.0,"200-300 Ton Crawler, 55 Ton Mobile Support Crane",638.0,638.0
100232168,EMB6000,IMPACT - Missing Precast Embeds B-29 East Face and West Face Level 2P SEQ 5401,TK_Complete,2023-09-16 08:00,2023-09-17 14:00,2023-09-09 08:00,2023-09-10 16:00,580.0,0.0,580.0,0.0,W&W DS/AD Infill Steel - East - Team B,58.0,0.0,58.0,"200-300 Ton Crawler, 55 Ton Mobile Support Crane",638.0,638.0
100232169,CN.SEB4.4700,PH1- DS/AD DECKING GL 27 - 30 DS/AD SEB-4 L2,TK_Complete,2023-10-16 07:00,2023-10-22 11:00,2023-10-16 07:00,2023-10-22 09:00,580.0,0.0,580.0,0.0,W&W DS/AD Infill Steel - East - Team B,58.0,0.0,58.0,"200-300 Ton Crawler, 55 Ton Mobile Support Crane",638.0,638.0
100232170,CN.SEB4.4710,PH1- DS/AD FRP SLAB - SEB-4 L2,TK_Complete,2023-11-06 09:00,2023-11-10 09:00,2023-10-27 09:00,2023-10-28 09:00,695.0,0.0,695.0,0.0,"W&W DS/AD Infill Steel - East - Team B, CIP Concrete Slab on Metal Deck Crews",58.0,0.0,58.0,"200-300 Ton Crawler, 55 Ton Mobile Support Crane",753.0,753.0
100232171,CN.SEB4.4720,DS/AD STEEL SPRAY FIREPROOFING SFRM - SEB4 - GL 28-31 - C-E L1 CEILING,TK_Complete,2023-11-13 07:00,2023-11-18 15:00,2023-11-13 07:00,2023-11-17 11:00,80.0,0.0,80.0,0.0,CIP Concrete Topping Slab Crews,0.0,0.0,0.0,,80.0,80.0
100232181,CN.SEB4.4730,PH1 -WELD CLIPS - CLADDING STEEL - SEB4 - GL 28-31 - C LINE (DS AREA),TK_Complete,2023-10-19 07:00,2023-10-20 09:00,2023-10-19 07:00,2023-10-20 09:00,300.0,0.0,300.0,0.0,"Cladding Steel, Insulated Metal Panel - Prefab Crews",15.0,0.0,15.0,50 Ton Mobile Support Crane,315.0,315.0
100232218,EMB6110,IMPACT [S.TIA-16] - NOTIFY SECAI OF MISSING EMBEDS - C-29 SEQ 4701 - L3A,TK_Complete,2023-10-30 07:00,2023-11-02 13:00,2023-09-16 07:00,2023-09-18 17:00,580.0,0.0,580.0,0.0,W&W DS/AD Infill Steel - East - Team B,58.0,0.0,58.0,"200-300 Ton Crawler, 55 Ton Mobile Support Crane",638.0,638.0
100232219,CN.SEB4.6320,IMPACT - REWORK ADDED DBA's - FRP SLAB - DS/AD - SEB4 - GL 28-31 - C-E - L4/E,TK_Complete,2024-01-23 13:00,2024-01-25 17:00,2023-12-16 13:00,2024-01-21 17:00,695.0,0.0,695.0,0.0,"W&W DS/AD Infill Steel - East - Team B, CIP Concrete Slab on Metal Deck Crews",58.0,0.0,58.0,"200-300 Ton Crawler, 55 Ton Mobile Support Crane",753.0,753.0
100232226,CN.SEB4.6490,DS SPRAY FIREPROOFING SFRM C-D (READY MEP DUCT) - SEB4 - GL 28-31 - D LINE L4&L5 CEILING,TK_Complete,2024-02-24 08:00,2024-02-27 10:00,2024-02-24 08:00,2024-02-28 09:00,80.0,0.0,80.0,0.0,CIP Concrete Topping Slab Crews,0.0,0.0,0.0,,80.0,80.0
100232227,CN.SEB4.6510,IMPACT [ES18] - RE-INSTALL CLADDING STEEL GL28-29 - SEB-4 A LINE [SUP EXTERIOR WALL] UPTO L3,TK_Complete,2024-03-09 08:00,2024-03-11 12:00,2024-03-09 08:00,2024-03-15 15:00,330.0,0.0,330.0,0.0,"Insulated Metal Panels - Lower Areas, Insulated Metal Panel - Prefab Crews",15.0,0.0,15.0,50 Ton Mobile Support Crane,345.0,345.0
100232272,CN.A1.UG.1270,PH1- UNDERGROUND PLUMBING SEB5,TK_Complete,2022-11-29 15:00,2022-12-03 15:00,2022-11-29 15:00,2022-12-03 16:00,748.0,0.0,748.0,0.0,CIP Concrete SOG Crews,22.0,0.0,22.0,50-75 Ton Mobile Support Crane,770.0,770.0
100232275,CN.SEB5.1010,PH1-FRP GRADE BEAM - SEB5,TK_Complete,2022-12-06 07:00,2022-12-10 17:00,2022-12-06 07:00,2022-12-12 09:00,510.0,0.0,510.0,0.0,CIP Concrete SUP Pier Cap Crew,17.0,0.0,17.0,50-75 Ton Mobile Support Crane,527.0,527.0
100232278,CN.SEB5.1060,PH1- FRP SLAB - SEB-5-L2,TK_Complete,2023-10-16 07:00,2023-10-17 13:00,2023-10-16 07:00,2023-10-19 13:00,280.0,0.0,280.0,0.0,CIP Concrete Slab on Metal Deck Crews,10.0,0.0,10.0,50-75 Ton Mobile Support Crane,290.0,290.0
100232279,CN.SEB5.1080,PH1- FRP - SEA5 - GL 31-33 - L3 - C-A,TK_Complete,2023-12-11 08:00,2023-12-12 14:00,2023-12-11 08:00,2023-12-12 14:00,280.0,0.0,280.0,0.0,CIP Concrete Slab on Metal Deck Crews,10.0,0.0,10.0,50-75 Ton Mobile Support Crane,290.0,290.0
100232280,CN.SEB5.1110,PH1- FRP SLAB - SEB-5-ROOF,TK_Complete,2023-10-06 09:00,2023-10-07 15:00,2023-09-21 09:00,2023-09-22 17:00,280.0,0.0,280.0,0.0,CIP Concrete Slab on Metal Deck Crews,10.0,0.0,10.0,50-75 Ton Mobile Support Crane,290.0,290.0
100232284,CN.SEB5.1090,PH1- 1st FLOOR SLAB - SEB-5-L1,TK_Complete,2023-03-04 08:00,2023-03-08 08:00,2023-02-15 08:00,2023-02-17 17:00,646.0,0.0,646.0,0.0,CIP Concrete SOG Crews,19.0,0.0,19.0,50-75 Ton Mobile Support Crane,665.0,665.0
100232285,CN.SEB5.1050,TIER 1 ERECT PRECAST COLUMNS & BEAMS - SEB5,TK_Complete,2023-06-20 13:00,2023-06-27 09:00,2023-06-20 13:00,2023-06-29 11:00,200.0,0.0,200.0,0.0,Precast Erect Crew SUP Col's/Bm's/Girders,25.0,0.0,25.0,LR-1400 400 Ton Crawler Crane,225.0,225.0
100232286,CN.SEB5.1180,PH1 - CLADDING STEEL INTERIOR GL 31-33 - D LINE (AD AREA),TK_Complete,2024-03-18 07:00,2024-03-25 13:00,2024-03-18 07:00,2024-03-22 00:00,300.0,0.0,300.0,0.0,"Cladding Steel, Insulated Metal Panel - Prefab Crews",15.0,0.0,15.0,50 Ton Mobile Support Crane,315.0,315.0
100232287,CN.SEB5.1150,PH1 - CLADDING STEEL  - SEA-5 A LINE [SUP EXTERIOR WALL],TK_Complete,2023-10-27 11:00,2023-11-03 17:00,2023-10-23 11:00,2023-10-28 17:00,330.0,0.0,330.0,0.0,"Insulated Metal Panels - Lower Areas, Insulated Metal Panel - Prefab Crews",15.0,0.0,15.0,50 Ton Mobile Support Crane,345.0,345.0
100232288,CN.SEB5.1170,INSTALL INSULATED METAL PANEL MODULES - GL 31-32 - A LINE [SUP EXTERIOR WALL] (32~33 PENDING CONNECTION ISSUE),TK_Complete,2024-06-07 07:00,2024-06-16 17:00,2024-05-30 07:00,2024-06-05 17:00,330.0,0.0,330.0,0.0,"Insulated Metal Panels - Lower Areas, Insulated Metal Panel - Prefab Crews",15.0,0.0,15.0,50 Ton Mobile Support Crane,345.0,345.0
100232289,CN.SEB5.1120,PH1- AD STEEL FRAME INSTALL - SEB-5 fab side,TK_Complete,2023-08-21 07:00,2023-08-26 15:00,2023-08-17 15:00,2023-08-24 11:00,580.0,0.0,580.0,0.0,W&W DS/AD Infill Steel - East - Team B,58.0,0.0,58.0,"200-300 Ton Crawler, 55 Ton Mobile Support Crane",638.0,638.0
100232296,CN.SEB5.1251,DS/AD STEEL SPRAY FIREPROOFING SFRM - SEB5 - GL 31-33 - D LINE - L4/E,TK_Complete,2024-06-27 07:00,2024-07-01 17:00,2024-06-27 07:00,2024-07-01 17:00,80.0,0.0,80.0,0.0,CIP Concrete Topping Slab Crews,0.0,0.0,0.0,,80.0,80.0
100232302,CN.SEB5.1320,PH1 - TOPPING SLAB w TRENCH & ANGLE EMBEDS- SEB-5-L1,TK_Complete,2023-10-14 08:00,2023-10-16 12:00,2023-10-05 08:00,2023-10-06 08:00,80.0,0.0,80.0,0.0,CIP Concrete Topping Slab Crews,0.0,0.0,0.0,,80.0,80.0
100232303,CN.SEB5.1330,PH1- DS/AD DECKING & DETAILING GL 30 - 33 DS/AD SEB-5 - L6,TK_Complete,2023-10-22 08:00,2023-10-28 16:00,2023-10-22 08:00,2023-11-01 17:00,580.0,0.0,580.0,0.0,W&W DS/AD Infill Steel - East - Team B,58.0,0.0,58.0,"200-300 Ton Crawler, 55 Ton Mobile Support Crane",638.0,638.0
100232304,CN.SEB5.1340,PH1- DS/AD FRP SLAB - DS/AD - SEA5 - GL 31-33 - C-E -L4/E,TK_Complete,2023-12-16 15:00,2023-12-20 15:00,2023-12-16 15:00,2023-12-18 08:00,695.0,0.0,695.0,0.0,"W&W DS/AD Infill Steel - East - Team B, CIP Concrete Slab on Metal Deck Crews",58.0,0.0,58.0,"200-300 Ton Crawler, 55 Ton Mobile Support Crane",753.0,753.0
100232305,CN.SEB5.1350,AD WATERPROOFING - SEB5 - GL 31-33 - D-E - L4/E [LEAVEOUT 32.5~33 - PENDING DESIGN],TK_Complete,2024-07-15 07:00,2024-07-29 17:00,2024-07-08 07:00,2024-07-22 17:00,580.0,0.0,580.0,0.0,W&W DS/AD Infill Steel - East - Team B,58.0,0.0,58.0,"200-300 Ton Crawler, 55 Ton Mobile Support Crane",638.0,638.0
100232306,CN.SEB5.1360,AD TOPPING SLAB - SEB5 - GL 31-33 - D-E - L4/E [LEAVEOUT 32.5~33 - PENDING DESIGN],TK_Complete,2024-08-08 07:00,2024-08-13 17:00,2024-07-23 07:00,2024-07-25 17:00,580.0,0.0,580.0,0.0,W&W DS/AD Infill Steel - East - Team B,58.0,0.0,58.0,"200-300 Ton Crawler, 55 Ton Mobile Support Crane",638.0,638.0
100232307,TIER 25.1051,TIER 2 GROUT PRECAST COLUMNS & BEAMS - SEB5,TK_Complete,2023-08-15 11:00,2023-08-19 11:00,2023-08-01 11:00,2023-08-02 12:00,200.0,0.0,200.0,0.0,Precast Erect Crew SUP Col's/Bm's/Girders,25.0,0.0,25.0,LR-1400 400 Ton Crawler Crane,225.0,225.0
100232314,CN.SEB5.1430,PH1- DS/AD DECKING & DETAILING - SEA5 - GL 31-33 - C-E DS/AD L4 &L4/E,TK_Complete,2023-12-11 07:00,2023-12-16 15:00,2023-12-11 07:00,2023-12-16 16:00,580.0,0.0,580.0,0.0,W&W DS/AD Infill Steel - East - Team B,58.0,0.0,58.0,"200-300 Ton Crawler, 55 Ton Mobile Support Crane",638.0,638.0
100232317,CN.SWB5.1510,PH1- ERECT STEEL - SE PENTHOUSE - MCC ROOF ROOF,TK_Complete,2023-12-28 07:00,2024-01-12 13:00,2023-12-28 07:00,2024-01-21 14:00,580.0,0.0,580.0,0.0,W&W DS/AD Infill Steel - West - Team B,58.0,0.0,58.0,"200-300 Ton Crawler, 55 Ton Mobile Support Crane",638.0,638.0
100232318,CN.SWB5.1650,PH1- INSTALL DECKING & STUDS - SE PENTHOUSE - MCC ROOF ROOF,TK_Complete,2024-02-12 07:00,2024-02-16 15:00,2024-02-12 07:00,2024-02-16 15:00,580.0,0.0,580.0,0.0,W&W DS/AD Infill Steel - West - Team B,58.0,0.0,58.0,"200-300 Ton Crawler, 55 Ton Mobile Support Crane",638.0,638.0
100232319,CN.SWB5.1660,PH1- FRP SLAB ON DECK - SE PENTHOUSE - MCC ROOF ROOF,TK_Complete,2024-02-17 08:00,2024-02-19 12:00,2024-02-17 08:00,2024-02-18 15:00,580.0,0.0,580.0,0.0,W&W DS/AD Infill Steel - West - Team B,58.0,0.0,58.0,"200-300 Ton Crawler, 55 Ton Mobile Support Crane",638.0,638.0
100232320,CN.SWB5.1670,INSTALL FIRESTOP - EDGE OF SLAB & PARAPET - SE PENTHOUSE - MCC ROOF,TK_Complete,2025-11-05 07:00,2025-11-05 17:00,2025-10-09 07:00,2025-10-09 17:00,580.0,0.0,0.0,0.0,W&W DS/AD Infill Steel - West - Team B,58.0,0.0,0.0,"200-300 Ton Crawler, 55 Ton Mobile Support Crane",638.0,0.0
100232321,CN.SWB5.1680,PH1- INSTALL WATERPROOFING - SE PENTHOUSE MCC ROOF,TK_Complete,2025-11-06 07:00,2025-11-06 17:00,2025-10-09 07:00,2025-10-09 17:00,580.0,0.0,0.0,0.0,W&W DS/AD Infill Steel - West - Team B,58.0,0.0,0.0,"200-300 Ton Crawler, 55 Ton Mobile Support Crane",638.0,0.0
100232322,CN.SWB5.1690,PH1- INSTALL ROOFING - SE PENTHOUSE - MCC ROOF ROOF,TK_Complete,2025-11-07 07:00,2025-11-10 17:00,2025-10-09 07:00,2025-10-09 17:00,580.0,0.0,0.0,0.0,W&W DS/AD Infill Steel - West - Team B,58.0,0.0,0.0,"200-300 Ton Crawler, 55 Ton Mobile Support Crane",638.0,0.0
100232323,CN.SWB5.1700,IMPACT [S.TIA-17 / E.TIA-8] - FRP SLAB LEAVEOUT - SE PENTHOUSE - GL 3-3.2 - L4/C,TK_Complete,2024-05-13 07:00,2024-05-14 17:00,2024-04-12 07:00,2024-04-17 17:00,580.0,0.0,580.0,0.0,W&W DS/AD Infill Steel - West - Team B,58.0,0.0,58.0,"200-300 Ton Crawler, 55 Ton Mobile Support Crane",638.0,638.0
100232324,CN.SWB5.1710,PH1- INSTALL HSS CLADDING STEEL - SE PENTHOUSE - MCC ROOF ROOF,TK_Complete,2024-04-15 07:00,2024-05-02 11:00,2024-03-08 00:00,2024-03-29 00:00,580.0,0.0,580.0,0.0,W&W DS/AD Infill Steel - West - Team B,58.0,0.0,58.0,"200-300 Ton Crawler, 55 Ton Mobile Support Crane",638.0,638.0
100232325,CN.SWB5.1720,IMPACT - SECAI DEMO TEMP DOOR FRAMES - RE-INSTALL DOOR FRAMES & DOORS - MCC/ IO ROOM - SE PENTHOUSE,TK_Active,2024-10-10 07:00,2024-10-11 17:00,2024-09-26 07:00,,580.0,580.0,0.0,0.0,W&W DS/AD Infill Steel - West - Team B,58.0,58.0,0.0,"200-300 Ton Crawler, 55 Ton Mobile Support Crane",638.0,0.0
100232326,CN.SWB5.1730,PH1- INSTALL INSULATED METAL PANELS - SE PENTHOUSE - SOUTH - GL 3/2.6 - A-D,TK_Complete,2024-08-27 07:00,2024-09-01 17:00,2024-08-16 07:00,2024-08-22 17:00,580.0,0.0,580.0,0.0,W&W DS/AD Infill Steel - West - Team B,58.0,0.0,58.0,"200-300 Ton Crawler, 55 Ton Mobile Support Crane",638.0,638.0
100232327,CN.SWB5.1740,PH1- INSTALL EXTERIOR DOORS / LOUVERS - SE PENTHOUSE - MCC ROOF ROOF,TK_NotStart,2025-11-24 07:00,2025-11-26 17:00,,,580.0,580.0,0.0,0.0,W&W DS/AD Infill Steel - West - Team B,58.0,58.0,0.0,"200-300 Ton Crawler, 55 Ton Mobile Support Crane",638.0,0.0
100232328,CN.SWB5.1750,PH1- INSTALL EXTERIOR STEEL ACCESS STAIRS / RAMPS - SE PENTHOUSE - STAIR 69/70/71/78,TK_NotStart,2025-11-24 07:00,2025-11-26 17:00,,,580.0,580.0,0.0,0.0,W&W DS/AD Infill Steel - West - Team B,58.0,58.0,0.0,"200-300 Ton Crawler, 55 Ton Mobile Support Crane",638.0,0.0
100232329,CN.SWB5.1760,INSTALL INTERIOR METAL STUD FRAMING - SE PENTHOUSE - GL 3-5 C-D,TK_Complete,2024-06-03 07:00,2024-06-10 17:00,2024-05-28 07:00,2024-06-03 17:00,580.0,0.0,580.0,0.0,W&W DS/AD Infill Steel - West - Team B,58.0,0.0,58.0,"200-300 Ton Crawler, 55 Ton Mobile Support Crane",638.0,638.0
100232330,CN.SWB5.1770,PH1- INSTALL INTERIOR DRYWALL - SE PENTHOUSE - GL 3-5 C-D,TK_Complete,2024-06-04 07:00,2024-06-10 17:00,2024-06-04 07:00,2024-07-31 17:00,580.0,0.0,580.0,0.0,W&W DS/AD Infill Steel - West - Team B,58.0,0.0,58.0,"200-300 Ton Crawler, 55 Ton Mobile Support Crane",638.0,638.0
100232331,CN.SWB5.2050,PH1- INSTALL DECKING - SE PENTHOUSE - MCC ROOF ROOF,TK_Complete,2024-02-12 07:00,2024-02-13 13:00,2024-02-12 07:00,2024-02-16 13:00,580.0,0.0,580.0,0.0,W&W DS/AD Infill Steel - West - Team B,58.0,0.0,58.0,"200-300 Ton Crawler, 55 Ton Mobile Support Crane",638.0,638.0
100232332,CN.AB1.ST.1540,PH1- FIRE PROOFING - SFRM INFILL STEEL - SEA5 - GL 31-33 - L3 - C-A,TK_Complete,2024-02-19 07:00,2024-02-23 17:00,2024-02-19 07:00,2024-02-23 17:00,320.0,0.0,320.0,0.0,"Precast Erect Crew FAB Waffles & Double-T's, Precast GROUTERS",40.0,0.0,40.0,"Precast Carry-Lift, 185 Ton Crawler Crane Unload/Handle Waffles",360.0,360.0
100232333,CN.SWB5.2110,PH1- FRP STRUCTURAL SLAB SOMD - SE PENTHOUSE - L4/G,TK_Complete,2024-04-15 07:00,2024-04-16 13:00,2024-04-12 07:00,2024-04-17 17:00,580.0,0.0,580.0,0.0,W&W DS/AD Infill Steel - West - Team B,58.0,0.0,58.0,"200-300 Ton Crawler, 55 Ton Mobile Support Crane",638.0,638.0
100232334,CN.SEB5.1450,PH1- DS STEEL FRAME INSTALL - SEB-5 Comeback Sup Side,TK_Complete,2023-08-31 11:00,2023-09-06 09:00,2023-08-24 11:00,2023-09-02 09:00,580.0,0.0,580.0,0.0,W&W DS/AD Infill Steel - East - Team B,58.0,0.0,58.0,"200-300 Ton Crawler, 55 Ton Mobile Support Crane",638.0,638.0
100232335,CN.SEB5.1460,PH1- EXTERIOR CURBS - SEB-5-L1,TK_Complete,2023-10-09 07:00,2023-10-12 17:00,2023-10-02 07:00,2023-10-05 17:00,80.0,0.0,80.0,0.0,CIP Concrete Topping Slab Crews,0.0,0.0,0.0,,80.0,80.0
100232336,CN.SEB5.1470,PH1- MEP PADS - SEA5 - GL 31-33 - L1 - C-A,TK_Complete,2023-11-20 07:00,2023-11-22 11:00,2023-11-20 07:00,2023-11-22 11:00,80.0,0.0,80.0,0.0,CIP Concrete Topping Slab Crews,0.0,0.0,0.0,,80.0,80.0
100232352,CN.SEB5.4680,PH1 - CLADDING STEEL  EXTERIOR - SEA5 - GL 31-33 - C LINE (DS AREA),TK_Complete,2024-03-07 07:00,2024-03-20 09:00,2024-03-07 07:00,2024-03-29 00:00,300.0,0.0,300.0,0.0,"Cladding Steel, Insulated Metal Panel - Prefab Crews",15.0,0.0,15.0,50 Ton Mobile Support Crane,315.0,315.0
100232362,CN.SEB5.4690,PH1 -WELD CLIPS - CLADDING STEEL - SEA5 - GL 31-33 - C LINE (DS AREA),TK_Complete,2023-10-11 07:00,2023-10-12 09:00,2023-10-11 07:00,2023-10-12 09:00,300.0,0.0,300.0,0.0,"Cladding Steel, Insulated Metal Panel - Prefab Crews",15.0,0.0,15.0,50 Ton Mobile Support Crane,315.0,315.0
100232364,CN.SEB5.4740,PH1- DS/AD DECKING & DETAILING GL 31-33 DS/AD SEB-5 L2,TK_Complete,2023-09-22 09:00,2023-09-29 13:00,2023-09-21 09:00,2023-10-18 11:00,580.0,0.0,580.0,0.0,W&W DS/AD Infill Steel - East - Team B,58.0,0.0,58.0,"200-300 Ton Crawler, 55 Ton Mobile Support Crane",638.0,638.0
100232365,CN.SEB5.4750,PH1- DS/AD FRP SLAB - SEB-5 GL 31 - 33 - L2,TK_Complete,2023-11-03 11:00,2023-11-08 09:00,2023-10-27 11:00,2023-10-28 13:00,695.0,0.0,695.0,0.0,"W&W DS/AD Infill Steel - East - Team B, CIP Concrete Slab on Metal Deck Crews",58.0,0.0,58.0,"200-300 Ton Crawler, 55 Ton Mobile Support Crane",753.0,753.0
100232366,CN.SEB5.4760,DS/AD STEEL SPRAY FIREPROOFING SFRM - SEA5 - GL 31-33 - C-E - L1 CEILING,TK_Complete,2023-11-14 07:00,2023-11-19 15:00,2023-11-14 07:00,2023-11-18 11:00,80.0,0.0,80.0,0.0,CIP Concrete Topping Slab Crews,0.0,0.0,0.0,,80.0,80.0
100232385,CN.SEB5.6250,IMPACT [S.TIA-110] - BAKER REWORK #6 FLUTE REBAR - SEA5 - GL 31-33 - L3 - C-A,TK_Complete,2023-12-04 07:00,2023-12-08 17:00,2023-11-14 07:00,2023-12-28 11:00,280.0,0.0,280.0,0.0,CIP Concrete Slab on Metal Deck Crews,10.0,0.0,10.0,50-75 Ton Mobile Support Crane,290.0,290.0
100232395,CN.SEB5.6290,IMPACT - REWORK ADDED DBA's - FRP SLAB - DS/AD - SEA5 - GL 31-33 - C-E - L4 & L4/E,TK_Complete,2024-01-22 07:00,2024-01-24 11:00,2024-01-08 07:00,2024-01-11 14:00,695.0,0.0,695.0,0.0,"W&W DS/AD Infill Steel - East - Team B, CIP Concrete Slab on Metal Deck Crews",58.0,0.0,58.0,"200-300 Ton Crawler, 55 Ton Mobile Support Crane",753.0,753.0
100232396,CN.SEB5.6300,INSTALL INSULATED METAL PANEL MODULES - GL 31-33 - E LINE (AD AREA),TK_Complete,2024-08-28 07:00,2024-08-29 17:00,2024-08-28 07:00,2024-09-03 17:00,580.0,0.0,580.0,0.0,W&W DS/AD Infill Steel - East - Team B,58.0,0.0,58.0,"200-300 Ton Crawler, 55 Ton Mobile Support Crane",638.0,638.0
100232402,CN.SEB5.6460,DS SPRAY FIREPROOFING SFRM (READY MEP DUCT) - SEB5 - GL 31-33 - C-D - L4&L5 CEILING,TK_Complete,2024-08-23 07:00,2024-08-29 17:00,2024-06-19 07:00,2024-06-28 17:00,80.0,0.0,80.0,0.0,CIP Concrete Topping Slab Crews,0.0,0.0,0.0,,80.0,80.0
100232409,CN.SWB5.6810,IMPACT [S.TIA-17 / E.TIA-8] - SECAI/STARCON MEP PIPE RACK CRANE INTERFERANCE - SE PENTHOUSE - MCC ROOF ROOF,TK_Complete,2024-02-26 07:00,2024-03-05 17:00,2024-02-14 07:00,2024-03-07 00:00,580.0,0.0,580.0,0.0,W&W DS/AD Infill Steel - West - Team B,58.0,0.0,58.0,"200-300 Ton Crawler, 55 Ton Mobile Support Crane",638.0,638.0
100232418,CN.SEB5.8880,INSTALL FRAMING FOR IMP - GL 31-33 - E LINE (AD AREA),TK_Complete,2024-05-02 07:00,2024-05-03 17:00,2024-05-06 07:00,2024-05-14 17:00,580.0,0.0,580.0,0.0,W&W DS/AD Infill Steel - East - Team B,58.0,0.0,58.0,"200-300 Ton Crawler, 55 Ton Mobile Support Crane",638.0,638.0
100232419,CN.SWB5.8910,PH1- INSTALL EXTERIOR STEEL ACCESS STAIRS / RAMPS - SE PENTHOUSE - ROOF - STAIR 77,TK_NotStart,2025-11-24 07:00,2025-11-26 17:00,,,580.0,580.0,0.0,0.0,W&W DS/AD Infill Steel - West - Team B,58.0,58.0,0.0,"200-300 Ton Crawler, 55 Ton Mobile Support Crane",638.0,0.0
100232420,CN.SWB5.8920,PH1- INSTALL EXTERIOR STEEL ACCESS STAIRS / RAMPS - SE PENTHOUSE - STAIR R11/R12/R17,TK_Complete,2025-10-17 07:00,2025-10-21 17:00,2025-10-17 07:00,2025-10-21 17:00,580.0,0.0,0.0,0.0,W&W DS/AD Infill Steel - West - Team B,58.0,0.0,0.0,"200-300 Ton Crawler, 55 Ton Mobile Support Crane",638.0,0.0
100232421,CN.SWB5.8950,PH1- INSTALL INSULATED METAL PANELS - SE PENTHOUSE - GL 5 - A-C [LAST COLUMN OF IMP AT A/5 PENDING RFI RESPONSE],TK_Complete,2024-07-05 07:00,2024-07-08 17:00,2024-07-02 07:00,2024-07-09 17:00,580.0,0.0,580.0,0.0,W&W DS/AD Infill Steel - West - Team B,58.0,0.0,58.0,"200-300 Ton Crawler, 55 Ton Mobile Support Crane",638.0,638.0
100232423,CN.SEB5.8920,IMPACT - IDENTIFY ISSUE WITH PANEL CONNECTION AT A32 / PREP & SUBMIT RFI - GL 32-33 - A LINE [SUP EXTERIOR WALL],TK_Complete,2024-06-07 07:00,2024-06-13 17:00,2024-06-06 07:00,2024-06-14 17:00,330.0,0.0,330.0,0.0,"Insulated Metal Panels - Lower Areas, Insulated Metal Panel - Prefab Crews",15.0,0.0,15.0,50 Ton Mobile Support Crane,345.0,345.0
100232424,CN.SEB5.8930,IMPACT - SECAI REVIEW & APPROVE CONNECTION REPAIR PROCEDURE AT A32 - GL 32-33 - A LINE [SUP EXTERIOR WALL],TK_Complete,2024-08-13 07:00,2024-08-26 17:00,2024-06-17 07:00,2024-07-15 17:00,330.0,0.0,330.0,0.0,"Insulated Metal Panels - Lower Areas, Insulated Metal Panel - Prefab Crews",15.0,0.0,15.0,50 Ton Mobile Support Crane,345.0,345.0
100232425,CN.SEB5.8940,IMPACT - PATRIOT COMPLETE CONNECTION REPAIR AT A32 - GL 32-33 - A LINE [SUP EXTERIOR WALL],TK_Complete,2024-08-27 07:00,2024-08-30 17:00,2024-07-22 07:00,2024-07-30 17:00,330.0,0.0,330.0,0.0,"Insulated Metal Panels - Lower Areas, Insulated Metal Panel - Prefab Crews",15.0,0.0,15.0,50 Ton Mobile Support Crane,345.0,345.0
100232426,CN.SEB5.8950,IMPACT - INSTALL INSULATED METAL PANEL MODULES - GL 32-33 - A LINE [SUP EXTERIOR WALL],TK_Complete,2024-09-01 07:00,2024-09-08 17:00,2024-08-05 07:00,2024-08-13 17:00,330.0,0.0,330.0,0.0,"Insulated Metal Panels - Lower Areas, Insulated Metal Panel - Prefab Crews",15.0,0.0,15.0,50 Ton Mobile Support Crane,345.0,345.0
100232428,CN.SEB5.8980,IMPACT - Y_SBMT 0627 - PREP & SUBMIT REPAIR PROCEDURE FOR E LINE WALL - GL 29-33 - E LINE (AD AREA),TK_Complete,2024-06-14 07:00,2024-06-20 17:00,2024-06-10 07:00,2024-06-12 17:00,580.0,0.0,580.0,0.0,W&W DS/AD Infill Steel - East - Team B,58.0,0.0,58.0,"200-300 Ton Crawler, 55 Ton Mobile Support Crane",638.0,638.0
100232429,CN.SEB5.8990,IMPACT - Y_SBMT 0627 - SECAI REVIEW & REPAIR PROCEDURE FOR E LINE WALL - GL 29-33 - E LINE (AD AREA),TK_Complete,2024-06-17 07:00,2024-06-28 17:00,2024-06-13 07:00,2024-06-28 17:00,580.0,0.0,580.0,0.0,W&W DS/AD Infill Steel - East - Team B,58.0,0.0,58.0,"200-300 Ton Crawler, 55 Ton Mobile Support Crane",638.0,638.0
100232430,CN.SEB5.9000,IMPACT - FRAMING CORRECTIONS & INSPECTIONS - GL 29-33 - E LINE (AD AREA),TK_Complete,2024-08-28 07:00,2024-08-29 17:00,2024-08-28 07:00,2024-08-28 17:00,580.0,0.0,580.0,0.0,W&W DS/AD Infill Steel - East - Team B,58.0,0.0,58.0,"200-300 Ton Crawler, 55 Ton Mobile Support Crane",638.0,638.0
100232431,CN.SEB5.9010,IMPACT - BAKER PERFORM REPAIR AT E LINE WALL - GL 29-33 - E LINE (AD AREA),TK_Complete,2024-08-30 07:00,2024-09-05 17:00,2024-08-19 07:00,2024-08-27 17:00,580.0,0.0,580.0,0.0,W&W DS/AD Infill Steel - East - Team B,58.0,0.0,58.0,"200-300 Ton Crawler, 55 Ton Mobile Support Crane",638.0,638.0
100232432,CN.SWB5.9370,IMPACT - CCD XXX - COMPLETE WELD CONNECTION FIX - SE PENTHOUSE - NORTH - GL 5 - A LINE,TK_Complete,2024-09-13 07:00,2024-09-15 17:00,2024-08-19 07:00,2024-08-22 17:00,580.0,0.0,580.0,0.0,W&W DS/AD Infill Steel - West - Team B,58.0,0.0,58.0,"200-300 Ton Crawler, 55 Ton Mobile Support Crane",638.0,638.0
100232433,CN.SWB5.9380,IMPACT - CCD XXX - ALPHA PAINT CLADDING STEEL - SE PENTHOUSE - NORTH - GL 5 - A LINE,TK_Complete,2024-09-16 07:00,2024-09-17 17:00,2024-08-23 07:00,2024-08-26 17:00,580.0,0.0,580.0,0.0,W&W DS/AD Infill Steel - West - Team B,58.0,0.0,58.0,"200-300 Ton Crawler, 55 Ton Mobile Support Crane",638.0,638.0
100232434,CN.SWB5.9390,IMPACT - REMAINING INSTALL INSULATED METAL PANELS - SE PENTHOUSE - NORTH - GL 5 - A LINE,TK_Complete,2024-09-26 11:00,2024-09-28 11:00,2024-09-03 11:00,2024-09-06 11:00,580.0,0.0,580.0,0.0,W&W DS/AD Infill Steel - West - Team B,58.0,0.0,58.0,"200-300 Ton Crawler, 55 Ton Mobile Support Crane",638.0,638.0
100232435,CN.SWB5.9420,IMPACT - REMAINING INSTALL INSULATED METAL PANELS - SE PENTHOUSE - SOUTH - GL 3 - A LINE,TK_Complete,2024-09-13 07:00,2024-09-14 17:00,2024-09-03 07:00,2024-09-06 17:00,580.0,0.0,580.0,0.0,W&W DS/AD Infill Steel - West - Team B,58.0,0.0,58.0,"200-300 Ton Crawler, 55 Ton Mobile Support Crane",638.0,638.0
100232436,CN.SWB5.9430,IMPACT - WATERPROOF AT PARAPET WALL FOR IMP INSTALL - SE PENTHOUSE - NORTH - GL 5 - A LINE,TK_Complete,2024-09-24 11:00,2024-09-26 11:00,2024-08-27 11:00,2024-08-30 11:00,580.0,0.0,580.0,0.0,W&W DS/AD Infill Steel - West - Team B,58.0,0.0,58.0,"200-300 Ton Crawler, 55 Ton Mobile Support Crane",638.0,638.0
100232437,CN.SWB5.9440,IMPACT - WATERPROOF AT PARAPET WALL FOR IMP INSTALL - SE PENTHOUSE - SOUTH - GL 3 - A LINE,TK_Complete,2024-09-25 07:00,2024-09-26 17:00,2024-08-27 07:00,2024-08-30 17:00,580.0,0.0,580.0,0.0,W&W DS/AD Infill Steel - West - Team B,58.0,0.0,58.0,"200-300 Ton Crawler, 55 Ton Mobile Support Crane",638.0,638.0
100232438,CN.SEB5.9020,IMPACT - AD WATERPROOFING - SEB5 - GL 32.5-33 - D-E - L4/E,TK_Complete,2025-01-20 07:00,2025-02-03 17:00,2025-01-18 07:00,2025-02-03 17:00,580.0,0.0,580.0,0.0,W&W DS/AD Infill Steel - East - Team B,58.0,0.0,58.0,"200-300 Ton Crawler, 55 Ton Mobile Support Crane",638.0,638.0
100232439,CN.SEB5.9030,IMPACT - AD TOPPING SLAB - SEB5 - GL 32.5-33 - D-E - L4/E,TK_Complete,2025-02-03 07:00,2025-02-05 17:00,2025-02-03 07:00,2025-02-04 17:00,580.0,0.0,580.0,0.0,W&W DS/AD Infill Steel - East - Team B,58.0,0.0,58.0,"200-300 Ton Crawler, 55 Ton Mobile Support Crane",638.0,638.0
100232440,CN.SEB5.9040,IMPACT - AWAIT DESIGN FROM SECAI FOR REVISED PARAPET WALL - GL 32.5-33 - D-E & J-K - L4/E,TK_Complete,2024-07-15 07:00,2024-08-05 17:00,2024-06-07 07:00,2024-12-28 14:00,580.0,0.0,580.0,0.0,W&W DS/AD Infill Steel - East - Team B,58.0,0.0,58.0,"200-300 Ton Crawler, 55 Ton Mobile Support Crane",638.0,638.0
100232455,CN.SWB5.10240,INSTALL SCAFFOLD TO DEMO DRYWALL - SE PENTHOUSE - GL 3-5 A,TK_Complete,2024-10-04 07:00,2024-10-04 17:00,2024-10-03 07:00,2024-10-14 17:00,580.0,0.0,580.0,0.0,W&W DS/AD Infill Steel - West - Team B,58.0,0.0,58.0,"200-300 Ton Crawler, 55 Ton Mobile Support Crane",638.0,638.0
100232456,CN.SWB5.10250,"DEMO A LINE TEMP DRYWALL, CLEANUP & REMOVE SCAFFOLD - SE PENTHOUSE - GL 3-5 A",TK_Complete,2024-10-15 07:00,2024-10-18 17:00,2024-10-15 07:00,2024-10-18 17:00,580.0,0.0,580.0,0.0,W&W DS/AD Infill Steel - West - Team B,58.0,0.0,58.0,"200-300 Ton Crawler, 55 Ton Mobile Support Crane",638.0,638.0
100232457,CN.SWB5.10260,REMAINING INTERIOR GL 5 WALL TAPE & FLOAT - IO ROOM / SE PENTHOUSE - GL 5,TK_Complete,2025-01-02 07:00,2025-01-02 17:00,2025-01-02 07:00,2025-01-02 17:00,580.0,0.0,580.0,0.0,W&W DS/AD Infill Steel - West - Team B,58.0,0.0,58.0,"200-300 Ton Crawler, 55 Ton Mobile Support Crane",638.0,638.0
100232458,CN.SWB5.10270,REMAINING COLUMN WRAP FRAMING & DRYWALL - MCC ROOM / SE PENTHOUSE - GL 3-4,TK_Complete,2024-10-21 07:00,2024-10-22 17:00,2024-10-21 07:00,2025-01-06 17:00,580.0,0.0,580.0,0.0,W&W DS/AD Infill Steel - West - Team B,58.0,0.0,58.0,"200-300 Ton Crawler, 55 Ton Mobile Support Crane",638.0,638.0
100232459,CN.SWB5.10280,INSTALL BENT PLATE EDGE OF SLAB - SE PENTHOUSE  - MCC RM - GL A/ 3-5,TK_Complete,2025-03-03 07:00,2025-03-04 17:00,2025-03-03 07:00,2025-03-07 17:00,580.0,0.0,580.0,0.0,W&W DS/AD Infill Steel - West - Team B,58.0,0.0,58.0,"200-300 Ton Crawler, 55 Ton Mobile Support Crane",638.0,638.0
100232460,CN.SWB5.10290,IMPACT - SECAI/ GREENBERRY PIPE SLEEVING NEEDED - SE PENTHOUSE - MCC ROOF- L6,TK_Complete,2024-02-17 08:00,2024-02-19 12:00,2024-09-17 08:00,2024-10-30 17:00,580.0,0.0,580.0,0.0,W&W DS/AD Infill Steel - West - Team B,58.0,0.0,58.0,"200-300 Ton Crawler, 55 Ton Mobile Support Crane",638.0,638.0
100232461,CN.SWB5.10300,IMPACT - EXTERIORS CORNERS NEED SADDLE INSTALL - SE PENTHOUSE - MCC ROOF,TK_Complete,2025-10-09 07:00,2025-10-13 17:00,2025-10-09 07:00,2025-10-09 17:00,580.0,0.0,0.0,0.0,W&W DS/AD Infill Steel - West - Team B,58.0,0.0,0.0,"200-300 Ton Crawler, 55 Ton Mobile Support Crane",638.0,0.0
100232462,CN.SWB5.10310,IMPACT - TEMP WALL DEMO PRICING - SE PENTHOUSE - GL 3-5 A,TK_Complete,2024-10-04 07:00,2024-10-04 17:00,2024-10-02 07:00,2024-10-09 17:00,580.0,0.0,580.0,0.0,W&W DS/AD Infill Steel - West - Team B,58.0,0.0,58.0,"200-300 Ton Crawler, 55 Ton Mobile Support Crane",638.0,638.0
100232463,CN.SWB5.10320,IMPACT - TEMP WALL DEMO CCD APPROVAL - SE PENTHOUSE - GL 3-5 A,TK_Complete,2024-10-14 07:00,2024-10-14 17:00,2024-10-14 07:00,2024-10-14 17:00,580.0,0.0,580.0,0.0,W&W DS/AD Infill Steel - West - Team B,58.0,0.0,58.0,"200-300 Ton Crawler, 55 Ton Mobile Support Crane",638.0,638.0
100232464,CN.SWB5.10330,"INSULATION, FIRESTOP & INSPECTIONS - SE PENTHOUSE - MCC RM - GL A/ 3-5",TK_NotStart,2025-11-21 07:00,2025-11-21 17:00,,,580.0,580.0,0.0,0.0,W&W DS/AD Infill Steel - West - Team B,58.0,58.0,0.0,"200-300 Ton Crawler, 55 Ton Mobile Support Crane",638.0,0.0
100232465,CN.SWB5.10640,IMPACT - SECURITY ROUGH IN NOT COMPLETE - MCC ROOM / SE PENTHOUSE - GL 3-4,TK_Active,2024-10-21 07:00,2024-10-22 17:00,2024-10-21 07:00,,580.0,580.0,0.0,0.0,W&W DS/AD Infill Steel - West - Team B,58.0,58.0,0.0,"200-300 Ton Crawler, 55 Ton Mobile Support Crane",638.0,0.0
100232466,CN.SEB5.9360,INSTALL & INSPECT PARAPET  - GL 32.5-33 - D-E & J-K - L4/E,TK_Complete,2025-01-13 07:00,2025-01-17 17:00,2025-01-13 07:00,2025-01-17 17:00,580.0,0.0,580.0,0.0,W&W DS/AD Infill Steel - East - Team B,58.0,0.0,58.0,"200-300 Ton Crawler, 55 Ton Mobile Support Crane",638.0,638.0
100232544,SOV.DEL.1230,STOP WORK SLAB ON VOID - Shop Dwgs & As-Built verify & EOR Approval,TK_Complete,2022-11-30 07:00,2022-12-10 13:00,2022-11-30 07:00,2022-12-27 15:00,748.0,0.0,748.0,0.0,CIP Concrete SOG Crews,22.0,0.0,22.0,50-75 Ton Mobile Support Crane,770.0,770.0
100232545,PC.RFI765,"PRECAST COLUMN - Repair/ Load Test - Recast - (GL15 - E,J,F,G,H) - (Delivery impacted by Base Plate)",TK_Complete,2022-12-01 07:00,2022-12-09 17:00,2022-12-01 07:00,2022-12-12 11:00,63.0,0.0,63.0,0.0,Precast Erect Main Columns,7.0,0.0,7.0,LR-1300 330 Ton Crawler Crane,70.0,70.0
100232848,DELAY.ST.1280,IMPACT - CORESLAB RUST REPAIR DELAY - (only 9 waffles per day - slow),TK_Complete,2023-03-18 09:00,2023-03-26 09:00,2023-03-21 09:00,2023-04-17 13:00,320.0,0.0,320.0,0.0,"Precast Erect Crew FAB Waffles & Double-T's, Precast GROUTERS",40.0,0.0,40.0,"Precast Carry-Lift, 185 Ton Crawler Crane Unload/Handle Waffles",360.0,360.0
